# Developing Infrastructure Networks in Riyadh's Fourth Industrial City-RVSD#01-REV01-1 baseline modif

Schedule from Primavera P6, 2025-11-30 to 2029-01-25, data date 2026-11-02, costs in USD, A marks actual dates.
Must finish by 2028-05-30

| ID | WBS | Activity | Duration | Start | Finish | Predecessors | Complete | Remaining | Planned start | Planned finish | Resources | Cost | Actual cost | RDH4-01-001-Road and Block Names-1 | RDH4-01-001-Zones-1 | RDH4-01-001-Phases-1 | RDH4-01-001-Networks-1 | RDH4-01-001-Work Method-1 | RDH4-01-001-MENEM |
| --- | --- | --- | --- | --- | --- | --- | --- | --- | --- | --- | --- | --- | --- | --- | --- | --- | --- | --- | --- |
|  | 2604 | **RHD4-02-002-L09-(ST)-GRP Pipes - 700 mm diameter** |  | 2027-04-04 | 2027-04-19 |  |  |  |  |  |  |  |  |  |  |  |  |  |  |
| RHD4CZ4L09ST1103 |  | Excavation works for GRP Pipe Line 700 mm - (RD-L-9)-Z4-L09-ST | 2d | 2027-04-04 | 2027-04-05 | RHD4ENSDZ4APPST110, RHD4CZ4L09ST3200 |  |  |  |  | Skilled labor [9.37 h]; Unskilled Labor [9.37 h]; Equipment Opreator [11.2 h]; Excavator-Poclain [9.37 h]; Dump Truck [1.85 h]; GRP (700mm Diameter) - ST - Depth less than 1.5 m [9.23 m]; GRP (700mm Diameter) - ST - Depth: 1.51m - 2.5m [14.78 m] | 13,935.97 |  | L09 | Z4 | CONS | ST | Excavation | bef |
| RHD4CZ4L09ST1203 |  | Bedding works for GRP Pipe Line 700 mm - (RD-L-9)-Z4-L09-ST | 2d | 2027-04-11 | 2027-04-12 | RHD4CZ4L09ST1103, RHD4CZ4L09ST1204 |  |  |  |  | Skilled labor [8.71 h]; Unskilled Labor [17.42 h]; Equipment Opreator [17.42 h]; Excavator-Poclain [8.71 h]; Dump Truck [8.71 h]; GRP (700mm Diameter) - ST - Depth less than 1.5 m [4.61 m]; GRP (700mm Diameter) - ST - Depth: 1.51m - 2.5m [4.93 m] | 5,499.37 |  | L09 | Z4 | CONS | ST | Bedding | bef |
| RHD4CZ4L09ST1303 |  | Installing for GRP Pipe Line 700 mm - (RD-L-9)-Z4-L09-ST | 2d | 2027-04-13 | 2027-04-14 | RHD4PRSHLSTAGST1003, RHD4PRSHLDOSST1603, RHD4PRSHLPOST1000, RHD4PRSHLDOSST1003, RHD4CZ4L09ST1203, RHD4CZ4L09ST1304 |  |  |  |  | Unskilled Labor [9.8 h]; Plumber [4.9 h]; GRP (700mm Diameter) - ST - Depth less than 1.5 m [41.52 m]; GRP (700mm Diameter) - ST - Depth: 1.51m - 2.5m [39.4 m] | 46,523.88 |  | L09 | Z4 | CONS | ST | Installation | bef |
| RHD4CZ4L09ST1403 |  | Primary Test for GRP Pipe Line 700 mm - (RD-L-9)-Z4-L09-ST | 2d | 2027-04-15 | 2027-04-17 | RHD4CZ4L09ST1303, RHD4CZ4L09ST1404 |  |  |  |  | Unskilled Labor [4.9 h]; Plumber [4.9 h]; Equipment Opreator [4.9 h]; Water Truck [4.9 h]; GRP (700mm Diameter) - ST - Depth less than 1.5 m [18.46 m]; GRP (700mm Diameter) - ST - Depth: 1.51m - 2.5m [19.7 m] | 21,985.52 |  | L09 | Z4 | CONS | ST | Primary Test | bef |
| RHD4CZ4L09ST1503 |  | Backfilling and warning tape works for GRP Pipe Line 700 mm - (RD-L-9)-Z4-L09-ST | 2d | 2027-04-18 | 2027-04-19 | RHD4CZ4L09ST1403, RHD4CZ4L09ST1504 |  |  |  |  | Skilled labor [10.35 h]; Unskilled Labor [20.8 h]; Equipment Opreator [20.8 h]; Excavator-Poclain [10.35 h]; Dump Truck [10.35 h]; GRP (700mm Diameter) - ST - Depth less than 1.5 m [18.46 m]; GRP (700mm Diameter) - ST - Depth: 1.51m - 2.5m [19.7 m] | 21,985.52 |  | L09 | Z4 | CONS | ST | Backfilling | bef |
|  | 2603 | **RHD4-02-002-L09-(ST)-GRP Pipes - 600 mm diameter** |  | 2027-04-01 | 2027-04-21 |  |  |  |  |  |  |  |  |  |  |  |  |  |  |
| RHD4CZ4L09ST1102 |  | Excavation works for GRP Pipe Line 600 mm - (RD-L-9)-Z4-L09-ST | 2d | 2027-04-01 | 2027-04-03 | RHD4ENSDZ4APPST110, RHD4CZ4L09ST3100, RHD4CZ4L09ST3102 |  |  |  |  | Skilled labor [6.97 h]; Unskilled Labor [6.97 h]; Equipment Opreator [8.39 h]; Excavator-Poclain [6.97 h]; Dump Truck [1.42 h]; GRP (600mm Diameter) - ST - Depth less than 1.5 m [3.76 m]; GRP (600mm Diameter) - ST - Depth: 1.51m - 2.5m [14.8 m] | 8,504.28 |  | L09 | Z4 | CONS | ST | Excavation | bef |
| RHD4CZ4L09ST1202 |  | Bedding works for GRP Pipe Line 600 mm - (RD-L-9)-Z4-L09-ST | 2d | 2027-04-04 | 2027-04-05 | RHD4CZ4L09ST1102 |  |  |  |  | Skilled labor [6.75 h]; Unskilled Labor [13.5 h]; Equipment Opreator [13.5 h]; Excavator-Poclain [6.75 h]; Dump Truck [6.75 h]; GRP (600mm Diameter) - ST - Depth less than 1.5 m [1.88 m]; GRP (600mm Diameter) - ST - Depth: 1.51m - 2.5m [4.93 m] | 3,103.59 |  | L09 | Z4 | CONS | ST | Bedding | bef |
| RHD4CZ4L09ST1302 |  | Installing for GRP Pipe Line 600 mm - (RD-L-9)-Z4-L09-ST | 2d | 2027-04-06 | 2027-04-07 | RHD4PRSHLSTAGST1003, RHD4PRSHLDOSST1603, RHD4PRSHLPOST1000, RHD4PRSHLDOSST1003, RHD4CZ4L09ST1202 |  |  |  |  | Unskilled Labor [16.23 h]; Plumber [8.06 h]; GRP (600mm Diameter) - ST - Depth less than 1.5 m [16.93 m]; GRP (600mm Diameter) - ST - Depth: 1.51m - 2.5m [39.46 m] | 25,645.73 |  | L09 | Z4 | CONS | ST | Installation | bef |
| RHD4CZ4L09ST1402 |  | Primary Test for GRP Pipe Line 600 mm - (RD-L-9)-Z4-L09-ST | 2d | 2027-04-18 | 2027-04-19 | RHD4CZ4L09ST1302, RHD4CZ4L09ST1403 |  |  |  |  | Unskilled Labor [6.21 h]; Plumber [6.21 h]; Equipment Opreator [6.21 h]; Water Truck [6.21 h]; GRP (600mm Diameter) - ST - Depth less than 1.5 m [7.53 m]; GRP (600mm Diameter) - ST - Depth: 1.51m - 2.5m [19.73 m] | 12,419.02 |  | L09 | Z4 | CONS | ST | Primary Test | bef |
| RHD4CZ4L09ST1502 |  | Backfilling and warning tape works for GRP Pipe Line 600 mm - (RD-L-9)-Z4-L09-ST | 2d | 2027-04-20 | 2027-04-21 | RHD4CZ4L09ST1506, RHD4CZ4L09ST1402, RHD4CZ4L09ST1503 |  |  |  |  | Skilled labor [7.41 h]; Unskilled Labor [14.81 h]; Equipment Opreator [14.81 h]; Excavator-Poclain [7.41 h]; Dump Truck [7.41 h]; GRP (600mm Diameter) - ST - Depth less than 1.5 m [7.53 m]; GRP (600mm Diameter) - ST - Depth: 1.51m - 2.5m [19.73 m] | 12,419.02 |  | L09 | Z4 | CONS | ST | Backfilling | bef |
|  | 2601 | **RHD4-02-002-L09-(ST)-GRP Pipes - 400 mm diameter** |  |  |  |  |  |  |  |  |  |  |  |  |  |  |  |  |  |
|  | 2615 | **RHD4-02-002-L09-(ST)-UPVC Pipes - 300 mm diameter** |  | 2027-04-01 | 2027-05-08 |  |  |  |  |  |  |  |  |  |  |  |  |  |  |
| RHD4CZ4L09ST2100 |  | Excavation works for UPVC Pipe Line 300 mm - (RD-L-9)-Z4-L09-ST | 4d | 2027-04-01 | 2027-04-05 | RHD4ENSDZ4APPST110, RHD4CZ4L09ST3100, RHD4CZ4L09ST3102 |  |  |  |  | Skilled labor [34.2 h]; Unskilled Labor [34.2 h]; Equipment Opreator [41.06 h]; Excavator-Poclain [34.2 h]; Dump Truck [6.86 h]; UPVC (300mm Diameter) - ST - Depth less than 1.5 [72.96 m]; UPVC (300mm Diameter) - ST - Depth: 1.51m - 2.5m | 22,106.88 |  | L09 | Z4 | CONS | ST | Excavation | bef |
| RHD4CZ4L09ST2200 |  | Bedding works for UPVC Pipe Line 300 mm - (RD-L-9)-Z4-L09-ST | 3d | 2027-04-06 | 2027-04-08 | RHD4CZ4L09ST2100 |  |  |  |  | Skilled labor [30.49 h]; Unskilled Labor [60.99 h]; Equipment Opreator [60.99 h]; Excavator-Poclain [30.49 h]; Dump Truck [30.49 h]; UPVC (300mm Diameter) - ST - Depth less than 1.5 [36.48 m]; UPVC (300mm Diameter) - ST - Depth: 1.51m - 2.5m | 11,053.44 |  | L09 | Z4 | CONS | ST | Bedding | bef |
| RHD4CZ4L09ST2300 |  | Installing for UPVC Pipe Line 300 mm - (RD-L-9)-Z4-L09-ST | 4d | 2027-04-10 | 2027-04-13 | RHD4PRSHLDOSST1103, RHD4PRSHLSTAGST1103, RHD4CZ4L09ST2200 |  |  |  |  | Unskilled Labor [68.39 h]; Plumber [34.2 h]; UPVC (300mm Diameter) - ST - Depth less than 1.5 [328.3 m]; UPVC (300mm Diameter) - ST - Depth: 1.51m - 2.5m | 99,474.9 |  | L09 | Z4 | CONS | ST | Installation | bef |
| RHD4CZ4L09ST2400 |  | Primary Test for UPVC Pipe Line 300 mm - (RD-L-9)-Z4-L09-ST | 3d | 2027-04-14 | 2027-04-17 | RHD4CZ4L09ST2300 |  |  |  |  | Unskilled Labor [23.09 h]; Plumber [23.09 h]; Equipment Opreator [23.09 h]; Water Truck [23.09 h]; UPVC (300mm Diameter) - ST - Depth less than 1.5 [145.91 m]; UPVC (300mm Diameter) - ST - Depth: 1.51m - 2.5m | 44,210.73 |  | L09 | Z4 | CONS | ST | Primary Test | bef |
| RHD4CZ4L09ST2500 |  | Backfilling and warning tape works for UPVC Pipe Line 300 mm - (RD-L-9)-Z4-L09-ST | 4d | 2027-05-04 | 2027-05-08 | RHD4CZ4L09ST1501, RHD4CZ4L09SW3501, RHD4CZ4L09ST2400, RHD4CZ4L09ST6100 |  |  |  |  | Skilled labor [39.75 h]; Unskilled Labor [79.5 h]; Equipment Opreator [79.5 h]; Excavator-Poclain [39.75 h]; Dump Truck [39.75 h]; UPVC (300mm Diameter) - ST - Depth less than 1.5 [145.91 m]; UPVC (300mm Diameter) - ST - Depth: 1.51m - 2.5m | 44,210.73 |  | L09 | Z4 | CONS | ST | Backfilling | bef |
|  | 2623 | **RHD4-02-002-L09-(ST)-Concrete Encasement** |  | 2027-04-12 | 2027-04-13 |  |  |  |  |  |  |  |  |  |  |  |  |  |  |
| RHD4CZ4L09ST6100 |  | Pipe Encasement for Storm Pipelines - (RD-L-9)-Z4-L09-ST | 2d | 2027-04-12 | 2027-04-13 | RHD4CZ4L09ST2200, RHD4CZ4L09ST2300 SS, RHD4CZ4L09ST2300 FF |  |  |  |  | Skilled labor [5.99 h]; Unskilled Labor [5.99 h]; Equipment Opreator [6.64 h]; Concrete Mixer Truck [0.65 h]; Dump Truck [5.99 h]; Pipe Encasement - ST [110.62 m3] | 55,973.72 |  | L09 | Z4 | CONS | ST | Pipe Encasement | bef |
|  | 2624 | **RHD4-02-002-Z4-L09-Catch Basin - ST** |  | 2026-10-27 | 2027-05-10 |  |  |  |  |  |  |  |  |  |  |  |  |  |  |
|  | 2625 | **RHD4-02-002-L09-(ST)-Single Catch Basin Works** |  | 2026-10-27 | 2027-05-10 |  |  |  |  |  |  |  |  |  |  |  |  |  |  |
| RHD4CZ4L09ST7100 |  | Excavation works for Single Catch Basin - (RD-L-9)-Z4-L09-ST | 5d | 2026-10-27 A | 2027-04-11 | RHD4ENSDZ4APPST110, RHD4CZ4L09ST3300 | 27% | 5d | 2026-10-27 | 2026-11-01 | Skilled labor [49.01 h]; Unskilled Labor [98.01 h]; Equipment Opreator [73.51 h]; Excavator-Poclain [49.01 h]; Dump Truck [24.5 h]; Single Catch basin - ST [11.25 nr] | 41,973.75 | 11,194.4 | L09 | Z4 | CONS | ST | Excavation | bef |
| RHD4CZ4L09ST7200 |  | PC Blinding, Installation and Pipe connection for Single Catch Basin - (RD-L-9)-Z4-L09-ST | 5d | 2026-10-29 A | 2027-04-17 | RHD4CZ4L09ST7100 | 11% | 5d | 2026-10-29 | 2026-11-03 | Skilled labor [49.01 h]; Unskilled Labor [98.01 h]; Plumber [24.5 h]; Equipment Opreator [9.8 h]; Boom Truck [9.8 h]; Single Catch basin - ST [9 nr] | 33,579 | 3,730.63 | L09 | Z4 | CONS | ST | Installation & Pipe Connection | bef |
| RHD4CZ4L09ST7300 |  | Rings & C.Slab & Final Backfill for Single Catch Basin - (RD-L-9)-Z4-L09-ST | 6d | 2027-04-18 | 2027-04-24 | RHD4PRSHLDOSST1303, RHD4PRSHLSTAGST1303, RHD4CZ4L09ST7200 |  |  |  |  | Skilled labor [61.31 h]; Unskilled Labor [122.52 h]; Equipment Opreator [73.51 h]; Boom Truck [12.31 h]; Bobcat [61.31 h]; Single Catch basin - ST [15.75 nr] | 58,763.25 |  | L09 | Z4 | CONS | ST | Rings | bef |
| RHD4CZ4L09ST7400 |  | Steel Cover for Single Catch Basin - (RD-L-9)-Z4-L09-ST | 5d | 2027-04-25 | 2027-04-29 | RHD4PRSHLDOSST1703, RHD4CZ4L09ST7300 |  |  |  |  | Skilled labor [49.01 h]; Unskilled Labor [49.01 h]; Equipment Opreator [9.8 h]; Boom Truck [9.8 h]; Single Catch basin - ST [2.25 nr] | 8,394.75 |  | L09 | Z4 | CONS | ST | Steel Cover | bef |
| RHD4CZ4L09ST7500 |  | Finishing and Insulation works for Single Catch Basin - (RD-L-9)-Z4-L09-ST | 9d | 2027-05-01 | 2027-05-10 | RHD4CZ4L09ST7400 |  |  |  |  | Skilled labor [98.01 h]; Unskilled Labor [196 h]; Equipment Opreator [19.6 h]; Boom Truck [19.6 h]; Single Catch basin - ST [6.75 nr] | 25,184.25 |  | L09 | Z4 | CONS | ST | Insulation | bef |

| ID | WBS | Activity | Duration | Start | Finish | Predecessors | Complete | Remaining | Planned start | Planned finish | Resources | Cost | Actual cost | RDH4-01-001-Road and Block Names-1 | RDH4-01-001-Zones-1 | RDH4-01-001-Phases-1 | RDH4-01-001-Networks-1 | RDH4-01-001-Work Method-1 | RDH4-01-001-MENEM |
| --- | --- | --- | --- | --- | --- | --- | --- | --- | --- | --- | --- | --- | --- | --- | --- | --- | --- | --- | --- |
|  | 2649 | **RHD4-02-002-Z4-L09-Sewage Network - SW** |  | 2026-10-20 | 2027-07-05 |  |  |  |  |  |  |  |  |  |  |  |  |  |  |
|  | 957 | **RHD4-02-002-L09-(SW)-MH Works - 1200 mm diameter with Back drop** |  | 2027-04-22 | 2027-05-03 |  |  |  |  |  |  |  |  |  |  |  |  |  |  |
| RHD4CZ4L09SW3101 |  | Excavation and PC Blinding works for MH 1200 mm - (RD-L-9)-Z4-L09-SW | 2d | 2027-04-22 | 2027-04-24 | RHD4CZ4L09SW3100 SS, RHD4CZ4L09ST1502 |  |  |  |  | Skilled labor [5.45 h]; Unskilled Labor [5.45 h]; Equipment Opreator [8.71 h]; Excavator-Poclain [5.45 h]; Water Truck [0.54 h]; Dump Truck [2.72 h]; MH (1200mm Diameter) - SW - depth 2.51- 3.5 m with back drop [0.25 nr] | 4,003.75 |  | L09 | Z4 | CONS | SW | Excavation | bef |
| RHD4CZ4L09SW3201 |  | Installation of Base for MH 1200 mm - (RD-L-9)-Z4-L09-SW | 2d | 2027-04-25 | 2027-04-26 | RHD4CZ4L09SW3101 |  |  |  |  | Skilled labor [5.45 h]; Unskilled Labor [5.45 h]; Equipment Opreator [2.18 h]; Boom Truck [1.09 h]; Concrete Mixer Truck [1.09 h]; MH (1200mm Diameter) - SW - depth 2.51- 3.5 m with back drop [0.25 nr] | 4,003.75 |  | L09 | Z4 | CONS | SW | Installing Base | bef |
| RHD4CZ4L09SW3301 |  | MH Ring and C.Slab works and Backfilling works for MH 1200 mm - (RD-L-9)-Z4-L09-SW | 2d | 2027-04-27 | 2027-04-28 | RHD4CZ4L09SW3201 |  |  |  |  | Skilled labor [5.45 h]; Unskilled Labor [5.45 h]; Equipment Opreator [3.81 h]; Boom Truck [2.18 h]; Concrete Mixer Truck [1.6 h]; MH (1200mm Diameter) - SW - depth 2.51- 3.5 m with back drop [0.35 nr] | 5,605.25 |  | L09 | Z4 | CONS | SW | Installing Rings | bef |
| RHD4CZ4L09SW3401 |  | Steel Cover for MH 1200 mm - (RD-L-9)-Z4-L09-SW | 2d | 2027-04-29 | 2027-05-01 | RHD4CZ4L09SW3301 |  |  |  |  | Skilled labor [3.59 h]; Unskilled Labor [7.3 h]; Equipment Opreator [0.8 h]; Boom Truck [0.8 h]; MH (1200mm Diameter) - SW - depth 2.51- 3.5 m with back drop [0.05 nr] | 800.75 |  | L09 | Z4 | CONS | SW | Steel Cover | bef |
| RHD4CZ4L09SW3501 |  | Finishing, Benching, Testing works for MH 1200 mm - (RD-L-9)-Z4-L09-SW | 2d | 2027-05-02 | 2027-05-03 | RHD4CZ4L09SW3401 |  |  |  |  | Skilled labor [5.45 h]; Unskilled Labor [10.89 h]; Plumber [5.45 h]; Equipment Opreator [1.09 h]; Water Truck [1.09 h]; MH (1200mm Diameter) - SW - depth 2.51- 3.5 m with back drop [0.1 nr] | 1,601.5 |  | L09 | Z4 | CONS | SW | Benching | bef |
|  | 2659 | **RHD4-02-002-L09-(SW)-MH Works - 1200 mm diameter** |  | 2026-10-20 | 2027-07-05 |  |  |  |  |  |  |  |  |  |  |  |  |  |  |
| RHD4CZ4L09SW3100 |  | Excavation and PC Blinding works for MH 1200 mm - (RD-L-9)-Z4-L09-SW | 12d | 2026-10-20 A | 2027-04-29 | RHD4ENSDZ4APPSW120, RHD4CZ4L09ST2100, RHD4CZ4L09ST1502 | 29% | 7d | 2026-10-20 | 2026-11-02 | Skilled labor [123.39 h]; Unskilled Labor [123.39 h]; Equipment Opreator [197.44 h]; Excavator-Poclain [123.39 h]; Water Truck [12.31 h]; Dump Truck [61.75 h]; MH (1200mm Diameter) - SW - depth 0 - 1.5m [1.75 nr]; MH (1200mm Diameter) - SW - depth 1.51 - 2.5m [2.5 nr]; MH (1200mm Diameter) - SW - depth 2.51 - 3.5m [2 nr] | 62,017.25 | 18,005 | L09 | Z4 | CONS | SW | Excavation | bef |
| RHD4CZ4L09SW3200 |  | Installation of Base for MH 1200 mm - (RD-L-9)-Z4-L09-SW | 10d | 2026-10-22 A | 2027-05-11 | RHD4CZ4L09SW3100 | 19% | 10d | 2026-10-22 | 2026-11-02 | Skilled labor [179.69 h]; Unskilled Labor [179.69 h]; Equipment Opreator [71.88 h]; Boom Truck [35.94 h]; Concrete Mixer Truck [35.94 h]; MH (1200mm Diameter) - SW - depth 0 - 1.5m [1.75 nr]; MH (1200mm Diameter) - SW - depth 1.51 - 2.5m [2.5 nr]; MH (1200mm Diameter) - SW - depth 2.51 - 3.5m [2 nr] | 62,017.25 | 11,388 | L09 | Z4 | CONS | SW | Installing Base | bef |
| RHD4CZ4L09SW3300 |  | MH Ring and C.Slab works and Backfilling works for MH 1200 mm - (RD-L-9)-Z4-L09-SW | 17d | 2027-05-12 | 2027-06-05 | RHD4CZ4L09SW3200 |  |  |  |  | Skilled labor [179.69 h]; Unskilled Labor [179.69 h]; Equipment Opreator [125.78 h]; Boom Truck [71.88 h]; Concrete Mixer Truck [53.91 h]; MH (1200mm Diameter) - SW - depth 0 - 1.5m [2.45 nr]; MH (1200mm Diameter) - SW - depth 1.51 - 2.5m [3.5 nr]; MH (1200mm Diameter) - SW - depth 2.51 - 3.5m [2.8 nr] | 86,824.15 |  | L09 | Z4 | CONS | SW | Installing Rings | bef |
| RHD4CZ4L09SW3400 |  | Steel Cover for MH 1200 mm - (RD-L-9)-Z4-L09-SW | 9d | 2027-06-06 | 2027-06-15 | RHD4CZ4L09SW3300 |  |  |  |  | Skilled labor [90.72 h]; Unskilled Labor [181.54 h]; Equipment Opreator [18.19 h]; Boom Truck [18.19 h]; MH (1200mm Diameter) - SW - depth 0 - 1.5m [0.35 nr]; MH (1200mm Diameter) - SW - depth 1.51 - 2.5m [0.5 nr]; MH (1200mm Diameter) - SW - depth 2.51 - 3.5m [0.4 nr] | 12,403.45 |  | L09 | Z4 | CONS | SW | Steel Cover | bef |
| RHD4CZ4L09SW3500 |  | Finishing, Benching, Testing works for MH 1200 mm - (RD-L-9)-Z4-L09-SW | 17d | 2027-06-16 | 2027-07-05 | RHD4CZ4L09SW3400 |  |  |  |  | Skilled labor [179.69 h]; Unskilled Labor [359.38 h]; Plumber [179.69 h]; Equipment Opreator [35.94 h]; Water Truck [35.94 h]; MH (1200mm Diameter) - SW - depth 0 - 1.5m [0.7 nr]; MH (1200mm Diameter) - SW - depth 1.51 - 2.5m [1 nr]; MH (1200mm Diameter) - SW - depth 2.51 - 3.5m [0.8 nr] | 24,806.9 |  | L09 | Z4 | CONS | SW | Benching | bef |
|  | 2652 | **RHD4-02-002-L09-(SW)-GRP Pipes - 500 mm diameter** |  |  |  |  |  |  |  |  |  |  |  |  |  |  |  |  |  |
|  | 2655 | **RHD4-02-002-L09-(SW)-UPVC Pipes - 200 mm diameter** |  | 2026-10-27 | 2027-06-05 |  |  |  |  |  |  |  |  |  |  |  |  |  |  |
| RHD4CZ4L09SW2100 |  | Excavation works for UPVC Pipe Line 200 mm - (RD-L-9)-Z4-L09-SW | 7d | 2026-10-27 A | 2027-04-29 | RHD4ENSDZ4APPSW120, RHD4CZ4L09ST2100, RHD4CZ4L09ST1502 | 10% | 7d | 2026-10-27 | 2026-11-03 | Skilled labor [68.94 h]; Unskilled Labor [68.94 h]; Equipment Opreator [82.66 h]; Excavator-Poclain [68.94 h]; Dump Truck [13.83 h]; UPVC (200mm Diameter) - SW - Depth: less than 1.5m [73.86 m]; UPVC (200mm Diameter) - SW - Depth: 1.51m - 2.5m [81.01 m]; UPVC (200mm Diameter) - SW - Depth: 2.51m - 3.5m | 30,873.97 | 3,060 | L09 | Z4 | CONS | SW | Excavation | bef |
| RHD4CZ4L09SW2200 |  | Bedding works for UPVC Pipe Line 200 mm - (RD-L-9)-Z4-L09-SW | 6d | 2026-10-29 A | 2027-05-06 | RHD4CZ4L09SW2100 | 4% | 6d | 2026-10-29 | 2026-11-04 | Skilled labor [63.82 h]; Unskilled Labor [127.63 h]; Equipment Opreator [127.63 h]; Excavator-Poclain [63.82 h]; Dump Truck [63.82 h]; UPVC (200mm Diameter) - SW - Depth: less than 1.5m [36.93 m]; UPVC (200mm Diameter) - SW - Depth: 1.51m - 2.5m [27 m]; UPVC (200mm Diameter) - SW - Depth: 2.51m - 3.5m | 12,506.4 | 540 | L09 | Z4 | CONS | SW | Bedding | bef |
| RHD4CZ4L09SW2300 |  | Installing for UPVC Pipe Line 200 mm - (RD-L-9)-Z4-L09-SW | 9d | 2026-10-31 A | 2027-05-22 | RHD4PRSHLDOSSW1003, RHD4PRSHLSTAGSW1003, RHD4CZ4L09SW2200 | 4% | 9d | 2026-10-31 | 2026-11-09 | Unskilled Labor [178.6 h]; Plumber [89.3 h]; Equipment Opreator [89.3 h]; Boom Truck [89.3 h]; UPVC (200mm Diameter) - SW - Depth: less than 1.5m [332.38 m]; UPVC (200mm Diameter) - SW - Depth: 1.51m - 2.5m [216.03 m]; UPVC (200mm Diameter) - SW - Depth: 2.51m - 3.5m | 106,706.91 | 4,860 | L09 | Z4 | CONS | SW | Installation | bef |
| RHD4CZ4L09SW2400 |  | Primary Test for UPVC Pipe Line 200 mm - (RD-L-9)-Z4-L09-SW | 4d | 2027-05-23 | 2027-05-26 | RHD4CZ4L09SW2300 |  |  |  |  | Unskilled Labor [43.13 h]; Plumber [43.13 h]; Equipment Opreator [43.13 h]; Water Truck [43.13 h]; UPVC (200mm Diameter) - SW - Depth: less than 1.5m [147.72 m]; UPVC (200mm Diameter) - SW - Depth: 1.51m - 2.5m [108.01 m]; UPVC (200mm Diameter) - SW - Depth: 2.51m - 3.5m | 50,027.77 |  | L09 | Z4 | CONS | SW | Primary Test | bef |
| RHD4CZ4L09SW2500 |  | Backfilling and warning tape works for UPVC Pipe Line 200 mm - (RD-L-9)-Z4-L09-SW | 8d | 2027-05-27 | 2027-06-05 | RHD4CZ4L09SW2400 |  |  |  |  | Skilled labor [76.56 h]; Unskilled Labor [153.12 h]; Equipment Opreator [153.12 h]; Excavator-Poclain [76.56 h]; Dump Truck [76.56 h]; UPVC (200mm Diameter) - SW - Depth: less than 1.5m [147.72 m]; UPVC (200mm Diameter) - SW - Depth: 1.51m - 2.5m [108.01 m]; UPVC (200mm Diameter) - SW - Depth: 2.51m - 3.5m | 50,027.77 |  | L09 | Z4 | CONS | SW | Backfilling | bef |
|  | 2658 | **RHD4-02-002-L09-(SW)-Concrete Encasement** |  |  |  |  |  |  |  |  |  |  |  |  |  |  |  |  |  |
|  | 2686 | **RHD4-02-002-Z4-L09-Potable Network - PT** |  | 2027-05-27 | 2027-08-31 |  |  |  |  |  |  |  |  |  |  |  |  |  |  |
|  | 2687 | **RHD4-02-002-L09-(PT)-HDPE Pipes - 110 mm diameter** |  | 2027-07-06 | 2027-07-22 |  |  |  |  |  |  |  |  |  |  |  |  |  |  |
| RHD4CZ4L09PT1100 |  | Excavation works for HDPE Pipline 110 mm - (RD-L-9)-Z4-L09-PT | 2d | 2027-07-06 | 2027-07-07 | RHD4ENSDZ4APPPT130, RHD4ENMSPT2000, RHD4CZ4L09SW3500, RHD4CZ4L09SW2500 SS |  |  |  |  | Skilled labor [5.55 h]; Unskilled Labor [5.55 h]; Equipment Opreator [6.64 h]; Excavator-Poclain [5.55 h]; Dump Truck [1.09 h]; HDPE (110mm Diameter) - PT - Depth: less than 1.5m [12.8 m] | 1,088 |  | L09 | Z4 | CONS | PT | Excavation | bef |
| RHD4CZ4L09PT1200 |  | Bedding works for HDPE Pipline 110 mm - (RD-L-9)-Z4-L09-PT | 2d | 2027-07-08 | 2027-07-10 | RHD4CZ4L09PT1100 |  |  |  |  | Skilled labor [4.68 h]; Unskilled Labor [9.26 h]; Equipment Opreator [9.26 h]; Excavator-Poclain [4.68 h]; Dump Truck [4.68 h]; HDPE (110mm Diameter) - PT - Depth: less than 1.5m [6.4 m] | 544 |  | L09 | Z4 | CONS | PT | Bedding | bef |
| RHD4CZ4L09PT1300 |  | Installing for HDPE Pipline 110 mm - (RD-L-9)-Z4-L09-PT | 2d | 2027-07-11 | 2027-07-12 | RHD4PRSHLDOSPT1000, RHD4PRSHLSTAGPT1000, RHD4CZ4L09PT1200 |  |  |  |  | Unskilled Labor [18.62 h]; Plumber [9.26 h]; Equipment Opreator [9.26 h]; Boom Truck [9.26 h]; HDPE (110mm Diameter) - PT - Depth: less than 1.5m [57.6 m] | 4,896 |  | L09 | Z4 | CONS | PT | Installation | bef |
| RHD4CZ4L09PT1400 |  | Primary Test for HDPE Pipline 110 mm - (RD-L-9)-Z4-L09-PT | 2d | 2027-07-19 | 2027-07-20 | RHD4CZ4L09PT1300, RHD4CZ4L09PT5100 |  |  |  |  | Unskilled Labor [2.83 h]; Plumber [2.83 h]; Equipment Opreator [2.83 h]; Water Truck [2.83 h]; HDPE (110mm Diameter) - PT - Depth: less than 1.5m [25.6 m] | 2,176 |  | L09 | Z4 | CONS | PT | Primary Test | bef |
| RHD4CZ4L09PT1500 |  | Backfilling and warning tape works for HDPE Pipline 110 mm - (RD-L-9)-Z4-L09-PT | 2d | 2027-07-21 | 2027-07-22 | RHD4CZ4L09PT1400 |  |  |  |  | Skilled labor [6.97 h]; Unskilled Labor [13.94 h]; Equipment Opreator [13.94 h]; Excavator-Poclain [6.97 h]; Dump Truck [6.97 h]; HDPE (110mm Diameter) - PT - Depth: less than 1.5m [25.6 m] | 2,176 |  | L09 | Z4 | CONS | PT | Backfilling | bef |

| ID | WBS | Activity | Duration | Start | Finish | Predecessors | Resources | Cost | RDH4-01-001-Road and Block Names-1 | RDH4-01-001-Zones-1 | RDH4-01-001-Phases-1 | RDH4-01-001-Networks-1 | RDH4-01-001-Work Method-1 | RDH4-01-001-MENEM |
| --- | --- | --- | --- | --- | --- | --- | --- | --- | --- | --- | --- | --- | --- | --- |
|  | 1939 | **RHD4-02-002-L09-(PT)-Wash out Valves** |  | 2027-06-12 | 2027-06-15 |  |  |  |  |  |  |  |  |  |
| RHD4CZ4L09PT3102 |  | Installation for Wash out Valves for Potable Water Network - (RD-L-9)-Z4-L09-PT | 2d | 2027-06-12 | 2027-06-13 | RHD4CZ4L09PT1303 | Unskilled Labor [5.45 h]; Plumber [5.45 h]; Wash out valve diameter 100 mm - PT [0.9 nr] | 3,373.2 | L09 | Z4 | CONS | PT | Installation | bef |
| RHD4CZ4L09PT3202 |  | Stem and Service box for Wash out Valves for Potable Water Network - (RD-L-9)-Z4-L09-PT | 2d | 2027-06-14 | 2027-06-15 | RHD4CZ4L09PT3102 | Unskilled Labor [5.45 h]; Plumber [5.45 h]; Wash out valve diameter 100 mm - PT [0.1 nr] | 374.8 | L09 | Z4 | CONS | PT | Stem and Service box | bef |
|  | 2688 | **RHD4-02-002-L09-(PT)-HDPE Pipes - 160 mm diameter** |  | 2027-07-06 | 2027-07-25 |  |  |  |  |  |  |  |  |  |
| RHD4CZ4L09PT1101 |  | Excavation works for HDPE Pipline 160 mm - (RD-L-9)-Z4-L09-PT | 3d | 2027-07-06 | 2027-07-08 | RHD4ENSDZ4APPPT130, RHD4ENMSPT2000, RHD4CZ4L09PT1100 SS | Skilled labor [26.68 h]; Unskilled Labor [26.68 h]; Equipment Opreator [32 h]; Excavator-Poclain [26.68 h]; Dump Truck [5.34 h]; HDPE (160mm Diameter) - PT - Depth: less than 1.5m [61.24 m] | 6,553.22 | L09 | Z4 | CONS | PT | Excavation | bef |
| RHD4CZ4L09PT1201 |  | Bedding works for HDPE Pipline 160 mm - (RD-L-9)-Z4-L09-PT | 3d | 2027-07-10 | 2027-07-12 | RHD4CZ4L09PT1101 | Skilled labor [22.22 h]; Unskilled Labor [44.43 h]; Equipment Opreator [44.43 h]; Excavator-Poclain [22.22 h]; Dump Truck [22.22 h]; HDPE (160mm Diameter) - PT - Depth: less than 1.5m [30.62 m] | 3,276.61 | L09 | Z4 | CONS | PT | Bedding | bef |
| RHD4CZ4L09PT1301 |  | Installing for HDPE Pipline 160 mm - (RD-L-9)-Z4-L09-PT | 5d | 2027-07-13 | 2027-07-18 | RHD4PRSHLDOSPT1000, RHD4PRSHLSTAGPT1000, RHD4CZ4L09PT1201 | Unskilled Labor [88.97 h]; Plumber [44.43 h]; Equipment Opreator [44.43 h]; Boom Truck [44.43 h]; HDPE (160mm Diameter) - PT - Depth: less than 1.5m [275.6 m] | 29,489.2 | L09 | Z4 | CONS | PT | Installation | bef |
| RHD4CZ4L09PT1401 |  | Primary Test for HDPE Pipline 160 mm - (RD-L-9)-Z4-L09-PT | 2d | 2027-07-19 | 2027-07-20 | RHD4CZ4L09PT1301, RHD4CZ4L09PT5100 | Unskilled Labor [13.29 h]; Plumber [13.29 h]; Equipment Opreator [13.29 h]; Water Truck [13.29 h]; HDPE (160mm Diameter) - PT - Depth: less than 1.5m [122.49 m] | 13,106.43 | L09 | Z4 | CONS | PT | Primary Test | bef |
| RHD4CZ4L09PT1501 |  | Backfilling and warning tape works for HDPE Pipline 160 mm - (RD-L-9)-Z4-L09-PT | 4d | 2027-07-21 | 2027-07-25 | RHD4CZ4L09PT1401 | Skilled labor [33.32 h]; Unskilled Labor [66.65 h]; Equipment Opreator [66.65 h]; Excavator-Poclain [33.32 h]; Dump Truck [33.32 h]; HDPE (160mm Diameter) - PT - Depth: less than 1.5m [122.49 m] | 13,106.43 | L09 | Z4 | CONS | PT | Backfilling | bef |
|  | 2690 | **RHD4-02-002-L09-(PT)-HDPE Pipes - 400 mm diameter** |  | 2027-05-27 | 2027-07-26 |  |  |  |  |  |  |  |  |  |
| RHD4CZ4L09PT1103 |  | Excavation works for HDPE Pipline 400 mm - (RD-L-9)-Z4-L09-PT | 4d | 2027-05-27 | 2027-05-31 | RHD4ENSDZ4APPPT130, RHD4ENMSPT2000, RHD4CZ4L09SW2500 SS | Skilled labor [41.06 h]; Unskilled Labor [51.73 h]; Equipment Opreator [57.83 h]; Excavator-Poclain [41.06 h]; Dump Truck [16.66 h]; HDPE (400mm Diameter) - PT - Depth: less than 1.5m [67.8 m]; HDPE (400mm Diameter) - PT - Depth: 1.51m - 2.5m [3.55 m] | 24,344.2 | L09 | Z4 | CONS | PT | Excavation | bef |
| RHD4CZ4L09PT1203 |  | Bedding works for HDPE Pipline 400 mm - (RD-L-9)-Z4-L09-PT | 4d | 2027-06-01 | 2027-06-05 | RHD4CZ4L09PT1103 | Skilled labor [27.2 h]; Unskilled Labor [75.58 h]; Plumber [10.56 h]; Equipment Opreator [65.02 h]; Excavator-Poclain [27.2 h]; Boom Truck [10.56 h]; Dump Truck [27.2 h]; HDPE (400mm Diameter) - PT - Depth: less than 1.5m [33.9 m]; HDPE (400mm Diameter) - PT - Depth: 1.51m - 2.5m [28.36 m] | 21,849.04 | L09 | Z4 | CONS | PT | Bedding | bef |
| RHD4CZ4L09PT1303 |  | Installing for HDPE Pipline 400 mm - (RD-L-9)-Z4-L09-PT | 5d | 2027-06-06 | 2027-06-10 | RHD4PRSHLDOSPT1000, RHD4PRSHLSTAGPT1000, RHD4CZ4L09PT1203 | Unskilled Labor [98.12 h]; Plumber [54.34 h]; Equipment Opreator [54.34 h]; Boom Truck [43.78 h]; Water Truck [10.56 h]; HDPE (400mm Diameter) - PT - Depth: less than 1.5m [305.11 m]; HDPE (400mm Diameter) - PT - Depth: 1.51m - 2.5m [14.18 m] | 108,898.92 | L09 | Z4 | CONS | PT | Installation | bef |
| RHD4CZ4L09PT1403 |  | Primary Test for HDPE Pipline 400 mm - (RD-L-9)-Z4-L09-PT | 3d | 2027-07-19 | 2027-07-21 | RHD4CZ4L09PT3100, RHD4CZ4L09PT1303, RHD4CZ4L09PT5100 | Skilled labor [10.56 h]; Unskilled Labor [41.71 h]; Plumber [20.58 h]; Equipment Opreator [41.71 h]; Excavator-Poclain [10.56 h]; Water Truck [20.58 h]; Dump Truck [10.56 h]; HDPE (400mm Diameter) - PT - Depth: less than 1.5m [135.61 m]; HDPE (400mm Diameter) - PT - Depth: 1.51m - 2.5m [14.18 m] | 51,268.92 | L09 | Z4 | CONS | PT | Primary Test | bef |
| RHD4CZ4L09PT1503 |  | Backfilling and warning tape works for HDPE Pipline 400 mm - (RD-L-9)-Z4-L09-PT | 4d | 2027-07-22 | 2027-07-26 | RHD4CZ4L09PT1403 | Skilled labor [35.5 h]; Unskilled Labor [71.01 h]; Equipment Opreator [71.01 h]; Excavator-Poclain [35.5 h]; Dump Truck [35.5 h]; HDPE (400mm Diameter) - PT - Depth: less than 1.5m [135.61 m]; HDPE (400mm Diameter) - PT - Depth: 1.51m - 2.5m | 46,107.4 | L09 | Z4 | CONS | PT | Backfilling | bef |
|  | 2692 | **RHD4-02-002-L09-(PT)-Gate Valves (Direct Buried)** |  | 2027-07-15 | 2027-07-29 |  |  |  |  |  |  |  |  |  |
| RHD4CZ4L09PT3100 |  | Installation for Direct Buried Gate Valves - (RD-L-9)-Z4-L09-PT | 3d | 2027-07-15 | 2027-07-18 | RHD4PRSHLDOSPT1200, RHD4PRSHLSTAGPT1200, RHD4CZ4L09PT1303 FF, RHD4CZ4L09PT1301 FF, RHD4CZ4L09PT1300 FF, RHD4CZ4L09PT1303 SS, RHD4CZ4L09PT1301 SS, RHD4CZ4L09PT1300 SS | Unskilled Labor [32.67 h]; Plumber [32.67 h]; Gate valves dia 100 mm - PT [3.6 nr]; Gate valves dia 150 mm - PT [1.8 nr] | 6,836.4 | L09 | Z4 | CONS | PT | Installation | bef |
| RHD4CZ4L09PT3200 |  | Stem and Service box for Direct Buried Gate Valves - (RD-L-9)-Z4-L09-PT | 3d | 2027-07-27 | 2027-07-29 | RHD4PRSHLDOSPT1300, RHD4PRSHLSTAGPT1300, RHD4CZ4L09PT3100, RHD4CZ4L09PT1503, RHD4CZ4L09PT1501, RHD4CZ4L09PT1500 | Unskilled Labor [32.67 h]; Plumber [32.67 h]; Gate valves dia 100 mm - PT [0.4 nr]; Gate valves dia 150 mm - PT [0.2 nr] | 759.6 | L09 | Z4 | CONS | PT | Stem and Service box | bef |
|  | 2697 | **RHD4-02-002-L09-(PT)-Air Valve Chambers** |  | 2027-06-01 | 2027-06-09 |  |  |  |  |  |  |  |  |  |
| RHD4CZ4L09PT2102 |  | Excavation and Bedding for Air Valve Chambers for Potable Water Network - (RD-L-9)-Z4-L09-PT | 2d | 2027-06-01 | 2027-06-02 | RHD4ENSDZ4APPPT130, RHD4CZ4L09PT1103 | Skilled labor [5.45 h]; Unskilled Labor [5.45 h]; Equipment Opreator [1.09 h]; Excavator-Poclain [0.54 h]; Dump Truck [0.54 h]; Air Valve chambers - PT [0.25 nr] | 1,193 | L09 | Z4 | CONS | PT | Excavation and Bedding | bef |
| RHD4CZ4L09PT2202 |  | PC works for Air Valve Chambers for Potable Water Network - (RD-L-9)-Z4-L09-PT | 2d | 2027-06-03 | 2027-06-05 | RHD4CZ4L09PT2102 | Skilled labor [5.45 h]; Unskilled Labor [10.89 h]; Equipment Opreator [0.54 h]; Concrete Pump [0.54 h]; Air Valve chambers - PT [0.1 nr] | 477.2 | L09 | Z4 | CONS | PT | PC Works | bef |
| RHD4CZ4L09PT2302 |  | Installation for Air Valve Chambers for Potable Water Network - (RD-L-9)-Z4-L09-PT | 2d | 2027-06-06 | 2027-06-07 | RHD4PRSHLDOSPT1100, RHD4PRSHLDOSPT1400, RHD4PRSHLSTAGPT1100, RHD4PRSHLSTAGPT1400, RHD4CZ4L09PT2202 | Skilled labor [5.45 h]; Unskilled Labor [10.89 h]; Equipment Opreator [1.09 h]; Boom Truck [1.09 h]; Air Valve chambers - PT [0.55 nr] | 2,624.6 | L09 | Z4 | CONS | PT | Installation | bef |
| RHD4CZ4L09PT2402 |  | Backfilling works for Air Valve Chambers for Potable Water Network - (RD-L-9)-Z4-L09-PT | 2d | 2027-06-08 | 2027-06-09 | RHD4CZ4L09PT2302 | Skilled labor [5.45 h]; Unskilled Labor [10.89 h]; Equipment Opreator [1.09 h]; Water Truck [0.54 h]; Dump Truck [0.54 h]; Air Valve chambers - PT [0.1 nr] | 477.2 | L09 | Z4 | CONS | PT | Backfilling Works | bef |
|  | 2698 | **RHD4-02-002-L09-(PT)-Air Valves** |  | 2027-06-12 | 2027-06-15 |  |  |  |  |  |  |  |  |  |
| RHD4CZ4L09PT3103 |  | Installation for Air Valves for Potable Water Network - (RD-L-9)-Z4-L09-PT | 2d | 2027-06-12 | 2027-06-13 | RHD4PRSHLDOSPT1200, RHD4PRSHLSTAGPT1200, RHD4CZ4L09PT1303 | Unskilled Labor [5.45 h]; Plumber [5.45 h]; Air valve diameter 65 mm - PT [0.9 nr] | 4,954.5 | L09 | Z4 | CONS | PT | Installation | bef |
| RHD4CZ4L09PT3203 |  | Stem and Service box for Air Valves for Potable Water Network - (RD-L-9)-Z4-L09-PT | 2d | 2027-06-14 | 2027-06-15 | RHD4PRSHLDOSPT1300, RHD4PRSHLSTAGPT1300, RHD4CZ4L09PT3103, RHD4CZ4L09PT2402 | Unskilled Labor [5.45 h]; Plumber [5.45 h]; Air valve diameter 65 mm - PT [0.1 nr] | 550.5 | L09 | Z4 | CONS | PT | Stem and Service box | bef |

| ID | WBS | Activity | Duration | Start | Finish | Predecessors | Resources | Cost | RDH4-01-001-Road and Block Names-1 | RDH4-01-001-Zones-1 | RDH4-01-001-Phases-1 | RDH4-01-001-Networks-1 | RDH4-01-001-Work Method-1 | RDH4-01-001-MENEM |
| --- | --- | --- | --- | --- | --- | --- | --- | --- | --- | --- | --- | --- | --- | --- |
|  | 2699 | **RHD4-02-002-L09-(PT)-Fire Hydrant** |  | 2027-07-27 | 2027-08-31 |  |  |  |  |  |  |  |  |  |
| RHD4CZ4L09PT4100 |  | Excavation and Bedding and Pipe Installation for Fire Hydrant - (RD-L-9)-Z4-L09-PT | 9d | 2027-07-27 | 2027-08-05 | RHD4ENSDZ4APPPT130, RHD4CZ4L09PT1503, RHD4CZ4L09PT1501, RHD4CZ4L09PT1500 | Skilled labor [98.01 h]; Unskilled Labor [98.01 h]; Plumber [98.01 h]; Equipment Opreator [49.01 h]; Excavator-Poclain [49.01 h]; 3-outlet fire hydrant (2 x 2.5 inch and 1 x 4.5 inch) in the form of a separate dry vacuum cylinder [1.8 nr] | 22,716 | L09 | Z4 | CONS | PT | Excavation | bef |
| RHD4CZ4L09PT4200 |  | Valve Installation for Fire Hydrant - (RD-L-9)-Z4-L09-PT | 6d | 2027-08-07 | 2027-08-12 | RHD4CZ4L09PT4100 | Unskilled Labor [65.34 h]; Plumber [65.34 h]; 3-outlet fire hydrant (2 x 2.5 inch and 1 x 4.5 inch) in the form of a separate dry vacuum cylinder [3.6 nr] | 45,432 | L09 | Z4 | CONS | PT | Valve | bef |
| RHD4CZ4L09PT4300 |  | Stem for Fire Hydrant - (RD-L-9)-Z4-L09-PT | 6d | 2027-08-14 | 2027-08-19 | RHD4CZ4L09PT4200 | Unskilled Labor [65.34 h]; Plumber [65.34 h]; 3-outlet fire hydrant (2 x 2.5 inch and 1 x 4.5 inch) in the form of a separate dry vacuum cylinder [5.4 nr] | 68,148 | L09 | Z4 | CONS | PT | Stem | bef |
| RHD4CZ4L09PT4400 |  | Fire Installation for Fire Hydrant - (RD-L-9)-Z4-L09-PT | 6d | 2027-08-21 | 2027-08-26 | RHD4PRSHLDOSPT1500, RHD4PRSHLSTAGPT1500, RHD4CZ4L09PT3200, RHD4CZ4L09PT4300 | Unskilled Labor [65.34 h]; Plumber [65.34 h]; Equipment Opreator [65.34 h]; Boom Truck [65.34 h]; 3-outlet fire hydrant (2 x 2.5 inch and 1 x 4.5 inch) in the form of a separate dry vacuum cylinder [6.3 nr] | 79,506 | L09 | Z4 | CONS | PT | Fire | bef |
| RHD4CZ4L09PT4500 |  | Protection Barriers for Fire Hydrant - (RD-L-9)-Z4-L09-PT | 4d | 2027-08-28 | 2027-08-31 | RHD4CZ4L09PT4400 | Unskilled Labor [39.2 h]; Plumber [39.2 h]; 3-outlet fire hydrant (2 x 2.5 inch and 1 x 4.5 inch) in the form of a separate dry vacuum cylinder [0.9 nr] | 11,358 | L09 | Z4 | CONS | PT | Protection Barriers | bef |
|  | 2700 | **RHD4-02-002-L09-(PT)-Concrete Encasement** |  | 2027-07-14 | 2027-07-18 |  |  |  |  |  |  |  |  |  |
| RHD4CZ4L09PT5100 |  | Pipe Encasement for Potable Pipelines - (RD-L-9)-Z4-L09-PT | 4d | 2027-07-14 | 2027-07-18 | RHD4CZ4L09PT1203, RHD4CZ4L09PT1201, RHD4CZ4L09PT1200, RHD4CZ4L09PT1303 FF, RHD4CZ4L09PT1301 FF, RHD4CZ4L09PT1300 FF, RHD4CZ4L09PT1303 SS, RHD4CZ4L09PT1301 SS, RHD4CZ4L09PT1300 SS | Skilled labor [33.22 h]; Unskilled Labor [33.22 h]; Equipment Opreator [36.48 h]; Concrete Mixer Truck [3.27 h]; Dump Truck [33.22 h]; Pipe Encasement - PT [15.23 m3] | 18,671.98 | L09 | Z4 | CONS | PT | Pipe Encasement | bef |
|  | 1747 | **RHD4-02-002-L09-(PT)-Butterfly Valve Chamber** |  | 2027-07-08 | 2027-07-17 |  |  |  |  |  |  |  |  |  |
| RHD4CZ4L09PT2100 |  | Excavation and Bedding for Butterfly Valve Chamber for Potable Water Network - (RD-L-9)-Z4-L09-PT | 2d | 2027-07-08 | 2027-07-10 | RHD4CZ4L09PT2101 SS | Skilled labor [5.45 h]; Unskilled Labor [5.45 h]; Equipment Opreator [1.09 h]; Excavator-Poclain [0.54 h]; Dump Truck [0.54 h]; Valve chambers - PT [0.25 nr] | 3,121 | L09 | Z4 | CONS | PT | Excavation and Bedding | bef |
| RHD4CZ4L09PT2200 |  | PC works for Butterfly Valve Chamber for Potable Water Network - (RD-L-9)-Z4-L09-PT | 2d | 2027-07-11 | 2027-07-12 | RHD4CZ4L09PT2100 | Skilled labor [5.45 h]; Unskilled Labor [10.89 h]; Equipment Opreator [0.54 h]; Concrete Pump [0.54 h]; Valve chambers - PT [0.1 nr] | 1,248.4 | L09 | Z4 | CONS | PT | PC Works | bef |
| RHD4CZ4L09PT2300 |  | Installation for Butterfly Valve Chamber for Potable Water Network - (RD-L-9)-Z4-L09-PT | 2d | 2027-07-13 | 2027-07-14 | RHD4CZ4L09PT2200 | Skilled labor [5.45 h]; Unskilled Labor [10.89 h]; Equipment Opreator [1.09 h]; Boom Truck [1.09 h]; Valve chambers - PT [0.55 nr] | 6,866.2 | L09 | Z4 | CONS | PT | Installation | bef |
| RHD4CZ4L09PT2400 |  | Backfilling works for Butterfly Valve Chamber for Potable Water Network - (RD-L-9)-Z4-L09-PT | 2d | 2027-07-15 | 2027-07-17 | RHD4CZ4L09PT2300 | Skilled labor [5.45 h]; Unskilled Labor [10.89 h]; Equipment Opreator [1.09 h]; Water Truck [0.54 h]; Dump Truck [0.54 h]; Valve chambers - PT [0.1 nr] | 1,248.4 | L09 | Z4 | CONS | PT | Backfilling Works | bef |
|  | 1748 | **RHD4-02-002-L09-(PT)-Butterfly Valves** |  | 2027-07-15 | 2027-07-19 |  |  |  |  |  |  |  |  |  |
| RHD4CZ4L09PT3101 |  | Installation for Butterfly Valves for Potable Water Network - (RD-L-9)-Z4-L09-PT | 2d | 2027-07-15 | 2027-07-17 | RHD4CZ4L09PT2300 | Unskilled Labor [5.45 h]; Plumber [5.45 h]; Butterfly valves dia 400 - PT [0.9 nr] | 27,578.7 | L09 | Z4 | CONS | PT | Installation | bef |
| RHD4CZ4L09PT3201 |  | Stem and Service box for Butterfly Valves for Potable Water Network - (RD-L-9)-Z4-L09-PT | 2d | 2027-07-18 | 2027-07-19 | RHD4CZ4L09ST2500, RHD4CZ4L09ST1502, RHD4CZ4L09PT3101, RHD4CZ4L09PT2400 | Unskilled Labor [5.45 h]; Plumber [5.45 h]; Butterfly valves dia 400 - PT [0.1 nr] | 3,064.3 | L09 | Z4 | CONS | PT | Stem and Service box | bef |
|  | 1938 | **RHD4-02-002-L09-(PT)-Wash out Valve Chambers** |  | 2027-07-08 | 2027-07-17 |  |  |  |  |  |  |  |  |  |
| RHD4CZ4L09PT2101 |  | Excavation and Bedding for Wash out Valve Chambers for Potable Water Network - (RD-L-9)-Z4-L09-PT | 2d | 2027-07-08 | 2027-07-10 | RHD4CZ4L09PT1100 | Skilled labor [5.45 h]; Unskilled Labor [5.45 h]; Equipment Opreator [1.09 h]; Excavator-Poclain [0.54 h]; Dump Truck [0.54 h]; Wash out chambers - PT [0.25 nr] | 4,686.25 | L09 | Z4 | CONS | PT | Excavation and Bedding | bef |
| RHD4CZ4L09PT2201 |  | PC works for Wash out Valve Chambers for Potable Water Network - (RD-L-9)-Z4-L09-PT | 2d | 2027-07-11 | 2027-07-12 | RHD4CZ4L09PT2101 | Skilled labor [5.45 h]; Unskilled Labor [10.89 h]; Equipment Opreator [0.54 h]; Concrete Pump [0.54 h]; Wash out chambers - PT [0.1 nr] | 1,874.5 | L09 | Z4 | CONS | PT | PC Works | bef |
| RHD4CZ4L09PT2301 |  | Installation for Wash out Valve Chambers for Potable Water Network - (RD-L-9)-Z4-L09-PT | 2d | 2027-07-13 | 2027-07-14 | RHD4CZ4L09PT2201 | Skilled labor [5.45 h]; Unskilled Labor [10.89 h]; Equipment Opreator [1.09 h]; Boom Truck [1.09 h]; Wash out chambers - PT [0.55 nr] | 10,309.75 | L09 | Z4 | CONS | PT | Installation | bef |
| RHD4CZ4L09PT2401 |  | Backfilling works for Wash out Valve Chambers for Potable Water Network - (RD-L-9)-Z4-L09-PT | 2d | 2027-07-15 | 2027-07-17 | RHD4CZ4L09PT2301 | Skilled labor [5.45 h]; Unskilled Labor [10.89 h]; Equipment Opreator [1.09 h]; Water Truck [0.54 h]; Dump Truck [0.54 h]; Wash out chambers - PT [0.1 nr] | 1,874.5 | L09 | Z4 | CONS | PT | Backfilling Works | bef |
|  | 2701 | **RHD4-02-002-Z4-L09-Irrigation Network - IRR** |  | 2027-07-06 | 2027-08-11 |  |  |  |  |  |  |  |  |  |
|  | 2702 | **RHD4-02-002-L09-(IRR)-HDPE Pipes - 160 mm diameter** |  | 2027-07-06 | 2027-08-11 |  |  |  |  |  |  |  |  |  |
| RHD4CZ4L09IRR1100 |  | Excavation works for HDPE Pipline 160 mm - (RD-L-9)-Z4-L09-IRR | 7d | 2027-07-06 | 2027-07-13 | RHD4ENSDZ4APPIRR140, RHD4ENMSRR2000, RHD4CZ4L09ST2500, RHD4CZ4L09PT1101 SS | Skilled labor [110.54 h]; Unskilled Labor [110.54 h]; Equipment Opreator [132.54 h]; Excavator-Poclain [110.54 h]; Dump Truck [22.11 h]; HDPE (160mm Diameter) - TSE - Depth: less than 1.5m [144.11 m]; HDPE (160mm Diameter) - TSE - Depth: more than 1.51m [12.11 m] | 19,553.77 | L09 | Z4 | CONS | IRR | Excavation | bef |
| RHD4CZ4L09IRR1200 |  | Bedding works for HDPE Pipline 160 mm - (RD-L-9)-Z4-L09-IRR | 7d | 2027-07-14 | 2027-07-21 | RHD4CZ4L09IRR1100 | Skilled labor [84.29 h]; Unskilled Labor [168.69 h]; Equipment Opreator [168.69 h]; Excavator-Poclain [84.29 h]; Dump Truck [84.29 h]; HDPE (160mm Diameter) - TSE - Depth: less than 1.5m [72.05 m]; HDPE (160mm Diameter) - TSE - Depth: more than 1.51m [4.04 m] | 9,472.62 | L09 | Z4 | CONS | IRR | Bedding | bef |
| RHD4CZ4L09IRR1300 |  | Installing for HDPE Pipline 160 mm - (RD-L-9)-Z4-L09-IRR | 7d | 2027-07-22 | 2027-07-29 | RHD4PRSHLDOSIRR1000, RHD4PRSHLSTAGIRR1000, RHD4CZ4L09IRR1200 | Unskilled Labor [220.97 h]; Plumber [110.54 h]; Equipment Opreator [110.54 h]; Boom Truck [110.54 h]; HDPE (160mm Diameter) - TSE - Depth: less than 1.5m [648.48 m]; HDPE (160mm Diameter) - TSE - Depth: more than 1.51m [32.28 m] | 84,637.5 | L09 | Z4 | CONS | IRR | Installation | bef |
| RHD4CZ4L09IRR1400 |  | Primary Test for HDPE Pipline 160 mm - (RD-L-9)-Z4-L09-IRR | 4d | 2027-07-31 | 2027-08-03 | RHD4CZ4L09IRR1300 | Unskilled Labor [34.3 h]; Plumber [34.3 h]; Equipment Opreator [34.3 h]; Water Truck [34.3 h]; HDPE (160mm Diameter) - TSE - Depth: less than 1.5m [288.21 m]; HDPE (160mm Diameter) - TSE - Depth: more than 1.51m [16.14 m] | 37,887.46 | L09 | Z4 | CONS | IRR | Primary Test | bef |
| RHD4CZ4L09IRR1500 |  | Backfilling and warning tape works for HDPE Pipline 160 mm - (RD-L-9)-Z4-L09-IRR | 7d | 2027-08-04 | 2027-08-11 | RHD4CZ4L09IRR1400 | Skilled labor [84.29 h]; Unskilled Labor [168.69 h]; Equipment Opreator [168.69 h]; Excavator-Poclain [84.29 h]; Dump Truck [84.29 h]; HDPE (160mm Diameter) - TSE - Depth: less than 1.5m [288.21 m]; HDPE (160mm Diameter) - TSE - Depth: more than 1.51m [16.14 m] | 37,887.46 | L09 | Z4 | CONS | IRR | Backfilling | bef |

| ID | WBS | Activity | Duration | Start | Finish | Predecessors | Resources | Cost | RDH4-01-001-Road and Block Names-1 | RDH4-01-001-Zones-1 | RDH4-01-001-Phases-1 | RDH4-01-001-Networks-1 | RDH4-01-001-Work Method-1 | RDH4-01-001-MENEM |
| --- | --- | --- | --- | --- | --- | --- | --- | --- | --- | --- | --- | --- | --- | --- |
|  | 2704 | **RHD4-02-002-L09-(IRR)-HDPE Pipes - 200 mm diameter** |  |  |  |  |  |  |  |  |  |  |  |  |
|  | 2710 | **RHD4-02-002-L09-(IRR)-Gate Valves (Direct Buried)** |  | 2027-07-26 | 2027-08-03 |  |  |  |  |  |  |  |  |  |
| RHD4CZ4L09IRR3100 |  | Installation for Direct Buried Gate Valves - (RD-L-9)-Z4-L09-IRR | 4d | 2027-07-26 | 2027-07-29 | RHD4PRSHLDOSIRR1100, RHD4PRSHLSTAGIRR1100, RHD4CZ4L09IRR1300 SS, RHD4CZ4L09IRR1300 FF | Unskilled Labor [43.56 h]; Plumber [43.56 h]; Gate valves dia 100 mm - TSE [7.2 nr] | 11,376 | L09 | Z4 | CONS | IRR | Installation | bef |
| RHD4CZ4L09IRR3200 |  | Stem and Service box for Direct Buried Gate Valves - (RD-L-9)-Z4-L09-IRR | 4d | 2027-07-31 | 2027-08-03 | RHD4PRSHLDOSIRR1300, RHD4PRSHLSTAGIRR1300, RHD4CZ4L09IRR3100 | Unskilled Labor [43.56 h]; Plumber [43.56 h]; Gate valves dia 100 mm - TSE [0.8 nr] | 1,264 | L09 | Z4 | CONS | IRR | Stem and Service box | bef |
|  | 2713 | **RHD4-02-002-L09-(IRR)-Wash out Chamber** |  | 2027-07-31 | 2027-08-08 |  |  |  |  |  |  |  |  |  |
| RHD4CZ4L09IRR2101 |  | Excavation and Bedding for Wash out Chamber for Irrigation Network - (RD-L-9)-Z4-L09-IRR | 2d | 2027-07-31 | 2027-08-01 | RHD4CZ4L09IRR1300, RHD4ENSDZ4APPIRR140 | Skilled labor [16.34 h]; Unskilled Labor [16.34 h]; Equipment Opreator [3.27 h]; Excavator-Poclain [1.6 h]; Dump Truck [1.6 h]; Wash out chambers - TSE [0.75 nr] | 14,058.75 | L09 | Z4 | CONS | IRR | Excavation and Bedding | bef |
| RHD4CZ4L09IRR2201 |  | PC works for Wash out Chamber for Irrigation Network - (RD-L-9)-Z4-L09-IRR | 2d | 2027-08-02 | 2027-08-03 | RHD4CZ4L09IRR2101 | Skilled labor [16.34 h]; Unskilled Labor [32.67 h]; Equipment Opreator [1.6 h]; Concrete Pump [1.6 h]; Wash out chambers - TSE [0.3 nr] | 5,623.5 | L09 | Z4 | CONS | IRR | PC Works | bef |
| RHD4CZ4L09IRR2301 |  | Installation for Wash out Chamber for Irrigation Network - (RD-L-9)-Z4-L09-IRR | 2d | 2027-08-04 | 2027-08-05 | RHD4PRSHLDOSIRR1200, RHD4PRSHLDOSIRR1400, RHD4PRSHLSTAGIRR1200, RHD4PRSHLSTAGIRR1400, RHD4CZ4L09IRR2201 | Skilled labor [16.34 h]; Unskilled Labor [32.67 h]; Equipment Opreator [3.27 h]; Boom Truck [3.27 h]; Wash out chambers - TSE [1.65 nr] | 30,929.25 | L09 | Z4 | CONS | IRR | Installation | bef |
| RHD4CZ4L09IRR2401 |  | Backfilling works for Wash out Chamber for Irrigation Network - (RD-L-9)-Z4-L09-IRR | 2d | 2027-08-07 | 2027-08-08 | RHD4CZ4L09IRR2301 | Skilled labor [16.34 h]; Unskilled Labor [32.67 h]; Equipment Opreator [3.27 h]; Water Truck [1.6 h]; Dump Truck [1.6 h]; Wash out chambers - TSE [0.3 nr] | 5,623.5 | L09 | Z4 | CONS | IRR | Backfilling Works | bef |
|  | 2714 | **RHD4-02-002-L09-(IRR)-Wash out Valves** |  | 2027-08-07 | 2027-08-10 |  |  |  |  |  |  |  |  |  |
| RHD4CZ4L09IRR3102 |  | Installation for Wash out Valve for Irrigation Network - (RD-L-9)-Z4-L09-IRR | 2d | 2027-08-07 | 2027-08-08 | RHD4PRSHLDOSIRR1100, RHD4PRSHLSTAGIRR1100, RHD4CZ4L09IRR2301 | Unskilled Labor [16.34 h]; Plumber [16.34 h]; Wash out valve diameter 100 mm - TSE [2.7 nr] | 10,119.6 | L09 | Z4 | CONS | IRR | Installation | bef |
| RHD4CZ4L09IRR3202 |  | Stem and Service box for Wash out Valve for Irrigation Network - (RD-L-9)-Z4-L09-IRR | 2d | 2027-08-09 | 2027-08-10 | RHD4PRSHLDOSIRR1300, RHD4PRSHLSTAGIRR1300, RHD4CZ4L09IRR3102, RHD4CZ4L09IRR2401 | Unskilled Labor [16.34 h]; Plumber [16.34 h]; Wash out valve diameter 100 mm - TSE [0.3 nr] | 1,124.4 | L09 | Z4 | CONS | IRR | Stem and Service box | bef |
|  | 2735 | **RHD4-02-002-Z4-L09-Medium Voltage Network - MV** |  | 2027-06-17 | 2027-08-21 |  |  |  |  |  |  |  |  |  |
|  | 2736 | **RHD4-02-002-L09-(MV)-Medium Voltage cable trench** |  | 2027-06-17 | 2027-07-21 |  |  |  |  |  |  |  |  |  |
| RHD4CZ4L09MV1100 |  | Excavation for Medium Voltage Trench - (RD-L-9)-Z4-L09-MV | 6d | 2027-06-17 | 2027-06-23 | RHD4ENSDZ4APPMV150, RHD4CZ4L09RD3100, RHD4CZ4L014MV1100 | Skilled labor [55.43 h]; Unskilled Labor [110.75 h]; Equipment Opreator [166.19 h]; Excavator-Poclain [55.43 h]; Dump Truck [110.75 h]; Excavation for Trench size 60cm wide and 80cm deep ( for 2 cables) [347.32 m3]; Excavation for Trench size 120cm wide and 80cm deep (for 4 cables) [898.77 m3] | 12,460.95 | L09 | Z4 | CONS | MV | Excavation | AFT |
| RHD4CZ4L09MV1200 |  | Trench Backfilling for Medium Voltage Network - (RD-L-9)-Z4-L09-MV | 6d | 2027-07-15 | 2027-07-21 | RHD4CZ4L09MV3200, RHD4CZ4L09MV3101 | Skilled labor [55.43 h]; Unskilled Labor [55.43 h]; Equipment Opreator [110.75 h]; Dump Truck [110.75 h]; Excavation for Trench size 60cm wide and 80cm deep ( for 2 cables) [148.85 m3]; Excavation for Trench size 120cm wide and 80cm deep (for 4 cables) [385.19 m3] | 5,340.41 | L09 | Z4 | CONS | MV | Backfilling | AFT |
|  | 2738 | **RHD4-02-002-L09-(MV)-Medium Voltage cables 3Cx 500 mm²** |  | 2027-06-24 | 2027-08-08 |  |  |  |  |  |  |  |  |  |
| RHD4CZ4L09MV3100 |  | Installation of Medium Voltage Cables 3Cx 500 mm² - (RD-L-9)-Z4-L09-MV | 13d | 2027-06-24 | 2027-07-08 | RHD4PRSHLDOSMV1100, RHD4ENMSMV2000, RHD4CZ4L09ST2100, RHD4ENMSMV2010, RHD4PRSHLSTAGMV1100, RHD4CZ4L09MV1100 | Skilled labor [138.74 h]; Unskilled Labor [554.86 h]; Electrician [277.38 h]; Equipment Opreator [416.12 h]; Boom Truck [138.74 h]; Cable Laying Machine [277.38 h]; Cable 13.8 kV 3Cx 500 mm² Al/XLPE,/LLDPE / Unarmored [5731.38 m] | 911,289.13 | L09 | Z4 | CONS | MV | Installation | AFT |
| RHD4CZ4L09MV3200 |  | Joints Installation of Medium Voltage Cables 3Cx 500 mm² - (RD-L-9)-Z4-L09-MV | 5d | 2027-07-10 | 2027-07-14 | RHD4PRSHLDOSMV1300, RHD4PRSHLSTAGMV1300, RHD4CZ4L09MV3100 | Skilled labor [49.01 h]; Unskilled Labor [196 h]; Electrician [98.01 h]; Equipment Opreator [49.01 h]; Boom Truck [49.01 h]; Straight joints cables for 13.8 kv 3Cx 500 mm², Al /XLPE/LLDPE [9 Unit] | 29,232 | L09 | Z4 | CONS | MV | Joints Installation | AFT |
| RHD4CZ4L09MV3300 |  | Testing of Medium Voltage Cables 3Cx 500 mm² - (RD-L-9)-Z4-L09-MV | 13d | 2027-07-22 | 2027-08-05 | RHD4CZ4L09MV3200, RHD4CZ4L09MV1200, RHD4CZ4L09MV4200 | Skilled labor [138.74 h]; Unskilled Labor [554.86 h]; Electrician [277.38 h]; Cable 13.8 kV 3Cx 500 mm² Al/XLPE,/LLDPE / Unarmored [636.82 m] | 101,254.35 | L09 | Z4 | CONS | MV | Testing | AFT |
| RHD4CZ4L09MV3400 |  | Termination of Medium Voltage Cables 3Cx 500 mm² - (RD-L-9)-Z4-L09-MV | 2d | 2027-08-07 | 2027-08-08 | RHD4CZ4L09MV3300 | Unskilled Labor [4.57 h]; Electrician [4.57 h]; Cable Termination for 13.8 kv 3Cx 500 mm², Al /XLPE/LLDPE [20.8 Unit] | 54,808 | L09 | Z4 | CONS | MV | Termination | AFT |
|  | 2739 | **RHD4-02-002-L09-(MV)-Medium Voltage cables 3Cx 50 mm²** |  | 2027-06-24 | 2027-07-26 |  |  |  |  |  |  |  |  |  |
| RHD4CZ4L09MV3101 |  | Installation of Medium Voltage Cables 3Cx 50 mm² - (RD-L-9)-Z4-L09-MV | 2d | 2027-06-24 | 2027-06-26 | RHD4PRSHLDOSMV1200, RHD4ENMSMV2000, RHD4ENMSMV2010, RHD4PRSHLSTAGMV1200, RHD4CZ4L09MV1100 | Unskilled Labor [3.48 h]; Electrician [1.74 h]; Equipment Opreator [2.61 h]; Boom Truck [0.87 h]; Cable Laying Machine [1.74 h]; Single Core Copper Cable 13.8 kV 3Cx 50 mm² Cu/XLPE/PVC / Unarmored [7.2 m] | 806.4 | L09 | Z4 | CONS | MV | Installation | AFT |
| RHD4CZ4L09MV3301 |  | Testing of Medium Voltage Cables 3Cx 50 mm² - (RD-L-9)-Z4-L09-MV | 2d | 2027-07-22 | 2027-07-24 | RHD4CZ4L09MV3101, RHD4CZ4L09MV1200 | Unskilled Labor [0.65 h]; Electrician [0.33 h]; Single Core Copper Cable 13.8 kV 3Cx 50 mm² Cu/XLPE/PVC / Unarmored [0.8 m] | 89.6 | L09 | Z4 | CONS | MV | Testing | AFT |
| RHD4CZ4L09MV3401 |  | Termination of Medium Voltage Cables 3Cx 50 mm² - (RD-L-9)-Z4-L09-MV | 2d | 2027-07-25 | 2027-07-26 | RHD4CZ4L09MV3301 | Unskilled Labor [75.47 h]; Electrician [37.79 h]; Cable Termination for 13.8 kv 3Cx 500 mm², Al /XLPE/LLDPE [5.2 Unit] | 13,702 | L09 | Z4 | CONS | MV | Termination | AFT |

| ID | WBS | Activity | Duration | Start | Finish | Predecessors | Resources | Cost | RDH4-01-001-Road and Block Names-1 | RDH4-01-001-Zones-1 | RDH4-01-001-Phases-1 | RDH4-01-001-Networks-1 | RDH4-01-001-Work Method-1 | RDH4-01-001-MENEM |
| --- | --- | --- | --- | --- | --- | --- | --- | --- | --- | --- | --- | --- | --- | --- |
|  | 2740 | **RHD4-02-002-L09-(MV)-Normally open Point (Outdoor Type)** |  | 2027-07-07 | 2027-07-11 |  |  |  |  |  |  |  |  |  |
| RHD4CZ4L09MV4100 |  | Installation for Normally open Point - (RD-L-9)-Z4-L09-MV | 2d | 2027-07-07 | 2027-07-08 | RHD4PRSHLDOSMV1400, RHD4PRSHLSTAGMV1400, RHD4CZ4L09MV3101 SS, RHD4CZ4L09MV3100 FF | Unskilled Labor [0.11 h]; Equipment Opreator [0.22 h]; Excavator-Poclain [0.11 h]; Dump Truck [0.11 h]; Normally Open Point 13.8 KV Outdoor type [0.9 Unit] | 77,219.1 | L09 | Z4 | CONS | MV | Installation | AFT |
| RHD4CZ4L09MV4200 |  | Termination for Normally open Point - (RD-L-9)-Z4-L09-MV | 2d | 2027-07-10 | 2027-07-11 | RHD4CZ4L09MV4100 | Unskilled Labor [3.59 h]; Equipment Opreator [7.3 h]; Excavator-Poclain [3.59 h]; Dump Truck [3.59 h]; Normally Open Point 13.8 KV Outdoor type [0.1 Unit] | 8,579.9 | L09 | Z4 | CONS | MV | Termination | AFT |
|  | 2741 | **RHD4-02-002-L09-(MV)-Unit Substations** |  | 2027-07-22 | 2027-08-21 |  |  |  |  |  |  |  |  |  |
| RHD4CZ4L09MV5100 |  | Excavation for Unit Substations for Medium Voltage Network - (RD-L-9)-Z4-L09-MV | 4d | 2027-07-22 | 2027-07-26 | RHD4ENSDZ4APPMV150, RHD4CZ4L09MV1200 | Skilled labor [43.56 h]; Unskilled Labor [43.56 h]; Equipment Opreator [87.12 h]; Excavator-Poclain [43.56 h]; Dump Truck [43.56 h]; Unit Substation 13.8/0.4 K V, 500kVA ,Including concrete foundations and fencing, According to the specifications and standards of SEC [0.2 Unit]; Ring Main Unit RMU, 13.8KV, According to the specifications and standards of SEC [0.2 Unit] | 24,514 | L09 | Z4 | CONS | MV | Excavation | AFT |
| RHD4CZ4L09MV5200 |  | Concrete Base Placement for Unit Substations for Medium Voltage Network - (RD-L-9)-Z4-L09-MV | 4d | 2027-07-27 | 2027-07-31 | RHD4CZ4L09MV5100 | Skilled labor [43.56 h]; Unskilled Labor [43.56 h]; Equipment Opreator [43.56 h]; Boom Truck [43.56 h]; Unit Substation 13.8/0.4 K V, 500kVA ,Including concrete foundations and fencing, According to the specifications and standards of SEC [0.3 Unit]; Ring Main Unit RMU, 13.8KV, According to the specifications and standards of SEC [0.3 Unit] | 36,771 | L09 | Z4 | CONS | MV | Concrete Base Placement | AFT |
| RHD4CZ4L09MV5300 |  | Installation for Fences and doors for Medium Voltage Network - (RD-L-9)-Z4-L09-MV | 10d | 2027-08-01 | 2027-08-11 | RHD4CZ4L09MV5200 | Skilled labor [108.9 h]; Unskilled Labor [108.9 h]; Equipment Opreator [130.68 h]; Excavator-Poclain [21.78 h]; Boom Truck [108.9 h]; Unit Substation 13.8/0.4 K V, 500kVA ,Including concrete foundations and fencing, According to the specifications and standards of SEC [0.2 Unit]; Ring Main Unit RMU, 13.8KV, According to the specifications and standards of SEC [0.2 Unit] | 24,514 | L09 | Z4 | CONS | MV | Fence Installation | AFT |
| RHD4CZ4L09MV5400 |  | Installation for Unit Substations for Medium Voltage Network - (RD-L-9)-Z4-L09-MV | 8d | 2027-08-12 | 2027-08-21 | RHD4CZ4L09MV3301, RHD4CZ4L09MV5300 | Skilled labor [87.12 h]; Unskilled Labor [174.25 h]; Electrician [174.25 h]; Unit Substation 13.8/0.4 K V, 500kVA ,Including concrete foundations and fencing, According to the specifications and standards of SEC [1.3 Unit]; Ring Main Unit RMU, 13.8KV, According to the specifications and standards of SEC [1.3 Unit] | 159,341 | L09 | Z4 | CONS | MV | Substation Installation | AFT |
|  | 2742 | **RHD4-02-002-Z4-L09-Low Voltage Network - LV** |  | 2027-07-14 | 2027-10-07 |  |  |  |  |  |  |  |  |  |
|  | 2743 | **RHD4-02-002-L09-(LV)-Low Voltage duct banks** |  | 2027-07-14 | 2027-07-22 |  |  |  |  |  |  |  |  |  |
| RHD4CZ4L09LV2100 |  | Excavation of Duct Banks for Low Voltage Network - (RD-L-9)-Z4-L09-LV | 2d | 2027-07-14 | 2027-07-15 | RHD4CZ4L09RW4000, RHD4ENSDZ4APPLV160, RHD4CZ4L09IRR1100 | Skilled labor [11.87 h]; Unskilled Labor [11.87 h]; Equipment Opreator [23.74 h]; Excavator-Poclain [11.87 h]; Dump Truck [11.87 h]; Duct bank for LV cables UPVC (2xø110mm) [1.63 m] | 329.26 | L09 | Z4 | CONS | LV | Excavation | bef |
| RHD4CZ4L09LV2200 |  | Installation of Duct Banks for Low Voltage Network - (RD-L-9)-Z4-L09-LV | 2d | 2027-07-17 | 2027-07-18 | RHD4PRSHLDOSLV1000, RHD4PRSHLSTAGLV1000, RHD4CZ4L09LV2100 | Carpenter [1.74 h]; Skilled labor [17.75 h]; Unskilled Labor [17.75 h]; Steel Fixer [1.74 h]; Duct bank for LV cables UPVC (2xø110mm) [1.63 m] | 329.26 | L09 | Z4 | CONS | LV | Installing | bef |
| RHD4CZ4L09LV2300 |  | Pouring of Duct Banks for Low Voltage Network - (RD-L-9)-Z4-L09-LV | 2d | 2027-07-19 | 2027-07-20 | RHD4CZ4L09LV2200 | Skilled labor [11.87 h]; Unskilled Labor [11.87 h]; Equipment Opreator [4.8 h]; Concrete Mixer Truck [2.4 h]; Concrete Pump [2.4 h]; Duct bank for LV cables UPVC (2xø110mm) [10.62 m] | 2,145.24 | L09 | Z4 | CONS | LV | Pouring | bef |
| RHD4CZ4L09LV2400 |  | Backfilling of Duct Banks for Low Voltage Network - (RD-L-9)-Z4-L09-LV | 2d | 2027-07-21 | 2027-07-22 | RHD4CZ4L09LV2300 | Skilled labor [8.93 h]; Unskilled Labor [8.93 h]; Equipment Opreator [3.59 h]; Excavator-Poclain [3.59 h]; Duct bank for LV cables UPVC (2xø110mm) [2.45 m] | 494.9 | L09 | Z4 | CONS | LV | Backfilling | bef |
|  | 2745 | **RHD4-02-002-L09-(LV)-Low Voltage cables** |  | 2027-09-21 | 2027-09-30 |  |  |  |  |  |  |  |  |  |
| RHD4CZ4L09LV3100 |  | Excavation for Low Voltage Cables for Low Voltage Network - (RD-L-9)-Z4-L09-LV | 2d | 2027-09-21 | 2027-09-22 | RHD4CZ4L09MV1200, RHD4ENSDZ4APPLV160, RHD4CZ4L09SL3300, RHD4CZ4L09MV3401, RHD4CZ4L09MV3400, RHD4CZ4L09LV2400 | Skilled labor [4.14 h]; Unskilled Labor [8.17 h]; Equipment Opreator [8.17 h]; Excavator-Poclain [4.14 h]; Boom Truck [4.14 h]; Cable, Copper 4x185mm2/ CU/XLPE/PVC [16.92 m]; Cable, Copper 4x50mm2/ CU/XLPE/PVC +1x25mm2 CU/PVC [1.9 m] | 6,764.97 | L09 | Z4 | CONS | LV | Excavation | AFT |
| RHD4CZ4L09LV3200 |  | Cable Laying of Low Voltage Cables for Low Voltage Network - (RD-L-9)-Z4-L09-LV | 2d | 2027-09-25 | 2027-09-26 | RHD4PRSHLDOSLV1100, RHD4ENMSLV2000, RHD4ENMSLV2010, RHD4PRSHLSTAGLV1100, RHD4CZ4L09LV3100 | Skilled labor [3.38 h]; Unskilled Labor [13.6 h]; Electrician [6.86 h]; Equipment Opreator [10.24 h]; Boom Truck [3.38 h]; Cable Laying Machine [6.86 h]; Cable, Copper 4x185mm2/ CU/XLPE/PVC [50.76 m]; Cable, Copper 4x50mm2/ CU/XLPE/PVC +1x25mm2 CU/PVC [5.69 m] | 20,293.52 | L09 | Z4 | CONS | LV | Cable Laying | AFT |
| RHD4CZ4L09LV3300 |  | Warning tape and Backfill for Low Voltage Cables for Low Voltage Network - (RD-L-9)-Z4-L09-LV | 2d | 2027-09-27 | 2027-09-28 | RHD4CZ4L09LV3200 | Skilled labor [3.38 h]; Unskilled Labor [13.6 h]; Electrician [6.86 h]; Equipment Opreator [3.38 h]; Boom Truck [3.38 h]; Cable, Copper 4x185mm2/ CU/XLPE/PVC [12.69 m]; Cable, Copper 4x50mm2/ CU/XLPE/PVC +1x25mm2 CU/PVC [1.42 m] | 5,073.38 | L09 | Z4 | CONS | LV | Warning tape and Backfill | AFT |
| RHD4CZ4L09LV3400 |  | Testing of Low Voltage Cables for Low Voltage Network - (RD-L-9)-Z4-L09-LV | 2d | 2027-09-29 | 2027-09-30 | RHD4CZ4L09LV3300 | Skilled labor [2.07 h]; Unskilled Labor [8.17 h]; Electrician [4.14 h]; Equipment Opreator [2.07 h]; Boom Truck [2.07 h]; Cable, Copper 4x185mm2/ CU/XLPE/PVC [4.23 m]; Cable, Copper 4x50mm2/ CU/XLPE/PVC +1x25mm2 CU/PVC [0.47 m] | 1,691.13 | L09 | Z4 | CONS | LV | Testing | AFT |
|  | 2746 | **RHD4-02-002-L09-(LV)-Low Voltage Distribution Pillars** |  | 2027-10-02 | 2027-10-07 |  |  |  |  |  |  |  |  |  |
| RHD4CZ4L09LV4100 |  | Leveling for Distribution Pillars for Low Voltage Network - (RD-L-9)-Z4-L09-LV | 2d | 2027-10-02 | 2027-10-03 | RHD4CZ4L09LV3400, RHD4CZ4L09LV3300 | Skilled labor [21.78 h]; Unskilled Labor [43.56 h]; Equipment Opreator [8.71 h]; Excavator-Poclain [4.36 h]; Boom Truck [4.36 h]; 0.6/1 KV Low Voltage Distribution Pillars with main breaker MCCB type and 5 Outgoing feeders MCCB type [0.15 Unit]; 0.6/1 KV Low Voltage Distribution Panels for Industrial UPS - Cameras [0.15 Unit]; Supply and installation of KWH meter mounting frame including concrete block wall for installation of KWH meter according to the standards and specifications of SEC [0.3 Unit] | 5,993.7 | L09 | Z4 | CONS | LV | Leveling | AFT |
| RHD4CZ4L09LV4200 |  | Lean Concrete for Distribution Pillars for Low Voltage Network - (RD-L-9)-Z4-L09-LV | 2d | 2027-10-04 | 2027-10-05 | RHD4CZ4L09LV4100 | Skilled labor [14.48 h]; Unskilled Labor [29.08 h]; Equipment Opreator [5.77 h]; Concrete Mixer Truck [2.94 h]; Concrete Pump [2.94 h]; 0.6/1 KV Low Voltage Distribution Pillars with main breaker MCCB type and 5 Outgoing feeders MCCB type [0.25 Unit]; 0.6/1 KV Low Voltage Distribution Panels for Industrial UPS - Cameras [0.25 Unit]; Supply and installation of KWH meter mounting frame including concrete block wall for installation of KWH meter according to the standards and specifications of SEC [0.5 Unit] | 9,989.5 | L09 | Z4 | CONS | LV | Lean Concrete | AFT |
| RHD4CZ4L09LV4300 |  | Installation of Distribution Pillars for Low Voltage Network - (RD-L-9)-Z4-L09-LV | 2d | 2027-10-06 | 2027-10-07 | RHD4PRSHLDOSLV1200, RHD4PRSHLDOSLV1300, RHD4PRSHLSTAGLV1200, RHD4PRSHLSTAGLV1300, RHD4CZ4L09LV4200 | Skilled labor [21.78 h]; Unskilled Labor [87.12 h]; Electrician [43.56 h]; Equipment Opreator [21.78 h]; Boom Truck [21.78 h]; 0.6/1 KV Low Voltage Distribution Pillars with main breaker MCCB type and 5 Outgoing feeders MCCB type [0.6 Unit]; 0.6/1 KV Low Voltage Distribution Panels for Industrial UPS - Cameras [0.6 Unit]; Supply and installation of KWH meter mounting frame including concrete block wall for installation of KWH meter according to the standards and specifications of SEC [1.2 Unit] | 23,974.8 | L09 | Z4 | CONS | LV | Installation | AFT |
|  | 2747 | **RHD4-02-002-L09-(LV)-Low Voltage Distribution Pillars Earthing** |  |  |  |  |  |  |  |  |  |  |  |  |
|  | 2748 | **RHD4-02-002-Z4-L09-Street Lighting Network - SL** |  | 2027-07-14 | 2027-10-25 |  |  |  |  |  |  |  |  |  |
|  | 2749 | **RHD4-02-002-L09-(SL)-Street Lighting duct banks** |  | 2027-07-14 | 2027-07-27 |  |  |  |  |  |  |  |  |  |
| RHD4CZ4L09SL2100 |  | Excavation of Duct Banks for Street Lighting Network - (RD-L-9)-Z4-L09-SL | 3d | 2027-07-14 | 2027-07-17 | RHD4ENSDZ4APPSL170, RHD4CZ4L09LV2100 SS | Skilled labor [27.44 h]; Unskilled Labor [27.44 h]; Equipment Opreator [54.89 h]; Excavator-Poclain [27.44 h]; Dump Truck [27.44 h]; Road Crossing Duct for Street Lighting cables UPVC (2x?110mm) [3.78 m] | 763.87 | L09 | Z4 | CONS | SL | Excavation | bef |
| RHD4CZ4L09SL2200 |  | Installation of Duct Banks for Street Lighting Network - (RD-L-9)-Z4-L09-SL | 4d | 2027-07-18 | 2027-07-21 | RHD4PRSHLDOSSL1000, RHD4PRSHLSTAGSL1000, RHD4CZ4L09SL2100 | Carpenter [4.14 h]; Skilled labor [41.17 h]; Unskilled Labor [41.17 h]; Steel Fixer [4.14 h]; Road Crossing Duct for Street Lighting cables UPVC (2x?110mm) [3.78 m] | 763.87 | L09 | Z4 | CONS | SL | Installing | bef |
| RHD4CZ4L09SL2300 |  | Pouring of Duct Banks for Street Lighting Network - (RD-L-9)-Z4-L09-SL | 3d | 2027-07-22 | 2027-07-25 | RHD4CZ4L09SL2200, RHD4CZ4L09LV2300 | Skilled labor [27.44 h]; Unskilled Labor [27.44 h]; Equipment Opreator [11 h]; Concrete Mixer Truck [5.45 h]; Concrete Pump [5.45 h]; Road Crossing Duct for Street Lighting cables UPVC (2x?110mm) [24.58 m] | 4,965.18 | L09 | Z4 | CONS | SL | Pouring | bef |
| RHD4CZ4L09SL2400 |  | Backfilling of Duct Banks for Street Lighting Network - (RD-L-9)-Z4-L09-SL | 2d | 2027-07-26 | 2027-07-27 | RHD4CZ4L09SL2300, RHD4CZ4L09LV2400 | Skilled labor [20.58 h]; Unskilled Labor [20.58 h]; Equipment Opreator [8.28 h]; Excavator-Poclain [8.28 h]; Road Crossing Duct for Street Lighting cables UPVC (2x?110mm) [5.67 m] | 1,145.81 | L09 | Z4 | CONS | SL | Backfilling | bef |

| ID | WBS | Activity | Duration | Start | Finish | Predecessors | Resources | Cost | RDH4-01-001-Road and Block Names-1 | RDH4-01-001-Zones-1 | RDH4-01-001-Phases-1 | RDH4-01-001-Networks-1 | RDH4-01-001-Work Method-1 | RDH4-01-001-MENEM |
| --- | --- | --- | --- | --- | --- | --- | --- | --- | --- | --- | --- | --- | --- | --- |
|  | 2750 | **RHD4-02-002-L09-(SL)-Street Lighting Drawpit** |  | 2027-07-22 | 2027-07-26 |  |  |  |  |  |  |  |  |  |
| RHD4CZ4L09SL5100 |  | Excavation of Drawpit size 600x600x900mm for Street Lighting Network - (RD-L-9)-Z4-L09-SL | 2d | 2027-07-22 | 2027-07-24 | RHD4ENSDZ4APPSL170, RHD4CZ4L09MV1200 | Skilled labor [3.59 h]; Unskilled Labor [3.59 h]; Equipment Opreator [2.94 h]; Excavator-Poclain [1.42 h]; Dump Truck [1.42 h]; Drawpit with medium duty steel cover, size600x600x900mm, [0.6 Unit] | 1,470.6 | L09 | Z4 | CONS | SL | Excavation | AFT |
| RHD4CZ4L09SL5200 |  | Installation of Drawpit size 600x600x900mm for Street Lighting Network - (RD-L-9)-Z4-L09-SL | 2d | 2027-07-25 | 2027-07-26 | RHD4PRSHLDOSSL1400, RHD4PRSHLSTAGSL1400, RHD4CZ4L09PT3201, RHD4CZ4L09SL5100 | Skilled labor [3.59 h]; Unskilled Labor [3.59 h]; Equipment Opreator [1.42 h]; Boom Truck [1.42 h]; Drawpit with medium duty steel cover, size600x600x900mm, [3.4 Unit] | 8,333.4 | L09 | Z4 | CONS | SL | Installation | AFT |
|  | 2751 | **RHD4-02-002-L09-(SL)-Street Lighting cables** |  | 2027-08-18 | 2027-10-07 |  |  |  |  |  |  |  |  |  |
| RHD4CZ4L09SL3100 |  | Excavation for Street Lighting Cables for Street Lighting Network - (RD-L-9)-Z4-L09-SL | 11d | 2027-08-18 | 2027-08-30 | RHD4ENSDZ4APPSL170, RHD4CZ4L09SL1300 | Skilled labor [116.85 h]; Unskilled Labor [233.6 h]; Equipment Opreator [233.6 h]; Excavator-Poclain [116.85 h]; Boom Truck [116.85 h]; Cable, Copper 4x10mm2/ CU/XLPE/SWA/PVC + 1x10mm2 CU/PVC [536.33 m] | 26,280.34 | L09 | Z4 | CONS | SL | Excavation | AFT |
| RHD4CZ4L09SL3200 |  | Cable Laying of Street Lighting Cables for Street Lighting Network - (RD-L-9)-Z4-L09-SL | 9d | 2027-08-31 | 2027-09-09 | RHD4PRSHLDOSSL1100, RHD4ENMSSL2000, RHD4ENMSSL2010, RHD4PRSHLSTAGSL1100, RHD4CZ4L09SL3100 | Skilled labor [97.36 h]; Unskilled Labor [389.44 h]; Electrician [194.72 h]; Equipment Opreator [292.08 h]; Boom Truck [97.36 h]; Cable Laying Machine [194.72 h]; Cable, Copper 4x10mm2/ CU/XLPE/SWA/PVC + 1x10mm2 CU/PVC [1609 m] | 78,841 | L09 | Z4 | CONS | SL | Cable Laying | AFT |
| RHD4CZ4L09SL3300 |  | Warning tape and Backfill for Street Lighting Cables for Street Lighting Network - (RD-L-9)-Z4-L09-SL | 9d | 2027-09-11 | 2027-09-20 | RHD4CZ4L09SL3200 | Skilled labor [97.36 h]; Unskilled Labor [389.44 h]; Electrician [194.72 h]; Equipment Opreator [97.36 h]; Boom Truck [97.36 h]; Cable, Copper 4x10mm2/ CU/XLPE/SWA/PVC + 1x10mm2 CU/PVC [402.25 m] | 19,710.25 | L09 | Z4 | CONS | SL | Warning tape and Backfill | AFT |
| RHD4CZ4L09SL3400 |  | Testing of Street Lighting Cables for Street Lighting Network - (RD-L-9)-Z4-L09-SL | 6d | 2027-10-02 | 2027-10-07 | RHD4CZ4L09LV3400, RHD4CZ4L09SL3300 | Skilled labor [58.4 h]; Unskilled Labor [233.6 h]; Electrician [116.85 h]; Equipment Opreator [58.4 h]; Boom Truck [58.4 h]; Cable, Copper 4x10mm2/ CU/XLPE/SWA/PVC + 1x10mm2 CU/PVC [134.08 m] | 6,570.08 | L09 | Z4 | CONS | SL | Testing | AFT |
|  | 2752 | **RHD4-02-002-L09-(SL)-Street Lighting Poles** |  | 2027-07-28 | 2027-10-25 |  |  |  |  |  |  |  |  |  |
| RHD4CZ4L09SL1100 |  | Excavation for RC Base for Lighting Poles for Street Lighting Network - (RD-L-9)-Z4-L09-SL | 6d | 2027-07-28 | 2027-08-03 | RHD4ENSDZ4APPSL170, RHD4CZ4C031SL1100, RHD4CZ4L09SL2400 | Skilled labor [65.34 h]; Unskilled Labor [65.34 h]; Equipment Opreator [130.68 h]; Excavator-Poclain [65.34 h]; Dump Truck [65.34 h]; Lighting poles single arms, height of ( 10 ) meters [9 Unit] | 30,663 | L09 | Z4 | CONS | SL | Excavation | AFT |
| RHD4CZ4L09SL1200 |  | Installation for RC Base for Lighting Poles for Street Lighting Network - (RD-L-9)-Z4-L09-SL | 6d | 2027-08-04 | 2027-08-10 | RHD4CZ4L09SL1100 | Skilled labor [65.34 h]; Unskilled Labor [65.34 h]; Equipment Opreator [130.68 h]; Excavator-Poclain [65.34 h]; Dump Truck [65.34 h]; Lighting poles single arms, height of ( 10 ) meters [22.5 Unit] | 76,657.5 | L09 | Z4 | CONS | SL | RC Base | AFT |
| RHD4CZ4L09SL1300 |  | Backfill for RC Base for Lighting Poles for Street Lighting Network - (RD-L-9)-Z4-L09-SL | 6d | 2027-08-11 | 2027-08-17 | RHD4CZ4L09SL1200 | Skilled labor [65.34 h]; Unskilled Labor [65.34 h]; Equipment Opreator [130.68 h]; Excavator-Poclain [65.34 h]; Dump Truck [65.34 h]; Lighting poles single arms, height of ( 10 ) meters [4.5 Unit] | 15,331.5 | L09 | Z4 | CONS | SL | Backfill | AFT |
| RHD4CZ4L09SL1400 |  | Installation for Lighting Poles for Street Lighting Network - (RD-L-9)-Z4-L09-SL | 9d | 2027-10-09 | 2027-10-18 | RHD4PRSHLDOSSL1200, RHD4ENMSSL2000, RHD4ENMSSL2010, RHD4PRSHLSTAGSL1200, RHD4CZ4L09SL1300, RHD4CZ4L09SL3400 | Skilled labor [98.01 h]; Unskilled Labor [98.01 h]; Electrician [98.01 h]; Equipment Opreator [98.01 h]; Boom Truck [98.01 h]; Lighting poles single arms, height of ( 10 ) meters [54 Unit] | 183,978 | L09 | Z4 | CONS | SL | Poles Installation | AFT |
| RHD4CZ4L09SL1500 |  | Luminaire Installation for Lighting Poles for Street Lighting Network - (RD-L-9)-Z4-L09-SL | 6d | 2027-10-19 | 2027-10-25 | RHD4PRSHLDOSSL1300, RHD4PRSHLSTAGSL1300, RHD4CZ4L09SL1400 | Unskilled Labor [130.68 h]; Electrician [65.34 h]; Equipment Opreator [13.07 h]; Boom Truck [26.14 h]; Street Lighting( LED) Luminaire of Output ?10898 lumen [90 Unit] | 52,920 | L09 | Z4 | CONS | SL | Luminaire Installation | AFT |
|  | 2753 | **RHD4-02-002-L09-(SL)-Street Lighting Feeder Pillars** |  | 2027-10-09 | 2027-10-20 |  |  |  |  |  |  |  |  |  |
| RHD4CZ4L09SL4100 |  | Leveling for Distribution Pillars for Street Lighting Network - (RD-L-9)-Z4-L09-SL | 2d | 2027-10-09 | 2027-10-10 | RHD4CZ4L09SL3400, RHD4CZ4L09SL3300 | Skilled labor [10.89 h]; Unskilled Labor [21.78 h]; Equipment Opreator [4.36 h]; Excavator-Poclain [2.18 h]; Boom Truck [2.18 h]; 0.6/1 KV Steet Lighting Feeder Pillar [0.15 Unit] | 3,438.15 | L09 | Z4 | CONS | SL | Leveling | AFT |
| RHD4CZ4L09SL4200 |  | Lean Concrete for Distribution Pillars for Street Lighting Network - (RD-L-9)-Z4-L09-SL | 2d | 2027-10-11 | 2027-10-12 | RHD4CZ4L09SL4100 | Skilled labor [10.89 h]; Unskilled Labor [21.78 h]; Equipment Opreator [4.36 h]; Concrete Mixer Truck [2.18 h]; Concrete Pump [2.18 h]; 0.6/1 KV Steet Lighting Feeder Pillar [0.25 Unit] | 5,730.25 | L09 | Z4 | CONS | SL | Lean Concrete | AFT |
| RHD4CZ4L09SL4300 |  | Installation of Distribution Pillars for Street Lighting Network - (RD-L-9)-Z4-L09-SL | 2d | 2027-10-19 | 2027-10-20 | RHD4CZ4L09SL4200, RHD4CZ4L09SL1400 | Skilled labor [10.89 h]; Unskilled Labor [43.56 h]; Electrician [21.78 h]; Equipment Opreator [10.89 h]; Boom Truck [10.89 h]; 0.6/1 KV Steet Lighting Feeder Pillar [0.6 Unit] | 13,752.6 | L09 | Z4 | CONS | SL | Installation | AFT |
|  | 2754 | **RHD4-02-002-L09-(SL)-Street Lighting Earthing System** |  | 2027-10-21 | 2027-10-23 |  |  |  |  |  |  |  |  |  |
| RHD4CZ4L09SL6100 |  | Installation of Earthing for Lighting Poles and Fedder Pillers for Street Lighting Network - (RD-L-9)-Z4-L09-SL | 2d | 2027-10-21 | 2027-10-23 | RHD4ENMSER2000, RHD4ENMSER2010, RHD4CZ4L09SL4300 | Skilled labor [4.36 h]; Unskilled Labor [4.36 h]; Equipment Opreator [8.71 h]; Excavator-Poclain [4.36 h]; Dump Truck [4.36 h]; Street Lighting Feeder pillars - ER [1 Unit]; Including lighting poles circuits - ER [5 Unit] | 4,193 | L09 | Z4 | CONS | SL | Installation | AFT |
|  | 2760 | **RHD4-02-002-Z4-L09-Telecommunications Network - TC** |  | 2027-02-17 | 2027-10-04 |  |  |  |  |  |  |  |  |  |
|  | 2761 | **RHD4-02-002-L09-(TC)-Telecommunications Ducts** |  | 2027-08-04 | 2027-10-04 |  |  |  |  |  |  |  |  |  |
| RHD4CZ4L09TC2100 |  | Excavation of HDPE Ducts for Telecom Network - (RD-L-9)-Z4-L09-TC | 19d | 2027-08-04 | 2027-08-25 | RHD4ENSDZ4APPTC190, RHD4CZ4L09SL2100, RHD4CZ4L09SL1100 | Skilled labor [197.44 h]; Unskilled Labor [197.44 h]; Equipment Opreator [394.99 h]; Excavator-Poclain [197.44 h]; Dump Truck [197.44 h]; (6*50mm) HDPE ducts -TC [338.56 m]; (6*50mm+2*32mm) HDPE ducts -TC [190.61 m]; (6*50mm+4*32mm) HDPE ducts -TC [4 m]; (2*32mm) HDPE ducts -TC [10.86 m] | 51,414.57 | L09 | Z4 | CONS | TC | Excavation | AFT |
| RHD4CZ4L09TC2200 |  | Installation of HDPE Ducts for Telecom Network - (RD-L-9)-Z4-L09-TC | 11d | 2027-08-26 | 2027-09-07 | RHD4PRSHLDOSTC1000, RHD4PRSHLSTAGTC1000, RHD4CZ4L09TC2100 | Carpenter [11.87 h]; Skilled labor [118.49 h]; Unskilled Labor [118.49 h]; Steel Fixer [11.87 h]; (6*50mm) HDPE ducts -TC [1100.32 m]; (6*50mm+2*32mm) HDPE ducts -TC [619.47 m]; (6*50mm+4*32mm) HDPE ducts -TC [13 m]; (2*32mm) HDPE ducts -TC [35.3 m] | 167,097.54 | L09 | Z4 | CONS | TC | Installing | AFT |
| RHD4CZ4L09TC2400 |  | Backfilling of HDPE Ducts for Telecom Network - (RD-L-9)-Z4-L09-TC | 19d | 2027-09-12 | 2027-10-04 | RHD4CZ4L09TC2200, RHD4CZ4L09TC5200 | Skilled labor [197.44 h]; Unskilled Labor [197.44 h]; Equipment Opreator [78.96 h]; Excavator-Poclain [78.96 h]; (6*50mm) HDPE ducts -TC [253.92 m]; (6*50mm+2*32mm) HDPE ducts -TC [142.95 m]; (6*50mm+4*32mm) HDPE ducts -TC [3 m]; (2*32mm) HDPE ducts -TC [8.14 m] | 38,560.93 | L09 | Z4 | CONS | TC | Backfilling | AFT |

| ID | WBS | Activity | Duration | Start | Finish | Predecessors | Resources | Cost | RDH4-01-001-Road and Block Names-1 | RDH4-01-001-Zones-1 | RDH4-01-001-Phases-1 | RDH4-01-001-Networks-1 | RDH4-01-001-Work Method-1 | RDH4-01-001-MENEM |
| --- | --- | --- | --- | --- | --- | --- | --- | --- | --- | --- | --- | --- | --- | --- |
|  | 2762 | **RHD4-02-002-L09-(TC)-Telecommunications Manholes** |  | 2027-08-26 | 2027-09-11 |  |  |  |  |  |  |  |  |  |
| RHD4CZ4L09TC5100 |  | Excavation for Manholes for Telecom Network - (RD-L-9)-Z4-L09-TC | 7d | 2027-08-26 | 2027-09-02 | RHD4ENSDZ4APPTC190, RHD4CZ4L09TC2100 | Skilled labor [20.47 h]; Unskilled Labor [20.47 h]; Equipment Opreator [16.34 h]; Excavator-Poclain [8.17 h]; Dump Truck [8.17 h]; Manhole Type 1 - TC [1.65 nr]; Manhole Type 2 - TC [0.3 nr] | 13,144.95 | L09 | Z4 | CONS | TC | Excavation | AFT |
| RHD4CZ4L09TC5200 |  | Installation of Manholes for Telecom Network - (RD-L-9)-Z4-L09-TC | 7d | 2027-09-04 | 2027-09-11 | RHD4PRSHLDOSTC1200, RHD4PRSHLSTAGTC1200, RHD4CZ4L09TC5100, RHD4CZ4L09TC2200 SS | Skilled labor [20.47 h]; Unskilled Labor [20.47 h]; Equipment Opreator [8.17 h]; Boom Truck [8.17 h]; Manhole Type 1 - TC [9.35 nr]; Manhole Type 2 - TC [1.7 nr] | 74,488.05 | L09 | Z4 | CONS | TC | Installation | AFT |
|  | 2763 | **RHD4-02-002-L09-(TC)-Telecomminications Road Crossings** |  | 2027-02-17 | 2027-02-27 |  |  |  |  |  |  |  |  |  |
| RHD4CZ4L09TC3100 |  | Excavation for Road Crossings for Telecom Network - (RD-L-9)-Z4-L09-TC | 2d | 2027-02-17 | 2027-02-18 | RHD4ENSDZ4APPTC190, RHD4CZ4L09ST3102 | Skilled labor [11 h]; Unskilled Labor [11 h]; Equipment Opreator [22 h]; Excavator-Poclain [11 h]; Dump Truck [11 h]; Road crossing ducts, (6*50mm) HDPE -TC [2.02 m] | 76.76 | L09 | Z4 | CONS | TC | Excavation | bef |
| RHD4CZ4L09TC3200 |  | Installation of Road Crossings for Telecom Network - (RD-L-9)-Z4-L09-TC | 2d | 2027-02-20 | 2027-02-21 | RHD4PRSHLDOSTC1100, RHD4PRSHLSTAGTC1100, RHD4CZ4L09TC3100 | Carpenter [1.42 h]; Skilled labor [14.7 h]; Unskilled Labor [14.7 h]; Steel Fixer [1.42 h]; Road crossing ducts, (6*50mm) HDPE -TC [2.02 m] | 76.76 | L09 | Z4 | CONS | TC | Installing | bef |
| RHD4CZ4L09TC3300 |  | Pouring of Road Crossings for Telecom Network - (RD-L-9)-Z4-L09-TC | 2d | 2027-02-23 | 2027-02-24 | RHD4CZ4L09TC3200 | Skilled labor [14.7 h]; Unskilled Labor [14.7 h]; Equipment Opreator [5.88 h]; Concrete Mixer Truck [2.94 h]; Concrete Pump [2.94 h]; Road crossing ducts, (6*50mm) HDPE -TC [13.13 m] | 498.94 | L09 | Z4 | CONS | TC | Pouring | bef |
| RHD4CZ4L09TC3400 |  | Backfilling of Road Crossings for Telecom Network - (RD-L-9)-Z4-L09-TC | 2d | 2027-02-25 | 2027-02-27 | RHD4CZ4L09TC3300 | Skilled labor [11 h]; Unskilled Labor [11 h]; Equipment Opreator [4.36 h]; Excavator-Poclain [4.36 h]; Road crossing ducts, (6*50mm) HDPE -TC [3.03 m] | 115.14 | L09 | Z4 | CONS | TC | Backfilling | bef |
|  | 2764 | **RHD4-02-002-Z4-L09-Information and Communication Technologies - ICT** |  | 2027-02-17 | 2027-10-28 |  |  |  |  |  |  |  |  |  |
|  | 2765 | **RHD4-02-002-L09-(ICT)-Information and Communication Technologies Ducts** |  | 2027-08-26 | 2027-10-28 |  |  |  |  |  |  |  |  |  |
| RHD4CZ4L09ICT2100 |  | Excavation of HDPE Ducts for ICT Network - (RD-L-9)-Z4-L09-ICT | 19d | 2027-08-26 | 2027-09-16 | RHD4ENSDZ4APPICT200, RHD4CZ4L09TC3100, RHD4CZ4L09TC2100, RHD4CZ4L09MV4200 | Skilled labor [205.28 h]; Unskilled Labor [205.28 h]; Equipment Opreator [410.46 h]; Excavator-Poclain [205.28 h]; Dump Truck [205.28 h]; (2*50mm) HDPE ducts -ICT [362.95 m]; (2*50mm+2*32mm) HDPE ducts -ICT [178.14 m]; (2*50mm+4*32mm) HDPE ducts -ICT [5.88 m]; (2*32mm) HDPE ducts -ICT [18.38 m] | 27,748.83 | L09 | Z4 | CONS | ICT | Excavation | AFT |
| RHD4CZ4L09ICT2200 |  | Installation of HDPE Ducts for ICT Network - (RD-L-9)-Z4-L09-ICT | 12d | 2027-09-18 | 2027-10-02 | RHD4PRSHLDOSICT1000, RHD4PRSHLSTAGICT1000, RHD4CZ4L09MV5400, RHD4CZ4L09ICT2100 | Carpenter [12.31 h]; Skilled labor [123.2 h]; Unskilled Labor [123.2 h]; Steel Fixer [12.31 h]; (2*50mm) HDPE ducts -ICT [1179.59 m]; (2*50mm+2*32mm) HDPE ducts -ICT [578.96 m]; (2*50mm+4*32mm) HDPE ducts -ICT [19.11 m]; (2*32mm) HDPE ducts -ICT [59.73 m] | 90,183.68 | L09 | Z4 | CONS | ICT | Installing | AFT |
| RHD4CZ4L09ICT2400 |  | Backfilling of HDPE Ducts for ICT Network - (RD-L-9)-Z4-L09-ICT | 19d | 2027-10-07 | 2027-10-28 | RHD4CZ4L09TC2400, RHD4CZ4L09LV4300 FF, RHD4CZ4L09ICT2200, RHD4CZ4L09ICT5200 | Skilled labor [205.28 h]; Unskilled Labor [205.28 h]; Equipment Opreator [82.11 h]; Excavator-Poclain [82.11 h]; (2*50mm) HDPE ducts -ICT [272.21 m]; (2*50mm+2*32mm) HDPE ducts -ICT [133.6 m]; (2*50mm+4*32mm) HDPE ducts -ICT [4.41 m]; (2*32mm) HDPE ducts -ICT [13.79 m] | 20,811.26 | L09 | Z4 | CONS | ICT | Backfilling | AFT |
|  | 2766 | **RHD4-02-002-L09-(ICT)-Information and Communication Technologies Manholes** |  | 2027-09-18 | 2027-10-06 |  |  |  |  |  |  |  |  |  |
| RHD4CZ4L09ICT5100 |  | Excavation for Manholes for ICT Network - (RD-L-9)-Z4-L09-ICT | 8d | 2027-09-18 | 2027-09-27 | RHD4ENSDZ4APPICT200, RHD4CZ4L09ICT2100 | Skilled labor [24.5 h]; Unskilled Labor [24.5 h]; Equipment Opreator [19.6 h]; Excavator-Poclain [9.8 h]; Dump Truck [9.8 h]; Manhole Type 1 - ICT [2.1 nr]; Manhole Type 2 - ICT [0.3 nr] | 12,943.2 | L09 | Z4 | CONS | ICT | Excavation | AFT |
| RHD4CZ4L09ICT5200 |  | Installation of Manholes for ICT Network - (RD-L-9)-Z4-L09-ICT | 8d | 2027-09-28 | 2027-10-06 | RHD4PRSHLDOSICT1200, RHD4PRSHLSTAGICT1200, RHD4CZ4L09ICT5100, RHD4CZ4L09ICT2200 SS | Skilled labor [24.5 h]; Unskilled Labor [24.5 h]; Equipment Opreator [9.8 h]; Boom Truck [9.8 h]; Manhole Type 1 - ICT [11.9 nr]; Manhole Type 2 - ICT [1.7 nr] | 73,344.8 | L09 | Z4 | CONS | ICT | Installation | AFT |
|  | 2767 | **RHD4-02-002-L09-(ICT)-Information and Communication Technologies Road Crossings** |  | 2027-02-17 | 2027-02-27 |  |  |  |  |  |  |  |  |  |
| RHD4CZ4L09ICT3100 |  | Excavation for Road Crossings for ICT Network - (RD-L-9)-Z4-L09-ICT | 2d | 2027-02-17 | 2027-02-18 | RHD4ENSDZ4APPICT200, RHD4CZ4L09ST3102 | Skilled labor [11 h]; Unskilled Labor [11 h]; Equipment Opreator [22.11 h]; Excavator-Poclain [11 h]; Dump Truck [11 h]; Road crossing ducts, (2*50mm) HDPE -ICT [2.03 m] | 77.14 | L09 | Z4 | CONS | ICT | Excavation | bef |
| RHD4CZ4L09ICT3200 |  | Installation of Road Crossings for ICT Network - (RD-L-9)-Z4-L09-ICT | 2d | 2027-02-20 | 2027-02-21 | RHD4PRSHLDOSICT1100, RHD4PRSHLSTAGICT1100, RHD4CZ4L09ICT3100 | Carpenter [1.52 h]; Skilled labor [14.7 h]; Unskilled Labor [14.7 h]; Steel Fixer [1.52 h]; Road crossing ducts, (2*50mm) HDPE -ICT [2.03 m] | 77.14 | L09 | Z4 | CONS | ICT | Installing | bef |
| RHD4CZ4L09ICT3300 |  | Pouring of Road Crossings for ICT Network - (RD-L-9)-Z4-L09-ICT | 2d | 2027-02-23 | 2027-02-24 | RHD4CZ4L09ICT3200 | Skilled labor [14.7 h]; Unskilled Labor [14.7 h]; Equipment Opreator [5.88 h]; Concrete Mixer Truck [2.94 h]; Concrete Pump [2.94 h]; Road crossing ducts, (2*50mm) HDPE -ICT [13.2 m] | 501.6 | L09 | Z4 | CONS | ICT | Pouring | bef |
| RHD4CZ4L09ICT3400 |  | Backfilling of Road Crossings for ICT Network - (RD-L-9)-Z4-L09-ICT | 2d | 2027-02-25 | 2027-02-27 | RHD4CZ4L09ICT3300 | Skilled labor [11 h]; Unskilled Labor [11 h]; Equipment Opreator [4.47 h]; Excavator-Poclain [4.47 h]; Road crossing ducts, (2*50mm) HDPE -ICT [3.04 m] | 115.71 | L09 | Z4 | CONS | ICT | Backfilling | bef |
|  | 2755 | **RHD4-02-002-Z4-L09-Landscape Network - LS** |  |  |  |  |  |  |  |  |  |  |  |  |
|  | 2756 | **RHD4-02-002-L09-(LS)-Landscape Lighting cables** |  |  |  |  |  |  |  |  |  |  |  |  |
|  | 2757 | **RHD4-02-002-L09-(LS)-Landscape Feeder Pillars** |  |  |  |  |  |  |  |  |  |  |  |  |
|  | 2758 | **RHD4-02-002-L09-(LS)-Landscape Bollard Poles** |  |  |  |  |  |  |  |  |  |  |  |  |
|  | 2759 | **RHD4-02-002-L09-(LS)-Landscape Feeder Pillars Earthing** |  |  |  |  |  |  |  |  |  |  |  |  |
|  | 2768 | **RHD4-02-002-Z4-L09-Security Network - CCTV** |  |  |  |  |  |  |  |  |  |  |  |  |
|  | 2769 | **RHD4-02-002-L09-(CCTV)-Civil Works** |  |  |  |  |  |  |  |  |  |  |  |  |
|  | 2770 | **RHD4-02-002-L09-(CCTV)-CCTV Poles** |  |  |  |  |  |  |  |  |  |  |  |  |
|  | 2771 | **RHD4-02-002-L09-(CCTV)-Camera** |  |  |  |  |  |  |  |  |  |  |  |  |
|  | 2772 | **RHD4-02-002-L09-(CCTV)-Power and Infrastructure** |  |  |  |  |  |  |  |  |  |  |  |  |
|  | 2774 | **RHD4-02-002-L09-(CCTV)-CCTV Panels and Components** |  |  |  |  |  |  |  |  |  |  |  |  |
|  | 2218 | **RHD4-02-002-Z4-C012** |  | 2027-02-17 | 2027-11-14 |  |  |  |  |  |  |  |  |  |
|  | 2340 | **RHD4-02-002-Z4-C012-Crossings Irrigation Network - IRRC** |  |  |  |  |  |  |  |  |  |  |  |  |
|  | 2341 | **RHD4-02-002-C012-(IRRC)-HDPE Pipes - 160 mm diameter** |  |  |  |  |  |  |  |  |  |  |  |  |
|  | 2345 | **RHD4-02-002-C012-(IRRC)-HDPE Pipes - 315 mm diameter** |  |  |  |  |  |  |  |  |  |  |  |  |
|  | 2349 | **RHD4-02-002-C012-(IRRC)-Gate Valves (Direct Buried)** |  |  |  |  |  |  |  |  |  |  |  |  |
|  | 2350 | **RHD4-02-002-C012-(IRRC)-Butterfly Valve Chamber** |  |  |  |  |  |  |  |  |  |  |  |  |
|  | 2351 | **RHD4-02-002-C012-(IRRC)-Butterfly Valves** |  |  |  |  |  |  |  |  |  |  |  |  |
|  | 2397 | **RHD4-02-002-Z4-C012-Road Works - RD** |  | 2027-02-25 | 2027-11-14 |  |  |  |  |  |  |  |  |  |
|  | 2398 | **RHD4-02-002-C012-(RD)-Subgrade** |  | 2027-02-25 | 2027-03-18 |  |  |  |  |  |  |  |  |  |
| RHD4CZ4C012RD1100 |  | Supply, lay and compaction subgrade compacted thickness 300 mm for Roads - (RD-C-1 /2)-Z4-C012-RD | 16d | 2027-02-25 | 2027-03-18 | RHD4CZ4C012ICT3400 SS, RHD4ENSDZ4APPEW100, RHD4ENSDZ4APPRD220 | Skilled labor [170.54 h]; Unskilled Labor [341.09 h]; Electrician [170.54 h]; Equipment Opreator [1164.8 h]; Water Truck [56.3 h]; Roller compactor [85.27 h]; Grader [170.54 h]; Dump Truck [852.71 h]; Subgrade [8202.41 m3] | 155,845.79 | C012 | Z4 | CONS | RD | Subgrade | bef |

| ID | WBS | Activity | Duration | Start | Finish | Predecessors | Resources | Cost | RDH4-01-001-Road and Block Names-1 | RDH4-01-001-Zones-1 | RDH4-01-001-Phases-1 | RDH4-01-001-Networks-1 | RDH4-01-001-Work Method-1 | RDH4-01-001-MENEM |
| --- | --- | --- | --- | --- | --- | --- | --- | --- | --- | --- | --- | --- | --- | --- |
|  | 2399 | **RHD4-02-002-C012-(RD)-Aggregate Base Course** |  | 2027-03-20 | 2027-04-01 |  |  |  |  |  |  |  |  |  |
| RHD4CZ4C012RD2100 |  | Supply, lay and compaction Aggregate base course compacted thickness 300 mmfor Roads - (RD-C-1 /2)-Z4-C012-RD | 12d | 2027-03-20 | 2027-04-01 | RHD4PRSHLDOSRD1000, RHD4PRSHLSTAGRD1000, RHD4CZ4C012RD1100 | Skilled labor [63.2 h]; Unskilled Labor [126.33 h]; Equipment Opreator [799.68 h]; Water Truck [41.71 h]; Roller compactor [126.33 h]; Grader [126.33 h]; Dump Truck [505.31 h]; Aggregate Base Courses [5151.93 m3] | 293,660.01 | C012 | Z4 | CONS | RD | ABC | bef |
|  | 2400 | **RHD4-02-002-C012-(RD)-Bituminous base course Two Layers, including (MC1)&(RC2)** |  | 2027-04-03 | 2027-10-30 |  |  |  |  |  |  |  |  |  |
| RHD4CZ4C012RD3100 |  | Supply, lay and Asphaltic base course including Prime Coat (MC1) for 1st Layer - (RD-C-1 /2)-Z4-C012-RD | 5d | 2027-04-03 | 2027-04-07 | RHD4PRSHLDOSRD1100, RHD4ENMSASPH2000, RHD4ENMSASPH2010, RHD4PRSHLSTAGRD1100, RHD4CZ4C012RD2100 | Skilled labor [44.76 h]; Unskilled Labor [268.45 h]; Equipment Opreator [671.06 h]; Bobcat [44.76 h]; Roller compactor [44.76 h]; Asphalt Paver [44.76 h]; Rubber Compactor [89.52 h]; MC1/RC2 Sprinkler [44.76 h]; Dump Truck [402.62 h]; Bituminous base course (Grading I - Class A), including Prime coat (MC1) & tack coate (RC2) [1636.86 m3] | 782,419.08 | C012 | Z4 | CONS | RD | 150 mm | AFT |
| RHD4CZ4C012RD3200 |  | Supply, lay and Asphaltic base course including Tack Coat (RC2) for 2nd Layer - (RD-C-1 /2)-Z4-C012-RD | 5d | 2027-10-25 | 2027-10-30 | RHD4PRSHLDOSRD1100, RHD4PRSHLSTAGRD1100, RHD4CZ4C012ICT2400, RHD4CZ4C012RD3100 | Skilled labor [44.76 h]; Unskilled Labor [268.45 h]; Equipment Opreator [671.06 h]; Bobcat [44.76 h]; Roller compactor [44.76 h]; Asphalt Paver [44.76 h]; Rubber Compactor [89.52 h]; MC1/RC2 Sprinkler [44.76 h]; Dump Truck [402.62 h]; Bituminous base course (Grading I - Class A), including Prime coat (MC1) & tack coate (RC2) [1636.86 m3] | 782,419.08 | C012 | Z4 | CONS | RD | 150 mm | AFT |
|  | 2402 | **RHD4-02-002-C012-(RD)-Precast Concrete Curb** |  | 2027-10-31 | 2027-11-04 |  |  |  |  |  |  |  |  |  |
| RHD4CZ4C012RD5100 |  | Supply and installation Precast Concrete Kerb for Roads - (RD-C-1 /2)-Z4-C012-RD | 5d | 2027-10-31 | 2027-11-04 | RHD4PRSHLDOSRD1200, RHD4ENMSRD2000, RHD4ENMSRD2010, RHD4PRSHLSTAGRD1200, RHD4CZ4C012RD3200 | Mason [147.35 h]; Skilled labor [49.12 h]; Unskilled Labor [147.35 h]; Equipment Opreator [98.23 h]; Bobcat [49.12 h]; Concrete Mixer Truck [49.12 h]; Precast Concrete Curbstone, type K1 [2029 m] | 111,595 | C012 | Z4 | CONS | RD | Curbs | AFT |
|  | 2405 | **RHD4-02-002-C012-(RD)-Traffic Signage** |  | 2027-11-06 | 2027-11-11 |  |  |  |  |  |  |  |  |  |
| RHD4CZ4C012RD8100 |  | Installation of Traffic Signage for Road Network - (RD-C-1 /2)-Z4-C012-RD | 6d | 2027-11-06 | 2027-11-11 | RHD4PRSHLDOSRD1600, RHD4PRSHLSTAGRD1600, RHD4CZ4C012LV4300, RHD4CZ4C031RD8100, RHD4CZ4RA02RD9100, RHD4CZ4C012RD5100, RHD4CZ4C012TC2400, RHD4CZ4C012ICT2400 | Skilled labor [130.68 h]; Unskilled Labor [65.34 h]; Electrician [4.36 h]; Equipment Opreator [14.81 h]; Boom Truck [13.07 h]; Concrete Mixer Truck [1.74 h]; Traffic signs, ground mounted, 1 Sheet Aluminium, (breakaway)Single post [4 nr] | 4,904 | C012 | Z4 | CONS | RD | Traffic Signage | AFT |
|  | 2403 | **RHD4-02-002-C012-(RD)-Precast Interlocking Block Pavers** |  |  |  |  |  |  |  |  |  |  |  |  |
|  | 2401 | **RHD4-02-002-C012-(RD)-Bituminous concrete wearing course including tack coat (RC2)** |  | 2027-11-06 | 2027-11-08 |  |  |  |  |  |  |  |  |  |
| RHD4CZ4C012RD4100 |  | Supply, lay and compaction Asphaltic wearing course including tack Coat (RC2)for Road Network - (RD-C-1 /2)-Z4-C012-RD | 3d | 2027-11-06 | 2027-11-08 | RHD4CZ4C012RD5100 | Skilled labor [25.81 h]; Unskilled Labor [155.08 h]; Equipment Opreator [387.59 h]; Bobcat [25.81 h]; Roller compactor [25.81 h]; Asphalt Paver [25.81 h]; Rubber Compactor [51.73 h]; MC1/RC2 Sprinkler [25.81 h]; Dump Truck [232.51 h]; Bituminous concrete wearing course, (Grading I - Class A), including tack coat (RC2) [1232.43 m3] | 669,209.49 | C012 | Z4 | CONS | RD | 50 mm | AFT |
|  | 2404 | **RHD4-02-002-C012-(RD)-Pavement Marking** |  | 2027-11-09 | 2027-11-14 |  |  |  |  |  |  |  |  |  |
| RHD4CZ4C012RD7100 |  | Pavement Markings for Road Network - (RD-C-1 /2)-Z4-C012-RD | 5d | 2027-11-09 | 2027-11-14 | RHD4PRSHLDOSRD1500, RHD4PRSHLSTAGRD1500, RHD4CZ4C012RD4100 | Skilled labor [51.62 h]; Unskilled Labor [103.35 h]; Equipment Opreator [51.62 h]; Road Marking Machine [51.62 h]; Retroreflective Thermoplastic White Traffic Markings [194.89 m2]; Retroreflective Thermoplastic Yellow, Traffic Markings [297.38 m2]; Rumble strip [49 m]; Retroreflective raised pavement markers (cat eyes) [668 nr] | 43,999.37 | C012 | Z4 | CONS | RD | Pavement Marking | AFT |
|  | 2308 | **RHD4-02-002-Z4-C012-Potable Network - PT** |  |  |  |  |  |  |  |  |  |  |  |  |
|  | 2322 | **RHD4-02-002-C012-(PT)-Concrete Encasement** |  |  |  |  |  |  |  |  |  |  |  |  |
|  | 2323 | **RHD4-02-002-Z4-C012-Irrigation Network - IRR** |  | 2027-08-11 | 2027-09-02 |  |  |  |  |  |  |  |  |  |
|  | 2326 | **RHD4-02-002-C012-(IRR)-HDPE Pipes - 200 mm diameter** |  |  |  |  |  |  |  |  |  |  |  |  |
|  | 6107 | **RHD4-02-002-C012-(IRR)-HDPE Pipes - 160 mm diameter** |  | 2027-08-11 | 2027-08-22 |  |  |  |  |  |  |  |  |  |
| RHD4CZ4C012IRR1100 |  | Excavation works for HDPE Pipline 160 mm - (RD-C-1 /2)-Z4-C012-IRR | 2d | 2027-08-11 | 2027-08-12 | RHD4ENSDZ4APPIRR140, RHD4CZ4C012RW2000, RHD4CZ4L09IRR3202 | Skilled labor [4 h]; Unskilled Labor [4 h]; Equipment Opreator [4.9 h]; Excavator-Poclain [4 h]; Dump Truck [0.8 h]; HDPE (160mm Diameter) - TSE - Depth: less than 1.5m [5.6 m] | 688.8 | C012 | Z4 | CONS | IRR | Excavation | bef |
| RHD4CZ4C012IRR1200 |  | Bedding works for HDPE Pipline 160 mm - (RD-C-1 /2)-Z4-C012-IRR | 2d | 2027-08-14 | 2027-08-15 | RHD4CZ4C012IRR1100 | Skilled labor [3.05 h]; Unskilled Labor [6.1 h]; Equipment Opreator [6.1 h]; Excavator-Poclain [3.05 h]; Dump Truck [3.05 h]; HDPE (160mm Diameter) - TSE - Depth: less than 1.5m [2.8 m] | 344.4 | C012 | Z4 | CONS | IRR | Bedding | bef |
| RHD4CZ4C012IRR1300 |  | Installing for HDPE Pipline 160 mm - (RD-C-1 /2)-Z4-C012-IRR | 2d | 2027-08-16 | 2027-08-17 | RHD4CZ4C012IRR1200 | Unskilled Labor [8.17 h]; Plumber [4 h]; Equipment Opreator [4 h]; Boom Truck [4 h]; HDPE (160mm Diameter) - TSE - Depth: less than 1.5m [25.2 m] | 3,099.6 | C012 | Z4 | CONS | IRR | Installation | bef |
| RHD4CZ4C012IRR1400 |  | Primary Test for HDPE Pipline 160 mm - (RD-C-1 /2)-Z4-C012-IRR | 2d | 2027-08-18 | 2027-08-19 | RHD4CZ4C012IRR1300 | Unskilled Labor [1.2 h]; Plumber [1.2 h]; Equipment Opreator [1.2 h]; Water Truck [1.2 h]; HDPE (160mm Diameter) - TSE - Depth: less than 1.5m [11.2 m] | 1,377.6 | C012 | Z4 | CONS | IRR | Primary Test | bef |
| RHD4CZ4C012IRR1500 |  | Backfilling and warning tape works for HDPE Pipline 160 mm - (RD-C-1 /2)-Z4-C012-IRR | 2d | 2027-08-21 | 2027-08-22 | RHD4CZ4C012IRR1400 | Skilled labor [3.05 h]; Unskilled Labor [6.1 h]; Equipment Opreator [6.1 h]; Excavator-Poclain [3.05 h]; Dump Truck [3.05 h]; HDPE (160mm Diameter) - TSE - Depth: less than 1.5m [11.2 m] | 1,377.6 | C012 | Z4 | CONS | IRR | Backfilling | bef |

| ID | WBS | Activity | Duration | Start | Finish | Predecessors | Resources | Cost | RDH4-01-001-Road and Block Names-1 | RDH4-01-001-Zones-1 | RDH4-01-001-Phases-1 | RDH4-01-001-Networks-1 | RDH4-01-001-Work Method-1 | RDH4-01-001-MENEM |
| --- | --- | --- | --- | --- | --- | --- | --- | --- | --- | --- | --- | --- | --- | --- |
|  | 6111 | **RHD4-02-002-C012-(IRR)-HDPE Pipes - 315 mm diameter** |  | 2027-08-14 | 2027-08-31 |  |  |  |  |  |  |  |  |  |
| RHD4CZ4C012IRR1104 |  | Excavation works for HDPE Pipline 315 mm - (RD-C-1 /2)-Z4-C012-IRR | 4d | 2027-08-14 | 2027-08-17 | RHD4CZ4C012IRR1100 | Skilled labor [33.22 h]; Unskilled Labor [33.22 h]; Equipment Opreator [39.86 h]; Excavator-Poclain [33.22 h]; Dump Truck [6.64 h]; HDPE (315mm Diameter) - TSE - Depth: less than 1.5m [38.28 m]; HDPE (315mm Diameter) - TSE - Depth: more than 1.51m [11.29 m] | 14,885.29 | C012 | Z4 | CONS | IRR | Excavation | bef |
| RHD4CZ4C012IRR1204 |  | Bedding works for HDPE Pipline 315 mm - (RD-C-1 /2)-Z4-C012-IRR | 3d | 2027-08-18 | 2027-08-21 | RHD4CZ4C012IRR1104 | Skilled labor [26.35 h]; Unskilled Labor [52.6 h]; Equipment Opreator [52.6 h]; Excavator-Poclain [26.35 h]; Dump Truck [26.35 h]; HDPE (315mm Diameter) - TSE - Depth: less than 1.5m [19.14 m]; HDPE (315mm Diameter) - TSE - Depth: more than 1.51m [3.76 m] | 6,830.02 | C012 | Z4 | CONS | IRR | Bedding | bef |
| RHD4CZ4C012IRR1304 |  | Installing for HDPE Pipline 315 mm - (RD-C-1 /2)-Z4-C012-IRR | 4d | 2027-08-22 | 2027-08-25 | RHD4CZ4C012IRR1204 | Unskilled Labor [66.54 h]; Plumber [33.22 h]; Equipment Opreator [33.22 h]; Boom Truck [33.22 h]; HDPE (315mm Diameter) - TSE - Depth: less than 1.5m [172.25 m]; HDPE (315mm Diameter) - TSE - Depth: more than 1.51m [30.1 m] | 60,251.75 | C012 | Z4 | CONS | IRR | Installation | bef |
| RHD4CZ4C012IRR1404 |  | Primary Test for HDPE Pipline 315 mm - (RD-C-1 /2)-Z4-C012-IRR | 2d | 2027-08-26 | 2027-08-28 | RHD4CZ4C012IRR1304 | Unskilled Labor [11.11 h]; Plumber [11.11 h]; Equipment Opreator [11.11 h]; Water Truck [11.11 h]; HDPE (315mm Diameter) - TSE - Depth: less than 1.5m [76.56 m]; HDPE (315mm Diameter) - TSE - Depth: more than 1.51m [15.05 m] | 27,323.33 | C012 | Z4 | CONS | IRR | Primary Test | bef |
| RHD4CZ4C012IRR1504 |  | Backfilling and warning tape works for HDPE Pipline 315 mm - (RD-C-1 /2)-Z4-C012-IRR | 3d | 2027-08-29 | 2027-08-31 | RHD4CZ4C012IRR1404 | Skilled labor [26.35 h]; Unskilled Labor [52.6 h]; Equipment Opreator [52.6 h]; Excavator-Poclain [26.35 h]; Dump Truck [26.35 h]; HDPE (315mm Diameter) - TSE - Depth: less than 1.5m [76.56 m]; HDPE (315mm Diameter) - TSE - Depth: more than 1.51m [15.05 m] | 27,323.33 | C012 | Z4 | CONS | IRR | Backfilling | bef |
|  | 6115 | **RHD4-02-002-C012-(IRR)-Gate Valves (Direct Buried)** |  | 2027-08-24 | 2027-08-28 |  |  |  |  |  |  |  |  |  |
| RHD4CZ4C012IRR3100 |  | Installation for Direct Buried Gate Valves - (RD-C-1 /2)-Z4-C012-IRR | 2d | 2027-08-24 | 2027-08-25 | RHD4CZ4C012IRR1304 SS, RHD4CZ4C012IRR1304 FF, RHD4CZ4C012IRR1300 SS, RHD4CZ4C012IRR1300 FF | Unskilled Labor [10.89 h]; Plumber [10.89 h]; Gate valves dia 100 mm - TSE [1.8 nr] | 2,844 | C012 | Z4 | CONS | IRR | Installation | bef |
| RHD4CZ4C012IRR3200 |  | Stem and Service box for Direct Buried Gate Valves - (RD-C-1 /2)-Z4-C012-IRR | 2d | 2027-08-26 | 2027-08-28 | RHD4CZ4C012IRR3100, RHD4CZ4C012IRR1500 | Unskilled Labor [10.89 h]; Plumber [10.89 h]; Gate valves dia 100 mm - TSE [0.2 nr] | 316 | C012 | Z4 | CONS | IRR | Stem and Service box | bef |
|  | 6116 | **RHD4-02-002-C012-(IRR)-Butterfly Valve Chamber** |  | 2027-08-23 | 2027-08-31 |  |  |  |  |  |  |  |  |  |
| RHD4CZ4C012IRR2100 |  | Excavation and Bedding for Butterfly Valve Chamber for Irrigation Network - (RD-C-1 /2)-Z4-C012-IRR | 2d | 2027-08-23 | 2027-08-24 | RHD4CZ4C012IRR1104, RHD4CZ4C012IRR1500 | Skilled labor [5.45 h]; Unskilled Labor [5.45 h]; Equipment Opreator [1.09 h]; Excavator-Poclain [0.54 h]; Dump Truck [0.54 h]; Valve chambers - TSE [0.25 nr] | 3,660.75 | C012 | Z4 | CONS | IRR | Excavation and Bedding | bef |
| RHD4CZ4C012IRR2200 |  | PC works for Butterfly Valve Chamber for Irrigation Network - (RD-C-1 /2)-Z4-C012-IRR | 2d | 2027-08-25 | 2027-08-26 | RHD4CZ4C012IRR2100 | Skilled labor [5.45 h]; Unskilled Labor [10.89 h]; Equipment Opreator [0.54 h]; Concrete Pump [0.54 h]; Valve chambers - TSE [0.1 nr] | 1,464.3 | C012 | Z4 | CONS | IRR | PC Works | bef |
| RHD4CZ4C012IRR2300 |  | Installation for Butterfly Valve Chamber for Irrigation Network - (RD-C-1 /2)-Z4-C012-IRR | 2d | 2027-08-28 | 2027-08-29 | RHD4CZ4C012IRR2200 | Skilled labor [5.45 h]; Unskilled Labor [10.89 h]; Equipment Opreator [1.09 h]; Boom Truck [1.09 h]; Valve chambers - TSE [0.55 nr] | 8,053.65 | C012 | Z4 | CONS | IRR | Installation | bef |
| RHD4CZ4C012IRR2400 |  | Backfilling works for Butterfly Valve Chamber for Irrigation Network - (RD-C-1 /2)-Z4-C012-IRR | 2d | 2027-08-30 | 2027-08-31 | RHD4CZ4C012IRR2300 | Skilled labor [5.45 h]; Unskilled Labor [10.89 h]; Equipment Opreator [1.09 h]; Water Truck [0.54 h]; Dump Truck [0.54 h]; Valve chambers - TSE [0.1 nr] | 1,464.3 | C012 | Z4 | CONS | IRR | Backfilling Works | bef |
|  | 6117 | **RHD4-02-002-C012-(IRR)-Butterfly Valves** |  | 2027-08-26 | 2027-09-02 |  |  |  |  |  |  |  |  |  |
| RHD4CZ4C012IRR3101 |  | Installation for Butterfly Valves for Irrigation Network - (RD-C-1 /2)-Z4-C012-IRR | 2d | 2027-08-26 | 2027-08-28 | RHD4CZ4C012IRR1304 | Unskilled Labor [5.45 h]; Plumber [5.45 h]; Butterfly valves dia 315 - TSE [0.9 nr] | 11,255.4 | C012 | Z4 | CONS | IRR | Installation | bef |
| RHD4CZ4C012IRR3201 |  | Stem and Service box for Butterfly Valves for Irrigation Network - (RD-C-1 /2)-Z4-C012-IRR | 2d | 2027-09-01 | 2027-09-02 | RHD4CZ4C012IRR3101, RHD4CZ4C012IRR2400 | Unskilled Labor [5.45 h]; Plumber [5.45 h]; Butterfly valves dia 315 - TSE [0.1 nr] | 1,250.6 | C012 | Z4 | CONS | IRR | Stem and Service box | bef |
|  | 2330 | **RHD4-02-002-C012-(IRR)-HDPE Pipes - 450 mm diameter** |  |  |  |  |  |  |  |  |  |  |  |  |
|  | 2339 | **RHD4-02-002-C012-(IRR)-Concrete Encasement** |  |  |  |  |  |  |  |  |  |  |  |  |
|  | 2357 | **RHD4-02-002-Z4-C012-Medium Voltage Network - MV** |  | 2027-06-24 | 2027-07-22 |  |  |  |  |  |  |  |  |  |
|  | 2358 | **RHD4-02-002-C012-(MV)-Medium Voltage cable trench** |  | 2027-06-24 | 2027-07-05 |  |  |  |  |  |  |  |  |  |
| RHD4CZ4C012MV1100 |  | Excavation for Medium Voltage Trench - (RD-C-1 /2)-Z4-C012-MV | 5d | 2027-06-24 | 2027-06-29 | RHD4ENSDZ4APPMV150, RHD4CZ4C012RD3100, RHD4CZ4L09MV1100 | Skilled labor [50.75 h]; Unskilled Labor [101.6 h]; Equipment Opreator [152.36 h]; Excavator-Poclain [50.75 h]; Dump Truck [101.6 h]; Excavation for Trench size 60cm wide and 80cm deep ( for 2 cables) [12.1 m3]; Excavation for Trench size 180cm wide and 80cm deep (for 6 cables) [314.45 m3] | 3,265.5 | C012 | Z4 | CONS | MV | Excavation | AFT |
| RHD4CZ4C012MV1200 |  | Trench Backfilling for Medium Voltage Network - (RD-C-1 /2)-Z4-C012-MV | 5d | 2027-06-30 | 2027-07-05 | RHD4CZ4C012MV1100 | Skilled labor [50.75 h]; Unskilled Labor [50.75 h]; Equipment Opreator [101.6 h]; Dump Truck [101.6 h]; Excavation for Trench size 60cm wide and 80cm deep ( for 2 cables) [5.18 m3]; Excavation for Trench size 180cm wide and 80cm deep (for 6 cables) [134.76 m3] | 1,399.4 | C012 | Z4 | CONS | MV | Backfilling | AFT |
|  | 1982 | **RHD4-02-002-C012-(MV)-Medium Voltage cables 3Cx 50 mm²** |  | 2027-06-30 | 2027-07-22 |  |  |  |  |  |  |  |  |  |
| RHD4CZ4C012MV3101 |  | Installation of Medium Voltage Cables 3Cx 50 mm² - (RD-C-1 /2)-Z4-C012-MV | 2d | 2027-06-30 | 2027-07-01 | RHD4CZ4C012RD3100, RHD4CZ4C012MV1100 | Unskilled Labor [1.74 h]; Electrician [0.87 h]; Equipment Opreator [1.31 h]; Boom Truck [0.44 h]; Cable Laying Machine [0.87 h]; Single Core Copper Cable 13.8 kV 3Cx 50 mm² Cu/XLPE/PVC / Unarmored [3.6 m] | 403.2 | C012 | Z4 | CONS | MV | Installation | AFT |
| RHD4CZ4C012MV3301 |  | Testing of Medium Voltage Cables 3Cx 50 mm² - (RD-C-1 /2)-Z4-C012-MV | 2d | 2027-07-03 | 2027-07-04 | RHD4CZ4C012MV3101 | Unskilled Labor [0.33 h]; Electrician [0.22 h]; Single Core Copper Cable 13.8 kV 3Cx 50 mm² Cu/XLPE/PVC / Unarmored [0.4 m] | 44.8 | C012 | Z4 | CONS | MV | Testing | AFT |
| RHD4CZ4C012MV3401 |  | Termination of Medium Voltage Cables 3Cx 50 mm² - (RD-C-1 /2)-Z4-C012-MV | 2d | 2027-07-21 | 2027-07-22 | RHD4CZ4C012MV3301, RHD4CZ4C012MV5400 | Unskilled Labor [5.77 h]; Electrician [2.94 h]; Cable Termination for 13.8 kv 3Cx 500 mm², Al /XLPE/LLDPE [0.4 Unit] | 1,054 | C012 | Z4 | CONS | MV | Termination | AFT |

| ID | WBS | Activity | Duration | Start | Finish | Predecessors | Resources | Cost | RDH4-01-001-Road and Block Names-1 | RDH4-01-001-Zones-1 | RDH4-01-001-Phases-1 | RDH4-01-001-Networks-1 | RDH4-01-001-Work Method-1 | RDH4-01-001-MENEM |
| --- | --- | --- | --- | --- | --- | --- | --- | --- | --- | --- | --- | --- | --- | --- |
|  | 2359 | **RHD4-02-002-C012-(MV)-Medium Voltage duct banks** |  |  |  |  |  |  |  |  |  |  |  |  |
|  | 2360 | **RHD4-02-002-C012-(MV)-Medium Voltage cables 3Cx 500 mm²** |  | 2027-06-30 | 2027-07-15 |  |  |  |  |  |  |  |  |  |
| RHD4CZ4C012MV3100 |  | Installation of Medium Voltage Cables 3Cx 500 mm² - (RD-C-1 /2)-Z4-C012-MV | 6d | 2027-06-30 | 2027-07-06 | RHD4PRSHLDOSMV1100, RHD4ENMSMV2000, RHD4ENMSMV2010, RHD4PRSHLSTAGMV1100, RHD4CZ4C012MV1100 | Skilled labor [60 h]; Unskilled Labor [239.91 h]; Electrician [120 h]; Equipment Opreator [179.91 h]; Boom Truck [60 h]; Cable Laying Machine [120 h]; Cable 13.8 kV 3Cx 500 mm² Al/XLPE,/LLDPE / Unarmored [2478.43 m] | 394,070.5 | C012 | Z4 | CONS | MV | Installation | AFT |
| RHD4CZ4C012MV3200 |  | Joints Installation of Medium Voltage Cables 3Cx 500 mm² - (RD-C-1 /2)-Z4-C012-MV | 2d | 2027-07-07 | 2027-07-08 | RHD4PRSHLDOSMV1300, RHD4PRSHLSTAGMV1300, RHD4CZ4C012MV3100 | Skilled labor [16.34 h]; Unskilled Labor [65.34 h]; Electrician [32.67 h]; Equipment Opreator [16.34 h]; Boom Truck [16.34 h]; Straight joints cables for 13.8 kv 3Cx 500 mm², Al /XLPE/LLDPE [3 Unit] | 9,744 | C012 | Z4 | CONS | MV | Joints Installation | AFT |
| RHD4CZ4C012MV3300 |  | Testing of Medium Voltage Cables 3Cx 500 mm² - (RD-C-1 /2)-Z4-C012-MV | 6d | 2027-07-10 | 2027-07-15 | RHD4CZ4C012MV3200, RHD4CZ4C012MV1200 | Skilled labor [60 h]; Unskilled Labor [239.91 h]; Electrician [120 h]; Cable 13.8 kV 3Cx 500 mm² Al/XLPE,/LLDPE / Unarmored [275.38 m] | 43,785.61 | C012 | Z4 | CONS | MV | Testing | AFT |
|  | 1984 | **RHD4-02-002-C012-(MV)-Unit Substations** |  | 2027-07-06 | 2027-07-20 |  |  |  |  |  |  |  |  |  |
| RHD4CZ4C012MV5100 |  | Excavation for Unit Substations for Medium Voltage Network - (RD-C-1 /2)-Z4-C012-MV | 2d | 2027-07-06 | 2027-07-07 | RHD4CZ4C012MV1200 | Skilled labor [21.78 h]; Unskilled Labor [21.78 h]; Equipment Opreator [43.56 h]; Excavator-Poclain [21.78 h]; Dump Truck [21.78 h]; Unit Substation 13.8/0.4 K V, 500kVA ,Including concrete foundations and fencing, According to the specifications and standards of SEC [0.1 Unit]; Ring Main Unit RMU, 13.8KV, According to the specifications and standards of SEC [0.1 Unit] | 12,257 | C012 | Z4 | CONS | MV | Excavation | AFT |
| RHD4CZ4C012MV5200 |  | Concrete Base Placement for Unit Substations for Medium Voltage Network - (RD-C-1 /2)-Z4-C012-MV | 2d | 2027-07-08 | 2027-07-10 | RHD4CZ4C012MV5100 | Skilled labor [21.78 h]; Unskilled Labor [21.78 h]; Equipment Opreator [21.78 h]; Boom Truck [21.78 h]; Unit Substation 13.8/0.4 K V, 500kVA ,Including concrete foundations and fencing, According to the specifications and standards of SEC [0.15 Unit]; Ring Main Unit RMU, 13.8KV, According to the specifications and standards of SEC [0.15 Unit] | 18,385.5 | C012 | Z4 | CONS | MV | Concrete Base Placement | AFT |
| RHD4CZ4C012MV5300 |  | Installation for Fences and doors for Medium Voltage Network - (RD-C-1 /2)-Z4-C012-MV | 5d | 2027-07-11 | 2027-07-15 | RHD4CZ4C012MV5200 | Skilled labor [54.45 h]; Unskilled Labor [54.45 h]; Equipment Opreator [65.34 h]; Excavator-Poclain [10.89 h]; Boom Truck [54.45 h]; Unit Substation 13.8/0.4 K V, 500kVA ,Including concrete foundations and fencing, According to the specifications and standards of SEC [0.1 Unit]; Ring Main Unit RMU, 13.8KV, According to the specifications and standards of SEC [0.1 Unit] | 12,257 | C012 | Z4 | CONS | MV | Fence Installation | AFT |
| RHD4CZ4C012MV5400 |  | Installation for Unit Substations for Medium Voltage Network - (RD-C-1 /2)-Z4-C012-MV | 4d | 2027-07-17 | 2027-07-20 | RHD4CZ4C012MV5300 | Skilled labor [43.56 h]; Unskilled Labor [87.12 h]; Electrician [87.12 h]; Unit Substation 13.8/0.4 K V, 500kVA ,Including concrete foundations and fencing, According to the specifications and standards of SEC [0.65 Unit]; Ring Main Unit RMU, 13.8KV, According to the specifications and standards of SEC [0.65 Unit] | 79,670.5 | C012 | Z4 | CONS | MV | Substation Installation | AFT |
|  | 5388 | **RHD4-02-002-C012-(MV)-Normally open Point (Outdoor Type)** |  |  |  |  |  |  |  |  |  |  |  |  |
|  | 2364 | **RHD4-02-002-Z4-C012-Low Voltage Network - LV** |  | 2027-07-17 | 2027-10-04 |  |  |  |  |  |  |  |  |  |
|  | 2367 | **RHD4-02-002-C012-(LV)-Low Voltage cables** |  | 2027-07-17 | 2027-07-29 |  |  |  |  |  |  |  |  |  |
| RHD4CZ4C012LV3100 |  | Excavation for Low Voltage Cables for Low Voltage Network - (RD-C-1 /2)-Z4-C012-LV | 4d | 2027-07-17 | 2027-07-20 | RHD4CZ4C012MV1200, RHD4ENSDZ4APPLV160, RHD4CZ4C012MV3300 | Skilled labor [33.11 h]; Unskilled Labor [66.1 h]; Equipment Opreator [66.1 h]; Excavator-Poclain [33.11 h]; Boom Truck [33.11 h]; Cable, Copper 4x185mm2/ CU/XLPE/PVC [149.85 m]; Cable, Copper 4x50mm2/ CU/XLPE/PVC +1x25mm2 CU/PVC [1.94 m] | 58,080.72 | C012 | Z4 | CONS | LV | Excavation | AFT |
| RHD4CZ4C012LV3200 |  | Cable Laying of Low Voltage Cables for Low Voltage Network - (RD-C-1 /2)-Z4-C012-LV | 3d | 2027-07-21 | 2027-07-24 | RHD4PRSHLDOSLV1100, RHD4ENMSLV2000, RHD4ENMSLV2010, RHD4PRSHLSTAGLV1100, RHD4CZ4C012LV3100 | Skilled labor [27.55 h]; Unskilled Labor [110.21 h]; Electrician [55.11 h]; Equipment Opreator [82.66 h]; Boom Truck [27.55 h]; Cable Laying Machine [55.11 h]; Cable, Copper 4x185mm2/ CU/XLPE/PVC [183 m]; Cable, Copper 4x50mm2/ CU/XLPE/PVC +1x25mm2 CU/PVC [5.81 m] | 71,352.63 | C012 | Z4 | CONS | LV | Cable Laying | AFT |
| RHD4CZ4C012LV3300 |  | Warning tape and Backfill for Low Voltage Cables for Low Voltage Network - (RD-C-1 /2)-Z4-C012-LV | 3d | 2027-07-25 | 2027-07-27 | RHD4CZ4C012LV3200 | Skilled labor [27.55 h]; Unskilled Labor [110.21 h]; Electrician [55.11 h]; Equipment Opreator [27.55 h]; Boom Truck [27.55 h]; Cable, Copper 4x185mm2/ CU/XLPE/PVC [112.39 m]; Cable, Copper 4x50mm2/ CU/XLPE/PVC +1x25mm2 CU/PVC [1.45 m] | 43,560.89 | C012 | Z4 | CONS | LV | Warning tape and Backfill | AFT |
| RHD4CZ4C012LV3400 |  | Testing of Low Voltage Cables for Low Voltage Network - (RD-C-1 /2)-Z4-C012-LV | 2d | 2027-07-28 | 2027-07-29 | RHD4CZ4C012LV3300 | Skilled labor [16.55 h]; Unskilled Labor [66.1 h]; Electrician [33.11 h]; Equipment Opreator [16.55 h]; Boom Truck [16.55 h]; Cable, Copper 4x185mm2/ CU/XLPE/PVC [37.46 m]; Cable, Copper 4x50mm2/ CU/XLPE/PVC +1x25mm2 CU/PVC [0.48 m] | 14,518.6 | C012 | Z4 | CONS | LV | Testing | AFT |
|  | 4259 | **RHD4-02-002-C012-(LV)-Low Voltage Distribution Pillars** |  | 2027-07-31 | 2027-10-04 |  |  |  |  |  |  |  |  |  |
| RHD4CZ4C012LV4100 |  | Leveling for Distribution Pillars for Low Voltage Network - (RD-C-1 /2)-Z4-C012-LV | 2d | 2027-07-31 | 2027-08-01 | RHD4CZ4C012LV3400 | Skilled labor [10.89 h]; Unskilled Labor [21.78 h]; Equipment Opreator [4.36 h]; Excavator-Poclain [2.18 h]; Boom Truck [2.18 h]; Supply and installation of KWH meter mounting frame including concrete block wall for installation of KWH meter according to the standards and specifications of SEC [0.3 Unit] | 1,415.7 | C012 | Z4 | CONS | LV | Leveling | AFT |
| RHD4CZ4C012LV4200 |  | Lean Concrete for Distribution Pillars for Low Voltage Network - (RD-C-1 /2)-Z4-C012-LV | 2d | 2027-08-02 | 2027-08-03 | RHD4CZ4C012LV4100 | Skilled labor [7.3 h]; Unskilled Labor [14.48 h]; Equipment Opreator [2.94 h]; Concrete Mixer Truck [1.42 h]; Concrete Pump [1.42 h]; Supply and installation of KWH meter mounting frame including concrete block wall for installation of KWH meter according to the standards and specifications of SEC [0.5 Unit] | 2,359.5 | C012 | Z4 | CONS | LV | Lean Concrete | AFT |
| RHD4CZ4C012LV4300 |  | Installation of Distribution Pillars for Low Voltage Network - (RD-C-1 /2)-Z4-C012-LV | 2d | 2027-10-03 | 2027-10-04 | RHD4CZ4C012SL6100, RHD4CZ4C012LV4200 | Skilled labor [10.89 h]; Unskilled Labor [43.56 h]; Electrician [21.78 h]; Equipment Opreator [10.89 h]; Boom Truck [10.89 h]; Supply and installation of KWH meter mounting frame including concrete block wall for installation of KWH meter according to the standards and specifications of SEC [1.2 Unit] | 5,662.8 | C012 | Z4 | CONS | LV | Installation | AFT |
|  | 4260 | **RHD4-02-002-C012-(LV)-Low Voltage Distribution Pillars Earthing** |  |  |  |  |  |  |  |  |  |  |  |  |
|  | 2370 | **RHD4-02-002-Z4-C012-Street Lighting Network - SL** |  | 2027-07-06 | 2027-10-02 |  |  |  |  |  |  |  |  |  |
|  | 2371 | **RHD4-02-002-C012-(SL)-Street Lighting duct banks** |  | 2027-09-01 | 2027-09-09 |  |  |  |  |  |  |  |  |  |
| RHD4CZ4C012SL2100 |  | Excavation of Duct Banks for Street Lighting Network - (RD-C-1 /2)-Z4-C012-SL | 2d | 2027-09-01 | 2027-09-02 | RHD4ENSDZ4APPSL170, RHD4CZ4C012IRR2400 | Skilled labor [9.91 h]; Unskilled Labor [9.91 h]; Equipment Opreator [19.71 h]; Excavator-Poclain [9.91 h]; Dump Truck [9.91 h]; Road Crossing Duct for Street Lighting cables UPVC (2x?110mm) [1.36 m] | 274.58 | C012 | Z4 | CONS | SL | Excavation | bef |
| RHD4CZ4C012SL2200 |  | Installation of Duct Banks for Street Lighting Network - (RD-C-1 /2)-Z4-C012-SL | 2d | 2027-09-04 | 2027-09-05 | RHD4CZ4C012SL2100 | Carpenter [1.52 h]; Skilled labor [14.81 h]; Unskilled Labor [14.81 h]; Steel Fixer [1.52 h]; Road Crossing Duct for Street Lighting cables UPVC (2x?110mm) [1.36 m] | 274.58 | C012 | Z4 | CONS | SL | Installing | bef |
| RHD4CZ4C012SL2300 |  | Pouring of Duct Banks for Street Lighting Network - (RD-C-1 /2)-Z4-C012-SL | 2d | 2027-09-06 | 2027-09-07 | RHD4CZ4C012SL2200 | Skilled labor [9.91 h]; Unskilled Labor [9.91 h]; Equipment Opreator [3.92 h]; Concrete Mixer Truck [1.96 h]; Concrete Pump [1.96 h]; Road Crossing Duct for Street Lighting cables UPVC (2x?110mm) [8.84 m] | 1,784.76 | C012 | Z4 | CONS | SL | Pouring | bef |
| RHD4CZ4C012SL2400 |  | Backfilling of Duct Banks for Street Lighting Network - (RD-C-1 /2)-Z4-C012-SL | 2d | 2027-09-08 | 2027-09-09 | RHD4CZ4C012SL2300 | Skilled labor [7.41 h]; Unskilled Labor [7.41 h]; Equipment Opreator [2.94 h]; Excavator-Poclain [2.94 h]; Road Crossing Duct for Street Lighting cables UPVC (2x?110mm) [2.04 m] | 411.87 | C012 | Z4 | CONS | SL | Backfilling | bef |

| ID | WBS | Activity | Duration | Start | Finish | Predecessors | Resources | Cost | RDH4-01-001-Road and Block Names-1 | RDH4-01-001-Zones-1 | RDH4-01-001-Phases-1 | RDH4-01-001-Networks-1 | RDH4-01-001-Work Method-1 | RDH4-01-001-MENEM |
| --- | --- | --- | --- | --- | --- | --- | --- | --- | --- | --- | --- | --- | --- | --- |
|  | 2373 | **RHD4-02-002-C012-(SL)-Street Lighting cables** |  | 2027-07-06 | 2027-07-18 |  |  |  |  |  |  |  |  |  |
| RHD4CZ4C012SL3100 |  | Excavation for Street Lighting Cables for Street Lighting Network - (RD-C-1 /2)-Z4-C012-SL | 3d | 2027-07-06 | 2027-07-08 | RHD4ENSDZ4APPSL170, RHD4CZ4C012MV1200 | Skilled labor [28.75 h]; Unskilled Labor [57.39 h]; Equipment Opreator [57.39 h]; Excavator-Poclain [28.75 h]; Boom Truck [28.75 h]; Cable, Copper 4x10mm2/ CU/XLPE/SWA/PVC + 1x10mm2 CU/PVC [131.8 m] | 6,458.2 | C012 | Z4 | CONS | SL | Excavation | AFT |
| RHD4CZ4C012SL3200 |  | Cable Laying of Street Lighting Cables for Street Lighting Network - (RD-C-1 /2)-Z4-C012-SL | 3d | 2027-07-10 | 2027-07-12 | RHD4ENMSSL2000, RHD4ENMSSL2010, RHD4CZ4C012SL3100 | Skilled labor [23.96 h]; Unskilled Labor [95.73 h]; Electrician [47.81 h]; Equipment Opreator [71.77 h]; Boom Truck [23.96 h]; Cable Laying Machine [47.81 h]; Cable, Copper 4x10mm2/ CU/XLPE/SWA/PVC + 1x10mm2 CU/PVC [395.39 m] | 19,374.33 | C012 | Z4 | CONS | SL | Cable Laying | AFT |
| RHD4CZ4C012SL3300 |  | Warning tape and Backfill for Street Lighting Cables for Street Lighting Network - (RD-C-1 /2)-Z4-C012-SL | 3d | 2027-07-13 | 2027-07-15 | RHD4CZ4C012SL3200 | Skilled labor [23.96 h]; Unskilled Labor [95.73 h]; Electrician [47.81 h]; Equipment Opreator [23.96 h]; Boom Truck [23.96 h]; Cable, Copper 4x10mm2/ CU/XLPE/SWA/PVC + 1x10mm2 CU/PVC [98.85 m] | 4,843.58 | C012 | Z4 | CONS | SL | Warning tape and Backfill | AFT |
| RHD4CZ4C012SL3400 |  | Testing of Street Lighting Cables for Street Lighting Network - (RD-C-1 /2)-Z4-C012-SL | 2d | 2027-07-17 | 2027-07-18 | RHD4CZ4C012SL3300 | Skilled labor [14.4 h]; Unskilled Labor [57.39 h]; Electrician [28.75 h]; Equipment Opreator [14.4 h]; Boom Truck [14.4 h]; Cable, Copper 4x10mm2/ CU/XLPE/SWA/PVC + 1x10mm2 CU/PVC [32.95 m] | 1,614.53 | C012 | Z4 | CONS | SL | Testing | AFT |
|  | 2374 | **RHD4-02-002-C012-(SL)-Street Lighting Poles** |  | 2027-09-11 | 2027-09-21 |  |  |  |  |  |  |  |  |  |
| RHD4CZ4C012SL1100 |  | Excavation for RC Base for Lighting Poles for Street Lighting Network - (RD-C-1 /2)-Z4-C012-SL | 2d | 2027-09-11 | 2027-09-12 | RHD4CZ4C012MV1200, RHD4ENSDZ4APPSL170, RHD4CZ4C012SL2400 | Skilled labor [10.89 h]; Unskilled Labor [10.89 h]; Equipment Opreator [21.78 h]; Excavator-Poclain [10.89 h]; Dump Truck [10.89 h]; Lighting polesdouble arms, height of ( 12 ) meters [1.5 Unit] | 6,858 | C012 | Z4 | CONS | SL | Excavation | AFT |
| RHD4CZ4C012SL1200 |  | Installation for RC Base for Lighting Poles for Street Lighting Network - (RD-C-1 /2)-Z4-C012-SL | 2d | 2027-09-13 | 2027-09-14 | RHD4CZ4C012SL1100 | Skilled labor [10.89 h]; Unskilled Labor [10.89 h]; Equipment Opreator [21.78 h]; Excavator-Poclain [10.89 h]; Dump Truck [10.89 h]; Lighting polesdouble arms, height of ( 12 ) meters [3.75 Unit] | 17,145 | C012 | Z4 | CONS | SL | RC Base | AFT |
| RHD4CZ4C012SL1300 |  | Backfill for RC Base for Lighting Poles for Street Lighting Network - (RD-C-1 /2)-Z4-C012-SL | 2d | 2027-09-15 | 2027-09-16 | RHD4CZ4C012SL1200 | Skilled labor [10.89 h]; Unskilled Labor [10.89 h]; Equipment Opreator [21.78 h]; Excavator-Poclain [10.89 h]; Dump Truck [10.89 h]; Lighting polesdouble arms, height of ( 12 ) meters [0.75 Unit] | 3,429 | C012 | Z4 | CONS | SL | Backfill | AFT |
| RHD4CZ4C012SL1400 |  | Installation for Lighting Poles for Street Lighting Network - (RD-C-1 /2)-Z4-C012-SL | 2d | 2027-09-18 | 2027-09-19 | RHD4PRSHLDOSSL1200, RHD4ENMSSL2000, RHD4ENMSSL2010, RHD4PRSHLSTAGSL1200, RHD4CZ4C012SL1300 | Skilled labor [16.34 h]; Unskilled Labor [16.34 h]; Electrician [16.34 h]; Equipment Opreator [16.34 h]; Boom Truck [16.34 h]; Lighting polesdouble arms, height of ( 12 ) meters [9 Unit] | 41,148 | C012 | Z4 | CONS | SL | Poles Installation | AFT |
| RHD4CZ4C012SL1500 |  | Luminaire Installation for Lighting Poles for Street Lighting Network - (RD-C-1 /2)-Z4-C012-SL | 2d | 2027-09-20 | 2027-09-21 | RHD4PRSHLDOSSL1300, RHD4PRSHLSTAGSL1300, RHD4CZ4C012SL1400 | Unskilled Labor [43.56 h]; Electrician [21.78 h]; Equipment Opreator [8.71 h]; Boom Truck [8.71 h]; Street Lighting( LED) Luminaire of Output ?18553 lumen [30 Unit] | 19,110 | C012 | Z4 | CONS | SL | Luminaire Installation | AFT |
|  | 5023 | **RHD4-02-002-C012-(SL)-Street Lighting Feeder Pillars** |  | 2027-09-22 | 2027-09-29 |  |  |  |  |  |  |  |  |  |
| RHD4CZ4C012SL4100 |  | Leveling for Distribution Pillars for Street Lighting Network - (RD-C-1 /2)-Z4-C012-SL | 2d | 2027-09-22 | 2027-09-25 | RHD4CZ4C012SL1500 | Skilled labor [10.89 h]; Unskilled Labor [21.78 h]; Equipment Opreator [4.36 h]; Excavator-Poclain [2.18 h]; Boom Truck [2.18 h]; 0.6/1 KV Steet Lighting Feeder Pillar [0.15 Unit] | 3,438.15 | C012 | Z4 | CONS | SL | Leveling | AFT |
| RHD4CZ4C012SL4200 |  | Lean Concrete for Distribution Pillars for Street Lighting Network - (RD-C-1 /2)-Z4-C012-SL | 2d | 2027-09-26 | 2027-09-27 | RHD4CZ4C012SL4100 | Skilled labor [10.89 h]; Unskilled Labor [21.78 h]; Equipment Opreator [4.36 h]; Concrete Mixer Truck [2.18 h]; Concrete Pump [2.18 h]; 0.6/1 KV Steet Lighting Feeder Pillar [0.25 Unit] | 5,730.25 | C012 | Z4 | CONS | SL | Lean Concrete | AFT |
| RHD4CZ4C012SL4300 |  | Installation of Distribution Pillars for Street Lighting Network - (RD-C-1 /2)-Z4-C012-SL | 2d | 2027-09-28 | 2027-09-29 | RHD4CZ4C012SL4200 | Skilled labor [10.89 h]; Unskilled Labor [43.56 h]; Electrician [21.78 h]; Equipment Opreator [10.89 h]; Boom Truck [10.89 h]; 0.6/1 KV Steet Lighting Feeder Pillar [0.6 Unit] | 13,752.6 | C012 | Z4 | CONS | SL | Installation | AFT |
|  | 5024 | **RHD4-02-002-C012-(SL)-Street Lighting Earthing System** |  | 2027-09-30 | 2027-10-02 |  |  |  |  |  |  |  |  |  |
| RHD4CZ4C012SL6100 |  | Installation of Earthing for Lighting Poles and Fedder Pillers for Street Lighting Network - (RD-C-1 /2)-Z4-C012-SL | 2d | 2027-09-30 | 2027-10-02 | RHD4CZ4C012MV3401, RHD4CZ4C012SL4300 | Skilled labor [0.8 h]; Unskilled Labor [0.8 h]; Equipment Opreator [1.42 h]; Excavator-Poclain [0.8 h]; Dump Truck [0.8 h]; Street Lighting Feeder pillars - ER [1 Unit] | 1,128 | C012 | Z4 | CONS | SL | Installation | AFT |
|  | 2372 | **RHD4-02-002-C012-(SL)-Street Lighting Drawpit** |  | 2027-09-13 | 2027-09-16 |  |  |  |  |  |  |  |  |  |
| RHD4CZ4C012SL5100 |  | Excavation of Drawpit size 600x600x900mm for Street Lighting Network - (RD-C-1 /2)-Z4-C012-SL | 2d | 2027-09-13 | 2027-09-14 | RHD4ENSDZ4APPSL170, RHD4CZ4C012SL1100, RHD4CZ4C012SL3400, RHD4CZ4C012SL2300 | Skilled labor [1.85 h]; Unskilled Labor [1.85 h]; Equipment Opreator [1.42 h]; Excavator-Poclain [0.8 h]; Dump Truck [0.8 h]; Drawpit with medium duty steel cover, size600x600x900mm, [0.3 Unit] | 735.3 | C012 | Z4 | CONS | SL | Excavation | AFT |
| RHD4CZ4C012SL5200 |  | Installation of Drawpit size 600x600x900mm for Street Lighting Network - (RD-C-1 /2)-Z4-C012-SL | 2d | 2027-09-15 | 2027-09-16 | RHD4PRSHLDOSSL1400, RHD4PRSHLSTAGSL1400, RHD4CZ4C012IRR3200, RHD4CZ4C012SL5100 | Skilled labor [1.85 h]; Unskilled Labor [1.85 h]; Equipment Opreator [0.8 h]; Boom Truck [0.8 h]; Drawpit with medium duty steel cover, size600x600x900mm, [1.7 Unit] | 4,166.7 | C012 | Z4 | CONS | SL | Installation | AFT |
|  | 2382 | **RHD4-02-002-Z4-C012-Telecommunications Network - TC** |  | 2027-09-18 | 2027-09-29 |  |  |  |  |  |  |  |  |  |
|  | 2383 | **RHD4-02-002-C012-(TC)-Telecommunications Ducts** |  | 2027-09-18 | 2027-09-29 |  |  |  |  |  |  |  |  |  |
| RHD4CZ4C012TC2100 |  | Excavation of HDPE Ducts for Telecom Network - (RD-C-1 /2)-Z4-C012-TC | 3d | 2027-09-18 | 2027-09-20 | RHD4ENSDZ4APPTC190, RHD4CZ4C012SL5100, RHD4CZ4C012SL5200 | Skilled labor [28.64 h]; Unskilled Labor [28.64 h]; Equipment Opreator [57.39 h]; Excavator-Poclain [28.64 h]; Dump Truck [28.64 h]; (6*50mm) HDPE ducts -TC [79.05 m] | 6,956.4 | C012 | Z4 | CONS | TC | Excavation | AFT |
| RHD4CZ4C012TC2200 |  | Installation of HDPE Ducts for Telecom Network - (RD-C-1 /2)-Z4-C012-TC | 4d | 2027-09-21 | 2027-09-26 | RHD4PRSHLDOSTC1000, RHD4PRSHLSTAGTC1000, RHD4CZ4C012TC2100 | Carpenter [4.36 h]; Skilled labor [43.02 h]; Unskilled Labor [43.02 h]; Steel Fixer [4.36 h]; (6*50mm) HDPE ducts -TC [256.91 m] | 22,608.3 | C012 | Z4 | CONS | TC | Installing | AFT |
| RHD4CZ4C012TC2400 |  | Backfilling of HDPE Ducts for Telecom Network - (RD-C-1 /2)-Z4-C012-TC | 3d | 2027-09-27 | 2027-09-29 | RHD4CZ4C012TC2200, RHD4CZ4C012TC5200 | Skilled labor [28.64 h]; Unskilled Labor [28.64 h]; Equipment Opreator [11.43 h]; Excavator-Poclain [11.43 h]; (6*50mm) HDPE ducts -TC [59.29 m] | 5,217.3 | C012 | Z4 | CONS | TC | Backfilling | AFT |

| ID | WBS | Activity | Duration | Start | Finish | Predecessors | Complete | Planned start | Planned finish | Resources | Cost | Actual cost | RDH4-01-001-Road and Block Names-1 | RDH4-01-001-Zones-1 | RDH4-01-001-Phases-1 | RDH4-01-001-Networks-1 | RDH4-01-001-Work Method-1 | RDH4-01-001-MENEM |
| --- | --- | --- | --- | --- | --- | --- | --- | --- | --- | --- | --- | --- | --- | --- | --- | --- | --- | --- |
|  | 2384 | **RHD4-02-002-C012-(TC)-Telecommunications Manholes** |  | 2027-09-21 | 2027-09-26 |  |  |  |  |  |  |  |  |  |  |  |  |  |
| RHD4CZ4C012TC5100 |  | Excavation for Manholes for Telecom Network - (RD-C-1 /2)-Z4-C012-TC | 2d | 2027-09-21 | 2027-09-22 | RHD4ENSDZ4APPTC190, RHD4CZ4C012TC2100 |  |  |  | Skilled labor [4.14 h]; Unskilled Labor [4.14 h]; Equipment Opreator [3.27 h]; Excavator-Poclain [1.6 h]; Dump Truck [1.6 h]; Manhole Type 1 - TC [0.15 nr]; Manhole Type 2 - TC [0.15 nr] | 2,022.3 |  | C012 | Z4 | CONS | TC | Excavation | AFT |
| RHD4CZ4C012TC5200 |  | Installation of Manholes for Telecom Network - (RD-C-1 /2)-Z4-C012-TC | 2d | 2027-09-25 | 2027-09-26 | RHD4PRSHLDOSTC1200, RHD4PRSHLSTAGTC1200, RHD4CZ4C012TC5100, RHD4CZ4C012TC2200 SS |  |  |  | Skilled labor [4.14 h]; Unskilled Labor [4.14 h]; Equipment Opreator [1.6 h]; Boom Truck [1.6 h]; Manhole Type 1 - TC [0.85 nr]; Manhole Type 2 - TC [0.85 nr] | 11,459.7 |  | C012 | Z4 | CONS | TC | Installation | AFT |
|  | 2385 | **RHD4-02-002-C012-(TC)-Telecomminications Road Crossings** |  |  |  |  |  |  |  |  |  |  |  |  |  |  |  |  |
|  | 2386 | **RHD4-02-002-Z4-C012-Information and Communication Technologies - ICT** |  | 2027-02-17 | 2027-10-24 |  |  |  |  |  |  |  |  |  |  |  |  |  |
|  | 2387 | **RHD4-02-002-C012-(ICT)-Information and Communication Technologies Ducts** |  | 2027-09-21 | 2027-10-24 |  |  |  |  |  |  |  |  |  |  |  |  |  |
| RHD4CZ4C012ICT2100 |  | Excavation of HDPE Ducts for ICT Network - (RD-C-1 /2)-Z4-C012-ICT | 8d | 2027-09-21 | 2027-09-30 | RHD4ENSDZ4APPICT200, RHD4CZ4C012TC2100, RHD4CZ4C012ICT3400 |  |  |  | Skilled labor [80.7 h]; Unskilled Labor [80.7 h]; Equipment Opreator [161.39 h]; Excavator-Poclain [80.7 h]; Dump Truck [80.7 h]; (2*50mm) HDPE ducts -ICT [219.65 m]; (2*32mm) HDPE ducts -ICT [2.6 m] | 8,435.1 |  | C012 | Z4 | CONS | ICT | Excavation | AFT |
| RHD4CZ4C012ICT2200 |  | Installation of HDPE Ducts for ICT Network - (RD-C-1 /2)-Z4-C012-ICT | 12d | 2027-10-02 | 2027-10-14 | RHD4PRSHLDOSICT1000, RHD4PRSHLSTAGICT1000, RHD4CZ4C012ICT2100 |  |  |  | Carpenter [12.09 h]; Skilled labor [120.99 h]; Unskilled Labor [120.99 h]; Steel Fixer [12.09 h]; (2*50mm) HDPE ducts -ICT [713.86 m]; (2*32mm) HDPE ducts -ICT [8.45 m] | 27,414.08 |  | C012 | Z4 | CONS | ICT | Installing | AFT |
| RHD4CZ4C012ICT2400 |  | Backfilling of HDPE Ducts for ICT Network - (RD-C-1 /2)-Z4-C012-ICT | 8d | 2027-10-16 | 2027-10-24 | RHD4CZ4C012ICT2200, RHD4CZ4C012ICT5200 |  |  |  | Skilled labor [80.7 h]; Unskilled Labor [80.7 h]; Equipment Opreator [32.24 h]; Excavator-Poclain [32.24 h]; (2*50mm) HDPE ducts -ICT [164.74 m]; (2*32mm) HDPE ducts -ICT [1.95 m] | 6,326.32 |  | C012 | Z4 | CONS | ICT | Backfilling | AFT |
|  | 2388 | **RHD4-02-002-C012-(ICT)-Information and Communication Technologies Manholes** |  | 2027-10-02 | 2027-10-05 |  |  |  |  |  |  |  |  |  |  |  |  |  |
| RHD4CZ4C012ICT5100 |  | Excavation for Manholes for ICT Network - (RD-C-1 /2)-Z4-C012-ICT | 2d | 2027-10-02 | 2027-10-03 | RHD4ENSDZ4APPICT200, RHD4CZ4C012TC5200, RHD4CZ4C012ICT2100 |  |  |  | Skilled labor [5.45 h]; Unskilled Labor [5.45 h]; Equipment Opreator [4.36 h]; Excavator-Poclain [2.18 h]; Dump Truck [2.18 h]; Manhole Type 1 - ICT [0.3 nr]; Manhole Type 2 - ICT [0.15 nr] | 2,426.85 |  | C012 | Z4 | CONS | ICT | Excavation | AFT |
| RHD4CZ4C012ICT5200 |  | Installation of Manholes for ICT Network - (RD-C-1 /2)-Z4-C012-ICT | 2d | 2027-10-04 | 2027-10-05 | RHD4PRSHLDOSICT1200, RHD4PRSHLSTAGICT1200, RHD4CZ4C012ICT5100 |  |  |  | Skilled labor [5.45 h]; Unskilled Labor [5.45 h]; Equipment Opreator [2.18 h]; Boom Truck [2.18 h]; Manhole Type 1 - ICT [1.7 nr]; Manhole Type 2 - ICT [0.85 nr] | 13,752.15 |  | C012 | Z4 | CONS | ICT | Installation | AFT |
|  | 2389 | **RHD4-02-002-C012-(ICT)-Information and Communication Technologies Road Crossings** |  | 2027-02-17 | 2027-02-27 |  |  |  |  |  |  |  |  |  |  |  |  |  |
| RHD4CZ4C012ICT3100 |  | Excavation for Road Crossings for ICT Network - (RD-C-1 /2)-Z4-C012-ICT | 2d | 2027-02-17 | 2027-02-18 | RHD4ENSDZ4APPICT200, RHD4CZ4L09ST3102 |  |  |  | Skilled labor [15.68 h]; Unskilled Labor [15.68 h]; Equipment Opreator [31.47 h]; Excavator-Poclain [15.68 h]; Dump Truck [15.68 h]; Road crossing ducts, (2*50mm) HDPE -ICT [2.88 m] | 109.63 |  | C012 | Z4 | CONS | ICT | Excavation | bef |
| RHD4CZ4C012ICT3200 |  | Installation of Road Crossings for ICT Network - (RD-C-1 /2)-Z4-C012-ICT | 2d | 2027-02-20 | 2027-02-21 | RHD4PRSHLDOSICT1100, RHD4PRSHLSTAGICT1100, RHD4CZ4C012ICT3100 |  |  |  | Carpenter [2.07 h]; Skilled labor [20.91 h]; Unskilled Labor [20.91 h]; Steel Fixer [2.07 h]; Road crossing ducts, (2*50mm) HDPE -ICT [2.88 m] | 109.63 |  | C012 | Z4 | CONS | ICT | Installing | bef |
| RHD4CZ4C012ICT3300 |  | Pouring of Road Crossings for ICT Network - (RD-C-1 /2)-Z4-C012-ICT | 2d | 2027-02-23 | 2027-02-24 | RHD4CZ4C012ICT3200 |  |  |  | Skilled labor [20.91 h]; Unskilled Labor [20.91 h]; Equipment Opreator [8.39 h]; Concrete Mixer Truck [4.14 h]; Concrete Pump [4.14 h]; Road crossing ducts, (2*50mm) HDPE -ICT [18.75 m] | 712.6 |  | C012 | Z4 | CONS | ICT | Pouring | bef |
| RHD4CZ4C012ICT3400 |  | Backfilling of Road Crossings for ICT Network - (RD-C-1 /2)-Z4-C012-ICT | 2d | 2027-02-25 | 2027-02-27 | RHD4CZ4C012ICT3300 |  |  |  | Skilled labor [15.68 h]; Unskilled Labor [15.68 h]; Equipment Opreator [6.32 h]; Excavator-Poclain [6.32 h]; Road crossing ducts, (2*50mm) HDPE -ICT [4.33 m] | 164.44 |  | C012 | Z4 | CONS | ICT | Backfilling | bef |
|  | 2377 | **RHD4-02-002-Z4-C012-Landscape Network - LS** |  |  |  |  |  |  |  |  |  |  |  |  |  |  |  |  |
|  | 2378 | **RHD4-02-002-C012-(LS)-Landscape Lighting cables** |  |  |  |  |  |  |  |  |  |  |  |  |  |  |  |  |
|  | 2379 | **RHD4-02-002-C012-(LS)-Landscape Feeder Pillars** |  |  |  |  |  |  |  |  |  |  |  |  |  |  |  |  |
|  | 2380 | **RHD4-02-002-C012-(LS)-Landscape Bollard Poles** |  |  |  |  |  |  |  |  |  |  |  |  |  |  |  |  |
|  | 2381 | **RHD4-02-002-C012-(LS)-Landscape Feeder Pillars Earthing** |  |  |  |  |  |  |  |  |  |  |  |  |  |  |  |  |
|  | 2390 | **RHD4-02-002-Z4-C012-Security Network - CCTV** |  |  |  |  |  |  |  |  |  |  |  |  |  |  |  |  |
|  | 2391 | **RHD4-02-002-C012-(CCTV)-Civil Works** |  |  |  |  |  |  |  |  |  |  |  |  |  |  |  |  |
|  | 7324 | **RHD4-02-002-Z8** |  | 2026-07-15 | 2028-11-08 |  |  |  |  |  |  |  |  |  |  |  |  |  |
|  | 7703 | **RHD4-02-002-Z8-A011** |  | 2026-07-15 | 2028-04-08 |  |  |  |  |  |  |  |  |  |  |  |  |  |
|  | 7778 | **RHD4-02-002-Z8-A011-Crossings Potable Network - PTCr** |  |  |  |  |  |  |  |  |  |  |  |  |  |  |  |  |
|  | 7782 | **RHD4-02-002-A011-(PTCr)-HDPE Pipes - 400 mm diameter** |  |  |  |  |  |  |  |  |  |  |  |  |  |  |  |  |
|  | 7785 | **RHD4-02-002-A011-(PTCr)-Butterfly Valve Chamber** |  |  |  |  |  |  |  |  |  |  |  |  |  |  |  |  |
|  | 7786 | **RHD4-02-002-A011-(PTCr)-Butterfly Valves** |  |  |  |  |  |  |  |  |  |  |  |  |  |  |  |  |
|  | 7789 | **RHD4-02-002-A011-(PTCr)-Air Valve Chambers** |  |  |  |  |  |  |  |  |  |  |  |  |  |  |  |  |
|  | 7790 | **RHD4-02-002-A011-(PTCr)-Air Valves** |  |  |  |  |  |  |  |  |  |  |  |  |  |  |  |  |
|  | 7791 | **RHD4-02-002-A011-(PTCr)-Fire Hydrant** |  |  |  |  |  |  |  |  |  |  |  |  |  |  |  |  |
|  | 7825 | **RHD4-02-002-Z8-A011-Crossings Irrigation Network - IRRC** |  |  |  |  |  |  |  |  |  |  |  |  |  |  |  |  |
|  | 7826 | **RHD4-02-002-A011-(IRRC)-HDPE Pipes - 160 mm diameter** |  |  |  |  |  |  |  |  |  |  |  |  |  |  |  |  |
|  | 7833 | **RHD4-02-002-A011-(IRRC)-HDPE Pipes - 500 mm diameter** |  |  |  |  |  |  |  |  |  |  |  |  |  |  |  |  |
|  | 7834 | **RHD4-02-002-A011-(IRRC)-Gate Valves (Direct Buried)** |  |  |  |  |  |  |  |  |  |  |  |  |  |  |  |  |
|  | 7835 | **RHD4-02-002-A011-(IRRC)-Butterfly Valve Chamber** |  |  |  |  |  |  |  |  |  |  |  |  |  |  |  |  |
|  | 7836 | **RHD4-02-002-A011-(IRRC)-Butterfly Valves** |  |  |  |  |  |  |  |  |  |  |  |  |  |  |  |  |
|  | 7839 | **RHD4-02-002-A011-(IRRC)-Air Valve Chamber** |  |  |  |  |  |  |  |  |  |  |  |  |  |  |  |  |
|  | 7840 | **RHD4-02-002-A011-(IRRC)-Air Valves** |  |  |  |  |  |  |  |  |  |  |  |  |  |  |  |  |
|  | 7882 | **RHD4-02-002-Z8-A011-Road Works - RD** |  | 2026-07-15 | 2028-04-08 |  |  |  |  |  |  |  |  |  |  |  |  |  |
|  | 7883 | **RHD4-02-002-A011-(RD)-Subgrade** |  | 2026-07-15 | 2026-07-27 |  |  |  |  |  |  |  |  |  |  |  |  |  |
| RHD4CZ8A011RD1100 |  | Supply, lay and compaction subgrade compacted thickness 300 mm for Roads - (RD-A-1 /1)-Z8-A011-RD | 5d | 2026-07-15 A | 2026-07-27 A | RHD4ENSDZ8APPRD220, RHD4ENSDZ8APPEW100 SS, RHD4CZ8A011TC3400 | 100% | 2026-08-27 | 2026-09-01 | Skilled labor [123.28 h]; Unskilled Labor [246.45 h]; Electrician [123.28 h]; Equipment Opreator [841.71 h]; Water Truck [40.62 h]; Roller compactor [61.6 h]; Grader [123.28 h]; Dump Truck [616.18 h]; Subgrade [7705.87 m3] | 146,411.53 | 146,411.53 | A011 | Z8 | CONS | RD | Subgrade | bef |

| ID | WBS | Activity | Duration | Start | Finish | Predecessors | Complete | Remaining | Planned start | Planned finish | Resources | Cost | Actual cost | RDH4-01-001-Road and Block Names-1 | RDH4-01-001-Zones-1 | RDH4-01-001-Phases-1 | RDH4-01-001-Networks-1 | RDH4-01-001-Work Method-1 | RDH4-01-001-MENEM |
| --- | --- | --- | --- | --- | --- | --- | --- | --- | --- | --- | --- | --- | --- | --- | --- | --- | --- | --- | --- |
|  | 7884 | **RHD4-02-002-A011-(RD)-Aggregate Base Course** |  | 2026-10-20 | 2027-03-15 |  |  |  |  |  |  |  |  |  |  |  |  |  |  |
| RHD4CZ8A011RD2100 |  | Supply, lay and compaction Aggregate base course compacted thickness 300 mmfor Roads - (RD-A-1 /1)-Z8-A011-RD | 11d | 2026-10-20 A | 2027-03-15 | RHD4PRSHLDOSRD1000, RHD4PRSHLSTAGRD1000, RHD4CZ8A011RD1100 | 50% | 11d | 2026-10-20 | 2026-11-01 | Skilled labor [59.35 h]; Unskilled Labor [118.7 h]; Equipment Opreator [751.2 h]; Water Truck [39.2 h]; Roller compactor [118.7 h]; Grader [118.7 h]; Dump Truck [474.71 h]; Aggregate Base Courses [4840.05 m3] | 275,882.85 | 137,941.42 | A011 | Z8 | CONS | RD | ABC | bef |
|  | 7885 | **RHD4-02-002-A011-(RD)-Bituminous base course Two Layers, including (MC1)&(RC2)** |  | 2027-03-16 | 2028-03-20 |  |  |  |  |  |  |  |  |  |  |  |  |  |  |
| RHD4CZ8A011RD3100 |  | Supply, lay and Asphaltic base course including Prime Coat (MC1) for 1st Layer - (RD-A-1 /1)-Z8-A011-RD | 6d | 2027-03-16 | 2027-03-22 | RHD4PRSHLDOSRD1100, RHD4ENMSASPH2000, RHD4ENMSASPH2010, RHD4PRSHLSTAGRD1100, RHD4CZ8A011RD2100, RHD4CZ6A015RD3100 |  |  |  |  | Skilled labor [62.84 h]; Unskilled Labor [377.02 h]; Equipment Opreator [942.45 h]; Bobcat [62.84 h]; Roller compactor [62.84 h]; Asphalt Paver [62.84 h]; Rubber Compactor [125.67 h]; MC1/RC2 Sprinkler [62.84 h]; Dump Truck [565.43 h]; Bituminous base course (Grading I - Class A), including Prime coat (MC1) & tack coate (RC2) [2298.73 m3] | 1,098,792.94 |  | A011 | Z8 | CONS | RD | 150 mm | AFT |
| RHD4CZ8A011RD3200 |  | Supply, lay and Asphaltic base course including Tack Coat (RC2) for 2nd Layer - (RD-A-1 /1)-Z8-A011-RD | 6d | 2028-03-14 | 2028-03-20 | RHD4PRSHLDOSRD1100, RHD4PRSHLSTAGRD1100, RHD4CZ8A011CCTV6100 |  |  |  |  | Skilled labor [62.84 h]; Unskilled Labor [377.02 h]; Equipment Opreator [942.45 h]; Bobcat [62.84 h]; Roller compactor [62.84 h]; Asphalt Paver [62.84 h]; Rubber Compactor [125.67 h]; MC1/RC2 Sprinkler [62.84 h]; Dump Truck [565.43 h]; Bituminous base course (Grading I - Class A), including Prime coat (MC1) & tack coate (RC2) [2298.73 m3] | 1,098,792.94 |  | A011 | Z8 | CONS | RD | 150 mm | AFT |
|  | 7887 | **RHD4-02-002-A011-(RD)-Precast Concrete Curb** |  | 2028-03-21 | 2028-03-25 |  |  |  |  |  |  |  |  |  |  |  |  |  |  |
| RHD4CZ8A011RD5100 |  | Supply and installation Precast Concrete Kerb for Roads - (RD-A-1 /1)-Z8-A011-RD | 4d | 2028-03-21 | 2028-03-25 | RHD4PRSHLDOSRD1200, RHD4ENMSRD2000, RHD4ENMSRD2010, RHD4PRSHLSTAGRD1200, RHD4CZ8A011RD3200 |  |  |  |  | Mason [124.48 h]; Skilled labor [41.49 h]; Unskilled Labor [124.48 h]; Equipment Opreator [82.98 h]; Bobcat [41.49 h]; Concrete Mixer Truck [41.49 h]; Precast Concrete Curbstone, type K1 [1714 m] | 94,270 |  | A011 | Z8 | CONS | RD | Curbs | AFT |
|  | 7890 | **RHD4-02-002-A011-(RD)-Traffic Signage** |  | 2028-03-26 | 2028-04-01 |  |  |  |  |  |  |  |  |  |  |  |  |  |  |
| RHD4CZ8A011RD8100 |  | Installation of Traffic Signage for Road Network - (RD-A-1 /1)-Z8-A011-RD | 6d | 2028-03-26 | 2028-04-01 | RHD4PRSHLDOSRD1600, RHD4PRSHLSTAGRD1600, RHD4CZ8A011RD5100, RHD4CZ8A011PT2401 |  |  |  |  | Skilled labor [130.68 h]; Unskilled Labor [65.34 h]; Electrician [10.89 h]; Equipment Opreator [17.42 h]; Boom Truck [13.07 h]; Concrete Mixer Truck [4.36 h]; Traffic signs, ground mounted, 1 Sheet Aluminium, (breakaway)Single post [9 nr] | 11,034 |  | A011 | Z8 | CONS | RD | Traffic Signage | AFT |
|  | 7888 | **RHD4-02-002-A011-(RD)-Precast Interlocking Block Pavers** |  |  |  |  |  |  |  |  |  |  |  |  |  |  |  |  |  |
|  | 7886 | **RHD4-02-002-A011-(RD)-Bituminous concrete wearing course including tack coat (RC2)** |  | 2028-03-26 | 2028-03-28 |  |  |  |  |  |  |  |  |  |  |  |  |  |  |
| RHD4CZ8A011RD4100 |  | Supply, lay and compaction Asphaltic wearing course including tack Coat (RC2)for Road Network - (RD-A-1 /1)-Z8-A011-RD | 3d | 2028-03-26 | 2028-03-28 | RHD4CZ8A011RD5100 |  |  |  |  | Skilled labor [24.29 h]; Unskilled Labor [145.6 h]; Equipment Opreator [364.17 h]; Bobcat [24.29 h]; Roller compactor [24.29 h]; Asphalt Paver [24.29 h]; Rubber Compactor [48.57 h]; MC1/RC2 Sprinkler [24.29 h]; Dump Truck [218.46 h]; Bituminous concrete wearing course, (Grading I - Class A), including tack coat (RC2) [1157.83 m3] | 628,701.69 |  | A011 | Z8 | CONS | RD | 50 mm | AFT |
|  | 7889 | **RHD4-02-002-A011-(RD)-Pavement Marking** |  | 2028-04-03 | 2028-04-08 |  |  |  |  |  |  |  |  |  |  |  |  |  |  |
| RHD4CZ8A011RD7100 |  | Pavement Markings for Road Network - (RD-A-1 /1)-Z8-A011-RD | 5d | 2028-04-03 | 2028-04-08 | RHD4PRSHLDOSRD1500, RHD4PRSHLSTAGRD1500, RHD4CZ8A011RD4100, RHD4CZ7RA03RD7100 |  |  |  |  | Skilled labor [45.19 h]; Unskilled Labor [90.28 h]; Equipment Opreator [45.19 h]; Road Marking Machine [45.19 h]; Retroreflective Thermoplastic White Traffic Markings [318.58 m2]; Retroreflective Thermoplastic Yellow, Traffic Markings [280.89 m2]; Retroreflective raised pavement markers (cat eyes) [475 nr] | 34,733.57 |  | A011 | Z8 | CONS | RD | Pavement Marking | AFT |
|  | 7707 | **RHD4-02-002-Z8-A011-Storm Network - ST** |  | 2026-08-04 | 2027-06-05 |  |  |  |  |  |  |  |  |  |  |  |  |  |  |
|  | 7725 | **RHD4-02-002-A011-(ST)-MH Works - 1500 mm diameter** |  | 2026-08-04 | 2027-05-10 |  |  |  |  |  |  |  |  |  |  |  |  |  |  |
| RHD4CZ8A011ST3101 |  | Excavation and PC Blinding works for MH 1500 mm - (RD-A-1 /1)-Z8-A011-ST | 5d | 2026-08-04 A | 2026-09-04 A | RHD4ENSDZ8APPST110, RHD4ENMSST2000, RHD4CZ8A011RW3000, RHD4CZ8A011RD1100, RHD4CZ8A011ST3102 | 100% |  | 2026-11-24 | 2026-11-29 | Skilled labor [54.45 h]; Unskilled Labor [54.45 h]; Equipment Opreator [87.12 h]; Excavator-Poclain [54.45 h]; Water Truck [5.45 h]; Dump Truck [27.2 h]; MH (1500mm Diameter) - ST - depth 1.50 - 2.5m [2.25 nr]; MH (1500mm Diameter) - ST - depth 2.51 - 3.5m [0.25 nr] | 36,944 | 36,944 | A011 | Z8 | CONS | ST | Excavation | bef |
| RHD4CZ8A011ST3201 |  | Installation of Base for MH 1500 mm - (RD-A-1 /1)-Z8-A011-ST | 2d | 2026-09-19 A | 2026-09-20 A | RHD4PRSHLSTAGST1607, RHD4CZ8A011ST3101 | 100% |  | 2026-11-30 | 2026-12-01 | Skilled labor [54.45 h]; Unskilled Labor [54.45 h]; Equipment Opreator [21.78 h]; Boom Truck [10.89 h]; Concrete Mixer Truck [10.89 h]; MH (1500mm Diameter) - ST - depth 1.50 - 2.5m [2.25 nr]; MH (1500mm Diameter) - ST - depth 2.51 - 3.5m [0.25 nr] | 36,944 | 36,944 | A011 | Z8 | CONS | ST | Installing Base | bef |
| RHD4CZ8A011ST3301 |  | MH Ring and C.Slab works and Backfilling works for MH 1500 mm - (RD-A-1 /1)-Z8-A011-ST | 5d | 2026-09-19 A | 2027-04-29 | RHD4PRSHLDOSST1607, RHD4CZ8A011ST3201 | 20% | 5d | 2026-12-02 | 2026-12-07 | Skilled labor [54.45 h]; Unskilled Labor [54.45 h]; Equipment Opreator [38.12 h]; Boom Truck [21.78 h]; Concrete Mixer Truck [16.34 h]; MH (1500mm Diameter) - ST - depth 1.50 - 2.5m [3.15 nr]; MH (1500mm Diameter) - ST - depth 2.51 - 3.5m [0.35 nr] | 51,721.6 |  | A011 | Z8 | CONS | ST | Installing Rings | bef |
| RHD4CZ8A011ST3401 |  | Steel Cover for MH 1500 mm - (RD-A-1 /1)-Z8-A011-ST | 4d | 2027-05-01 | 2027-05-04 | RHD4PRSHLDOSST1707, RHD4PRSHLSTAGST1707, RHD4CZ8A011ST3301 |  |  |  |  | Skilled labor [36.26 h]; Unskilled Labor [72.64 h]; Equipment Opreator [7.3 h]; Boom Truck [7.3 h]; MH (1500mm Diameter) - ST - depth 1.50 - 2.5m [0.45 nr]; MH (1500mm Diameter) - ST - depth 2.51 - 3.5m [0.05 nr] | 7,388.8 |  | A011 | Z8 | CONS | ST | Steel Cover | bef |
| RHD4CZ8A011ST3501 |  | Finishing, Benching, Testing works for MH 1500 mm - (RD-A-1 /1)-Z8-A011-ST | 5d | 2027-05-05 | 2027-05-10 | RHD4CZ8A011ST3401 |  |  |  |  | Skilled labor [54.45 h]; Unskilled Labor [108.9 h]; Plumber [54.45 h]; Equipment Opreator [10.89 h]; Water Truck [10.89 h]; MH (1500mm Diameter) - ST - depth 1.50 - 2.5m [0.9 nr]; MH (1500mm Diameter) - ST - depth 2.51 - 3.5m [0.1 nr] | 14,777.6 |  | A011 | Z8 | CONS | ST | Benching | bef |
|  | 3754 | **RHD4-02-002-A011-(ST)-MH Works - 2000 mm diameter** |  | 2026-08-04 | 2027-05-11 |  |  |  |  |  |  |  |  |  |  |  |  |  |  |
| RHD4CZ8A011ST3102 |  | Excavation and PC Blinding works for MH 2000 mm - (RD-A-1 /1)-Z8-A011-ST | 4d | 2026-08-04 A | 2026-09-04 A | RHD4CZ8A011RD1100, RHD4CZ8A011ST2100 | 100% |  | 2026-11-19 | 2026-11-23 | Skilled labor [34.52 h]; Unskilled Labor [34.52 h]; Equipment Opreator [55.2 h]; Excavator-Poclain [34.52 h]; Water Truck [3.48 h]; Dump Truck [17.21 h]; MH (2000mm Diameter) - ST - depth 2.51 - 3.5m [1.25 nr]; MH (2000mm Diameter) - ST - depth 3.51 -4.5m [0.75 nr] | 44,549.75 | 44,549.75 | A011 | Z8 | CONS | ST | Excavation | bef |
| RHD4CZ8A011ST3202 |  | Installation of Base for MH 2000 mm - (RD-A-1 /1)-Z8-A011-ST | 4d | 2026-09-19 A | 2027-04-28 | RHD4CZ8A011ST3102 | 49% | 4d | 2026-11-24 | 2026-11-28 | Skilled labor [43.56 h]; Unskilled Labor [43.56 h]; Equipment Opreator [17.42 h]; Boom Truck [8.71 h]; Concrete Mixer Truck [8.71 h]; MH (2000mm Diameter) - ST - depth 2.51 - 3.5m [1.25 nr]; MH (2000mm Diameter) - ST - depth 3.51 -4.5m [0.75 nr] | 44,549.75 |  | A011 | Z8 | CONS | ST | Installing Base | bef |
| RHD4CZ8A011ST3302 |  | MH Ring and C.Slab works and Backfilling works for MH 2000 mm - (RD-A-1 /1)-Z8-A011-ST | 4d | 2027-04-29 | 2027-05-03 | RHD4CZ8A011ST3202 |  |  |  |  | Skilled labor [43.56 h]; Unskilled Labor [43.56 h]; Equipment Opreator [30.49 h]; Boom Truck [17.42 h]; Concrete Mixer Truck [13.07 h]; MH (2000mm Diameter) - ST - depth 2.51 - 3.5m [1.75 nr]; MH (2000mm Diameter) - ST - depth 3.51 -4.5m [1.05 nr] | 62,369.65 |  | A011 | Z8 | CONS | ST | Installing Rings | bef |
| RHD4CZ8A011ST3402 |  | Steel Cover for MH 2000 mm - (RD-A-1 /1)-Z8-A011-ST | 3d | 2027-05-04 | 2027-05-06 | RHD4CZ8A011ST3302 |  |  |  |  | Skilled labor [29.08 h]; Unskilled Labor [58.05 h]; Equipment Opreator [5.77 h]; Boom Truck [5.77 h]; MH (2000mm Diameter) - ST - depth 2.51 - 3.5m [0.25 nr]; MH (2000mm Diameter) - ST - depth 3.51 -4.5m [0.15 nr] | 8,909.95 |  | A011 | Z8 | CONS | ST | Steel Cover | bef |
| RHD4CZ8A011ST3502 |  | Finishing, Benching, Testing works for MH 2000 mm - (RD-A-1 /1)-Z8-A011-ST | 4d | 2027-05-08 | 2027-05-11 | RHD4CZ8A011ST3402 |  |  |  |  | Skilled labor [34.52 h]; Unskilled Labor [68.94 h]; Plumber [34.52 h]; Equipment Opreator [6.86 h]; Water Truck [6.86 h]; MH (2000mm Diameter) - ST - depth 2.51 - 3.5m [0.5 nr]; MH (2000mm Diameter) - ST - depth 3.51 -4.5m [0.3 nr] | 17,819.9 |  | A011 | Z8 | CONS | ST | Benching | bef |

| ID | WBS | Activity | Duration | Start | Finish | Predecessors | Complete | Planned start | Planned finish | Resources | Cost | Actual cost | RDH4-01-001-Road and Block Names-1 | RDH4-01-001-Zones-1 | RDH4-01-001-Phases-1 | RDH4-01-001-Networks-1 | RDH4-01-001-Work Method-1 | RDH4-01-001-MENEM |
| --- | --- | --- | --- | --- | --- | --- | --- | --- | --- | --- | --- | --- | --- | --- | --- | --- | --- | --- |
|  | 6393 | **RHD4-02-002-A011-(ST)-GRP Pipes - 1300 mm diameter** |  | 2026-08-04 | 2027-04-14 |  |  |  |  |  |  |  |  |  |  |  |  |  |
| RHD4CZ8A011ST1109 |  | Excavation works for GRP Pipe Line 1300 mm - (RD-A-1 /1)-Z8-A011-ST | 3d | 2026-08-04 A | 2026-08-13 A | RHD4CZ8A011RD1100, RHD4CZ6A015IRR1100, RHD4CZ4L09RD3100, RHD4CZ8A011RD3100 | 100% | 2026-10-17 | 2026-10-19 | Skilled labor [24.5 h]; Unskilled Labor [24.5 h]; Equipment Opreator [29.4 h]; Excavator-Poclain [24.5 h]; Dump Truck [4.9 h]; GRP (1300mm Diameter) - ST - Depth less than 2.5 m [32.24 m]; GRP (1300mm Diameter) - ST - Depth: 2.51m - 3.5m [31.38 m]; GRP (1300mm Diameter) - ST - Depth: 3.51m - 4.5m [3.68 m] | 120,688.94 | 120,688.94 | A011 | Z8 | CONS | ST | Excavation | bef |
| RHD4CZ8A011ST1209 |  | Bedding works for GRP Pipe Line 1300 mm - (RD-A-1 /1)-Z8-A011-ST | 3d | 2026-08-29 A | 2026-08-31 A | RHD4CZ8A011ST1109 | 100% | 2026-10-20 | 2026-10-22 | Skilled labor [24.5 h]; Unskilled Labor [49.01 h]; Equipment Opreator [49.01 h]; Excavator-Poclain [24.5 h]; Dump Truck [24.5 h]; GRP (1300mm Diameter) - ST - Depth less than 2.5 m [10.75 m]; GRP (1300mm Diameter) - ST - Depth: 2.51m - 3.5m [10.46 m]; GRP (1300mm Diameter) - ST - Depth: 3.51m - 4.5m [1.23 m] | 40,242.11 | 40,242.11 | A011 | Z8 | CONS | ST | Bedding | bef |
| RHD4CZ8A011ST1309 |  | Installing for GRP Pipe Line 1300 mm - (RD-A-1 /1)-Z8-A011-ST | 2d | 2026-08-30 A | 2026-09-05 A | RHD4CZ8A011ST1209 | 100% | 2026-10-24 | 2026-10-25 | Unskilled Labor [31.91 h]; Plumber [16 h]; GRP (1300mm Diameter) - ST - Depth less than 2.5 m [85.96 m]; GRP (1300mm Diameter) - ST - Depth: 2.51m - 3.5m [83.68 m]; GRP (1300mm Diameter) - ST - Depth: 3.51m - 4.5m [9.8 m] | 321,787.32 | 321,787.32 | A011 | Z8 | CONS | ST | Installation | bef |
| RHD4CZ8A011ST1509 |  | Backfilling and warning tape works for GRP Pipe Line 1300 mm - (RD-A-1 /1)-Z8-A011-ST | 3d | 2026-09-06 A | 2026-09-09 A | RHD4CZ8A011ST1409 | 100% | 2026-10-28 | 2026-10-31 | Skilled labor [24.5 h]; Unskilled Labor [49.01 h]; Equipment Opreator [49.01 h]; Excavator-Poclain [24.5 h]; Dump Truck [24.5 h]; GRP (1300mm Diameter) - ST - Depth less than 2.5 m [42.98 m]; GRP (1300mm Diameter) - ST - Depth: 2.51m - 3.5m [41.84 m]; GRP (1300mm Diameter) - ST - Depth: 3.51m - 4.5m [4.9 m] | 160,893.66 | 160,893.66 | A011 | Z8 | CONS | ST | Backfilling | bef |
| RHD4CZ8A011ST1409 |  | Primary Test for GRP Pipe Line 1300 mm - (RD-A-1 /1)-Z8-A011-ST | 2d | 2027-04-13 | 2027-04-14 | RHD4CZ8A011ST1309 |  |  |  | Unskilled Labor [12.31 h]; Plumber [12.31 h]; Equipment Opreator [12.31 h]; Water Truck [12.31 h]; GRP (1300mm Diameter) - ST - Depth less than 2.5 m [42.98 m]; GRP (1300mm Diameter) - ST - Depth: 2.51m - 3.5m [41.84 m]; GRP (1300mm Diameter) - ST - Depth: 3.51m - 4.5m [4.9 m] | 160,893.66 |  | A011 | Z8 | CONS | ST | Primary Test | bef |
|  | 7724 | **RHD4-02-002-A011-(ST)-MH Works - 1200 mm diameter** |  | 2026-08-04 | 2027-05-03 |  |  |  |  |  |  |  |  |  |  |  |  |  |
| RHD4CZ8A011ST3100 |  | Excavation and PC Blinding works for MH 1200 mm - (RD-A-1 /1)-Z8-A011-ST | 4d | 2026-08-04 A | 2026-09-04 A | RHD4ENSDZ8APPST110, RHD4ENMSST2000, RHD4ENMSST2010, RHD4CZ8A011RD1100, RHD4CZ8A011ST1109, RHD4CZ8A011ST3101 | 100% | 2026-11-30 | 2026-12-03 | Skilled labor [36.26 h]; Unskilled Labor [36.26 h]; Equipment Opreator [58.05 h]; Excavator-Poclain [36.26 h]; Water Truck [3.59 h]; Dump Truck [18.19 h]; MH (1200mm Diameter) - ST - depth 1.50 - 2.5m [2.5 nr] | 25,807.5 | 25,807.5 | A011 | Z8 | CONS | ST | Excavation | bef |
| RHD4CZ8A011ST3200 |  | Installation of Base for MH 1200 mm - (RD-A-1 /1)-Z8-A011-ST | 4d | 2026-09-05 A | 2026-09-24 A | RHD4PRSHLSTAGST1607, RHD4CZ8A011ST3100 | 100% | 2026-12-05 | 2026-12-08 | Skilled labor [36.26 h]; Unskilled Labor [36.26 h]; Equipment Opreator [14.48 h]; Boom Truck [7.3 h]; Concrete Mixer Truck [7.3 h]; MH (1200mm Diameter) - ST - depth 1.50 - 2.5m [2.5 nr] | 25,807.5 | 25,807.5 | A011 | Z8 | CONS | ST | Installing Base | bef |
| RHD4CZ8A011ST3300 |  | MH Ring and C.Slab works and Backfilling works for MH 1200 mm - (RD-A-1 /1)-Z8-A011-ST | 4d | 2026-09-19 A | 2026-09-22 A | RHD4PRSHLDOSST1607, RHD4CZ8A011ST3200 | 100% | 2026-12-09 | 2026-12-13 | Skilled labor [36.26 h]; Unskilled Labor [36.26 h]; Equipment Opreator [25.37 h]; Boom Truck [14.48 h]; Concrete Mixer Truck [10.89 h]; MH (1200mm Diameter) - ST - depth 1.50 - 2.5m [3.5 nr] | 36,130.5 | 36,130.5 | A011 | Z8 | CONS | ST | Installing Rings | bef |
| RHD4CZ8A011ST3400 |  | Steel Cover for MH 1200 mm - (RD-A-1 /1)-Z8-A011-ST | 4d | 2027-04-25 | 2027-04-28 | RHD4PRSHLDOSST1707, RHD4PRSHLSTAGST1707, RHD4CZ8A011ST3300 |  |  |  | Skilled labor [36.26 h]; Unskilled Labor [72.64 h]; Equipment Opreator [7.3 h]; Boom Truck [7.3 h]; MH (1200mm Diameter) - ST - depth 1.50 - 2.5m [0.5 nr] | 5,161.5 |  | A011 | Z8 | CONS | ST | Steel Cover | bef |
| RHD4CZ8A011ST3500 |  | Finishing, Benching, Testing works for MH 1200 mm - (RD-A-1 /1)-Z8-A011-ST | 4d | 2027-04-29 | 2027-05-03 | RHD4CZ8A011ST3400 |  |  |  | Skilled labor [36.26 h]; Unskilled Labor [72.64 h]; Plumber [36.26 h]; Equipment Opreator [7.3 h]; Water Truck [7.3 h]; MH (1200mm Diameter) - ST - depth 1.50 - 2.5m [1 nr] | 10,323 |  | A011 | Z8 | CONS | ST | Benching | bef |
|  | 7713 | **RHD4-02-002-A011-(ST)-GRP Pipes - 900 mm diameter** |  |  |  |  |  |  |  |  |  |  |  |  |  |  |  |  |
|  | 7712 | **RHD4-02-002-A011-(ST)-GRP Pipes - 800 mm diameter** |  | 2026-08-04 | 2027-04-14 |  |  |  |  |  |  |  |  |  |  |  |  |  |
| RHD4CZ8A011ST1104 |  | Excavation works for GRP Pipe Line 800 mm - (RD-A-1 /1)-Z8-A011-ST | 3d | 2026-08-04 A | 2026-08-28 A | RHD4ENSDZ8APPST110, RHD4CZ8A011RD1100, RHD4CZ8A011ST1109 | 100% | 2026-10-20 | 2026-10-22 | Skilled labor [24.18 h]; Unskilled Labor [24.18 h]; Equipment Opreator [28.97 h]; Excavator-Poclain [24.18 h]; Dump Truck [4.8 h]; GRP (800mm Diameter) - ST - Depth less than 1.5 m [28.36 m]; GRP (800mm Diameter) - ST - Depth: 1.51m - 2.5m [24.05 m] | 35,402.18 | 35,402.18 | A011 | Z8 | CONS | ST | Excavation | bef |
| RHD4CZ8A011ST1204 |  | Bedding works for GRP Pipe Line 800 mm - (RD-A-1 /1)-Z8-A011-ST | 3d | 2026-08-29 A | 2026-08-31 A | RHD4CZ8A011ST1104 | 100% | 2026-10-24 | 2026-10-26 | Skilled labor [24.18 h]; Unskilled Labor [48.35 h]; Equipment Opreator [48.35 h]; Excavator-Poclain [24.18 h]; Dump Truck [24.18 h]; GRP (800mm Diameter) - ST - Depth less than 1.5 m [14.18 m]; GRP (800mm Diameter) - ST - Depth: 1.51m - 2.5m [8.02 m] | 14,889.58 | 14,889.58 | A011 | Z8 | CONS | ST | Bedding | bef |
| RHD4CZ8A011ST1304 |  | Installing for GRP Pipe Line 800 mm - (RD-A-1 /1)-Z8-A011-ST | 2d | 2026-09-01 A | 2026-09-02 A | RHD4PRSHLSTAGST1007, RHD4CZ8A011ST1204, RHD4PRSHLDOSST1607, RHD4PRSHLPOST1000, RHD4PRSHLDOSST1007 | 100% | 2026-10-27 | 2026-10-28 | Unskilled Labor [32.24 h]; Plumber [16.12 h]; GRP (800mm Diameter) - ST - Depth less than 1.5 m [127.64 m]; GRP (800mm Diameter) - ST - Depth: 1.51m - 2.5m [64.14 m] | 128,375.2 | 128,375.2 | A011 | Z8 | CONS | ST | Installation | bef |
| RHD4CZ8A011ST1504 |  | Backfilling and warning tape works for GRP Pipe Line 800 mm - (RD-A-1 /1)-Z8-A011-ST | 3d | 2026-09-02 A | 2026-09-03 A | RHD4CZ8A011ST1404 | 100% | 2026-11-01 | 2026-11-03 | Skilled labor [24.18 h]; Unskilled Labor [48.35 h]; Equipment Opreator [48.35 h]; Excavator-Poclain [24.18 h]; Dump Truck [24.18 h]; GRP (800mm Diameter) - ST - Depth less than 1.5 m [56.73 m]; GRP (800mm Diameter) - ST - Depth: 1.51m - 2.5m [32.07 m] | 59,557.83 | 59,557.83 | A011 | Z8 | CONS | ST | Backfilling | bef |
| RHD4CZ8A011ST1404 |  | Primary Test for GRP Pipe Line 800 mm - (RD-A-1 /1)-Z8-A011-ST | 2d | 2027-04-13 | 2027-04-14 | RHD4CZ8A011ST1304 |  |  |  | Unskilled Labor [12.09 h]; Plumber [12.09 h]; Equipment Opreator [12.09 h]; Water Truck [12.09 h]; GRP (800mm Diameter) - ST - Depth less than 1.5 m [56.73 m]; GRP (800mm Diameter) - ST - Depth: 1.51m - 2.5m [32.07 m] | 59,557.83 |  | A011 | Z8 | CONS | ST | Primary Test | bef |
|  | 7711 | **RHD4-02-002-A011-(ST)-GRP Pipes - 700 mm diameter** |  | 2026-08-29 | 2027-04-14 |  |  |  |  |  |  |  |  |  |  |  |  |  |
| RHD4CZ8A011ST1103 |  | Excavation works for GRP Pipe Line 700 mm - (RD-A-1 /1)-Z8-A011-ST | 2d | 2026-08-29 A | 2026-08-30 A | RHD4ENSDZ8APPST110, RHD4CZ8A011RD1100, RHD4CZ8A011ST1104 | 100% | 2026-10-24 | 2026-10-25 | Skilled labor [6.21 h]; Unskilled Labor [6.21 h]; Equipment Opreator [7.41 h]; Excavator-Poclain [6.21 h]; Dump Truck [1.2 h]; GRP (700mm Diameter) - ST - Depth less than 1.5 m [11.36 m]; GRP (700mm Diameter) - ST - Depth: 1.51m - 2.5m | 6,293.44 | 6,293.44 | A011 | Z8 | CONS | ST | Excavation | bef |
| RHD4CZ8A011ST1203 |  | Bedding works for GRP Pipe Line 700 mm - (RD-A-1 /1)-Z8-A011-ST | 2d | 2026-08-31 A | 2026-09-01 A | RHD4CZ8A011ST1103 | 100% | 2026-10-26 | 2026-10-27 | Skilled labor [6.21 h]; Unskilled Labor [12.41 h]; Equipment Opreator [12.41 h]; Excavator-Poclain [6.21 h]; Dump Truck [6.21 h]; GRP (700mm Diameter) - ST - Depth less than 1.5 m [5.68 m]; GRP (700mm Diameter) - ST - Depth: 1.51m - 2.5m | 3,146.72 | 3,146.72 | A011 | Z8 | CONS | ST | Bedding | bef |
| RHD4CZ8A011ST1303 |  | Installing for GRP Pipe Line 700 mm - (RD-A-1 /1)-Z8-A011-ST | 2d | 2026-09-01 A | 2026-09-02 A | RHD4PRSHLSTAGST1007, RHD4CZ8A011ST1203, RHD4CZ8A011ST1304, RHD4PRSHLDOSST1607, RHD4PRSHLPOST1000, RHD4PRSHLDOSST1007 | 100% | 2026-10-29 | 2026-10-31 | Unskilled Labor [6.21 h]; Plumber [3.05 h]; GRP (700mm Diameter) - ST - Depth less than 1.5 m [51.14 m]; GRP (700mm Diameter) - ST - Depth: 1.51m - 2.5m | 28,331.56 | 28,331.56 | A011 | Z8 | CONS | ST | Installation | bef |
| RHD4CZ8A011ST1503 |  | Backfilling and warning tape works for GRP Pipe Line 700 mm - (RD-A-1 /1)-Z8-A011-ST | 2d | 2026-09-02 A | 2026-09-03 A | RHD4CZ8A011ST1403, RHD4CZ8A011ST1504 | 100% | 2026-11-04 | 2026-11-05 | Skilled labor [6.21 h]; Unskilled Labor [12.41 h]; Equipment Opreator [12.41 h]; Excavator-Poclain [6.21 h]; Dump Truck [6.21 h]; GRP (700mm Diameter) - ST - Depth less than 1.5 m [22.73 m]; GRP (700mm Diameter) - ST - Depth: 1.51m - 2.5m | 12,592.42 | 12,592.42 | A011 | Z8 | CONS | ST | Backfilling | bef |
| RHD4CZ8A011ST1403 |  | Primary Test for GRP Pipe Line 700 mm - (RD-A-1 /1)-Z8-A011-ST | 2d | 2027-04-13 | 2027-04-14 | RHD4CZ8A011ST1303 |  |  |  | Unskilled Labor [3.05 h]; Plumber [3.05 h]; Equipment Opreator [3.05 h]; Water Truck [3.05 h]; GRP (700mm Diameter) - ST - Depth less than 1.5 m [22.73 m]; GRP (700mm Diameter) - ST - Depth: 1.51m - 2.5m | 12,592.42 |  | A011 | Z8 | CONS | ST | Primary Test | bef |

| ID | WBS | Activity | Duration | Start | Finish | Predecessors | Complete | Remaining | Planned start | Planned finish | Resources | Cost | Actual cost | RDH4-01-001-Road and Block Names-1 | RDH4-01-001-Zones-1 | RDH4-01-001-Phases-1 | RDH4-01-001-Networks-1 | RDH4-01-001-Work Method-1 | RDH4-01-001-MENEM |
| --- | --- | --- | --- | --- | --- | --- | --- | --- | --- | --- | --- | --- | --- | --- | --- | --- | --- | --- | --- |
|  | 7710 | **RHD4-02-002-A011-(ST)-GRP Pipes - 600 mm diameter** |  | 2026-08-29 | 2027-04-14 |  |  |  |  |  |  |  |  |  |  |  |  |  |  |
| RHD4CZ8A011ST1102 |  | Excavation works for GRP Pipe Line 600 mm - (RD-A-1 /1)-Z8-A011-ST | 2d | 2026-08-29 A | 2026-08-30 A | RHD4ENSDZ8APPST110, RHD4CZ8A011RD1100, RHD4CZ8A011ST1103 | 100% |  | 2026-10-26 | 2026-10-27 | Skilled labor [14.27 h]; Unskilled Labor [14.27 h]; Equipment Opreator [17.1 h]; Excavator-Poclain [14.27 h]; Dump Truck [2.83 h]; GRP (600mm Diameter) - ST - Depth less than 1.5 m [27.59 m]; GRP (600mm Diameter) - ST - Depth: 1.51m - 2.5m | 11,891.29 | 11,891.29 | A011 | Z8 | CONS | ST | Excavation | bef |
| RHD4CZ8A011ST1202 |  | Bedding works for GRP Pipe Line 600 mm - (RD-A-1 /1)-Z8-A011-ST | 2d | 2026-08-31 A | 2026-09-01 A | RHD4CZ8A011ST1102 | 100% |  | 2026-10-28 | 2026-10-29 | Skilled labor [13.72 h]; Unskilled Labor [27.55 h]; Equipment Opreator [27.55 h]; Excavator-Poclain [13.72 h]; Dump Truck [13.72 h]; GRP (600mm Diameter) - ST - Depth less than 1.5 m [13.79 m]; GRP (600mm Diameter) - ST - Depth: 1.51m - 2.5m | 5,943.49 | 5,943.49 | A011 | Z8 | CONS | ST | Bedding | bef |
| RHD4CZ8A011ST1302 |  | Installing for GRP Pipe Line 600 mm - (RD-A-1 /1)-Z8-A011-ST | 2d | 2026-09-01 A | 2026-09-02 A | RHD4PRSHLSTAGST1007, RHD4CZ8A011ST1202, RHD4CZ8A011ST1303, RHD4PRSHLDOSST1607, RHD4PRSHLPOST1000, RHD4PRSHLDOSST1007 | 100% |  | 2026-11-01 | 2026-11-02 | Unskilled Labor [32.56 h]; Plumber [16.23 h]; GRP (600mm Diameter) - ST - Depth less than 1.5 m [124.13 m]; GRP (600mm Diameter) - ST - Depth: 1.51m - 2.5m | 53,500.03 | 53,500.03 | A011 | Z8 | CONS | ST | Installation | bef |
| RHD4CZ8A011ST1502 |  | Backfilling and warning tape works for GRP Pipe Line 600 mm - (RD-A-1 /1)-Z8-A011-ST | 2d | 2026-09-02 A | 2026-09-04 A | RHD4CZ8A011ST1402 | 100% |  | 2026-11-05 | 2026-11-07 | Skilled labor [15.03 h]; Unskilled Labor [30.06 h]; Equipment Opreator [30.06 h]; Excavator-Poclain [15.03 h]; Dump Truck [15.03 h]; GRP (600mm Diameter) - ST - Depth less than 1.5 m [55.17 m]; GRP (600mm Diameter) - ST - Depth: 1.51m - 2.5m | 23,778.27 | 23,778.27 | A011 | Z8 | CONS | ST | Backfilling | bef |
| RHD4CZ8A011ST1402 |  | Primary Test for GRP Pipe Line 600 mm - (RD-A-1 /1)-Z8-A011-ST | 2d | 2027-04-13 | 2027-04-14 | RHD4CZ8A011ST1302 |  |  |  |  | Unskilled Labor [12.74 h]; Plumber [12.74 h]; Equipment Opreator [12.74 h]; Water Truck [12.74 h]; GRP (600mm Diameter) - ST - Depth less than 1.5 m [55.17 m]; GRP (600mm Diameter) - ST - Depth: 1.51m - 2.5m | 23,778.27 |  | A011 | Z8 | CONS | ST | Primary Test | bef |
|  | 7709 | **RHD4-02-002-A011-(ST)-GRP Pipes - 500 mm diameter** |  | 2026-08-29 | 2027-04-14 |  |  |  |  |  |  |  |  |  |  |  |  |  |  |
| RHD4CZ8A011ST1101 |  | Excavation works for GRP Pipe Line 500 mm - (RD-A-1 /1)-Z8-A011-ST | 2d | 2026-08-29 A | 2026-08-31 A | RHD4ENSDZ8APPST110, RHD4CZ8A011RD1100, RHD4CZ8A011ST1102 | 100% |  | 2026-10-28 | 2026-10-29 | Skilled labor [6.4 h]; Unskilled Labor [6.4 h]; Equipment Opreator [7.73 h]; Excavator-Poclain [6.4 h]; Dump Truck [1.31 h]; GRP (500mm Diameter) - ST - Depth less than 1.5 m [13.23 m]; GRP (500mm Diameter) - ST - Depth: 1.51m - 2.5m | 4,696.65 | 4,696.65 | A011 | Z8 | CONS | ST | Excavation | bef |
| RHD4CZ8A011ST1201 |  | Bedding works for GRP Pipe Line 500 mm - (RD-A-1 /1)-Z8-A011-ST | 2d | 2026-09-01 A | 2026-09-02 A | RHD4CZ8A011ST1101 | 100% |  | 2026-10-31 | 2026-11-01 | Skilled labor [5.99 h]; Unskilled Labor [11.87 h]; Equipment Opreator [11.87 h]; Excavator-Poclain [5.99 h]; Dump Truck [5.99 h]; GRP (500mm Diameter) - ST - Depth less than 1.5 m [6.61 m]; GRP (500mm Diameter) - ST - Depth: 1.51m - 2.5m | 2,346.55 | 2,346.55 | A011 | Z8 | CONS | ST | Bedding | bef |
| RHD4CZ8A011ST1301 |  | Installing for GRP Pipe Line 500 mm - (RD-A-1 /1)-Z8-A011-ST | 2d | 2026-09-02 A | 2026-09-03 A | RHD4PRSHLSTAGST1007, RHD4CZ8A011ST1201, RHD4CZ8A011ST1302, RHD4PRSHLDOSST1607, RHD4PRSHLPOST1000, RHD4PRSHLDOSST1007 | 100% |  | 2026-11-03 | 2026-11-04 | Unskilled Labor [16.88 h]; Plumber [8.49 h]; GRP (500mm Diameter) - ST - Depth less than 1.5 m [59.52 m]; GRP (500mm Diameter) - ST - Depth: 1.51m - 2.5m | 21,129.6 | 21,129.6 | A011 | Z8 | CONS | ST | Installation | bef |
| RHD4CZ8A011ST1501 |  | Backfilling and warning tape works for GRP Pipe Line 500 mm - (RD-A-1 /1)-Z8-A011-ST | 2d | 2026-09-06 A | 2026-09-07 A | RHD4CZ8A011ST1401 | 100% |  | 2026-11-08 | 2026-11-09 | Skilled labor [7.2 h]; Unskilled Labor [14.4 h]; Equipment Opreator [14.4 h]; Excavator-Poclain [7.2 h]; Dump Truck [7.2 h]; GRP (500mm Diameter) - ST - Depth less than 1.5 m [26.45 m]; GRP (500mm Diameter) - ST - Depth: 1.51m - 2.5m | 9,389.75 | 9,389.75 | A011 | Z8 | CONS | ST | Backfilling | bef |
| RHD4CZ8A011ST1401 |  | Primary Test for GRP Pipe Line 500 mm - (RD-A-1 /1)-Z8-A011-ST | 2d | 2027-04-13 | 2027-04-14 | RHD4CZ8A011ST1301, RHD4CZ9C071ST1502 |  |  |  |  | Unskilled Labor [4.9 h]; Plumber [4.9 h]; Equipment Opreator [4.9 h]; Water Truck [4.9 h]; GRP (500mm Diameter) - ST - Depth less than 1.5 m [26.45 m]; GRP (500mm Diameter) - ST - Depth: 1.51m - 2.5m | 9,389.75 |  | A011 | Z8 | CONS | ST | Primary Test | bef |
|  | 7708 | **RHD4-02-002-A011-(ST)-GRP Pipes - 400 mm diameter** |  | 2027-04-15 | 2027-04-26 |  |  |  |  |  |  |  |  |  |  |  |  |  |  |
| RHD4CZ8A011ST1100 |  | Excavation works for GRP Pipe Line 400 mm - (RD-A-1 /1)-Z8-A011-ST | 2d | 2027-04-15 | 2027-04-17 | RHD4ENSDZ8APPST110, RHD4CZ8A011RD1100, RHD4CZ8A011ST1101, RHD4CZ8A011ST1501 |  |  |  |  | Skilled labor [14.27 h]; Unskilled Labor [14.27 h]; Equipment Opreator [17.1 h]; Excavator-Poclain [14.27 h]; Dump Truck [2.83 h]; GRP (400mm Diameter) - ST - Depth less than 1.5 m [27.48 m]; GRP (400mm Diameter) - ST - Depth: 1.51m - 2.5 m | 7,969.2 |  | A011 | Z8 | CONS | ST | Excavation | bef |
| RHD4CZ8A011ST1200 |  | Bedding works for GRP Pipe Line 400 mm - (RD-A-1 /1)-Z8-A011-ST | 2d | 2027-04-18 | 2027-04-19 | RHD4CZ8A011ST1100 |  |  |  |  | Skilled labor [13.72 h]; Unskilled Labor [27.44 h]; Equipment Opreator [27.44 h]; Excavator-Poclain [13.72 h]; Dump Truck [13.72 h]; GRP (400mm Diameter) - ST - Depth less than 1.5 m [13.74 m]; GRP (400mm Diameter) - ST - Depth: 1.51m - 2.5 m | 3,984.6 |  | A011 | Z8 | CONS | ST | Bedding | bef |
| RHD4CZ8A011ST1300 |  | Installing for GRP Pipe Line 400 mm - (RD-A-1 /1)-Z8-A011-ST | 2d | 2027-04-20 | 2027-04-21 | RHD4PRSHLSTAGST1007, RHD4CZ8A011ST1200, RHD4CZ8A011ST1301, RHD4PRSHLDOSST1607, RHD4PRSHLPOST1000, RHD4PRSHLDOSST1007 |  |  |  |  | Unskilled Labor [32.45 h]; Plumber [16.23 h]; GRP (400mm Diameter) - ST - Depth less than 1.5 m [123.65 m]; GRP (400mm Diameter) - ST - Depth: 1.51m - 2.5 m | 35,858.5 |  | A011 | Z8 | CONS | ST | Installation | bef |
| RHD4CZ8A011ST1400 |  | Primary Test for GRP Pipe Line 400 mm - (RD-A-1 /1)-Z8-A011-ST | 2d | 2027-04-22 | 2027-04-24 | RHD4CZ8A011ST1300 |  |  |  |  | Unskilled Labor [12.74 h]; Plumber [12.74 h]; Equipment Opreator [12.74 h]; Water Truck [12.74 h]; GRP (400mm Diameter) - ST - Depth less than 1.5 m [54.95 m]; GRP (400mm Diameter) - ST - Depth: 1.51m - 2.5 m | 15,935.5 |  | A011 | Z8 | CONS | ST | Primary Test | bef |
| RHD4CZ8A011ST1500 |  | Backfilling and warning tape works for GRP Pipe Line 400 mm - (RD-A-1 /1)-Z8-A011-ST | 2d | 2027-04-25 | 2027-04-26 | RHD4CZ8A011ST1400 |  |  |  |  | Skilled labor [14.92 h]; Unskilled Labor [29.95 h]; Equipment Opreator [29.95 h]; Excavator-Poclain [14.92 h]; Dump Truck [14.92 h]; GRP (400mm Diameter) - ST - Depth less than 1.5 m [54.95 m]; GRP (400mm Diameter) - ST - Depth: 1.51m - 2.5 m | 15,935.5 |  | A011 | Z8 | CONS | ST | Backfilling | bef |
|  | 7722 | **RHD4-02-002-A011-(ST)-UPVC Pipes - 300 mm diameter** |  | 2026-08-23 | 2027-06-05 |  |  |  |  |  |  |  |  |  |  |  |  |  |  |
| RHD4CZ8A011ST2100 |  | Excavation works for UPVC Pipe Line 300 mm - (RD-A-1 /1)-Z8-A011-ST | 6d | 2026-08-23 A | 2027-04-24 | RHD4ENSDZ8APPST110, RHD4CZ8A011RD1100, RHD4CZ8A011ST1100 | 82% | 6d | 2026-11-12 | 2026-11-18 | Skilled labor [62.29 h]; Unskilled Labor [62.29 h]; Equipment Opreator [74.71 h]; Excavator-Poclain [62.29 h]; Dump Truck [12.41 h]; UPVC (300mm Diameter) - ST - Depth less than 1.5 [137.6 m]; UPVC (300mm Diameter) - ST - Depth: 1.51m - 2.5m | 41,692.8 |  | A011 | Z8 | CONS | ST | Excavation | bef |
| RHD4CZ8A011ST2200 |  | Bedding works for UPVC Pipe Line 300 mm - (RD-A-1 /1)-Z8-A011-ST | 5d | 2026-08-25 A | 2027-04-29 | RHD4CZ8A011ST2100 | 82% | 5d | 2026-11-19 | 2026-11-24 | Skilled labor [53.8 h]; Unskilled Labor [107.6 h]; Equipment Opreator [107.6 h]; Excavator-Poclain [53.8 h]; Dump Truck [53.8 h]; UPVC (300mm Diameter) - ST - Depth less than 1.5 [68.8 m]; UPVC (300mm Diameter) - ST - Depth: 1.51m - 2.5m | 20,846.4 |  | A011 | Z8 | CONS | ST | Bedding | bef |
| RHD4CZ8A011ST2300 |  | Installing for UPVC Pipe Line 300 mm - (RD-A-1 /1)-Z8-A011-ST | 6d | 2026-08-29 A | 2027-05-06 | RHD4PRSHLDOSST1107, RHD4PRSHLDOSRD1000, RHD4PRSHLDOSSW1107, RHD4PRSHLDOSSW1308, RHD4PRSHLDOSST1204, RHD4PRSHLSTAGST1107, RHD4PRSHLSTAGRD1000, RHD4CZ9L05RW2000, RHD4CZ9L06RW2000, RHD4CZ8A011ST2200, RHD4ENMSEW2000, RHD4ENMSEW2010, RHD4ENSDZ9APPEW100 SS, RHD4CZ9L05RW1000, RHD4CZ9L06RW1000 | 82% | 6d | 2026-11-25 | 2026-12-01 | Unskilled Labor [124.48 h]; Plumber [62.29 h]; UPVC (300mm Diameter) - ST - Depth less than 1.5 [619.18 m]; UPVC (300mm Diameter) - ST - Depth: 1.51m - 2.5m | 187,611.54 |  | A011 | Z8 | CONS | ST | Installation | bef |
| RHD4CZ8A011ST2500 |  | Backfilling and warning tape works for UPVC Pipe Line 300 mm - (RD-A-1 /1)-Z8-A011-ST | 7d | 2026-09-19 A | 2027-06-05 | RHD4CZ8A011ST2400, RHD4CZ8A011ST6100 | 63% | 7d | 2026-12-07 | 2026-12-14 | Skilled labor [74.93 h]; Unskilled Labor [149.85 h]; Equipment Opreator [149.85 h]; Excavator-Poclain [74.93 h]; Dump Truck [74.93 h]; UPVC (300mm Diameter) - ST - Depth less than 1.5 [275.19 m]; UPVC (300mm Diameter) - ST - Depth: 1.51m - 2.5m | 83,382.57 |  | A011 | Z8 | CONS | ST | Backfilling | bef |
| RHD4CZ8A011ST2400 |  | Primary Test for UPVC Pipe Line 300 mm - (RD-A-1 /1)-Z8-A011-ST | 4d | 2027-05-08 | 2027-05-11 | RHD4CZ8A011ST2300 |  |  |  |  | Unskilled Labor [36.92 h]; Plumber [36.92 h]; Equipment Opreator [36.92 h]; Water Truck [36.92 h]; UPVC (300mm Diameter) - ST - Depth less than 1.5 [275.19 m]; UPVC (300mm Diameter) - ST - Depth: 1.51m - 2.5m | 83,382.57 |  | A011 | Z8 | CONS | ST | Primary Test | bef |

| ID | WBS | Activity | Duration | Start | Finish | Predecessors | Complete | Remaining | Planned start | Planned finish | Resources | Cost | Actual cost | RDH4-01-001-Road and Block Names-1 | RDH4-01-001-Zones-1 | RDH4-01-001-Phases-1 | RDH4-01-001-Networks-1 | RDH4-01-001-Work Method-1 | RDH4-01-001-MENEM |
| --- | --- | --- | --- | --- | --- | --- | --- | --- | --- | --- | --- | --- | --- | --- | --- | --- | --- | --- | --- |
|  | 7730 | **RHD4-02-002-A011-(ST)-Concrete Encasement** |  | 2027-05-26 | 2027-05-27 |  |  |  |  |  |  |  |  |  |  |  |  |  |  |
| RHD4CZ8A011ST6100 |  | Pipe Encasement for Storm Pipelines - (RD-A-1 /1)-Z8-A011-ST | 2d | 2027-05-26 | 2027-05-27 | RHD4CZ8A011ST2300 SS, RHD4CZ8A011ST2300 FF, RHD4CZ8A011ST2200, RHD4CZ8A011MV2400 |  |  |  |  | Skilled labor [16.55 h]; Unskilled Labor [16.55 h]; Equipment Opreator [18.19 h]; Concrete Mixer Truck [1.6 h]; Dump Truck [16.55 h]; Pipe Encasement - ST [303.67 m3] | 153,657.02 |  | A011 | Z8 | CONS | ST | Pipe Encasement | bef |
|  | 7731 | **RHD4-02-002-Z8-A011-Catch Basin - ST** |  | 2026-08-29 | 2027-08-22 |  |  |  |  |  |  |  |  |  |  |  |  |  |  |
|  | 7732 | **RHD4-02-002-A011-(ST)-Single Catch Basin Works** |  | 2026-08-29 | 2027-08-22 |  |  |  |  |  |  |  |  |  |  |  |  |  |  |
| RHD4CZ8A011ST7100 |  | Excavation works for Single Catch Basin - (RD-A-1 /1)-Z8-A011-ST | 6d | 2026-08-29 A | 2027-04-20 | RHD4ENSDZ8APPST110, RHD4CZ8A011RD1100, RHD4CZ8A011ST2100 SS | 91% | 3d | 2026-11-12 | 2026-11-18 | Skilled labor [58.81 h]; Unskilled Labor [117.6 h]; Equipment Opreator [88.21 h]; Excavator-Poclain [58.81 h]; Dump Truck [29.4 h]; Single Catch basin - ST [13.5 nr] | 50,368.5 | 45,704.38 | A011 | Z8 | CONS | ST | Excavation | bef |
| RHD4CZ8A011ST7200 |  | PC Blinding, Installation and Pipe connection for Single Catch Basin - (RD-A-1 /1)-Z8-A011-ST | 6d | 2026-09-05 A | 2027-04-24 | RHD4CZ8A011ST7100 | 91% | 3d | 2026-11-19 | 2026-11-25 | Skilled labor [58.81 h]; Unskilled Labor [117.6 h]; Plumber [29.4 h]; Equipment Opreator [11.76 h]; Boom Truck [11.76 h]; Single Catch basin - ST [10.8 nr] | 40,294.8 | 36,563.5 | A011 | Z8 | CONS | ST | Installation & Pipe Connection | bef |
| RHD4CZ8A011ST7300 |  | Rings & C.Slab & Final Backfill for Single Catch Basin - (RD-A-1 /1)-Z8-A011-ST | 7d | 2026-09-07 A | 2027-04-27 | RHD4PRSHLDOSST1307, RHD4PRSHLSTAGST1307, RHD4CZ8A011ST7200 | 91% | 3d | 2026-11-26 | 2026-12-03 | Skilled labor [73.51 h]; Unskilled Labor [147.02 h]; Equipment Opreator [88.21 h]; Boom Truck [14.7 h]; Bobcat [73.51 h]; Single Catch basin - ST [18.9 nr] | 70,515.9 | 63,986.13 | A011 | Z8 | CONS | ST | Rings | bef |
| RHD4CZ8A011ST7400 |  | Steel Cover for Single Catch Basin - (RD-A-1 /1)-Z8-A011-ST | 6d | 2027-08-03 | 2027-08-09 | RHD4PRSHLDOSST1707, RHD4CZ8A011ST7300, RHD4CZ8A011PT4300 |  |  |  |  | Skilled labor [58.81 h]; Unskilled Labor [58.81 h]; Equipment Opreator [11.76 h]; Boom Truck [11.76 h]; Single Catch basin - ST [2.7 nr] | 10,073.7 |  | A011 | Z8 | CONS | ST | Steel Cover | bef |
| RHD4CZ8A011ST7500 |  | Finishing and Insulation works for Single Catch Basin - (RD-A-1 /1)-Z8-A011-ST | 11d | 2027-08-10 | 2027-08-22 | RHD4CZ8A011ST7400 |  |  |  |  | Skilled labor [117.6 h]; Unskilled Labor [235.2 h]; Equipment Opreator [23.52 h]; Boom Truck [23.52 h]; Single Catch basin - ST [8.1 nr] | 30,221.1 |  | A011 | Z8 | CONS | ST | Insulation | bef |
|  | 6409 | **RHD4-02-002-A011-(ST)-Double Catch Basin Works** |  | 2027-04-21 | 2027-05-02 |  |  |  |  |  |  |  |  |  |  |  |  |  |  |
| RHD4CZ8A011ST8100 |  | Excavation works for Double Catch Basin - (RD-A-1 /1)-Z8-A011-ST | 2d | 2027-04-21 | 2027-04-22 | RHD4CZ8A011RD1100, RHD4CZ8A011ST7100 |  |  |  |  | Skilled labor [2.18 h]; Unskilled Labor [4.36 h]; Equipment Opreator [3.27 h]; Excavator-Poclain [2.18 h]; Dump Truck [1.09 h]; Double Catch basin - ST [0.25 nr] | 3,491.5 |  | A011 | Z8 | CONS | ST | Excavation | bef |
| RHD4CZ8A011ST8200 |  | PC Blinding, Installation and Pipe connection for Double Catch Basin - (RD-A-1 /1)-Z8-A011-ST | 2d | 2027-04-24 | 2027-04-25 | RHD4CZ8A011ST8100 |  |  |  |  | Skilled labor [2.18 h]; Unskilled Labor [4.36 h]; Plumber [1.09 h]; Equipment Opreator [0.44 h]; Boom Truck [0.44 h]; Double Catch basin - ST [0.2 nr] | 2,793.2 |  | A011 | Z8 | CONS | ST | Installation & Pipe Connection | bef |
| RHD4CZ8A011ST8300 |  | Rings & C.Slab & Final Backfillfor Double Catch Basin - (RD-A-1 /1)-Z8-A011-ST | 2d | 2027-04-26 | 2027-04-27 | RHD4CZ8A011ST8200 |  |  |  |  | Skilled labor [2.72 h]; Unskilled Labor [5.45 h]; Equipment Opreator [3.27 h]; Boom Truck [0.54 h]; Bobcat [2.72 h]; Double Catch basin - ST [0.35 nr] | 4,888.1 |  | A011 | Z8 | CONS | ST | Rings | bef |
| RHD4CZ8A011ST8400 |  | Steel Cover for Double Catch Basin - (RD-A-1 /1)-Z8-A011-ST | 2d | 2027-04-28 | 2027-04-29 | RHD4CZ8A011ST8300 |  |  |  |  | Skilled labor [2.18 h]; Unskilled Labor [2.18 h]; Equipment Opreator [0.44 h]; Boom Truck [0.44 h]; Double Catch basin - ST [0.05 nr] | 698.3 |  | A011 | Z8 | CONS | ST | Steel Cover | bef |
| RHD4CZ8A011ST8500 |  | Finishing and Insulation works for Double Catch Basin - (RD-A-1 /1)-Z8-A011-ST | 2d | 2027-05-01 | 2027-05-02 | RHD4CZ8A011ST8400 |  |  |  |  | Skilled labor [5.45 h]; Unskilled Labor [10.89 h]; Equipment Opreator [1.09 h]; Boom Truck [1.09 h]; Double Catch basin - ST [0.15 nr] | 2,094.9 |  | A011 | Z8 | CONS | ST | Insulation | bef |
|  | 7378 | **RHD4-02-002-Z8-A011-Sewage Network - SW** |  | 2026-08-11 | 2027-07-26 |  |  |  |  |  |  |  |  |  |  |  |  |  |  |
|  | 1895 | **RHD4-02-002-A011-(SW)-GRP Pipes - 500 mm diameter** |  | 2026-08-15 | 2027-06-09 |  |  |  |  |  |  |  |  |  |  |  |  |  |  |
| RHD4CZ8A011SW1102 |  | Excavation works for GRP Pipe Line 500 mm - (RD-A-1 /1)-Z8-A011-SW | 2d | 2026-08-15 A | 2026-08-17 A | RHD4CZ9L02SW3100, RHD4CZ8A011RD1100, RHD4CZ8A011ST2500 | 100% |  | 2027-01-05 | 2027-01-06 | Skilled labor [8.49 h]; Unskilled Labor [8.49 h]; Equipment Opreator [10.24 h]; Excavator-Poclain [8.49 h]; Dump Truck [1.74 h]; GRP (500mm Diameter) - SW - Depth: 3.51m - 4.5m [17.57 m] | 11,578.63 | 11,578.63 | A011 | Z8 | CONS | SW | Excavation | bef |
| RHD4CZ8A011SW1202 |  | Bedding works for GRP Pipe Line 500 mm - (RD-A-1 /1)-Z8-A011-SW | 2d | 2026-08-16 A | 2026-08-18 A | RHD4CZ8A011SW1102 | 100% |  | 2027-01-07 | 2027-01-09 | Skilled labor [8.49 h]; Unskilled Labor [16.99 h]; Equipment Opreator [16.99 h]; Excavator-Poclain [8.49 h]; Dump Truck [8.49 h]; GRP (500mm Diameter) - SW - Depth: 3.51m - 4.5m [5.86 m] | 3,861.74 | 3,861.74 | A011 | Z8 | CONS | SW | Bedding | bef |
| RHD4CZ8A011SW1302 |  | Installing for GRP Pipe Line 500 mm - (RD-A-1 /1)-Z8-A011-SW | 2d | 2026-09-06 A | 2026-09-07 A | RHD4CZ8A011SW1202 | 100% |  | 2027-01-10 | 2027-01-11 | Unskilled Labor [16.99 h]; Plumber [8.49 h]; Equipment Opreator [8.49 h]; Boom Truck [8.49 h]; GRP (500mm Diameter) - SW - Depth: 3.51m - 4.5m [46.85 m] | 30,874.15 | 30,874.15 | A011 | Z8 | CONS | SW | Installation | bef |
| RHD4CZ8A011SW1402 |  | Primary Test for GRP Pipe Line 500 mm - (RD-A-1 /1)-Z8-A011-SW | 2d | 2027-06-06 | 2027-06-07 | RHD4CZ8A011SW1302 |  |  |  |  | Unskilled Labor [8.49 h]; Plumber [8.49 h]; Equipment Opreator [8.49 h]; Water Truck [8.49 h]; GRP (500mm Diameter) - SW - Depth: 3.51m - 4.5m [23.42 m] | 15,433.78 |  | A011 | Z8 | CONS | SW | Primary Test | bef |
| RHD4CZ8A011SW1502 |  | Backfilling and warning tape works for GRP Pipe Line 500 mm - (RD-A-1 /1)-Z8-A011-SW | 2d | 2027-06-08 | 2027-06-09 | RHD4CZ8A011SW1402 |  |  |  |  | Skilled labor [8.49 h]; Unskilled Labor [16.99 h]; Equipment Opreator [16.99 h]; Excavator-Poclain [8.49 h]; Dump Truck [8.49 h]; GRP (500mm Diameter) - SW - Depth: 3.51m - 4.5m [23.42 m] | 15,433.78 |  | A011 | Z8 | CONS | SW | Backfilling | bef |
|  | 4542 | **RHD4-02-002-A011-(SW)-GRP Pipes - 400 mm diameter** |  | 2026-08-15 | 2027-07-04 |  |  |  |  |  |  |  |  |  |  |  |  |  |  |
| RHD4CZ8A011SW1101 |  | Excavation works for GRP Pipe Line 400 mm - (RD-A-1 /1)-Z8-A011-SW | 5d | 2026-08-15 A | 2027-06-10 | RHD4CZ8A011RD1100, RHD4CZ8A011SW1102 | 49% | 5d | 2027-01-07 | 2027-01-12 | Skilled labor [44.11 h]; Unskilled Labor [44.11 h]; Equipment Opreator [52.93 h]; Excavator-Poclain [44.11 h]; Dump Truck [8.8 h]; GRP (400mm Diameter) - SW - Depth: 2.51m - 3.5m; GRP (400mm Diameter) - SW - Depth: 3.51m - 4.5m [13.19 m]; GRP (400mm Diameter) - SW - Depth: more than 4.5m [64.92 m] | 54,750.79 | 27,071.89 | A011 | Z8 | CONS | SW | Excavation | bef |
| RHD4CZ8A011SW1201 |  | Bedding works for GRP Pipe Line 400 mm - (RD-A-1 /1)-Z8-A011-SW | 5d | 2026-09-06 A | 2027-06-16 | RHD4CZ8A011SW1101 | 49% | 5d | 2027-01-13 | 2027-01-18 | Skilled labor [44.11 h]; Unskilled Labor [88.21 h]; Equipment Opreator [88.21 h]; Excavator-Poclain [44.11 h]; Dump Truck [44.11 h]; GRP (400mm Diameter) - SW - Depth: 2.51m - 3.5m; GRP (400mm Diameter) - SW - Depth: 3.51m - 4.5m [4.4 m]; GRP (400mm Diameter) - SW - Depth: more than 4.5m [21.64 m] | 18,252.32 | 9,033.2 | A011 | Z8 | CONS | SW | Bedding | bef |
| RHD4CZ8A011SW1301 |  | Installing for GRP Pipe Line 400 mm - (RD-A-1 /1)-Z8-A011-SW | 5d | 2026-09-08 A | 2027-06-22 | RHD4CZ8A011SW1201 | 33% | 5d | 2027-01-19 | 2027-01-24 | Unskilled Labor [88.21 h]; Plumber [44.11 h]; Equipment Opreator [44.11 h]; Boom Truck [44.11 h]; GRP (400mm Diameter) - SW - Depth: 2.51m - 3.5m; GRP (400mm Diameter) - SW - Depth: 3.51m - 4.5m [35.18 m]; GRP (400mm Diameter) - SW - Depth: more than 4.5m [273.11 m] | 217,799.04 | 72,224.54 | A011 | Z8 | CONS | SW | Installation | bef |
| RHD4CZ8A011SW1501 |  | Backfilling and warning tape works for GRP Pipe Line 400 mm - (RD-A-1 /1)-Z8-A011-SW | 5d | 2026-09-20 A | 2027-07-04 | RHD4CZ8A011SW1401, RHD4CZ8A011SW1502 | 49% | 5d | 2027-01-31 | 2027-02-04 | Skilled labor [44.11 h]; Unskilled Labor [88.21 h]; Equipment Opreator [88.21 h]; Excavator-Poclain [44.11 h]; Dump Truck [44.11 h]; GRP (400mm Diameter) - SW - Depth: 2.51m - 3.5m; GRP (400mm Diameter) - SW - Depth: 3.51m - 4.5m [17.59 m]; GRP (400mm Diameter) - SW - Depth: more than 4.5m [86.56 m] | 73,003.11 | 35,983.03 | A011 | Z8 | CONS | SW | Backfilling | bef |
| RHD4CZ8A011SW1401 |  | Primary Test for GRP Pipe Line 400 mm - (RD-A-1 /1)-Z8-A011-SW | 5d | 2027-06-23 | 2027-06-28 | RHD4CZ8A011SW1301 |  |  |  |  | Unskilled Labor [44.11 h]; Plumber [44.11 h]; Equipment Opreator [44.11 h]; Water Truck [44.11 h]; GRP (400mm Diameter) - SW - Depth: 2.51m - 3.5m; GRP (400mm Diameter) - SW - Depth: 3.51m - 4.5m [17.59 m]; GRP (400mm Diameter) - SW - Depth: more than 4.5m [86.56 m] | 73,003.11 |  | A011 | Z8 | CONS | SW | Primary Test | bef |

| ID | WBS | Activity | Duration | Start | Finish | Predecessors | Complete | Remaining | Planned start | Planned finish | Resources | Cost | Actual cost | RDH4-01-001-Road and Block Names-1 | RDH4-01-001-Zones-1 | RDH4-01-001-Phases-1 | RDH4-01-001-Networks-1 | RDH4-01-001-Work Method-1 | RDH4-01-001-MENEM |
| --- | --- | --- | --- | --- | --- | --- | --- | --- | --- | --- | --- | --- | --- | --- | --- | --- | --- | --- | --- |
|  | 957 | **RHD4-02-002-A011-(SW)-MH Works - 1200 mm diameter with Back drop** |  | 2026-09-05 | 2027-06-14 |  |  |  |  |  |  |  |  |  |  |  |  |  |  |
| RHD4CZ8A011SW3101 |  | Excavation and PC Blinding works for MH 1200 mm - (RD-A-1 /1)-Z8-A011-SW | 2d | 2026-09-05 A | 2026-09-07 A | RHD4CZ8A011RD1100, RHD4CZ8A011SW3100 | 100% |  | 2027-01-10 | 2027-01-11 | Skilled labor [21.78 h]; Unskilled Labor [21.78 h]; Equipment Opreator [34.85 h]; Excavator-Poclain [21.78 h]; Water Truck [2.18 h]; Dump Truck [10.89 h]; MH (1200mm Diameter) - SW - depth 2.51- 3.5 m with back drop [0.25 nr]; MH (1200mm Diameter) - SW - depth 4.51-5.5 m with back drop [0.25 nr]; MH (1200mm Diameter) - SW - depth more than 6.0 m with back drop [0.25 nr] | 14,695.75 | 14,695.75 | A011 | Z8 | CONS | SW | Excavation | bef |
| RHD4CZ8A011SW3201 |  | Installation of Base for MH 1200 mm - (RD-A-1 /1)-Z8-A011-SW | 3d | 2026-09-07 A | 2026-09-08 A | RHD4CZ8A011SW3101 | 100% |  | 2027-01-12 | 2027-01-14 | Skilled labor [27.2 h]; Unskilled Labor [27.2 h]; Equipment Opreator [10.89 h]; Boom Truck [5.45 h]; Concrete Mixer Truck [5.45 h]; MH (1200mm Diameter) - SW - depth 2.51- 3.5 m with back drop [0.25 nr]; MH (1200mm Diameter) - SW - depth 4.51-5.5 m with back drop [0.25 nr]; MH (1200mm Diameter) - SW - depth more than 6.0 m with back drop [0.25 nr] | 14,695.75 | 14,695.75 | A011 | Z8 | CONS | SW | Installing Base | bef |
| RHD4CZ8A011SW3301 |  | MH Ring and C.Slab works and Backfilling works for MH 1200 mm - (RD-A-1 /1)-Z8-A011-SW | 3d | 2026-09-08 A | 2027-06-08 | RHD4CZ8A011SW3201 | 50% | 3d | 2027-01-16 | 2027-01-18 | Skilled labor [27.2 h]; Unskilled Labor [27.2 h]; Equipment Opreator [19.06 h]; Boom Truck [10.89 h]; Concrete Mixer Truck [8.17 h]; MH (1200mm Diameter) - SW - depth 2.51- 3.5 m with back drop [0.35 nr]; MH (1200mm Diameter) - SW - depth 4.51-5.5 m with back drop [0.35 nr]; MH (1200mm Diameter) - SW - depth more than 6.0 m with back drop [0.35 nr] | 20,574.05 |  | A011 | Z8 | CONS | SW | Installing Rings | bef |
| RHD4CZ8A011SW3401 |  | Steel Cover for MH 1200 mm - (RD-A-1 /1)-Z8-A011-SW | 2d | 2027-06-09 | 2027-06-10 | RHD4CZ8A011SW3301 |  |  |  |  | Skilled labor [10.89 h]; Unskilled Labor [21.78 h]; Equipment Opreator [2.18 h]; Boom Truck [2.18 h]; MH (1200mm Diameter) - SW - depth 2.51- 3.5 m with back drop [0.05 nr]; MH (1200mm Diameter) - SW - depth 4.51-5.5 m with back drop [0.05 nr]; MH (1200mm Diameter) - SW - depth more than 6.0 m with back drop [0.05 nr] | 2,939.15 |  | A011 | Z8 | CONS | SW | Steel Cover | bef |
| RHD4CZ8A011SW3501 |  | Finishing, Benching, Testing works for MH 1200 mm - (RD-A-1 /1)-Z8-A011-SW | 3d | 2027-06-12 | 2027-06-14 | RHD4CZ8A011SW3401, RHD4CZ8A011SW1502 |  |  |  |  | Skilled labor [27.2 h]; Unskilled Labor [54.45 h]; Plumber [27.2 h]; Equipment Opreator [5.45 h]; Water Truck [5.45 h]; MH (1200mm Diameter) - SW - depth 2.51- 3.5 m with back drop [0.1 nr]; MH (1200mm Diameter) - SW - depth 4.51-5.5 m with back drop [0.1 nr]; MH (1200mm Diameter) - SW - depth more than 6.0 m with back drop [0.1 nr] | 5,878.3 |  | A011 | Z8 | CONS | SW | Benching | bef |
|  | 3794 | **RHD4-02-002-A011-(SW)-MH Works - 1200 mm diameter** |  | 2026-09-06 | 2027-07-26 |  |  |  |  |  |  |  |  |  |  |  |  |  |  |
| RHD4CZ8A011SW3100 |  | Excavation and PC Blinding works for MH 1200 mm - (RD-A-1 /1)-Z8-A011-SW | 2d | 2026-09-06 A | 2026-09-07 A | RHD4CZ8A011RD1100, RHD4CZ8A011SW1102 | 100% |  | 2027-01-07 | 2027-01-09 | Skilled labor [99.86 h]; Unskilled Labor [99.86 h]; Equipment Opreator [159.76 h]; Excavator-Poclain [99.86 h]; Water Truck [10.02 h]; Dump Truck [49.88 h]; MH (1200mm Diameter) - SW - depth 0 - 1.5m [0.5 nr]; MH (1200mm Diameter) - SW - depth 1.51 - 2.5m [0.75 nr]; MH (1200mm Diameter) - SW - depth 2.51 - 3.5m [0.25 nr]; MH (1200mm Diameter) - SW - depth 3.51 -4.5m [0.75 nr]; MH (1200mm Diameter) - SW - depth 4.51 -5.5m [0.5 nr]; MH (1200mm Diameter) - SW - depth more than 6.0 m [1 nr] | 50,391 | 50,391 | A011 | Z8 | CONS | SW | Excavation | bef |
| RHD4CZ8A011SW3200 |  | Installation of Base for MH 1200 mm - (RD-A-1 /1)-Z8-A011-SW | 13d | 2026-09-07 A | 2027-06-20 | RHD4CZ8A011SW3100 | 50% | 13d | 2027-01-10 | 2027-01-24 | Skilled labor [136.13 h]; Unskilled Labor [136.13 h]; Equipment Opreator [54.45 h]; Boom Truck [27.2 h]; Concrete Mixer Truck [27.2 h]; MH (1200mm Diameter) - SW - depth 0 - 1.5m [0.5 nr]; MH (1200mm Diameter) - SW - depth 1.51 - 2.5m [0.75 nr]; MH (1200mm Diameter) - SW - depth 2.51 - 3.5m [0.25 nr]; MH (1200mm Diameter) - SW - depth 3.51 -4.5m [0.75 nr]; MH (1200mm Diameter) - SW - depth 4.51 -5.5m [0.5 nr]; MH (1200mm Diameter) - SW - depth more than 6.0 m [1 nr] | 50,391 |  | A011 | Z8 | CONS | SW | Installing Base | bef |
| RHD4CZ8A011SW3300 |  | MH Ring and C.Slab works and Backfilling works for MH 1200 mm - (RD-A-1 /1)-Z8-A011-SW | 13d | 2027-06-21 | 2027-07-05 | RHD4CZ8A011SW3200 |  |  |  |  | Skilled labor [136.13 h]; Unskilled Labor [136.13 h]; Equipment Opreator [95.29 h]; Boom Truck [54.45 h]; Concrete Mixer Truck [40.8 h]; MH (1200mm Diameter) - SW - depth 0 - 1.5m [0.7 nr]; MH (1200mm Diameter) - SW - depth 1.51 - 2.5m [1.05 nr]; MH (1200mm Diameter) - SW - depth 2.51 - 3.5m [0.35 nr]; MH (1200mm Diameter) - SW - depth 3.51 -4.5m [1.05 nr]; MH (1200mm Diameter) - SW - depth 4.51 -5.5m [0.7 nr]; MH (1200mm Diameter) - SW - depth more than 6.0 m [1.4 nr] | 70,547.4 |  | A011 | Z8 | CONS | SW | Installing Rings | bef |
| RHD4CZ8A011SW3400 |  | Steel Cover for MH 1200 mm - (RD-A-1 /1)-Z8-A011-SW | 5d | 2027-07-06 | 2027-07-11 | RHD4CZ8A011SW3300 |  |  |  |  | Skilled labor [54.45 h]; Unskilled Labor [108.9 h]; Equipment Opreator [10.89 h]; Boom Truck [10.89 h]; MH (1200mm Diameter) - SW - depth 0 - 1.5m [0.1 nr]; MH (1200mm Diameter) - SW - depth 1.51 - 2.5m [0.15 nr]; MH (1200mm Diameter) - SW - depth 2.51 - 3.5m [0.05 nr]; MH (1200mm Diameter) - SW - depth 3.51 -4.5m [0.15 nr]; MH (1200mm Diameter) - SW - depth 4.51 -5.5m [0.1 nr]; MH (1200mm Diameter) - SW - depth more than 6.0 m [0.2 nr] | 10,078.2 |  | A011 | Z8 | CONS | SW | Steel Cover | bef |
| RHD4CZ8A011SW3500 |  | Finishing, Benching, Testing works for MH 1200 mm - (RD-A-1 /1)-Z8-A011-SW | 13d | 2027-07-12 | 2027-07-26 | RHD4CZ8A011SW3400, RHD4CZ8A011SW1501, RHD4CZ8A011SW3501 |  |  |  |  | Skilled labor [136.13 h]; Unskilled Labor [272.26 h]; Plumber [136.13 h]; Equipment Opreator [27.2 h]; Water Truck [27.2 h]; MH (1200mm Diameter) - SW - depth 0 - 1.5m [0.2 nr]; MH (1200mm Diameter) - SW - depth 1.51 - 2.5m [0.3 nr]; MH (1200mm Diameter) - SW - depth 2.51 - 3.5m [0.1 nr]; MH (1200mm Diameter) - SW - depth 3.51 -4.5m [0.3 nr]; MH (1200mm Diameter) - SW - depth 4.51 -5.5m [0.2 nr]; MH (1200mm Diameter) - SW - depth more than 6.0 m [0.4 nr] | 20,156.4 |  | A011 | Z8 | CONS | SW | Benching | bef |
|  | 3790 | **RHD4-02-002-A011-(SW)-UPVC Pipes - 200 mm diameter** |  | 2026-08-11 | 2027-06-14 |  |  |  |  |  |  |  |  |  |  |  |  |  |  |
| RHD4CZ8A011SW2100 |  | Excavation works for UPVC Pipe Line 200 mm - (RD-A-1 /1)-Z8-A011-SW | 4d | 2026-08-11 A | 2026-08-15 A | RHD4CZ8A011RD1100, RHD4CZ8A011SW1101 | 100% |  | 2027-01-13 | 2027-01-17 | Skilled labor [33.32 h]; Unskilled Labor [33.32 h]; Equipment Opreator [40 h]; Excavator-Poclain [33.32 h]; Dump Truck [6.64 h]; UPVC (200mm Diameter) - SW - Depth: less than 1.5m [26.08 m]; UPVC (200mm Diameter) - SW - Depth: 1.51m - 2.5m [29.56 m]; UPVC (200mm Diameter) - SW - Depth: 2.51m - 3.5m [19.39 m]; UPVC (200mm Diameter) - SW - Depth: 3.51m - 4.5m | 17,042.26 | 17,042.26 | A011 | Z8 | CONS | SW | Excavation | bef |
| RHD4CZ8A011SW2200 |  | Bedding works for UPVC Pipe Line 200 mm - (RD-A-1 /1)-Z8-A011-SW | 3d | 2026-08-13 A | 2026-08-16 A | RHD4CZ8A011SW2100 | 100% |  | 2027-01-18 | 2027-01-20 | Skilled labor [32 h]; Unskilled Labor [64.14 h]; Equipment Opreator [64.14 h]; Excavator-Poclain [32 h]; Dump Truck [32 h]; UPVC (200mm Diameter) - SW - Depth: less than 1.5m [13.04 m]; UPVC (200mm Diameter) - SW - Depth: 1.51m - 2.5m [9.85 m]; UPVC (200mm Diameter) - SW - Depth: 2.51m - 3.5m [6.46 m]; UPVC (200mm Diameter) - SW - Depth: 3.51m - 4.5m | 6,461.41 | 6,461.41 | A011 | Z8 | CONS | SW | Bedding | bef |
| RHD4CZ8A011SW2300 |  | Installing for UPVC Pipe Line 200 mm - (RD-A-1 /1)-Z8-A011-SW | 4d | 2026-08-15 A | 2026-09-09 A | RHD4CZ8A011SW2200 | 100% |  | 2027-01-21 | 2027-01-25 | Unskilled Labor [76.89 h]; Plumber [38.44 h]; Equipment Opreator [38.44 h]; Boom Truck [38.44 h]; UPVC (200mm Diameter) - SW - Depth: less than 1.5m [117.35 m]; UPVC (200mm Diameter) - SW - Depth: 1.51m - 2.5m [78.82 m]; UPVC (200mm Diameter) - SW - Depth: 2.51m - 3.5m [51.71 m]; UPVC (200mm Diameter) - SW - Depth: 3.51m - 4.5m | 54,050.2 | 54,050.2 | A011 | Z8 | CONS | SW | Installation | bef |
| RHD4CZ8A011SW2500 |  | Backfilling and warning tape works for UPVC Pipe Line 200 mm - (RD-A-1 /1)-Z8-A011-SW | 4d | 2026-09-10 A | 2026-10-27 A | RHD4CZ8A011SW2400 | 100% |  | 2027-01-30 | 2027-02-02 | Skilled labor [35.28 h]; Unskilled Labor [70.46 h]; Equipment Opreator [70.46 h]; Excavator-Poclain [35.28 h]; Dump Truck [35.28 h]; UPVC (200mm Diameter) - SW - Depth: less than 1.5m [52.15 m]; UPVC (200mm Diameter) - SW - Depth: 1.51m - 2.5m [39.41 m]; UPVC (200mm Diameter) - SW - Depth: 2.51m - 3.5m [25.85 m]; UPVC (200mm Diameter) - SW - Depth: 3.51m - 4.5m | 25,849.07 | 25,849.07 | A011 | Z8 | CONS | SW | Backfilling | bef |
| RHD4CZ8A011SW2400 |  | Primary Test for UPVC Pipe Line 200 mm - (RD-A-1 /1)-Z8-A011-SW | 3d | 2027-06-12 | 2027-06-14 | RHD4CZ8A011SW2300 |  |  |  |  | Unskilled Labor [23.31 h]; Plumber [23.31 h]; Equipment Opreator [23.31 h]; Water Truck [23.31 h]; UPVC (200mm Diameter) - SW - Depth: less than 1.5m [52.15 m]; UPVC (200mm Diameter) - SW - Depth: 1.51m - 2.5m [39.41 m]; UPVC (200mm Diameter) - SW - Depth: 2.51m - 3.5m [25.85 m]; UPVC (200mm Diameter) - SW - Depth: 3.51m - 4.5m | 25,849.07 |  | A011 | Z8 | CONS | SW | Primary Test | bef |
|  | 7793 | **RHD4-02-002-Z8-A011-Potable Network - PT** |  | 2027-06-12 | 2027-08-09 |  |  |  |  |  |  |  |  |  |  |  |  |  |  |
|  | 7797 | **RHD4-02-002-A011-(PT)-HDPE Pipes - 400 mm diameter** |  | 2027-06-12 | 2027-07-21 |  |  |  |  |  |  |  |  |  |  |  |  |  |  |
| RHD4CZ8A011PT1103 |  | Excavation works for HDPE Pipline 400 mm - (RD-A-1 /1)-Z8-A011-PT | 7d | 2027-06-12 | 2027-06-19 | RHD4ENSDZ8APPPT130, RHD4ENMSPT2000, RHD4CZ8A011SW2100 |  |  |  |  | Skilled labor [72.75 h]; Unskilled Labor [97.8 h]; Equipment Opreator [107.38 h]; Excavator-Poclain [72.75 h]; Dump Truck [34.63 h]; HDPE (400mm Diameter) - PT - Depth: less than 1.5m [94.33 m]; HDPE (400mm Diameter) - PT - Depth: 1.51m - 2.5m [13.33 m] | 36,924.32 |  | A011 | Z8 | CONS | PT | Excavation | bef |
| RHD4CZ8A011PT1203 |  | Bedding works for HDPE Pipline 400 mm - (RD-A-1 /1)-Z8-A011-PT | 7d | 2027-06-20 | 2027-06-27 | RHD4CZ8A011PT1103 |  |  |  |  | Skilled labor [43.89 h]; Unskilled Labor [137.98 h]; Plumber [25.05 h]; Equipment Opreator [112.93 h]; Excavator-Poclain [43.89 h]; Boom Truck [25.05 h]; Dump Truck [43.89 h]; HDPE (400mm Diameter) - PT - Depth: less than 1.5m [47.16 m]; HDPE (400mm Diameter) - PT - Depth: 1.51m - 2.5m [106.62 m] | 54,844.08 |  | A011 | Z8 | CONS | PT | Bedding | bef |
| RHD4CZ8A011PT1303 |  | Installing for HDPE Pipline 400 mm - (RD-A-1 /1)-Z8-A011-PT | 9d | 2027-06-28 | 2027-07-07 | RHD4PRSHLDOSPT1000, RHD4PRSHLSTAGPT1000, RHD4CZ8A011PT1203 |  |  |  |  | Unskilled Labor [150.61 h]; Plumber [87.89 h]; Equipment Opreator [87.89 h]; Boom Truck [62.73 h]; Water Truck [25.05 h]; HDPE (400mm Diameter) - PT - Depth: less than 1.5m [424.47 m]; HDPE (400mm Diameter) - PT - Depth: 1.51m - 2.5m [53.31 m] | 163,724.64 |  | A011 | Z8 | CONS | PT | Installation | bef |
| RHD4CZ8A011PT1403 |  | Primary Test for HDPE Pipline 400 mm - (RD-A-1 /1)-Z8-A011-PT | 6d | 2027-07-08 | 2027-07-14 | RHD4CZ8A011PT1303 |  |  |  |  | Skilled labor [25.05 h]; Unskilled Labor [86.47 h]; Plumber [36.37 h]; Equipment Opreator [86.47 h]; Excavator-Poclain [25.05 h]; Water Truck [36.37 h]; Dump Truck [25.05 h]; HDPE (400mm Diameter) - PT - Depth: less than 1.5m [188.65 m]; HDPE (400mm Diameter) - PT - Depth: 1.51m - 2.5m [53.31 m] | 83,545.84 |  | A011 | Z8 | CONS | PT | Primary Test | bef |
| RHD4CZ8A011PT1503 |  | Backfilling and warning tape works for HDPE Pipline 400 mm - (RD-A-1 /1)-Z8-A011-PT | 6d | 2027-07-15 | 2027-07-21 | RHD4CZ8A011PT1403 |  |  |  |  | Skilled labor [53.36 h]; Unskilled Labor [106.73 h]; Equipment Opreator [106.73 h]; Excavator-Poclain [53.36 h]; Dump Truck [53.36 h]; HDPE (400mm Diameter) - PT - Depth: less than 1.5m [188.65 m]; HDPE (400mm Diameter) - PT - Depth: 1.51m - 2.5m | 64,141 |  | A011 | Z8 | CONS | PT | Backfilling | bef |

| ID | WBS | Activity | Duration | Start | Finish | Predecessors | Resources | Cost | RDH4-01-001-Road and Block Names-1 | RDH4-01-001-Zones-1 | RDH4-01-001-Phases-1 | RDH4-01-001-Networks-1 | RDH4-01-001-Work Method-1 | RDH4-01-001-MENEM |
| --- | --- | --- | --- | --- | --- | --- | --- | --- | --- | --- | --- | --- | --- | --- |
|  | 6102 | **RHD4-02-002-A011-(PT)-Air Valve Chambers** |  | 2027-07-25 | 2027-08-02 |  |  |  |  |  |  |  |  |  |
| RHD4CZ8A011PT2102 |  | Excavation and Bedding for Air Valve Chambers for Potable Water Network - (RD-A-1 /1)-Z8-A011-PT | 2d | 2027-07-25 | 2027-07-26 | RHD4CZ8A011PT2101 | Skilled labor [5.45 h]; Unskilled Labor [5.45 h]; Equipment Opreator [1.09 h]; Excavator-Poclain [0.54 h]; Dump Truck [0.54 h]; Air Valve chambers - PT [0.25 nr] | 1,193 | A011 | Z8 | CONS | PT | Excavation and Bedding | bef |
| RHD4CZ8A011PT2202 |  | PC works for Air Valve Chambers for Potable Water Network - (RD-A-1 /1)-Z8-A011-PT | 2d | 2027-07-27 | 2027-07-28 | RHD4CZ8A011PT2102 | Skilled labor [5.45 h]; Unskilled Labor [10.89 h]; Equipment Opreator [0.54 h]; Concrete Pump [0.54 h]; Air Valve chambers - PT [0.1 nr] | 477.2 | A011 | Z8 | CONS | PT | PC Works | bef |
| RHD4CZ8A011PT2302 |  | Installation for Air Valve Chambers for Potable Water Network - (RD-A-1 /1)-Z8-A011-PT | 2d | 2027-07-29 | 2027-07-31 | RHD4CZ8A011PT2202 | Skilled labor [5.45 h]; Unskilled Labor [10.89 h]; Equipment Opreator [1.09 h]; Boom Truck [1.09 h]; Air Valve chambers - PT [0.55 nr] | 2,624.6 | A011 | Z8 | CONS | PT | Installation | bef |
| RHD4CZ8A011PT2402 |  | Backfilling works for Air Valve Chambers for Potable Water Network - (RD-A-1 /1)-Z8-A011-PT | 2d | 2027-08-01 | 2027-08-02 | RHD4CZ8A011PT2302 | Skilled labor [5.45 h]; Unskilled Labor [10.89 h]; Equipment Opreator [1.09 h]; Water Truck [0.54 h]; Dump Truck [0.54 h]; Air Valve chambers - PT [0.1 nr] | 477.2 | A011 | Z8 | CONS | PT | Backfilling Works | bef |
|  | 6103 | **RHD4-02-002-A011-(PT)-Air Valves** |  | 2027-08-01 | 2027-08-04 |  |  |  |  |  |  |  |  |  |
| RHD4CZ8A011PT3103 |  | Installation for Air Valves for Potable Water Network - (RD-A-1 /1)-Z8-A011-PT | 2d | 2027-08-01 | 2027-08-02 | RHD4CZ8A011PT2302, RHD4CZ8A011PT2101 | Unskilled Labor [5.45 h]; Plumber [5.45 h]; Air valve diameter 65 mm - PT [0.9 nr] | 4,954.5 | A011 | Z8 | CONS | PT | Installation | bef |
| RHD4CZ8A011PT3203 |  | Stem and Service box for Air Valves for Potable Water Network - (RD-A-1 /1)-Z8-A011-PT | 2d | 2027-08-03 | 2027-08-04 | RHD4CZ8A011PT3103, RHD4CZ8A011PT2402, RHD4CZ8A011SW3500 | Unskilled Labor [5.45 h]; Plumber [5.45 h]; Air valve diameter 65 mm - PT [0.1 nr] | 550.5 | A011 | Z8 | CONS | PT | Stem and Service box | bef |
|  | 7801 | **RHD4-02-002-A011-(PT)-Butterfly Valves** |  | 2027-07-27 | 2027-08-02 |  |  |  |  |  |  |  |  |  |
| RHD4CZ8A011PT3101 |  | Installation for Butterfly Valves for Potable Water Network - (RD-A-1 /1)-Z8-A011-PT | 2d | 2027-07-27 | 2027-07-28 | RHD4PRSHLDOSPT1200, RHD4PRSHLSTAGPT1200, RHD4CZ8A011PT2300 SS | Unskilled Labor [16.34 h]; Plumber [16.34 h]; Butterfly valves dia 400 - PT [2.7 nr] | 82,736.1 | A011 | Z8 | CONS | PT | Installation | bef |
| RHD4CZ8A011PT3201 |  | Stem and Service box for Butterfly Valves for Potable Water Network - (RD-A-1 /1)-Z8-A011-PT | 2d | 2027-08-01 | 2027-08-02 | RHD4PRSHLDOSPT1300, RHD4PRSHLSTAGPT1300, RHD4CZ8A011PT3101, RHD4CZ8A011PT2400 | Unskilled Labor [16.34 h]; Plumber [16.34 h]; Butterfly valves dia 400 - PT [0.3 nr] | 9,192.9 | A011 | Z8 | CONS | PT | Stem and Service box | bef |
|  | 7802 | **RHD4-02-002-A011-(PT)-Wash out Valve Chambers** |  | 2027-07-22 | 2027-08-09 |  |  |  |  |  |  |  |  |  |
| RHD4CZ8A011PT2101 |  | Excavation and Bedding for Wash out Valve Chambers for Potable Water Network - (RD-A-1 /1)-Z8-A011-PT | 2d | 2027-07-22 | 2027-07-24 | RHD4ENSDZ8APPPT130, RHD4CZ8A011PT1503 | Skilled labor [5.45 h]; Unskilled Labor [5.45 h]; Equipment Opreator [1.09 h]; Excavator-Poclain [0.54 h]; Dump Truck [0.54 h]; Wash out chambers - PT [0.25 nr] | 4,686.25 | A011 | Z8 | CONS | PT | Excavation and Bedding | bef |
| RHD4CZ8A011PT2201 |  | PC works for Wash out Valve Chambers for Potable Water Network - (RD-A-1 /1)-Z8-A011-PT | 2d | 2027-08-03 | 2027-08-04 | RHD4CZ8A011PT2101, RHD4CZ8A011PT3201 | Skilled labor [5.45 h]; Unskilled Labor [10.89 h]; Equipment Opreator [0.54 h]; Concrete Pump [0.54 h]; Wash out chambers - PT [0.1 nr] | 1,874.5 | A011 | Z8 | CONS | PT | PC Works | bef |
| RHD4CZ8A011PT2301 |  | Installation for Wash out Valve Chambers for Potable Water Network - (RD-A-1 /1)-Z8-A011-PT | 2d | 2027-08-05 | 2027-08-07 | RHD4PRSHLDOSPT1100, RHD4PRSHLDOSPT1400, RHD4PRSHLSTAGPT1100, RHD4PRSHLSTAGPT1400, RHD4CZ8A011PT2201 | Skilled labor [5.45 h]; Unskilled Labor [10.89 h]; Equipment Opreator [1.09 h]; Boom Truck [1.09 h]; Wash out chambers - PT [0.55 nr] | 10,309.75 | A011 | Z8 | CONS | PT | Installation | bef |
| RHD4CZ8A011PT2401 |  | Backfilling works for Wash out Valve Chambers for Potable Water Network - (RD-A-1 /1)-Z8-A011-PT | 2d | 2027-08-08 | 2027-08-09 | RHD4CZ8A011PT2301, RHD4CZ8A011PT3203, RHD4CZ8A011IRR3200 | Skilled labor [5.45 h]; Unskilled Labor [10.89 h]; Equipment Opreator [1.09 h]; Water Truck [0.54 h]; Dump Truck [0.54 h]; Wash out chambers - PT [0.1 nr] | 1,874.5 | A011 | Z8 | CONS | PT | Backfilling Works | bef |
|  | 7803 | **RHD4-02-002-A011-(PT)-Wash out Valves** |  | 2027-07-29 | 2027-08-02 |  |  |  |  |  |  |  |  |  |
| RHD4CZ8A011PT3102 |  | Installation for Wash out Valves for Potable Water Network - (RD-A-1 /1)-Z8-A011-PT | 2d | 2027-07-29 | 2027-07-31 | RHD4PRSHLDOSPT1200, RHD4PRSHLSTAGPT1200, RHD4CZ8A011PT3101 | Unskilled Labor [5.45 h]; Plumber [5.45 h]; Wash out valve diameter 100 mm - PT [0.9 nr] | 3,373.2 | A011 | Z8 | CONS | PT | Installation | bef |
| RHD4CZ8A011PT3202 |  | Stem and Service box for Wash out Valves for Potable Water Network - (RD-A-1 /1)-Z8-A011-PT | 2d | 2027-08-01 | 2027-08-02 | RHD4PRSHLDOSPT1300, RHD4PRSHLSTAGPT1300, RHD4CZ8A011PT3102 | Unskilled Labor [5.45 h]; Plumber [5.45 h]; Wash out valve diameter 100 mm - PT [0.1 nr] | 374.8 | A011 | Z8 | CONS | PT | Stem and Service box | bef |
|  | 7806 | **RHD4-02-002-A011-(PT)-Fire Hydrant** |  | 2027-07-22 | 2027-08-08 |  |  |  |  |  |  |  |  |  |
| RHD4CZ8A011PT4100 |  | Excavation and Bedding and Pipe Installation for Fire Hydrant - (RD-A-1 /1)-Z8-A011-PT | 4d | 2027-07-22 | 2027-07-26 | RHD4ENSDZ8APPPT130, RHD4CZ8A011PT1503 | Skilled labor [43.56 h]; Unskilled Labor [43.56 h]; Plumber [43.56 h]; Equipment Opreator [21.78 h]; Excavator-Poclain [21.78 h]; 3-outlet fire hydrant (2 x 2.5 inch and 1 x 4.5 inch) in the form of a separate dry vacuum cylinder [0.8 nr] | 10,096 | A011 | Z8 | CONS | PT | Excavation | bef |
| RHD4CZ8A011PT4200 |  | Valve Installation for Fire Hydrant - (RD-A-1 /1)-Z8-A011-PT | 3d | 2027-07-27 | 2027-07-29 | RHD4CZ8A011PT4100 | Unskilled Labor [29.08 h]; Plumber [29.08 h]; 3-outlet fire hydrant (2 x 2.5 inch and 1 x 4.5 inch) in the form of a separate dry vacuum cylinder [1.6 nr] | 20,192 | A011 | Z8 | CONS | PT | Valve | bef |
| RHD4CZ8A011PT4300 |  | Stem for Fire Hydrant - (RD-A-1 /1)-Z8-A011-PT | 3d | 2027-07-31 | 2027-08-02 | RHD4CZ8A011PT4200 | Unskilled Labor [29.08 h]; Plumber [29.08 h]; 3-outlet fire hydrant (2 x 2.5 inch and 1 x 4.5 inch) in the form of a separate dry vacuum cylinder [2.4 nr] | 30,288 | A011 | Z8 | CONS | PT | Stem | bef |
| RHD4CZ8A011PT4400 |  | Fire Installation for Fire Hydrant - (RD-A-1 /1)-Z8-A011-PT | 3d | 2027-08-03 | 2027-08-05 | RHD4PRSHLDOSPT1500, RHD4PRSHLSTAGPT1500, RHD4CZ8A011PT4300 | Unskilled Labor [29.08 h]; Plumber [29.08 h]; Equipment Opreator [29.08 h]; Boom Truck [29.08 h]; 3-outlet fire hydrant (2 x 2.5 inch and 1 x 4.5 inch) in the form of a separate dry vacuum cylinder [2.8 nr] | 35,336 | A011 | Z8 | CONS | PT | Fire | bef |
| RHD4CZ8A011PT4500 |  | Protection Barriers for Fire Hydrant - (RD-A-1 /1)-Z8-A011-PT | 2d | 2027-08-07 | 2027-08-08 | RHD4CZ8A011PT4400 | Unskilled Labor [17.42 h]; Plumber [17.42 h]; 3-outlet fire hydrant (2 x 2.5 inch and 1 x 4.5 inch) in the form of a separate dry vacuum cylinder [0.4 nr] | 5,048 | A011 | Z8 | CONS | PT | Protection Barriers | bef |

| ID | WBS | Activity | Duration | Start | Finish | Predecessors | Resources | Cost | RDH4-01-001-Road and Block Names-1 | RDH4-01-001-Zones-1 | RDH4-01-001-Phases-1 | RDH4-01-001-Networks-1 | RDH4-01-001-Work Method-1 | RDH4-01-001-MENEM |
| --- | --- | --- | --- | --- | --- | --- | --- | --- | --- | --- | --- | --- | --- | --- |
|  | 7800 | **RHD4-02-002-A011-(PT)-Butterfly Valve Chamber** |  | 2027-07-22 | 2027-07-31 |  |  |  |  |  |  |  |  |  |
| RHD4CZ8A011PT2100 |  | Excavation and Bedding for Butterfly Valve Chamber for Potable Water Network - (RD-A-1 /1)-Z8-A011-PT | 2d | 2027-07-22 | 2027-07-24 | RHD4ENSDZ8APPPT130, RHD4CZ8A011PT1503 | Skilled labor [16.34 h]; Unskilled Labor [16.34 h]; Equipment Opreator [3.27 h]; Excavator-Poclain [1.6 h]; Dump Truck [1.6 h]; Valve chambers - PT [0.75 nr] | 9,363 | A011 | Z8 | CONS | PT | Excavation and Bedding | bef |
| RHD4CZ8A011PT2200 |  | PC works for Butterfly Valve Chamber for Potable Water Network - (RD-A-1 /1)-Z8-A011-PT | 2d | 2027-07-25 | 2027-07-26 | RHD4CZ8A011PT2100 | Skilled labor [16.34 h]; Unskilled Labor [32.67 h]; Equipment Opreator [1.6 h]; Concrete Pump [1.6 h]; Valve chambers - PT [0.3 nr] | 3,745.2 | A011 | Z8 | CONS | PT | PC Works | bef |
| RHD4CZ8A011PT2300 |  | Installation for Butterfly Valve Chamber for Potable Water Network - (RD-A-1 /1)-Z8-A011-PT | 2d | 2027-07-27 | 2027-07-28 | RHD4PRSHLDOSPT1100, RHD4PRSHLDOSPT1400, RHD4PRSHLSTAGPT1100, RHD4PRSHLSTAGPT1400, RHD4CZ8A011PT2200 | Skilled labor [16.34 h]; Unskilled Labor [32.67 h]; Equipment Opreator [3.27 h]; Boom Truck [3.27 h]; Valve chambers - PT [1.65 nr] | 20,598.6 | A011 | Z8 | CONS | PT | Installation | bef |
| RHD4CZ8A011PT2400 |  | Backfilling works for Butterfly Valve Chamber for Potable Water Network - (RD-A-1 /1)-Z8-A011-PT | 2d | 2027-07-29 | 2027-07-31 | RHD4CZ8A011PT2300 | Skilled labor [16.34 h]; Unskilled Labor [32.67 h]; Equipment Opreator [3.27 h]; Water Truck [1.6 h]; Dump Truck [1.6 h]; Valve chambers - PT [0.3 nr] | 3,745.2 | A011 | Z8 | CONS | PT | Backfilling Works | bef |
|  | 1755 | **RHD4-02-002-Z8-A011-Irrigation Network - IRR** |  | 2027-06-20 | 2027-07-29 |  |  |  |  |  |  |  |  |  |
|  | 6107 | **RHD4-02-002-A011-(IRR)-HDPE Pipes - 160 mm diameter** |  | 2027-06-20 | 2027-06-30 |  |  |  |  |  |  |  |  |  |
| RHD4CZ8A011IRR1100 |  | Excavation works for HDPE Pipline 160 mm - (RD-A-1 /1)-Z8-A011-IRR | 2d | 2027-06-20 | 2027-06-21 | RHD4CZ8A011RD1100, RHD4CZ8A011PT1103 | Skilled labor [10.13 h]; Unskilled Labor [10.13 h]; Equipment Opreator [12.2 h]; Excavator-Poclain [10.13 h]; Dump Truck [2.07 h]; HDPE (160mm Diameter) - TSE - Depth: less than 1.5m [14 m] | 1,722 | A011 | Z8 | CONS | IRR | Excavation | bef |
| RHD4CZ8A011IRR1200 |  | Bedding works for HDPE Pipline 160 mm - (RD-A-1 /1)-Z8-A011-IRR | 2d | 2027-06-22 | 2027-06-23 | RHD4CZ8A011IRR1100 | Skilled labor [7.62 h]; Unskilled Labor [15.25 h]; Equipment Opreator [15.25 h]; Excavator-Poclain [7.62 h]; Dump Truck [7.62 h]; HDPE (160mm Diameter) - TSE - Depth: less than 1.5m [7 m] | 861 | A011 | Z8 | CONS | IRR | Bedding | bef |
| RHD4CZ8A011IRR1300 |  | Installing for HDPE Pipline 160 mm - (RD-A-1 /1)-Z8-A011-IRR | 2d | 2027-06-24 | 2027-06-26 | RHD4CZ8A011IRR1200 | Unskilled Labor [20.36 h]; Plumber [10.13 h]; Equipment Opreator [10.13 h]; Boom Truck [10.13 h]; HDPE (160mm Diameter) - TSE - Depth: less than 1.5m [63 m] | 7,749 | A011 | Z8 | CONS | IRR | Installation | bef |
| RHD4CZ8A011IRR1400 |  | Primary Test for HDPE Pipline 160 mm - (RD-A-1 /1)-Z8-A011-IRR | 2d | 2027-06-27 | 2027-06-28 | RHD4CZ8A011IRR1300 | Unskilled Labor [3.05 h]; Plumber [3.05 h]; Equipment Opreator [3.05 h]; Water Truck [3.05 h]; HDPE (160mm Diameter) - TSE - Depth: less than 1.5m [28 m] | 3,444 | A011 | Z8 | CONS | IRR | Primary Test | bef |
| RHD4CZ8A011IRR1500 |  | Backfilling and warning tape works for HDPE Pipline 160 mm - (RD-A-1 /1)-Z8-A011-IRR | 2d | 2027-06-29 | 2027-06-30 | RHD4CZ8A011IRR1400 | Skilled labor [7.62 h]; Unskilled Labor [15.25 h]; Equipment Opreator [15.25 h]; Excavator-Poclain [7.62 h]; Dump Truck [7.62 h]; HDPE (160mm Diameter) - TSE - Depth: less than 1.5m [28 m] | 3,444 | A011 | Z8 | CONS | IRR | Backfilling | bef |
|  | 6115 | **RHD4-02-002-A011-(IRR)-Gate Valves (Direct Buried)** |  | 2027-07-08 | 2027-07-14 |  |  |  |  |  |  |  |  |  |
| RHD4CZ8A011IRR3100 |  | Installation for Direct Buried Gate Valves - (RD-A-1 /1)-Z8-A011-IRR | 3d | 2027-07-08 | 2027-07-11 | RHD4CZ8A011IRR1300 SS, RHD4CZ8A011IRR1300 FF, RHD4CZ8A011IRR1303 | Unskilled Labor [32.67 h]; Plumber [32.67 h]; Gate valves dia 100 mm - TSE [4.5 nr]; Gate valves dia 250 mm - TSE [0.9 nr] | 9,967.5 | A011 | Z8 | CONS | IRR | Installation | bef |
| RHD4CZ8A011IRR3200 |  | Stem and Service box for Direct Buried Gate Valves - (RD-A-1 /1)-Z8-A011-IRR | 3d | 2027-07-12 | 2027-07-14 | RHD4CZ8A011IRR3100, RHD4CZ8A011IRR1500 | Unskilled Labor [32.67 h]; Plumber [32.67 h]; Gate valves dia 100 mm - TSE [0.5 nr]; Gate valves dia 250 mm - TSE [0.1 nr] | 1,107.5 | A011 | Z8 | CONS | IRR | Stem and Service box | bef |
|  | 6116 | **RHD4-02-002-A011-(IRR)-Butterfly Valve Chamber** |  | 2027-06-22 | 2027-06-30 |  |  |  |  |  |  |  |  |  |
| RHD4CZ8A011IRR2100 |  | Excavation and Bedding for Butterfly Valve Chamber for Irrigation Network - (RD-A-1 /1)-Z8-A011-IRR | 2d | 2027-06-22 | 2027-06-23 | RHD4CZ8A011IRR1100 | Skilled labor [21.78 h]; Unskilled Labor [21.78 h]; Equipment Opreator [4.36 h]; Excavator-Poclain [2.18 h]; Dump Truck [2.18 h]; Valve chambers - TSE [1 nr] | 14,643 | A011 | Z8 | CONS | IRR | Excavation and Bedding | bef |
| RHD4CZ8A011IRR2200 |  | PC works for Butterfly Valve Chamber for Irrigation Network - (RD-A-1 /1)-Z8-A011-IRR | 2d | 2027-06-24 | 2027-06-26 | RHD4CZ8A011IRR2100 | Skilled labor [21.78 h]; Unskilled Labor [43.56 h]; Equipment Opreator [2.18 h]; Concrete Pump [2.18 h]; Valve chambers - TSE [0.4 nr] | 5,857.2 | A011 | Z8 | CONS | IRR | PC Works | bef |
| RHD4CZ8A011IRR2300 |  | Installation for Butterfly Valve Chamber for Irrigation Network - (RD-A-1 /1)-Z8-A011-IRR | 2d | 2027-06-27 | 2027-06-28 | RHD4CZ8A011IRR2200 | Skilled labor [21.78 h]; Unskilled Labor [43.56 h]; Equipment Opreator [4.36 h]; Boom Truck [4.36 h]; Valve chambers - TSE [2.2 nr] | 32,214.6 | A011 | Z8 | CONS | IRR | Installation | bef |
| RHD4CZ8A011IRR2400 |  | Backfilling works for Butterfly Valve Chamber for Irrigation Network - (RD-A-1 /1)-Z8-A011-IRR | 2d | 2027-06-29 | 2027-06-30 | RHD4CZ8A011IRR2300 | Skilled labor [21.78 h]; Unskilled Labor [43.56 h]; Equipment Opreator [4.36 h]; Water Truck [2.18 h]; Dump Truck [2.18 h]; Valve chambers - TSE [0.4 nr] | 5,857.2 | A011 | Z8 | CONS | IRR | Backfilling Works | bef |
|  | 6117 | **RHD4-02-002-A011-(IRR)-Butterfly Valves** |  | 2027-07-08 | 2027-07-12 |  |  |  |  |  |  |  |  |  |
| RHD4CZ8A011IRR3101 |  | Installation for Butterfly Valves for Irrigation Network - (RD-A-1 /1)-Z8-A011-IRR | 2d | 2027-07-08 | 2027-07-10 | RHD4CZ8A011IRR1300, RHD4CZ8A011IRR1303 | Unskilled Labor [21.78 h]; Plumber [21.78 h]; Butterfly valves dia 500 - TSE [3.6 nr] | 142,696.8 | A011 | Z8 | CONS | IRR | Installation | bef |
| RHD4CZ8A011IRR3201 |  | Stem and Service box for Butterfly Valves for Irrigation Network - (RD-A-1 /1)-Z8-A011-IRR | 2d | 2027-07-11 | 2027-07-12 | RHD4CZ8A011IRR3101, RHD4CZ8A011IRR2400 | Unskilled Labor [21.78 h]; Plumber [21.78 h]; Butterfly valves dia 500 - TSE [0.4 nr] | 15,855.2 | A011 | Z8 | CONS | IRR | Stem and Service box | bef |
|  | 1769 | **RHD4-02-002-A011-(IRR)-Air Valve Chamber** |  | 2027-06-22 | 2027-06-30 |  |  |  |  |  |  |  |  |  |
| RHD4CZ8A011IRR2102 |  | Excavation and Bedding for Valve Chamber for Irrigation Network - (RD-A-1 /1)-Z8-A011-IRR | 2d | 2027-06-22 | 2027-06-23 | RHD4CZ8A011IRR1100 | Skilled labor [5.45 h]; Unskilled Labor [5.45 h]; Equipment Opreator [1.09 h]; Excavator-Poclain [0.54 h]; Dump Truck [0.54 h]; Air Valve chambers - TSE [0.25 nr] | 1,193 | A011 | Z8 | CONS | IRR | Excavation and Bedding | bef |
| RHD4CZ8A011IRR2202 |  | PC works for Valve Chamber for Irrigation Network - (RD-A-1 /1)-Z8-A011-IRR | 2d | 2027-06-24 | 2027-06-26 | RHD4CZ8A011IRR2102 | Skilled labor [5.45 h]; Unskilled Labor [10.89 h]; Equipment Opreator [0.54 h]; Concrete Pump [0.54 h]; Air Valve chambers - TSE [0.1 nr] | 477.2 | A011 | Z8 | CONS | IRR | PC Works | bef |
| RHD4CZ8A011IRR2302 |  | Installation for Valve Chamber for Irrigation Network - (RD-A-1 /1)-Z8-A011-IRR | 2d | 2027-06-27 | 2027-06-28 | RHD4CZ8A011IRR2202 | Skilled labor [5.45 h]; Unskilled Labor [10.89 h]; Equipment Opreator [1.09 h]; Boom Truck [1.09 h]; Air Valve chambers - TSE [0.55 nr] | 2,624.6 | A011 | Z8 | CONS | IRR | Installation | bef |
| RHD4CZ8A011IRR2402 |  | Backfilling works for Valve Chamber for Irrigation Network - (RD-A-1 /1)-Z8-A011-IRR | 2d | 2027-06-29 | 2027-06-30 | RHD4CZ8A011IRR2302 | Skilled labor [5.45 h]; Unskilled Labor [10.89 h]; Equipment Opreator [1.09 h]; Water Truck [0.54 h]; Dump Truck [0.54 h]; Air Valve chambers - TSE [0.1 nr] | 477.2 | A011 | Z8 | CONS | IRR | Backfilling Works | bef |

| ID | WBS | Activity | Duration | Start | Finish | Predecessors | Resources | Cost | RDH4-01-001-Road and Block Names-1 | RDH4-01-001-Zones-1 | RDH4-01-001-Phases-1 | RDH4-01-001-Networks-1 | RDH4-01-001-Work Method-1 | RDH4-01-001-MENEM |
| --- | --- | --- | --- | --- | --- | --- | --- | --- | --- | --- | --- | --- | --- | --- |
|  | 1770 | **RHD4-02-002-A011-(IRR)-Air Valves** |  | 2027-06-29 | 2027-07-03 |  |  |  |  |  |  |  |  |  |
| RHD4CZ8A011IRR3103 |  | Installation for Air Valves for Irrigation Network - (RD-A-1 /1)-Z8-A011-IRR | 2d | 2027-06-29 | 2027-06-30 | RHD4CZ8A011IRR2302 | Unskilled Labor [5.45 h]; Plumber [5.45 h]; Air valve diameter 100 mm - TSE [0.9 nr] | 7,020 | A011 | Z8 | CONS | IRR | Installation | bef |
| RHD4CZ8A011IRR3203 |  | Stem and Service box for Air Valves for Irrigation Network - (RD-A-1 /1)-Z8-A011-IRR | 2d | 2027-07-01 | 2027-07-03 | RHD4CZ8A011IRR3103, RHD4CZ8A011IRR2402 | Unskilled Labor [5.45 h]; Plumber [5.45 h]; Air valve diameter 100 mm - TSE [0.1 nr] | 780 | A011 | Z8 | CONS | IRR | Stem and Service box | bef |
|  | 8762 | **RHD4-02-002-A011-(IRR)-HDPE Pipes - 500 mm diameter** |  | 2027-06-22 | 2027-07-29 |  |  |  |  |  |  |  |  |  |
| RHD4CZ8A011IRR1107 |  | Excavation works for HDPE Pipline 500 mm - (RD-A-1 /1)-Z8-A011-IRR | 8d | 2027-06-22 | 2027-06-30 | RHD4CZ8A011RD1100, RHD4CZ8A011IRR1100 | Skilled labor [82.4 h]; Unskilled Labor [82.4 h]; Equipment Opreator [98.88 h]; Excavator-Poclain [82.4 h]; Dump Truck [16.44 h]; HDPE (500mm Diameter) - TSE - Depth: less than 1.5m [72.41 m]; HDPE (500mm Diameter) - TSE - Depth: more than 1.51m [61.7 m] | 89,041.36 | A011 | Z8 | CONS | IRR | Excavation | bef |
| RHD4CZ8A011IRR1207 |  | Bedding works for HDPE Pipline 500 mm - (RD-A-1 /1)-Z8-A011-IRR | 7d | 2027-07-01 | 2027-07-08 | RHD4CZ8A011IRR1107 | Skilled labor [69.26 h]; Unskilled Labor [138.53 h]; Equipment Opreator [138.53 h]; Excavator-Poclain [69.26 h]; Dump Truck [69.26 h]; HDPE (500mm Diameter) - TSE - Depth: less than 1.5m [36.2 m]; HDPE (500mm Diameter) - TSE - Depth: more than 1.51m [20.57 m] | 37,475.65 | A011 | Z8 | CONS | IRR | Bedding | bef |
| RHD4CZ8A011IRR1307 |  | Installing for HDPE Pipline 500 mm - (RD-A-1 /1)-Z8-A011-IRR | 8d | 2027-07-10 | 2027-07-18 | RHD4CZ8A011IRR1207 | Unskilled Labor [164.88 h]; Plumber [82.4 h]; Equipment Opreator [82.4 h]; Boom Truck [82.4 h]; HDPE (500mm Diameter) - TSE - Depth: less than 1.5m [325.82 m]; HDPE (500mm Diameter) - TSE - Depth: more than 1.51m [164.53 m] | 323,182.77 | A011 | Z8 | CONS | IRR | Installation | bef |
| RHD4CZ8A011IRR1407 |  | Primary Test for HDPE Pipline 500 mm - (RD-A-1 /1)-Z8-A011-IRR | 3d | 2027-07-19 | 2027-07-21 | RHD4CZ8A011IRR1307 | Unskilled Labor [30.71 h]; Plumber [30.71 h]; Equipment Opreator [30.71 h]; Water Truck [30.71 h]; HDPE (500mm Diameter) - TSE - Depth: less than 1.5m [144.81 m]; HDPE (500mm Diameter) - TSE - Depth: more than 1.51m [82.27 m] | 149,902.21 | A011 | Z8 | CONS | IRR | Primary Test | bef |
| RHD4CZ8A011IRR1507 |  | Backfilling and warning tape works for HDPE Pipline 500 mm - (RD-A-1 /1)-Z8-A011-IRR | 7d | 2027-07-22 | 2027-07-29 | RHD4CZ8A011IRR1407 | Skilled labor [69.26 h]; Unskilled Labor [138.53 h]; Equipment Opreator [138.53 h]; Excavator-Poclain [69.26 h]; Dump Truck [69.26 h]; HDPE (500mm Diameter) - TSE - Depth: less than 1.5m [144.81 m]; HDPE (500mm Diameter) - TSE - Depth: more than 1.51m [82.27 m] | 149,902.21 | A011 | Z8 | CONS | IRR | Backfilling | bef |
|  | 3651 | **RHD4-02-002-A011-(IRR)-HDPE Pipes - 250 mm diameter** |  | 2027-07-01 | 2027-07-12 |  |  |  |  |  |  |  |  |  |
| RHD4CZ8A011IRR1103 |  | Excavation works for HDPE Pipline 250 mm - (RD-A-1 /1)-Z8-A011-IRR | 2d | 2027-07-01 | 2027-07-03 | RHD4CZ8A011RD1100, RHD4CZ8A011IRR1107 | Skilled labor [2.07 h]; Unskilled Labor [2.07 h]; Equipment Opreator [2.5 h]; Excavator-Poclain [2.07 h]; Dump Truck [0.44 h]; HDPE (250mm Diameter) - TSE - Depth: less than 1.5m [1.89 m]; HDPE (250mm Diameter) - TSE - Depth: more than 1.51m [1.47 m] | 784.98 | A011 | Z8 | CONS | IRR | Excavation | bef |
| RHD4CZ8A011IRR1203 |  | Bedding works for HDPE Pipline 250 mm - (RD-A-1 /1)-Z8-A011-IRR | 2d | 2027-07-04 | 2027-07-05 | RHD4CZ8A011IRR1103 | Skilled labor [1.74 h]; Unskilled Labor [3.48 h]; Equipment Opreator [3.48 h]; Excavator-Poclain [1.74 h]; Dump Truck [1.74 h]; HDPE (250mm Diameter) - TSE - Depth: less than 1.5m [0.95 m]; HDPE (250mm Diameter) - TSE - Depth: more than 1.51m [0.49 m] | 331.1 | A011 | Z8 | CONS | IRR | Bedding | bef |
| RHD4CZ8A011IRR1303 |  | Installing for HDPE Pipline 250 mm - (RD-A-1 /1)-Z8-A011-IRR | 2d | 2027-07-06 | 2027-07-07 | RHD4CZ8A011IRR1203 | Unskilled Labor [4.14 h]; Plumber [2.07 h]; Equipment Opreator [2.07 h]; Boom Truck [2.07 h]; HDPE (250mm Diameter) - TSE - Depth: less than 1.5m [8.52 m]; HDPE (250mm Diameter) - TSE - Depth: more than 1.51m [3.92 m] | 2,848.44 | A011 | Z8 | CONS | IRR | Installation | bef |
| RHD4CZ8A011IRR1403 |  | Primary Test for HDPE Pipline 250 mm - (RD-A-1 /1)-Z8-A011-IRR | 2d | 2027-07-08 | 2027-07-10 | RHD4CZ8A011IRR1303 | Unskilled Labor [0.8 h]; Plumber [0.8 h]; Equipment Opreator [0.8 h]; Water Truck [0.8 h]; HDPE (250mm Diameter) - TSE - Depth: less than 1.5m [3.79 m]; HDPE (250mm Diameter) - TSE - Depth: more than 1.51m [1.96 m] | 1,322.23 | A011 | Z8 | CONS | IRR | Primary Test | bef |
| RHD4CZ8A011IRR1503 |  | Backfilling and warning tape works for HDPE Pipline 250 mm - (RD-A-1 /1)-Z8-A011-IRR | 2d | 2027-07-11 | 2027-07-12 | RHD4CZ8A011IRR1403 | Skilled labor [1.74 h]; Unskilled Labor [3.48 h]; Equipment Opreator [3.48 h]; Excavator-Poclain [1.74 h]; Dump Truck [1.74 h]; HDPE (250mm Diameter) - TSE - Depth: less than 1.5m [3.79 m]; HDPE (250mm Diameter) - TSE - Depth: more than 1.51m [1.96 m] | 1,322.23 | A011 | Z8 | CONS | IRR | Backfilling | bef |
|  | 7842 | **RHD4-02-002-Z8-A011-Medium Voltage Network - MV** |  | 2027-03-23 | 2027-08-22 |  |  |  |  |  |  |  |  |  |
|  | 7843 | **RHD4-02-002-A011-(MV)-Medium Voltage cable trench** |  | 2027-07-06 | 2027-08-08 |  |  |  |  |  |  |  |  |  |
| RHD4CZ8A011MV1100 |  | Excavation for Medium Voltage Trench - (RD-A-1 /1)-Z8-A011-MV | 7d | 2027-07-06 | 2027-07-13 | RHD4ENSDZ8APPMV150, RHD4CZ8A011ST1109, RHD4CZ8A011RD3100, RHD4CZ4C012MV1200 | Skilled labor [74.49 h]; Unskilled Labor [148.87 h]; Equipment Opreator [223.36 h]; Excavator-Poclain [74.49 h]; Dump Truck [148.87 h]; Excavation for Trench size 60cm wide and 80cm deep ( for 2 cables) [61.01 m3]; Excavation for Trench size 180cm wide and 80cm deep (for 6 cables) [417.47 m3] | 4,784.76 | A011 | Z8 | CONS | MV | Excavation | AFT |
| RHD4CZ8A011MV1200 |  | Trench Backfilling for Medium Voltage Network - (RD-A-1 /1)-Z8-A011-MV | 7d | 2027-08-01 | 2027-08-08 | RHD4CZ8A011MV3200, RHD4CZ8A011MV3101 | Skilled labor [74.49 h]; Unskilled Labor [74.49 h]; Equipment Opreator [148.87 h]; Dump Truck [148.87 h]; Excavation for Trench size 60cm wide and 80cm deep ( for 2 cables) [26.15 m3]; Excavation for Trench size 180cm wide and 80cm deep (for 6 cables) [178.91 m3] | 2,050.61 | A011 | Z8 | CONS | MV | Backfilling | AFT |
|  | 7844 | **RHD4-02-002-A011-(MV)-Medium Voltage duct banks** |  | 2027-03-23 | 2027-05-25 |  |  |  |  |  |  |  |  |  |
| RHD4CZ8A011MV2100 |  | Excavation of Duct Banks for Medium Voltage Network - (RD-A-1 /1)-Z8-A011-MV | 12d | 2027-03-23 | 2027-04-05 | RHD4ENSDZ8APPMV150, RHD4CZ8A011RD1100, RHD4CZ8A011RD3100 | Unskilled Labor [123.82 h]; Equipment Opreator [247.76 h]; Excavator-Poclain [123.82 h]; Dump Truck [123.82 h]; Duct bank for MV cables UPVC (4xø150mm) [2.99 m]; Duct bank for MV cables UPVC (8xø150mm) [14.07 m] | 12,403.17 | A011 | Z8 | CONS | MV | Excavation | bef |
| RHD4CZ8A011MV2200 |  | Installation of Duct Banks for Medium Voltage Network - (RD-A-1 /1)-Z8-A011-MV | 18d | 2027-04-06 | 2027-04-26 | RHD4PRSHLDOSMV1000, RHD4PRSHLSTAGMV1000, RHD4CZ8A011MV2100 | Unskilled Labor [185.79 h]; Equipment Opreator [371.58 h]; Excavator-Poclain [185.79 h]; Dump Truck [185.79 h]; Duct bank for MV cables UPVC (4xø150mm) [2.99 m]; Duct bank for MV cables UPVC (8xø150mm) [14.07 m] | 12,403.17 | A011 | Z8 | CONS | MV | Installing | bef |
| RHD4CZ8A011MV2300 |  | Pouring of Duct Banks for Medium Voltage Network - (RD-A-1 /1)-Z8-A011-MV | 12d | 2027-04-27 | 2027-05-10 | RHD4CZ8A011MV2200 | Unskilled Labor [123.82 h]; Equipment Opreator [247.76 h]; Excavator-Poclain [123.82 h]; Dump Truck [123.82 h]; Duct bank for MV cables UPVC (4xø150mm) [19.42 m]; Duct bank for MV cables UPVC (8xø150mm) [91.46 m] | 80,624.61 | A011 | Z8 | CONS | MV | Pouring | bef |
| RHD4CZ8A011MV2400 |  | Backfilling of Duct Banks for Medium Voltage Network - (RD-A-1 /1)-Z8-A011-MV | 9d | 2027-05-11 | 2027-05-25 | RHD4CZ8A011MV2300 | Unskilled Labor [92.89 h]; Equipment Opreator [185.79 h]; Excavator-Poclain [92.89 h]; Dump Truck [92.89 h]; Duct bank for MV cables UPVC (4xø150mm) [4.48 m]; Duct bank for MV cables UPVC (8xø150mm) [21.11 m] | 18,608.74 | A011 | Z8 | CONS | MV | Backfilling | bef |

| ID | WBS | Activity | Duration | Start | Finish | Predecessors | Resources | Cost | RDH4-01-001-Road and Block Names-1 | RDH4-01-001-Zones-1 | RDH4-01-001-Phases-1 | RDH4-01-001-Networks-1 | RDH4-01-001-Work Method-1 | RDH4-01-001-MENEM |
| --- | --- | --- | --- | --- | --- | --- | --- | --- | --- | --- | --- | --- | --- | --- |
|  | 7845 | **RHD4-02-002-A011-(MV)-Medium Voltage cables 3Cx 500 mm²** |  | 2027-07-14 | 2027-08-22 |  |  |  |  |  |  |  |  |  |
| RHD4CZ8A011MV3100 |  | Installation of Medium Voltage Cables 3Cx 500 mm² - (RD-A-1 /1)-Z8-A011-MV | 10d | 2027-07-14 | 2027-07-25 | RHD4PRSHLDOSMV1100, RHD4ENMSMV2000, RHD4ENMSMV2010, RHD4PRSHLSTAGMV1100, RHD4CZ8A011MV1100 | Skilled labor [101.93 h]; Unskilled Labor [407.84 h]; Electrician [203.87 h]; Equipment Opreator [305.8 h]; Boom Truck [101.93 h]; Cable Laying Machine [203.87 h]; Cable 13.8 kV 3Cx 500 mm² Al/XLPE,/LLDPE / Unarmored [4212.59 m] | 669,801.59 | A011 | Z8 | CONS | MV | Installation | AFT |
| RHD4CZ8A011MV3200 |  | Joints Installation of Medium Voltage Cables 3Cx 500 mm² - (RD-A-1 /1)-Z8-A011-MV | 5d | 2027-07-26 | 2027-07-31 | RHD4PRSHLDOSMV1300, RHD4PRSHLSTAGMV1300, RHD4CZ8A011MV3100 | Skilled labor [49.01 h]; Unskilled Labor [196 h]; Electrician [98.01 h]; Equipment Opreator [49.01 h]; Boom Truck [49.01 h]; Straight joints cables for 13.8 kv 3Cx 500 mm², Al /XLPE/LLDPE [9 Unit] | 29,232 | A011 | Z8 | CONS | MV | Joints Installation | AFT |
| RHD4CZ8A011MV3300 |  | Testing of Medium Voltage Cables 3Cx 500 mm² - (RD-A-1 /1)-Z8-A011-MV | 10d | 2027-08-09 | 2027-08-19 | RHD4CZ8A011MV3200, RHD4CZ8A011MV1200 | Skilled labor [101.93 h]; Unskilled Labor [407.84 h]; Electrician [203.87 h]; Cable 13.8 kV 3Cx 500 mm² Al/XLPE,/LLDPE / Unarmored [468.07 m] | 74,422.4 | A011 | Z8 | CONS | MV | Testing | AFT |
| RHD4CZ8A011MV3400 |  | Termination of Medium Voltage Cables 3Cx 500 mm² - (RD-A-1 /1)-Z8-A011-MV | 2d | 2027-08-21 | 2027-08-22 | RHD4CZ8A011MV3300, RHD4CZ8A011MV5400 | Unskilled Labor [0.33 h]; Electrician [0.33 h]; Cable Termination for 13.8 kv 3Cx 500 mm², Al /XLPE/LLDPE [1.6 Unit] | 4,216 | A011 | Z8 | CONS | MV | Termination | AFT |
|  | 7846 | **RHD4-02-002-A011-(MV)-Medium Voltage cables 3Cx 50 mm²** |  | 2027-07-14 | 2027-08-17 |  |  |  |  |  |  |  |  |  |
| RHD4CZ8A011MV3101 |  | Installation of Medium Voltage Cables 3Cx 50 mm² - (RD-A-1 /1)-Z8-A011-MV | 2d | 2027-07-14 | 2027-07-15 | RHD4PRSHLDOSMV1200, RHD4ENMSMV2000, RHD4ENMSMV2010, RHD4PRSHLSTAGMV1200, RHD4CZ8A011MV1100 | Unskilled Labor [1.74 h]; Electrician [0.87 h]; Equipment Opreator [1.31 h]; Boom Truck [0.44 h]; Cable Laying Machine [0.87 h]; Single Core Copper Cable 13.8 kV 3Cx 50 mm² Cu/XLPE/PVC / Unarmored [3.6 m] | 403.2 | A011 | Z8 | CONS | MV | Installation | AFT |
| RHD4CZ8A011MV3301 |  | Testing of Medium Voltage Cables 3Cx 50 mm² - (RD-A-1 /1)-Z8-A011-MV | 2d | 2027-08-09 | 2027-08-10 | RHD4CZ8A011MV3101, RHD4CZ8A011MV1200 | Unskilled Labor [0.33 h]; Electrician [0.22 h]; Single Core Copper Cable 13.8 kV 3Cx 50 mm² Cu/XLPE/PVC / Unarmored [0.4 m] | 44.8 | A011 | Z8 | CONS | MV | Testing | AFT |
| RHD4CZ8A011MV3401 |  | Termination of Medium Voltage Cables 3Cx 50 mm² - (RD-A-1 /1)-Z8-A011-MV | 2d | 2027-08-16 | 2027-08-17 | RHD4CZ8A011MV3301, RHD4CZ8A011MV5400 | Unskilled Labor [5.77 h]; Electrician [2.94 h]; Cable Termination for 13.8 kv 3Cx 500 mm², Al /XLPE/LLDPE [0.4 Unit] | 1,054 | A011 | Z8 | CONS | MV | Termination | AFT |
|  | 7848 | **RHD4-02-002-A011-(MV)-Unit Substations** |  | 2027-08-01 | 2027-08-15 |  |  |  |  |  |  |  |  |  |
| RHD4CZ8A011MV5100 |  | Excavation for Unit Substations for Medium Voltage Network - (RD-A-1 /1)-Z8-A011-MV | 2d | 2027-08-01 | 2027-08-02 | RHD4ENSDZ8APPMV150, RHD4CZ8A011MV1200 SS | Skilled labor [21.78 h]; Unskilled Labor [21.78 h]; Equipment Opreator [43.56 h]; Excavator-Poclain [21.78 h]; Dump Truck [21.78 h]; Unit Substation 13.8/0.4 K V, 500kVA ,Including concrete foundations and fencing, According to the specifications and standards of SEC [0.1 Unit]; Ring Main Unit RMU, 13.8KV, According to the specifications and standards of SEC [0.1 Unit] | 12,257 | A011 | Z8 | CONS | MV | Excavation | AFT |
| RHD4CZ8A011MV5200 |  | Concrete Base Placement for Unit Substations for Medium Voltage Network - (RD-A-1 /1)-Z8-A011-MV | 2d | 2027-08-03 | 2027-08-04 | RHD4CZ8A011MV5100 | Skilled labor [21.78 h]; Unskilled Labor [21.78 h]; Equipment Opreator [21.78 h]; Boom Truck [21.78 h]; Unit Substation 13.8/0.4 K V, 500kVA ,Including concrete foundations and fencing, According to the specifications and standards of SEC [0.15 Unit]; Ring Main Unit RMU, 13.8KV, According to the specifications and standards of SEC [0.15 Unit] | 18,385.5 | A011 | Z8 | CONS | MV | Concrete Base Placement | AFT |
| RHD4CZ8A011MV5300 |  | Installation for Fences and doors for Medium Voltage Network - (RD-A-1 /1)-Z8-A011-MV | 5d | 2027-08-05 | 2027-08-10 | RHD4CZ8A011MV5200 | Skilled labor [54.45 h]; Unskilled Labor [54.45 h]; Equipment Opreator [65.34 h]; Excavator-Poclain [10.89 h]; Boom Truck [54.45 h]; Unit Substation 13.8/0.4 K V, 500kVA ,Including concrete foundations and fencing, According to the specifications and standards of SEC [0.1 Unit]; Ring Main Unit RMU, 13.8KV, According to the specifications and standards of SEC [0.1 Unit] | 12,257 | A011 | Z8 | CONS | MV | Fence Installation | AFT |
| RHD4CZ8A011MV5400 |  | Installation for Unit Substations for Medium Voltage Network - (RD-A-1 /1)-Z8-A011-MV | 4d | 2027-08-11 | 2027-08-15 | RHD4PRLOLSTAGMV1601, RHD4PRLOLSTAGMV1602, RHD4CZ8A011MV5300 | Skilled labor [43.56 h]; Unskilled Labor [87.12 h]; Electrician [87.12 h]; Unit Substation 13.8/0.4 K V, 500kVA ,Including concrete foundations and fencing, According to the specifications and standards of SEC [0.65 Unit]; Ring Main Unit RMU, 13.8KV, According to the specifications and standards of SEC [0.65 Unit] | 79,670.5 | A011 | Z8 | CONS | MV | Substation Installation | AFT |
|  | 7849 | **RHD4-02-002-Z8-A011-Low Voltage Network - LV** |  | 2027-07-31 | 2027-09-13 |  |  |  |  |  |  |  |  |  |
|  | 7850 | **RHD4-02-002-A011-(LV)-Low Voltage duct banks** |  | 2027-07-31 | 2027-08-22 |  |  |  |  |  |  |  |  |  |
| RHD4CZ8A011LV2100 |  | Excavation of Duct Banks for Low Voltage Network - (RD-A-1 /1)-Z8-A011-LV | 5d | 2027-07-31 | 2027-08-04 | RHD4ENSDZ8APPLV160, RHD4CZ8A011IRR1507, RHD4CZ8A011RW3000, RHD4CZ8A011RD1100, RHD4CZ8A011MV2100 | Skilled labor [206.59 h]; Unskilled Labor [206.59 h]; Equipment Opreator [413.18 h]; Excavator-Poclain [206.59 h]; Dump Truck [206.59 h]; Duct bank for LV cables UPVC (2xø110mm) [22.2 m]; Duct bank for LV cables UPVC (4xø110mm) [6.25 m] | 6,353.15 | A011 | Z8 | CONS | LV | Excavation | bef |
| RHD4CZ8A011LV2200 |  | Installation of Duct Banks for Low Voltage Network - (RD-A-1 /1)-Z8-A011-LV | 5d | 2027-08-05 | 2027-08-10 | RHD4PRSHLDOSLV1000, RHD4PRSHLSTAGLV1000, RHD4CZ8A011LV2100 | Carpenter [31.04 h]; Skilled labor [309.83 h]; Unskilled Labor [309.83 h]; Steel Fixer [31.04 h]; Duct bank for LV cables UPVC (2xø110mm) [22.2 m]; Duct bank for LV cables UPVC (4xø110mm) [6.25 m] | 6,353.15 | A011 | Z8 | CONS | LV | Installing | bef |
| RHD4CZ8A011LV2300 |  | Pouring of Duct Banks for Low Voltage Network - (RD-A-1 /1)-Z8-A011-LV | 5d | 2027-08-11 | 2027-08-16 | RHD4CZ8A011LV2200 | Skilled labor [206.59 h]; Unskilled Labor [206.59 h]; Equipment Opreator [82.66 h]; Concrete Mixer Truck [41.27 h]; Concrete Pump [41.27 h]; Duct bank for LV cables UPVC (2xø110mm) [144.3 m]; Duct bank for LV cables UPVC (4xø110mm) [40.65 m] | 41,302.95 | A011 | Z8 | CONS | LV | Pouring | bef |
| RHD4CZ8A011LV2400 |  | Backfilling of Duct Banks for Low Voltage Network - (RD-A-1 /1)-Z8-A011-LV | 5d | 2027-08-17 | 2027-08-22 | RHD4CZ8A011LV2300 | Skilled labor [154.97 h]; Unskilled Labor [154.97 h]; Equipment Opreator [61.97 h]; Excavator-Poclain [61.97 h]; Duct bank for LV cables UPVC (2xø110mm) [33.3 m]; Duct bank for LV cables UPVC (4xø110mm) [9.38 m] | 9,531.22 | A011 | Z8 | CONS | LV | Backfilling | bef |
|  | 7851 | **RHD4-02-002-A011-(LV)-Low Voltage Drawpit** |  | 2027-08-23 | 2027-08-26 |  |  |  |  |  |  |  |  |  |
| RHD4CZ8A011LV5100 |  | Excavation of Drawpit size 900x900x1000mm for Low Voltage Network - (RD-A-1 /1)-Z8-A011-LV | 2d | 2027-08-23 | 2027-08-24 | RHD4ENSDZ8APPLV160, RHD4CZ8A011IRR1507, RHD4CZ8A011MV3400, RHD4CZ8A011MV3401 | Skilled labor [2.72 h]; Unskilled Labor [2.72 h]; Equipment Opreator [2.18 h]; Excavator-Poclain [1.09 h]; Dump Truck [1.09 h]; Drawpit with medium duty steel cover, size900x900x1000mm, [0.45 Unit] | 1,654.65 | A011 | Z8 | CONS | LV | Excavation | AFT |
| RHD4CZ8A011LV5200 |  | Installation of Drawpit size 900x900x1000mm for Low Voltage Network - (RD-A-1 /1)-Z8-A011-LV | 2d | 2027-08-25 | 2027-08-26 | RHD4PRSHLDOSLV1400, RHD4PRSHLSTAGLV1400, RHD4CZ8A011LV5100 | Skilled labor [2.72 h]; Unskilled Labor [2.72 h]; Equipment Opreator [1.09 h]; Boom Truck [1.09 h]; Drawpit with medium duty steel cover, size900x900x1000mm, [2.55 Unit] | 9,376.35 | A011 | Z8 | CONS | LV | Installation | AFT |
|  | 7852 | **RHD4-02-002-A011-(LV)-Low Voltage cables** |  | 2027-08-28 | 2027-09-06 |  |  |  |  |  |  |  |  |  |
| RHD4CZ8A011LV3100 |  | Excavation for Low Voltage Cables for Low Voltage Network - (RD-A-1 /1)-Z8-A011-LV | 3d | 2027-08-28 | 2027-08-30 | RHD4ENSDZ8APPLV160, RHD4CZ8A011LV2400, RHD4CZ8A011LV5200 | Skilled labor [21.89 h]; Unskilled Labor [43.67 h]; Equipment Opreator [43.67 h]; Excavator-Poclain [21.89 h]; Boom Truck [21.89 h]; Cable, Copper 4x185mm2/ CU/XLPE/PVC [2.5 m]; Cable, Copper 4x70mm2/ CU/XLPE/PVC [26.23 m]; Cable, Copper 4x50mm2/ CU/XLPE/PVC +1x25mm2 CU/PVC [35.16 m]; Cable, Copper 3x10mm2/ CU/XLPE/SWA/PVC [36.41 m] | 11,142.63 | A011 | Z8 | CONS | LV | Excavation | AFT |
| RHD4CZ8A011LV3200 |  | Cable Laying of Low Voltage Cables for Low Voltage Network - (RD-A-1 /1)-Z8-A011-LV | 2d | 2027-08-31 | 2027-09-01 | RHD4PRSHLDOSLV1100, RHD4ENMSLV2000, RHD4ENMSLV2010, RHD4PRSHLSTAGLV1100, RHD4CZ8A011LV3100 | Skilled labor [18.19 h]; Unskilled Labor [72.86 h]; Electrician [36.37 h]; Equipment Opreator [54.56 h]; Boom Truck [18.19 h]; Cable Laying Machine [36.37 h]; Cable, Copper 4x185mm2/ CU/XLPE/PVC [7.49 m]; Cable, Copper 4x70mm2/ CU/XLPE/PVC [78.68 m]; Cable, Copper 4x50mm2/ CU/XLPE/PVC +1x25mm2 CU/PVC [105.48 m]; Cable, Copper 3x10mm2/ CU/XLPE/SWA/PVC [109.22 m] | 33,422.95 | A011 | Z8 | CONS | LV | Cable Laying | AFT |
| RHD4CZ8A011LV3300 |  | Warning tape and Backfill for Low Voltage Cables for Low Voltage Network - (RD-A-1 /1)-Z8-A011-LV | 2d | 2027-09-02 | 2027-09-04 | RHD4CZ8A011LV3200 | Skilled labor [18.19 h]; Unskilled Labor [72.86 h]; Electrician [36.37 h]; Equipment Opreator [18.19 h]; Boom Truck [18.19 h]; Cable, Copper 4x185mm2/ CU/XLPE/PVC [1.87 m]; Cable, Copper 4x70mm2/ CU/XLPE/PVC [19.67 m]; Cable, Copper 4x50mm2/ CU/XLPE/PVC +1x25mm2 CU/PVC [26.37 m]; Cable, Copper 3x10mm2/ CU/XLPE/SWA/PVC [27.31 m] | 8,355.74 | A011 | Z8 | CONS | LV | Warning tape and Backfill | AFT |
| RHD4CZ8A011LV3400 |  | Testing of Low Voltage Cables for Low Voltage Network - (RD-A-1 /1)-Z8-A011-LV | 2d | 2027-09-05 | 2027-09-06 | RHD4CZ8A011LV3300 | Skilled labor [10.89 h]; Unskilled Labor [43.67 h]; Electrician [21.89 h]; Equipment Opreator [10.89 h]; Boom Truck [10.89 h]; Cable, Copper 4x185mm2/ CU/XLPE/PVC [0.62 m]; Cable, Copper 4x70mm2/ CU/XLPE/PVC [6.56 m]; Cable, Copper 4x50mm2/ CU/XLPE/PVC +1x25mm2 CU/PVC [8.79 m]; Cable, Copper 3x10mm2/ CU/XLPE/SWA/PVC [9.1 m] | 2,785.73 | A011 | Z8 | CONS | LV | Testing | AFT |

| ID | WBS | Activity | Duration | Start | Finish | Predecessors | Resources | Cost | RDH4-01-001-Road and Block Names-1 | RDH4-01-001-Zones-1 | RDH4-01-001-Phases-1 | RDH4-01-001-Networks-1 | RDH4-01-001-Work Method-1 | RDH4-01-001-MENEM |
| --- | --- | --- | --- | --- | --- | --- | --- | --- | --- | --- | --- | --- | --- | --- |
|  | 7853 | **RHD4-02-002-A011-(LV)-Low Voltage Distribution Pillars** |  | 2027-09-07 | 2027-09-13 |  |  |  |  |  |  |  |  |  |
| RHD4CZ8A011LV4100 |  | Leveling for Distribution Pillars for Low Voltage Network - (RD-A-1 /1)-Z8-A011-LV | 2d | 2027-09-07 | 2027-09-08 | RHD4CZ8A011LV3300, RHD4CZ8A011LV3400 | Skilled labor [5.45 h]; Unskilled Labor [10.89 h]; Equipment Opreator [2.18 h]; Excavator-Poclain [1.09 h]; Boom Truck [1.09 h]; Supply and installation of KWH meter mounting frame including concrete block wall for installation of KWH meter according to the standards and specifications of SEC [0.15 Unit] | 707.85 | A011 | Z8 | CONS | LV | Leveling | AFT |
| RHD4CZ8A011LV4200 |  | Lean Concrete for Distribution Pillars for Low Voltage Network - (RD-A-1 /1)-Z8-A011-LV | 2d | 2027-09-09 | 2027-09-11 | RHD4CZ8A011LV4100 | Skilled labor [3.59 h]; Unskilled Labor [7.3 h]; Equipment Opreator [1.42 h]; Concrete Mixer Truck [0.8 h]; Concrete Pump [0.8 h]; Supply and installation of KWH meter mounting frame including concrete block wall for installation of KWH meter according to the standards and specifications of SEC [0.25 Unit] | 1,179.75 | A011 | Z8 | CONS | LV | Lean Concrete | AFT |
| RHD4CZ8A011LV4300 |  | Installation of Distribution Pillars for Low Voltage Network - (RD-A-1 /1)-Z8-A011-LV | 2d | 2027-09-12 | 2027-09-13 | RHD4PRSHLDOSLV1200, RHD4PRSHLDOSLV1300, RHD4PRSHLSTAGLV1200, RHD4PRSHLSTAGLV1300, RHD4CZ8A011LV4200 | Skilled labor [5.45 h]; Unskilled Labor [21.78 h]; Electrician [10.89 h]; Equipment Opreator [5.45 h]; Boom Truck [5.45 h]; Supply and installation of KWH meter mounting frame including concrete block wall for installation of KWH meter according to the standards and specifications of SEC [0.6 Unit] | 2,831.4 | A011 | Z8 | CONS | LV | Installation | AFT |
|  | 7854 | **RHD4-02-002-A011-(LV)-Low Voltage Distribution Pillars Earthing** |  |  |  |  |  |  |  |  |  |  |  |  |
|  | 7855 | **RHD4-02-002-Z8-A011-Street Lighting Network - SL** |  | 2027-09-14 | 2027-11-07 |  |  |  |  |  |  |  |  |  |
|  | 7856 | **RHD4-02-002-A011-(SL)-Street Lighting duct banks** |  |  |  |  |  |  |  |  |  |  |  |  |
|  | 7857 | **RHD4-02-002-A011-(SL)-Street Lighting Drawpit** |  | 2027-09-14 | 2027-09-18 |  |  |  |  |  |  |  |  |  |
| RHD4CZ8A011SL5100 |  | Excavation of Drawpit size 600x600x900mm for Street Lighting Network - (RD-A-1 /1)-Z8-A011-SL | 2d | 2027-09-14 | 2027-09-15 | RHD4ENSDZ8APPSL170, RHD4CZ8A011LV4300 | Skilled labor [1.85 h]; Unskilled Labor [1.85 h]; Equipment Opreator [1.42 h]; Excavator-Poclain [0.8 h]; Dump Truck [0.8 h]; Drawpit with medium duty steel cover, size600x600x900mm, [0.3 Unit] | 735.3 | A011 | Z8 | CONS | SL | Excavation | AFT |
| RHD4CZ8A011SL5200 |  | Installation of Drawpit size 600x600x900mm for Street Lighting Network - (RD-A-1 /1)-Z8-A011-SL | 2d | 2027-09-16 | 2027-09-18 | RHD4PRSHLDOSSL1400, RHD4PRSHLSTAGSL1400, RHD4CZ8A011SL5100 | Skilled labor [1.85 h]; Unskilled Labor [1.85 h]; Equipment Opreator [0.8 h]; Boom Truck [0.8 h]; Drawpit with medium duty steel cover, size600x600x900mm, [1.7 Unit] | 4,166.7 | A011 | Z8 | CONS | SL | Installation | AFT |
|  | 7858 | **RHD4-02-002-A011-(SL)-Street Lighting cables** |  | 2027-09-19 | 2027-10-07 |  |  |  |  |  |  |  |  |  |
| RHD4CZ8A011SL3100 |  | Excavation for Street Lighting Cables for Street Lighting Network - (RD-A-1 /1)-Z8-A011-SL | 5d | 2027-09-19 | 2027-09-25 | RHD4ENSDZ8APPSL170, RHD4CZ8A011SL5200 | Skilled labor [48.14 h]; Unskilled Labor [96.27 h]; Equipment Opreator [96.27 h]; Excavator-Poclain [48.14 h]; Boom Truck [48.14 h]; Cable, Copper 4x16mm2/ CU/XLPE/SWA/PVC + 1x16mm2 CU/PVC [128.75 m]; Cable, Copper 4x10mm2/ CU/XLPE/SWA/PVC + 1x10mm2 CU/PVC [92.2 m] | 13,144.13 | A011 | Z8 | CONS | SL | Excavation | AFT |
| RHD4CZ8A011SL3200 |  | Cable Laying of Street Lighting Cables for Street Lighting Network - (RD-A-1 /1)-Z8-A011-SL | 4d | 2027-09-26 | 2027-09-29 | RHD4PRSHLDOSSL1100, RHD4ENMSSL2000, RHD4ENMSSL2010, RHD4PRSHLSTAGSL1100, RHD4CZ8A011SL3100 | Skilled labor [40.08 h]; Unskilled Labor [160.41 h]; Electrician [80.26 h]; Equipment Opreator [120.34 h]; Boom Truck [40.08 h]; Cable Laying Machine [80.26 h]; Cable, Copper 4x16mm2/ CU/XLPE/SWA/PVC + 1x16mm2 CU/PVC [386.24 m]; Cable, Copper 4x10mm2/ CU/XLPE/SWA/PVC + 1x10mm2 CU/PVC [276.62 m] | 39,432.39 | A011 | Z8 | CONS | SL | Cable Laying | AFT |
| RHD4CZ8A011SL3300 |  | Warning tape and Backfill for Street Lighting Cables for Street Lighting Network - (RD-A-1 /1)-Z8-A011-SL | 4d | 2027-09-30 | 2027-10-04 | RHD4CZ8A011SL3200 | Skilled labor [40.08 h]; Unskilled Labor [160.41 h]; Electrician [80.26 h]; Equipment Opreator [40.08 h]; Boom Truck [40.08 h]; Cable, Copper 4x16mm2/ CU/XLPE/SWA/PVC + 1x16mm2 CU/PVC [96.56 m]; Cable, Copper 4x10mm2/ CU/XLPE/SWA/PVC + 1x10mm2 CU/PVC [69.15 m] | 9,858.1 | A011 | Z8 | CONS | SL | Warning tape and Backfill | AFT |
| RHD4CZ8A011SL3400 |  | Testing of Street Lighting Cables for Street Lighting Network - (RD-A-1 /1)-Z8-A011-SL | 3d | 2027-10-05 | 2027-10-07 | RHD4CZ8A011SL3300, RHD4CZ8A011LV3400 | Skilled labor [24.07 h]; Unskilled Labor [96.27 h]; Electrician [48.14 h]; Equipment Opreator [24.07 h]; Boom Truck [24.07 h]; Cable, Copper 4x16mm2/ CU/XLPE/SWA/PVC + 1x16mm2 CU/PVC [32.19 m]; Cable, Copper 4x10mm2/ CU/XLPE/SWA/PVC + 1x10mm2 CU/PVC [23.05 m] | 3,286.03 | A011 | Z8 | CONS | SL | Testing | AFT |
|  | 7859 | **RHD4-02-002-A011-(SL)-Street Lighting Poles** |  | 2027-10-09 | 2027-10-28 |  |  |  |  |  |  |  |  |  |
| RHD4CZ8A011SL1100 |  | Excavation for RC Base for Lighting Poles for Street Lighting Network - (RD-A-1 /1)-Z8-A011-SL | 3d | 2027-10-09 | 2027-10-11 | RHD4ENSDZ8APPSL170, RHD4CZ8A011SL3400 | Skilled labor [25.37 h]; Unskilled Labor [25.37 h]; Equipment Opreator [50.86 h]; Excavator-Poclain [25.37 h]; Dump Truck [25.37 h]; Lighting polesdouble arms, height of ( 12 ) meters [3.5 Unit] | 16,002 | A011 | Z8 | CONS | SL | Excavation | AFT |
| RHD4CZ8A011SL1200 |  | Installation for RC Base for Lighting Poles for Street Lighting Network - (RD-A-1 /1)-Z8-A011-SL | 3d | 2027-10-12 | 2027-10-14 | RHD4CZ8A011SL1100 | Skilled labor [25.37 h]; Unskilled Labor [25.37 h]; Equipment Opreator [50.86 h]; Excavator-Poclain [25.37 h]; Dump Truck [25.37 h]; Lighting polesdouble arms, height of ( 12 ) meters [8.75 Unit] | 40,005 | A011 | Z8 | CONS | SL | RC Base | AFT |
| RHD4CZ8A011SL1300 |  | Backfill for RC Base for Lighting Poles for Street Lighting Network - (RD-A-1 /1)-Z8-A011-SL | 3d | 2027-10-16 | 2027-10-18 | RHD4CZ8A011SL1200 | Skilled labor [25.37 h]; Unskilled Labor [25.37 h]; Equipment Opreator [50.86 h]; Excavator-Poclain [25.37 h]; Dump Truck [25.37 h]; Lighting polesdouble arms, height of ( 12 ) meters [1.75 Unit] | 8,001 | A011 | Z8 | CONS | SL | Backfill | AFT |
| RHD4CZ8A011SL1400 |  | Installation for Lighting Poles for Street Lighting Network - (RD-A-1 /1)-Z8-A011-SL | 4d | 2027-10-19 | 2027-10-23 | RHD4PRSHLDOSSL1200, RHD4ENMSSL2000, RHD4ENMSSL2010, RHD4PRSHLSTAGSL1200, RHD4CZ8A011SL1300 | Skilled labor [38.12 h]; Unskilled Labor [38.12 h]; Electrician [38.12 h]; Equipment Opreator [38.12 h]; Boom Truck [38.12 h]; Lighting polesdouble arms, height of ( 12 ) meters [21 Unit] | 96,012 | A011 | Z8 | CONS | SL | Poles Installation | AFT |
| RHD4CZ8A011SL1500 |  | Luminaire Installation for Lighting Poles for Street Lighting Network - (RD-A-1 /1)-Z8-A011-SL | 5d | 2027-10-24 | 2027-10-28 | RHD4PRSHLDOSSL1300, RHD4PRSHLSTAGSL1300, RHD4CZ8A011SL1400 | Unskilled Labor [101.6 h]; Electrician [50.86 h]; Equipment Opreator [20.36 h]; Boom Truck [20.36 h]; Street Lighting( LED) Luminaire of Output ?39018 lumen [70 Unit] | 72,940 | A011 | Z8 | CONS | SL | Luminaire Installation | AFT |
|  | 7860 | **RHD4-02-002-A011-(SL)-Street Lighting Feeder Pillars** |  | 2027-10-30 | 2027-11-04 |  |  |  |  |  |  |  |  |  |
| RHD4CZ8A011SL4100 |  | Leveling for Distribution Pillars for Street Lighting Network - (RD-A-1 /1)-Z8-A011-SL | 2d | 2027-10-30 | 2027-10-31 | RHD4CZ8A011SL1500 | Skilled labor [10.89 h]; Unskilled Labor [21.78 h]; Equipment Opreator [4.36 h]; Excavator-Poclain [2.18 h]; Boom Truck [2.18 h]; 0.6/1 KV Steet Lighting Feeder Pillar [0.15 Unit] | 3,438.15 | A011 | Z8 | CONS | SL | Leveling | AFT |
| RHD4CZ8A011SL4200 |  | Lean Concrete for Distribution Pillars for Street Lighting Network - (RD-A-1 /1)-Z8-A011-SL | 2d | 2027-11-01 | 2027-11-02 | RHD4CZ8A011SL4100 | Skilled labor [10.89 h]; Unskilled Labor [21.78 h]; Equipment Opreator [4.36 h]; Concrete Mixer Truck [2.18 h]; Concrete Pump [2.18 h]; 0.6/1 KV Steet Lighting Feeder Pillar [0.25 Unit] | 5,730.25 | A011 | Z8 | CONS | SL | Lean Concrete | AFT |
| RHD4CZ8A011SL4300 |  | Installation of Distribution Pillars for Street Lighting Network - (RD-A-1 /1)-Z8-A011-SL | 2d | 2027-11-03 | 2027-11-04 | RHD4CZ8A011SL4200 | Skilled labor [10.89 h]; Unskilled Labor [43.56 h]; Electrician [21.78 h]; Equipment Opreator [10.89 h]; Boom Truck [10.89 h]; 0.6/1 KV Steet Lighting Feeder Pillar [0.6 Unit] | 13,752.6 | A011 | Z8 | CONS | SL | Installation | AFT |

| ID | WBS | Activity | Duration | Start | Finish | Predecessors | Resources | Cost | RDH4-01-001-Road and Block Names-1 | RDH4-01-001-Zones-1 | RDH4-01-001-Phases-1 | RDH4-01-001-Networks-1 | RDH4-01-001-Work Method-1 | RDH4-01-001-MENEM |
| --- | --- | --- | --- | --- | --- | --- | --- | --- | --- | --- | --- | --- | --- | --- |
|  | 7861 | **RHD4-02-002-A011-(SL)-Street Lighting Earthing System** |  | 2027-11-06 | 2027-11-07 |  |  |  |  |  |  |  |  |  |
| RHD4CZ8A011SL6100 |  | Installation of Earthing for Lighting Poles and Fedder Pillers for Street Lighting Network - (RD-A-1 /1)-Z8-A011-SL | 2d | 2027-11-06 | 2027-11-07 | RHD4ENMSER2000, RHD4ENMSER2010, RHD4CZ8A011SL4300 | Skilled labor [2.18 h]; Unskilled Labor [2.18 h]; Equipment Opreator [4.36 h]; Excavator-Poclain [2.18 h]; Dump Truck [2.18 h]; Including lighting poles circuits - ER [3 Unit] | 1,839 | A011 | Z8 | CONS | SL | Installation | AFT |
|  | 7867 | **RHD4-02-002-Z8-A011-Telecommunications Network - TC** |  | 2027-02-10 | 2027-12-15 |  |  |  |  |  |  |  |  |  |
|  | 7868 | **RHD4-02-002-A011-(TC)-Telecommunications Ducts** |  | 2027-11-08 | 2027-12-08 |  |  |  |  |  |  |  |  |  |
| RHD4CZ8A011TC2100 |  | Excavation of HDPE Ducts for Telecom Network - (RD-A-1 /1)-Z8-A011-TC | 8d | 2027-11-08 | 2027-11-16 | RHD4ENSDZ8APPTC190, RHD4CZ8A011SL6100 | Skilled labor [79.2 h]; Unskilled Labor [79.2 h]; Equipment Opreator [158.45 h]; Excavator-Poclain [79.2 h]; Dump Truck [79.2 h]; (6*50mm) HDPE ducts -TC [179.88 m]; (6*50mm+2*32mm) HDPE ducts -TC [34.46 m]; (2*32mm) HDPE ducts -TC [3.9 m] | 19,718.18 | A011 | Z8 | CONS | TC | Excavation | AFT |
| RHD4CZ8A011TC2200 |  | Installation of HDPE Ducts for Telecom Network - (RD-A-1 /1)-Z8-A011-TC | 11d | 2027-11-17 | 2027-11-29 | RHD4PRSHLDOSTC1000, RHD4PRSHLSTAGTC1000, RHD4CZ8A011TC2100 | Carpenter [11.87 h]; Skilled labor [118.81 h]; Unskilled Labor [118.81 h]; Steel Fixer [11.87 h]; (6*50mm) HDPE ducts -TC [584.61 m]; (6*50mm+2*32mm) HDPE ducts -TC [112 m]; (2*32mm) HDPE ducts -TC [12.68 m] | 64,084.8 | A011 | Z8 | CONS | TC | Installing | AFT |
| RHD4CZ8A011TC2400 |  | Backfilling of HDPE Ducts for Telecom Network - (RD-A-1 /1)-Z8-A011-TC | 8d | 2027-11-30 | 2027-12-08 | RHD4CZ8A011TC2200 | Skilled labor [79.2 h]; Unskilled Labor [79.2 h]; Equipment Opreator [31.69 h]; Excavator-Poclain [31.69 h]; (6*50mm) HDPE ducts -TC [134.91 m]; (6*50mm+2*32mm) HDPE ducts -TC [25.85 m]; (2*32mm) HDPE ducts -TC [2.93 m] | 14,789.35 | A011 | Z8 | CONS | TC | Backfilling | AFT |
|  | 7869 | **RHD4-02-002-A011-(TC)-Telecommunications Manholes** |  | 2027-12-09 | 2027-12-15 |  |  |  |  |  |  |  |  |  |
| RHD4CZ8A011TC5100 |  | Excavation for Manholes for Telecom Network - (RD-A-1 /1)-Z8-A011-TC | 3d | 2027-12-09 | 2027-12-12 | RHD4ENSDZ8APPTC190, RHD4CZ8A011SL6100, RHD4CZ8A011TC2400 | Skilled labor [12.31 h]; Unskilled Labor [12.31 h]; Equipment Opreator [9.8 h]; Excavator-Poclain [4.9 h]; Dump Truck [4.9 h]; Manhole Type 1 - TC [0.45 nr]; Manhole Type 2 - TC [0.45 nr] | 6,066.9 | A011 | Z8 | CONS | TC | Excavation | AFT |
| RHD4CZ8A011TC5200 |  | Installation of Manholes for Telecom Network - (RD-A-1 /1)-Z8-A011-TC | 3d | 2027-12-13 | 2027-12-15 | RHD4PRSHLDOSTC1200, RHD4PRSHLSTAGTC1200, RHD4CZ8A011TC5100 | Skilled labor [12.31 h]; Unskilled Labor [12.31 h]; Equipment Opreator [4.9 h]; Boom Truck [4.9 h]; Manhole Type 1 - TC [2.55 nr]; Manhole Type 2 - TC [2.55 nr] | 34,379.1 | A011 | Z8 | CONS | TC | Installation | AFT |
|  | 7870 | **RHD4-02-002-A011-(TC)-Telecomminications Road Crossings** |  | 2027-02-10 | 2027-02-27 |  |  |  |  |  |  |  |  |  |
| RHD4CZ8A011TC3100 |  | Excavation for Road Crossings for Telecom Network - (RD-A-1 /1)-Z8-A011-TC | 3d | 2027-02-10 | 2027-02-13 | RHD4ENSDZ8APPTC190, RHD4CZ7L131ST1105 | Skilled labor [28.31 h]; Unskilled Labor [28.31 h]; Equipment Opreator [56.63 h]; Excavator-Poclain [28.31 h]; Dump Truck [28.31 h]; Road crossing ducts, (6*50mm) HDPE -TC [5.2 m] | 197.6 | A011 | Z8 | CONS | TC | Excavation | bef |
| RHD4CZ8A011TC3200 |  | Installation of Road Crossings for Telecom Network - (RD-A-1 /1)-Z8-A011-TC | 4d | 2027-02-14 | 2027-02-17 | RHD4PRSHLDOSTC1100, RHD4PRSHLSTAGTC1100, RHD4CZ8A011TC3100 | Carpenter [3.81 h]; Skilled labor [37.79 h]; Unskilled Labor [37.79 h]; Steel Fixer [3.81 h]; Road crossing ducts, (6*50mm) HDPE -TC [5.2 m] | 197.6 | A011 | Z8 | CONS | TC | Installing | bef |
| RHD4CZ8A011TC3300 |  | Pouring of Road Crossings for Telecom Network - (RD-A-1 /1)-Z8-A011-TC | 4d | 2027-02-18 | 2027-02-23 | RHD4CZ8A011TC3200 | Skilled labor [37.79 h]; Unskilled Labor [37.79 h]; Equipment Opreator [15.14 h]; Concrete Mixer Truck [7.51 h]; Concrete Pump [7.51 h]; Road crossing ducts, (6*50mm) HDPE -TC [33.8 m] | 1,284.4 | A011 | Z8 | CONS | TC | Pouring | bef |
| RHD4CZ8A011TC3400 |  | Backfilling of Road Crossings for Telecom Network - (RD-A-1 /1)-Z8-A011-TC | 3d | 2027-02-24 | 2027-02-27 | RHD4CZ8A011TC3300 | Skilled labor [28.31 h]; Unskilled Labor [28.31 h]; Equipment Opreator [11.33 h]; Excavator-Poclain [11.33 h]; Road crossing ducts, (6*50mm) HDPE -TC [7.8 m] | 296.4 | A011 | Z8 | CONS | TC | Backfilling | bef |
|  | 7871 | **RHD4-02-002-Z8-A011-Information and Communication Technologies - ICT** |  | 2027-12-16 | 2028-02-08 |  |  |  |  |  |  |  |  |  |
|  | 7872 | **RHD4-02-002-A011-(ICT)-Information and Communication Technologies Ducts** |  | 2027-12-16 | 2028-02-01 |  |  |  |  |  |  |  |  |  |
| RHD4CZ8A011ICT2100 |  | Excavation of HDPE Ducts for ICT Network - (RD-A-1 /1)-Z8-A011-ICT | 12d | 2027-12-16 | 2027-12-29 | RHD4ENSDZ8APPICT200, RHD4CZ8A011TC5200 | Skilled labor [121.54 h]; Unskilled Labor [121.54 h]; Equipment Opreator [243.07 h]; Excavator-Poclain [121.54 h]; Dump Truck [121.54 h]; (2*50mm) HDPE ducts -ICT [287.28 m]; (2*50mm+2*32mm) HDPE ducts -ICT [40 m]; (2*32mm) HDPE ducts -ICT [7.48 m] | 14,050.96 | A011 | Z8 | CONS | ICT | Excavation | AFT |
| RHD4CZ8A011ICT2200 |  | Installation of HDPE Ducts for ICT Network - (RD-A-1 /1)-Z8-A011-ICT | 17d | 2027-12-30 | 2028-01-18 | RHD4PRSHLDOSICT1000, RHD4PRSHLSTAGICT1000, RHD4CZ8A011ICT2100 | Carpenter [18.19 h]; Skilled labor [182.3 h]; Unskilled Labor [182.3 h]; Steel Fixer [18.19 h]; (2*50mm) HDPE ducts -ICT [933.66 m]; (2*50mm+2*32mm) HDPE ducts -ICT [130 m]; (2*32mm) HDPE ducts -ICT [24.31 m] | 45,665.62 | A011 | Z8 | CONS | ICT | Installing | AFT |
| RHD4CZ8A011ICT2400 |  | Backfilling of HDPE Ducts for ICT Network - (RD-A-1 /1)-Z8-A011-ICT | 12d | 2028-01-19 | 2028-02-01 | RHD4CZ8A011ICT2200 | Skilled labor [121.54 h]; Unskilled Labor [121.54 h]; Equipment Opreator [48.57 h]; Excavator-Poclain [48.57 h]; (2*50mm) HDPE ducts -ICT [215.46 m]; (2*50mm+2*32mm) HDPE ducts -ICT [30 m]; (2*32mm) HDPE ducts -ICT [5.61 m] | 10,538.22 | A011 | Z8 | CONS | ICT | Backfilling | AFT |
|  | 7873 | **RHD4-02-002-A011-(ICT)-Information and Communication Technologies Manholes** |  | 2028-02-02 | 2028-02-08 |  |  |  |  |  |  |  |  |  |
| RHD4CZ8A011ICT5100 |  | Excavation for Manholes for ICT Network - (RD-A-1 /1)-Z8-A011-ICT | 3d | 2028-02-02 | 2028-02-05 | RHD4ENSDZ8APPICT200, RHD4CZ8A011ICT2400 | Skilled labor [8.17 h]; Unskilled Labor [8.17 h]; Equipment Opreator [6.53 h]; Excavator-Poclain [3.27 h]; Dump Truck [3.27 h]; Manhole Type 1 - ICT [0.9 nr] | 4,853.7 | A011 | Z8 | CONS | ICT | Excavation | AFT |
| RHD4CZ8A011ICT5200 |  | Installation of Manholes for ICT Network - (RD-A-1 /1)-Z8-A011-ICT | 3d | 2028-02-06 | 2028-02-08 | RHD4PRSHLDOSICT1200, RHD4PRSHLSTAGICT1200, RHD4CZ8A011ICT5100 | Skilled labor [8.17 h]; Unskilled Labor [8.17 h]; Equipment Opreator [3.27 h]; Boom Truck [3.27 h]; Manhole Type 1 - ICT [5.1 nr] | 27,504.3 | A011 | Z8 | CONS | ICT | Installation | AFT |
|  | 7874 | **RHD4-02-002-A011-(ICT)-Information and Communication Technologies Road Crossings** |  |  |  |  |  |  |  |  |  |  |  |  |
|  | 7862 | **RHD4-02-002-Z8-A011-Landscape Network - LS** |  |  |  |  |  |  |  |  |  |  |  |  |
|  | 7863 | **RHD4-02-002-A011-(LS)-Landscape Lighting cables** |  |  |  |  |  |  |  |  |  |  |  |  |
|  | 7864 | **RHD4-02-002-A011-(LS)-Landscape Feeder Pillars** |  |  |  |  |  |  |  |  |  |  |  |  |
|  | 7865 | **RHD4-02-002-A011-(LS)-Landscape Bollard Poles** |  |  |  |  |  |  |  |  |  |  |  |  |
|  | 7866 | **RHD4-02-002-A011-(LS)-Landscape Feeder Pillars Earthing** |  |  |  |  |  |  |  |  |  |  |  |  |
|  | 7875 | **RHD4-02-002-Z8-A011-Security Network - CCTV** |  | 2028-02-09 | 2028-03-13 |  |  |  |  |  |  |  |  |  |
|  | 7876 | **RHD4-02-002-A011-(CCTV)-Civil Works** |  | 2028-02-09 | 2028-02-14 |  |  |  |  |  |  |  |  |  |
| RHD4CZ8A011CCTV2100 |  | Civil Works for Security Network - (RD-A-1 /1)-Z8-A011-CCTV | 5d | 2028-02-09 | 2028-02-14 | RHD4CZ8A011ICT5200 | Skilled labor [217.76 h]; Unskilled Labor [435.68 h]; Equipment Opreator [217.76 h]; Excavator-Poclain [54.45 h]; Dump Truck [54.45 h]; Civil works Digging, trenching, laying pipes Meter with supply and installation of Manholes and for power feeding sources related to all towers and poles – (from 35-meter pole to control room and from related UPS camersa distribution boards till overall 2 [150 m] | 17,400 | A011 | Z8 | CONS | CCTV | Civil Works | AFT |

| ID | WBS | Activity | Duration | Start | Finish | Predecessors | Complete | Planned start | Planned finish | Resources | Cost | Actual cost | RDH4-01-001-Road and Block Names-1 | RDH4-01-001-Zones-1 | RDH4-01-001-Phases-1 | RDH4-01-001-Networks-1 | RDH4-01-001-Work Method-1 | RDH4-01-001-MENEM |
| --- | --- | --- | --- | --- | --- | --- | --- | --- | --- | --- | --- | --- | --- | --- | --- | --- | --- | --- |
|  | 7877 | **RHD4-02-002-A011-(CCTV)-CCTV Poles** |  | 2028-02-15 | 2028-03-01 |  |  |  |  |  |  |  |  |  |  |  |  |  |
| RHD4CZ8A011CCTV1100 |  | Excavation for RC Base for CCTV Poles for Security Network - (RD-A-1 /1)-Z8-A011-CCTV | 2d | 2028-02-15 | 2028-02-16 | RHD4ENSDZ8APPCCTV210, RHD4CZ8A011CCTV2100 |  |  |  | Skilled labor [4.32 h]; Unskilled Labor [4.32 h]; Equipment Opreator [8.64 h]; Excavator-Poclain [2.18 h]; Dump Truck [2.18 h]; 25 Meters pole for CCTV Cameras [0.1 nr] | 14,090.2 |  | A011 | Z8 | CONS | CCTV | Excavation | AFT |
| RHD4CZ8A011CCTV1200 |  | Installation for RC Base for CCTV Poles for Security Network - (RD-A-1 /1)-Z8-A011-CCTV | 2d | 2028-02-17 | 2028-02-19 | RHD4CZ8A011CCTV1100 |  |  |  | Skilled labor [4.32 h]; Unskilled Labor [4.32 h]; Equipment Opreator [8.64 h]; Excavator-Poclain [2.18 h]; Dump Truck [2.18 h]; 25 Meters pole for CCTV Cameras [0.25 nr] | 35,225.5 |  | A011 | Z8 | CONS | CCTV | RC Base | AFT |
| RHD4CZ8A011CCTV1300 |  | Backfill for RC Base for CCTV Poles for Security Network - (RD-A-1 /1)-Z8-A011-CCTV | 2d | 2028-02-20 | 2028-02-21 | RHD4CZ8A011CCTV1200 |  |  |  | Skilled labor [2.88 h]; Unskilled Labor [2.88 h]; Equipment Opreator [5.44 h]; Excavator-Poclain [1.42 h]; Dump Truck [1.42 h]; 25 Meters pole for CCTV Cameras [0.05 nr] | 7,045.1 |  | A011 | Z8 | CONS | CCTV | Backfill | AFT |
| RHD4CZ8A011CCTV1400 |  | Installation for CCTV Poles for Security Network - (RD-A-1 /1)-Z8-A011-CCTV | 2d | 2028-02-23 | 2028-02-24 | RHD4PRSHLDOSCCTV1000, RHD4PRSHLSTACCTV1000, RHD4CZ8A011CCTV1300 |  |  |  | Skilled labor [7.2 h]; Unskilled Labor [14.56 h]; Electrician [7.2 h]; Equipment Opreator [7.2 h]; Boom Truck [3.59 h]; 25 Meters pole for CCTV Cameras [0.6 nr] | 84,541.2 |  | A011 | Z8 | CONS | CCTV | Installation | AFT |
| RHD4CZ8A011CCTV1500 |  | Protection post Installation for CCTV Poles for Security Network - (RD-A-1 /1)-Z8-A011-CCTV | 2d | 2028-02-26 | 2028-03-01 | RHD4CZ8A011CCTV1400 |  |  |  | Skilled labor [10.88 h]; Unskilled Labor [21.76 h]; Supply and Installation of minimum 4 Protection Post for each pole or tower with pipe ?220*6mm THK. [1 nr] | 4,903 |  | A011 | Z8 | CONS | CCTV | Protection post | AFT |
|  | 7878 | **RHD4-02-002-A011-(CCTV)-Camera** |  | 2028-03-02 | 2028-03-04 |  |  |  |  |  |  |  |  |  |  |  |  |  |
| RHD4CZ8A011CCTV3100 |  | Installation for Cameras for Security Network - (RD-A-1 /1)-Z8-A011-CCTV | 2d | 2028-03-02 | 2028-03-04 | RHD4PRSHLDOSCCTV1100, RHD4PRSHLSTACCTV1100, RHD4CZ8A011CCTV1400, RHD4CZ8A011CCTV4100 |  |  |  | Unskilled Labor [54.4 h]; Electrician [27.2 h]; Outdoor Camera, 5MP resolution, day/night, fixed bullet camera providing Forensic WDR. [4 nr]; Outdoor PTZ with IR, HDTV 1080 and 31x optical, 12x digital, total 372x zoom, H264/265 with Motion JPEG. [1 nr] | 61,727 |  | A011 | Z8 | CONS | CCTV | Installation | AFT |
|  | 7879 | **RHD4-02-002-A011-(CCTV)-Power and Infrastructure** |  | 2028-02-26 | 2028-03-01 |  |  |  |  |  |  |  |  |  |  |  |  |  |
| RHD4CZ8A011CCTV4100 |  | Installation of Power outlet, UPS and midspan for PTZ Camerafor Cameras for Security Network - (RD-A-1 /1)-Z8-A011-CCTV | 2d | 2028-02-26 | 2028-03-01 | RHD4PRSHLDOSCCTV1300, RHD4PRSHLSTACCTV1300, RHD4CZ8A011CCTV1400 |  |  |  | Skilled labor [8.64 h]; Unskilled Labor [34.88 h]; Electrician [17.44 h]; Equipment Opreator [17.44 h]; Excavator-Poclain [4.36 h]; Dump Truck [4.36 h]; Outdoor ready IP66-rated midspan for PTZ Camera (The outdoor- ready midspan should be IP66/IP67- and NEMA 4X-rated [1 nr]; 1.2KVA Industrial type UPS located at FEC remote poles [1 nr] | 9,103 |  | A011 | Z8 | CONS | CCTV | Power | AFT |
|  | 7881 | **RHD4-02-002-A011-(CCTV)-CCTV Panels and Components** |  | 2028-03-05 | 2028-03-13 |  |  |  |  |  |  |  |  |  |  |  |  |  |
| RHD4CZ8A011CCTV6100 |  | Installation for CCTV Panels for Security Network - (RD-A-1 /1)-Z8-A011-CCTV | 8d | 2028-03-05 | 2028-03-13 | RHD4PRSHLDOSCCTV1200, RHD4PRSHLSTACCTV1200, RHD4PRLOLSTACCTV1001, RHD4CZ8A011CCTV3100 |  |  |  | Skilled labor [174.24 h]; Unskilled Labor [522.72 h]; Electrician [174.24 h]; Pole mounted Filed Equipment cabinet (FEC) , with fan and ventilation, NEMEX 4X ,door, minimum size (600x600x400mm) , the cabinet/enclosurE [1 nr]; 8 Port Industrial PoE Switch 10/1000BaseT (-40 deg to +70 deg. Celsius) for remote poles and as specifiedin item 15. [1 nr]; UTP CAT6 Patch Cord , connect the industrial switch with the cameras, and radio wireless antenna [6 nr] | 21,585 |  | A011 | Z8 | CONS | CCTV | Equipment | AFT |
|  | 7892 | **RHD4-02-002-Z8-RA04** |  | 2026-07-22 | 2028-11-08 |  |  |  |  |  |  |  |  |  |  |  |  |  |
|  | 8071 | **RHD4-02-002-Z8-RA04-Road Works - RD** |  | 2026-07-22 | 2028-11-08 |  |  |  |  |  |  |  |  |  |  |  |  |  |
|  | 8072 | **RHD4-02-002-RA04-(RD)-Subgrade** |  | 2026-07-22 | 2026-07-28 |  |  |  |  |  |  |  |  |  |  |  |  |  |
| RHD4CZ8RA04RD1100 |  | Supply, lay and compaction subgrade compacted thickness 300 mm for Roads - (ROUND-04)-Z8-RA04-RD | 3d | 2026-07-22 A | 2026-07-28 A | RHD4ENSDZ8APPEW100, RHD4ENSDZ8APPRD220, RHD4CZ8RA04TC3400 | 100% | 2026-08-30 | 2026-09-01 | Skilled labor [61.97 h]; Unskilled Labor [123.93 h]; Electrician [61.97 h]; Equipment Opreator [423.09 h]; Water Truck [20.47 h]; Roller compactor [30.93 h]; Grader [61.97 h]; Dump Truck [309.72 h]; Subgrade [2979.27 m3] | 56,606.13 | 56,606.13 | RA04 | Z8 | CONS | RD | Subgrade | bef |
|  | 8073 | **RHD4-02-002-RA04-(RD)-Aggregate Base Course** |  | 2027-02-24 | 2027-03-01 |  |  |  |  |  |  |  |  |  |  |  |  |  |
| RHD4CZ8RA04RD2100 |  | Supply, lay and compaction Aggregate base course compacted thickness 300 mmfor Roads - (ROUND-04)-Z8-RA04-RD | 5d | 2027-02-24 | 2027-03-01 | RHD4PRSHLDOSRD1000, RHD4PRSHLSTAGRD1000, RHD4CZ8RA04RD1100 |  |  |  | Skilled labor [22.98 h]; Unskilled Labor [45.85 h]; Equipment Opreator [290.45 h]; Water Truck [15.14 h]; Roller compactor [45.85 h]; Grader [45.85 h]; Dump Truck [183.5 h]; Aggregate Base Courses [1871.28 m3] | 106,662.96 |  | RA04 | Z8 | CONS | RD | ABC | bef |
|  | 8074 | **RHD4-02-002-RA04-(RD)-Bituminous base course Two Layers, including (MC1)&(RC2)** |  | 2027-03-02 | 2027-11-04 |  |  |  |  |  |  |  |  |  |  |  |  |  |
| RHD4CZ8RA04RD3100 |  | Supply, lay and Asphaltic base course including Prime Coat (MC1) for 1st Layer - (ROUND-04)-Z8-RA04-RD | 3d | 2027-03-02 | 2027-03-04 | RHD4PRSHLDOSRD1100, RHD4ENMSASPH2000, RHD4ENMSASPH2010, RHD4PRSHLSTAGRD1100, RHD4CZ8RA04RD2100 |  |  |  | Skilled labor [24.29 h]; Unskilled Labor [145.71 h]; Equipment Opreator [364.39 h]; Bobcat [24.29 h]; Roller compactor [24.29 h]; Asphalt Paver [24.29 h]; Rubber Compactor [48.57 h]; MC1/RC2 Sprinkler [24.29 h]; Dump Truck [218.68 h]; Bituminous base course (Grading I - Class A), including Prime coat (MC1) & tack coate (RC2) [888.74 m3] | 424,817.72 |  | RA04 | Z8 | CONS | RD | 150 mm | AFT |
| RHD4CZ8RA04RD3200 |  | Supply, lay and Asphaltic base course including Tack Coat (RC2) for 2nd Layer - (ROUND-04)-Z8-RA04-RD | 3d | 2027-11-02 | 2027-11-04 | RHD4PRSHLDOSRD1100, RHD4PRSHLSTAGRD1100, RHD4CZ8RA04CCTV6100 |  |  |  | Skilled labor [24.29 h]; Unskilled Labor [145.71 h]; Equipment Opreator [364.39 h]; Bobcat [24.29 h]; Roller compactor [24.29 h]; Asphalt Paver [24.29 h]; Rubber Compactor [48.57 h]; MC1/RC2 Sprinkler [24.29 h]; Dump Truck [218.68 h]; Bituminous base course (Grading I - Class A), including Prime coat (MC1) & tack coate (RC2) [888.74 m3] | 424,817.72 |  | RA04 | Z8 | CONS | RD | 150 mm | AFT |
|  | 8076 | **RHD4-02-002-RA04-(RD)-Precast Concrete Curb** |  | 2028-03-26 | 2028-03-29 |  |  |  |  |  |  |  |  |  |  |  |  |  |
| RHD4CZ8RA04RD5100 |  | Supply and installation Precast Concrete Kerb for Roads - (ROUND-04)-Z8-RA04-RD | 4d | 2028-03-26 | 2028-03-29 | RHD4PRSHLDOSRD1200, RHD4ENMSRD2000, RHD4ENMSRD2010, RHD4PRSHLSTAGRD1200, RHD4CZ8RA04RD3200, RHD4CZ8A011RD5100, RHD4CZ4L014RD7100 |  |  |  | Mason [101.17 h]; Skilled labor [33.76 h]; Unskilled Labor [101.17 h]; Equipment Opreator [67.41 h]; Bobcat [33.76 h]; Concrete Mixer Truck [33.76 h]; Precast Concrete Curbstone, type K1 [1393 m] | 76,615 |  | RA04 | Z8 | CONS | RD | Curbs | AFT |
|  | 8079 | **RHD4-02-002-RA04-(RD)-Traffic Signage** |  | 2028-03-30 | 2028-04-08 |  |  |  |  |  |  |  |  |  |  |  |  |  |
| RHD4CZ8RA04RD8100 |  | Installation of Traffic Signage for Road Network - (ROUND-04)-Z8-RA04-RD | 8d | 2028-03-30 | 2028-04-08 | RHD4PRSHLDOSRD1600, RHD4PRSHLSTAGRD1600, RHD4CZ8RA04RD5100 |  |  |  | Skilled labor [174.25 h]; Unskilled Labor [87.12 h]; Electrician [38.12 h]; Equipment Opreator [32.67 h]; Boom Truck [17.42 h]; Concrete Mixer Truck [15.25 h]; Traffic signs, ground mounted, 1 Sheet Aluminium, (breakaway)Single post [10 nr]; Traffic signs, ground mounted, 2 Sheets Aluminium, (breakaway)Single post [8 nr]; Traffic signs, ground mounted, 1 Sheets Aluminium, (breakaway)Double post [4 nr] | 34,328 |  | RA04 | Z8 | CONS | RD | Traffic Signage | AFT |

| ID | WBS | Activity | Duration | Start | Finish | Predecessors | Resources | Cost | RDH4-01-001-Road and Block Names-1 | RDH4-01-001-Zones-1 | RDH4-01-001-Phases-1 | RDH4-01-001-Networks-1 | RDH4-01-001-Work Method-1 | RDH4-01-001-MENEM |
| --- | --- | --- | --- | --- | --- | --- | --- | --- | --- | --- | --- | --- | --- | --- |
|  | 8077 | **RHD4-02-002-RA04-(RD)-Precast Interlocking Block Pavers** |  |  |  |  |  |  |  |  |  |  |  |  |
|  | 8075 | **RHD4-02-002-RA04-(RD)-Bituminous concrete wearing course including tack coat (RC2)** |  | 2028-03-30 | 2028-04-01 |  |  |  |  |  |  |  |  |  |
| RHD4CZ8RA04RD4100 |  | Supply, lay and compaction Asphaltic wearing course including tack Coat (RC2)for Road Network - (ROUND-04)-Z8-RA04-RD | 2d | 2028-03-30 | 2028-04-01 | RHD4CZ8RA04RD5100 | Skilled labor [9.37 h]; Unskilled Labor [56.3 h]; Equipment Opreator [140.8 h]; Bobcat [9.37 h]; Roller compactor [9.37 h]; Asphalt Paver [9.37 h]; Rubber Compactor [18.73 h]; MC1/RC2 Sprinkler [9.37 h]; Dump Truck [84.51 h]; Bituminous concrete wearing course, (Grading I - Class A), including tack coat (RC2) [447.64 m3] | 243,068.52 | RA04 | Z8 | CONS | RD | 50 mm | AFT |
|  | 8080 | **RHD4-02-002-RA04-(RD)-Speed Table and Wheel Stopper** |  | 2028-04-02 | 2028-04-13 |  |  |  |  |  |  |  |  |  |
| RHD4CZ8RA04RD9100 |  | Installation for Speed Bump for Road Network - (ROUND-04)-Z8-RA04-RD | 11d | 2028-04-02 | 2028-04-13 | RHD4CZ8RA04RD4100 | Mason [348.06 h]; Skilled labor [116 h]; Unskilled Labor [232 h]; Equipment Opreator [23.2 h]; Boom Truck [23.2 h]; SPEED TABLE [745.63 m2] | 91,712.49 | RA04 | Z8 | CONS | RD | Speed Bump | AFT |
|  | 8078 | **RHD4-02-002-RA04-(RD)-Pavement Marking** |  | 2028-11-05 | 2028-11-08 |  |  |  |  |  |  |  |  |  |
| RHD4CZ8RA04RD7100 |  | Pavement Markings for Road Network - (ROUND-04)-Z8-RA04-RD | 4d | 2028-11-05 | 2028-11-08 | RHD4PRSHLDOSRD1500, RHD4PRSHLSTAGRD1500, RHD4HOASZ1SUBTC190, RHD4HOASZ7SUBTC190, RHD4HOASZ8SUBTC190, RHD4HOASZ9SUBTC190, RHD4CZ8RA04RD4100, RHD4CZ8RA04RD9100 | Skilled labor [100.08 h]; Unskilled Labor [200.16 h]; Equipment Opreator [100.08 h]; Road Marking Machine [100.08 h]; Retroreflective Thermoplastic White Traffic Markings [215.87 m2]; Retroreflective Thermoplastic Yellow, Traffic Markings [214.23 m2]; Rumble strip [280 m]; Retroreflective raised pavement markers (cat eyes) [1613 nr] | 102,615.1 | RA04 | Z8 | CONS | RD | Pavement Marking | AFT |
|  | 7896 | **RHD4-02-002-Z8-RA04-Storm Network - ST** |  |  |  |  |  |  |  |  |  |  |  |  |
|  | 7914 | **RHD4-02-002-RA04-(ST)-MH Works - 1500 mm diameter** |  |  |  |  |  |  |  |  |  |  |  |  |
|  | 7913 | **RHD4-02-002-RA04-(ST)-MH Works - 1200 mm diameter** |  |  |  |  |  |  |  |  |  |  |  |  |
|  | 7901 | **RHD4-02-002-RA04-(ST)-GRP Pipes - 800 mm diameter** |  |  |  |  |  |  |  |  |  |  |  |  |
|  | 7899 | **RHD4-02-002-RA04-(ST)-GRP Pipes - 600 mm diameter** |  |  |  |  |  |  |  |  |  |  |  |  |
|  | 7912 | **RHD4-02-002-RA04-(ST)-UPVC Pipes - 400 mm diameter** |  |  |  |  |  |  |  |  |  |  |  |  |
|  | 7911 | **RHD4-02-002-RA04-(ST)-UPVC Pipes - 300 mm diameter** |  |  |  |  |  |  |  |  |  |  |  |  |
|  | 7919 | **RHD4-02-002-RA04-(ST)-Concrete Encasement** |  |  |  |  |  |  |  |  |  |  |  |  |
|  | 7920 | **RHD4-02-002-Z8-RA04-Catch Basin - ST** |  |  |  |  |  |  |  |  |  |  |  |  |
|  | 7921 | **RHD4-02-002-RA04-(ST)-Single Catch Basin Works** |  |  |  |  |  |  |  |  |  |  |  |  |
|  | 7922 | **RHD4-02-002-RA04-(ST)-Double Catch Basin Works** |  |  |  |  |  |  |  |  |  |  |  |  |
|  | 8031 | **RHD4-02-002-Z8-RA04-Medium Voltage Network - MV** |  | 2027-07-06 | 2027-07-29 |  |  |  |  |  |  |  |  |  |
|  | 8034 | **RHD4-02-002-RA04-(MV)-Medium Voltage cables 3Cx 500 mm²** |  | 2027-07-06 | 2027-07-07 |  |  |  |  |  |  |  |  |  |
| RHD4CZ8RA04MV3400 |  | Termination of Medium Voltage Cables 3Cx 500 mm² - (ROUND-04)-Z8-RA04-MV | 2d | 2027-07-06 | 2027-07-07 | RHD4CZ8RA04RD3100, RHD4CZ4C012MV1200 | Unskilled Labor [0.33 h]; Electrician [0.33 h]; Cable Termination for 13.8 kv 3Cx 500 mm², Al /XLPE/LLDPE [1.6 Unit] | 4,216 | RA04 | Z8 | CONS | MV | Termination | AFT |
|  | 8035 | **RHD4-02-002-RA04-(MV)-Medium Voltage cables 3Cx 50 mm²** |  | 2027-07-08 | 2027-07-14 |  |  |  |  |  |  |  |  |  |
| RHD4CZ8RA04MV3101 |  | Installation of Medium Voltage Cables 3Cx 50 mm² - (ROUND-04)-Z8-RA04-MV | 2d | 2027-07-08 | 2027-07-10 | RHD4PRSHLDOSMV1200, RHD4ENMSMV2000, RHD4ENMSMV2010, RHD4PRSHLSTAGMV1200, RHD4CZ8RA04MV3400 | Unskilled Labor [1.74 h]; Electrician [0.87 h]; Equipment Opreator [1.31 h]; Boom Truck [0.44 h]; Cable Laying Machine [0.87 h]; Single Core Copper Cable 13.8 kV 3Cx 50 mm² Cu/XLPE/PVC / Unarmored [3.6 m] | 403.2 | RA04 | Z8 | CONS | MV | Installation | AFT |
| RHD4CZ8RA04MV3301 |  | Testing of Medium Voltage Cables 3Cx 50 mm² - (ROUND-04)-Z8-RA04-MV | 2d | 2027-07-11 | 2027-07-12 | RHD4CZ8RA04MV3101 | Unskilled Labor [0.33 h]; Electrician [0.22 h]; Single Core Copper Cable 13.8 kV 3Cx 50 mm² Cu/XLPE/PVC / Unarmored [0.4 m] | 44.8 | RA04 | Z8 | CONS | MV | Testing | AFT |
| RHD4CZ8RA04MV3401 |  | Termination of Medium Voltage Cables 3Cx 50 mm² - (ROUND-04)-Z8-RA04-MV | 2d | 2027-07-13 | 2027-07-14 | RHD4CZ8RA04MV3301 | Unskilled Labor [5.77 h]; Electrician [2.94 h]; Cable Termination for 13.8 kv 3Cx 500 mm², Al /XLPE/LLDPE [0.4 Unit] | 1,054 | RA04 | Z8 | CONS | MV | Termination | AFT |

| ID | WBS | Activity | Duration | Start | Finish | Predecessors | Resources | Cost | RDH4-01-001-Road and Block Names-1 | RDH4-01-001-Zones-1 | RDH4-01-001-Phases-1 | RDH4-01-001-Networks-1 | RDH4-01-001-Work Method-1 | RDH4-01-001-MENEM |
| --- | --- | --- | --- | --- | --- | --- | --- | --- | --- | --- | --- | --- | --- | --- |
|  | 8037 | **RHD4-02-002-RA04-(MV)-Unit Substations** |  | 2027-07-15 | 2027-07-29 |  |  |  |  |  |  |  |  |  |
| RHD4CZ8RA04MV5100 |  | Excavation for Unit Substations for Medium Voltage Network - (ROUND-04)-Z8-RA04-MV | 2d | 2027-07-15 | 2027-07-17 | RHD4ENSDZ8APPMV150, RHD4CZ8RA04MV3401 | Skilled labor [21.78 h]; Unskilled Labor [21.78 h]; Equipment Opreator [43.56 h]; Excavator-Poclain [21.78 h]; Dump Truck [21.78 h]; Unit Substation 13.8/0.4 K V, 500kVA ,Including concrete foundations and fencing, According to the specifications and standards of SEC [0.1 Unit]; Ring Main Unit RMU, 13.8KV, According to the specifications and standards of SEC [0.1 Unit] | 12,257 | RA04 | Z8 | CONS | MV | Excavation | AFT |
| RHD4CZ8RA04MV5200 |  | Concrete Base Placement for Unit Substations for Medium Voltage Network - (ROUND-04)-Z8-RA04-MV | 2d | 2027-07-18 | 2027-07-19 | RHD4CZ8RA04MV5100 | Skilled labor [21.78 h]; Unskilled Labor [21.78 h]; Equipment Opreator [21.78 h]; Boom Truck [21.78 h]; Unit Substation 13.8/0.4 K V, 500kVA ,Including concrete foundations and fencing, According to the specifications and standards of SEC [0.15 Unit]; Ring Main Unit RMU, 13.8KV, According to the specifications and standards of SEC [0.15 Unit] | 18,385.5 | RA04 | Z8 | CONS | MV | Concrete Base Placement | AFT |
| RHD4CZ8RA04MV5300 |  | Installation for Fences and doors for Medium Voltage Network - (ROUND-04)-Z8-RA04-MV | 5d | 2027-07-20 | 2027-07-25 | RHD4CZ8RA04MV5200 | Skilled labor [54.45 h]; Unskilled Labor [54.45 h]; Equipment Opreator [65.34 h]; Excavator-Poclain [10.89 h]; Boom Truck [54.45 h]; Unit Substation 13.8/0.4 K V, 500kVA ,Including concrete foundations and fencing, According to the specifications and standards of SEC [0.1 Unit]; Ring Main Unit RMU, 13.8KV, According to the specifications and standards of SEC [0.1 Unit] | 12,257 | RA04 | Z8 | CONS | MV | Fence Installation | AFT |
| RHD4CZ8RA04MV5400 |  | Installation for Unit Substations for Medium Voltage Network - (ROUND-04)-Z8-RA04-MV | 4d | 2027-07-26 | 2027-07-29 | RHD4PRLOLSTAGMV1601, RHD4PRLOLSTAGMV1602, RHD4CZ8RA04MV5300 | Skilled labor [43.56 h]; Unskilled Labor [87.12 h]; Electrician [87.12 h]; Unit Substation 13.8/0.4 K V, 500kVA ,Including concrete foundations and fencing, According to the specifications and standards of SEC [0.65 Unit]; Ring Main Unit RMU, 13.8KV, According to the specifications and standards of SEC [0.65 Unit] | 79,670.5 | RA04 | Z8 | CONS | MV | Substation Installation | AFT |
|  | 8038 | **RHD4-02-002-Z8-RA04-Low Voltage Network - LV** |  | 2027-07-31 | 2027-08-15 |  |  |  |  |  |  |  |  |  |
|  | 8039 | **RHD4-02-002-RA04-(LV)-Low Voltage duct banks** |  |  |  |  |  |  |  |  |  |  |  |  |
|  | 8040 | **RHD4-02-002-RA04-(LV)-Low Voltage Drawpit** |  |  |  |  |  |  |  |  |  |  |  |  |
|  | 8041 | **RHD4-02-002-RA04-(LV)-Low Voltage cables** |  | 2027-07-31 | 2027-08-08 |  |  |  |  |  |  |  |  |  |
| RHD4CZ8RA04LV3100 |  | Excavation for Low Voltage Cables for Low Voltage Network - (ROUND-04)-Z8-RA04-LV | 2d | 2027-07-31 | 2027-08-01 | RHD4ENSDZ8APPLV160, RHD4CZ8RA04MV5400 | Skilled labor [0.98 h]; Unskilled Labor [1.96 h]; Equipment Opreator [1.96 h]; Excavator-Poclain [0.98 h]; Boom Truck [0.98 h]; Cable, Copper 4x185mm2/ CU/XLPE/PVC [4.54 m] | 1,751.36 | RA04 | Z8 | CONS | LV | Excavation | AFT |
| RHD4CZ8RA04LV3200 |  | Cable Laying of Low Voltage Cables for Low Voltage Network - (ROUND-04)-Z8-RA04-LV | 2d | 2027-08-02 | 2027-08-03 | RHD4PRSHLDOSLV1100, RHD4ENMSLV2000, RHD4ENMSLV2010, RHD4PRSHLSTAGLV1100, RHD4CZ8RA04LV3100 | Skilled labor [0.87 h]; Unskilled Labor [3.27 h]; Electrician [1.6 h]; Equipment Opreator [2.5 h]; Boom Truck [0.87 h]; Cable Laying Machine [1.6 h]; Cable, Copper 4x185mm2/ CU/XLPE/PVC [13.61 m] | 5,254.08 | RA04 | Z8 | CONS | LV | Cable Laying | AFT |
| RHD4CZ8RA04LV3300 |  | Warning tape and Backfill for Low Voltage Cables for Low Voltage Network - (ROUND-04)-Z8-RA04-LV | 2d | 2027-08-04 | 2027-08-05 | RHD4CZ8RA04LV3200 | Skilled labor [0.87 h]; Unskilled Labor [3.27 h]; Electrician [1.6 h]; Equipment Opreator [0.87 h]; Boom Truck [0.87 h]; Cable, Copper 4x185mm2/ CU/XLPE/PVC [3.4 m] | 1,312.4 | RA04 | Z8 | CONS | LV | Warning tape and Backfill | AFT |
| RHD4CZ8RA04LV3400 |  | Testing of Low Voltage Cables for Low Voltage Network - (ROUND-04)-Z8-RA04-LV | 2d | 2027-08-07 | 2027-08-08 | RHD4CZ8RA04LV3300 | Skilled labor [0.54 h]; Unskilled Labor [1.96 h]; Electrician [0.98 h]; Equipment Opreator [0.54 h]; Boom Truck [0.54 h]; Cable, Copper 4x185mm2/ CU/XLPE/PVC [1.13 m] | 437.84 | RA04 | Z8 | CONS | LV | Testing | AFT |
|  | 8042 | **RHD4-02-002-RA04-(LV)-Low Voltage Distribution Pillars** |  | 2027-08-09 | 2027-08-15 |  |  |  |  |  |  |  |  |  |
| RHD4CZ8RA04LV4100 |  | Leveling for Distribution Pillars for Low Voltage Network - (ROUND-04)-Z8-RA04-LV | 2d | 2027-08-09 | 2027-08-10 | RHD4CZ8RA04LV3400 | Skilled labor [16.34 h]; Unskilled Labor [32.67 h]; Equipment Opreator [6.53 h]; Excavator-Poclain [3.27 h]; Boom Truck [3.27 h]; 0.6/1 KV Low Voltage Distribution Pillars with main breaker MCCB type and 5 Outgoing feeders MCCB type [0.15 Unit]; Supply and installation of KWH meter mounting frame including concrete block wall for installation of KWH meter according to the standards and specifications of SEC [0.3 Unit] | 3,796.65 | RA04 | Z8 | CONS | LV | Leveling | AFT |
| RHD4CZ8RA04LV4200 |  | Lean Concrete for Distribution Pillars for Low Voltage Network - (ROUND-04)-Z8-RA04-LV | 2d | 2027-08-11 | 2027-08-12 | RHD4CZ8RA04LV4100 | Skilled labor [10.89 h]; Unskilled Labor [21.78 h]; Equipment Opreator [4.36 h]; Concrete Mixer Truck [2.18 h]; Concrete Pump [2.18 h]; 0.6/1 KV Low Voltage Distribution Pillars with main breaker MCCB type and 5 Outgoing feeders MCCB type [0.25 Unit]; Supply and installation of KWH meter mounting frame including concrete block wall for installation of KWH meter according to the standards and specifications of SEC [0.5 Unit] | 6,327.75 | RA04 | Z8 | CONS | LV | Lean Concrete | AFT |
| RHD4CZ8RA04LV4300 |  | Installation of Distribution Pillars for Low Voltage Network - (ROUND-04)-Z8-RA04-LV | 2d | 2027-08-14 | 2027-08-15 | RHD4PRSHLDOSLV1200, RHD4PRSHLDOSLV1300, RHD4PRSHLSTAGLV1200, RHD4PRSHLSTAGLV1300, RHD4CZ8RA04LV4200 | Skilled labor [16.34 h]; Unskilled Labor [65.34 h]; Electrician [32.67 h]; Equipment Opreator [16.34 h]; Boom Truck [16.34 h]; 0.6/1 KV Low Voltage Distribution Pillars with main breaker MCCB type and 5 Outgoing feeders MCCB type [0.6 Unit]; Supply and installation of KWH meter mounting frame including concrete block wall for installation of KWH meter according to the standards and specifications of SEC [1.2 Unit] | 15,186.6 | RA04 | Z8 | CONS | LV | Installation | AFT |
|  | 8043 | **RHD4-02-002-RA04-(LV)-Low Voltage Distribution Pillars Earthing** |  |  |  |  |  |  |  |  |  |  |  |  |
|  | 8044 | **RHD4-02-002-Z8-RA04-Street Lighting Network - SL** |  | 2027-07-19 | 2027-09-13 |  |  |  |  |  |  |  |  |  |
|  | 8045 | **RHD4-02-002-RA04-(SL)-Street Lighting duct banks** |  | 2027-07-19 | 2027-08-05 |  |  |  |  |  |  |  |  |  |
| RHD4CZ8RA04SL2100 |  | Excavation of Duct Banks for Street Lighting Network - (ROUND-04)-Z8-RA04-SL | 4d | 2027-07-19 | 2027-07-22 | RHD4ENSDZ8APPSL170, RHD4CZ8RA04RA3000, RHD4CZ8RA04RD1100, RHD4CZ8C014SL2400 | Skilled labor [36.26 h]; Unskilled Labor [36.26 h]; Equipment Opreator [72.42 h]; Excavator-Poclain [36.26 h]; Dump Truck [36.26 h]; Road Crossing Duct for Street Lighting cables UPVC (2x?110mm) [3.32 m]; Road Crossing Duct for Street Lighting cables UPVC (4x?110mm) [1.67 m] | 1,110.91 | RA04 | Z8 | CONS | SL | Excavation | bef |
| RHD4CZ8RA04SL2200 |  | Installation of Duct Banks for Street Lighting Network - (ROUND-04)-Z8-RA04-SL | 5d | 2027-07-24 | 2027-07-28 | RHD4PRSHLDOSSL1000, RHD4PRSHLSTAGSL1000, RHD4CZ8RA04SL2100 | Carpenter [5.45 h]; Skilled labor [54.34 h]; Unskilled Labor [54.34 h]; Steel Fixer [5.45 h]; Road Crossing Duct for Street Lighting cables UPVC (2x?110mm) [3.32 m]; Road Crossing Duct for Street Lighting cables UPVC (4x?110mm) [1.67 m] | 1,110.91 | RA04 | Z8 | CONS | SL | Installing | bef |
| RHD4CZ8RA04SL2300 |  | Pouring of Duct Banks for Street Lighting Network - (ROUND-04)-Z8-RA04-SL | 4d | 2027-07-29 | 2027-08-02 | RHD4CZ8RA04SL2200 | Skilled labor [36.26 h]; Unskilled Labor [36.26 h]; Equipment Opreator [14.48 h]; Concrete Mixer Truck [7.3 h]; Concrete Pump [7.3 h]; Road Crossing Duct for Street Lighting cables UPVC (2x?110mm) [21.56 m]; Road Crossing Duct for Street Lighting cables UPVC (4x?110mm) [10.88 m] | 7,227.54 | RA04 | Z8 | CONS | SL | Pouring | bef |
| RHD4CZ8RA04SL2400 |  | Backfilling of Duct Banks for Street Lighting Network - (ROUND-04)-Z8-RA04-SL | 3d | 2027-08-03 | 2027-08-05 | RHD4CZ8RA04SL2300 | Skilled labor [27.2 h]; Unskilled Labor [27.2 h]; Equipment Opreator [10.89 h]; Excavator-Poclain [10.89 h]; Road Crossing Duct for Street Lighting cables UPVC (2x?110mm) [4.98 m]; Road Crossing Duct for Street Lighting cables UPVC (4x?110mm) [2.51 m] | 1,667.69 | RA04 | Z8 | CONS | SL | Backfilling | bef |

| ID | WBS | Activity | Duration | Start | Finish | Predecessors | Resources | Cost | RDH4-01-001-Road and Block Names-1 | RDH4-01-001-Zones-1 | RDH4-01-001-Phases-1 | RDH4-01-001-Networks-1 | RDH4-01-001-Work Method-1 | RDH4-01-001-MENEM |
| --- | --- | --- | --- | --- | --- | --- | --- | --- | --- | --- | --- | --- | --- | --- |
|  | 8046 | **RHD4-02-002-RA04-(SL)-Street Lighting Drawpit** |  | 2027-08-16 | 2027-08-19 |  |  |  |  |  |  |  |  |  |
| RHD4CZ8RA04SL5100 |  | Excavation of Drawpit size 600x600x900mm for Street Lighting Network - (ROUND-04)-Z8-RA04-SL | 2d | 2027-08-16 | 2027-08-17 | RHD4ENSDZ8APPSL170, RHD4CZ8RA04LV4300 | Skilled labor [2.72 h]; Unskilled Labor [2.72 h]; Equipment Opreator [2.18 h]; Excavator-Poclain [1.09 h]; Dump Truck [1.09 h]; Drawpit with medium duty steel cover, size600x600x900mm, [0.45 Unit] | 1,102.95 | RA04 | Z8 | CONS | SL | Excavation | AFT |
| RHD4CZ8RA04SL5200 |  | Installation of Drawpit size 600x600x900mm for Street Lighting Network - (ROUND-04)-Z8-RA04-SL | 2d | 2027-08-18 | 2027-08-19 | RHD4PRSHLDOSSL1400, RHD4PRSHLSTAGSL1400, RHD4CZ8RA04SL5100 | Skilled labor [2.72 h]; Unskilled Labor [2.72 h]; Equipment Opreator [1.09 h]; Boom Truck [1.09 h]; Drawpit with medium duty steel cover, size600x600x900mm, [2.55 Unit] | 6,250.05 | RA04 | Z8 | CONS | SL | Installation | AFT |
|  | 8047 | **RHD4-02-002-RA04-(SL)-Street Lighting cables** |  | 2027-08-21 | 2027-09-01 |  |  |  |  |  |  |  |  |  |
| RHD4CZ8RA04SL3100 |  | Excavation for Street Lighting Cables for Street Lighting Network - (ROUND-04)-Z8-RA04-SL | 3d | 2027-08-21 | 2027-08-23 | RHD4ENSDZ8APPSL170, RHD4CZ8RA04SL5200 | Skilled labor [29.95 h]; Unskilled Labor [60 h]; Equipment Opreator [60 h]; Excavator-Poclain [29.95 h]; Boom Truck [29.95 h]; Cable, Copper 4x16mm2/ CU/XLPE/SWA/PVC + 1x16mm2 CU/PVC [16.21 m]; Cable, Copper 4x10mm2/ CU/XLPE/SWA/PVC + 1x10mm2 CU/PVC [121.52 m] | 7,040.43 | RA04 | Z8 | CONS | SL | Excavation | AFT |
| RHD4CZ8RA04SL3200 |  | Cable Laying of Street Lighting Cables for Street Lighting Network - (ROUND-04)-Z8-RA04-SL | 3d | 2027-08-24 | 2027-08-26 | RHD4PRSHLDOSSL1100, RHD4ENMSSL2000, RHD4ENMSSL2010, RHD4PRSHLSTAGSL1100, RHD4CZ8RA04SL3100 | Skilled labor [25.05 h]; Unskilled Labor [100 h]; Electrician [49.99 h]; Equipment Opreator [75.03 h]; Boom Truck [25.05 h]; Cable Laying Machine [49.99 h]; Cable, Copper 4x16mm2/ CU/XLPE/SWA/PVC + 1x16mm2 CU/PVC [48.62 m]; Cable, Copper 4x10mm2/ CU/XLPE/SWA/PVC + 1x10mm2 CU/PVC [364.56 m] | 21,121.3 | RA04 | Z8 | CONS | SL | Cable Laying | AFT |
| RHD4CZ8RA04SL3300 |  | Warning tape and Backfill for Street Lighting Cables for Street Lighting Network - (ROUND-04)-Z8-RA04-SL | 3d | 2027-08-28 | 2027-08-30 | RHD4CZ8RA04SL3200 | Skilled labor [25.05 h]; Unskilled Labor [100 h]; Electrician [49.99 h]; Equipment Opreator [25.05 h]; Boom Truck [25.05 h]; Cable, Copper 4x16mm2/ CU/XLPE/SWA/PVC + 1x16mm2 CU/PVC [12.16 m]; Cable, Copper 4x10mm2/ CU/XLPE/SWA/PVC + 1x10mm2 CU/PVC [91.14 m] | 5,280.33 | RA04 | Z8 | CONS | SL | Warning tape and Backfill | AFT |
| RHD4CZ8RA04SL3400 |  | Testing of Street Lighting Cables for Street Lighting Network - (ROUND-04)-Z8-RA04-SL | 2d | 2027-08-31 | 2027-09-01 | RHD4CZ8RA04SL3300 | Skilled labor [15.03 h]; Unskilled Labor [60 h]; Electrician [29.95 h]; Equipment Opreator [15.03 h]; Boom Truck [15.03 h]; Cable, Copper 4x16mm2/ CU/XLPE/SWA/PVC + 1x16mm2 CU/PVC [4.05 m]; Cable, Copper 4x10mm2/ CU/XLPE/SWA/PVC + 1x10mm2 CU/PVC [30.38 m] | 1,760.11 | RA04 | Z8 | CONS | SL | Testing | AFT |
|  | 8048 | **RHD4-02-002-RA04-(SL)-Street Lighting Poles** |  | 2027-09-02 | 2027-09-13 |  |  |  |  |  |  |  |  |  |
| RHD4CZ8RA04SL1100 |  | Excavation for RC Base for Lighting Poles for Street Lighting Network - (ROUND-04)-Z8-RA04-SL | 2d | 2027-09-02 | 2027-09-04 | RHD4ENSDZ8APPSL170, RHD4CZ8RA04SL3400 | Skilled labor [7.3 h]; Unskilled Labor [7.3 h]; Equipment Opreator [14.48 h]; Excavator-Poclain [7.3 h]; Dump Truck [7.3 h]; Lighting poles single arms, height of ( 10 ) meters [1 Unit] | 3,407 | RA04 | Z8 | CONS | SL | Excavation | AFT |
| RHD4CZ8RA04SL1200 |  | Installation for RC Base for Lighting Poles for Street Lighting Network - (ROUND-04)-Z8-RA04-SL | 2d | 2027-09-05 | 2027-09-06 | RHD4CZ8RA04SL1100 | Skilled labor [7.3 h]; Unskilled Labor [7.3 h]; Equipment Opreator [14.48 h]; Excavator-Poclain [7.3 h]; Dump Truck [7.3 h]; Lighting poles single arms, height of ( 10 ) meters [2.5 Unit] | 8,517.5 | RA04 | Z8 | CONS | SL | RC Base | AFT |
| RHD4CZ8RA04SL1300 |  | Backfill for RC Base for Lighting Poles for Street Lighting Network - (ROUND-04)-Z8-RA04-SL | 2d | 2027-09-07 | 2027-09-08 | RHD4CZ8RA04SL1200 | Skilled labor [7.3 h]; Unskilled Labor [7.3 h]; Equipment Opreator [14.48 h]; Excavator-Poclain [7.3 h]; Dump Truck [7.3 h]; Lighting poles single arms, height of ( 10 ) meters [0.5 Unit] | 1,703.5 | RA04 | Z8 | CONS | SL | Backfill | AFT |
| RHD4CZ8RA04SL1400 |  | Installation for Lighting Poles for Street Lighting Network - (ROUND-04)-Z8-RA04-SL | 2d | 2027-09-09 | 2027-09-11 | RHD4PRSHLDOSSL1200, RHD4ENMSSL2000, RHD4ENMSSL2010, RHD4PRSHLSTAGSL1200, RHD4CZ8RA04SL1300 | Skilled labor [10.89 h]; Unskilled Labor [10.89 h]; Electrician [10.89 h]; Equipment Opreator [10.89 h]; Boom Truck [10.89 h]; Lighting poles single arms, height of ( 10 ) meters [6 Unit] | 20,442 | RA04 | Z8 | CONS | SL | Poles Installation | AFT |
| RHD4CZ8RA04SL1500 |  | Luminaire Installation for Lighting Poles for Street Lighting Network - (ROUND-04)-Z8-RA04-SL | 2d | 2027-09-12 | 2027-09-13 | RHD4PRSHLDOSSL1300, RHD4PRSHLSTAGSL1300, RHD4CZ8RA04SL1400 | Unskilled Labor [14.48 h]; Electrician [7.3 h]; Equipment Opreator [1.42 h]; Boom Truck [2.94 h]; Street Lighting( LED) Luminaire of Output ?10898 lumen [10 Unit] | 5,880 | RA04 | Z8 | CONS | SL | Luminaire Installation | AFT |
|  | 489 | **RHD4-02-002-Z8-RA04-Telecommunications Network - TC** |  | 2027-02-14 | 2027-10-16 |  |  |  |  |  |  |  |  |  |
|  | 490 | **RHD4-02-002-C081-(TC)-Telecommunications Ducts** |  | 2027-09-14 | 2027-10-16 |  |  |  |  |  |  |  |  |  |
| RHD4CZ8RA04TC2100 |  | Excavation of HDPE Ducts for Telecom Network - (ROUND-04)-Z8-RA04-TC | 10d | 2027-09-14 | 2027-09-27 | RHD4CZ8RA04SL1500 | Skilled labor [100 h]; Unskilled Labor [100 h]; Equipment Opreator [199.92 h]; Excavator-Poclain [100 h]; Dump Truck [100 h]; (6*50mm) HDPE ducts -TC [95.32 m]; (6*50mm+2*32mm) HDPE ducts -TC [38.32 m]; (6*50mm+4*32mm) HDPE ducts -TC [4.53 m]; (2*32mm) HDPE ducts -TC [0.8 m] | 13,131.31 | C081 | Z1 | CONS | TC | Excavation | AFT |
| RHD4CZ8RA04TC2200 |  | Installation of HDPE Ducts for Telecom Network - (ROUND-04)-Z8-RA04-TC | 8.01d | 2027-09-27 | 2027-10-06 | RHD4CZ8RA04TC2100 | Carpenter [15.04 h]; Skilled labor [150 h]; Unskilled Labor [150 h]; Steel Fixer [15.04 h]; (6*50mm) HDPE ducts -TC [309.79 m]; (6*50mm+2*32mm) HDPE ducts -TC [124.54 m]; (6*50mm+4*32mm) HDPE ducts -TC [14.72 m]; (2*32mm) HDPE ducts -TC [2.6 m] | 42,676.46 | C081 | Z1 | CONS | TC | Installing | AFT |
| RHD4CZ8RA04TC2400 |  | Backfilling of HDPE Ducts for Telecom Network - (ROUND-04)-Z8-RA04-TC | 8.01d | 2027-10-06 | 2027-10-16 | RHD4CZ8RA04TC2200, RHD4CZ8RA04TC5200 | Skilled labor [100 h]; Unskilled Labor [100 h]; Equipment Opreator [40 h]; Excavator-Poclain [40 h]; (6*50mm) HDPE ducts -TC [71.49 m]; (6*50mm+2*32mm) HDPE ducts -TC [28.74 m]; (6*50mm+4*32mm) HDPE ducts -TC [3.4 m]; (2*32mm) HDPE ducts -TC [0.6 m] | 9,848.78 | C081 | Z1 | CONS | TC | Backfilling | AFT |
|  | 491 | **RHD4-02-002-C081-(TC)-Telecommunications Manholes** |  | 2027-09-27 | 2027-10-05 |  |  |  |  |  |  |  |  |  |
| RHD4CZ8RA04TC5100 |  | Excavation for Manholes for Telecom Network - (ROUND-04)-Z8-RA04-TC | 4d | 2027-09-27 | 2027-09-30 | RHD4CZ8RA04TC2100, RHD4CZ8RA04TC2100 FF | Skilled labor [13.6 h]; Unskilled Labor [13.6 h]; Equipment Opreator [10.88 h]; Excavator-Poclain [5.44 h]; Dump Truck [5.44 h]; Manhole Type 1 - TC [0.15 nr]; Manhole Type 2 - TC [0.3 nr] | 3,033.45 | C081 | Z1 | CONS | TC | Excavation | AFT |
| RHD4CZ8RA04TC5200 |  | Installation of Manholes for Telecom Network - (ROUND-04)-Z8-RA04-TC | 4d | 2027-10-02 | 2027-10-05 | RHD4CZ8RA04TC5100, RHD4CZ8RA04TC2200 SS | Skilled labor [13.6 h]; Unskilled Labor [13.6 h]; Equipment Opreator [5.44 h]; Boom Truck [5.44 h]; Manhole Type 1 - TC [0.85 nr]; Manhole Type 2 - TC [1.7 nr] | 17,189.55 | C081 | Z1 | CONS | TC | Installation | AFT |
|  | 5411 | **RHD4-02-002-C081-(TC)-Telecomminications Road Crossings** |  | 2027-02-14 | 2027-02-23 |  |  |  |  |  |  |  |  |  |
| RHD4CZ8RA04TC3100 |  | Excavation for Road Crossings for Telecom Network - (ROUND-04)-Z8-RA04-TC | 2d | 2027-02-14 | 2027-02-15 | RHD4CZ8A011TC3100 | Skilled labor [9.36 h]; Unskilled Labor [9.36 h]; Equipment Opreator [18.72 h]; Excavator-Poclain [9.36 h]; Dump Truck [9.36 h]; Road crossing ducts, (6*50mm) HDPE -TC [2.8 m] | 106.4 | C062 | Z6 | CONS | TC | Excavation | bef |
| RHD4CZ8RA04TC3200 |  | Installation of Road Crossings for Telecom Network - (ROUND-04)-Z8-RA04-TC | 2.01d | 2027-02-16 | 2027-02-18 | RHD4CZ8RA04TC3100 | Carpenter [1.2 h]; Skilled labor [12.56 h]; Unskilled Labor [12.56 h]; Steel Fixer [1.2 h]; Road crossing ducts, (6*50mm) HDPE -TC [2.8 m] | 106.4 | C062 | Z6 | CONS | TC | Installing | bef |
| RHD4CZ8RA04TC3300 |  | Pouring of Road Crossings for Telecom Network - (ROUND-04)-Z8-RA04-TC | 2.01d | 2027-02-18 | 2027-02-21 | RHD4CZ8RA04TC3200 | Skilled labor [12.56 h]; Unskilled Labor [12.56 h]; Equipment Opreator [5.04 h]; Concrete Mixer Truck [2.48 h]; Concrete Pump [2.48 h]; Road crossing ducts, (6*50mm) HDPE -TC [18.2 m] | 691.6 | C062 | Z6 | CONS | TC | Pouring | bef |
| RHD4CZ8RA04TC3400 |  | Backfilling of Road Crossings for Telecom Network - (ROUND-04)-Z8-RA04-TC | 2d | 2027-02-21 | 2027-02-23 | RHD4CZ8RA04TC3300 | Skilled labor [9.36 h]; Unskilled Labor [9.36 h]; Equipment Opreator [3.68 h]; Excavator-Poclain [3.68 h]; Road crossing ducts, (6*50mm) HDPE -TC [4.2 m] | 159.6 | C062 | Z6 | CONS | TC | Backfilling | bef |

| ID | WBS | Activity | Duration | Start | Finish | Predecessors | Resources | Cost | RDH4-01-001-Road and Block Names-1 | RDH4-01-001-Zones-1 | RDH4-01-001-Phases-1 | RDH4-01-001-Networks-1 | RDH4-01-001-Work Method-1 | RDH4-01-001-MENEM |
| --- | --- | --- | --- | --- | --- | --- | --- | --- | --- | --- | --- | --- | --- | --- |
|  | 8060 | **RHD4-02-002-Z8-RA04-Information and Communication Technologies - ICT** |  | 2027-09-14 | 2027-09-30 |  |  |  |  |  |  |  |  |  |
|  | 8061 | **RHD4-02-002-RA04-(ICT)-Information and Communication Technologies Ducts** |  | 2027-09-14 | 2027-09-30 |  |  |  |  |  |  |  |  |  |
| RHD4CZ8RA04ICT2100 |  | Excavation of HDPE Ducts for ICT Network - (ROUND-04)-Z8-RA04-ICT | 4d | 2027-09-14 | 2027-09-18 | RHD4ENSDZ8APPICT200, RHD4CZ8RA04SL1500 | Skilled labor [38.99 h]; Unskilled Labor [38.99 h]; Equipment Opreator [78.08 h]; Excavator-Poclain [38.99 h]; Dump Truck [38.99 h]; (2*50mm) HDPE ducts -ICT [92.6 m]; (2*50mm+2*32mm) HDPE ducts -ICT [14.9 m] | 4,591.6 | RA04 | Z8 | CONS | ICT | Excavation | AFT |
| RHD4CZ8RA04ICT2200 |  | Installation of HDPE Ducts for ICT Network - (ROUND-04)-Z8-RA04-ICT | 6d | 2027-09-19 | 2027-09-26 | RHD4PRSHLDOSICT1000, RHD4PRSHLSTAGICT1000, RHD4CZ8RA04ICT2100 | Carpenter [5.88 h]; Skilled labor [58.59 h]; Unskilled Labor [58.59 h]; Steel Fixer [5.88 h]; (2*50mm) HDPE ducts -ICT [300.95 m]; (2*50mm+2*32mm) HDPE ducts -ICT [48.43 m] | 14,923.06 | RA04 | Z8 | CONS | ICT | Installing | AFT |
| RHD4CZ8RA04ICT2400 |  | Backfilling of HDPE Ducts for ICT Network - (ROUND-04)-Z8-RA04-ICT | 4d | 2027-09-27 | 2027-09-30 | RHD4CZ8RA04ICT2200 | Skilled labor [38.99 h]; Unskilled Labor [38.99 h]; Equipment Opreator [15.57 h]; Excavator-Poclain [15.57 h]; (2*50mm) HDPE ducts -ICT [69.45 m]; (2*50mm+2*32mm) HDPE ducts -ICT [11.18 m] | 3,444.06 | RA04 | Z8 | CONS | ICT | Backfilling | AFT |
|  | 8051 | **RHD4-02-002-Z8-RA04-Landscape Network - LS** |  |  |  |  |  |  |  |  |  |  |  |  |
|  | 8052 | **RHD4-02-002-RA04-(LS)-Landscape Lighting cables** |  |  |  |  |  |  |  |  |  |  |  |  |
|  | 8054 | **RHD4-02-002-RA04-(LS)-Landscape Bollard Poles** |  |  |  |  |  |  |  |  |  |  |  |  |
|  | 8064 | **RHD4-02-002-Z8-RA04-Security Network - CCTV** |  | 2027-10-02 | 2027-11-01 |  |  |  |  |  |  |  |  |  |
|  | 8065 | **RHD4-02-002-RA04-(CCTV)-Civil Works** |  | 2027-10-02 | 2027-10-06 |  |  |  |  |  |  |  |  |  |
| RHD4CZ8RA04CCTV2100 |  | Civil Works for Security Network - (ROUND-04)-Z8-RA04-CCTV | 5d | 2027-10-02 | 2027-10-06 | RHD4CZ8RA04ICT2400 | Skilled labor [217.76 h]; Unskilled Labor [435.68 h]; Equipment Opreator [217.76 h]; Excavator-Poclain [54.45 h]; Dump Truck [54.45 h]; Civil works Digging, trenching, laying pipes Meter with supply and installation of Manholes and for power feeding sources related to all towers and poles – (from 35-meter pole to control room and from related UPS camersa distribution boards till overall 2 [150 m] | 17,400 | RA04 | Z8 | CONS | CCTV | Civil Works | AFT |
|  | 8066 | **RHD4-02-002-RA04-(CCTV)-CCTV Poles** |  | 2027-10-07 | 2027-10-18 |  |  |  |  |  |  |  |  |  |
| RHD4CZ8RA04CCTV1100 |  | Excavation for RC Base for CCTV Poles for Security Network - (ROUND-04)-Z8-RA04-CCTV | 2d | 2027-10-07 | 2027-10-09 | RHD4ENSDZ8APPCCTV210, RHD4CZ8RA04TC5200, RHD4CZ8RA04CCTV2100 | Skilled labor [4.32 h]; Unskilled Labor [4.32 h]; Equipment Opreator [8.64 h]; Excavator-Poclain [2.18 h]; Dump Truck [2.18 h]; 25 Meters pole for CCTV Cameras [0.1 nr] | 14,090.2 | RA04 | Z8 | CONS | CCTV | Excavation | AFT |
| RHD4CZ8RA04CCTV1200 |  | Installation for RC Base for CCTV Poles for Security Network - (ROUND-04)-Z8-RA04-CCTV | 2d | 2027-10-10 | 2027-10-11 | RHD4CZ8RA04CCTV1100 | Skilled labor [4.32 h]; Unskilled Labor [4.32 h]; Equipment Opreator [8.64 h]; Excavator-Poclain [2.18 h]; Dump Truck [2.18 h]; 25 Meters pole for CCTV Cameras [0.25 nr] | 35,225.5 | RA04 | Z8 | CONS | CCTV | RC Base | AFT |
| RHD4CZ8RA04CCTV1300 |  | Backfill for RC Base for CCTV Poles for Security Network - (ROUND-04)-Z8-RA04-CCTV | 2d | 2027-10-12 | 2027-10-13 | RHD4CZ8RA04CCTV1200 | Skilled labor [2.88 h]; Unskilled Labor [2.88 h]; Equipment Opreator [5.44 h]; Excavator-Poclain [1.42 h]; Dump Truck [1.42 h]; 25 Meters pole for CCTV Cameras [0.05 nr] | 7,045.1 | RA04 | Z8 | CONS | CCTV | Backfill | AFT |
| RHD4CZ8RA04CCTV1400 |  | Installation for CCTV Poles for Security Network - (ROUND-04)-Z8-RA04-CCTV | 2d | 2027-10-14 | 2027-10-16 | RHD4PRSHLDOSCCTV1000, RHD4PRSHLSTACCTV1000, RHD4CZ8RA04CCTV1300 | Skilled labor [7.2 h]; Unskilled Labor [14.56 h]; Electrician [7.2 h]; Equipment Opreator [7.2 h]; Boom Truck [3.59 h]; 25 Meters pole for CCTV Cameras [0.6 nr] | 84,541.2 | RA04 | Z8 | CONS | CCTV | Installation | AFT |
| RHD4CZ8RA04CCTV1500 |  | Protection post Installation for CCTV Poles for Security Network - (ROUND-04)-Z8-RA04-CCTV | 2d | 2027-10-17 | 2027-10-18 | RHD4CZ8RA04CCTV1400 | Skilled labor [10.88 h]; Unskilled Labor [21.76 h]; Supply and Installation of minimum 4 Protection Post for each pole or tower with pipe ?220*6mm THK. [1 nr] | 4,903 | RA04 | Z8 | CONS | CCTV | Protection post | AFT |
|  | 8067 | **RHD4-02-002-RA04-(CCTV)-Camera** |  | 2027-10-19 | 2027-10-20 |  |  |  |  |  |  |  |  |  |
| RHD4CZ8RA04CCTV3100 |  | Installation for Cameras for Security Network - (ROUND-04)-Z8-RA04-CCTV | 2d | 2027-10-19 | 2027-10-20 | RHD4PRSHLDOSCCTV1100, RHD4PRSHLSTACCTV1100, RHD4CZ8RA04CCTV1500 | Unskilled Labor [54.4 h]; Electrician [27.2 h]; Outdoor Camera, 5MP resolution, day/night, fixed bullet camera providing Forensic WDR. [4 nr]; Outdoor PTZ with IR, HDTV 1080 and 31x optical, 12x digital, total 372x zoom, H264/265 with Motion JPEG. [1 nr] | 61,727 | RA04 | Z8 | CONS | CCTV | Installation | AFT |
|  | 8068 | **RHD4-02-002-RA04-(CCTV)-Power and Infrastructure** |  | 2027-10-21 | 2027-10-23 |  |  |  |  |  |  |  |  |  |
| RHD4CZ8RA04CCTV4100 |  | Installation of Power outlet, UPS and midspan for PTZ Camerafor Cameras for Security Network - (ROUND-04)-Z8-RA04-CCTV | 2d | 2027-10-21 | 2027-10-23 | RHD4PRSHLDOSCCTV1300, RHD4PRSHLSTACCTV1300, RHD4CZ8RA04CCTV3100 | Skilled labor [8.64 h]; Unskilled Labor [34.88 h]; Electrician [17.44 h]; Equipment Opreator [17.44 h]; Excavator-Poclain [4.36 h]; Dump Truck [4.36 h]; Outdoor ready IP66-rated midspan for PTZ Camera (The outdoor- ready midspan should be IP66/IP67- and NEMA 4X-rated [1 nr]; 1.2KVA Industrial type UPS located at FEC remote poles [1 nr] | 9,103 | RA04 | Z8 | CONS | CCTV | Power | AFT |
|  | 8070 | **RHD4-02-002-RA04-(CCTV)-CCTV Panels and Components** |  | 2027-10-24 | 2027-11-01 |  |  |  |  |  |  |  |  |  |
| RHD4CZ8RA04CCTV6100 |  | Installation for CCTV Panels for Security Network - (ROUND-04)-Z8-RA04-CCTV | 8d | 2027-10-24 | 2027-11-01 | RHD4PRSHLDOSCCTV1200, RHD4PRSHLSTACCTV1200, RHD4PRLOLSTACCTV1001, RHD4CZ8RA04CCTV4100, RHD4CZ8RA04TC2400 | Skilled labor [174.24 h]; Unskilled Labor [522.72 h]; Electrician [174.24 h]; Pole mounted Filed Equipment cabinet (FEC) , with fan and ventilation, NEMEX 4X ,door, minimum size (600x600x400mm) , the cabinet/enclosurE [1 nr]; 8 Port Industrial PoE Switch 10/1000BaseT (-40 deg to +70 deg. Celsius) for remote poles and as specifiedin item 15. [1 nr]; UTP CAT6 Patch Cord , connect the industrial switch with the cameras, and radio wireless antenna [6 nr] | 21,585 | RA04 | Z8 | CONS | CCTV | Equipment | AFT |
|  | 7325 | **RHD4-02-002-Z8-L04** |  | 2026-08-25 | 2028-01-23 |  |  |  |  |  |  |  |  |  |
|  | 7356 | **RHD4-02-002-Z8-L04-Crossings Sewage Network - SWCr** |  |  |  |  |  |  |  |  |  |  |  |  |
|  | 7366 | **RHD4-02-002-L04-(SWCr)-MH Works - 1200 mm diameter** |  |  |  |  |  |  |  |  |  |  |  |  |
|  | 7368 | **RHD4-02-002-L04-(SWCr)-MH Works - 1500 mm diameter** |  |  |  |  |  |  |  |  |  |  |  |  |
|  | 7367 | **RHD4-02-002-L04-(SWCr)-MH Works - 1200 mm diameter with Back drop** |  |  |  |  |  |  |  |  |  |  |  |  |
|  | 7369 | **RHD4-02-002-L04-(SWCr)-MH Works - 1500 mm diameter with Back drop** |  |  |  |  |  |  |  |  |  |  |  |  |
|  | 7361 | **RHD4-02-002-L04-(SWCr)-GRP Pipes - 700 mm diameter** |  |  |  |  |  |  |  |  |  |  |  |  |
|  | 7362 | **RHD4-02-002-L04-(SWCr)-UPVC Pipes - 200 mm diameter** |  |  |  |  |  |  |  |  |  |  |  |  |
|  | 7400 | **RHD4-02-002-Z8-L04-Crossings Potable Network - PTCr** |  |  |  |  |  |  |  |  |  |  |  |  |
|  | 7402 | **RHD4-02-002-L04-(PTCr)-HDPE Pipes - 160 mm diameter** |  |  |  |  |  |  |  |  |  |  |  |  |
|  | 7401 | **RHD4-02-002-L04-(PTCr)-HDPE Pipes - 110 mm diameter** |  |  |  |  |  |  |  |  |  |  |  |  |
|  | 7406 | **RHD4-02-002-L04-(PTCr)-Gate Valves (Direct Buried)** |  |  |  |  |  |  |  |  |  |  |  |  |
|  | 7409 | **RHD4-02-002-L04-(PTCr)-Wash out Valve Chambers** |  |  |  |  |  |  |  |  |  |  |  |  |
|  | 7410 | **RHD4-02-002-L04-(PTCr)-Wash out Valves** |  |  |  |  |  |  |  |  |  |  |  |  |
|  | 7411 | **RHD4-02-002-L04-(PTCr)-Air Valve Chambers** |  |  |  |  |  |  |  |  |  |  |  |  |
|  | 7412 | **RHD4-02-002-L04-(PTCr)-Air Valves** |  |  |  |  |  |  |  |  |  |  |  |  |
|  | 7504 | **RHD4-02-002-Z8-L04-Road Works - RD** |  | 2027-02-28 | 2028-01-23 |  |  |  |  |  |  |  |  |  |
|  | 7505 | **RHD4-02-002-L04-(RD)-Subgrade** |  | 2027-02-28 | 2027-03-06 |  |  |  |  |  |  |  |  |  |
| RHD4CZ8L04RD1100 |  | Supply, lay and compaction subgrade compacted thickness 300 mm for Roads - (RD-L-04)-Z8-L04-RD | 6d | 2027-02-28 | 2027-03-06 | RHD4ENSDZ8APPEW100, RHD4ENSDZ8APPRD220, RHD4CZ8L04ICT3400 | Skilled labor [159.2 h]; Unskilled Labor [318.4 h]; Electrician [159.2 h]; Equipment Opreator [1087.62 h]; Water Truck [52.6 h]; Roller compactor [79.61 h]; Grader [159.2 h]; Dump Truck [796.19 h]; Subgrade [7658.73 m3] | 145,515.87 | L04 | Z8 | CONS | RD | Subgrade | bef |

| ID | WBS | Activity | Duration | Start | Finish | Predecessors | Complete | Planned start | Planned finish | Resources | Cost | Actual cost | RDH4-01-001-Road and Block Names-1 | RDH4-01-001-Zones-1 | RDH4-01-001-Phases-1 | RDH4-01-001-Networks-1 | RDH4-01-001-Work Method-1 | RDH4-01-001-MENEM |
| --- | --- | --- | --- | --- | --- | --- | --- | --- | --- | --- | --- | --- | --- | --- | --- | --- | --- | --- |
|  | 7506 | **RHD4-02-002-L04-(RD)-Aggregate Base Course** |  | 2027-03-07 | 2027-03-15 |  |  |  |  |  |  |  |  |  |  |  |  |  |
| RHD4CZ8L04RD2100 |  | Supply, lay and compaction Aggregate base course compacted thickness 300 mmfor Roads - (RD-L-04)-Z8-L04-RD | 5d | 2027-03-07 | 2027-03-15 | RHD4PRSHLDOSRD1000, RHD4PRSHLSTAGRD1000, RHD4CZ8L04RD1100 |  |  |  | Skilled labor [59.03 h]; Unskilled Labor [117.94 h]; Equipment Opreator [746.64 h]; Water Truck [38.88 h]; Roller compactor [117.94 h]; Grader [117.94 h]; Dump Truck [471.77 h]; Aggregate Base Courses [4810.45 m3] | 274,195.65 |  | L04 | Z8 | CONS | RD | ABC | bef |
|  | 7507 | **RHD4-02-002-L04-(RD)-Bituminous base course Two Layers, including (MC1)&(RC2)** |  | 2027-03-16 | 2027-12-20 |  |  |  |  |  |  |  |  |  |  |  |  |  |
| RHD4CZ8L04RD3100 |  | Supply, lay and Asphaltic base course including Prime Coat (MC1) for 1st Layer - (RD-L-04)-Z8-L04-RD | 2d | 2027-03-16 | 2027-03-17 | RHD4PRSHLDOSRD1100, RHD4ENMSASPH2000, RHD4ENMSASPH2010, RHD4PRSHLSTAGRD1100, RHD4CZ8L04RD2100 |  |  |  | Skilled labor [19.71 h]; Unskilled Labor [117.94 h]; Equipment Opreator [294.91 h]; Bobcat [19.71 h]; Roller compactor [19.71 h]; Asphalt Paver [19.71 h]; Rubber Compactor [39.31 h]; MC1/RC2 Sprinkler [19.71 h]; Dump Truck [176.97 h]; Bituminous base course (Grading I - Class A), including Prime coat (MC1) & tack coate (RC2) [719.24 m3] | 343,796.72 |  | L04 | Z8 | CONS | RD | 150 mm | AFT |
| RHD4CZ8L04RD3200 |  | Supply, lay and Asphaltic base course including Tack Coat (RC2) for 2nd Layer - (RD-L-04)-Z8-L04-RD | 2d | 2027-12-19 | 2027-12-20 | RHD4PRSHLDOSRD1100, RHD4PRSHLSTAGRD1100, RHD4CZ8L04RD3100, RHD4CZ8L04CCTV6100, RHD4CZ8RA04RD3200 |  |  |  | Skilled labor [19.71 h]; Unskilled Labor [117.94 h]; Equipment Opreator [294.91 h]; Bobcat [19.71 h]; Roller compactor [19.71 h]; Asphalt Paver [19.71 h]; Rubber Compactor [39.31 h]; MC1/RC2 Sprinkler [19.71 h]; Dump Truck [176.97 h]; Bituminous base course (Grading I - Class A), including Prime coat (MC1) & tack coate (RC2) [719.24 m3] | 343,796.72 |  | L04 | Z8 | CONS | RD | 150 mm | AFT |
|  | 7509 | **RHD4-02-002-L04-(RD)-Precast Concrete Curb** |  | 2027-12-21 | 2027-12-27 |  |  |  |  |  |  |  |  |  |  |  |  |  |
| RHD4CZ8L04RD5100 |  | Supply and installation Precast Concrete Kerb for Roads - (RD-L-04)-Z8-L04-RD | 6d | 2027-12-21 | 2027-12-27 | RHD4PRSHLDOSRD1200, RHD4ENMSRD2000, RHD4ENMSRD2010, RHD4PRSHLSTAGRD1200, RHD4CZ8L04RD3200 |  |  |  | Mason [194.5 h]; Skilled labor [64.8 h]; Unskilled Labor [194.5 h]; Equipment Opreator [129.7 h]; Bobcat [64.8 h]; Concrete Mixer Truck [64.8 h]; Precast Concrete Curbstone, type K1 [2678.79 m] | 147,333.29 |  | L04 | Z8 | CONS | RD | Curbs | AFT |
|  | 7512 | **RHD4-02-002-L04-(RD)-Traffic Signage** |  | 2027-12-28 | 2028-01-03 |  |  |  |  |  |  |  |  |  |  |  |  |  |
| RHD4CZ8L04RD8100 |  | Installation of Traffic Signage for Road Network - (RD-L-04)-Z8-L04-RD | 6d | 2027-12-28 | 2028-01-03 | RHD4PRSHLDOSRD1600, RHD4PRSHLSTAGRD1600, RHD4CZ8L04RD5100, RHD4CZ5L08RD8100 |  |  |  | Skilled labor [130.68 h]; Unskilled Labor [65.34 h]; Electrician [4.36 h]; Equipment Opreator [14.81 h]; Boom Truck [13.07 h]; Concrete Mixer Truck [1.74 h]; Traffic signs, ground mounted, 1 Sheet Aluminium, (breakaway)Single post [3 nr]; Traffic signs, ground mounted, 1 Sheets Aluminium, (breakaway)Double post [1 nr] | 5,517 |  | L04 | Z8 | CONS | RD | Traffic Signage | AFT |
|  | 7510 | **RHD4-02-002-L04-(RD)-Precast Interlocking Block Pavers** |  | 2028-01-04 | 2028-01-15 |  |  |  |  |  |  |  |  |  |  |  |  |  |
| RHD4CZ8L04RD6100 |  | Interlocking block pavers for sidewalk-footpath for Side walks and Parking areas - (RD-L-04)-Z8-L04-RD | 10d | 2028-01-04 | 2028-01-15 | RHD4PRSHLDOSRD1300, RHD4ENMSRD2000, RHD4ENMSRD2010, RHD4PRSHLSTAGRD1300, RHD4CZ8L04RD8100 |  |  |  | Skilled labor [213.45 h]; Unskilled Labor [320.18 h]; Equipment Opreator [346.86 h]; Boom Truck [106.73 h]; Bobcat [106.73 h]; Concrete Mixer Truck [106.73 h]; Water Truck [26.68 h]; Interlock 80 mm thick Pavers for parking including sand fill [2450 m2] | 181,300 |  | L04 | Z8 | CONS | RD | Interlocking | AFT |
|  | 7508 | **RHD4-02-002-L04-(RD)-Bituminous concrete wearing course including tack coat (RC2)** |  | 2028-01-16 | 2028-01-17 |  |  |  |  |  |  |  |  |  |  |  |  |  |
| RHD4CZ8L04RD4100 |  | Supply, lay and compaction Asphaltic wearing course including tack Coat (RC2)for Road Network - (RD-L-04)-Z8-L04-RD | 2d | 2028-01-16 | 2028-01-17 | RHD4CZ8L04RD5100, RHD4CZ8L04RD6100 |  |  |  | Skilled labor [21.67 h]; Unskilled Labor [130.25 h]; Equipment Opreator [325.51 h]; Bobcat [21.67 h]; Roller compactor [21.67 h]; Asphalt Paver [21.67 h]; Rubber Compactor [43.45 h]; MC1/RC2 Sprinkler [21.67 h]; Dump Truck [195.26 h]; Bituminous concrete wearing course, (Grading I - Class A), including tack coat (RC2) [1035.06 m3] | 562,037.58 |  | L04 | Z8 | CONS | RD | 50 mm | AFT |
|  | 7511 | **RHD4-02-002-L04-(RD)-Pavement Marking** |  | 2028-01-18 | 2028-01-23 |  |  |  |  |  |  |  |  |  |  |  |  |  |
| RHD4CZ8L04RD7100 |  | Pavement Markings for Road Network - (RD-L-04)-Z8-L04-RD | 5d | 2028-01-18 | 2028-01-23 | RHD4PRSHLDOSRD1500, RHD4PRSHLSTAGRD1500, RHD4CZ8L04RD4100 |  |  |  | Skilled labor [50.4 h]; Unskilled Labor [100.95 h]; Equipment Opreator [50.4 h]; Road Marking Machine [50.4 h]; Retroreflective Thermoplastic White Traffic Markings [204.52 m2]; Retroreflective Thermoplastic Yellow, Traffic Markings [190.85 m2]; Retroreflective raised pavement markers (cat eyes) [787 nr] | 39,014.47 |  | L04 | Z8 | CONS | RD | Pavement Marking | AFT |
|  | 7329 | **RHD4-02-002-Z8-L04-Storm Network - ST** |  | 2026-08-25 | 2027-06-21 |  |  |  |  |  |  |  |  |  |  |  |  |  |
|  | 7348 | **RHD4-02-002-L04-(ST)-MH Works - 2000 mm diameter** |  | 2026-09-19 | 2027-05-03 |  |  |  |  |  |  |  |  |  |  |  |  |  |
| RHD4CZ8L04ST3102 |  | Excavation and PC Blinding works for MH 2000 mm - (RD-L-04)-Z8-L04-ST | 2d | 2026-09-19 A | 2026-09-20 A | RHD4ENSDZ8APPST110, RHD4ENMSST2000, RHD4CZ8A011ST3101, RHD4CZ8L04ST2100 | 100% | 2026-11-30 | 2026-12-01 | Skilled labor [10.89 h]; Unskilled Labor [10.89 h]; Equipment Opreator [17.42 h]; Excavator-Poclain [10.89 h]; Water Truck [1.09 h]; Dump Truck [5.45 h]; MH (2000mm Diameter) - ST - depth 2.51 - 3.5m [0.75 nr] | 16,385.25 | 16,385.25 | L04 | Z8 | CONS | ST | Excavation | bef |
| RHD4CZ8L04ST3202 |  | Installation of Base for MH 2000 mm - (RD-L-04)-Z8-L04-ST | 2d | 2027-04-25 | 2027-04-26 | RHD4PRSHLSTAGST1607, RHD4CZ8L04ST3102 |  |  |  | Skilled labor [16.34 h]; Unskilled Labor [16.34 h]; Equipment Opreator [6.53 h]; Boom Truck [3.27 h]; Concrete Mixer Truck [3.27 h]; MH (2000mm Diameter) - ST - depth 2.51 - 3.5m [0.75 nr] | 16,385.25 |  | L04 | Z8 | CONS | ST | Installing Base | bef |
| RHD4CZ8L04ST3302 |  | MH Ring and C.Slab works and Backfilling works for MH 2000 mm - (RD-L-04)-Z8-L04-ST | 2d | 2027-04-27 | 2027-04-28 | RHD4PRSHLDOSST1607, RHD4CZ8L04ST3202 |  |  |  | Skilled labor [16.34 h]; Unskilled Labor [16.34 h]; Equipment Opreator [11.43 h]; Boom Truck [6.53 h]; Concrete Mixer Truck [4.9 h]; MH (2000mm Diameter) - ST - depth 2.51 - 3.5m [1.05 nr] | 22,939.35 |  | L04 | Z8 | CONS | ST | Installing Rings | bef |
| RHD4CZ8L04ST3402 |  | Steel Cover for MH 2000 mm - (RD-L-04)-Z8-L04-ST | 2d | 2027-04-29 | 2027-05-01 | RHD4PRSHLDOSST1707, RHD4PRSHLSTAGST1707, RHD4CZ8L04ST3302 |  |  |  | Skilled labor [10.89 h]; Unskilled Labor [21.78 h]; Equipment Opreator [2.18 h]; Boom Truck [2.18 h]; MH (2000mm Diameter) - ST - depth 2.51 - 3.5m [0.15 nr] | 3,277.05 |  | L04 | Z8 | CONS | ST | Steel Cover | bef |
| RHD4CZ8L04ST3502 |  | Finishing, Benching, Testing works for MH 2000 mm - (RD-L-04)-Z8-L04-ST | 2d | 2027-05-02 | 2027-05-03 | RHD4CZ8L04ST3402 |  |  |  | Skilled labor [10.89 h]; Unskilled Labor [21.78 h]; Plumber [10.89 h]; Equipment Opreator [2.18 h]; Water Truck [2.18 h]; MH (2000mm Diameter) - ST - depth 2.51 - 3.5m [0.3 nr] | 6,554.1 |  | L04 | Z8 | CONS | ST | Benching | bef |
|  | 1844 | **RHD4-02-002-L04-(ST)-GRP Pipes - 400 mm diameter** |  | 2026-09-15 | 2027-03-18 |  |  |  |  |  |  |  |  |  |  |  |  |  |
| RHD4CZ8L04ST1100 |  | Excavation works for GRP Pipe Line 400 mm - (RD-L-04)-Z8-L04-ST | 2d | 2026-09-15 A | 2026-09-16 A | RHD4CZ8L04ST1508, RHD4CZ8L04ST1101 | 100% | 2026-10-31 | 2026-11-01 | Skilled labor [2.94 h]; Unskilled Labor [2.94 h]; Equipment Opreator [3.48 h]; Excavator-Poclain [2.94 h]; Dump Truck [0.54 h]; GRP (400mm Diameter) - ST - Depth less than 1.5 m [6.65 m] | 1,928.5 | 1,928.5 | L04 | Z8 | CONS | ST | Excavation | bef |
| RHD4CZ8L04ST1200 |  | Bedding works for GRP Pipe Line 400 mm - (RD-L-04)-Z8-L04-ST | 2d | 2026-09-19 A | 2026-09-20 A | RHD4CZ8L04ST1100 | 100% | 2026-11-02 | 2026-11-03 | Skilled labor [2.4 h]; Unskilled Labor [4.8 h]; Equipment Opreator [4.8 h]; Excavator-Poclain [2.4 h]; Dump Truck [2.4 h]; GRP (400mm Diameter) - ST - Depth less than 1.5 m [3.32 m] | 962.8 | 962.8 | L04 | Z8 | CONS | ST | Bedding | bef |
| RHD4CZ8L04ST1300 |  | Installing for GRP Pipe Line 400 mm - (RD-L-04)-Z8-L04-ST | 2d | 2026-09-20 A | 2026-09-21 A | RHD4CZ8L04ST1200 | 100% | 2026-11-04 | 2026-11-05 | Unskilled Labor [9.69 h]; Plumber [4.8 h]; GRP (400mm Diameter) - ST - Depth less than 1.5 m [29.91 m] | 8,673.9 | 8,673.9 | L04 | Z8 | CONS | ST | Installation | bef |
| RHD4CZ8L04ST1400 |  | Primary Test for GRP Pipe Line 400 mm - (RD-L-04)-Z8-L04-ST | 2d | 2027-03-15 | 2027-03-16 | RHD4CZ8L04ST1300 |  |  |  | Unskilled Labor [1.42 h]; Plumber [1.42 h]; Equipment Opreator [1.42 h]; Water Truck [1.42 h]; GRP (400mm Diameter) - ST - Depth less than 1.5 m [13.29 m] | 3,854.1 |  | L04 | Z8 | CONS | ST | Primary Test | bef |
| RHD4CZ8L04ST1500 |  | Backfilling and warning tape works for GRP Pipe Line 400 mm - (RD-L-04)-Z8-L04-ST | 2d | 2027-03-17 | 2027-03-18 | RHD4CZ8L04ST1400 |  |  |  | Skilled labor [3.59 h]; Unskilled Labor [7.2 h]; Equipment Opreator [7.2 h]; Excavator-Poclain [3.59 h]; Dump Truck [3.59 h]; GRP (400mm Diameter) - ST - Depth less than 1.5 m [13.29 m] | 3,854.1 |  | L04 | Z8 | CONS | ST | Backfilling | bef |

| ID | WBS | Activity | Duration | Start | Finish | Predecessors | Complete | Remaining | Planned start | Planned finish | Resources | Cost | Actual cost | RDH4-01-001-Road and Block Names-1 | RDH4-01-001-Zones-1 | RDH4-01-001-Phases-1 | RDH4-01-001-Networks-1 | RDH4-01-001-Work Method-1 | RDH4-01-001-MENEM |
| --- | --- | --- | --- | --- | --- | --- | --- | --- | --- | --- | --- | --- | --- | --- | --- | --- | --- | --- | --- |
|  | 1852 | **RHD4-02-002-L04-(ST)-GRP Pipes - 1200 mm diameter** |  | 2026-08-25 | 2027-03-14 |  |  |  |  |  |  |  |  |  |  |  |  |  |  |
| RHD4CZ8L04ST1108 |  | Excavation works for GRP Pipe Line 1200 mm - (RD-L-04)-Z8-L04-ST | 2d | 2026-08-25 A | 2026-09-19 A | RHD4CZ8L04RW3000, RHD4CZ6A015IRR1100 | 100% |  | 2026-10-17 | 2026-10-18 | Skilled labor [12.2 h]; Unskilled Labor [12.2 h]; Equipment Opreator [14.59 h]; Excavator-Poclain [12.2 h]; Dump Truck [2.4 h]; GRP (1200mm Diameter) - ST - Depth: 1.51m - 2.5m [15 m]; GRP (1200mm Diameter) - ST - Depth: 2.51m - 3.5m [10.2 m] | 32,164.2 | 32,164.2 | L04 | Z8 | CONS | ST | Excavation | bef |
| RHD4CZ8L04ST1208 |  | Bedding works for GRP Pipe Line 1200 mm - (RD-L-04)-Z8-L04-ST | 2d | 2027-03-02 | 2027-03-03 | RHD4CZ8L04ST1108 |  |  |  |  | Skilled labor [12.2 h]; Unskilled Labor [24.39 h]; Equipment Opreator [24.39 h]; Excavator-Poclain [12.2 h]; Dump Truck [12.2 h]; GRP (1200mm Diameter) - ST - Depth: 1.51m - 2.5m [5 m]; GRP (1200mm Diameter) - ST - Depth: 2.51m - 3.5m [3.4 m] | 10,721.4 |  | L04 | Z8 | CONS | ST | Bedding | bef |
| RHD4CZ8L04ST1308 |  | Installing for GRP Pipe Line 1200 mm - (RD-L-04)-Z8-L04-ST | 2d | 2027-03-04 | 2027-03-06 | RHD4CZ8L04ST1208 |  |  |  |  | Unskilled Labor [14.59 h]; Plumber [7.3 h]; GRP (1200mm Diameter) - ST - Depth: 1.51m - 2.5m [39.99 m]; GRP (1200mm Diameter) - ST - Depth: 2.51m - 3.5m [27.2 m] | 85,759.42 |  | L04 | Z8 | CONS | ST | Installation | bef |
| RHD4CZ8L04ST1408 |  | Primary Test for GRP Pipe Line 1200 mm - (RD-L-04)-Z8-L04-ST | 2d | 2027-03-07 | 2027-03-08 | RHD4CZ8L04ST1308 |  |  |  |  | Unskilled Labor [6.1 h]; Plumber [6.1 h]; Equipment Opreator [6.1 h]; Water Truck [6.1 h]; GRP (1200mm Diameter) - ST - Depth: 1.51m - 2.5m [20 m]; GRP (1200mm Diameter) - ST - Depth: 2.51m - 3.5m [13.6 m] | 42,885.6 |  | L04 | Z8 | CONS | ST | Primary Test | bef |
| RHD4CZ8L04ST1508 |  | Backfilling and warning tape works for GRP Pipe Line 1200 mm - (RD-L-04)-Z8-L04-ST | 2d | 2027-03-13 | 2027-03-14 | RHD4CZ8L04ST1408 |  |  |  |  | Skilled labor [12.2 h]; Unskilled Labor [24.39 h]; Equipment Opreator [24.39 h]; Excavator-Poclain [12.2 h]; Dump Truck [12.2 h]; GRP (1200mm Diameter) - ST - Depth: 1.51m - 2.5m [20 m]; GRP (1200mm Diameter) - ST - Depth: 2.51m - 3.5m [13.6 m] | 42,885.6 |  | L04 | Z8 | CONS | ST | Backfilling | bef |
|  | 2414 | **RHD4-02-002-L04-(ST)-GRP Pipes - 600 mm diameter** |  | 2026-09-15 | 2027-03-14 |  |  |  |  |  |  |  |  |  |  |  |  |  |  |
| RHD4CZ8L04ST1102 |  | Excavation works for GRP Pipe Line 600 mm - (RD-L-04)-Z8-L04-ST | 2d | 2026-09-15 A | 2026-09-16 A | RHD4CZ8L04ST1103 | 100% |  | 2026-10-26 | 2026-10-27 | Skilled labor [9.69 h]; Unskilled Labor [9.69 h]; Equipment Opreator [11.65 h]; Excavator-Poclain [9.69 h]; Dump Truck [1.96 h]; GRP (600mm Diameter) - ST - Depth less than 1.5 m [20.6 m]; GRP (600mm Diameter) - ST - Depth: 1.51m - 2.5m | 8,878.6 | 8,878.6 | L04 | Z8 | CONS | ST | Excavation | bef |
| RHD4CZ8L04ST1202 |  | Bedding works for GRP Pipe Line 600 mm - (RD-L-04)-Z8-L04-ST | 2d | 2026-09-17 A | 2027-03-03 | RHD4CZ8L04ST1102 | 65% | 2d | 2026-10-28 | 2026-10-29 | Skilled labor [8.71 h]; Unskilled Labor [17.42 h]; Equipment Opreator [17.42 h]; Excavator-Poclain [8.71 h]; Dump Truck [8.71 h]; GRP (600mm Diameter) - ST - Depth less than 1.5 m [10.3 m]; GRP (600mm Diameter) - ST - Depth: 1.51m - 2.5m | 4,439.3 |  | L04 | Z8 | CONS | ST | Bedding | bef |
| RHD4CZ8L04ST1302 |  | Installing for GRP Pipe Line 600 mm - (RD-L-04)-Z8-L04-ST | 2d | 2026-09-21 A | 2027-03-06 | RHD4CZ8L04ST1202 | 34% | 2d | 2026-10-31 | 2026-11-01 | Unskilled Labor [27.44 h]; Plumber [13.72 h]; GRP (600mm Diameter) - ST - Depth less than 1.5 m [92.72 m]; GRP (600mm Diameter) - ST - Depth: 1.51m - 2.5m | 39,962.32 |  | L04 | Z8 | CONS | ST | Installation | bef |
| RHD4CZ8L04ST1402 |  | Primary Test for GRP Pipe Line 600 mm - (RD-L-04)-Z8-L04-ST | 2d | 2027-03-07 | 2027-03-08 | RHD4CZ8L04ST1302 |  |  |  |  | Unskilled Labor [6.75 h]; Plumber [6.75 h]; Equipment Opreator [6.75 h]; Water Truck [6.75 h]; GRP (600mm Diameter) - ST - Depth less than 1.5 m [41.21 m]; GRP (600mm Diameter) - ST - Depth: 1.51m - 2.5m | 17,761.51 |  | L04 | Z8 | CONS | ST | Primary Test | bef |
| RHD4CZ8L04ST1502 |  | Backfilling and warning tape works for GRP Pipe Line 600 mm - (RD-L-04)-Z8-L04-ST | 2d | 2027-03-13 | 2027-03-14 | RHD4CZ8L04ST1402 |  |  |  |  | Skilled labor [11.2 h]; Unskilled Labor [22.4 h]; Equipment Opreator [22.4 h]; Excavator-Poclain [11.2 h]; Dump Truck [11.2 h]; GRP (600mm Diameter) - ST - Depth less than 1.5 m [41.21 m]; GRP (600mm Diameter) - ST - Depth: 1.51m - 2.5m | 17,761.51 |  | L04 | Z8 | CONS | ST | Backfilling | bef |
|  | 3752 | **RHD4-02-002-L04-(ST)-MH Works - 1200 mm diameter** |  | 2026-09-19 | 2027-06-09 |  |  |  |  |  |  |  |  |  |  |  |  |  |  |
| RHD4CZ8L04ST3100 |  | Excavation and PC Blinding works for MH 1200 mm - (RD-L-04)-Z8-L04-ST | 4d | 2026-09-19 A | 2026-09-22 A | RHD4CZ8L04ST1500, RHD4CZ8L04ST1102, RHD4CZ8L04ST3101 | 100% |  | 2026-12-09 | 2026-12-13 | Skilled labor [43.56 h]; Unskilled Labor [43.56 h]; Equipment Opreator [69.7 h]; Excavator-Poclain [43.56 h]; Water Truck [4.36 h]; Dump Truck [21.78 h]; MH (1200mm Diameter) - ST - depth 1.50 - 2.5m [3 nr] | 30,969 | 30,969 | L04 | Z8 | CONS | ST | Excavation | bef |
| RHD4CZ8L04ST3200 |  | Installation of Base for MH 1200 mm - (RD-L-04)-Z8-L04-ST | 4d | 2027-05-23 | 2027-05-26 | RHD4CZ8L04ST3100, RHD4CZ4L09ST3501, RHD4CZ5L07PT4500 |  |  |  |  | Skilled labor [43.56 h]; Unskilled Labor [43.56 h]; Equipment Opreator [17.42 h]; Boom Truck [8.71 h]; Concrete Mixer Truck [8.71 h]; MH (1200mm Diameter) - ST - depth 1.50 - 2.5m [3 nr] | 30,969 |  | L04 | Z8 | CONS | ST | Installing Base | bef |
| RHD4CZ8L04ST3300 |  | MH Ring and C.Slab works and Backfilling works for MH 1200 mm - (RD-L-04)-Z8-L04-ST | 4d | 2027-05-27 | 2027-05-31 | RHD4CZ8L04ST3200, RHD4CSWL1B07D021004, RHD4CZ6C062SW3500 |  |  |  |  | Skilled labor [43.56 h]; Unskilled Labor [43.56 h]; Equipment Opreator [30.49 h]; Boom Truck [17.42 h]; Concrete Mixer Truck [13.07 h]; MH (1200mm Diameter) - ST - depth 1.50 - 2.5m [4.2 nr] | 43,356.6 |  | L04 | Z8 | CONS | ST | Installing Rings | bef |
| RHD4CZ8L04ST3400 |  | Steel Cover for MH 1200 mm - (RD-L-04)-Z8-L04-ST | 4d | 2027-06-01 | 2027-06-05 | RHD4CZ8L04ST3300 |  |  |  |  | Skilled labor [43.56 h]; Unskilled Labor [87.12 h]; Equipment Opreator [8.71 h]; Boom Truck [8.71 h]; MH (1200mm Diameter) - ST - depth 1.50 - 2.5m [0.6 nr] | 6,193.8 |  | L04 | Z8 | CONS | ST | Steel Cover | bef |
| RHD4CZ8L04ST3500 |  | Finishing, Benching, Testing works for MH 1200 mm - (RD-L-04)-Z8-L04-ST | 4d | 2027-06-06 | 2027-06-09 | RHD4CZ8L04ST3400 |  |  |  |  | Skilled labor [43.56 h]; Unskilled Labor [87.12 h]; Plumber [43.56 h]; Equipment Opreator [8.71 h]; Water Truck [8.71 h]; MH (1200mm Diameter) - ST - depth 1.50 - 2.5m [1.2 nr] | 12,387.6 |  | L04 | Z8 | CONS | ST | Benching | bef |
|  | 3739 | **RHD4-02-002-L04-(ST)-GRP Pipes - 700 mm diameter** |  | 2026-09-15 | 2027-03-14 |  |  |  |  |  |  |  |  |  |  |  |  |  |  |
| RHD4CZ8L04ST1103 |  | Excavation works for GRP Pipe Line 700 mm - (RD-L-04)-Z8-L04-ST | 2d | 2026-09-15 A | 2026-09-16 A | RHD4CZ8L04ST1104 | 100% |  | 2026-10-24 | 2026-10-25 | Skilled labor [11.2 h]; Unskilled Labor [11.2 h]; Equipment Opreator [13.4 h]; Excavator-Poclain [11.2 h]; Dump Truck [2.29 h]; GRP (700mm Diameter) - ST - Depth less than 1.5 m [20.56 m]; GRP (700mm Diameter) - ST - Depth: 1.51m - 2.5m | 11,390.24 | 11,390.24 | L04 | Z8 | CONS | ST | Excavation | bef |
| RHD4CZ8L04ST1203 |  | Bedding works for GRP Pipe Line 700 mm - (RD-L-04)-Z8-L04-ST | 2d | 2026-09-19 A | 2027-03-03 | RHD4CZ8L04ST1103 | 30% | 2d | 2026-10-26 | 2026-10-27 | Skilled labor [11.2 h]; Unskilled Labor [22.4 h]; Equipment Opreator [22.4 h]; Excavator-Poclain [11.2 h]; Dump Truck [11.2 h]; GRP (700mm Diameter) - ST - Depth less than 1.5 m [10.28 m]; GRP (700mm Diameter) - ST - Depth: 1.51m - 2.5m | 5,695.12 |  | L04 | Z8 | CONS | ST | Bedding | bef |
| RHD4CZ8L04ST1303 |  | Installing for GRP Pipe Line 700 mm - (RD-L-04)-Z8-L04-ST | 2d | 2026-09-20 A | 2027-03-06 | RHD4CZ8L04ST1203 | 30% | 2d | 2026-10-28 | 2026-10-29 | Unskilled Labor [11.2 h]; Plumber [5.55 h]; GRP (700mm Diameter) - ST - Depth less than 1.5 m [92.52 m]; GRP (700mm Diameter) - ST - Depth: 1.51m - 2.5m | 51,256.08 |  | L04 | Z8 | CONS | ST | Installation | bef |
| RHD4CZ8L04ST1403 |  | Primary Test for GRP Pipe Line 700 mm - (RD-L-04)-Z8-L04-ST | 2d | 2027-03-07 | 2027-03-08 | RHD4CZ8L04ST1303 |  |  |  |  | Unskilled Labor [5.55 h]; Plumber [5.55 h]; Equipment Opreator [5.55 h]; Water Truck [5.55 h]; GRP (700mm Diameter) - ST - Depth less than 1.5 m [41.12 m]; GRP (700mm Diameter) - ST - Depth: 1.51m - 2.5m | 22,780.48 |  | L04 | Z8 | CONS | ST | Primary Test | bef |
| RHD4CZ8L04ST1503 |  | Backfilling and warning tape works for GRP Pipe Line 700 mm - (RD-L-04)-Z8-L04-ST | 2d | 2027-03-13 | 2027-03-14 | RHD4CZ8L04ST1403 |  |  |  |  | Skilled labor [11.2 h]; Unskilled Labor [22.4 h]; Equipment Opreator [22.4 h]; Excavator-Poclain [11.2 h]; Dump Truck [11.2 h]; GRP (700mm Diameter) - ST - Depth less than 1.5 m [41.12 m]; GRP (700mm Diameter) - ST - Depth: 1.51m - 2.5m | 22,780.48 |  | L04 | Z8 | CONS | ST | Backfilling | bef |

| ID | WBS | Activity | Duration | Start | Finish | Predecessors | Complete | Remaining | Planned start | Planned finish | Resources | Cost | Actual cost | RDH4-01-001-Road and Block Names-1 | RDH4-01-001-Zones-1 | RDH4-01-001-Phases-1 | RDH4-01-001-Networks-1 | RDH4-01-001-Work Method-1 | RDH4-01-001-MENEM |
| --- | --- | --- | --- | --- | --- | --- | --- | --- | --- | --- | --- | --- | --- | --- | --- | --- | --- | --- | --- |
|  | 3737 | **RHD4-02-002-L04-(ST)-GRP Pipes - 500 mm diameter** |  | 2026-09-15 | 2027-03-16 |  |  |  |  |  |  |  |  |  |  |  |  |  |  |
| RHD4CZ8L04ST1101 |  | Excavation works for GRP Pipe Line 500 mm - (RD-L-04)-Z8-L04-ST | 2d | 2026-09-15 A | 2026-09-16 A | RHD4CZ8L04ST1102 | 100% |  | 2026-10-28 | 2026-10-29 | Skilled labor [5.12 h]; Unskilled Labor [5.12 h]; Equipment Opreator [6.21 h]; Excavator-Poclain [5.12 h]; Dump Truck [0.98 h]; GRP (500mm Diameter) - ST - Depth less than 1.5 m [11.78 m] | 4,181.9 | 4,181.9 | L04 | Z8 | CONS | ST | Excavation | bef |
| RHD4CZ8L04ST1201 |  | Bedding works for GRP Pipe Line 500 mm - (RD-L-04)-Z8-L04-ST | 2d | 2027-03-02 | 2027-03-03 | RHD4CZ8L04ST1101 |  |  |  |  | Skilled labor [4.25 h]; Unskilled Labor [8.6 h]; Equipment Opreator [8.6 h]; Excavator-Poclain [4.25 h]; Dump Truck [4.25 h]; GRP (500mm Diameter) - ST - Depth less than 1.5 m [5.89 m] | 2,090.95 |  | L04 | Z8 | CONS | ST | Bedding | bef |
| RHD4CZ8L04ST1301 |  | Installing for GRP Pipe Line 500 mm - (RD-L-04)-Z8-L04-ST | 2d | 2027-03-07 | 2027-03-08 | RHD4CZ8L04ST1201, RHD4CZ8L04ST1303 |  |  |  |  | Unskilled Labor [17.1 h]; Plumber [8.6 h]; GRP (500mm Diameter) - ST - Depth less than 1.5 m [53.01 m] | 18,818.55 |  | L04 | Z8 | CONS | ST | Installation | bef |
| RHD4CZ8L04ST1401 |  | Primary Test for GRP Pipe Line 500 mm - (RD-L-04)-Z8-L04-ST | 2d | 2027-03-13 | 2027-03-14 | RHD4CZ8L04ST1301 |  |  |  |  | Unskilled Labor [2.61 h]; Plumber [2.61 h]; Equipment Opreator [2.61 h]; Water Truck [2.61 h]; GRP (500mm Diameter) - ST - Depth less than 1.5 m [23.56 m] | 8,363.8 |  | L04 | Z8 | CONS | ST | Primary Test | bef |
| RHD4CZ8L04ST1501 |  | Backfilling and warning tape works for GRP Pipe Line 500 mm - (RD-L-04)-Z8-L04-ST | 2d | 2027-03-15 | 2027-03-16 | RHD4CZ8L04ST1401, RHD4CZ8L04ST1503 |  |  |  |  | Skilled labor [6.4 h]; Unskilled Labor [12.85 h]; Equipment Opreator [12.85 h]; Excavator-Poclain [6.4 h]; Dump Truck [6.4 h]; GRP (500mm Diameter) - ST - Depth less than 1.5 m [23.56 m] | 8,363.8 |  | L04 | Z8 | CONS | ST | Backfilling | bef |
|  | 7347 | **RHD4-02-002-L04-(ST)-MH Works - 1500 mm diameter** |  | 2026-09-19 | 2027-06-21 |  |  |  |  |  |  |  |  |  |  |  |  |  |  |
| RHD4CZ8L04ST3101 |  | Excavation and PC Blinding works for MH 1500 mm - (RD-L-04)-Z8-L04-ST | 6d | 2026-09-19 A | 2026-09-23 A | RHD4ENSDZ8APPST110, RHD4ENMSST2000, RHD4CZ8L04ST1501, RHD4CZ8L04ST3102, RHD4CZ8L04ST3102 FF | 100% |  | 2026-12-02 | 2026-12-08 | Skilled labor [65.34 h]; Unskilled Labor [65.34 h]; Equipment Opreator [104.55 h]; Excavator-Poclain [65.34 h]; Water Truck [6.53 h]; Dump Truck [32.67 h]; MH (1500mm Diameter) - ST - depth 1.50 - 2.5m [3 nr] | 43,758 | 43,758 | L04 | Z8 | CONS | ST | Excavation | bef |
| RHD4CZ8L04ST3201 |  | Installation of Base for MH 1500 mm - (RD-L-04)-Z8-L04-ST | 6d | 2026-09-21 A | 2027-04-27 | RHD4PRSHLSTAGST1607, RHD4CZ8L04ST3101 | 75% | 3d | 2026-12-09 | 2026-12-15 | Skilled labor [65.34 h]; Unskilled Labor [65.34 h]; Equipment Opreator [26.14 h]; Boom Truck [13.07 h]; Concrete Mixer Truck [13.07 h]; MH (1500mm Diameter) - ST - depth 1.50 - 2.5m [3 nr] | 43,758 | 32,818.5 | L04 | Z8 | CONS | ST | Installing Base | bef |
| RHD4CZ8L04ST3301 |  | MH Ring and C.Slab works and Backfilling works for MH 1500 mm - (RD-L-04)-Z8-L04-ST | 6d | 2027-04-28 | 2027-05-04 | RHD4PRSHLDOSST1607, RHD4CZ8L04ST3201 |  |  |  |  | Skilled labor [65.34 h]; Unskilled Labor [65.34 h]; Equipment Opreator [45.74 h]; Boom Truck [26.14 h]; Concrete Mixer Truck [19.6 h]; MH (1500mm Diameter) - ST - depth 1.50 - 2.5m [4.2 nr] | 61,261.2 |  | L04 | Z8 | CONS | ST | Installing Rings | bef |
| RHD4CZ8L04ST3401 |  | Steel Cover for MH 1500 mm - (RD-L-04)-Z8-L04-ST | 4d | 2027-05-05 | 2027-05-09 | RHD4PRSHLDOSST1707, RHD4PRSHLSTAGST1707, RHD4CZ8L04ST3301, RHD4CZ8L04ST3402 |  |  |  |  | Skilled labor [43.56 h]; Unskilled Labor [87.12 h]; Equipment Opreator [8.71 h]; Boom Truck [8.71 h]; MH (1500mm Diameter) - ST - depth 1.50 - 2.5m [0.6 nr] | 8,751.6 |  | L04 | Z8 | CONS | ST | Steel Cover | bef |
| RHD4CZ8L04ST3501 |  | Finishing, Benching, Testing works for MH 1500 mm - (RD-L-04)-Z8-L04-ST | 6d | 2027-06-15 | 2027-06-21 | RHD4CZ8L04ST3500, RHD4CZ8L04ST3401, RHD4CZ8L04ST2500 |  |  |  |  | Skilled labor [65.34 h]; Unskilled Labor [130.68 h]; Plumber [65.34 h]; Equipment Opreator [13.07 h]; Water Truck [13.07 h]; MH (1500mm Diameter) - ST - depth 1.50 - 2.5m [1.2 nr] | 17,503.2 |  | L04 | Z8 | CONS | ST | Benching | bef |
|  | 7337 | **RHD4-02-002-L04-(ST)-GRP Pipes - 1100 mm diameter** |  |  |  |  |  |  |  |  |  |  |  |  |  |  |  |  |  |
|  | 7336 | **RHD4-02-002-L04-(ST)-GRP Pipes - 1000 mm diameter** |  |  |  |  |  |  |  |  |  |  |  |  |  |  |  |  |  |
|  | 7335 | **RHD4-02-002-L04-(ST)-GRP Pipes - 900 mm diameter** |  | 2026-08-27 | 2027-03-03 |  |  |  |  |  |  |  |  |  |  |  |  |  |  |
| RHD4CZ8L04ST1105 |  | Excavation works for GRP Pipe Line 900 mm - (RD-L-04)-Z8-L04-ST | 2d | 2026-08-27 A | 2026-08-29 A | RHD4ENSDZ8APPST110, RHD4CZ8L04ST1108 | 100% |  | 2026-10-19 | 2026-10-20 | Skilled labor [7.2 h]; Unskilled Labor [7.2 h]; Equipment Opreator [8.6 h]; Excavator-Poclain [7.2 h]; Dump Truck [1.42 h]; GRP (900mm Diameter) - ST - Depth less than 1.5 m [7.4 m]; GRP (900mm Diameter) - ST - Depth: 1.51m - 2.5m [8.74 m] | 12,508.38 | 12,508.38 | L04 | Z8 | CONS | ST | Excavation | bef |
| RHD4CZ8L04ST1205 |  | Bedding works for GRP Pipe Line 900 mm - (RD-L-04)-Z8-L04-ST | 2d | 2026-09-15 A | 2026-09-16 A | RHD4CZ8L04ST1105 | 100% |  | 2026-10-21 | 2026-10-22 | Skilled labor [7.2 h]; Unskilled Labor [14.4 h]; Equipment Opreator [14.4 h]; Excavator-Poclain [7.2 h]; Dump Truck [7.2 h]; GRP (900mm Diameter) - ST - Depth less than 1.5 m [3.7 m]; GRP (900mm Diameter) - ST - Depth: 1.51m - 2.5m [2.91 m] | 5,090.57 | 5,090.57 | L04 | Z8 | CONS | ST | Bedding | bef |
| RHD4CZ8L04ST1305 |  | Installing for GRP Pipe Line 900 mm - (RD-L-04)-Z8-L04-ST | 2d | 2026-09-16 A | 2026-09-17 A | RHD4PRSHLSTAGST1007, RHD4CZ8L04ST1205, RHD4PRSHLDOSST1607, RHD4PRSHLPOST1000, RHD4PRSHLDOSST1007 | 100% |  | 2026-10-24 | 2026-10-25 | Unskilled Labor [9.6 h]; Plumber [4.8 h]; GRP (900mm Diameter) - ST - Depth less than 1.5 m [33.3 m]; GRP (900mm Diameter) - ST - Depth: 1.51m - 2.5m [23.3 m] | 43,511.8 | 43,511.8 | L04 | Z8 | CONS | ST | Installation | bef |
| RHD4CZ8L04ST1505 |  | Backfilling and warning tape works for GRP Pipe Line 900 mm - (RD-L-04)-Z8-L04-ST | 2d | 2026-09-17 A | 2026-09-19 A | RHD4CZ8L04ST1405 | 100% |  | 2026-10-28 | 2026-10-29 | Skilled labor [7.2 h]; Unskilled Labor [14.4 h]; Equipment Opreator [14.4 h]; Excavator-Poclain [7.2 h]; Dump Truck [7.2 h]; GRP (900mm Diameter) - ST - Depth less than 1.5 m [14.8 m]; GRP (900mm Diameter) - ST - Depth: 1.51m - 2.5m [11.65 m] | 20,370.25 | 20,370.25 | L04 | Z8 | CONS | ST | Backfilling | bef |
| RHD4CZ8L04ST1405 |  | Primary Test for GRP Pipe Line 900 mm - (RD-L-04)-Z8-L04-ST | 2d | 2027-03-02 | 2027-03-03 | RHD4CZ8L04ST1305 |  |  |  |  | Unskilled Labor [3.59 h]; Plumber [3.59 h]; Equipment Opreator [3.59 h]; Water Truck [3.59 h]; GRP (900mm Diameter) - ST - Depth less than 1.5 m [14.8 m]; GRP (900mm Diameter) - ST - Depth: 1.51m - 2.5m [11.65 m] | 20,370.25 |  | L04 | Z8 | CONS | ST | Primary Test | bef |
|  | 7334 | **RHD4-02-002-L04-(ST)-GRP Pipes - 800 mm diameter** |  | 2026-09-15 | 2027-03-06 |  |  |  |  |  |  |  |  |  |  |  |  |  |  |
| RHD4CZ8L04ST1104 |  | Excavation works for GRP Pipe Line 800 mm - (RD-L-04)-Z8-L04-ST | 2d | 2026-09-15 A | 2026-09-16 A | RHD4ENSDZ8APPST110, RHD4CZ8L04ST1105 | 100% |  | 2026-10-21 | 2026-10-22 | Skilled labor [12.31 h]; Unskilled Labor [12.31 h]; Equipment Opreator [14.7 h]; Excavator-Poclain [12.31 h]; Dump Truck [2.5 h]; GRP (800mm Diameter) - ST - Depth less than 1.5 m [22.57 m]; GRP (800mm Diameter) - ST - Depth: 1.51m - 2.5m | 14,738.21 | 14,738.21 | L04 | Z8 | CONS | ST | Excavation | bef |
| RHD4CZ8L04ST1204 |  | Bedding works for GRP Pipe Line 800 mm - (RD-L-04)-Z8-L04-ST | 2d | 2026-09-16 A | 2026-09-17 A | RHD4CZ8L04ST1104 | 100% |  | 2026-10-24 | 2026-10-25 | Skilled labor [12.31 h]; Unskilled Labor [24.61 h]; Equipment Opreator [24.61 h]; Excavator-Poclain [12.31 h]; Dump Truck [12.31 h]; GRP (800mm Diameter) - ST - Depth less than 1.5 m [11.28 m]; GRP (800mm Diameter) - ST - Depth: 1.51m - 2.5m | 7,365.84 | 7,365.84 | L04 | Z8 | CONS | ST | Bedding | bef |
| RHD4CZ8L04ST1304 |  | Installing for GRP Pipe Line 800 mm - (RD-L-04)-Z8-L04-ST | 2d | 2026-09-17 A | 2026-09-19 A | RHD4PRSHLSTAGST1007, RHD4CZ8L04ST1204, RHD4CZ8L04ST1305, RHD4PRSHLDOSST1607, RHD4PRSHLPOST1000, RHD4PRSHLDOSST1007 | 100% |  | 2026-10-26 | 2026-10-27 | Unskilled Labor [16.34 h]; Plumber [8.17 h]; GRP (800mm Diameter) - ST - Depth less than 1.5 m [101.55 m]; GRP (800mm Diameter) - ST - Depth: 1.51m - 2.5m | 66,312.15 | 66,312.15 | L04 | Z8 | CONS | ST | Installation | bef |
| RHD4CZ8L04ST1404 |  | Primary Test for GRP Pipe Line 800 mm - (RD-L-04)-Z8-L04-ST | 2d | 2027-03-02 | 2027-03-03 | RHD4CZ8L04ST1304 |  |  |  |  | Unskilled Labor [6.1 h]; Plumber [6.1 h]; Equipment Opreator [6.1 h]; Water Truck [6.1 h]; GRP (800mm Diameter) - ST - Depth less than 1.5 m [45.13 m]; GRP (800mm Diameter) - ST - Depth: 1.51m - 2.5m | 29,469.89 |  | L04 | Z8 | CONS | ST | Primary Test | bef |
| RHD4CZ8L04ST1504 |  | Backfilling and warning tape works for GRP Pipe Line 800 mm - (RD-L-04)-Z8-L04-ST | 2d | 2027-03-04 | 2027-03-06 | RHD4CZ8L04ST1404, RHD4CZ8L04ST1505 |  |  |  |  | Skilled labor [12.31 h]; Unskilled Labor [24.61 h]; Equipment Opreator [24.61 h]; Excavator-Poclain [12.31 h]; Dump Truck [12.31 h]; GRP (800mm Diameter) - ST - Depth less than 1.5 m [45.13 m]; GRP (800mm Diameter) - ST - Depth: 1.51m - 2.5m | 29,469.89 |  | L04 | Z8 | CONS | ST | Backfilling | bef |

| ID | WBS | Activity | Duration | Start | Finish | Predecessors | Complete | Planned start | Planned finish | Resources | Cost | Actual cost | RDH4-01-001-Road and Block Names-1 | RDH4-01-001-Zones-1 | RDH4-01-001-Phases-1 | RDH4-01-001-Networks-1 | RDH4-01-001-Work Method-1 | RDH4-01-001-MENEM |
| --- | --- | --- | --- | --- | --- | --- | --- | --- | --- | --- | --- | --- | --- | --- | --- | --- | --- | --- |
|  | 7344 | **RHD4-02-002-L04-(ST)-UPVC Pipes - 300 mm diameter** |  | 2027-03-15 | 2027-06-14 |  |  |  |  |  |  |  |  |  |  |  |  |  |
| RHD4CZ8L04ST2100 |  | Excavation works for UPVC Pipe Line 300 mm - (RD-L-04)-Z8-L04-ST | 2d | 2027-03-15 | 2027-03-16 | RHD4ENSDZ8APPST110, RHD4CZ8L04ST1100 |  |  |  | Skilled labor [11 h]; Unskilled Labor [11 h]; Equipment Opreator [13.29 h]; Excavator-Poclain [11 h]; Dump Truck [2.18 h]; UPVC (300mm Diameter) - ST - Depth less than 1.5 [25.35 m] | 7,681.05 |  | L04 | Z8 | CONS | ST | Excavation | bef |
| RHD4CZ8L04ST2200 |  | Bedding works for UPVC Pipe Line 300 mm - (RD-L-04)-Z8-L04-ST | 2d | 2027-03-17 | 2027-03-18 | RHD4CZ8L04ST2100 |  |  |  | Skilled labor [9.26 h]; Unskilled Labor [18.4 h]; Equipment Opreator [18.4 h]; Excavator-Poclain [9.26 h]; Dump Truck [9.26 h]; UPVC (300mm Diameter) - ST - Depth less than 1.5 [12.68 m] | 3,841.28 |  | L04 | Z8 | CONS | ST | Bedding | bef |
| RHD4CZ8L04ST2300 |  | Installing for UPVC Pipe Line 300 mm - (RD-L-04)-Z8-L04-ST | 2d | 2027-06-08 | 2027-06-09 | RHD4PRSHLDOSST1107, RHD4PRSHLSTAGST1107, RHD4CZ8L04ST2200, RHD4CZ8L04ST7300 |  |  |  | Unskilled Labor [22.11 h]; Plumber [11 h]; UPVC (300mm Diameter) - ST - Depth less than 1.5 [114.1 m] | 34,572.3 |  | L04 | Z8 | CONS | ST | Installation | bef |
| RHD4CZ8L04ST2400 |  | Primary Test for UPVC Pipe Line 300 mm - (RD-L-04)-Z8-L04-ST | 2d | 2027-06-10 | 2027-06-12 | RHD4CZ8L04ST2300 |  |  |  | Unskilled Labor [5.55 h]; Plumber [5.55 h]; Equipment Opreator [5.55 h]; Water Truck [5.55 h]; UPVC (300mm Diameter) - ST - Depth less than 1.5 [50.71 m] | 15,365.13 |  | L04 | Z8 | CONS | ST | Primary Test | bef |
| RHD4CZ8L04ST2500 |  | Backfilling and warning tape works for UPVC Pipe Line 300 mm - (RD-L-04)-Z8-L04-ST | 2d | 2027-06-13 | 2027-06-14 | RHD4CZ8L04ST2400, RHD4CZ8L04ST6100 |  |  |  | Skilled labor [13.83 h]; Unskilled Labor [27.66 h]; Equipment Opreator [27.66 h]; Excavator-Poclain [13.83 h]; Dump Truck [13.83 h]; UPVC (300mm Diameter) - ST - Depth less than 1.5 [50.71 m] | 15,365.13 |  | L04 | Z8 | CONS | ST | Backfilling | bef |
|  | 7352 | **RHD4-02-002-L04-(ST)-Concrete Encasement** |  | 2027-06-08 | 2027-06-09 |  |  |  |  |  |  |  |  |  |  |  |  |  |
| RHD4CZ8L04ST6100 |  | Pipe Encasement for Storm Pipelines - (RD-L-04)-Z8-L04-ST | 2d | 2027-06-08 | 2027-06-09 | RHD4CZ8L04ST2300 SS, RHD4CZ8L04ST2300 FF, RHD4CZ8L04ST2200 |  |  |  | Skilled labor [2.61 h]; Unskilled Labor [2.61 h]; Equipment Opreator [2.83 h]; Concrete Mixer Truck [0.22 h]; Dump Truck [2.61 h]; Pipe Encasement - ST [48.06 m3] | 24,318.36 |  | L04 | Z8 | CONS | ST | Pipe Encasement | bef |
|  | 7353 | **RHD4-02-002-Z8-L04-Catch Basin - ST** |  | 2027-06-01 | 2027-07-29 |  |  |  |  |  |  |  |  |  |  |  |  |  |
|  | 7354 | **RHD4-02-002-L04-(ST)-Single Catch Basin Works** |  | 2027-06-01 | 2027-07-29 |  |  |  |  |  |  |  |  |  |  |  |  |  |
| RHD4CZ8L04ST7100 |  | Excavation works for Single Catch Basin - (RD-L-04)-Z8-L04-ST | 2d | 2027-06-01 | 2027-06-02 | RHD4ENSDZ8APPST110, RHD4CZ8L04ST3300 |  |  |  | Skilled labor [15.25 h]; Unskilled Labor [30.49 h]; Equipment Opreator [22.87 h]; Excavator-Poclain [15.25 h]; Dump Truck [7.62 h]; Single Catch basin - ST [3.5 nr] | 13,058.5 |  | L04 | Z8 | CONS | ST | Excavation | bef |
| RHD4CZ8L04ST7200 |  | PC Blinding, Installation and Pipe connection for Single Catch Basin - (RD-L-04)-Z8-L04-ST | 2d | 2027-06-03 | 2027-06-05 | RHD4CZ8L04ST7100 |  |  |  | Skilled labor [15.25 h]; Unskilled Labor [30.49 h]; Plumber [7.62 h]; Equipment Opreator [3.05 h]; Boom Truck [3.05 h]; Single Catch basin - ST [2.8 nr] | 10,446.8 |  | L04 | Z8 | CONS | ST | Installation & Pipe Connection | bef |
| RHD4CZ8L04ST7300 |  | Rings & C.Slab & Final Backfill for Single Catch Basin - (RD-L-04)-Z8-L04-ST | 2d | 2027-06-06 | 2027-06-07 | RHD4PRSHLDOSST1307, RHD4PRSHLSTAGST1307, RHD4CZ8L04ST7200 |  |  |  | Skilled labor [19.06 h]; Unskilled Labor [38.12 h]; Equipment Opreator [22.87 h]; Boom Truck [3.81 h]; Bobcat [19.06 h]; Single Catch basin - ST [4.9 nr] | 18,281.9 |  | L04 | Z8 | CONS | ST | Rings | bef |
| RHD4CZ8L04ST7400 |  | Steel Cover for Single Catch Basin - (RD-L-04)-Z8-L04-ST | 2d | 2027-07-25 | 2027-07-26 | RHD4PRSHLDOSST1707, RHD4CZ8L04ST7300, RHD4CZ8L04PT4300 |  |  |  | Skilled labor [15.25 h]; Unskilled Labor [15.25 h]; Equipment Opreator [3.05 h]; Boom Truck [3.05 h]; Single Catch basin - ST [0.7 nr] | 2,611.7 |  | L04 | Z8 | CONS | ST | Steel Cover | bef |
| RHD4CZ8L04ST7500 |  | Finishing and Insulation works for Single Catch Basin - (RD-L-04)-Z8-L04-ST | 3d | 2027-07-27 | 2027-07-29 | RHD4CZ8L04ST3501, RHD4CZ8L04ST7400 |  |  |  | Skilled labor [30.49 h]; Unskilled Labor [60.99 h]; Equipment Opreator [6.1 h]; Boom Truck [6.1 h]; Single Catch basin - ST [2.1 nr] | 7,835.1 |  | L04 | Z8 | CONS | ST | Insulation | bef |
|  | 6409 | **RHD4-02-002-L016-(ST)-Double Catch Basin Works** |  | 2027-06-03 | 2027-06-14 |  |  |  |  |  |  |  |  |  |  |  |  |  |
| RHD4CZ8L04ST8100 |  | Excavation works for Double Catch Basin - (RD-L-16)-Z5-L016-ST | 2d | 2027-06-03 | 2027-06-05 | RHD4CZ8L04ST7100 |  |  |  | Skilled labor [2.18 h]; Unskilled Labor [4.36 h]; Equipment Opreator [3.27 h]; Excavator-Poclain [2.18 h]; Dump Truck [1.09 h]; Double Catch basin - ST [0.25 nr] | 3,491.5 |  | L04 | Z8 | CONS | ST | Excavation | bef |
| RHD4CZ8L04ST8200 |  | PC Blinding, Installation and Pipe connection for Double Catch Basin - (RD-L-16)-Z5-L016-ST | 2d | 2027-06-06 | 2027-06-07 | RHD4CZ8L04ST8100 |  |  |  | Skilled labor [2.18 h]; Unskilled Labor [4.36 h]; Plumber [1.09 h]; Equipment Opreator [0.44 h]; Boom Truck [0.44 h]; Double Catch basin - ST [0.2 nr] | 2,793.2 |  | L04 | Z8 | CONS | ST | Installation & Pipe Connection | bef |
| RHD4CZ8L04ST8300 |  | Rings & C.Slab & Final Backfillfor Double Catch Basin - (RD-L-16)-Z5-L016-ST | 2d | 2027-06-08 | 2027-06-09 | RHD4CZ8L04ST8200 |  |  |  | Skilled labor [2.72 h]; Unskilled Labor [5.45 h]; Equipment Opreator [3.27 h]; Boom Truck [0.54 h]; Bobcat [2.72 h]; Double Catch basin - ST [0.35 nr] | 4,888.1 |  | L04 | Z8 | CONS | ST | Rings | bef |
| RHD4CZ8L04ST8400 |  | Steel Cover for Double Catch Basin - (RD-L-16)-Z5-L016-ST | 2d | 2027-06-10 | 2027-06-12 | RHD4CZ8L04ST8300 |  |  |  | Skilled labor [2.18 h]; Unskilled Labor [2.18 h]; Equipment Opreator [0.44 h]; Boom Truck [0.44 h]; Double Catch basin - ST [0.05 nr] | 698.3 |  | L04 | Z8 | CONS | ST | Steel Cover | bef |
| RHD4CZ8L04ST8500 |  | Finishing and Insulation works for Double Catch Basin - (RD-L-16)-Z5-L016-ST | 2d | 2027-06-13 | 2027-06-14 | RHD4CZ8L04ST8400 |  |  |  | Skilled labor [5.45 h]; Unskilled Labor [10.89 h]; Equipment Opreator [1.09 h]; Boom Truck [1.09 h]; Double Catch basin - ST [0.15 nr] | 2,094.9 |  | L04 | Z8 | CONS | ST | Insulation | bef |
|  | 7378 | **RHD4-02-002-Z8-L04-Sewage Network - SW** |  | 2026-09-15 | 2027-07-05 |  |  |  |  |  |  |  |  |  |  |  |  |  |
|  | 7383 | **RHD4-02-002-L04-(SW)-GRP Pipes - 700 mm diameter** |  |  |  |  |  |  |  |  |  |  |  |  |  |  |  |  |
|  | 957 | **RHD4-02-002-L04-(SW)-MH Works - 1200 mm diameter with Back drop** |  | 2026-09-17 | 2027-06-26 |  |  |  |  |  |  |  |  |  |  |  |  |  |
| RHD4CZ8L04SW3101 |  | Excavation and PC Blinding works for MH 1200 mm - (RD-L-04)-Z8-L04-SW | 2d | 2026-09-17 A | 2026-09-19 A | RHD4CZ8L04ST8500, RHD4CZ8L04SW2300 | 100% | 2027-01-11 | 2027-01-12 | Skilled labor [16.34 h]; Unskilled Labor [16.34 h]; Equipment Opreator [26.14 h]; Excavator-Poclain [16.34 h]; Water Truck [1.6 h]; Dump Truck [8.17 h]; MH (1200mm Diameter) - SW - depth 2.51- 3.5 m with back drop [0.5 nr]; MH (1200mm Diameter) - SW - depth 3.51 -4.5 m with back drop [0.25 nr] | 12,417.25 | 12,417.25 | L04 | Z8 | CONS | SW | Excavation | bef |
| RHD4CZ8L04SW3201 |  | Installation of Base for MH 1200 mm - (RD-L-04)-Z8-L04-SW | 2d | 2027-06-17 | 2027-06-19 | RHD4CZ8L04SW3101 |  |  |  | Skilled labor [21.78 h]; Unskilled Labor [21.78 h]; Equipment Opreator [8.71 h]; Boom Truck [4.36 h]; Concrete Mixer Truck [4.36 h]; MH (1200mm Diameter) - SW - depth 2.51- 3.5 m with back drop [0.5 nr]; MH (1200mm Diameter) - SW - depth 3.51 -4.5 m with back drop [0.25 nr] | 12,417.25 |  | L04 | Z8 | CONS | SW | Installing Base | bef |
| RHD4CZ8L04SW3301 |  | MH Ring and C.Slab works and Backfilling works for MH 1200 mm - (RD-L-04)-Z8-L04-SW | 2d | 2027-06-20 | 2027-06-21 | RHD4CZ8L04SW3201 |  |  |  | Skilled labor [21.78 h]; Unskilled Labor [21.78 h]; Equipment Opreator [15.25 h]; Boom Truck [8.71 h]; Concrete Mixer Truck [6.53 h]; MH (1200mm Diameter) - SW - depth 2.51- 3.5 m with back drop [0.7 nr]; MH (1200mm Diameter) - SW - depth 3.51 -4.5 m with back drop [0.35 nr] | 17,384.15 |  | L04 | Z8 | CONS | SW | Installing Rings | bef |
| RHD4CZ8L04SW3401 |  | Steel Cover for MH 1200 mm - (RD-L-04)-Z8-L04-SW | 2d | 2027-06-22 | 2027-06-23 | RHD4CZ8L04SW3301 |  |  |  | Skilled labor [10.89 h]; Unskilled Labor [21.78 h]; Equipment Opreator [2.18 h]; Boom Truck [2.18 h]; MH (1200mm Diameter) - SW - depth 2.51- 3.5 m with back drop [0.1 nr]; MH (1200mm Diameter) - SW - depth 3.51 -4.5 m with back drop [0.05 nr] | 2,483.45 |  | L04 | Z8 | CONS | SW | Steel Cover | bef |
| RHD4CZ8L04SW3501 |  | Finishing, Benching, Testing works for MH 1200 mm - (RD-L-04)-Z8-L04-SW | 2d | 2027-06-24 | 2027-06-26 | RHD4CZ8L04SW3401 |  |  |  | Skilled labor [21.78 h]; Unskilled Labor [43.56 h]; Plumber [21.78 h]; Equipment Opreator [4.36 h]; Water Truck [4.36 h]; MH (1200mm Diameter) - SW - depth 2.51- 3.5 m with back drop [0.2 nr]; MH (1200mm Diameter) - SW - depth 3.51 -4.5 m with back drop [0.1 nr] | 4,966.9 |  | L04 | Z8 | CONS | SW | Benching | bef |

| ID | WBS | Activity | Duration | Start | Finish | Predecessors | Complete | Remaining | Planned start | Planned finish | Resources | Cost | Actual cost | RDH4-01-001-Road and Block Names-1 | RDH4-01-001-Zones-1 | RDH4-01-001-Phases-1 | RDH4-01-001-Networks-1 | RDH4-01-001-Work Method-1 | RDH4-01-001-MENEM |
| --- | --- | --- | --- | --- | --- | --- | --- | --- | --- | --- | --- | --- | --- | --- | --- | --- | --- | --- | --- |
|  | 3794 | **RHD4-02-002-L04-(SW)-MH Works - 1200 mm diameter** |  | 2026-09-15 | 2027-07-05 |  |  |  |  |  |  |  |  |  |  |  |  |  |  |
| RHD4CZ8L04SW3100 |  | Excavation and PC Blinding works for MH 1200 mm - (RD-L-04)-Z8-L04-SW | 3d | 2026-09-15 A | 2026-09-17 A | RHD4CZ8L04SW3101 | 100% |  | 2027-01-13 | 2027-01-16 | Skilled labor [141.6 h]; Unskilled Labor [141.6 h]; Equipment Opreator [226.52 h]; Excavator-Poclain [141.6 h]; Water Truck [14.16 h]; Dump Truck [70.79 h]; MH (1200mm Diameter) - SW - depth 1.51 - 2.5m [6.25 nr]; MH (1200mm Diameter) - SW - depth 2.51 - 3.5m [0.25 nr] | 62,556.5 | 62,556.5 | L04 | Z8 | CONS | SW | Excavation | bef |
| RHD4CZ8L04SW3200 |  | Installation of Base for MH 1200 mm - (RD-L-04)-Z8-L04-SW | 4d | 2027-06-17 | 2027-06-21 | RHD4CZ8L04SW3100 |  |  |  |  | Skilled labor [147.02 h]; Unskilled Labor [147.02 h]; Equipment Opreator [58.81 h]; Boom Truck [29.4 h]; Concrete Mixer Truck [29.4 h]; MH (1200mm Diameter) - SW - depth 1.51 - 2.5m [6.25 nr]; MH (1200mm Diameter) - SW - depth 2.51 - 3.5m [0.25 nr] | 62,556.5 |  | L04 | Z8 | CONS | SW | Installing Base | bef |
| RHD4CZ8L04SW3300 |  | MH Ring and C.Slab works and Backfilling works for MH 1200 mm - (RD-L-04)-Z8-L04-SW | 4d | 2027-06-22 | 2027-06-26 | RHD4CZ8L04SW3200 |  |  |  |  | Skilled labor [147.02 h]; Unskilled Labor [147.02 h]; Equipment Opreator [102.91 h]; Boom Truck [58.81 h]; Concrete Mixer Truck [44.11 h]; MH (1200mm Diameter) - SW - depth 1.51 - 2.5m [8.75 nr]; MH (1200mm Diameter) - SW - depth 2.51 - 3.5m [0.35 nr] | 87,579.1 |  | L04 | Z8 | CONS | SW | Installing Rings | bef |
| RHD4CZ8L04SW3400 |  | Steel Cover for MH 1200 mm - (RD-L-04)-Z8-L04-SW | 4d | 2027-06-27 | 2027-06-30 | RHD4CZ8L04SW3300 |  |  |  |  | Skilled labor [94.4 h]; Unskilled Labor [188.73 h]; Equipment Opreator [18.84 h]; Boom Truck [18.84 h]; MH (1200mm Diameter) - SW - depth 1.51 - 2.5m [1.25 nr]; MH (1200mm Diameter) - SW - depth 2.51 - 3.5m [0.05 nr] | 12,511.3 |  | L04 | Z8 | CONS | SW | Steel Cover | bef |
| RHD4CZ8L04SW3500 |  | Finishing, Benching, Testing works for MH 1200 mm - (RD-L-04)-Z8-L04-SW | 4d | 2027-07-01 | 2027-07-05 | RHD4CZ8L04SW3400 |  |  |  |  | Skilled labor [147.02 h]; Unskilled Labor [294.04 h]; Plumber [147.02 h]; Equipment Opreator [29.4 h]; Water Truck [29.4 h]; MH (1200mm Diameter) - SW - depth 1.51 - 2.5m [2.5 nr]; MH (1200mm Diameter) - SW - depth 2.51 - 3.5m [0.1 nr] | 25,022.6 |  | L04 | Z8 | CONS | SW | Benching | bef |
|  | 3785 | **RHD4-02-002-L04-(SW)-GRP Pipes - 300 mm diameter** |  | 2026-09-15 | 2027-06-21 |  |  |  |  |  |  |  |  |  |  |  |  |  |  |
| RHD4CZ8L04SW1100 |  | Excavation works for GRP Pipe Line 300 mm - (RD-L-04)-Z8-L04-SW | 2d | 2026-09-15 A | 2027-06-12 | RHD4CZ8L04ST6100, RHD4CZ8L04ST2100 | 42% | 2d | 2027-01-02 | 2027-01-03 | Skilled labor [12.41 h]; Unskilled Labor [12.41 h]; Equipment Opreator [14.92 h]; Excavator-Poclain [12.41 h]; Dump Truck [2.5 h]; GRP (300mm Diameter) - SW - Depth: 1.51m - 2.5m [14.34 m]; GRP (300mm Diameter) - SW - Depth: 2.51m - 3.5m; GRP (300mm Diameter) - SW - Depth: 3.51m - 4.5m [12.6 m] | 11,491.02 | 4,775.22 | L04 | Z8 | CONS | SW | Excavation | bef |
| RHD4CZ8L04SW1200 |  | Bedding works for GRP Pipe Line 300 mm - (RD-L-04)-Z8-L04-SW | 2d | 2026-10-27 A | 2027-06-14 | RHD4CZ8L04SW1100 | 42% | 2d | 2026-10-27 | 2026-10-28 | Skilled labor [12.41 h]; Unskilled Labor [24.94 h]; Equipment Opreator [24.94 h]; Excavator-Poclain [12.41 h]; Dump Truck [12.41 h]; GRP (300mm Diameter) - SW - Depth: 1.51m - 2.5m [4.78 m]; GRP (300mm Diameter) - SW - Depth: 2.51m - 3.5m; GRP (300mm Diameter) - SW - Depth: 3.51m - 4.5m [4.2 m] | 3,830.34 | 1,591.74 | L04 | Z8 | CONS | SW | Bedding | bef |
| RHD4CZ8L04SW1300 |  | Installing for GRP Pipe Line 300 mm - (RD-L-04)-Z8-L04-SW | 2d | 2026-10-29 A | 2027-06-16 | RHD4CZ8L04SW1200 | 42% | 2d | 2026-10-29 | 2026-10-31 | Unskilled Labor [24.94 h]; Plumber [12.41 h]; Equipment Opreator [12.41 h]; Boom Truck [12.41 h]; GRP (300mm Diameter) - SW - Depth: 1.51m - 2.5m [38.25 m]; GRP (300mm Diameter) - SW - Depth: 2.51m - 3.5m; GRP (300mm Diameter) - SW - Depth: 3.51m - 4.5m [33.59 m] | 30,640.72 | 12,737.25 | L04 | Z8 | CONS | SW | Installation | bef |
| RHD4CZ8L04SW1400 |  | Primary Test for GRP Pipe Line 300 mm - (RD-L-04)-Z8-L04-SW | 2d | 2027-06-17 | 2027-06-19 | RHD4CZ8L04SW1300 |  |  |  |  | Unskilled Labor [12.41 h]; Plumber [12.41 h]; Equipment Opreator [12.41 h]; Water Truck [12.41 h]; GRP (300mm Diameter) - SW - Depth: 1.51m - 2.5m [19.13 m]; GRP (300mm Diameter) - SW - Depth: 2.51m - 3.5m; GRP (300mm Diameter) - SW - Depth: 3.51m - 4.5m [16.8 m] | 15,324.69 |  | L04 | Z8 | CONS | SW | Primary Test | bef |
| RHD4CZ8L04SW1500 |  | Backfilling and warning tape works for GRP Pipe Line 300 mm - (RD-L-04)-Z8-L04-SW | 2d | 2027-06-20 | 2027-06-21 | RHD4CZ8L04SW1400 |  |  |  |  | Skilled labor [12.41 h]; Unskilled Labor [24.94 h]; Equipment Opreator [24.94 h]; Excavator-Poclain [12.41 h]; Dump Truck [12.41 h]; GRP (300mm Diameter) - SW - Depth: 1.51m - 2.5m [19.13 m]; GRP (300mm Diameter) - SW - Depth: 2.51m - 3.5m; GRP (300mm Diameter) - SW - Depth: 3.51m - 4.5m [16.8 m] | 15,324.69 |  | L04 | Z8 | CONS | SW | Backfilling | bef |
|  | 3790 | **RHD4-02-002-L04-(SW)-UPVC Pipes - 200 mm diameter** |  | 2026-09-15 | 2027-06-29 |  |  |  |  |  |  |  |  |  |  |  |  |  |  |
| RHD4CZ8L04SW2100 |  | Excavation works for UPVC Pipe Line 200 mm - (RD-L-04)-Z8-L04-SW | 2d | 2026-09-15 A | 2026-09-17 A | RHD4CZ8L04SW1100 | 100% |  | 2027-01-04 | 2027-01-05 | Skilled labor [52.6 h]; Unskilled Labor [52.6 h]; Equipment Opreator [63.2 h]; Excavator-Poclain [52.6 h]; Dump Truck [10.56 h]; UPVC (200mm Diameter) - SW - Depth: less than 1.5m [94.71 m]; UPVC (200mm Diameter) - SW - Depth: 1.51m - 2.5m [23.08 m] | 22,056.16 | 22,056.16 | L04 | Z8 | CONS | SW | Excavation | bef |
| RHD4CZ8L04SW2200 |  | Bedding works for UPVC Pipe Line 200 mm - (RD-L-04)-Z8-L04-SW | 2d | 2026-09-16 A | 2026-09-19 A | RHD4CZ8L04SW2100, RHD4CZ8L04SW1200 | 100% |  | 2027-01-06 | 2027-01-07 | Skilled labor [47.81 h]; Unskilled Labor [95.51 h]; Equipment Opreator [95.51 h]; Excavator-Poclain [47.81 h]; Dump Truck [47.81 h]; UPVC (200mm Diameter) - SW - Depth: less than 1.5m [47.35 m]; UPVC (200mm Diameter) - SW - Depth: 1.51m - 2.5m [7.69 m] | 10,191.73 | 10,191.73 | L04 | Z8 | CONS | SW | Bedding | bef |
| RHD4CZ8L04SW2300 |  | Installing for UPVC Pipe Line 200 mm - (RD-L-04)-Z8-L04-SW | 2d | 2026-09-17 A | 2026-10-27 A | RHD4CZ8L04SW2200, RHD4CZ8L04SW1300 | 100% |  | 2027-01-09 | 2027-01-10 | Unskilled Labor [144.19 h]; Plumber [72.09 h]; Equipment Opreator [72.09 h]; Boom Truck [72.09 h]; UPVC (200mm Diameter) - SW - Depth: less than 1.5m [426.19 m]; UPVC (200mm Diameter) - SW - Depth: 1.51m - 2.5m [61.53 m] | 90,066.21 | 90,066.21 | L04 | Z8 | CONS | SW | Installation | bef |
| RHD4CZ8L04SW2500 |  | Backfilling and warning tape works for UPVC Pipe Line 200 mm - (RD-L-04)-Z8-L04-SW | 6d | 2026-10-27 A | 2027-06-29 | RHD4CZ8L04SW2400, RHD4CZ8L04SW1500 | 29% | 6d | 2026-10-27 | 2026-11-02 | Skilled labor [59.9 h]; Unskilled Labor [119.9 h]; Equipment Opreator [119.9 h]; Excavator-Poclain [59.9 h]; Dump Truck [59.9 h]; UPVC (200mm Diameter) - SW - Depth: less than 1.5m [189.42 m]; UPVC (200mm Diameter) - SW - Depth: 1.51m - 2.5m [30.77 m] | 40,772.69 | 11,880 | L04 | Z8 | CONS | SW | Backfilling | bef |
| RHD4CZ8L04SW2400 |  | Primary Test for UPVC Pipe Line 200 mm - (RD-L-04)-Z8-L04-SW | 3d | 2027-06-20 | 2027-06-22 | RHD4CZ8L04SW2300, RHD4CZ8L04SW1400 |  |  |  |  | Unskilled Labor [30.28 h]; Plumber [30.28 h]; Equipment Opreator [30.28 h]; Water Truck [30.28 h]; UPVC (200mm Diameter) - SW - Depth: less than 1.5m [189.42 m]; UPVC (200mm Diameter) - SW - Depth: 1.51m - 2.5m [30.77 m] | 40,772.69 |  | L04 | Z8 | CONS | SW | Primary Test | bef |
|  | 7387 | **RHD4-02-002-L04-(SW)-Concrete Encasement** |  |  |  |  |  |  |  |  |  |  |  |  |  |  |  |  |  |
|  | 7415 | **RHD4-02-002-Z8-L04-Potable Network - PT** |  | 2027-06-21 | 2027-08-04 |  |  |  |  |  |  |  |  |  |  |  |  |  |  |
|  | 7417 | **RHD4-02-002-L04-(PT)-HDPE Pipes - 160 mm diameter** |  | 2027-06-21 | 2027-07-27 |  |  |  |  |  |  |  |  |  |  |  |  |  |  |
| RHD4CZ8L04PT1101 |  | Excavation works for HDPE Pipline 160 mm - (RD-L-04)-Z8-L04-PT | 6d | 2027-06-21 | 2027-06-27 | RHD4ENSDZ8APPPT130, RHD4ENMSPT2000, RHD4CZ8L04SW2100, RHD4CZ5L08IRR3202 |  |  |  |  | Skilled labor [62.29 h]; Unskilled Labor [62.29 h]; Equipment Opreator [74.71 h]; Excavator-Poclain [62.29 h]; Dump Truck [12.41 h]; HDPE (160mm Diameter) - PT - Depth: less than 1.5m [112.18 m]; HDPE (160mm Diameter) - PT - Depth: 1.51m - 2.5m [32.62 m] | 16,635.3 |  | L04 | Z8 | CONS | PT | Excavation | bef |
| RHD4CZ8L04PT1201 |  | Bedding works for HDPE Pipline 160 mm - (RD-L-04)-Z8-L04-PT | 6d | 2027-06-28 | 2027-07-04 | RHD4CZ8L04PT1101 |  |  |  |  | Skilled labor [55.2 h]; Unskilled Labor [110.4 h]; Equipment Opreator [110.4 h]; Excavator-Poclain [55.2 h]; Dump Truck [55.2 h]; HDPE (160mm Diameter) - PT - Depth: less than 1.5m [56.09 m]; HDPE (160mm Diameter) - PT - Depth: 1.51m - 2.5m [10.87 m] | 7,545.17 |  | L04 | Z8 | CONS | PT | Bedding | bef |
| RHD4CZ8L04PT1301 |  | Installing for HDPE Pipline 160 mm - (RD-L-04)-Z8-L04-PT | 9d | 2027-07-05 | 2027-07-14 | RHD4PRSHLDOSPT1000, RHD4PRSHLSTAGPT1000, RHD4CZ8L04PT1201 |  |  |  |  | Unskilled Labor [181.32 h]; Plumber [90.61 h]; Equipment Opreator [90.61 h]; Boom Truck [90.61 h]; HDPE (160mm Diameter) - PT - Depth: less than 1.5m [504.8 m]; HDPE (160mm Diameter) - PT - Depth: 1.51m - 2.5m [86.98 m] | 66,364.76 |  | L04 | Z8 | CONS | PT | Installation | bef |
| RHD4CZ8L04PT1401 |  | Primary Test for HDPE Pipline 160 mm - (RD-L-04)-Z8-L04-PT | 4d | 2027-07-15 | 2027-07-19 | RHD4CZ8L04PT1301 |  |  |  |  | Unskilled Labor [41.06 h]; Plumber [41.06 h]; Equipment Opreator [41.06 h]; Water Truck [41.06 h]; HDPE (160mm Diameter) - PT - Depth: less than 1.5m [224.36 m]; HDPE (160mm Diameter) - PT - Depth: 1.51m - 2.5m [43.49 m] | 30,182.1 |  | L04 | Z8 | CONS | PT | Primary Test | bef |
| RHD4CZ8L04PT1501 |  | Backfilling and warning tape works for HDPE Pipline 160 mm - (RD-L-04)-Z8-L04-PT | 7d | 2027-07-20 | 2027-07-27 | RHD4CZ8L04PT1401 |  |  |  |  | Skilled labor [72.97 h]; Unskilled Labor [145.82 h]; Equipment Opreator [145.82 h]; Excavator-Poclain [72.97 h]; Dump Truck [72.97 h]; HDPE (160mm Diameter) - PT - Depth: less than 1.5m [224.36 m]; HDPE (160mm Diameter) - PT - Depth: 1.51m - 2.5m [43.49 m] | 30,182.1 |  | L04 | Z8 | CONS | PT | Backfilling | bef |

| ID | WBS | Activity | Duration | Start | Finish | Predecessors | Resources | Cost | RDH4-01-001-Road and Block Names-1 | RDH4-01-001-Zones-1 | RDH4-01-001-Phases-1 | RDH4-01-001-Networks-1 | RDH4-01-001-Work Method-1 | RDH4-01-001-MENEM |
| --- | --- | --- | --- | --- | --- | --- | --- | --- | --- | --- | --- | --- | --- | --- |
|  | 6478 | **RHD4-02-002-L04-(PT)-Wash out Valve Chambers** |  | 2027-06-30 | 2027-07-08 |  |  |  |  |  |  |  |  |  |
| RHD4CZ8L04PT2101 |  | Excavation and Bedding for Wash out Valve Chambers for Potable Water Network - (RD-L-04)-Z8-L04-PT | 2d | 2027-06-30 | 2027-07-01 | RHD4CZ8L04PT1100 | Skilled labor [5.45 h]; Unskilled Labor [5.45 h]; Equipment Opreator [1.09 h]; Excavator-Poclain [0.54 h]; Dump Truck [0.54 h]; Wash out chambers - PT [0.25 nr] | 4,686.25 | L04 | Z8 | CONS | PT | Excavation and Bedding | bef |
| RHD4CZ8L04PT2201 |  | PC works for Wash out Valve Chambers for Potable Water Network - (RD-L-04)-Z8-L04-PT | 2d | 2027-07-03 | 2027-07-04 | RHD4CZ8L04PT2101 | Skilled labor [5.45 h]; Unskilled Labor [10.89 h]; Equipment Opreator [0.54 h]; Concrete Pump [0.54 h]; Wash out chambers - PT [0.1 nr] | 1,874.5 | L04 | Z8 | CONS | PT | PC Works | bef |
| RHD4CZ8L04PT2301 |  | Installation for Wash out Valve Chambers for Potable Water Network - (RD-L-04)-Z8-L04-PT | 2d | 2027-07-05 | 2027-07-06 | RHD4CZ8L04PT2201 | Skilled labor [5.45 h]; Unskilled Labor [10.89 h]; Equipment Opreator [1.09 h]; Boom Truck [1.09 h]; Wash out chambers - PT [0.55 nr] | 10,309.75 | L04 | Z8 | CONS | PT | Installation | bef |
| RHD4CZ8L04PT2401 |  | Backfilling works for Wash out Valve Chambers for Potable Water Network - (RD-L-04)-Z8-L04-PT | 2d | 2027-07-07 | 2027-07-08 | RHD4CZ8L04PT2301 | Skilled labor [5.45 h]; Unskilled Labor [10.89 h]; Equipment Opreator [1.09 h]; Water Truck [0.54 h]; Dump Truck [0.54 h]; Wash out chambers - PT [0.1 nr] | 1,874.5 | L04 | Z8 | CONS | PT | Backfilling Works | bef |
|  | 6479 | **RHD4-02-002-L04-(PT)-Wash out Valves** |  | 2027-07-07 | 2027-07-11 |  |  |  |  |  |  |  |  |  |
| RHD4CZ8L04PT3102 |  | Installation for Wash out Valves for Potable Water Network - (RD-L-04)-Z8-L04-PT | 2d | 2027-07-07 | 2027-07-08 | RHD4CZ8L04PT2301 | Unskilled Labor [5.45 h]; Plumber [5.45 h]; Wash out valve diameter 100 mm - PT [0.9 nr] | 3,373.2 | L04 | Z8 | CONS | PT | Installation | bef |
| RHD4CZ8L04PT3202 |  | Stem and Service box for Wash out Valves for Potable Water Network - (RD-L-04)-Z8-L04-PT | 2d | 2027-07-10 | 2027-07-11 | RHD4CZ8L04PT3102, RHD4CZ8L04PT2401 | Unskilled Labor [5.45 h]; Plumber [5.45 h]; Wash out valve diameter 100 mm - PT [0.1 nr] | 374.8 | L04 | Z8 | CONS | PT | Stem and Service box | bef |
|  | 6102 | **RHD4-02-002-L04-(PT)-Air Valve Chambers** |  | 2027-07-03 | 2027-07-11 |  |  |  |  |  |  |  |  |  |
| RHD4CZ8L04PT2102 |  | Excavation and Bedding for Air Valve Chambers for Potable Water Network - (RD-L-04)-Z8-L04-PT | 2d | 2027-07-03 | 2027-07-04 | RHD4CZ8L04PT2101 | Skilled labor [5.45 h]; Unskilled Labor [5.45 h]; Equipment Opreator [1.09 h]; Excavator-Poclain [0.54 h]; Dump Truck [0.54 h]; Air Valve chambers - PT [0.25 nr] | 1,193 | L04 | Z8 | CONS | PT | Excavation and Bedding | bef |
| RHD4CZ8L04PT2202 |  | PC works for Air Valve Chambers for Potable Water Network - (RD-L-04)-Z8-L04-PT | 2d | 2027-07-05 | 2027-07-06 | RHD4CZ8L04PT2102 | Skilled labor [5.45 h]; Unskilled Labor [10.89 h]; Equipment Opreator [0.54 h]; Concrete Pump [0.54 h]; Air Valve chambers - PT [0.1 nr] | 477.2 | L04 | Z8 | CONS | PT | PC Works | bef |
| RHD4CZ8L04PT2302 |  | Installation for Air Valve Chambers for Potable Water Network - (RD-L-04)-Z8-L04-PT | 2d | 2027-07-07 | 2027-07-08 | RHD4CZ8L04PT2202 | Skilled labor [5.45 h]; Unskilled Labor [10.89 h]; Equipment Opreator [1.09 h]; Boom Truck [1.09 h]; Air Valve chambers - PT [0.55 nr] | 2,624.6 | L04 | Z8 | CONS | PT | Installation | bef |
| RHD4CZ8L04PT2402 |  | Backfilling works for Air Valve Chambers for Potable Water Network - (RD-L-04)-Z8-L04-PT | 2d | 2027-07-10 | 2027-07-11 | RHD4CZ8L04PT2302 | Skilled labor [5.45 h]; Unskilled Labor [10.89 h]; Equipment Opreator [1.09 h]; Water Truck [0.54 h]; Dump Truck [0.54 h]; Air Valve chambers - PT [0.1 nr] | 477.2 | L04 | Z8 | CONS | PT | Backfilling Works | bef |
|  | 6103 | **RHD4-02-002-L04-(PT)-Air Valves** |  | 2027-07-10 | 2027-07-13 |  |  |  |  |  |  |  |  |  |
| RHD4CZ8L04PT3103 |  | Installation for Air Valves for Potable Water Network - (RD-L-04)-Z8-L04-PT | 2d | 2027-07-10 | 2027-07-11 | RHD4CZ8L04PT2302 | Unskilled Labor [5.45 h]; Plumber [5.45 h]; Air valve diameter 50 mm - PT [0.9 nr] | 4,427.1 | L04 | Z8 | CONS | PT | Installation | bef |
| RHD4CZ8L04PT3203 |  | Stem and Service box for Air Valves for Potable Water Network - (RD-L-04)-Z8-L04-PT | 2d | 2027-07-12 | 2027-07-13 | RHD4CZ8L04PT3103, RHD4CZ8L04PT2402, RHD4CZ8L04PT3202 | Unskilled Labor [5.45 h]; Plumber [5.45 h]; Air valve diameter 50 mm - PT [0.1 nr] | 491.9 | L04 | Z8 | CONS | PT | Stem and Service box | bef |
|  | 7416 | **RHD4-02-002-L04-(PT)-HDPE Pipes - 110 mm diameter** |  | 2027-06-28 | 2027-07-08 |  |  |  |  |  |  |  |  |  |
| RHD4CZ8L04PT1100 |  | Excavation works for HDPE Pipline 110 mm - (RD-L-04)-Z8-L04-PT | 2d | 2027-06-28 | 2027-06-29 | RHD4ENSDZ8APPPT130, RHD4ENMSPT2000, RHD4CZ8L04PT1101 | Skilled labor [5.45 h]; Unskilled Labor [5.45 h]; Equipment Opreator [6.53 h]; Excavator-Poclain [5.45 h]; Dump Truck [1.09 h]; HDPE (110mm Diameter) - PT - Depth: less than 1.5m [12.56 m] | 1,067.6 | L04 | Z8 | CONS | PT | Excavation | bef |
| RHD4CZ8L04PT1200 |  | Bedding works for HDPE Pipline 110 mm - (RD-L-04)-Z8-L04-PT | 2d | 2027-06-30 | 2027-07-01 | RHD4CZ8L04PT1100 | Skilled labor [4.57 h]; Unskilled Labor [9.15 h]; Equipment Opreator [9.15 h]; Excavator-Poclain [4.57 h]; Dump Truck [4.57 h]; HDPE (110mm Diameter) - PT - Depth: less than 1.5m [6.28 m] | 533.8 | L04 | Z8 | CONS | PT | Bedding | bef |
| RHD4CZ8L04PT1300 |  | Installing for HDPE Pipline 110 mm - (RD-L-04)-Z8-L04-PT | 2d | 2027-07-03 | 2027-07-04 | RHD4PRSHLDOSPT1000, RHD4PRSHLSTAGPT1000, RHD4CZ8L04PT1200, RHD4CZ9L02SW2500 | Unskilled Labor [18.19 h]; Plumber [9.15 h]; Equipment Opreator [9.15 h]; Boom Truck [9.15 h]; HDPE (110mm Diameter) - PT - Depth: less than 1.5m [56.52 m] | 4,804.2 | L04 | Z8 | CONS | PT | Installation | bef |
| RHD4CZ8L04PT1400 |  | Primary Test for HDPE Pipline 110 mm - (RD-L-04)-Z8-L04-PT | 2d | 2027-07-05 | 2027-07-06 | RHD4CZ8L04PT1300 | Unskilled Labor [2.72 h]; Plumber [2.72 h]; Equipment Opreator [2.72 h]; Water Truck [2.72 h]; HDPE (110mm Diameter) - PT - Depth: less than 1.5m [25.12 m] | 2,135.2 | L04 | Z8 | CONS | PT | Primary Test | bef |
| RHD4CZ8L04PT1500 |  | Backfilling and warning tape works for HDPE Pipline 110 mm - (RD-L-04)-Z8-L04-PT | 2d | 2027-07-07 | 2027-07-08 | RHD4CZ8L04PT1400 | Skilled labor [6.86 h]; Unskilled Labor [13.72 h]; Equipment Opreator [13.72 h]; Excavator-Poclain [6.86 h]; Dump Truck [6.86 h]; HDPE (110mm Diameter) - PT - Depth: less than 1.5m [25.12 m] | 2,135.2 | L04 | Z8 | CONS | PT | Backfilling | bef |
|  | 7421 | **RHD4-02-002-L04-(PT)-Gate Valves (Direct Buried)** |  | 2027-07-11 | 2027-08-01 |  |  |  |  |  |  |  |  |  |
| RHD4CZ8L04PT3100 |  | Installation for Direct Buried Gate Valves - (RD-L-04)-Z8-L04-PT | 4d | 2027-07-11 | 2027-07-14 | RHD4PRSHLDOSPT1200, RHD4PRSHLSTAGPT1200, RHD4CZ8L04PT1301 FF, RHD4CZ8L04PT1300 FF, RHD4CZ8L04PT1301 SS, RHD4CZ8L04PT1300 SS | Unskilled Labor [38.12 h]; Plumber [38.12 h]; Gate valves dia 100 mm - PT [3.6 nr]; Gate valves dia 150 mm - PT [2.7 nr] | 8,258.4 | L04 | Z8 | CONS | PT | Installation | bef |
| RHD4CZ8L04PT3200 |  | Stem and Service box for Direct Buried Gate Valves - (RD-L-04)-Z8-L04-PT | 4d | 2027-07-28 | 2027-08-01 | RHD4PRSHLDOSPT1300, RHD4PRSHLSTAGPT1300, RHD4CZ8L04PT3100, RHD4CZ8L04PT1501, RHD4CZ8L04PT1500 | Unskilled Labor [38.12 h]; Plumber [38.12 h]; Gate valves dia 100 mm - PT [0.4 nr]; Gate valves dia 150 mm - PT [0.3 nr] | 917.6 | L04 | Z8 | CONS | PT | Stem and Service box | bef |

| ID | WBS | Activity | Duration | Start | Finish | Predecessors | Resources | Cost | RDH4-01-001-Road and Block Names-1 | RDH4-01-001-Zones-1 | RDH4-01-001-Phases-1 | RDH4-01-001-Networks-1 | RDH4-01-001-Work Method-1 | RDH4-01-001-MENEM |
| --- | --- | --- | --- | --- | --- | --- | --- | --- | --- | --- | --- | --- | --- | --- |
|  | 7428 | **RHD4-02-002-L04-(PT)-Fire Hydrant** |  | 2027-06-30 | 2027-08-04 |  |  |  |  |  |  |  |  |  |
| RHD4CZ8L04PT4100 |  | Excavation and Bedding and Pipe Installation for Fire Hydrant - (RD-L-04)-Z8-L04-PT | 9d | 2027-06-30 | 2027-07-10 | RHD4ENSDZ8APPPT130, RHD4CZ8L04PT1100 | Skilled labor [98.01 h]; Unskilled Labor [98.01 h]; Plumber [98.01 h]; Equipment Opreator [49.01 h]; Excavator-Poclain [49.01 h]; 3-outlet fire hydrant (2 x 2.5 inch and 1 x 4.5 inch) in the form of a separate dry vacuum cylinder [1.8 nr] | 22,716 | L04 | Z8 | CONS | PT | Excavation | bef |
| RHD4CZ8L04PT4200 |  | Valve Installation for Fire Hydrant - (RD-L-04)-Z8-L04-PT | 6d | 2027-07-11 | 2027-07-17 | RHD4CZ8L04PT4100 | Unskilled Labor [65.34 h]; Plumber [65.34 h]; 3-outlet fire hydrant (2 x 2.5 inch and 1 x 4.5 inch) in the form of a separate dry vacuum cylinder [3.6 nr] | 45,432 | L04 | Z8 | CONS | PT | Valve | bef |
| RHD4CZ8L04PT4300 |  | Stem for Fire Hydrant - (RD-L-04)-Z8-L04-PT | 6d | 2027-07-18 | 2027-07-24 | RHD4CZ8L04PT4200 | Unskilled Labor [65.34 h]; Plumber [65.34 h]; 3-outlet fire hydrant (2 x 2.5 inch and 1 x 4.5 inch) in the form of a separate dry vacuum cylinder [5.4 nr] | 68,148 | L04 | Z8 | CONS | PT | Stem | bef |
| RHD4CZ8L04PT4400 |  | Fire Installation for Fire Hydrant - (RD-L-04)-Z8-L04-PT | 6d | 2027-07-25 | 2027-07-31 | RHD4PRSHLDOSPT1500, RHD4PRSHLSTAGPT1500, RHD4CZ8L04PT4300 | Unskilled Labor [65.34 h]; Plumber [65.34 h]; Equipment Opreator [65.34 h]; Boom Truck [65.34 h]; 3-outlet fire hydrant (2 x 2.5 inch and 1 x 4.5 inch) in the form of a separate dry vacuum cylinder [6.3 nr] | 79,506 | L04 | Z8 | CONS | PT | Fire | bef |
| RHD4CZ8L04PT4500 |  | Protection Barriers for Fire Hydrant - (RD-L-04)-Z8-L04-PT | 4d | 2027-08-01 | 2027-08-04 | RHD4CZ4L01PT4500, RHD4CZ8L04PT4400 | Unskilled Labor [39.2 h]; Plumber [39.2 h]; 3-outlet fire hydrant (2 x 2.5 inch and 1 x 4.5 inch) in the form of a separate dry vacuum cylinder [0.9 nr] | 11,358 | L04 | Z8 | CONS | PT | Protection Barriers | bef |
|  | 7430 | **RHD4-02-002-Z8-L04-Irrigation Network - IRR** |  | 2027-07-10 | 2027-08-30 |  |  |  |  |  |  |  |  |  |
|  | 7431 | **RHD4-02-002-L04-(IRR)-HDPE Pipes - 160 mm diameter** |  | 2027-07-12 | 2027-08-25 |  |  |  |  |  |  |  |  |  |
| RHD4CZ8L04IRR1100 |  | Excavation works for HDPE Pipline 160 mm - (RD-L-04)-Z8-L04-IRR | 10d | 2027-07-12 | 2027-07-22 | RHD4ENSDZ8APPIRR140, RHD4ENMSRR2000, RHD4CZ8L04IRR1103 | Skilled labor [102.59 h]; Unskilled Labor [102.59 h]; Equipment Opreator [123.2 h]; Excavator-Poclain [102.59 h]; Dump Truck [20.47 h]; HDPE (160mm Diameter) - TSE - Depth: less than 1.5m [141.37 m] | 17,388.63 | L04 | Z8 | CONS | IRR | Excavation | bef |
| RHD4CZ8L04IRR1200 |  | Bedding works for HDPE Pipline 160 mm - (RD-L-04)-Z8-L04-IRR | 8d | 2027-07-24 | 2027-08-01 | RHD4CZ8L04IRR1100 | Skilled labor [76.99 h]; Unskilled Labor [153.99 h]; Equipment Opreator [153.99 h]; Excavator-Poclain [76.99 h]; Dump Truck [76.99 h]; HDPE (160mm Diameter) - TSE - Depth: less than 1.5m [70.69 m] | 8,694.32 | L04 | Z8 | CONS | IRR | Bedding | bef |
| RHD4CZ8L04IRR1300 |  | Installing for HDPE Pipline 160 mm - (RD-L-04)-Z8-L04-IRR | 10d | 2027-08-02 | 2027-08-12 | RHD4PRSHLDOSIRR1000, RHD4PRSHLSTAGIRR1000, RHD4CZ8L04IRR1200 | Unskilled Labor [205.28 h]; Plumber [102.59 h]; Equipment Opreator [102.59 h]; Boom Truck [102.59 h]; HDPE (160mm Diameter) - TSE - Depth: less than 1.5m [636.17 m] | 78,248.85 | L04 | Z8 | CONS | IRR | Installation | bef |
| RHD4CZ8L04IRR1400 |  | Primary Test for HDPE Pipline 160 mm - (RD-L-04)-Z8-L04-IRR | 3d | 2027-08-14 | 2027-08-16 | RHD4CZ8L04IRR1300, RHD4CZ8L04IRR3100 | Unskilled Labor [30.82 h]; Plumber [30.82 h]; Equipment Opreator [30.82 h]; Water Truck [30.82 h]; HDPE (160mm Diameter) - TSE - Depth: less than 1.5m [282.74 m] | 34,777.27 | L04 | Z8 | CONS | IRR | Primary Test | bef |
| RHD4CZ8L04IRR1500 |  | Backfilling and warning tape works for HDPE Pipline 160 mm - (RD-L-04)-Z8-L04-IRR | 8d | 2027-08-17 | 2027-08-25 | RHD4CZ8L04IRR1400 | Skilled labor [76.99 h]; Unskilled Labor [153.99 h]; Equipment Opreator [153.99 h]; Excavator-Poclain [76.99 h]; Dump Truck [76.99 h]; HDPE (160mm Diameter) - TSE - Depth: less than 1.5m [282.74 m] | 34,777.27 | L04 | Z8 | CONS | IRR | Backfilling | bef |
|  | 7439 | **RHD4-02-002-L04-(IRR)-Gate Valves (Direct Buried)** |  | 2027-08-09 | 2027-08-30 |  |  |  |  |  |  |  |  |  |
| RHD4CZ8L04IRR3100 |  | Installation for Direct Buried Gate Valves - (RD-L-04)-Z8-L04-IRR | 4d | 2027-08-09 | 2027-08-12 | RHD4PRSHLDOSIRR1100, RHD4PRSHLSTAGIRR1100, RHD4CZ8L04IRR1300 SS, RHD4CZ8L04IRR1300 FF | Unskilled Labor [43.56 h]; Plumber [43.56 h]; Gate valves dia 100 mm - TSE [6.3 nr]; Gate valves dia 250 mm - TSE [0.9 nr] | 12,811.5 | L04 | Z8 | CONS | IRR | Installation | bef |
| RHD4CZ8L04IRR3200 |  | Stem and Service box for Direct Buried Gate Valves - (RD-L-04)-Z8-L04-IRR | 4d | 2027-08-26 | 2027-08-30 | RHD4PRSHLDOSIRR1300, RHD4PRSHLSTAGIRR1300, RHD4CZ8L04IRR3100, RHD4CZ8L04IRR1500 | Unskilled Labor [43.56 h]; Plumber [43.56 h]; Gate valves dia 100 mm - TSE [0.7 nr]; Gate valves dia 250 mm - TSE [0.1 nr] | 1,423.5 | L04 | Z8 | CONS | IRR | Stem and Service box | bef |
|  | 7432 | **RHD4-02-002-L04-(IRR)-HDPE Pipes - 180 mm diameter** |  |  |  |  |  |  |  |  |  |  |  |  |
|  | 1770 | **RHD4-02-002-L04-(IRR)-Air Valves** |  | 2027-08-23 | 2027-08-26 |  |  |  |  |  |  |  |  |  |
| RHD4CZ8L04IRR3103 |  | Installation for Air Valves for Irrigation Network - (RD-L-04)-Z8-L04-IRR | 2d | 2027-08-23 | 2027-08-24 | RHD4CZ8L04IRR2302 | Unskilled Labor [5.45 h]; Plumber [5.45 h]; Air valve diameter 50 mm - TSE [0.9 nr] | 4,427.1 | L04 | Z8 | CONS | IRR | Installation | bef |
| RHD4CZ8L04IRR3203 |  | Stem and Service box for Air Valves for Irrigation Network - (RD-L-04)-Z8-L04-IRR | 2d | 2027-08-25 | 2027-08-26 | RHD4CZ8L04IRR3103, RHD4CZ8L04IRR2402, RHD4CZ8L04IRR3202, RHD4CZ8L04PT3203 | Unskilled Labor [5.45 h]; Plumber [5.45 h]; Air valve diameter 50 mm - TSE [0.1 nr] | 491.9 | L04 | Z8 | CONS | IRR | Stem and Service box | bef |
|  | 6685 | **RHD4-02-002-L04-(IRR)-Wash out Chamber** |  | 2027-08-14 | 2027-08-22 |  |  |  |  |  |  |  |  |  |
| RHD4CZ8L04IRR2101 |  | Excavation and Bedding for Wash out Chamber for Irrigation Network - (RD-L-04)-Z8-L04-IRR | 2d | 2027-08-14 | 2027-08-15 | RHD4CZ8L04IRR1300, RHD4CZ9L06PT1500, RHD4CZ2C082SL1500, RHD4CZ9L06PT3200 | Skilled labor [5.45 h]; Unskilled Labor [5.45 h]; Equipment Opreator [1.09 h]; Excavator-Poclain [0.54 h]; Dump Truck [0.54 h]; Wash out chambers - TSE [0.25 nr] | 4,686.25 | L04 | Z8 | CONS | IRR | Excavation and Bedding | bef |
| RHD4CZ8L04IRR2201 |  | PC works for Wash out Chamber for Irrigation Network - (RD-L-04)-Z8-L04-IRR | 2d | 2027-08-16 | 2027-08-17 | RHD4CZ8L04IRR2101 | Skilled labor [5.45 h]; Unskilled Labor [10.89 h]; Equipment Opreator [0.54 h]; Concrete Pump [0.54 h]; Wash out chambers - TSE [0.1 nr] | 1,874.5 | L04 | Z8 | CONS | IRR | PC Works | bef |
| RHD4CZ8L04IRR2301 |  | Installation for Wash out Chamber for Irrigation Network - (RD-L-04)-Z8-L04-IRR | 2d | 2027-08-18 | 2027-08-19 | RHD4CZ8L04IRR2201 | Skilled labor [5.45 h]; Unskilled Labor [10.89 h]; Equipment Opreator [1.09 h]; Boom Truck [1.09 h]; Wash out chambers - TSE [0.55 nr] | 10,309.75 | L04 | Z8 | CONS | IRR | Installation | bef |
| RHD4CZ8L04IRR2401 |  | Backfilling works for Wash out Chamber for Irrigation Network - (RD-L-04)-Z8-L04-IRR | 2d | 2027-08-21 | 2027-08-22 | RHD4CZ8L04IRR2301 | Skilled labor [5.45 h]; Unskilled Labor [10.89 h]; Equipment Opreator [1.09 h]; Water Truck [0.54 h]; Dump Truck [0.54 h]; Wash out chambers - TSE [0.1 nr] | 1,874.5 | L04 | Z8 | CONS | IRR | Backfilling Works | bef |

| ID | WBS | Activity | Duration | Start | Finish | Predecessors | Resources | Cost | RDH4-01-001-Road and Block Names-1 | RDH4-01-001-Zones-1 | RDH4-01-001-Phases-1 | RDH4-01-001-Networks-1 | RDH4-01-001-Work Method-1 | RDH4-01-001-MENEM |
| --- | --- | --- | --- | --- | --- | --- | --- | --- | --- | --- | --- | --- | --- | --- |
|  | 6686 | **RHD4-02-002-L04-(IRR)-Wash out Valves** |  | 2027-08-21 | 2027-08-24 |  |  |  |  |  |  |  |  |  |
| RHD4CZ8L04IRR3102 |  | Installation for Wash out Valve for Irrigation Network - (RD-L-04)-Z8-L04-IRR | 2d | 2027-08-21 | 2027-08-22 | RHD4CZ8L04IRR2301 | Unskilled Labor [5.45 h]; Plumber [5.45 h]; Wash out valve diameter 100 mm - TSE [0.9 nr] | 3,373.2 | L04 | Z8 | CONS | IRR | Installation | bef |
| RHD4CZ8L04IRR3202 |  | Stem and Service box for Wash out Valve for Irrigation Network - (RD-L-04)-Z8-L04-IRR | 2d | 2027-08-23 | 2027-08-24 | RHD4CZ8L04IRR3102, RHD4CZ8L04IRR2401, RHD4CZ8L04IRR5100, RHD4CZ7L131IRR3203 | Unskilled Labor [5.45 h]; Plumber [5.45 h]; Wash out valve diameter 100 mm - TSE [0.1 nr] | 374.8 | L04 | Z8 | CONS | IRR | Stem and Service box | bef |
|  | 1769 | **RHD4-02-002-L04-(IRR)-Air Valve Chamber** |  | 2027-08-16 | 2027-08-24 |  |  |  |  |  |  |  |  |  |
| RHD4CZ8L04IRR2102 |  | Excavation and Bedding for Valve Chamber for Irrigation Network - (RD-L-04)-Z8-L04-IRR | 2d | 2027-08-16 | 2027-08-17 | RHD4CZ8L04IRR2101 | Skilled labor [5.45 h]; Unskilled Labor [5.45 h]; Equipment Opreator [1.09 h]; Excavator-Poclain [0.54 h]; Dump Truck [0.54 h]; Air Valve chambers - TSE [0.25 nr] | 1,193 | L04 | Z8 | CONS | IRR | Excavation and Bedding | bef |
| RHD4CZ8L04IRR2202 |  | PC works for Valve Chamber for Irrigation Network - (RD-L-04)-Z8-L04-IRR | 2d | 2027-08-18 | 2027-08-19 | RHD4CZ8L04IRR2102 | Skilled labor [5.45 h]; Unskilled Labor [10.89 h]; Equipment Opreator [0.54 h]; Concrete Pump [0.54 h]; Air Valve chambers - TSE [0.1 nr] | 477.2 | L04 | Z8 | CONS | IRR | PC Works | bef |
| RHD4CZ8L04IRR2302 |  | Installation for Valve Chamber for Irrigation Network - (RD-L-04)-Z8-L04-IRR | 2d | 2027-08-21 | 2027-08-22 | RHD4CZ8L04IRR2202, RHD4CZ9C071SW3500 | Skilled labor [5.45 h]; Unskilled Labor [10.89 h]; Equipment Opreator [1.09 h]; Boom Truck [1.09 h]; Air Valve chambers - TSE [0.55 nr] | 2,624.6 | L04 | Z8 | CONS | IRR | Installation | bef |
| RHD4CZ8L04IRR2402 |  | Backfilling works for Valve Chamber for Irrigation Network - (RD-L-04)-Z8-L04-IRR | 2d | 2027-08-23 | 2027-08-24 | RHD4CZ8L04IRR2302 | Skilled labor [5.45 h]; Unskilled Labor [10.89 h]; Equipment Opreator [1.09 h]; Water Truck [0.54 h]; Dump Truck [0.54 h]; Air Valve chambers - TSE [0.1 nr] | 477.2 | L04 | Z8 | CONS | IRR | Backfilling Works | bef |
|  | 1771 | **RHD4-02-002-L04-(IRR)-Concrete Encasement** |  | 2027-08-14 | 2027-08-15 |  |  |  |  |  |  |  |  |  |
| RHD4CZ8L04IRR5100 |  | Pipe Encasement for Irrigation Pipelines - (RD-L-04)-Z8-L04-IRR | 2d | 2027-08-14 | 2027-08-15 | RHD4CZ8L04IRR1300, RHD4CZ8L04IRR1503 | Skilled labor [15.68 h]; Unskilled Labor [15.68 h]; Equipment Opreator [17.21 h]; Concrete Mixer Truck [1.52 h]; Dump Truck [15.68 h]; Pipe Encasement - TSE [7.18 m3] | 8,802.68 | L04 | Z8 | CONS | IRR | Pipe Encasement | bef |
|  | 3651 | **RHD4-02-002-L04-(IRR)-HDPE Pipes - 250 mm diameter** |  | 2027-07-10 | 2027-07-20 |  |  |  |  |  |  |  |  |  |
| RHD4CZ8L04IRR1103 |  | Excavation works for HDPE Pipline 250 mm - (RD-L-04)-Z8-L04-IRR | 2d | 2027-07-10 | 2027-07-11 | RHD4CZ8L04PT1500 | Skilled labor [18.19 h]; Unskilled Labor [18.19 h]; Equipment Opreator [21.89 h]; Excavator-Poclain [18.19 h]; Dump Truck [3.59 h]; HDPE (250mm Diameter) - TSE - Depth: less than 1.5m [25.11 m] | 5,448.87 | L04 | Z8 | CONS | IRR | Excavation | bef |
| RHD4CZ8L04IRR1203 |  | Bedding works for HDPE Pipline 250 mm - (RD-L-04)-Z8-L04-IRR | 2d | 2027-07-12 | 2027-07-13 | RHD4CZ8L04IRR1103 | Skilled labor [13.72 h]; Unskilled Labor [27.33 h]; Equipment Opreator [27.33 h]; Excavator-Poclain [13.72 h]; Dump Truck [13.72 h]; HDPE (250mm Diameter) - TSE - Depth: less than 1.5m [12.55 m] | 2,723.35 | L04 | Z8 | CONS | IRR | Bedding | bef |
| RHD4CZ8L04IRR1303 |  | Installing for HDPE Pipline 250 mm - (RD-L-04)-Z8-L04-IRR | 2d | 2027-07-14 | 2027-07-15 | RHD4CZ8L04IRR1203 | Unskilled Labor [36.48 h]; Plumber [18.19 h]; Equipment Opreator [18.19 h]; Boom Truck [18.19 h]; HDPE (250mm Diameter) - TSE - Depth: less than 1.5m [112.98 m] | 24,516.66 | L04 | Z8 | CONS | IRR | Installation | bef |
| RHD4CZ8L04IRR1403 |  | Primary Test for HDPE Pipline 250 mm - (RD-L-04)-Z8-L04-IRR | 2d | 2027-07-17 | 2027-07-18 | RHD4CZ8L04IRR1303 | Unskilled Labor [5.45 h]; Plumber [5.45 h]; Equipment Opreator [5.45 h]; Water Truck [5.45 h]; HDPE (250mm Diameter) - TSE - Depth: less than 1.5m [50.21 m] | 10,895.57 | L04 | Z8 | CONS | IRR | Primary Test | bef |
| RHD4CZ8L04IRR1503 |  | Backfilling and warning tape works for HDPE Pipline 250 mm - (RD-L-04)-Z8-L04-IRR | 2d | 2027-07-19 | 2027-07-20 | RHD4CZ8L04IRR1403 | Skilled labor [13.72 h]; Unskilled Labor [27.33 h]; Equipment Opreator [27.33 h]; Excavator-Poclain [13.72 h]; Dump Truck [13.72 h]; HDPE (250mm Diameter) - TSE - Depth: less than 1.5m [50.21 m] | 10,895.57 | L04 | Z8 | CONS | IRR | Backfilling | bef |
|  | 7464 | **RHD4-02-002-Z8-L04-Medium Voltage Network - MV** |  | 2027-07-08 | 2027-07-20 |  |  |  |  |  |  |  |  |  |
|  | 7465 | **RHD4-02-002-L04-(MV)-Medium Voltage cable trench** |  | 2027-07-08 | 2027-07-20 |  |  |  |  |  |  |  |  |  |
| RHD4CZ8L04MV1100 |  | Excavation for Medium Voltage Trench - (RD-L-04)-Z8-L04-MV | 2d | 2027-07-08 | 2027-07-10 | RHD4ENSDZ8APPMV150, RHD4CZ8L04RD3100, RHD4CZ8RA04MV3400 | Skilled labor [21.13 h]; Unskilled Labor [42.15 h]; Equipment Opreator [63.27 h]; Excavator-Poclain [21.13 h]; Dump Truck [42.15 h]; Excavation for Trench size 60cm wide and 80cm deep ( for 2 cables) [135.46 m3] | 1,354.63 | L04 | Z8 | CONS | MV | Excavation | AFT |
| RHD4CZ8L04MV1200 |  | Trench Backfilling for Medium Voltage Network - (RD-L-04)-Z8-L04-MV | 2d | 2027-07-19 | 2027-07-20 | RHD4CZ8L04MV3300 | Skilled labor [21.13 h]; Unskilled Labor [21.13 h]; Equipment Opreator [42.15 h]; Dump Truck [42.15 h]; Excavation for Trench size 60cm wide and 80cm deep ( for 2 cables) [58.06 m3] | 580.55 | L04 | Z8 | CONS | MV | Backfilling | AFT |
|  | 7466 | **RHD4-02-002-L04-(MV)-Medium Voltage duct banks** |  |  |  |  |  |  |  |  |  |  |  |  |
|  | 7467 | **RHD4-02-002-L04-(MV)-Medium Voltage cables 3Cx 500 mm²** |  | 2027-07-11 | 2027-07-18 |  |  |  |  |  |  |  |  |  |
| RHD4CZ8L04MV3100 |  | Installation of Medium Voltage Cables 3Cx 500 mm² - (RD-L-04)-Z8-L04-MV | 3d | 2027-07-11 | 2027-07-13 | RHD4PRSHLDOSMV1100, RHD4ENMSMV2000, RHD4ENMSMV2010, RHD4PRSHLSTAGMV1100, RHD4CZ8L04MV1100 | Skilled labor [31.58 h]; Unskilled Labor [126.33 h]; Electrician [63.2 h]; Equipment Opreator [94.75 h]; Boom Truck [31.58 h]; Cable Laying Machine [63.2 h]; Cable 13.8 kV 3Cx 500 mm² Al/XLPE,/LLDPE / Unarmored [391.53 m] | 62,253.65 | L04 | Z8 | CONS | MV | Installation | AFT |
| RHD4CZ8L04MV3200 |  | Joints Installation of Medium Voltage Cables 3Cx 500 mm² - (RD-L-04)-Z8-L04-MV | 2d | 2027-07-14 | 2027-07-15 | RHD4PRSHLDOSMV1300, RHD4PRSHLSTAGMV1300, RHD4CZ8L04MV3100 | Skilled labor [5.45 h]; Unskilled Labor [21.78 h]; Electrician [10.89 h]; Equipment Opreator [5.45 h]; Boom Truck [5.45 h]; Straight joints cables for 13.8 kv 3Cx 500 mm², Al /XLPE/LLDPE [1 Unit] | 3,248 | L04 | Z8 | CONS | MV | Joints Installation | AFT |
| RHD4CZ8L04MV3300 |  | Testing of Medium Voltage Cables 3Cx 500 mm² - (RD-L-04)-Z8-L04-MV | 2d | 2027-07-17 | 2027-07-18 | RHD4CZ8L04MV3200 | Skilled labor [9.47 h]; Unskilled Labor [37.9 h]; Electrician [18.95 h]; Cable 13.8 kV 3Cx 500 mm² Al/XLPE,/LLDPE / Unarmored [43.5 m] | 6,916.5 | L04 | Z8 | CONS | MV | Testing | AFT |

| ID | WBS | Activity | Duration | Start | Finish | Predecessors | Resources | Cost | RDH4-01-001-Road and Block Names-1 | RDH4-01-001-Zones-1 | RDH4-01-001-Phases-1 | RDH4-01-001-Networks-1 | RDH4-01-001-Work Method-1 | RDH4-01-001-MENEM |
| --- | --- | --- | --- | --- | --- | --- | --- | --- | --- | --- | --- | --- | --- | --- |
|  | 7471 | **RHD4-02-002-Z8-L04-Low Voltage Network - LV** |  | 2027-08-26 | 2027-09-04 |  |  |  |  |  |  |  |  |  |
|  | 7472 | **RHD4-02-002-L04-(LV)-Low Voltage duct banks** |  | 2027-08-26 | 2027-09-04 |  |  |  |  |  |  |  |  |  |
| RHD4CZ8L04LV2100 |  | Excavation of Duct Banks for Low Voltage Network - (RD-L-04)-Z8-L04-LV | 2d | 2027-08-26 | 2027-08-28 | RHD4ENSDZ8APPLV160, RHD4CZ8L04RW3000, RHD4CZ8L04IRR1500 | Skilled labor [12.31 h]; Unskilled Labor [12.31 h]; Equipment Opreator [24.61 h]; Excavator-Poclain [12.31 h]; Dump Truck [12.31 h]; Duct bank for LV cables UPVC (4xø110mm) [1.7 m] | 508.3 | L04 | Z8 | CONS | LV | Excavation | bef |
| RHD4CZ8L04LV2200 |  | Installation of Duct Banks for Low Voltage Network - (RD-L-04)-Z8-L04-LV | 2d | 2027-08-29 | 2027-08-30 | RHD4PRSHLDOSLV1000, RHD4PRSHLSTAGLV1000, RHD4CZ8L04LV2100 | Carpenter [1.85 h]; Skilled labor [18.51 h]; Unskilled Labor [18.51 h]; Steel Fixer [1.85 h]; Duct bank for LV cables UPVC (4xø110mm) [1.7 m] | 508.3 | L04 | Z8 | CONS | LV | Installing | bef |
| RHD4CZ8L04LV2300 |  | Pouring of Duct Banks for Low Voltage Network - (RD-L-04)-Z8-L04-LV | 2d | 2027-08-31 | 2027-09-01 | RHD4CZ8L04LV2200 | Skilled labor [12.31 h]; Unskilled Labor [12.31 h]; Equipment Opreator [4.9 h]; Concrete Mixer Truck [2.5 h]; Concrete Pump [2.5 h]; Duct bank for LV cables UPVC (4xø110mm) [11.03 m] | 3,297.97 | L04 | Z8 | CONS | LV | Pouring | bef |
| RHD4CZ8L04LV2400 |  | Backfilling of Duct Banks for Low Voltage Network - (RD-L-04)-Z8-L04-LV | 2d | 2027-09-02 | 2027-09-04 | RHD4CZ8L04LV2300 | Skilled labor [9.26 h]; Unskilled Labor [9.26 h]; Equipment Opreator [3.7 h]; Excavator-Poclain [3.7 h]; Duct bank for LV cables UPVC (4xø110mm) [2.55 m] | 762.45 | L04 | Z8 | CONS | LV | Backfilling | bef |
|  | 7477 | **RHD4-02-002-Z8-L04-Street Lighting Network - SL** |  | 2027-07-21 | 2027-10-27 |  |  |  |  |  |  |  |  |  |
|  | 7478 | **RHD4-02-002-L04-(SL)-Street Lighting duct banks** |  | 2027-08-29 | 2027-09-11 |  |  |  |  |  |  |  |  |  |
| RHD4CZ8L04SL2100 |  | Excavation of Duct Banks for Street Lighting Network - (RD-L-04)-Z8-L04-SL | 3d | 2027-08-29 | 2027-08-31 | RHD4ENSDZ8APPSL170, RHD4CZ8L04LV2100 | Skilled labor [24.72 h]; Unskilled Labor [24.72 h]; Equipment Opreator [49.55 h]; Excavator-Poclain [24.72 h]; Dump Truck [24.72 h]; Road Crossing Duct for Street Lighting cables UPVC (2x?110mm) [1.77 m]; Road Crossing Duct for Street Lighting cables UPVC (4x?110mm) [1.64 m] | 791.31 | L04 | Z8 | CONS | SL | Excavation | bef |
| RHD4CZ8L04SL2200 |  | Installation of Duct Banks for Street Lighting Network - (RD-L-04)-Z8-L04-SL | 4d | 2027-09-01 | 2027-09-05 | RHD4PRSHLDOSSL1000, RHD4PRSHLSTAGSL1000, RHD4CZ8L04SL2100, RHD4CZ8L04LV2200 | Carpenter [3.7 h]; Skilled labor [37.14 h]; Unskilled Labor [37.14 h]; Steel Fixer [3.7 h]; Road Crossing Duct for Street Lighting cables UPVC (2x?110mm) [1.77 m]; Road Crossing Duct for Street Lighting cables UPVC (4x?110mm) [1.64 m] | 791.31 | L04 | Z8 | CONS | SL | Installing | bef |
| RHD4CZ8L04SL2300 |  | Pouring of Duct Banks for Street Lighting Network - (RD-L-04)-Z8-L04-SL | 3d | 2027-09-06 | 2027-09-08 | RHD4CZ8L04SL2200, RHD4CZ8L04LV2300 | Skilled labor [24.72 h]; Unskilled Labor [24.72 h]; Equipment Opreator [9.91 h]; Concrete Mixer Truck [4.9 h]; Concrete Pump [4.9 h]; Road Crossing Duct for Street Lighting cables UPVC (2x?110mm) [11.53 m]; Road Crossing Duct for Street Lighting cables UPVC (4x?110mm) [10.64 m] | 5,138.21 | L04 | Z8 | CONS | SL | Pouring | bef |
| RHD4CZ8L04SL2400 |  | Backfilling of Duct Banks for Street Lighting Network - (RD-L-04)-Z8-L04-SL | 2d | 2027-09-09 | 2027-09-11 | RHD4CZ8L04SL2300 | Skilled labor [18.62 h]; Unskilled Labor [18.62 h]; Equipment Opreator [7.41 h]; Excavator-Poclain [7.41 h]; Road Crossing Duct for Street Lighting cables UPVC (2x?110mm) [2.66 m]; Road Crossing Duct for Street Lighting cables UPVC (4x?110mm) [2.45 m] | 1,184.32 | L04 | Z8 | CONS | SL | Backfilling | bef |
|  | 7479 | **RHD4-02-002-L04-(SL)-Street Lighting Drawpit** |  | 2027-07-21 | 2027-07-25 |  |  |  |  |  |  |  |  |  |
| RHD4CZ8L04SL5100 |  | Excavation of Drawpit size 600x600x900mm for Street Lighting Network - (RD-L-04)-Z8-L04-SL | 2d | 2027-07-21 | 2027-07-22 | RHD4ENSDZ8APPSL170, RHD4CZ8L04MV1200 | Skilled labor [3.59 h]; Unskilled Labor [3.59 h]; Equipment Opreator [2.94 h]; Excavator-Poclain [1.42 h]; Dump Truck [1.42 h]; Drawpit with medium duty steel cover, size600x600x900mm, [0.6 Unit] | 1,470.6 | L04 | Z8 | CONS | SL | Excavation | AFT |
| RHD4CZ8L04SL5200 |  | Installation of Drawpit size 600x600x900mm for Street Lighting Network - (RD-L-04)-Z8-L04-SL | 2d | 2027-07-24 | 2027-07-25 | RHD4PRSHLDOSSL1400, RHD4PRSHLSTAGSL1400, RHD4CZ8L04SL5100 | Skilled labor [3.59 h]; Unskilled Labor [3.59 h]; Equipment Opreator [1.42 h]; Boom Truck [1.42 h]; Drawpit with medium duty steel cover, size600x600x900mm, [3.4 Unit] | 8,333.4 | L04 | Z8 | CONS | SL | Installation | AFT |
|  | 7480 | **RHD4-02-002-L04-(SL)-Street Lighting cables** |  | 2027-07-26 | 2027-09-12 |  |  |  |  |  |  |  |  |  |
| RHD4CZ8L04SL3100 |  | Excavation for Street Lighting Cables for Street Lighting Network - (RD-L-04)-Z8-L04-SL | 13d | 2027-07-26 | 2027-08-09 | RHD4ENSDZ8APPSL170, RHD4CZ8L04SL5200 | Skilled labor [135.8 h]; Unskilled Labor [271.61 h]; Equipment Opreator [271.61 h]; Excavator-Poclain [135.8 h]; Boom Truck [135.8 h]; Cable, Copper 4x10mm2/ CU/XLPE/SWA/PVC + 1x10mm2 CU/PVC [623.55 m] | 30,553.82 | L04 | Z8 | CONS | SL | Excavation | AFT |
| RHD4CZ8L04SL3200 |  | Cable Laying of Street Lighting Cables for Street Lighting Network - (RD-L-04)-Z8-L04-SL | 11d | 2027-08-10 | 2027-08-22 | RHD4PRSHLDOSSL1100, RHD4ENMSSL2000, RHD4ENMSSL2010, RHD4PRSHLSTAGSL1100, RHD4CZ8L04SL3100 | Skilled labor [113.15 h]; Unskilled Labor [452.71 h]; Electrician [226.3 h]; Equipment Opreator [339.56 h]; Boom Truck [113.15 h]; Cable Laying Machine [226.3 h]; Cable, Copper 4x10mm2/ CU/XLPE/SWA/PVC + 1x10mm2 CU/PVC [1870.64 m] | 91,661.45 | L04 | Z8 | CONS | SL | Cable Laying | AFT |
| RHD4CZ8L04SL3300 |  | Warning tape and Backfill for Street Lighting Cables for Street Lighting Network - (RD-L-04)-Z8-L04-SL | 11d | 2027-08-23 | 2027-09-04 | RHD4CZ8L04SL3200 | Skilled labor [113.15 h]; Unskilled Labor [452.71 h]; Electrician [226.3 h]; Equipment Opreator [113.15 h]; Boom Truck [113.15 h]; Cable, Copper 4x10mm2/ CU/XLPE/SWA/PVC + 1x10mm2 CU/PVC [467.66 m] | 22,915.36 | L04 | Z8 | CONS | SL | Warning tape and Backfill | AFT |
| RHD4CZ8L04SL3400 |  | Testing of Street Lighting Cables for Street Lighting Network - (RD-L-04)-Z8-L04-SL | 7d | 2027-09-05 | 2027-09-12 | RHD4CZ8L04SL3300 | Skilled labor [67.96 h]; Unskilled Labor [271.61 h]; Electrician [135.8 h]; Equipment Opreator [67.96 h]; Boom Truck [67.96 h]; Cable, Copper 4x10mm2/ CU/XLPE/SWA/PVC + 1x10mm2 CU/PVC [155.89 m] | 7,638.45 | L04 | Z8 | CONS | SL | Testing | AFT |
|  | 7481 | **RHD4-02-002-L04-(SL)-Street Lighting Poles** |  | 2027-09-13 | 2027-10-27 |  |  |  |  |  |  |  |  |  |
| RHD4CZ8L04SL1100 |  | Excavation for RC Base for Lighting Poles for Street Lighting Network - (RD-L-04)-Z8-L04-SL | 7d | 2027-09-13 | 2027-09-20 | RHD4ENSDZ8APPSL170, RHD4CZ8L04SL3400 | Skilled labor [68.28 h]; Unskilled Labor [68.28 h]; Equipment Opreator [136.46 h]; Excavator-Poclain [68.28 h]; Dump Truck [68.28 h]; Lighting poles single arms, height of ( 10 ) meters [9.4 Unit] | 32,025.8 | L04 | Z8 | CONS | SL | Excavation | AFT |
| RHD4CZ8L04SL1200 |  | Installation for RC Base for Lighting Poles for Street Lighting Network - (RD-L-04)-Z8-L04-SL | 7d | 2027-09-21 | 2027-09-29 | RHD4CZ8L04SL1100 | Skilled labor [68.28 h]; Unskilled Labor [68.28 h]; Equipment Opreator [136.46 h]; Excavator-Poclain [68.28 h]; Dump Truck [68.28 h]; Lighting poles single arms, height of ( 10 ) meters [23.5 Unit] | 80,064.5 | L04 | Z8 | CONS | SL | RC Base | AFT |
| RHD4CZ8L04SL1300 |  | Backfill for RC Base for Lighting Poles for Street Lighting Network - (RD-L-04)-Z8-L04-SL | 7d | 2027-09-30 | 2027-10-07 | RHD4CZ8L04SL1200 | Skilled labor [68.28 h]; Unskilled Labor [68.28 h]; Equipment Opreator [136.46 h]; Excavator-Poclain [68.28 h]; Dump Truck [68.28 h]; Lighting poles single arms, height of ( 10 ) meters [4.7 Unit] | 16,012.9 | L04 | Z8 | CONS | SL | Backfill | AFT |
| RHD4CZ8L04SL1400 |  | Installation for Lighting Poles for Street Lighting Network - (RD-L-04)-Z8-L04-SL | 10d | 2027-10-09 | 2027-10-19 | RHD4PRSHLDOSSL1200, RHD4ENMSSL2000, RHD4ENMSSL2010, RHD4PRSHLSTAGSL1200, RHD4CZ8L04SL1300 | Skilled labor [102.4 h]; Unskilled Labor [102.4 h]; Electrician [102.4 h]; Equipment Opreator [102.4 h]; Boom Truck [102.4 h]; Lighting poles single arms, height of ( 10 ) meters [56.4 Unit] | 192,154.8 | L04 | Z8 | CONS | SL | Poles Installation | AFT |
| RHD4CZ8L04SL1500 |  | Luminaire Installation for Lighting Poles for Street Lighting Network - (RD-L-04)-Z8-L04-SL | 7d | 2027-10-20 | 2027-10-27 | RHD4PRSHLDOSSL1300, RHD4PRSHLSTAGSL1300, RHD4CZ8L04SL1400 | Unskilled Labor [136.46 h]; Electrician [68.28 h]; Equipment Opreator [13.6 h]; Boom Truck [27.33 h]; Street Lighting( LED) Luminaire of Output ?10898 lumen [94 Unit] | 55,272 | L04 | Z8 | CONS | SL | Luminaire Installation | AFT |

| ID | WBS | Activity | Duration | Start | Finish | Predecessors | Resources | Cost | RDH4-01-001-Road and Block Names-1 | RDH4-01-001-Zones-1 | RDH4-01-001-Phases-1 | RDH4-01-001-Networks-1 | RDH4-01-001-Work Method-1 | RDH4-01-001-MENEM |
| --- | --- | --- | --- | --- | --- | --- | --- | --- | --- | --- | --- | --- | --- | --- |
|  | 7483 | **RHD4-02-002-L04-(SL)-Street Lighting Earthing System** |  | 2027-10-20 | 2027-10-21 |  |  |  |  |  |  |  |  |  |
| RHD4CZ8L04SL6100 |  | Installation of Earthing for Lighting Poles and Fedder Pillers for Street Lighting Network - (RD-L-04)-Z8-L04-SL | 2d | 2027-10-20 | 2027-10-21 | RHD4ENMSER2000, RHD4ENMSER2010, RHD4CZ8L04SL1400 | Skilled labor [3.59 h]; Unskilled Labor [3.59 h]; Equipment Opreator [7.3 h]; Excavator-Poclain [3.59 h]; Dump Truck [3.59 h]; Street Lighting Feeder pillars - ER [1 Unit]; Including lighting poles circuits - ER [4 Unit] | 3,580 | L04 | Z8 | CONS | SL | Installation | AFT |
|  | 7489 | **RHD4-02-002-Z8-L04-Telecommunications Network - TC** |  | 2027-07-12 | 2027-09-15 |  |  |  |  |  |  |  |  |  |
|  | 7490 | **RHD4-02-002-L04-(TC)-Telecommunications Ducts** |  | 2027-07-12 | 2027-09-06 |  |  |  |  |  |  |  |  |  |
| RHD4CZ8L04TC2100 |  | Excavation of HDPE Ducts for Telecom Network - (RD-L-04)-Z8-L04-TC | 14d | 2027-07-12 | 2027-07-27 | RHD4ENSDZ8APPTC190, RHD4CZ8L04IRR1103 | Skilled labor [147.89 h]; Unskilled Labor [147.89 h]; Equipment Opreator [295.78 h]; Excavator-Poclain [147.89 h]; Dump Truck [147.89 h]; (6*50mm) HDPE ducts -TC [242.4 m]; (6*50mm+2*32mm) HDPE ducts -TC [123.82 m]; (6*50mm+4*32mm) HDPE ducts -TC [33.85 m]; (2*32mm) HDPE ducts -TC [7.32 m] | 39,105.09 | L04 | Z8 | CONS | TC | Excavation | AFT |
| RHD4CZ8L04TC2200 |  | Installation of HDPE Ducts for Telecom Network - (RD-L-04)-Z8-L04-TC | 21d | 2027-07-28 | 2027-08-21 | RHD4PRSHLDOSTC1000, RHD4PRSHLSTAGTC1000, RHD4CZ8L04TC2100 | Carpenter [22.22 h]; Skilled labor [221.84 h]; Unskilled Labor [221.84 h]; Steel Fixer [22.22 h]; (6*50mm) HDPE ducts -TC [787.8 m]; (6*50mm+2*32mm) HDPE ducts -TC [402.42 m]; (6*50mm+4*32mm) HDPE ducts -TC [110.03 m]; (2*32mm) HDPE ducts -TC [23.79 m] | 127,091.53 | L04 | Z8 | CONS | TC | Installing | AFT |
| RHD4CZ8L04TC2400 |  | Backfilling of HDPE Ducts for Telecom Network - (RD-L-04)-Z8-L04-TC | 14d | 2027-08-22 | 2027-09-06 | RHD4CZ8L04TC2200 | Skilled labor [147.89 h]; Unskilled Labor [147.89 h]; Equipment Opreator [59.13 h]; Excavator-Poclain [59.13 h]; (6*50mm) HDPE ducts -TC [181.8 m]; (6*50mm+2*32mm) HDPE ducts -TC [92.86 m]; (6*50mm+4*32mm) HDPE ducts -TC [25.39 m]; (2*32mm) HDPE ducts -TC [5.49 m] | 29,328.81 | L04 | Z8 | CONS | TC | Backfilling | AFT |
|  | 7491 | **RHD4-02-002-L04-(TC)-Telecommunications Manholes** |  | 2027-09-07 | 2027-09-15 |  |  |  |  |  |  |  |  |  |
| RHD4CZ8L04TC5100 |  | Excavation for Manholes for Telecom Network - (RD-L-04)-Z8-L04-TC | 4d | 2027-09-07 | 2027-09-11 | RHD4ENSDZ8APPTC190, RHD4CZ8L04TC2100, RHD4CZ8L04TC2400 | Skilled labor [9.6 h]; Unskilled Labor [9.6 h]; Equipment Opreator [7.62 h]; Excavator-Poclain [3.81 h]; Dump Truck [3.81 h]; Manhole Type 1 - TC [1.05 nr] | 7,078.05 | L04 | Z8 | CONS | TC | Excavation | AFT |
| RHD4CZ8L04TC5200 |  | Installation of Manholes for Telecom Network - (RD-L-04)-Z8-L04-TC | 4d | 2027-09-12 | 2027-09-15 | RHD4PRSHLDOSTC1200, RHD4PRSHLSTAGTC1200, RHD4CZ8L04TC5100, RHD4CZ8L04LV2400 | Skilled labor [9.6 h]; Unskilled Labor [9.6 h]; Equipment Opreator [3.81 h]; Boom Truck [3.81 h]; Manhole Type 1 - TC [5.95 nr] | 40,108.95 | L04 | Z8 | CONS | TC | Installation | AFT |
|  | 7492 | **RHD4-02-002-L04-(TC)-Telecomminications Road Crossings** |  |  |  |  |  |  |  |  |  |  |  |  |
|  | 7493 | **RHD4-02-002-Z8-L04-Information and Communication Technologies - ICT** |  | 2027-02-14 | 2027-11-17 |  |  |  |  |  |  |  |  |  |
|  | 7494 | **RHD4-02-002-L04-(ICT)-Information and Communication Technologies Ducts** |  | 2027-09-16 | 2027-11-08 |  |  |  |  |  |  |  |  |  |
| RHD4CZ8L04ICT2100 |  | Excavation of HDPE Ducts for ICT Network - (RD-L-04)-Z8-L04-ICT | 18d | 2027-09-16 | 2027-10-07 | RHD4ENSDZ8APPICT200, RHD4CZ8L04TC2100, RHD4CZ8L04TC5200 | Skilled labor [189.6 h]; Unskilled Labor [189.6 h]; Equipment Opreator [379.2 h]; Excavator-Poclain [189.6 h]; Dump Truck [189.6 h]; (2*50mm) HDPE ducts -ICT [324.64 m]; (2*50mm+2*32mm) HDPE ducts -ICT [172.8 m]; (2*50mm+4*32mm) HDPE ducts -ICT [12.98 m]; (2*32mm) HDPE ducts -ICT [11.9 m] | 26,298.8 | L04 | Z8 | CONS | ICT | Excavation | AFT |
| RHD4CZ8L04ICT2200 |  | Installation of HDPE Ducts for ICT Network - (RD-L-04)-Z8-L04-ICT | 9d | 2027-10-09 | 2027-10-18 | RHD4PRSHLDOSICT1000, RHD4PRSHLSTAGICT1000, RHD4CZ8L04ICT2100 | Carpenter [7.08 h]; Skilled labor [71.11 h]; Unskilled Labor [71.11 h]; Steel Fixer [7.08 h]; (2*50mm) HDPE ducts -ICT [1055.08 m]; (2*50mm+2*32mm) HDPE ducts -ICT [561.6 m]; (2*50mm+4*32mm) HDPE ducts -ICT [42.19 m]; (2*32mm) HDPE ducts -ICT [38.67 m] | 85,471.1 | L04 | Z8 | CONS | ICT | Installing | AFT |
| RHD4CZ8L04ICT2400 |  | Backfilling of HDPE Ducts for ICT Network - (RD-L-04)-Z8-L04-ICT | 18d | 2027-10-19 | 2027-11-08 | RHD4CZ8L04ICT2200 | Skilled labor [189.6 h]; Unskilled Labor [189.6 h]; Equipment Opreator [75.8 h]; Excavator-Poclain [75.8 h]; (2*50mm) HDPE ducts -ICT [243.48 m]; (2*50mm+2*32mm) HDPE ducts -ICT [129.6 m]; (2*50mm+4*32mm) HDPE ducts -ICT [9.73 m]; (2*32mm) HDPE ducts -ICT [8.93 m] | 19,724.1 | L04 | Z8 | CONS | ICT | Backfilling | AFT |
|  | 7495 | **RHD4-02-002-L04-(ICT)-Information and Communication Technologies Manholes** |  | 2027-11-09 | 2027-11-17 |  |  |  |  |  |  |  |  |  |
| RHD4CZ8L04ICT5100 |  | Excavation for Manholes for ICT Network - (RD-L-04)-Z8-L04-ICT | 4d | 2027-11-09 | 2027-11-13 | RHD4ENSDZ8APPICT200, RHD4CZ8L04ICT2400 | Skilled labor [13.6 h]; Unskilled Labor [13.6 h]; Equipment Opreator [10.89 h]; Excavator-Poclain [5.45 h]; Dump Truck [5.45 h]; Manhole Type 1 - ICT [0.9 nr]; Manhole Type 2 - ICT [0.3 nr] | 6,471.6 | L04 | Z8 | CONS | ICT | Excavation | AFT |
| RHD4CZ8L04ICT5200 |  | Installation of Manholes for ICT Network - (RD-L-04)-Z8-L04-ICT | 4d | 2027-11-14 | 2027-11-17 | RHD4PRSHLDOSICT1200, RHD4PRSHLSTAGICT1200, RHD4CZ8L04ICT5100, RHD4CZ8RA04CCTV6100 | Skilled labor [13.6 h]; Unskilled Labor [13.6 h]; Equipment Opreator [5.45 h]; Boom Truck [5.45 h]; Manhole Type 1 - ICT [5.1 nr]; Manhole Type 2 - ICT [1.7 nr] | 36,672.4 | L04 | Z8 | CONS | ICT | Installation | AFT |
|  | 7496 | **RHD4-02-002-L04-(ICT)-Information and Communication Technologies Road Crossings** |  | 2027-02-14 | 2027-02-27 |  |  |  |  |  |  |  |  |  |
| RHD4CZ8L04ICT3100 |  | Excavation for Road Crossings for ICT Network - (RD-L-04)-Z8-L04-ICT | 2d | 2027-02-14 | 2027-02-15 | RHD4ENSDZ8APPICT200, RHD4CZ8RA04TC3100 SS | Skilled labor [15.14 h]; Unskilled Labor [15.14 h]; Equipment Opreator [30.28 h]; Excavator-Poclain [15.14 h]; Dump Truck [15.14 h]; Road crossing ducts, (2*50mm) HDPE -ICT [2.78 m] | 105.64 | L04 | Z8 | CONS | ICT | Excavation | bef |
| RHD4CZ8L04ICT3200 |  | Installation of Road Crossings for ICT Network - (RD-L-04)-Z8-L04-ICT | 2d | 2027-02-20 | 2027-02-21 | RHD4PRSHLDOSICT1100, RHD4PRSHLSTAGICT1100, RHD4CZ8L04ICT3100 | Carpenter [2.07 h]; Skilled labor [20.15 h]; Unskilled Labor [20.15 h]; Steel Fixer [2.07 h]; Road crossing ducts, (2*50mm) HDPE -ICT [2.78 m] | 105.64 | L04 | Z8 | CONS | ICT | Installing | bef |
| RHD4CZ8L04ICT3300 |  | Pouring of Road Crossings for ICT Network - (RD-L-04)-Z8-L04-ICT | 2d | 2027-02-23 | 2027-02-24 | RHD4CZ8L04ICT3200 | Skilled labor [20.15 h]; Unskilled Labor [20.15 h]; Equipment Opreator [8.06 h]; Concrete Mixer Truck [4 h]; Concrete Pump [4 h]; Road crossing ducts, (2*50mm) HDPE -ICT [18.07 m] | 686.66 | L04 | Z8 | CONS | ICT | Pouring | bef |
| RHD4CZ8L04ICT3400 |  | Backfilling of Road Crossings for ICT Network - (RD-L-04)-Z8-L04-ICT | 2d | 2027-02-25 | 2027-02-27 | RHD4CZ8L04ICT3300 | Skilled labor [15.14 h]; Unskilled Labor [15.14 h]; Equipment Opreator [6.1 h]; Excavator-Poclain [6.1 h]; Road crossing ducts, (2*50mm) HDPE -ICT [4.17 m] | 158.46 | L04 | Z8 | CONS | ICT | Backfilling | bef |

| ID | WBS | Activity | Duration | Start | Finish | Predecessors | Resources | Cost | RDH4-01-001-Road and Block Names-1 | RDH4-01-001-Zones-1 | RDH4-01-001-Phases-1 | RDH4-01-001-Networks-1 | RDH4-01-001-Work Method-1 | RDH4-01-001-MENEM |
| --- | --- | --- | --- | --- | --- | --- | --- | --- | --- | --- | --- | --- | --- | --- |
|  | 7484 | **RHD4-02-002-Z8-L04-Landscape Network - LS** |  |  |  |  |  |  |  |  |  |  |  |  |
|  | 7485 | **RHD4-02-002-L04-(LS)-Landscape Lighting cables** |  |  |  |  |  |  |  |  |  |  |  |  |
|  | 7486 | **RHD4-02-002-L04-(LS)-Landscape Feeder Pillars** |  |  |  |  |  |  |  |  |  |  |  |  |
|  | 7487 | **RHD4-02-002-L04-(LS)-Landscape Bollard Poles** |  |  |  |  |  |  |  |  |  |  |  |  |
|  | 7488 | **RHD4-02-002-L04-(LS)-Landscape Feeder Pillars Earthing** |  |  |  |  |  |  |  |  |  |  |  |  |
|  | 7497 | **RHD4-02-002-Z8-L04-Security Network - CCTV** |  | 2027-11-18 | 2027-12-18 |  |  |  |  |  |  |  |  |  |
|  | 7498 | **RHD4-02-002-L04-(CCTV)-Civil Works** |  | 2027-11-18 | 2027-11-23 |  |  |  |  |  |  |  |  |  |
| RHD4CZ8L04CCTV2100 |  | Civil Works for Security Network - (RD-L-04)-Z8-L04-CCTV | 5d | 2027-11-18 | 2027-11-23 | RHD4CZ8L04ICT5200, RHD4CZ8L04SL6100 | Skilled labor [217.76 h]; Unskilled Labor [435.68 h]; Equipment Opreator [217.76 h]; Excavator-Poclain [54.45 h]; Dump Truck [54.45 h]; Civil works Digging, trenching, laying pipes Meter with supply and installation of Manholes and for power feeding sources related to all towers and poles – (from 35-meter pole to control room and from related UPS camersa distribution boards till overall 2 [150 m] | 17,400 | L04 | Z8 | CONS | CCTV | Civil Works | AFT |
|  | 7499 | **RHD4-02-002-L04-(CCTV)-CCTV Poles** |  | 2027-11-24 | 2027-12-05 |  |  |  |  |  |  |  |  |  |
| RHD4CZ8L04CCTV1100 |  | Excavation for RC Base for CCTV Poles for Security Network - (RD-L-04)-Z8-L04-CCTV | 2d | 2027-11-24 | 2027-11-25 | RHD4ENSDZ8APPCCTV210, RHD4CZ8L04CCTV2100 | Skilled labor [8.64 h]; Unskilled Labor [8.64 h]; Equipment Opreator [17.44 h]; Excavator-Poclain [4.36 h]; Dump Truck [4.36 h]; 25 Meters pole for CCTV Cameras [0.2 nr] | 28,180.4 | L04 | Z8 | CONS | CCTV | Excavation | AFT |
| RHD4CZ8L04CCTV1200 |  | Installation for RC Base for CCTV Poles for Security Network - (RD-L-04)-Z8-L04-CCTV | 2d | 2027-11-27 | 2027-11-28 | RHD4CZ8L04CCTV1100 | Skilled labor [8.64 h]; Unskilled Labor [8.64 h]; Equipment Opreator [17.44 h]; Excavator-Poclain [4.36 h]; Dump Truck [4.36 h]; 25 Meters pole for CCTV Cameras [0.5 nr] | 70,451 | L04 | Z8 | CONS | CCTV | RC Base | AFT |
| RHD4CZ8L04CCTV1300 |  | Backfill for RC Base for CCTV Poles for Security Network - (RD-L-04)-Z8-L04-CCTV | 2d | 2027-11-29 | 2027-11-30 | RHD4CZ8L04CCTV1200 | Skilled labor [5.44 h]; Unskilled Labor [5.44 h]; Equipment Opreator [10.88 h]; Excavator-Poclain [2.72 h]; Dump Truck [2.72 h]; 25 Meters pole for CCTV Cameras [0.1 nr] | 14,090.2 | L04 | Z8 | CONS | CCTV | Backfill | AFT |
| RHD4CZ8L04CCTV1400 |  | Installation for CCTV Poles for Security Network - (RD-L-04)-Z8-L04-CCTV | 2d | 2027-12-01 | 2027-12-02 | RHD4PRSHLDOSCCTV1000, RHD4PRSHLSTACCTV1000, RHD4CZ8L04CCTV1300 | Skilled labor [14.56 h]; Unskilled Labor [28.96 h]; Electrician [14.56 h]; Equipment Opreator [14.56 h]; Boom Truck [7.3 h]; 25 Meters pole for CCTV Cameras [1.41 nr] | 198,347.75 | L04 | Z8 | CONS | CCTV | Installation | AFT |
| RHD4CZ8L04CCTV1500 |  | Protection post Installation for CCTV Poles for Security Network - (RD-L-04)-Z8-L04-CCTV | 2d | 2027-12-04 | 2027-12-05 | RHD4CZ8L04CCTV1400 | Skilled labor [10.88 h]; Unskilled Labor [21.76 h]; Supply and Installation of minimum 4 Protection Post for each pole or tower with pipe ?220*6mm THK. [1 nr] | 4,903 | L04 | Z8 | CONS | CCTV | Protection post | AFT |
|  | 7500 | **RHD4-02-002-L04-(CCTV)-Camera** |  | 2027-12-06 | 2027-12-07 |  |  |  |  |  |  |  |  |  |
| RHD4CZ8L04CCTV3100 |  | Installation for Cameras for Security Network - (RD-L-04)-Z8-L04-CCTV | 2d | 2027-12-06 | 2027-12-07 | RHD4PRSHLDOSCCTV1100, RHD4PRSHLSTACCTV1100, RHD4CZ8L04CCTV1400, RHD4CZ8L04CCTV4100 | Unskilled Labor [87.2 h]; Electrician [43.52 h]; Outdoor Camera, 5MP resolution, day/night, fixed bullet camera providing Forensic WDR. [6 nr]; Outdoor PTZ with IR, HDTV 1080 and 31x optical, 12x digital, total 372x zoom, H264/265 with Motion JPEG. [2 nr] | 106,528 | L04 | Z8 | CONS | CCTV | Installation | AFT |
|  | 7501 | **RHD4-02-002-L04-(CCTV)-Power and Infrastructure** |  | 2027-12-04 | 2027-12-05 |  |  |  |  |  |  |  |  |  |
| RHD4CZ8L04CCTV4100 |  | Installation of Power outlet, UPS and midspan for PTZ Camerafor Cameras for Security Network - (RD-L-04)-Z8-L04-CCTV | 2d | 2027-12-04 | 2027-12-05 | RHD4PRSHLDOSCCTV1300, RHD4PRSHLSTACCTV1300, RHD4CZ8L04CCTV1400 | Skilled labor [13.12 h]; Unskilled Labor [52.32 h]; Electrician [26.08 h]; Equipment Opreator [26.08 h]; Excavator-Poclain [6.53 h]; Dump Truck [6.53 h]; Outdoor ready IP66-rated midspan for PTZ Camera (The outdoor- ready midspan should be IP66/IP67- and NEMA 4X-rated [2 nr]; 1.2KVA Industrial type UPS located at FEC remote poles [1 nr] | 12,077 | L04 | Z8 | CONS | CCTV | Power | AFT |
|  | 7503 | **RHD4-02-002-L04-(CCTV)-CCTV Panels and Components** |  | 2027-12-08 | 2027-12-18 |  |  |  |  |  |  |  |  |  |
| RHD4CZ8L04CCTV6100 |  | Installation for CCTV Panels for Security Network - (RD-L-04)-Z8-L04-CCTV | 9d | 2027-12-08 | 2027-12-18 | RHD4PRSHLDOSCCTV1200, RHD4PRSHLSTACCTV1200, RHD4PRLOLSTACCTV1001, RHD4CZ8L04CCTV3100 | Skilled labor [196 h]; Unskilled Labor [588 h]; Electrician [196 h]; Pole mounted Filed Equipment cabinet (FEC) , with fan and ventilation, NEMEX 4X ,door, minimum size (600x600x400mm) , the cabinet/enclosurE [1 nr]; 8 Port Industrial PoE Switch 10/1000BaseT (-40 deg to +70 deg. Celsius) for remote poles and as specifiedin item 15. [2 nr]; UTP CAT6 Patch Cord , connect the industrial switch with the cameras, and radio wireless antenna [6 nr] | 32,171 | L04 | Z8 | CONS | CCTV | Equipment | AFT |
|  | 7514 | **RHD4-02-002-Z8-C014** |  | 2027-02-28 | 2028-01-30 |  |  |  |  |  |  |  |  |  |
|  | 7693 | **RHD4-02-002-Z8-C014-Road Works - RD** |  | 2027-02-28 | 2028-01-30 |  |  |  |  |  |  |  |  |  |
|  | 7696 | **RHD4-02-002-C014-(RD)-Bituminous base course Two Layers, including (MC1)&(RC2)** |  | 2027-03-28 | 2028-01-15 |  |  |  |  |  |  |  |  |  |
| RHD4CZ8C014RD3100 |  | Supply, lay and Asphaltic base course including Prime Coat (MC1) for 1st Layer - (RD-C-1/4)-Z8-C014-RD | 4d | 2027-03-28 | 2027-03-31 | RHD4PRSHLDOSRD1100, RHD4ENMSASPH2000, RHD4ENMSASPH2010, RHD4PRSHLSTAGRD1100, RHD4CZ8C014RD2100, RHD4CZ8A011RD2100 | Skilled labor [36.8 h]; Unskilled Labor [221.18 h]; Equipment Opreator [552.9 h]; Bobcat [36.8 h]; Roller compactor [36.8 h]; Asphalt Paver [36.8 h]; Rubber Compactor [73.73 h]; MC1/RC2 Sprinkler [36.8 h]; Dump Truck [331.72 h]; Bituminous base course (Grading I - Class A), including Prime coat (MC1) & tack coate (RC2) [1348.58 m3] | 644,621.24 | C014 | Z8 | CONS | RD | 150 mm | AFT |
| RHD4CZ8C014RD3200 |  | Supply, lay and Asphaltic base course including Tack Coat (RC2) for 2nd Layer - (RD-C-1/4)-Z8-C014-RD | 4d | 2028-01-11 | 2028-01-15 | RHD4PRSHLDOSRD1100, RHD4PRSHLSTAGRD1100, RHD4CZ8C014ICT5200 | Skilled labor [36.8 h]; Unskilled Labor [221.18 h]; Equipment Opreator [552.9 h]; Bobcat [36.8 h]; Roller compactor [36.8 h]; Asphalt Paver [36.8 h]; Rubber Compactor [73.73 h]; MC1/RC2 Sprinkler [36.8 h]; Dump Truck [331.72 h]; Bituminous base course (Grading I - Class A), including Prime coat (MC1) & tack coate (RC2) [1348.58 m3] | 644,621.24 | C014 | Z8 | CONS | RD | 150 mm | AFT |

| ID | WBS | Activity | Duration | Start | Finish | Predecessors | Resources | Cost | RDH4-01-001-Road and Block Names-1 | RDH4-01-001-Zones-1 | RDH4-01-001-Phases-1 | RDH4-01-001-Networks-1 | RDH4-01-001-Work Method-1 | RDH4-01-001-MENEM |
| --- | --- | --- | --- | --- | --- | --- | --- | --- | --- | --- | --- | --- | --- | --- |
|  | 7698 | **RHD4-02-002-C014-(RD)-Precast Concrete Curb** |  | 2028-01-16 | 2028-01-20 |  |  |  |  |  |  |  |  |  |
| RHD4CZ8C014RD5100 |  | Supply and installation Precast Concrete Kerb for Roads - (RD-C-1/4)-Z8-C014-RD | 5d | 2028-01-16 | 2028-01-20 | RHD4PRSHLDOSRD1200, RHD4ENMSRD2000, RHD4ENMSRD2010, RHD4PRSHLSTAGRD1200, RHD4CZ8C014RD3200, RHD4CZ8L04RD5100 | Mason [134.28 h]; Skilled labor [44.76 h]; Unskilled Labor [134.28 h]; Equipment Opreator [89.52 h]; Bobcat [44.76 h]; Concrete Mixer Truck [44.76 h]; Precast Concrete Curbstone, type K1 [1850 m] | 101,750 | C014 | Z8 | CONS | RD | Curbs | AFT |
|  | 7694 | **RHD4-02-002-C014-(RD)-Subgrade** |  | 2027-02-28 | 2027-03-16 |  |  |  |  |  |  |  |  |  |
| RHD4CZ8C014RD1100 |  | Supply, lay and compaction subgrade compacted thickness 300 mm for Roads - (RD-C-1/4)-Z8-C014-RD | 12d | 2027-02-28 | 2027-03-16 | RHD4ENSDZ8APPEW100, RHD4ENSDZ8APPRD220, RHD4CZ8L04RD1100 SS | Skilled labor [125.35 h]; Unskilled Labor [250.7 h]; Electrician [125.35 h]; Equipment Opreator [856 h]; Water Truck [41.38 h]; Roller compactor [62.62 h]; Grader [125.35 h]; Dump Truck [626.63 h]; Subgrade [6027.67 m3] | 114,525.73 | C014 | Z8 | CONS | RD | Subgrade | bef |
|  | 7695 | **RHD4-02-002-C014-(RD)-Aggregate Base Course** |  | 2027-03-17 | 2027-03-27 |  |  |  |  |  |  |  |  |  |
| RHD4CZ8C014RD2100 |  | Supply, lay and compaction Aggregate base course compacted thickness 300 mmfor Roads - (RD-C-1/4)-Z8-C014-RD | 9d | 2027-03-17 | 2027-03-27 | RHD4PRSHLDOSRD1000, RHD4PRSHLSTAGRD1000, RHD4CZ8C014RD1100 | Skilled labor [46.4 h]; Unskilled Labor [92.8 h]; Equipment Opreator [587.64 h]; Water Truck [30.6 h]; Roller compactor [92.8 h]; Grader [92.8 h]; Dump Truck [371.36 h]; Aggregate Base Courses [3785.98 m3] | 215,800.86 | C014 | Z8 | CONS | RD | ABC | bef |
|  | 7701 | **RHD4-02-002-C014-(RD)-Traffic Signage** |  | 2028-01-22 | 2028-01-30 |  |  |  |  |  |  |  |  |  |
| RHD4CZ8C014RD8100 |  | Installation of Traffic Signage for Road Network - (RD-C-1/4)-Z8-C014-RD | 8d | 2028-01-22 | 2028-01-30 | RHD4PRSHLDOSRD1600, RHD4PRSHLSTAGRD1600, RHD4CZ8C014RD5100, RHD4CZ8L04IRR3203 | Skilled labor [174.25 h]; Unskilled Labor [87.12 h]; Electrician [38.12 h]; Equipment Opreator [32.67 h]; Boom Truck [17.42 h]; Concrete Mixer Truck [15.25 h]; Traffic signs, ground mounted, 1 Sheet Aluminium, (breakaway)Single post [33 nr] | 40,458 | C014 | Z8 | CONS | RD | Traffic Signage | AFT |
|  | 7699 | **RHD4-02-002-C014-(RD)-Precast Interlocking Block Pavers** |  |  |  |  |  |  |  |  |  |  |  |  |
|  | 7697 | **RHD4-02-002-C014-(RD)-Bituminous concrete wearing course including tack coat (RC2)** |  | 2028-01-22 | 2028-01-23 |  |  |  |  |  |  |  |  |  |
| RHD4CZ8C014RD4100 |  | Supply, lay and compaction Asphaltic wearing course including tack Coat (RC2)for Road Network - (RD-C-1/4)-Z8-C014-RD | 2d | 2028-01-22 | 2028-01-23 | RHD4CZ8C014RD5100 | Skilled labor [18.95 h]; Unskilled Labor [113.91 h]; Equipment Opreator [284.8 h]; Bobcat [18.95 h]; Roller compactor [18.95 h]; Asphalt Paver [18.95 h]; Rubber Compactor [38.01 h]; MC1/RC2 Sprinkler [18.95 h]; Dump Truck [170.87 h]; Bituminous concrete wearing course, (Grading I - Class A), including tack coat (RC2) [905.67 m3] | 491,778.81 | C014 | Z8 | CONS | RD | 50 mm | AFT |
|  | 7700 | **RHD4-02-002-C014-(RD)-Pavement Marking** |  | 2028-01-24 | 2028-01-27 |  |  |  |  |  |  |  |  |  |
| RHD4CZ8C014RD7100 |  | Pavement Markings for Road Network - (RD-C-1/4)-Z8-C014-RD | 4d | 2028-01-24 | 2028-01-27 | RHD4PRSHLDOSRD1500, RHD4PRSHLSTAGRD1500, RHD4CZ8C014RD4100, RHD4CZ8L04RD7100 | Skilled labor [42.4 h]; Unskilled Labor [84.73 h]; Equipment Opreator [42.4 h]; Road Marking Machine [42.4 h]; Retroreflective Thermoplastic White Traffic Markings [283.45 m2]; Retroreflective Thermoplastic Yellow, Traffic Markings [322 m2]; Retroreflective raised pavement markers (cat eyes) [400 nr] | 32,368.95 | C014 | Z8 | CONS | RD | Pavement Marking | AFT |
|  | 7240 | **RHD4-02-002-Z8-C014-Irrigation Network - IRR** |  | 2027-06-22 | 2027-07-15 |  |  |  |  |  |  |  |  |  |
|  | 8188 | **RHD4-02-002-C014-(IRR)-HDPE Pipes - 180 mm diameter** |  | 2027-06-22 | 2027-07-14 |  |  |  |  |  |  |  |  |  |
| RHD4CZ8C014IRR1101 |  | Excavation works for HDPE Pipline 180 mm - (RD-C-1/4)-Z8-C014-IRR | 5d | 2027-06-22 | 2027-06-27 | RHD4CZ8C014RW3000, RHD4CZ8A011IRR1100 | Skilled labor [44.98 h]; Unskilled Labor [44.98 h]; Equipment Opreator [54.02 h]; Excavator-Poclain [44.98 h]; Dump Truck [9.04 h]; HDPE (180mm Diameter) - TSE - Depth: less than 1.5m [61.99 m] | 9,050.54 | C014 | Z8 | CONS | IRR | Excavation | bef |
| RHD4CZ8C014IRR1201 |  | Bedding works for HDPE Pipline 180 mm - (RD-C-1/4)-Z8-C014-IRR | 4d | 2027-06-28 | 2027-07-01 | RHD4CZ8C014IRR1101 | Skilled labor [33.76 h]; Unskilled Labor [67.52 h]; Equipment Opreator [67.52 h]; Excavator-Poclain [33.76 h]; Dump Truck [33.76 h]; HDPE (180mm Diameter) - TSE - Depth: less than 1.5m [31 m] | 4,526 | C014 | Z8 | CONS | IRR | Bedding | bef |
| RHD4CZ8C014IRR1301 |  | Installing for HDPE Pipline 180 mm - (RD-C-1/4)-Z8-C014-IRR | 5d | 2027-07-03 | 2027-07-07 | RHD4CZ8C014IRR1201 | Unskilled Labor [90.06 h]; Plumber [44.98 h]; Equipment Opreator [44.98 h]; Boom Truck [44.98 h]; HDPE (180mm Diameter) - TSE - Depth: less than 1.5m [278.97 m] | 40,729.62 | C014 | Z8 | CONS | IRR | Installation | bef |
| RHD4CZ8C014IRR1401 |  | Primary Test for HDPE Pipline 180 mm - (RD-C-1/4)-Z8-C014-IRR | 2d | 2027-07-08 | 2027-07-10 | RHD4CZ8C014IRR1301 | Unskilled Labor [13.5 h]; Plumber [13.5 h]; Equipment Opreator [13.5 h]; Water Truck [13.5 h]; HDPE (180mm Diameter) - TSE - Depth: less than 1.5m [123.99 m] | 18,102.54 | C014 | Z8 | CONS | IRR | Primary Test | bef |
| RHD4CZ8C014IRR1501 |  | Backfilling and warning tape works for HDPE Pipline 180 mm - (RD-C-1/4)-Z8-C014-IRR | 4d | 2027-07-11 | 2027-07-14 | RHD4CZ8C014IRR1401 | Skilled labor [33.76 h]; Unskilled Labor [67.52 h]; Equipment Opreator [67.52 h]; Excavator-Poclain [33.76 h]; Dump Truck [33.76 h]; HDPE (180mm Diameter) - TSE - Depth: less than 1.5m [123.99 m] | 18,102.54 | C014 | Z8 | CONS | IRR | Backfilling | bef |
|  | 6685 | **RHD4-02-002-C014-(IRR)-Wash out Chamber** |  | 2027-07-05 | 2027-07-13 |  |  |  |  |  |  |  |  |  |
| RHD4CZ8C014IRR2101 |  | Excavation and Bedding for Wash out Chamber for Irrigation Network - (RD-C-1/4)-Z8-C014-IRR | 2d | 2027-07-05 | 2027-07-06 | RHD4CZ8C014IRR1300 | Skilled labor [5.45 h]; Unskilled Labor [5.45 h]; Equipment Opreator [1.09 h]; Excavator-Poclain [0.54 h]; Dump Truck [0.54 h]; Wash out chambers - TSE [0.25 nr] | 4,686.25 | C014 | Z8 | CONS | IRR | Excavation and Bedding | bef |
| RHD4CZ8C014IRR2201 |  | PC works for Wash out Chamber for Irrigation Network - (RD-C-1/4)-Z8-C014-IRR | 2d | 2027-07-07 | 2027-07-08 | RHD4CZ8C014IRR2101 | Skilled labor [5.45 h]; Unskilled Labor [10.89 h]; Equipment Opreator [0.54 h]; Concrete Pump [0.54 h]; Wash out chambers - TSE [0.1 nr] | 1,874.5 | C014 | Z8 | CONS | IRR | PC Works | bef |
| RHD4CZ8C014IRR2301 |  | Installation for Wash out Chamber for Irrigation Network - (RD-C-1/4)-Z8-C014-IRR | 2d | 2027-07-10 | 2027-07-11 | RHD4CZ8C014IRR2201 | Skilled labor [5.45 h]; Unskilled Labor [10.89 h]; Equipment Opreator [1.09 h]; Boom Truck [1.09 h]; Wash out chambers - TSE [0.55 nr] | 10,309.75 | C014 | Z8 | CONS | IRR | Installation | bef |
| RHD4CZ8C014IRR2401 |  | Backfilling works for Wash out Chamber for Irrigation Network - (RD-C-1/4)-Z8-C014-IRR | 2d | 2027-07-12 | 2027-07-13 | RHD4CZ8C014IRR2301 | Skilled labor [5.45 h]; Unskilled Labor [10.89 h]; Equipment Opreator [1.09 h]; Water Truck [0.54 h]; Dump Truck [0.54 h]; Wash out chambers - TSE [0.1 nr] | 1,874.5 | C014 | Z8 | CONS | IRR | Backfilling Works | bef |

| ID | WBS | Activity | Duration | Start | Finish | Predecessors | Resources | Cost | RDH4-01-001-Road and Block Names-1 | RDH4-01-001-Zones-1 | RDH4-01-001-Phases-1 | RDH4-01-001-Networks-1 | RDH4-01-001-Work Method-1 | RDH4-01-001-MENEM |
| --- | --- | --- | --- | --- | --- | --- | --- | --- | --- | --- | --- | --- | --- | --- |
|  | 6686 | **RHD4-02-002-C014-(IRR)-Wash out Valves** |  | 2027-07-12 | 2027-07-15 |  |  |  |  |  |  |  |  |  |
| RHD4CZ8C014IRR3102 |  | Installation for Wash out Valve for Irrigation Network - (RD-C-1/4)-Z8-C014-IRR | 2d | 2027-07-12 | 2027-07-13 | RHD4CZ8C014IRR2301 | Unskilled Labor [5.45 h]; Plumber [5.45 h]; Wash out valve diameter 100 mm - TSE [0.9 nr] | 3,373.2 | C014 | Z8 | CONS | IRR | Installation | bef |
| RHD4CZ8C014IRR3202 |  | Stem and Service box for Wash out Valve for Irrigation Network - (RD-C-1/4)-Z8-C014-IRR | 2d | 2027-07-14 | 2027-07-15 | RHD4CZ8C014IRR3102, RHD4CZ8C014IRR2401 | Unskilled Labor [5.45 h]; Plumber [5.45 h]; Wash out valve diameter 100 mm - TSE [0.1 nr] | 374.8 | C014 | Z8 | CONS | IRR | Stem and Service box | bef |
|  | 6107 | **RHD4-02-002-C014-(IRR)-HDPE Pipes - 160 mm diameter** |  | 2027-06-28 | 2027-07-08 |  |  |  |  |  |  |  |  |  |
| RHD4CZ8C014IRR1100 |  | Excavation works for HDPE Pipline 160 mm - (RD-C-1/4)-Z8-C014-IRR | 2d | 2027-06-28 | 2027-06-29 | RHD4CZ8C014IRR1101 | Skilled labor [8.17 h]; Unskilled Labor [8.17 h]; Equipment Opreator [9.8 h]; Excavator-Poclain [8.17 h]; Dump Truck [1.6 h]; HDPE (160mm Diameter) - TSE - Depth: less than 1.5m [11.2 m] | 1,377.6 | C014 | Z8 | CONS | IRR | Excavation | bef |
| RHD4CZ8C014IRR1200 |  | Bedding works for HDPE Pipline 160 mm - (RD-C-1/4)-Z8-C014-IRR | 2d | 2027-06-30 | 2027-07-01 | RHD4CZ8C014IRR1100 | Skilled labor [6.1 h]; Unskilled Labor [12.2 h]; Equipment Opreator [12.2 h]; Excavator-Poclain [6.1 h]; Dump Truck [6.1 h]; HDPE (160mm Diameter) - TSE - Depth: less than 1.5m [5.6 m] | 688.8 | C014 | Z8 | CONS | IRR | Bedding | bef |
| RHD4CZ8C014IRR1300 |  | Installing for HDPE Pipline 160 mm - (RD-C-1/4)-Z8-C014-IRR | 2d | 2027-07-03 | 2027-07-04 | RHD4CZ8C014IRR1200 | Unskilled Labor [16.23 h]; Plumber [8.17 h]; Equipment Opreator [8.17 h]; Boom Truck [8.17 h]; HDPE (160mm Diameter) - TSE - Depth: less than 1.5m [50.4 m] | 6,199.2 | C014 | Z8 | CONS | IRR | Installation | bef |
| RHD4CZ8C014IRR1400 |  | Primary Test for HDPE Pipline 160 mm - (RD-C-1/4)-Z8-C014-IRR | 2d | 2027-07-05 | 2027-07-06 | RHD4CZ8C014IRR1300 | Unskilled Labor [2.4 h]; Plumber [2.4 h]; Equipment Opreator [2.4 h]; Water Truck [2.4 h]; HDPE (160mm Diameter) - TSE - Depth: less than 1.5m [22.4 m] | 2,755.2 | C014 | Z8 | CONS | IRR | Primary Test | bef |
| RHD4CZ8C014IRR1500 |  | Backfilling and warning tape works for HDPE Pipline 160 mm - (RD-C-1/4)-Z8-C014-IRR | 2d | 2027-07-07 | 2027-07-08 | RHD4CZ8C014IRR1400 | Skilled labor [6.1 h]; Unskilled Labor [12.2 h]; Equipment Opreator [12.2 h]; Excavator-Poclain [6.1 h]; Dump Truck [6.1 h]; HDPE (160mm Diameter) - TSE - Depth: less than 1.5m [22.4 m] | 2,755.2 | C014 | Z8 | CONS | IRR | Backfilling | bef |
|  | 6115 | **RHD4-02-002-C014-(IRR)-Gate Valves (Direct Buried)** |  | 2027-07-03 | 2027-07-11 |  |  |  |  |  |  |  |  |  |
| RHD4CZ8C014IRR3100 |  | Installation for Direct Buried Gate Valves - (RD-C-1/4)-Z8-C014-IRR | 2d | 2027-07-03 | 2027-07-04 | RHD4CZ8C014IRR1300 SS, RHD4CZ8C014IRR1300 FF | Unskilled Labor [21.78 h]; Plumber [21.78 h]; Gate valves dia 100 mm - TSE [3.6 nr] | 5,688 | C014 | Z8 | CONS | IRR | Installation | bef |
| RHD4CZ8C014IRR3200 |  | Stem and Service box for Direct Buried Gate Valves - (RD-C-1/4)-Z8-C014-IRR | 2d | 2027-07-10 | 2027-07-11 | RHD4CZ8C014IRR3100, RHD4CZ8C014IRR1500 | Unskilled Labor [21.78 h]; Plumber [21.78 h]; Gate valves dia 100 mm - TSE [0.4 nr] | 632 | C014 | Z8 | CONS | IRR | Stem and Service box | bef |
|  | 7653 | **RHD4-02-002-Z8-C014-Medium Voltage Network - MV** |  | 2027-07-11 | 2027-08-05 |  |  |  |  |  |  |  |  |  |
|  | 7654 | **RHD4-02-002-C014-(MV)-Medium Voltage cable trench** |  | 2027-07-11 | 2027-07-19 |  |  |  |  |  |  |  |  |  |
| RHD4CZ8C014MV1100 |  | Excavation for Medium Voltage Trench - (RD-C-1/4)-Z8-C014-MV | 3d | 2027-07-11 | 2027-07-13 | RHD4ENSDZ8APPMV150, RHD4CZ8C014RD3100, RHD4CZ8L04MV1100 | Skilled labor [25.92 h]; Unskilled Labor [51.73 h]; Equipment Opreator [77.65 h]; Excavator-Poclain [25.92 h]; Dump Truck [51.73 h]; Excavation for Trench size 60cm wide and 80cm deep ( for 2 cables) [166.36 m3] | 1,663.56 | C014 | Z8 | CONS | MV | Excavation | AFT |
| RHD4CZ8C014MV1200 |  | Trench Backfilling for Medium Voltage Network - (RD-C-1/4)-Z8-C014-MV | 3d | 2027-07-17 | 2027-07-19 | RHD4CZ8C014MV3101 | Skilled labor [25.92 h]; Unskilled Labor [25.92 h]; Equipment Opreator [51.73 h]; Dump Truck [51.73 h]; Excavation for Trench size 60cm wide and 80cm deep ( for 2 cables) [71.3 m3] | 713 | C014 | Z8 | CONS | MV | Backfilling | AFT |
|  | 7656 | **RHD4-02-002-C014-(MV)-Medium Voltage cables 3Cx 500 mm²** |  | 2027-07-14 | 2027-08-05 |  |  |  |  |  |  |  |  |  |
| RHD4CZ8C014MV3100 |  | Installation of Medium Voltage Cables 3Cx 500 mm² - (RD-C-1/4)-Z8-C014-MV | 6d | 2027-07-14 | 2027-07-20 | RHD4PRSHLDOSMV1100, RHD4ENMSMV2000, RHD4ENMSMV2010, RHD4PRSHLSTAGMV1100, RHD4CZ8C014MV1100 | Skilled labor [58.81 h]; Unskilled Labor [235.2 h]; Electrician [117.6 h]; Equipment Opreator [176.42 h]; Boom Truck [58.81 h]; Cable Laying Machine [117.6 h]; Cable 13.8 kV 3Cx 500 mm² Al/XLPE,/LLDPE / Unarmored [729.13 m] | 115,931.03 | C014 | Z8 | CONS | MV | Installation | AFT |
| RHD4CZ8C014MV3200 |  | Joints Installation of Medium Voltage Cables 3Cx 500 mm² - (RD-C-1/4)-Z8-C014-MV | 2d | 2027-07-21 | 2027-07-22 | RHD4PRSHLDOSMV1300, RHD4PRSHLSTAGMV1300, RHD4CZ8C014MV3100 | Skilled labor [5.45 h]; Unskilled Labor [21.78 h]; Electrician [10.89 h]; Equipment Opreator [5.45 h]; Boom Truck [5.45 h]; Straight joints cables for 13.8 kv 3Cx 500 mm², Al /XLPE/LLDPE [1 Unit] | 3,248 | C014 | Z8 | CONS | MV | Joints Installation | AFT |
| RHD4CZ8C014MV3300 |  | Testing of Medium Voltage Cables 3Cx 500 mm² - (RD-C-1/4)-Z8-C014-MV | 2d | 2027-07-24 | 2027-07-25 | RHD4CZ8C014MV3200, RHD4CZ8C014MV1200 | Skilled labor [17.64 h]; Unskilled Labor [70.57 h]; Electrician [35.28 h]; Cable 13.8 kV 3Cx 500 mm² Al/XLPE,/LLDPE / Unarmored [81.01 m] | 12,881.23 | C014 | Z8 | CONS | MV | Testing | AFT |
| RHD4CZ8C014MV3400 |  | Termination of Medium Voltage Cables 3Cx 500 mm² - (RD-C-1/4)-Z8-C014-MV | 2d | 2027-08-04 | 2027-08-05 | RHD4CZ8C014MV3300, RHD4CZ8C014MV5400 | Unskilled Labor [0.33 h]; Electrician [0.33 h]; Cable Termination for 13.8 kv 3Cx 500 mm², Al /XLPE/LLDPE [1.6 Unit] | 4,216 | C014 | Z8 | CONS | MV | Termination | AFT |
|  | 7657 | **RHD4-02-002-C014-(MV)-Medium Voltage cables 3Cx 50 mm²** |  | 2027-07-14 | 2027-08-05 |  |  |  |  |  |  |  |  |  |
| RHD4CZ8C014MV3101 |  | Installation of Medium Voltage Cables 3Cx 50 mm² - (RD-C-1/4)-Z8-C014-MV | 2d | 2027-07-14 | 2027-07-15 | RHD4PRSHLDOSMV1200, RHD4ENMSMV2000, RHD4ENMSMV2010, RHD4PRSHLSTAGMV1200, RHD4CZ8C014MV1100 | Unskilled Labor [1.74 h]; Electrician [0.87 h]; Equipment Opreator [1.31 h]; Boom Truck [0.44 h]; Cable Laying Machine [0.87 h]; Single Core Copper Cable 13.8 kV 3Cx 50 mm² Cu/XLPE/PVC / Unarmored [3.6 m] | 403.2 | C014 | Z8 | CONS | MV | Installation | AFT |
| RHD4CZ8C014MV3301 |  | Testing of Medium Voltage Cables 3Cx 50 mm² - (RD-C-1/4)-Z8-C014-MV | 2d | 2027-07-20 | 2027-07-21 | RHD4CZ8C014MV3101, RHD4CZ8C014MV1200 | Unskilled Labor [0.33 h]; Electrician [0.22 h]; Single Core Copper Cable 13.8 kV 3Cx 50 mm² Cu/XLPE/PVC / Unarmored [0.4 m] | 44.8 | C014 | Z8 | CONS | MV | Testing | AFT |
| RHD4CZ8C014MV3401 |  | Termination of Medium Voltage Cables 3Cx 50 mm² - (RD-C-1/4)-Z8-C014-MV | 2d | 2027-08-04 | 2027-08-05 | RHD4CZ8C014MV3301, RHD4CZ8C014MV5400 | Unskilled Labor [5.77 h]; Electrician [2.94 h]; Cable Termination for 13.8 kv 3Cx 500 mm², Al /XLPE/LLDPE [0.4 Unit] | 1,054 | C014 | Z8 | CONS | MV | Termination | AFT |

| ID | WBS | Activity | Duration | Start | Finish | Predecessors | Resources | Cost | RDH4-01-001-Road and Block Names-1 | RDH4-01-001-Zones-1 | RDH4-01-001-Phases-1 | RDH4-01-001-Networks-1 | RDH4-01-001-Work Method-1 | RDH4-01-001-MENEM |
| --- | --- | --- | --- | --- | --- | --- | --- | --- | --- | --- | --- | --- | --- | --- |
|  | 7659 | **RHD4-02-002-C014-(MV)-Unit Substations** |  | 2027-07-20 | 2027-08-03 |  |  |  |  |  |  |  |  |  |
| RHD4CZ8C014MV5100 |  | Excavation for Unit Substations for Medium Voltage Network - (RD-C-1/4)-Z8-C014-MV | 2d | 2027-07-20 | 2027-07-21 | RHD4ENSDZ8APPMV150, RHD4CZ8C014MV1200 | Skilled labor [21.78 h]; Unskilled Labor [21.78 h]; Equipment Opreator [43.56 h]; Excavator-Poclain [21.78 h]; Dump Truck [21.78 h]; Unit Substation 13.8/0.4 K V, 500kVA ,Including concrete foundations and fencing, According to the specifications and standards of SEC [0.1 Unit]; Ring Main Unit RMU, 13.8KV, According to the specifications and standards of SEC [0.1 Unit] | 12,257 | C014 | Z8 | CONS | MV | Excavation | AFT |
| RHD4CZ8C014MV5200 |  | Concrete Base Placement for Unit Substations for Medium Voltage Network - (RD-C-1/4)-Z8-C014-MV | 2d | 2027-07-22 | 2027-07-24 | RHD4CZ8C014MV5100 | Skilled labor [21.78 h]; Unskilled Labor [21.78 h]; Equipment Opreator [21.78 h]; Boom Truck [21.78 h]; Unit Substation 13.8/0.4 K V, 500kVA ,Including concrete foundations and fencing, According to the specifications and standards of SEC [0.15 Unit]; Ring Main Unit RMU, 13.8KV, According to the specifications and standards of SEC [0.15 Unit] | 18,385.5 | C014 | Z8 | CONS | MV | Concrete Base Placement | AFT |
| RHD4CZ8C014MV5300 |  | Installation for Fences and doors for Medium Voltage Network - (RD-C-1/4)-Z8-C014-MV | 5d | 2027-07-25 | 2027-07-29 | RHD4CZ8C014MV5200 | Skilled labor [54.45 h]; Unskilled Labor [54.45 h]; Equipment Opreator [65.34 h]; Excavator-Poclain [10.89 h]; Boom Truck [54.45 h]; Unit Substation 13.8/0.4 K V, 500kVA ,Including concrete foundations and fencing, According to the specifications and standards of SEC [0.1 Unit]; Ring Main Unit RMU, 13.8KV, According to the specifications and standards of SEC [0.1 Unit] | 12,257 | C014 | Z8 | CONS | MV | Fence Installation | AFT |
| RHD4CZ8C014MV5400 |  | Installation for Unit Substations for Medium Voltage Network - (RD-C-1/4)-Z8-C014-MV | 4d | 2027-07-31 | 2027-08-03 | RHD4PRLOLSTAGMV1601, RHD4PRLOLSTAGMV1602, RHD4CZ8C014MV5300 | Skilled labor [43.56 h]; Unskilled Labor [87.12 h]; Electrician [87.12 h]; Unit Substation 13.8/0.4 K V, 500kVA ,Including concrete foundations and fencing, According to the specifications and standards of SEC [0.65 Unit]; Ring Main Unit RMU, 13.8KV, According to the specifications and standards of SEC [0.65 Unit] | 79,670.5 | C014 | Z8 | CONS | MV | Substation Installation | AFT |
|  | 7660 | **RHD4-02-002-Z8-C014-Low Voltage Network - LV** |  | 2027-08-07 | 2027-08-22 |  |  |  |  |  |  |  |  |  |
|  | 7663 | **RHD4-02-002-C014-(LV)-Low Voltage cables** |  | 2027-08-07 | 2027-08-15 |  |  |  |  |  |  |  |  |  |
| RHD4CZ8C014LV3100 |  | Excavation for Low Voltage Cables for Low Voltage Network - (RD-C-1/4)-Z8-C014-LV | 2d | 2027-08-07 | 2027-08-08 | RHD4ENSDZ8APPLV160, RHD4CZ8C014MV1200, RHD4CZ8C014MV3401, RHD4CZ8C014MV3400 | Skilled labor [0.98 h]; Unskilled Labor [1.96 h]; Equipment Opreator [1.96 h]; Excavator-Poclain [0.98 h]; Boom Truck [0.98 h]; Cable, Copper 4x185mm2/ CU/XLPE/PVC [2.44 m]; Cable, Copper 4x50mm2/ CU/XLPE/PVC +1x25mm2 CU/PVC [2.06 m] | 1,193.26 | C014 | Z8 | CONS | LV | Excavation | AFT |
| RHD4CZ8C014LV3200 |  | Cable Laying of Low Voltage Cables for Low Voltage Network - (RD-C-1/4)-Z8-C014-LV | 2d | 2027-08-09 | 2027-08-10 | RHD4PRSHLDOSLV1100, RHD4ENMSLV2000, RHD4ENMSLV2010, RHD4PRSHLSTAGLV1100, RHD4CZ8C014LV3100 | Skilled labor [0.8 h]; Unskilled Labor [3.27 h]; Electrician [1.6 h]; Equipment Opreator [2.4 h]; Boom Truck [0.8 h]; Cable Laying Machine [1.6 h]; Cable, Copper 4x185mm2/ CU/XLPE/PVC [7.31 m]; Cable, Copper 4x50mm2/ CU/XLPE/PVC +1x25mm2 CU/PVC [6.17 m] | 3,579.79 | C014 | Z8 | CONS | LV | Cable Laying | AFT |
| RHD4CZ8C014LV3300 |  | Warning tape and Backfill for Low Voltage Cables for Low Voltage Network - (RD-C-1/4)-Z8-C014-LV | 2d | 2027-08-11 | 2027-08-12 | RHD4CZ8C014LV3200 | Skilled labor [0.8 h]; Unskilled Labor [3.27 h]; Electrician [1.6 h]; Equipment Opreator [0.8 h]; Boom Truck [0.8 h]; Cable, Copper 4x185mm2/ CU/XLPE/PVC [1.83 m]; Cable, Copper 4x50mm2/ CU/XLPE/PVC +1x25mm2 CU/PVC [1.54 m] | 894.95 | C014 | Z8 | CONS | LV | Warning tape and Backfill | AFT |
| RHD4CZ8C014LV3400 |  | Testing of Low Voltage Cables for Low Voltage Network - (RD-C-1/4)-Z8-C014-LV | 2d | 2027-08-14 | 2027-08-15 | RHD4CZ8C014LV3300 | Skilled labor [0.44 h]; Unskilled Labor [1.96 h]; Electrician [0.98 h]; Equipment Opreator [0.44 h]; Boom Truck [0.44 h]; Cable, Copper 4x185mm2/ CU/XLPE/PVC [0.61 m]; Cable, Copper 4x50mm2/ CU/XLPE/PVC +1x25mm2 CU/PVC [0.51 m] | 298.32 | C014 | Z8 | CONS | LV | Testing | AFT |
|  | 7664 | **RHD4-02-002-C014-(LV)-Low Voltage Distribution Pillars** |  | 2027-08-16 | 2027-08-22 |  |  |  |  |  |  |  |  |  |
| RHD4CZ8C014LV4100 |  | Leveling for Distribution Pillars for Low Voltage Network - (RD-C-1/4)-Z8-C014-LV | 2d | 2027-08-16 | 2027-08-17 | RHD4CZ8C014LV3400 | Skilled labor [5.45 h]; Unskilled Labor [10.89 h]; Equipment Opreator [2.18 h]; Excavator-Poclain [1.09 h]; Boom Truck [1.09 h]; Supply and installation of KWH meter mounting frame including concrete block wall for installation of KWH meter according to the standards and specifications of SEC [0.15 Unit] | 707.85 | C014 | Z8 | CONS | LV | Leveling | AFT |
| RHD4CZ8C014LV4200 |  | Lean Concrete for Distribution Pillars for Low Voltage Network - (RD-C-1/4)-Z8-C014-LV | 2d | 2027-08-18 | 2027-08-19 | RHD4CZ8C014LV4100 | Skilled labor [3.59 h]; Unskilled Labor [7.3 h]; Equipment Opreator [1.42 h]; Concrete Mixer Truck [0.8 h]; Concrete Pump [0.8 h]; Supply and installation of KWH meter mounting frame including concrete block wall for installation of KWH meter according to the standards and specifications of SEC [0.25 Unit] | 1,179.75 | C014 | Z8 | CONS | LV | Lean Concrete | AFT |
| RHD4CZ8C014LV4300 |  | Installation of Distribution Pillars for Low Voltage Network - (RD-C-1/4)-Z8-C014-LV | 2d | 2027-08-21 | 2027-08-22 | RHD4PRSHLDOSLV1200, RHD4PRSHLDOSLV1300, RHD4PRSHLSTAGLV1200, RHD4PRSHLSTAGLV1300, RHD4CZ8C014LV4200 | Skilled labor [5.45 h]; Unskilled Labor [21.78 h]; Electrician [10.89 h]; Equipment Opreator [5.45 h]; Boom Truck [5.45 h]; Supply and installation of KWH meter mounting frame including concrete block wall for installation of KWH meter according to the standards and specifications of SEC [0.6 Unit] | 2,831.4 | C014 | Z8 | CONS | LV | Installation | AFT |
|  | 7665 | **RHD4-02-002-C014-(LV)-Low Voltage Distribution Pillars Earthing** |  |  |  |  |  |  |  |  |  |  |  |  |
|  | 7666 | **RHD4-02-002-Z8-C014-Street Lighting Network - SL** |  | 2027-07-10 | 2027-10-13 |  |  |  |  |  |  |  |  |  |
|  | 7667 | **RHD4-02-002-C014-(SL)-Street Lighting duct banks** |  | 2027-07-10 | 2027-07-18 |  |  |  |  |  |  |  |  |  |
| RHD4CZ8C014SL2100 |  | Excavation of Duct Banks for Street Lighting Network - (RD-C-1/4)-Z8-C014-SL | 2d | 2027-07-10 | 2027-07-11 | RHD4ENSDZ8APPSL170, RHD4CZ8C014RW3000, RHD4CZ8C014IRR1100, RHD4CZ8C014IRR1500 | Skilled labor [10.24 h]; Unskilled Labor [10.24 h]; Equipment Opreator [20.47 h]; Excavator-Poclain [10.24 h]; Dump Truck [10.24 h]; Road Crossing Duct for Street Lighting cables UPVC (4x?110mm) [1.41 m] | 372.24 | C014 | Z8 | CONS | SL | Excavation | bef |
| RHD4CZ8C014SL2200 |  | Installation of Duct Banks for Street Lighting Network - (RD-C-1/4)-Z8-C014-SL | 2d | 2027-07-12 | 2027-07-13 | RHD4PRSHLDOSSL1000, RHD4PRSHLSTAGSL1000, RHD4CZ8C014SL2100 | Carpenter [1.52 h]; Skilled labor [15.36 h]; Unskilled Labor [15.36 h]; Steel Fixer [1.52 h]; Road Crossing Duct for Street Lighting cables UPVC (4x?110mm) [1.41 m] | 372.24 | C014 | Z8 | CONS | SL | Installing | bef |
| RHD4CZ8C014SL2300 |  | Pouring of Duct Banks for Street Lighting Network - (RD-C-1/4)-Z8-C014-SL | 2d | 2027-07-14 | 2027-07-15 | RHD4CZ8C014SL2200 | Skilled labor [10.24 h]; Unskilled Labor [10.24 h]; Equipment Opreator [4.14 h]; Concrete Mixer Truck [2.07 h]; Concrete Pump [2.07 h]; Road Crossing Duct for Street Lighting cables UPVC (4x?110mm) [9.16 m] | 2,418.24 | C014 | Z8 | CONS | SL | Pouring | bef |
| RHD4CZ8C014SL2400 |  | Backfilling of Duct Banks for Street Lighting Network - (RD-C-1/4)-Z8-C014-SL | 2d | 2027-07-17 | 2027-07-18 | RHD4CZ8C014SL2300 | Skilled labor [7.62 h]; Unskilled Labor [7.62 h]; Equipment Opreator [3.05 h]; Excavator-Poclain [3.05 h]; Road Crossing Duct for Street Lighting cables UPVC (4x?110mm) [2.11 m] | 557.04 | C014 | Z8 | CONS | SL | Backfilling | bef |
|  | 7668 | **RHD4-02-002-C014-(SL)-Street Lighting Drawpit** |  | 2027-08-23 | 2027-08-26 |  |  |  |  |  |  |  |  |  |
| RHD4CZ8C014SL5100 |  | Excavation of Drawpit size 600x600x900mm for Street Lighting Network - (RD-C-1/4)-Z8-C014-SL | 2d | 2027-08-23 | 2027-08-24 | RHD4ENSDZ8APPSL170, RHD4CZ8C014SL2300, RHD4CZ8C014LV4300 | Skilled labor [1.85 h]; Unskilled Labor [1.85 h]; Equipment Opreator [1.42 h]; Excavator-Poclain [0.8 h]; Dump Truck [0.8 h]; Drawpit with medium duty steel cover, size600x600x900mm, [0.3 Unit] | 735.3 | C014 | Z8 | CONS | SL | Excavation | AFT |
| RHD4CZ8C014SL5200 |  | Installation of Drawpit size 600x600x900mm for Street Lighting Network - (RD-C-1/4)-Z8-C014-SL | 2d | 2027-08-25 | 2027-08-26 | RHD4PRSHLDOSSL1400, RHD4PRSHLSTAGSL1400, RHD4CZ8C014SL5100 | Skilled labor [1.85 h]; Unskilled Labor [1.85 h]; Equipment Opreator [0.8 h]; Boom Truck [0.8 h]; Drawpit with medium duty steel cover, size600x600x900mm, [1.7 Unit] | 4,166.7 | C014 | Z8 | CONS | SL | Installation | AFT |

| ID | WBS | Activity | Duration | Start | Finish | Predecessors | Resources | Cost | RDH4-01-001-Road and Block Names-1 | RDH4-01-001-Zones-1 | RDH4-01-001-Phases-1 | RDH4-01-001-Networks-1 | RDH4-01-001-Work Method-1 | RDH4-01-001-MENEM |
| --- | --- | --- | --- | --- | --- | --- | --- | --- | --- | --- | --- | --- | --- | --- |
|  | 7669 | **RHD4-02-002-C014-(SL)-Street Lighting cables** |  | 2027-08-28 | 2027-09-12 |  |  |  |  |  |  |  |  |  |
| RHD4CZ8C014SL3100 |  | Excavation for Street Lighting Cables for Street Lighting Network - (RD-C-1/4)-Z8-C014-SL | 4d | 2027-08-28 | 2027-08-31 | RHD4ENSDZ8APPSL170, RHD4CZ8C014SL5200 | Skilled labor [42.04 h]; Unskilled Labor [84.18 h]; Equipment Opreator [84.18 h]; Excavator-Poclain [42.04 h]; Boom Truck [42.04 h]; Cable, Copper 4x10mm2/ CU/XLPE/SWA/PVC + 1x10mm2 CU/PVC [193.19 m] | 9,466.13 | C014 | Z8 | CONS | SL | Excavation | AFT |
| RHD4CZ8C014SL3200 |  | Cable Laying of Street Lighting Cables for Street Lighting Network - (RD-C-1/4)-Z8-C014-SL | 4d | 2027-09-01 | 2027-09-05 | RHD4PRSHLDOSSL1100, RHD4ENMSSL2000, RHD4ENMSSL2010, RHD4PRSHLSTAGSL1100, RHD4CZ8C014SL3100 | Skilled labor [35.07 h]; Unskilled Labor [140.27 h]; Electrician [70.13 h]; Equipment Opreator [105.2 h]; Boom Truck [35.07 h]; Cable Laying Machine [70.13 h]; Cable, Copper 4x10mm2/ CU/XLPE/SWA/PVC + 1x10mm2 CU/PVC [579.56 m] | 28,398.38 | C014 | Z8 | CONS | SL | Cable Laying | AFT |
| RHD4CZ8C014SL3300 |  | Warning tape and Backfill for Street Lighting Cables for Street Lighting Network - (RD-C-1/4)-Z8-C014-SL | 4d | 2027-09-06 | 2027-09-09 | RHD4CZ8C014SL3200 | Skilled labor [35.07 h]; Unskilled Labor [140.27 h]; Electrician [70.13 h]; Equipment Opreator [35.07 h]; Boom Truck [35.07 h]; Cable, Copper 4x10mm2/ CU/XLPE/SWA/PVC + 1x10mm2 CU/PVC [144.89 m] | 7,099.6 | C014 | Z8 | CONS | SL | Warning tape and Backfill | AFT |
| RHD4CZ8C014SL3400 |  | Testing of Street Lighting Cables for Street Lighting Network - (RD-C-1/4)-Z8-C014-SL | 2d | 2027-09-11 | 2027-09-12 | RHD4CZ8C014SL3300 | Skilled labor [21.02 h]; Unskilled Labor [84.18 h]; Electrician [42.04 h]; Equipment Opreator [21.02 h]; Boom Truck [21.02 h]; Cable, Copper 4x10mm2/ CU/XLPE/SWA/PVC + 1x10mm2 CU/PVC [48.3 m] | 2,366.7 | C014 | Z8 | CONS | SL | Testing | AFT |
|  | 7670 | **RHD4-02-002-C014-(SL)-Street Lighting Poles** |  | 2027-09-13 | 2027-10-04 |  |  |  |  |  |  |  |  |  |
| RHD4CZ8C014SL1100 |  | Excavation for RC Base for Lighting Poles for Street Lighting Network - (RD-C-1/4)-Z8-C014-SL | 3d | 2027-09-13 | 2027-09-15 | RHD4ENSDZ8APPSL170, RHD4CZ8C014SL3400 | Skilled labor [22.54 h]; Unskilled Labor [22.54 h]; Equipment Opreator [44.98 h]; Excavator-Poclain [22.54 h]; Dump Truck [22.54 h]; Lighting polesdouble arms, height of ( 12 ) meters [3.1 Unit] | 14,173.2 | C014 | Z8 | CONS | SL | Excavation | AFT |
| RHD4CZ8C014SL1200 |  | Installation for RC Base for Lighting Poles for Street Lighting Network - (RD-C-1/4)-Z8-C014-SL | 3d | 2027-09-16 | 2027-09-19 | RHD4CZ8C014SL1100 | Skilled labor [22.54 h]; Unskilled Labor [22.54 h]; Equipment Opreator [44.98 h]; Excavator-Poclain [22.54 h]; Dump Truck [22.54 h]; Lighting polesdouble arms, height of ( 12 ) meters [7.75 Unit] | 35,433 | C014 | Z8 | CONS | SL | RC Base | AFT |
| RHD4CZ8C014SL1300 |  | Backfill for RC Base for Lighting Poles for Street Lighting Network - (RD-C-1/4)-Z8-C014-SL | 3d | 2027-09-20 | 2027-09-22 | RHD4CZ8C014SL1200 | Skilled labor [22.54 h]; Unskilled Labor [22.54 h]; Equipment Opreator [44.98 h]; Excavator-Poclain [22.54 h]; Dump Truck [22.54 h]; Lighting polesdouble arms, height of ( 12 ) meters [1.55 Unit] | 7,086.6 | C014 | Z8 | CONS | SL | Backfill | AFT |
| RHD4CZ8C014SL1400 |  | Installation for Lighting Poles for Street Lighting Network - (RD-C-1/4)-Z8-C014-SL | 4d | 2027-09-25 | 2027-09-28 | RHD4PRSHLDOSSL1200, RHD4ENMSSL2000, RHD4ENMSSL2010, RHD4PRSHLSTAGSL1200, RHD4CZ8C014SL1300, RHD4CZ8C014SL3400 | Skilled labor [33.76 h]; Unskilled Labor [33.76 h]; Electrician [33.76 h]; Equipment Opreator [33.76 h]; Boom Truck [33.76 h]; Lighting polesdouble arms, height of ( 12 ) meters [18.6 Unit] | 85,039.2 | C014 | Z8 | CONS | SL | Poles Installation | AFT |
| RHD4CZ8C014SL1500 |  | Luminaire Installation for Lighting Poles for Street Lighting Network - (RD-C-1/4)-Z8-C014-SL | 5d | 2027-09-29 | 2027-10-04 | RHD4PRSHLDOSSL1300, RHD4PRSHLSTAGSL1300, RHD4CZ8C014SL1400 | Unskilled Labor [90.06 h]; Electrician [44.98 h]; Equipment Opreator [17.97 h]; Boom Truck [17.97 h]; Street Lighting( LED) Luminaire of Output ?18553 lumen [62 Unit] | 39,494 | C014 | Z8 | CONS | SL | Luminaire Installation | AFT |
|  | 7671 | **RHD4-02-002-C014-(SL)-Street Lighting Feeder Pillars** |  | 2027-10-05 | 2027-10-11 |  |  |  |  |  |  |  |  |  |
| RHD4CZ8C014SL4100 |  | Leveling for Distribution Pillars for Street Lighting Network - (RD-C-1/4)-Z8-C014-SL | 2d | 2027-10-05 | 2027-10-06 | RHD4CZ8C014SL1500 | Skilled labor [10.89 h]; Unskilled Labor [21.78 h]; Equipment Opreator [4.36 h]; Excavator-Poclain [2.18 h]; Boom Truck [2.18 h]; 0.6/1 KV Steet Lighting Feeder Pillar [0.15 Unit] | 3,438.15 | C014 | Z8 | CONS | SL | Leveling | AFT |
| RHD4CZ8C014SL4200 |  | Lean Concrete for Distribution Pillars for Street Lighting Network - (RD-C-1/4)-Z8-C014-SL | 2d | 2027-10-07 | 2027-10-09 | RHD4CZ8C014SL4100 | Skilled labor [10.89 h]; Unskilled Labor [21.78 h]; Equipment Opreator [4.36 h]; Concrete Mixer Truck [2.18 h]; Concrete Pump [2.18 h]; 0.6/1 KV Steet Lighting Feeder Pillar [0.25 Unit] | 5,730.25 | C014 | Z8 | CONS | SL | Lean Concrete | AFT |
| RHD4CZ8C014SL4300 |  | Installation of Distribution Pillars for Street Lighting Network - (RD-C-1/4)-Z8-C014-SL | 2d | 2027-10-10 | 2027-10-11 | RHD4CZ8C014SL4200, RHD4CZ8C014SL1400 | Skilled labor [10.89 h]; Unskilled Labor [43.56 h]; Electrician [21.78 h]; Equipment Opreator [10.89 h]; Boom Truck [10.89 h]; 0.6/1 KV Steet Lighting Feeder Pillar [0.6 Unit] | 13,752.6 | C014 | Z8 | CONS | SL | Installation | AFT |
|  | 7672 | **RHD4-02-002-C014-(SL)-Street Lighting Earthing System** |  | 2027-10-12 | 2027-10-13 |  |  |  |  |  |  |  |  |  |
| RHD4CZ8C014SL6100 |  | Installation of Earthing for Lighting Poles and Fedder Pillers for Street Lighting Network - (RD-C-1/4)-Z8-C014-SL | 2d | 2027-10-12 | 2027-10-13 | RHD4ENMSER2000, RHD4ENMSER2010, RHD4CZ8C014SL4300 | Skilled labor [1.42 h]; Unskilled Labor [1.42 h]; Equipment Opreator [2.94 h]; Excavator-Poclain [1.42 h]; Dump Truck [1.42 h]; Street Lighting Feeder pillars - ER [1 Unit]; Including lighting poles circuits - ER [1 Unit] | 1,741 | C014 | Z8 | CONS | SL | Installation | AFT |
|  | 7678 | **RHD4-02-002-Z8-C014-Telecommunications Network - TC** |  | 2027-10-14 | 2027-11-23 |  |  |  |  |  |  |  |  |  |
|  | 7679 | **RHD4-02-002-C014-(TC)-Telecommunications Ducts** |  | 2027-10-14 | 2027-11-18 |  |  |  |  |  |  |  |  |  |
| RHD4CZ8C014TC2100 |  | Excavation of HDPE Ducts for Telecom Network - (RD-C-1/4)-Z8-C014-TC | 6d | 2027-10-14 | 2027-10-20 | RHD4ENSDZ8APPTC190, RHD4CZ8C014SL6100 | Skilled labor [64.14 h]; Unskilled Labor [64.14 h]; Equipment Opreator [128.4 h]; Excavator-Poclain [64.14 h]; Dump Truck [64.14 h]; (6*50mm) HDPE ducts -TC [176.8 m] | 15,558.4 | C014 | Z8 | CONS | TC | Excavation | AFT |
| RHD4CZ8C014TC2200 |  | Installation of HDPE Ducts for Telecom Network - (RD-C-1/4)-Z8-C014-TC | 9d | 2027-10-21 | 2027-10-31 | RHD4PRSHLDOSTC1000, RHD4PRSHLSTAGTC1000, RHD4CZ8C014TC2100 | Carpenter [9.6 h]; Skilled labor [96.27 h]; Unskilled Labor [96.27 h]; Steel Fixer [9.6 h]; (6*50mm) HDPE ducts -TC [574.6 m] | 50,564.8 | C014 | Z8 | CONS | TC | Installing | AFT |
| RHD4CZ8C014TC2400 |  | Backfilling of HDPE Ducts for Telecom Network - (RD-C-1/4)-Z8-C014-TC | 6d | 2027-11-13 | 2027-11-18 | RHD4CZ8C014TC2200, RHD4CZ4C012RD8100, RHD4CZ4L01CCTV6100 | Skilled labor [64.14 h]; Unskilled Labor [64.14 h]; Equipment Opreator [25.7 h]; Excavator-Poclain [25.7 h]; (6*50mm) HDPE ducts -TC [132.6 m] | 11,668.8 | C014 | Z8 | CONS | TC | Backfilling | AFT |
|  | 7680 | **RHD4-02-002-C014-(TC)-Telecommunications Manholes** |  | 2027-11-20 | 2027-11-23 |  |  |  |  |  |  |  |  |  |
| RHD4CZ8C014TC5100 |  | Excavation for Manholes for Telecom Network - (RD-C-1/4)-Z8-C014-TC | 2d | 2027-11-20 | 2027-11-21 | RHD4ENSDZ8APPTC190, RHD4CZ8C014TC2400 | Skilled labor [5.45 h]; Unskilled Labor [5.45 h]; Equipment Opreator [4.36 h]; Excavator-Poclain [2.18 h]; Dump Truck [2.18 h]; Manhole Type 1 - TC [0.6 nr] | 4,044.6 | C014 | Z8 | CONS | TC | Excavation | AFT |
| RHD4CZ8C014TC5200 |  | Installation of Manholes for Telecom Network - (RD-C-1/4)-Z8-C014-TC | 2d | 2027-11-22 | 2027-11-23 | RHD4PRSHLDOSTC1200, RHD4PRSHLSTAGTC1200, RHD4CZ8C014TC5100 | Skilled labor [5.45 h]; Unskilled Labor [5.45 h]; Equipment Opreator [2.18 h]; Boom Truck [2.18 h]; Manhole Type 1 - TC [3.4 nr] | 22,919.4 | C014 | Z8 | CONS | TC | Installation | AFT |

| ID | WBS | Activity | Duration | Start | Finish | Predecessors | Resources | Cost | RDH4-01-001-Road and Block Names-1 | RDH4-01-001-Zones-1 | RDH4-01-001-Phases-1 | RDH4-01-001-Networks-1 | RDH4-01-001-Work Method-1 | RDH4-01-001-MENEM |
| --- | --- | --- | --- | --- | --- | --- | --- | --- | --- | --- | --- | --- | --- | --- |
|  | 7682 | **RHD4-02-002-Z8-C014-Information and Communication Technologies - ICT** |  | 2027-11-24 | 2028-01-10 |  |  |  |  |  |  |  |  |  |
|  | 7683 | **RHD4-02-002-C014-(ICT)-Information and Communication Technologies Ducts** |  | 2027-11-24 | 2028-01-03 |  |  |  |  |  |  |  |  |  |
| RHD4CZ8C014ICT2100 |  | Excavation of HDPE Ducts for ICT Network - (RD-C-1/4)-Z8-C014-ICT | 10d | 2027-11-24 | 2027-12-05 | RHD4ENSDZ8APPICT200, RHD4CZ8C014IRR1100, RHD4CZ8C014TC5200 | Skilled labor [103.35 h]; Unskilled Labor [103.35 h]; Equipment Opreator [206.81 h]; Excavator-Poclain [103.35 h]; Dump Truck [103.35 h]; (2*50mm) HDPE ducts -ICT [272.48 m]; (2*50mm+2*32mm) HDPE ducts -ICT [12.3 m] | 11,239.84 | C014 | Z8 | CONS | ICT | Excavation | AFT |
| RHD4CZ8C014ICT2200 |  | Installation of HDPE Ducts for ICT Network - (RD-C-1/4)-Z8-C014-ICT | 15d | 2027-12-06 | 2027-12-22 | RHD4PRSHLDOSICT1000, RHD4PRSHLSTAGICT1000, RHD4CZ8C014ICT2100 | Carpenter [15.46 h]; Skilled labor [155.08 h]; Unskilled Labor [155.08 h]; Steel Fixer [15.46 h]; (2*50mm) HDPE ducts -ICT [885.56 m]; (2*50mm+2*32mm) HDPE ducts -ICT [39.98 m] | 36,529.48 | C014 | Z8 | CONS | ICT | Installing | AFT |
| RHD4CZ8C014ICT2400 |  | Backfilling of HDPE Ducts for ICT Network - (RD-C-1/4)-Z8-C014-ICT | 10d | 2027-12-23 | 2028-01-03 | RHD4CZ8C014ICT2200 | Skilled labor [103.35 h]; Unskilled Labor [103.35 h]; Equipment Opreator [41.38 h]; Excavator-Poclain [41.38 h]; (2*50mm) HDPE ducts -ICT [204.36 m]; (2*50mm+2*32mm) HDPE ducts -ICT [9.22 m] | 8,429.88 | C014 | Z8 | CONS | ICT | Backfilling | AFT |
|  | 7684 | **RHD4-02-002-C014-(ICT)-Information and Communication Technologies Manholes** |  | 2028-01-04 | 2028-01-10 |  |  |  |  |  |  |  |  |  |
| RHD4CZ8C014ICT5100 |  | Excavation for Manholes for ICT Network - (RD-C-1/4)-Z8-C014-ICT | 3d | 2028-01-04 | 2028-01-06 | RHD4ENSDZ8APPICT200, RHD4CZ8C014ICT2100, RHD4CZ8C014ICT2400 | Skilled labor [8.17 h]; Unskilled Labor [8.17 h]; Equipment Opreator [6.53 h]; Excavator-Poclain [3.27 h]; Dump Truck [3.27 h]; Manhole Type 1 - ICT [0.9 nr] | 4,853.7 | C014 | Z8 | CONS | ICT | Excavation | AFT |
| RHD4CZ8C014ICT5200 |  | Installation of Manholes for ICT Network - (RD-C-1/4)-Z8-C014-ICT | 3d | 2028-01-08 | 2028-01-10 | RHD4PRSHLDOSICT1200, RHD4PRSHLSTAGICT1200, RHD4CZ8C014ICT5100 | Skilled labor [8.17 h]; Unskilled Labor [8.17 h]; Equipment Opreator [3.27 h]; Boom Truck [3.27 h]; Manhole Type 1 - ICT [5.1 nr] | 27,504.3 | C014 | Z8 | CONS | ICT | Installation | AFT |
|  | 7673 | **RHD4-02-002-Z8-C014-Landscape Network - LS** |  |  |  |  |  |  |  |  |  |  |  |  |
|  | 7674 | **RHD4-02-002-C014-(LS)-Landscape Lighting cables** |  |  |  |  |  |  |  |  |  |  |  |  |
|  | 7676 | **RHD4-02-002-C014-(LS)-Landscape Bollard Poles** |  |  |  |  |  |  |  |  |  |  |  |  |
|  | 7686 | **RHD4-02-002-Z8-C014-Security Network - CCTV** |  |  |  |  |  |  |  |  |  |  |  |  |
|  | 7687 | **RHD4-02-002-C014-(CCTV)-Civil Works** |  |  |  |  |  |  |  |  |  |  |  |  |
|  | 8459 | **RHD4-02-002-Z9** |  | 2026-08-04 | 2028-09-03 |  |  |  |  |  |  |  |  |  |
|  | 8649 | **RHD4-02-002-Z9-C071** |  | 2026-08-04 | 2028-09-03 |  |  |  |  |  |  |  |  |  |
|  | 8680 | **RHD4-02-002-Z9-C071-Crossings Sewage Network - SWCr** |  |  |  |  |  |  |  |  |  |  |  |  |
|  | 8693 | **RHD4-02-002-C071-(SWCr)-MH Works - 1500 mm diameter with Back drop** |  |  |  |  |  |  |  |  |  |  |  |  |
|  | 8692 | **RHD4-02-002-C071-(SWCr)-MH Works - 1500 mm diameter** |  |  |  |  |  |  |  |  |  |  |  |  |
|  | 8690 | **RHD4-02-002-C071-(SWCr)-MH Works - 1200 mm diameter** |  |  |  |  |  |  |  |  |  |  |  |  |
|  | 8685 | **RHD4-02-002-C071-(SWCr)-GRP Pipes - 700 mm diameter** |  |  |  |  |  |  |  |  |  |  |  |  |
|  | 8686 | **RHD4-02-002-C071-(SWCr)-UPVC Pipes - 200 mm diameter** |  |  |  |  |  |  |  |  |  |  |  |  |
|  | 8724 | **RHD4-02-002-Z9-C071-Crossings Potable Network - PTCr** |  |  |  |  |  |  |  |  |  |  |  |  |
|  | 8727 | **RHD4-02-002-C071-(PTCr)-HDPE Pipes - 200 mm diameter** |  |  |  |  |  |  |  |  |  |  |  |  |
|  | 8726 | **RHD4-02-002-C071-(PTCr)-HDPE Pipes - 160 mm diameter** |  |  |  |  |  |  |  |  |  |  |  |  |
|  | 8737 | **RHD4-02-002-C071-(PTCr)-Fire Hydrant** |  |  |  |  |  |  |  |  |  |  |  |  |
|  | 8771 | **RHD4-02-002-Z9-C071-Crossings Irrigation Network - IRRC** |  |  |  |  |  |  |  |  |  |  |  |  |
|  | 8772 | **RHD4-02-002-C071-(IRRC)-HDPE Pipes - 160 mm diameter** |  |  |  |  |  |  |  |  |  |  |  |  |
|  | 8779 | **RHD4-02-002-C071-(IRRC)-HDPE Pipes - 500 mm diameter** |  |  |  |  |  |  |  |  |  |  |  |  |
|  | 8780 | **RHD4-02-002-C071-(IRRC)-Gate Valves (Direct Buried)** |  |  |  |  |  |  |  |  |  |  |  |  |
|  | 8781 | **RHD4-02-002-C071-(IRRC)-Butterfly Valve Chamber** |  |  |  |  |  |  |  |  |  |  |  |  |
|  | 8782 | **RHD4-02-002-C071-(IRRC)-Butterfly Valves** |  |  |  |  |  |  |  |  |  |  |  |  |
|  | 8828 | **RHD4-02-002-Z9-C071-Road Works - RD** |  | 2027-03-27 | 2028-09-03 |  |  |  |  |  |  |  |  |  |
|  | 8829 | **RHD4-02-002-C071-(RD)-Subgrade** |  | 2027-03-27 | 2027-04-10 |  |  |  |  |  |  |  |  |  |
| RHD4CZ9C071RD1100 |  | Supply, lay and compaction subgrade compacted thickness 300 mm for Roads - (RD-C-7/1)-Z9-C071-RD | 13d | 2027-03-27 | 2027-04-10 | RHD4ENSDZ9APPEW100, RHD4ENSDZ9APPRD220, RHD4CZ9C071TC3400, RHD4CZ9C071ICT3400, RHD4CZ9C071TC3400 FF, RHD4CZ9C071ICT3400 FF | Skilled labor [132.86 h]; Unskilled Labor [265.83 h]; Electrician [132.86 h]; Equipment Opreator [907.71 h]; Water Truck [43.89 h]; Roller compactor [66.4 h]; Grader [132.86 h]; Dump Truck [664.53 h]; Subgrade [6392.22 m3] | 121,452.18 | C071 | Z9 | CONS | RD | Subgrade | bef |

| ID | WBS | Activity | Duration | Start | Finish | Predecessors | Complete | Planned start | Planned finish | Resources | Cost | Actual cost | RDH4-01-001-Road and Block Names-1 | RDH4-01-001-Zones-1 | RDH4-01-001-Phases-1 | RDH4-01-001-Networks-1 | RDH4-01-001-Work Method-1 | RDH4-01-001-MENEM |
| --- | --- | --- | --- | --- | --- | --- | --- | --- | --- | --- | --- | --- | --- | --- | --- | --- | --- | --- |
|  | 8830 | **RHD4-02-002-C071-(RD)-Aggregate Base Course** |  | 2027-04-11 | 2027-04-21 |  |  |  |  |  |  |  |  |  |  |  |  |  |
| RHD4CZ9C071RD2100 |  | Supply, lay and compaction Aggregate base course compacted thickness 300 mmfor Roads - (RD-C-7/1)-Z9-C071-RD | 10d | 2027-04-11 | 2027-04-21 | RHD4PRSHLDOSRD1000, RHD4PRSHLSTAGRD1000, RHD4CZ9C071RD1100 |  |  |  | Skilled labor [49.22 h]; Unskilled Labor [98.45 h]; Equipment Opreator [623.15 h]; Water Truck [32.45 h]; Roller compactor [98.45 h]; Grader [98.45 h]; Dump Truck [393.79 h]; Aggregate Base Courses [4014.96 m3] | 228,852.72 |  | C071 | Z9 | CONS | RD | ABC | bef |
|  | 8831 | **RHD4-02-002-C071-(RD)-Bituminous base course Two Layers, including (MC1)&(RC2)** |  | 2027-04-22 | 2028-08-12 |  |  |  |  |  |  |  |  |  |  |  |  |  |
| RHD4CZ9C071RD3100 |  | Supply, lay and Asphaltic base course including Prime Coat (MC1) for 1st Layer - (RD-C-7/1)-Z9-C071-RD | 4d | 2027-04-22 | 2027-04-26 | RHD4PRSHLDOSRD1100, RHD4ENMSASPH2000, RHD4ENMSASPH2010, RHD4PRSHLSTAGRD1100, RHD4CZ9C071RD2100, RHD4CZ7RA05RD3100, RHD4CZ4RA02RD3100, RHD4CZ8RA04RD3100, RHD4CZ8C014RD3100 |  |  |  | Skilled labor [39.1 h]; Unskilled Labor [234.58 h]; Equipment Opreator [586.34 h]; Bobcat [39.1 h]; Roller compactor [39.1 h]; Asphalt Paver [39.1 h]; Rubber Compactor [78.19 h]; MC1/RC2 Sprinkler [39.1 h]; Dump Truck [351.76 h]; Bituminous base course (Grading I - Class A), including Prime coat (MC1) & tack coate (RC2) [1430.14 m3] | 683,606.92 |  | C071 | Z9 | CONS | RD | 150 mm | AFT |
| RHD4CZ9C071RD3200 |  | Supply, lay and Asphaltic base course including Tack Coat (RC2) for 2nd Layer - (RD-C-7/1)-Z9-C071-RD | 4d | 2028-08-08 | 2028-08-12 | RHD4PRSHLDOSRD1100, RHD4PRSHLSTAGRD1100, RHD4CZ9C071CCTV6100 |  |  |  | Skilled labor [39.1 h]; Unskilled Labor [234.58 h]; Equipment Opreator [586.34 h]; Bobcat [39.1 h]; Roller compactor [39.1 h]; Asphalt Paver [39.1 h]; Rubber Compactor [78.19 h]; MC1/RC2 Sprinkler [39.1 h]; Dump Truck [351.76 h]; Bituminous base course (Grading I - Class A), including Prime coat (MC1) & tack coate (RC2) [1430.14 m3] | 683,606.92 |  | C071 | Z9 | CONS | RD | 150 mm | AFT |
|  | 8833 | **RHD4-02-002-C071-(RD)-Precast Concrete Curb** |  | 2028-08-13 | 2028-08-20 |  |  |  |  |  |  |  |  |  |  |  |  |  |
| RHD4CZ9C071RD5100 |  | Supply and installation Precast Concrete Kerb for Roads - (RD-C-7/1)-Z9-C071-RD | 7d | 2028-08-13 | 2028-08-20 | RHD4PRSHLDOSRD1200, RHD4ENMSRD2000, RHD4ENMSRD2010, RHD4PRSHLSTAGRD1200, RHD4CZ9C071RD3200 |  |  |  | Mason [221.07 h]; Skilled labor [73.73 h]; Unskilled Labor [221.07 h]; Equipment Opreator [147.35 h]; Bobcat [73.73 h]; Concrete Mixer Truck [73.73 h]; Precast Concrete Curbstone, type K1 [3045 m] | 167,475 |  | C071 | Z9 | CONS | RD | Curbs | AFT |
|  | 8836 | **RHD4-02-002-C071-(RD)-Traffic Signage** |  | 2028-08-21 | 2028-08-28 |  |  |  |  |  |  |  |  |  |  |  |  |  |
| RHD4CZ9C071RD8100 |  | Installation of Traffic Signage for Road Network - (RD-C-7/1)-Z9-C071-RD | 7d | 2028-08-21 | 2028-08-28 | RHD4PRSHLDOSRD1600, RHD4PRSHLSTAGRD1600, RHD4CZ9C071RD5100 |  |  |  | Skilled labor [152.46 h]; Unskilled Labor [76.23 h]; Electrician [31.58 h]; Equipment Opreator [27.88 h]; Boom Truck [15.25 h]; Concrete Mixer Truck [12.63 h]; Traffic signs, ground mounted, 1 Sheet Aluminium, (breakaway)Single post [28 nr] | 34,328 |  | C071 | Z9 | CONS | RD | Traffic Signage | AFT |
|  | 8834 | **RHD4-02-002-C071-(RD)-Precast Interlocking Block Pavers** |  |  |  |  |  |  |  |  |  |  |  |  |  |  |  |  |
|  | 8832 | **RHD4-02-002-C071-(RD)-Bituminous concrete wearing course including tack coat (RC2)** |  | 2028-08-29 | 2028-08-30 |  |  |  |  |  |  |  |  |  |  |  |  |  |
| RHD4CZ9C071RD4100 |  | Supply, lay and compaction Asphaltic wearing course including tack Coat (RC2)for Road Network - (RD-C-7/1)-Z9-C071-RD | 2d | 2028-08-29 | 2028-08-30 | RHD4CZ9C071RD5100, RHD4CZ9C071RD8100 |  |  |  | Skilled labor [20.15 h]; Unskilled Labor [120.8 h]; Equipment Opreator [302.1 h]; Bobcat [20.15 h]; Roller compactor [20.15 h]; Asphalt Paver [20.15 h]; Rubber Compactor [40.29 h]; MC1/RC2 Sprinkler [20.15 h]; Dump Truck [181.22 h]; Bituminous concrete wearing course, (Grading I - Class A), including tack coat (RC2) [960.45 m3] | 521,524.35 |  | C071 | Z9 | CONS | RD | 50 mm | AFT |
|  | 8837 | **RHD4-02-002-C071-(RD)-Speed Table and Wheel Stopper** |  |  |  |  |  |  |  |  |  |  |  |  |  |  |  |  |
|  | 8835 | **RHD4-02-002-C071-(RD)-Pavement Marking** |  | 2028-08-31 | 2028-09-03 |  |  |  |  |  |  |  |  |  |  |  |  |  |
| RHD4CZ9C071RD7100 |  | Pavement Markings for Road Network - (RD-C-7/1)-Z9-C071-RD | 3d | 2028-08-31 | 2028-09-03 | RHD4PRSHLDOSRD1500, RHD4PRSHLSTAGRD1500, RHD4CZ9C071RD4100 |  |  |  | Skilled labor [32.24 h]; Unskilled Labor [64.58 h]; Equipment Opreator [32.24 h]; Road Marking Machine [32.24 h]; Retroreflective Thermoplastic White Traffic Markings [168.26 m2]; Retroreflective Thermoplastic Yellow, Traffic Markings [148.35 m2]; Retroreflective raised pavement markers (cat eyes) [444 nr] | 24,910.91 |  | C071 | Z9 | CONS | RD | Pavement Marking | AFT |
|  | 8653 | **RHD4-02-002-Z9-C071-Storm Network - ST** |  | 2026-08-04 | 2027-04-05 |  |  |  |  |  |  |  |  |  |  |  |  |  |
|  | 8672 | **RHD4-02-002-C071-(ST)-MH Works - 2000 mm diameter** |  | 2026-08-29 | 2027-04-05 |  |  |  |  |  |  |  |  |  |  |  |  |  |
| RHD4CZ9C071ST3102 |  | Excavation and PC Blinding works for MH 2000 mm - (RD-C-7/1)-Z9-C071-ST | 5d | 2026-08-29 A | 2026-09-02 A | RHD4ENSDZ9APPST110, RHD4ENMSST2000, RHD4CZ9C071ST2100 | 100% | 2026-11-05 | 2026-11-10 | Skilled labor [47.16 h]; Unskilled Labor [47.16 h]; Equipment Opreator [75.47 h]; Excavator-Poclain [47.16 h]; Water Truck [4.68 h]; Dump Truck [23.63 h]; MH (2000mm Diameter) - ST - depth 2.51 - 3.5m [2.5 nr]; MH (2000mm Diameter) - ST - depth 3.51 -4.5m [0.5 nr] | 66,111.5 | 66,111.5 | C071 | Z9 | CONS | ST | Excavation | bef |
| RHD4CZ9C071ST3202 |  | Installation of Base for MH 2000 mm - (RD-C-7/1)-Z9-C071-ST | 6d | 2027-03-13 | 2027-03-18 | RHD4PRSHLSTAGST1608, RHD4CZ9C071ST3102 |  |  |  | Skilled labor [65.34 h]; Unskilled Labor [65.34 h]; Equipment Opreator [26.14 h]; Boom Truck [13.07 h]; Concrete Mixer Truck [13.07 h]; MH (2000mm Diameter) - ST - depth 2.51 - 3.5m [2.5 nr]; MH (2000mm Diameter) - ST - depth 3.51 -4.5m [0.5 nr] | 66,111.5 |  | C071 | Z9 | CONS | ST | Installing Base | bef |
| RHD4CZ9C071ST3302 |  | MH Ring and C.Slab works and Backfilling works for MH 2000 mm - (RD-C-7/1)-Z9-C071-ST | 6d | 2027-03-20 | 2027-03-25 | RHD4PRSHLDOSST1608, RHD4CZ9C071ST3202 |  |  |  | Skilled labor [65.34 h]; Unskilled Labor [65.34 h]; Equipment Opreator [45.74 h]; Boom Truck [26.14 h]; Concrete Mixer Truck [19.6 h]; MH (2000mm Diameter) - ST - depth 2.51 - 3.5m [3.5 nr]; MH (2000mm Diameter) - ST - depth 3.51 -4.5m [0.7 nr] | 92,556.1 |  | C071 | Z9 | CONS | ST | Installing Rings | bef |
| RHD4CZ9C071ST3402 |  | Steel Cover for MH 2000 mm - (RD-C-7/1)-Z9-C071-ST | 4d | 2027-03-27 | 2027-03-30 | RHD4PRSHLDOSST1708, RHD4PRSHLSTAGST1708, RHD4CZ9C071ST3302 |  |  |  | Skilled labor [43.56 h]; Unskilled Labor [87.12 h]; Equipment Opreator [8.71 h]; Boom Truck [8.71 h]; MH (2000mm Diameter) - ST - depth 2.51 - 3.5m [0.5 nr]; MH (2000mm Diameter) - ST - depth 3.51 -4.5m [0.1 nr] | 13,222.3 |  | C071 | Z9 | CONS | ST | Steel Cover | bef |
| RHD4CZ9C071ST3502 |  | Finishing, Benching, Testing works for MH 2000 mm - (RD-C-7/1)-Z9-C071-ST | 5d | 2027-03-31 | 2027-04-05 | RHD4CZ9C071ST3402 |  |  |  | Skilled labor [47.16 h]; Unskilled Labor [94.4 h]; Plumber [47.16 h]; Equipment Opreator [9.47 h]; Water Truck [9.47 h]; MH (2000mm Diameter) - ST - depth 2.51 - 3.5m [1 nr]; MH (2000mm Diameter) - ST - depth 3.51 -4.5m [0.2 nr] | 26,444.6 |  | C071 | Z9 | CONS | ST | Benching | bef |
|  | 8670 | **RHD4-02-002-C071-(ST)-MH Works - 1200 mm diameter** |  | 2026-09-12 | 2027-04-01 |  |  |  |  |  |  |  |  |  |  |  |  |  |
| RHD4CZ9C071ST3100 |  | Excavation and PC Blinding works for MH 1200 mm - (RD-C-7/1)-Z9-C071-ST | 4d | 2026-09-12 A | 2026-09-15 A | RHD4ENSDZ9APPST110, RHD4ENMSST2000, RHD4ENMSST2010, RHD4CZ9C071ST3101 | 100% | 2026-11-16 | 2026-11-19 | Skilled labor [43.56 h]; Unskilled Labor [43.56 h]; Equipment Opreator [69.7 h]; Excavator-Poclain [43.56 h]; Water Truck [4.36 h]; Dump Truck [21.78 h]; MH (1200mm Diameter) - ST - depth 1.50 - 2.5m [2.5 nr]; MH (1200mm Diameter) - ST - depth 2.51 - 3.5m [0.5 nr] | 31,746 | 31,746 | C071 | Z9 | CONS | ST | Excavation | bef |
| RHD4CZ9C071ST3200 |  | Installation of Base for MH 1200 mm - (RD-C-7/1)-Z9-C071-ST | 5d | 2027-03-13 | 2027-03-17 | RHD4PRSHLSTAGST1608, RHD4CZ9C071ST3100 |  |  |  | Skilled labor [47.16 h]; Unskilled Labor [47.16 h]; Equipment Opreator [18.84 h]; Boom Truck [9.47 h]; Concrete Mixer Truck [9.47 h]; MH (1200mm Diameter) - ST - depth 1.50 - 2.5m [2.5 nr]; MH (1200mm Diameter) - ST - depth 2.51 - 3.5m [0.5 nr] | 31,746 |  | C071 | Z9 | CONS | ST | Installing Base | bef |
| RHD4CZ9C071ST3300 |  | MH Ring and C.Slab works and Backfilling works for MH 1200 mm - (RD-C-7/1)-Z9-C071-ST | 5d | 2027-03-18 | 2027-03-23 | RHD4PRSHLDOSST1608, RHD4CZ9C071ST3200 |  |  |  | Skilled labor [47.16 h]; Unskilled Labor [47.16 h]; Equipment Opreator [33 h]; Boom Truck [18.84 h]; Concrete Mixer Truck [14.16 h]; MH (1200mm Diameter) - ST - depth 1.50 - 2.5m [3.5 nr]; MH (1200mm Diameter) - ST - depth 2.51 - 3.5m [0.7 nr] | 44,444.4 |  | C071 | Z9 | CONS | ST | Installing Rings | bef |
| RHD4CZ9C071ST3400 |  | Steel Cover for MH 1200 mm - (RD-C-7/1)-Z9-C071-ST | 4d | 2027-03-24 | 2027-03-28 | RHD4PRSHLDOSST1708, RHD4PRSHLSTAGST1708, RHD4CZ9C071ST3300 |  |  |  | Skilled labor [43.56 h]; Unskilled Labor [87.12 h]; Equipment Opreator [8.71 h]; Boom Truck [8.71 h]; MH (1200mm Diameter) - ST - depth 1.50 - 2.5m [0.5 nr]; MH (1200mm Diameter) - ST - depth 2.51 - 3.5m [0.1 nr] | 6,349.2 |  | C071 | Z9 | CONS | ST | Steel Cover | bef |
| RHD4CZ9C071ST3500 |  | Finishing, Benching, Testing works for MH 1200 mm - (RD-C-7/1)-Z9-C071-ST | 4d | 2027-03-29 | 2027-04-01 | RHD4CZ9C071ST3400 |  |  |  | Skilled labor [43.56 h]; Unskilled Labor [87.12 h]; Plumber [43.56 h]; Equipment Opreator [8.71 h]; Water Truck [8.71 h]; MH (1200mm Diameter) - ST - depth 1.50 - 2.5m [1 nr]; MH (1200mm Diameter) - ST - depth 2.51 - 3.5m [0.2 nr] | 12,698.4 |  | C071 | Z9 | CONS | ST | Benching | bef |

| ID | WBS | Activity | Duration | Start | Finish | Predecessors | Complete | Planned start | Planned finish | Resources | Cost | Actual cost | RDH4-01-001-Road and Block Names-1 | RDH4-01-001-Zones-1 | RDH4-01-001-Phases-1 | RDH4-01-001-Networks-1 | RDH4-01-001-Work Method-1 | RDH4-01-001-MENEM |
| --- | --- | --- | --- | --- | --- | --- | --- | --- | --- | --- | --- | --- | --- | --- | --- | --- | --- | --- |
|  | 8671 | **RHD4-02-002-C071-(ST)-MH Works - 1500 mm diameter** |  | 2026-08-04 | 2027-03-28 |  |  |  |  |  |  |  |  |  |  |  |  |  |
| RHD4CZ9C071ST3101 |  | Excavation and PC Blinding works for MH 1500 mm - (RD-C-7/1)-Z9-C071-ST | 4d | 2026-08-04 A | 2026-08-06 A | RHD4ENSDZ9APPST110, RHD4ENMSST2000, RHD4CZ9C071ST3102 | 100% | 2026-11-11 | 2026-11-15 | Skilled labor [43.56 h]; Unskilled Labor [43.56 h]; Equipment Opreator [69.7 h]; Excavator-Poclain [43.56 h]; Water Truck [4.36 h]; Dump Truck [21.78 h]; MH (1500mm Diameter) - ST - depth 2.51 - 3.5m [0.5 nr]; MH (1500mm Diameter) - ST - depth 3.51 - 4.5m [0.75 nr] | 24,071.5 | 24,071.5 | C071 | Z9 | CONS | ST | Excavation | bef |
| RHD4CZ9C071ST3201 |  | Installation of Base for MH 1500 mm - (RD-C-7/1)-Z9-C071-ST | 4d | 2027-03-13 | 2027-03-16 | RHD4PRSHLSTAGST1608, RHD4CZ9C071ST3101 |  |  |  | Skilled labor [43.56 h]; Unskilled Labor [43.56 h]; Equipment Opreator [17.42 h]; Boom Truck [8.71 h]; Concrete Mixer Truck [8.71 h]; MH (1500mm Diameter) - ST - depth 2.51 - 3.5m [0.5 nr]; MH (1500mm Diameter) - ST - depth 3.51 - 4.5m [0.75 nr] | 24,071.5 |  | C071 | Z9 | CONS | ST | Installing Base | bef |
| RHD4CZ9C071ST3301 |  | MH Ring and C.Slab works and Backfilling works for MH 1500 mm - (RD-C-7/1)-Z9-C071-ST | 4d | 2027-03-17 | 2027-03-21 | RHD4PRSHLDOSST1608, RHD4CZ9C071ST3201 |  |  |  | Skilled labor [43.56 h]; Unskilled Labor [43.56 h]; Equipment Opreator [30.49 h]; Boom Truck [17.42 h]; Concrete Mixer Truck [13.07 h]; MH (1500mm Diameter) - ST - depth 2.51 - 3.5m [0.7 nr]; MH (1500mm Diameter) - ST - depth 3.51 - 4.5m [1.05 nr] | 33,700.1 |  | C071 | Z9 | CONS | ST | Installing Rings | bef |
| RHD4CZ9C071ST3401 |  | Steel Cover for MH 1500 mm - (RD-C-7/1)-Z9-C071-ST | 2d | 2027-03-22 | 2027-03-23 | RHD4PRSHLDOSST1708, RHD4PRSHLSTAGST1708, RHD4CZ9C071ST3301 |  |  |  | Skilled labor [18.19 h]; Unskilled Labor [36.26 h]; Equipment Opreator [3.59 h]; Boom Truck [3.59 h]; MH (1500mm Diameter) - ST - depth 2.51 - 3.5m [0.1 nr]; MH (1500mm Diameter) - ST - depth 3.51 - 4.5m [0.15 nr] | 4,814.3 |  | C071 | Z9 | CONS | ST | Steel Cover | bef |
| RHD4CZ9C071ST3501 |  | Finishing, Benching, Testing works for MH 1500 mm - (RD-C-7/1)-Z9-C071-ST | 4d | 2027-03-24 | 2027-03-28 | RHD4CZ9C071ST3401 |  |  |  | Skilled labor [43.56 h]; Unskilled Labor [87.12 h]; Plumber [43.56 h]; Equipment Opreator [8.71 h]; Water Truck [8.71 h]; MH (1500mm Diameter) - ST - depth 2.51 - 3.5m [0.2 nr]; MH (1500mm Diameter) - ST - depth 3.51 - 4.5m [0.3 nr] | 9,628.6 |  | C071 | Z9 | CONS | ST | Benching | bef |
|  | 8661 | **RHD4-02-002-C071-(ST)-GRP Pipes - 1100 mm diameter** |  | 2026-08-25 | 2027-03-14 |  |  |  |  |  |  |  |  |  |  |  |  |  |
| RHD4CZ9C071ST1107 |  | Excavation works for GRP Pipe Line 1100 mm - (RD-C-7/1)-Z9-C071-ST | 2d | 2026-08-25 A | 2026-08-26 A | RHD4ENSDZ9APPST110, RHD4CZ9C071RW3000, RHD4CZ6A015IRR1100 | 100% | 2026-10-17 | 2026-10-18 | Skilled labor [13.29 h]; Unskilled Labor [13.29 h]; Equipment Opreator [15.9 h]; Excavator-Poclain [13.29 h]; Dump Truck [2.61 h]; GRP (1100mm Diameter) - ST - Depth: 1.51m - 2.5m [27.42 m]; GRP (1100mm Diameter) - ST - Depth: 2.51m - 3.5m | 29,010.36 | 29,010.36 | C071 | Z9 | CONS | ST | Excavation | bef |
| RHD4CZ9C071ST1207 |  | Bedding works for GRP Pipe Line 1100 mm - (RD-C-7/1)-Z9-C071-ST | 2d | 2027-03-02 | 2027-03-03 | RHD4CZ9C071ST1107 |  |  |  | Skilled labor [13.29 h]; Unskilled Labor [26.57 h]; Equipment Opreator [26.57 h]; Excavator-Poclain [13.29 h]; Dump Truck [13.29 h]; GRP (1100mm Diameter) - ST - Depth: 1.51m - 2.5m [9.14 m]; GRP (1100mm Diameter) - ST - Depth: 2.51m - 3.5m | 9,670.12 |  | C071 | Z9 | CONS | ST | Bedding | bef |
| RHD4CZ9C071ST1307 |  | Installing for GRP Pipe Line 1100 mm - (RD-C-7/1)-Z9-C071-ST | 2d | 2027-03-04 | 2027-03-06 | RHD4PRSHLSTAGST1008, RHD4CZ9C071ST1207, RHD4PRSHLDOSST1608, RHD4PRSHLPOST1000, RHD4PRSHLDOSST1008, RHD4PRSHLDOSST1604, RHD4PRSHLDOSST1004 |  |  |  | Unskilled Labor [15.9 h]; Plumber [7.95 h]; GRP (1100mm Diameter) - ST - Depth: 1.51m - 2.5m [73.11 m]; GRP (1100mm Diameter) - ST - Depth: 2.51m - 3.5m | 77,350.38 |  | C071 | Z9 | CONS | ST | Installation | bef |
| RHD4CZ9C071ST1407 |  | Primary Test for GRP Pipe Line 1100 mm - (RD-C-7/1)-Z9-C071-ST | 2d | 2027-03-07 | 2027-03-08 | RHD4CZ9C071ST1307 |  |  |  | Unskilled Labor [6.64 h]; Plumber [6.64 h]; Equipment Opreator [6.64 h]; Water Truck [6.64 h]; GRP (1100mm Diameter) - ST - Depth: 1.51m - 2.5m [36.56 m]; GRP (1100mm Diameter) - ST - Depth: 2.51m - 3.5m | 38,680.48 |  | C071 | Z9 | CONS | ST | Primary Test | bef |
| RHD4CZ9C071ST1507 |  | Backfilling and warning tape works for GRP Pipe Line 1100 mm - (RD-C-7/1)-Z9-C071-ST | 2d | 2027-03-13 | 2027-03-14 | RHD4CZ9C071ST1407 |  |  |  | Skilled labor [13.29 h]; Unskilled Labor [26.57 h]; Equipment Opreator [26.57 h]; Excavator-Poclain [13.29 h]; Dump Truck [13.29 h]; GRP (1100mm Diameter) - ST - Depth: 1.51m - 2.5m [36.56 m]; GRP (1100mm Diameter) - ST - Depth: 2.51m - 3.5m | 38,680.48 |  | C071 | Z9 | CONS | ST | Backfilling | bef |
|  | 8660 | **RHD4-02-002-C071-(ST)-GRP Pipes - 1000 mm diameter** |  | 2026-08-18 | 2027-03-08 |  |  |  |  |  |  |  |  |  |  |  |  |  |
| RHD4CZ9C071ST1106 |  | Excavation works for GRP Pipe Line 1000 mm - (RD-C-7/1)-Z9-C071-ST | 3d | 2026-08-18 A | 2026-08-20 A | RHD4ENSDZ9APPST110, RHD4CZ9C071ST1107 SS | 100% | 2026-10-17 | 2026-10-19 | Skilled labor [30.28 h]; Unskilled Labor [30.28 h]; Equipment Opreator [36.37 h]; Excavator-Poclain [30.28 h]; Dump Truck [6.1 h]; GRP (1000mm Diameter) - ST - Depth: 1.51m - 2.5m [43.71 m]; GRP (1000mm Diameter) - ST - Depth: 2.51m - 3.5m [24.16 m] | 69,127 | 69,127 | C071 | Z9 | CONS | ST | Excavation | bef |
| RHD4CZ9C071ST1206 |  | Bedding works for GRP Pipe Line 1000 mm - (RD-C-7/1)-Z9-C071-ST | 3d | 2026-08-20 A | 2026-08-23 A | RHD4CZ9C071ST1106 | 100% | 2026-10-20 | 2026-10-22 | Skilled labor [30.28 h]; Unskilled Labor [60.55 h]; Equipment Opreator [60.55 h]; Excavator-Poclain [30.28 h]; Dump Truck [30.28 h]; GRP (1000mm Diameter) - ST - Depth: 1.51m - 2.5m [14.57 m]; GRP (1000mm Diameter) - ST - Depth: 2.51m - 3.5m [8.05 m] | 23,038.32 | 23,038.32 | C071 | Z9 | CONS | ST | Bedding | bef |
| RHD4CZ9C071ST1306 |  | Installing for GRP Pipe Line 1000 mm - (RD-C-7/1)-Z9-C071-ST | 2d | 2026-08-25 A | 2026-08-26 A | RHD4PRSHLSTAGST1008, RHD4CZ9C071ST1206, RHD4CZ9C071ST1307, RHD4PRSHLDOSST1608, RHD4PRSHLPOST1000, RHD4PRSHLDOSST1008, RHD4PRSHLDOSST1604, RHD4PRSHLDOSST1004 | 100% | 2026-10-24 | 2026-10-25 | Unskilled Labor [37.35 h]; Plumber [18.73 h]; GRP (1000mm Diameter) - ST - Depth: 1.51m - 2.5m [116.57 m]; GRP (1000mm Diameter) - ST - Depth: 2.51m - 3.5m [64.42 m] | 184,339.8 | 184,339.8 | C071 | Z9 | CONS | ST | Installation | bef |
| RHD4CZ9C071ST1506 |  | Backfilling and warning tape works for GRP Pipe Line 1000 mm - (RD-C-7/1)-Z9-C071-ST | 3d | 2026-08-27 A | 2026-09-19 A | RHD4CZ9C071ST1406, RHD4CZ9C071ST1507 | 100% | 2026-10-28 | 2026-10-31 | Skilled labor [30.28 h]; Unskilled Labor [60.55 h]; Equipment Opreator [60.55 h]; Excavator-Poclain [30.28 h]; Dump Truck [30.28 h]; GRP (1000mm Diameter) - ST - Depth: 1.51m - 2.5m [58.28 m]; GRP (1000mm Diameter) - ST - Depth: 2.51m - 3.5m [32.21 m] | 92,165.32 | 92,165.32 | C071 | Z9 | CONS | ST | Backfilling | bef |
| RHD4CZ9C071ST1406 |  | Primary Test for GRP Pipe Line 1000 mm - (RD-C-7/1)-Z9-C071-ST | 2d | 2027-03-07 | 2027-03-08 | RHD4CZ9C071ST1306 |  |  |  | Unskilled Labor [15.14 h]; Plumber [15.14 h]; Equipment Opreator [15.14 h]; Water Truck [15.14 h]; GRP (1000mm Diameter) - ST - Depth: 1.51m - 2.5m [58.28 m]; GRP (1000mm Diameter) - ST - Depth: 2.51m - 3.5m [32.21 m] | 92,165.32 |  | C071 | Z9 | CONS | ST | Primary Test | bef |
|  | 8659 | **RHD4-02-002-C071-(ST)-GRP Pipes - 900 mm diameter** |  | 2026-08-17 | 2027-03-08 |  |  |  |  |  |  |  |  |  |  |  |  |  |
| RHD4CZ9C071ST1105 |  | Excavation works for GRP Pipe Line 900 mm - (RD-C-7/1)-Z9-C071-ST | 2d | 2026-08-17 A | 2026-08-18 A | RHD4ENSDZ9APPST110, RHD4CZ9C071ST1106 | 100% | 2026-10-20 | 2026-10-21 | Skilled labor [19.2 h]; Unskilled Labor [19.2 h]; Equipment Opreator [23.09 h]; Excavator-Poclain [19.2 h]; Dump Truck [3.81 h]; GRP (900mm Diameter) - ST - Depth: 1.51m - 2.5m [9.83 m]; GRP (900mm Diameter) - ST - Depth: 2.51m - 3.5m [29.84 m] | 39,285.87 | 39,285.87 | C071 | Z9 | CONS | ST | Excavation | bef |
| RHD4CZ9C071ST1205 |  | Bedding works for GRP Pipe Line 900 mm - (RD-C-7/1)-Z9-C071-ST | 2d | 2026-08-19 A | 2026-08-20 A | RHD4CZ9C071ST1105 | 100% | 2026-10-22 | 2026-10-24 | Skilled labor [19.2 h]; Unskilled Labor [38.44 h]; Equipment Opreator [38.44 h]; Excavator-Poclain [19.2 h]; Dump Truck [19.2 h]; GRP (900mm Diameter) - ST - Depth: 1.51m - 2.5m [3.28 m]; GRP (900mm Diameter) - ST - Depth: 2.51m - 3.5m [9.95 m] | 13,101.46 | 13,101.46 | C071 | Z9 | CONS | ST | Bedding | bef |
| RHD4CZ9C071ST1305 |  | Installing for GRP Pipe Line 900 mm - (RD-C-7/1)-Z9-C071-ST | 2d | 2026-08-22 A | 2026-08-23 A | RHD4PRSHLSTAGST1008, RHD4CZ9C071ST1205, RHD4CZ9C071ST1306, RHD4PRSHLDOSST1608, RHD4PRSHLPOST1000, RHD4PRSHLDOSST1008, RHD4PRSHLDOSST1604, RHD4PRSHLDOSST1004 | 100% | 2026-10-26 | 2026-10-27 | Unskilled Labor [23.09 h]; Plumber [11.54 h]; GRP (900mm Diameter) - ST - Depth: 1.51m - 2.5m [26.22 m]; GRP (900mm Diameter) - ST - Depth: 2.51m - 3.5m [79.57 m] | 104,764.12 | 104,764.12 | C071 | Z9 | CONS | ST | Installation | bef |
| RHD4CZ9C071ST1505 |  | Backfilling and warning tape works for GRP Pipe Line 900 mm - (RD-C-7/1)-Z9-C071-ST | 2d | 2026-08-24 A | 2026-08-25 A | RHD4CZ9C071ST1405, RHD4CZ9C071ST1506 | 100% | 2026-11-01 | 2026-11-02 | Skilled labor [19.2 h]; Unskilled Labor [38.44 h]; Equipment Opreator [38.44 h]; Excavator-Poclain [19.2 h]; Dump Truck [19.2 h]; GRP (900mm Diameter) - ST - Depth: 1.51m - 2.5m [13.11 m]; GRP (900mm Diameter) - ST - Depth: 2.51m - 3.5m [39.78 m] | 52,376.79 | 52,376.79 | C071 | Z9 | CONS | ST | Backfilling | bef |
| RHD4CZ9C071ST1405 |  | Primary Test for GRP Pipe Line 900 mm - (RD-C-7/1)-Z9-C071-ST | 2d | 2027-03-07 | 2027-03-08 | RHD4CZ9C071ST1305 |  |  |  | Unskilled Labor [9.6 h]; Plumber [9.6 h]; Equipment Opreator [9.6 h]; Water Truck [9.6 h]; GRP (900mm Diameter) - ST - Depth: 1.51m - 2.5m [13.11 m]; GRP (900mm Diameter) - ST - Depth: 2.51m - 3.5m [39.78 m] | 52,376.79 |  | C071 | Z9 | CONS | ST | Primary Test | bef |

| ID | WBS | Activity | Duration | Start | Finish | Predecessors | Complete | Remaining | Planned start | Planned finish | Resources | Cost | Actual cost | RDH4-01-001-Road and Block Names-1 | RDH4-01-001-Zones-1 | RDH4-01-001-Phases-1 | RDH4-01-001-Networks-1 | RDH4-01-001-Work Method-1 | RDH4-01-001-MENEM |
| --- | --- | --- | --- | --- | --- | --- | --- | --- | --- | --- | --- | --- | --- | --- | --- | --- | --- | --- | --- |
|  | 8656 | **RHD4-02-002-C071-(ST)-GRP Pipes - 600 mm diameter** |  | 2026-09-15 | 2027-03-16 |  |  |  |  |  |  |  |  |  |  |  |  |  |  |
| RHD4CZ9C071ST1102 |  | Excavation works for GRP Pipe Line 600 mm - (RD-C-7/1)-Z9-C071-ST | 2d | 2026-09-15 A | 2026-09-16 A | RHD4ENSDZ9APPST110, RHD4CZ9C071ST1105 | 100% |  | 2026-10-22 | 2026-10-24 | Skilled labor [5.55 h]; Unskilled Labor [5.55 h]; Equipment Opreator [6.64 h]; Excavator-Poclain [5.55 h]; Dump Truck [1.09 h]; GRP (600mm Diameter) - ST - Depth: 1.51m - 2.5m [15.36 m] | 7,143.1 | 7,143.1 | C071 | Z9 | CONS | ST | Excavation | bef |
| RHD4CZ9C071ST1202 |  | Bedding works for GRP Pipe Line 600 mm - (RD-C-7/1)-Z9-C071-ST | 2d | 2027-03-02 | 2027-03-03 | RHD4CZ9C071ST1102 |  |  |  |  | Skilled labor [5.55 h]; Unskilled Labor [11.11 h]; Equipment Opreator [11.11 h]; Excavator-Poclain [5.55 h]; Dump Truck [5.55 h]; GRP (600mm Diameter) - ST - Depth: 1.51m - 2.5m [5.12 m] | 2,381.03 |  | C071 | Z9 | CONS | ST | Bedding | bef |
| RHD4CZ9C071ST1302 |  | Installing for GRP Pipe Line 600 mm - (RD-C-7/1)-Z9-C071-ST | 2d | 2027-03-07 | 2027-03-08 | RHD4PRSHLSTAGST1008, RHD4CZ9C071ST1202, RHD4CZ9C071ST1305, RHD4PRSHLDOSST1608, RHD4PRSHLPOST1000, RHD4PRSHLDOSST1008, RHD4PRSHLDOSST1604, RHD4PRSHLDOSST1004 |  |  |  |  | Unskilled Labor [11.11 h]; Plumber [5.55 h]; GRP (600mm Diameter) - ST - Depth: 1.51m - 2.5m [40.96 m] | 19,048.26 |  | C071 | Z9 | CONS | ST | Installation | bef |
| RHD4CZ9C071ST1402 |  | Primary Test for GRP Pipe Line 600 mm - (RD-C-7/1)-Z9-C071-ST | 2d | 2027-03-13 | 2027-03-14 | RHD4CZ9C071ST1302 |  |  |  |  | Unskilled Labor [5.55 h]; Plumber [5.55 h]; Equipment Opreator [5.55 h]; Water Truck [5.55 h]; GRP (600mm Diameter) - ST - Depth: 1.51m - 2.5m [20.48 m] | 9,524.13 |  | C071 | Z9 | CONS | ST | Primary Test | bef |
| RHD4CZ9C071ST1502 |  | Backfilling and warning tape works for GRP Pipe Line 600 mm - (RD-C-7/1)-Z9-C071-ST | 2d | 2027-03-15 | 2027-03-16 | RHD4CZ9C071ST1402 |  |  |  |  | Skilled labor [5.55 h]; Unskilled Labor [11.11 h]; Equipment Opreator [11.11 h]; Excavator-Poclain [5.55 h]; Dump Truck [5.55 h]; GRP (600mm Diameter) - ST - Depth: 1.51m - 2.5m [20.48 m] | 9,524.13 |  | C071 | Z9 | CONS | ST | Backfilling | bef |
|  | 8655 | **RHD4-02-002-C071-(ST)-GRP Pipes - 500 mm diameter** |  | 2026-08-29 | 2027-03-08 |  |  |  |  |  |  |  |  |  |  |  |  |  |  |
| RHD4CZ9C071ST1101 |  | Excavation works for GRP Pipe Line 500 mm - (RD-C-7/1)-Z9-C071-ST | 2d | 2026-08-29 A | 2026-08-30 A | RHD4ENSDZ9APPST110, RHD4CZ9C071ST1102 | 100% |  | 2026-10-25 | 2026-10-26 | Skilled labor [20.8 h]; Unskilled Labor [20.8 h]; Equipment Opreator [24.94 h]; Excavator-Poclain [20.8 h]; Dump Truck [4.14 h]; GRP (500mm Diameter) - ST - Depth less than 1.5 m [6.57 m]; GRP (500mm Diameter) - ST - Depth: 1.51m - 2.5m [47.34 m] | 21,031.65 | 21,031.65 | C071 | Z9 | CONS | ST | Excavation | bef |
| RHD4CZ9C071ST1201 |  | Bedding works for GRP Pipe Line 500 mm - (RD-C-7/1)-Z9-C071-ST | 2d | 2026-09-15 A | 2026-09-19 A | RHD4CZ9C071ST1101 | 100% |  | 2026-10-27 | 2026-10-28 | Skilled labor [20.8 h]; Unskilled Labor [41.49 h]; Equipment Opreator [41.49 h]; Excavator-Poclain [20.8 h]; Dump Truck [20.8 h]; GRP (500mm Diameter) - ST - Depth less than 1.5 m [3.29 m]; GRP (500mm Diameter) - ST - Depth: 1.51m - 2.5m [15.78 m] | 7,401.05 | 7,401.05 | C071 | Z9 | CONS | ST | Bedding | bef |
| RHD4CZ9C071ST1301 |  | Installing for GRP Pipe Line 500 mm - (RD-C-7/1)-Z9-C071-ST | 2d | 2026-09-16 A | 2027-03-03 | RHD4PRSHLSTAGST1008, RHD4CZ9C071ST1201, RHD4PRSHLDOSST1608, RHD4PRSHLPOST1000, RHD4PRSHLDOSST1008, RHD4PRSHLDOSST1604, RHD4PRSHLDOSST1004 | 56% | 2d | 2026-10-29 | 2026-10-31 | Unskilled Labor [41.49 h]; Plumber [20.8 h]; GRP (500mm Diameter) - ST - Depth less than 1.5 m [29.57 m]; GRP (500mm Diameter) - ST - Depth: 1.51m - 2.5m [126.23 m] | 60,358.2 |  | C071 | Z9 | CONS | ST | Installation | bef |
| RHD4CZ9C071ST1501 |  | Backfilling and warning tape works for GRP Pipe Line 500 mm - (RD-C-7/1)-Z9-C071-ST | 2d | 2026-09-17 A | 2027-03-08 | RHD4CZ9C071ST1401 | 55% | 2d | 2026-11-03 | 2026-11-04 | Skilled labor [20.8 h]; Unskilled Labor [41.49 h]; Equipment Opreator [41.49 h]; Excavator-Poclain [20.8 h]; Dump Truck [20.8 h]; GRP (500mm Diameter) - ST - Depth less than 1.5 m [13.14 m]; GRP (500mm Diameter) - ST - Depth: 1.51m - 2.5m [63.11 m] | 29,593.15 |  | C071 | Z9 | CONS | ST | Backfilling | bef |
| RHD4CZ9C071ST1401 |  | Primary Test for GRP Pipe Line 500 mm - (RD-C-7/1)-Z9-C071-ST | 2d | 2027-03-04 | 2027-03-06 | RHD4CZ9C071ST1301 |  |  |  |  | Unskilled Labor [20.8 h]; Plumber [20.8 h]; Equipment Opreator [20.8 h]; Water Truck [20.8 h]; GRP (500mm Diameter) - ST - Depth less than 1.5 m [13.14 m]; GRP (500mm Diameter) - ST - Depth: 1.51m - 2.5m [63.11 m] | 29,593.15 |  | C071 | Z9 | CONS | ST | Primary Test | bef |
|  | 8654 | **RHD4-02-002-C071-(ST)-GRP Pipes - 400 mm diameter** |  | 2026-08-27 | 2027-03-03 |  |  |  |  |  |  |  |  |  |  |  |  |  |  |
| RHD4CZ9C071ST1100 |  | Excavation works for GRP Pipe Line 400 mm - (RD-C-7/1)-Z9-C071-ST | 2d | 2026-08-27 A | 2026-09-19 A | RHD4ENSDZ9APPST110, RHD4CZ9C071ST1101 | 100% |  | 2026-10-27 | 2026-10-28 | Skilled labor [16.55 h]; Unskilled Labor [16.55 h]; Equipment Opreator [19.82 h]; Excavator-Poclain [16.55 h]; Dump Truck [3.27 h]; GRP (400mm Diameter) - ST - Depth less than 1.5 m [14.75 m]; GRP (400mm Diameter) - ST - Depth: 1.51m - 2.5 m [40.92 m] | 17,658.34 | 17,658.34 | C071 | Z9 | CONS | ST | Excavation | bef |
| RHD4CZ9C071ST1200 |  | Bedding works for GRP Pipe Line 400 mm - (RD-C-7/1)-Z9-C071-ST | 2d | 2026-09-19 A | 2026-09-20 A | RHD4CZ9C071ST1100 | 100% |  | 2026-10-29 | 2026-10-31 | Skilled labor [16.55 h]; Unskilled Labor [33.11 h]; Equipment Opreator [33.11 h]; Excavator-Poclain [16.55 h]; Dump Truck [16.55 h]; GRP (400mm Diameter) - ST - Depth less than 1.5 m [7.38 m]; GRP (400mm Diameter) - ST - Depth: 1.51m - 2.5 m [13.64 m] | 6,600.48 | 6,600.48 | C071 | Z9 | CONS | ST | Bedding | bef |
| RHD4CZ9C071ST1300 |  | Installing for GRP Pipe Line 400 mm - (RD-C-7/1)-Z9-C071-ST | 2d | 2026-09-21 A | 2026-09-22 A | RHD4PRSHLSTAGST1008, RHD4CZ9C071ST1200, RHD4PRSHLDOSST1608, RHD4PRSHLPOST1000, RHD4PRSHLDOSST1008, RHD4PRSHLDOSST1604, RHD4PRSHLDOSST1004 | 100% |  | 2026-11-01 | 2026-11-02 | Unskilled Labor [33.11 h]; Plumber [16.55 h]; GRP (400mm Diameter) - ST - Depth less than 1.5 m [66.39 m]; GRP (400mm Diameter) - ST - Depth: 1.51m - 2.5 m [109.12 m] | 54,935.34 | 54,935.34 | C071 | Z9 | CONS | ST | Installation | bef |
| RHD4CZ9C071ST1500 |  | Backfilling and warning tape works for GRP Pipe Line 400 mm - (RD-C-7/1)-Z9-C071-ST | 2d | 2026-09-22 A | 2026-09-24 A | RHD4CZ9C071ST1400 | 100% |  | 2026-11-05 | 2026-11-07 | Skilled labor [16.55 h]; Unskilled Labor [33.11 h]; Equipment Opreator [33.11 h]; Excavator-Poclain [16.55 h]; Dump Truck [16.55 h]; GRP (400mm Diameter) - ST - Depth less than 1.5 m [29.51 m]; GRP (400mm Diameter) - ST - Depth: 1.51m - 2.5 m [54.56 m] | 26,399.02 | 26,399.02 | C071 | Z9 | CONS | ST | Backfilling | bef |
| RHD4CZ9C071ST1400 |  | Primary Test for GRP Pipe Line 400 mm - (RD-C-7/1)-Z9-C071-ST | 2d | 2027-03-02 | 2027-03-03 | RHD4CZ9C071ST1300 |  |  |  |  | Unskilled Labor [16.55 h]; Plumber [16.55 h]; Equipment Opreator [16.55 h]; Water Truck [16.55 h]; GRP (400mm Diameter) - ST - Depth less than 1.5 m [29.51 m]; GRP (400mm Diameter) - ST - Depth: 1.51m - 2.5 m [54.56 m] | 26,399.02 |  | C071 | Z9 | CONS | ST | Primary Test | bef |
|  | 8668 | **RHD4-02-002-C071-(ST)-UPVC Pipes - 300 mm diameter** |  | 2027-03-02 | 2027-04-05 |  |  |  |  |  |  |  |  |  |  |  |  |  |  |
| RHD4CZ9C071ST2100 |  | Excavation works for UPVC Pipe Line 300 mm - (RD-C-7/1)-Z9-C071-ST | 6d | 2027-03-02 | 2027-03-08 | RHD4ENSDZ9APPST110, RHD4CZ9C071ST1100 |  |  |  |  | Skilled labor [56.41 h]; Unskilled Labor [56.41 h]; Equipment Opreator [67.74 h]; Excavator-Poclain [56.41 h]; Dump Truck [11.33 h]; UPVC (300mm Diameter) - ST - Depth less than 1.5 [116.11 m]; UPVC (300mm Diameter) - ST - Depth: 1.51m - 2.5m [24.05 m] | 43,502.63 |  | C071 | Z9 | CONS | ST | Excavation | bef |
| RHD4CZ9C071ST2200 |  | Bedding works for UPVC Pipe Line 300 mm - (RD-C-7/1)-Z9-C071-ST | 5d | 2027-03-13 | 2027-03-17 | RHD4CZ9C071ST2100 |  |  |  |  | Skilled labor [50.53 h]; Unskilled Labor [101.06 h]; Equipment Opreator [101.06 h]; Excavator-Poclain [50.53 h]; Dump Truck [50.53 h]; UPVC (300mm Diameter) - ST - Depth less than 1.5 [58.06 m]; UPVC (300mm Diameter) - ST - Depth: 1.51m - 2.5m [8.02 m] | 20,367.1 |  | C071 | Z9 | CONS | ST | Bedding | bef |
| RHD4CZ9C071ST2300 |  | Installing for UPVC Pipe Line 300 mm - (RD-C-7/1)-Z9-C071-ST | 6d | 2027-03-18 | 2027-03-24 | RHD4PRSHLDOSST1108, RHD4PRSHLSTAGST1108, RHD4CZ9C071ST2200 |  |  |  |  | Unskilled Labor [112.8 h]; Plumber [56.41 h]; UPVC (300mm Diameter) - ST - Depth less than 1.5 [522.5 m]; UPVC (300mm Diameter) - ST - Depth: 1.51m - 2.5m [64.13 m] | 180,506.48 |  | C071 | Z9 | CONS | ST | Installation | bef |
| RHD4CZ9C071ST2400 |  | Primary Test for UPVC Pipe Line 300 mm - (RD-C-7/1)-Z9-C071-ST | 4d | 2027-03-25 | 2027-03-29 | RHD4CZ9C071ST2300 |  |  |  |  | Unskilled Labor [38.77 h]; Plumber [38.77 h]; Equipment Opreator [38.77 h]; Water Truck [38.77 h]; UPVC (300mm Diameter) - ST - Depth less than 1.5 [232.22 m]; UPVC (300mm Diameter) - ST - Depth: 1.51m - 2.5m [32.06 m] | 81,455.42 |  | C071 | Z9 | CONS | ST | Primary Test | bef |
| RHD4CZ9C071ST2500 |  | Backfilling and warning tape works for UPVC Pipe Line 300 mm - (RD-C-7/1)-Z9-C071-ST | 6d | 2027-03-30 | 2027-04-05 | RHD4CZ9C071ST2400, RHD4CZ9C071ST6100 |  |  |  |  | Skilled labor [65.23 h]; Unskilled Labor [130.47 h]; Equipment Opreator [130.47 h]; Excavator-Poclain [65.23 h]; Dump Truck [65.23 h]; UPVC (300mm Diameter) - ST - Depth less than 1.5 [232.22 m]; UPVC (300mm Diameter) - ST - Depth: 1.51m - 2.5m [32.06 m] | 81,455.42 |  | C071 | Z9 | CONS | ST | Backfilling | bef |

| ID | WBS | Activity | Duration | Start | Finish | Predecessors | Complete | Remaining | Planned start | Planned finish | Resources | Cost | Actual cost | RDH4-01-001-Road and Block Names-1 | RDH4-01-001-Zones-1 | RDH4-01-001-Phases-1 | RDH4-01-001-Networks-1 | RDH4-01-001-Work Method-1 | RDH4-01-001-MENEM |
| --- | --- | --- | --- | --- | --- | --- | --- | --- | --- | --- | --- | --- | --- | --- | --- | --- | --- | --- | --- |
|  | 8676 | **RHD4-02-002-C071-(ST)-Concrete Encasement** |  | 2027-03-23 | 2027-03-24 |  |  |  |  |  |  |  |  |  |  |  |  |  |  |
| RHD4CZ9C071ST6100 |  | Pipe Encasement for Storm Pipelines - (RD-C-7/1)-Z9-C071-ST | 2d | 2027-03-23 | 2027-03-24 | RHD4CZ9C071ST2300 SS, RHD4CZ9C071ST2300 FF, RHD4CZ9C071ST2200 |  |  |  |  | Skilled labor [9.8 h]; Unskilled Labor [9.8 h]; Equipment Opreator [10.78 h]; Concrete Mixer Truck [0.98 h]; Dump Truck [9.8 h]; Pipe Encasement - ST [180.36 m3] | 91,262.16 |  | C071 | Z9 | CONS | ST | Pipe Encasement | bef |
|  | 8677 | **RHD4-02-002-Z9-C071-Catch Basin - ST** |  | 2026-10-27 | 2027-05-04 |  |  |  |  |  |  |  |  |  |  |  |  |  |  |
|  | 8678 | **RHD4-02-002-C071-(ST)-Single Catch Basin Works** |  | 2026-10-27 | 2027-05-04 |  |  |  |  |  |  |  |  |  |  |  |  |  |  |
| RHD4CZ9C071ST7100 |  | Excavation works for Single Catch Basin - (RD-C-7/1)-Z9-C071-ST | 7d | 2026-10-27 A | 2027-03-31 | RHD4ENSDZ9APPST110, RHD4CZ9C071ST3300, RHD4CZ9C071ST3301 | 75% | 7d | 2026-10-27 | 2026-11-03 | Skilled labor [66.4 h]; Unskilled Labor [132.86 h]; Equipment Opreator [99.65 h]; Excavator-Poclain [66.4 h]; Dump Truck [33.22 h]; Single Catch basin - ST [15.25 nr] | 56,897.75 | 42,906.59 | C071 | Z9 | CONS | ST | Excavation | bef |
| RHD4CZ9C071ST7200 |  | PC Blinding, Installation and Pipe connection for Single Catch Basin - (RD-C-7/1)-Z9-C071-ST | 7d | 2026-10-29 A | 2027-04-05 | RHD4CZ9C071ST7100 | 75% | 4d | 2026-10-29 | 2026-11-05 | Skilled labor [66.4 h]; Unskilled Labor [132.86 h]; Plumber [33.22 h]; Equipment Opreator [13.29 h]; Boom Truck [13.29 h]; Single Catch basin - ST [12.2 nr] | 45,518.2 | 34,325.27 | C071 | Z9 | CONS | ST | Installation & Pipe Connection | bef |
| RHD4CZ9C071ST7300 |  | Rings & C.Slab & Final Backfill for Single Catch Basin - (RD-C-7/1)-Z9-C071-ST | 8d | 2026-10-31 A | 2027-04-11 | RHD4PRSHLDOSST1308, RHD4PRSHLSTAGST1308, RHD4CZ9C071ST7200 | 67% | 5d | 2026-10-31 | 2026-11-08 | Skilled labor [83.09 h]; Unskilled Labor [166.08 h]; Equipment Opreator [99.65 h]; Boom Truck [16.66 h]; Bobcat [83.09 h]; Single Catch basin - ST [21.35 nr] | 79,656.85 | 53,537.37 | C071 | Z9 | CONS | ST | Rings | bef |
| RHD4CZ9C071ST7400 |  | Steel Cover for Single Catch Basin - (RD-C-7/1)-Z9-C071-ST | 7d | 2027-04-12 | 2027-04-19 | RHD4PRSHLDOSST1708, RHD4CZ9C071ST7300 |  |  |  |  | Skilled labor [66.4 h]; Unskilled Labor [66.4 h]; Equipment Opreator [13.29 h]; Boom Truck [13.29 h]; Single Catch basin - ST [3.05 nr] | 11,379.55 |  | C071 | Z9 | CONS | ST | Steel Cover | bef |
| RHD4CZ9C071ST7500 |  | Finishing and Insulation works for Single Catch Basin - (RD-C-7/1)-Z9-C071-ST | 13d | 2027-04-20 | 2027-05-04 | RHD4CZ9C071ST7400 |  |  |  |  | Skilled labor [132.86 h]; Unskilled Labor [265.72 h]; Equipment Opreator [26.57 h]; Boom Truck [26.57 h]; Single Catch basin - ST [9.15 nr] | 34,138.65 |  | C071 | Z9 | CONS | ST | Insulation | bef |
|  | 8702 | **RHD4-02-002-Z9-C071-Sewage Network - SW** |  | 2026-08-16 | 2027-06-13 |  |  |  |  |  |  |  |  |  |  |  |  |  |  |
|  | 8714 | **RHD4-02-002-C071-(SW)-MH Works - 1500 mm diameter** |  |  |  |  |  |  |  |  |  |  |  |  |  |  |  |  |  |
|  | 1895 | **RHD4-02-002-C071-(SW)-GRP Pipes - 500 mm diameter** |  | 2026-08-16 | 2027-05-12 |  |  |  |  |  |  |  |  |  |  |  |  |  |  |
| RHD4CZ9C071SW1102 |  | Excavation works for GRP Pipe Line 500 mm - (RD-C-7/1)-Z9-C071-SW | 4d | 2026-08-16 A | 2027-04-24 | RHD4CZ9C071ST7400, RHD4CZ9C071ST2500 | 24% | 4d | 2027-01-05 | 2027-01-09 | Skilled labor [41.27 h]; Unskilled Labor [41.27 h]; Equipment Opreator [49.55 h]; Excavator-Poclain [41.27 h]; Dump Truck [8.28 h]; GRP (500mm Diameter) - SW - Depth: 2.51m - 3.5m [57.87 m]; GRP (500mm Diameter) - SW - Depth: 3.51m - 4.5m [27.4 m]; GRP (500mm Diameter) - SW - Depth: 4.51m - 5.5m | 51,273.98 | 12,158.55 | C071 | Z9 | CONS | SW | Excavation | bef |
| RHD4CZ9C071SW1202 |  | Bedding works for GRP Pipe Line 500 mm - (RD-C-7/1)-Z9-C071-SW | 4d | 2027-04-25 | 2027-04-28 | RHD4CZ9C071SW1102 |  |  |  |  | Skilled labor [41.27 h]; Unskilled Labor [82.55 h]; Equipment Opreator [82.55 h]; Excavator-Poclain [41.27 h]; Dump Truck [41.27 h]; GRP (500mm Diameter) - SW - Depth: 2.51m - 3.5m [19.29 m]; GRP (500mm Diameter) - SW - Depth: 3.51m - 4.5m [9.13 m]; GRP (500mm Diameter) - SW - Depth: 4.51m - 5.5m | 17,089.13 |  | C071 | Z9 | CONS | SW | Bedding | bef |
| RHD4CZ9C071SW1302 |  | Installing for GRP Pipe Line 500 mm - (RD-C-7/1)-Z9-C071-SW | 4d | 2027-04-29 | 2027-05-03 | RHD4CZ9C071SW1202 |  |  |  |  | Unskilled Labor [82.55 h]; Plumber [41.27 h]; Equipment Opreator [41.27 h]; Boom Truck [41.27 h]; GRP (500mm Diameter) - SW - Depth: 2.51m - 3.5m [254.31 m]; GRP (500mm Diameter) - SW - Depth: 3.51m - 4.5m [73.08 m]; GRP (500mm Diameter) - SW - Depth: 4.51m - 5.5m | 194,133.66 |  | C071 | Z9 | CONS | SW | Installation | bef |
| RHD4CZ9C071SW1402 |  | Primary Test for GRP Pipe Line 500 mm - (RD-C-7/1)-Z9-C071-SW | 4d | 2027-05-04 | 2027-05-08 | RHD4CZ9C071SW1302 |  |  |  |  | Unskilled Labor [41.27 h]; Plumber [41.27 h]; Equipment Opreator [41.27 h]; Water Truck [41.27 h]; GRP (500mm Diameter) - SW - Depth: 2.51m - 3.5m [77.15 m]; GRP (500mm Diameter) - SW - Depth: 3.51m - 4.5m [36.54 m]; GRP (500mm Diameter) - SW - Depth: 4.51m - 5.5m | 68,363.96 |  | C071 | Z9 | CONS | SW | Primary Test | bef |
| RHD4CZ9C071SW1502 |  | Backfilling and warning tape works for GRP Pipe Line 500 mm - (RD-C-7/1)-Z9-C071-SW | 4d | 2027-05-09 | 2027-05-12 | RHD4CZ9C071SW1402 |  |  |  |  | Skilled labor [41.27 h]; Unskilled Labor [82.55 h]; Equipment Opreator [82.55 h]; Excavator-Poclain [41.27 h]; Dump Truck [41.27 h]; GRP (500mm Diameter) - SW - Depth: 2.51m - 3.5m [77.15 m]; GRP (500mm Diameter) - SW - Depth: 3.51m - 4.5m [36.54 m]; GRP (500mm Diameter) - SW - Depth: 4.51m - 5.5m | 68,363.96 |  | C071 | Z9 | CONS | SW | Backfilling | bef |
|  | 3794 | **RHD4-02-002-C071-(SW)-MH Works - 1200 mm diameter** |  | 2027-04-25 | 2027-06-13 |  |  |  |  |  |  |  |  |  |  |  |  |  |  |
| RHD4CZ9C071SW3100 |  | Excavation and PC Blinding works for MH 1200 mm - (RD-C-7/1)-Z9-C071-SW | 5d | 2027-04-25 | 2027-04-29 | RHD4CZ9C071SW1102 |  |  |  |  | Skilled labor [54.45 h]; Unskilled Labor [54.45 h]; Equipment Opreator [87.12 h]; Excavator-Poclain [54.45 h]; Water Truck [5.45 h]; Dump Truck [27.2 h]; MH (1200mm Diameter) - SW - depth 3.51 -4.5m [1.75 nr]; MH (1200mm Diameter) - SW - depth 4.51 -5.5m [0.75 nr] | 35,077.5 |  | C071 | Z9 | CONS | SW | Excavation | bef |
| RHD4CZ9C071SW3200 |  | Installation of Base for MH 1200 mm - (RD-C-7/1)-Z9-C071-SW | 10d | 2027-05-01 | 2027-05-11 | RHD4CZ9C071SW3100 |  |  |  |  | Skilled labor [108.9 h]; Unskilled Labor [108.9 h]; Equipment Opreator [43.56 h]; Boom Truck [21.78 h]; Concrete Mixer Truck [21.78 h]; MH (1200mm Diameter) - SW - depth 3.51 -4.5m [1.75 nr]; MH (1200mm Diameter) - SW - depth 4.51 -5.5m [0.75 nr] | 35,077.5 |  | C071 | Z9 | CONS | SW | Installing Base | bef |
| RHD4CZ9C071SW3300 |  | MH Ring and C.Slab works and Backfilling works for MH 1200 mm - (RD-C-7/1)-Z9-C071-SW | 10d | 2027-05-12 | 2027-05-27 | RHD4CZ9C071SW3200 |  |  |  |  | Skilled labor [108.9 h]; Unskilled Labor [108.9 h]; Equipment Opreator [76.23 h]; Boom Truck [43.56 h]; Concrete Mixer Truck [32.67 h]; MH (1200mm Diameter) - SW - depth 3.51 -4.5m [2.45 nr]; MH (1200mm Diameter) - SW - depth 4.51 -5.5m [1.05 nr] | 49,108.5 |  | C071 | Z9 | CONS | SW | Installing Rings | bef |
| RHD4CZ9C071SW3400 |  | Steel Cover for MH 1200 mm - (RD-C-7/1)-Z9-C071-SW | 4d | 2027-05-29 | 2027-06-01 | RHD4CZ9C071SW3300 |  |  |  |  | Skilled labor [36.26 h]; Unskilled Labor [72.64 h]; Equipment Opreator [7.3 h]; Boom Truck [7.3 h]; MH (1200mm Diameter) - SW - depth 3.51 -4.5m [0.35 nr]; MH (1200mm Diameter) - SW - depth 4.51 -5.5m [0.15 nr] | 7,015.5 |  | C071 | Z9 | CONS | SW | Steel Cover | bef |
| RHD4CZ9C071SW3500 |  | Finishing, Benching, Testing works for MH 1200 mm - (RD-C-7/1)-Z9-C071-SW | 10d | 2027-06-02 | 2027-06-13 | RHD4CZ9C071SW3400 |  |  |  |  | Skilled labor [108.9 h]; Unskilled Labor [217.81 h]; Plumber [108.9 h]; Equipment Opreator [21.78 h]; Water Truck [21.78 h]; MH (1200mm Diameter) - SW - depth 3.51 -4.5m [0.7 nr]; MH (1200mm Diameter) - SW - depth 4.51 -5.5m [0.3 nr] | 14,031 |  | C071 | Z9 | CONS | SW | Benching | bef |
|  | 8707 | **RHD4-02-002-C071-(SW)-GRP Pipes - 700 mm diameter** |  |  |  |  |  |  |  |  |  |  |  |  |  |  |  |  |  |
|  | 8708 | **RHD4-02-002-C071-(SW)-UPVC Pipes - 200 mm diameter** |  |  |  |  |  |  |  |  |  |  |  |  |  |  |  |  |  |
|  | 8711 | **RHD4-02-002-C071-(SW)-Concrete Encasement** |  |  |  |  |  |  |  |  |  |  |  |  |  |  |  |  |  |
|  | 8739 | **RHD4-02-002-Z9-C071-Potable Network - PT** |  | 2027-05-13 | 2027-06-10 |  |  |  |  |  |  |  |  |  |  |  |  |  |  |
|  | 8742 | **RHD4-02-002-C071-(PT)-HDPE Pipes - 200 mm diameter** |  | 2027-05-13 | 2027-05-30 |  |  |  |  |  |  |  |  |  |  |  |  |  |  |
| RHD4CZ9C071PT1102 |  | Excavation works for HDPE Pipline 200 mm - (RD-C-7/1)-Z9-C071-PT | 2d | 2027-05-13 | 2027-05-19 | RHD4ENSDZ9APPPT130, RHD4ENMSPT2000, RHD4CZ9C071SW1502 |  |  |  |  | Skilled labor [17.32 h]; Unskilled Labor [17.32 h]; Equipment Opreator [20.69 h]; Excavator-Poclain [17.32 h]; Dump Truck [3.48 h]; HDPE (200mm Diameter) - PT - Depth: less than 1.5m [35 m]; HDPE (200mm Diameter) - PT - Depth: more than 1.5m | 4,900 |  | C071 | Z9 | CONS | PT | Excavation | bef |
| RHD4CZ9C071PT1202 |  | Bedding works for HDPE Pipline 200 mm - (RD-C-7/1)-Z9-C071-PT | 2d | 2027-05-20 | 2027-05-22 | RHD4CZ9C071PT1102 |  |  |  |  | Skilled labor [15.25 h]; Unskilled Labor [30.49 h]; Equipment Opreator [30.49 h]; Excavator-Poclain [15.25 h]; Dump Truck [15.25 h]; HDPE (200mm Diameter) - PT - Depth: less than 1.5m [17.5 m]; HDPE (200mm Diameter) - PT - Depth: more than 1.5m | 2,450 |  | C071 | Z9 | CONS | PT | Bedding | bef |
| RHD4CZ9C071PT1302 |  | Installing for HDPE Pipline 200 mm - (RD-C-7/1)-Z9-C071-PT | 3d | 2027-05-23 | 2027-05-25 | RHD4PRSHLDOSPT1000, RHD4PRSHLSTAGPT1000, RHD4CZ9C071PT1202 |  |  |  |  | Unskilled Labor [50.86 h]; Plumber [25.37 h]; Equipment Opreator [25.37 h]; Boom Truck [25.37 h]; HDPE (200mm Diameter) - PT - Depth: less than 1.5m [157.5 m]; HDPE (200mm Diameter) - PT - Depth: more than 1.5m | 22,050 |  | C071 | Z9 | CONS | PT | Installation | bef |
| RHD4CZ9C071PT1402 |  | Primary Test for HDPE Pipline 200 mm - (RD-C-7/1)-Z9-C071-PT | 2d | 2027-05-26 | 2027-05-27 | RHD4CZ9C071PT1302, RHD4CZ9C071PT3100 |  |  |  |  | Unskilled Labor [11.11 h]; Plumber [11.11 h]; Equipment Opreator [11.11 h]; Water Truck [11.11 h]; HDPE (200mm Diameter) - PT - Depth: less than 1.5m [70 m]; HDPE (200mm Diameter) - PT - Depth: more than 1.5m | 9,800 |  | C071 | Z9 | CONS | PT | Primary Test | bef |
| RHD4CZ9C071PT1502 |  | Backfilling and warning tape works for HDPE Pipline 200 mm - (RD-C-7/1)-Z9-C071-PT | 2d | 2027-05-29 | 2027-05-30 | RHD4CZ9C071PT1402 |  |  |  |  | Skilled labor [20.36 h]; Unskilled Labor [40.62 h]; Equipment Opreator [40.62 h]; Excavator-Poclain [20.36 h]; Dump Truck [20.36 h]; HDPE (200mm Diameter) - PT - Depth: less than 1.5m [70 m]; HDPE (200mm Diameter) - PT - Depth: more than 1.5m | 9,800 |  | C071 | Z9 | CONS | PT | Backfilling | bef |

| ID | WBS | Activity | Duration | Start | Finish | Predecessors | Resources | Cost | RDH4-01-001-Road and Block Names-1 | RDH4-01-001-Zones-1 | RDH4-01-001-Phases-1 | RDH4-01-001-Networks-1 | RDH4-01-001-Work Method-1 | RDH4-01-001-MENEM |
| --- | --- | --- | --- | --- | --- | --- | --- | --- | --- | --- | --- | --- | --- | --- |
|  | 8741 | **RHD4-02-002-C071-(PT)-HDPE Pipes - 160 mm diameter** |  | 2027-05-20 | 2027-06-08 |  |  |  |  |  |  |  |  |  |
| RHD4CZ9C071PT1101 |  | Excavation works for HDPE Pipline 160 mm - (RD-C-7/1)-Z9-C071-PT | 3d | 2027-05-20 | 2027-05-23 | RHD4ENSDZ9APPPT130, RHD4ENMSPT2000, RHD4CZ9C071PT1102 | Skilled labor [27.66 h]; Unskilled Labor [27.66 h]; Equipment Opreator [33.22 h]; Excavator-Poclain [27.66 h]; Dump Truck [5.55 h]; HDPE (160mm Diameter) - PT - Depth: less than 1.5m [62.24 m]; HDPE (160mm Diameter) - PT - Depth: 1.51m - 2.5m | 6,659.68 | C071 | Z9 | CONS | PT | Excavation | bef |
| RHD4CZ9C071PT1201 |  | Bedding works for HDPE Pipline 160 mm - (RD-C-7/1)-Z9-C071-PT | 3d | 2027-05-24 | 2027-05-26 | RHD4CZ9C071PT1101, RHD4CZ9C071PT1202 | Skilled labor [23.52 h]; Unskilled Labor [47.05 h]; Equipment Opreator [47.05 h]; Excavator-Poclain [23.52 h]; Dump Truck [23.52 h]; HDPE (160mm Diameter) - PT - Depth: less than 1.5m [31.12 m]; HDPE (160mm Diameter) - PT - Depth: 1.51m - 2.5m | 3,329.84 | C071 | Z9 | CONS | PT | Bedding | bef |
| RHD4CZ9C071PT1301 |  | Installing for HDPE Pipline 160 mm - (RD-C-7/1)-Z9-C071-PT | 5d | 2027-05-27 | 2027-06-01 | RHD4PRSHLDOSPT1000, RHD4PRSHLSTAGPT1000, RHD4CZ9C071PT1201, RHD4CZ9C071PT1302 | Unskilled Labor [88.54 h]; Plumber [44.32 h]; Equipment Opreator [44.32 h]; Boom Truck [44.32 h]; HDPE (160mm Diameter) - PT - Depth: less than 1.5m [280.06 m]; HDPE (160mm Diameter) - PT - Depth: 1.51m - 2.5m | 29,966.42 | C071 | Z9 | CONS | PT | Installation | bef |
| RHD4CZ9C071PT1401 |  | Primary Test for HDPE Pipline 160 mm - (RD-C-7/1)-Z9-C071-PT | 2d | 2027-06-02 | 2027-06-03 | RHD4CZ9C071PT1301, RHD4CZ9C071PT1402 | Unskilled Labor [15.14 h]; Plumber [15.14 h]; Equipment Opreator [15.14 h]; Water Truck [15.14 h]; HDPE (160mm Diameter) - PT - Depth: less than 1.5m [124.47 m]; HDPE (160mm Diameter) - PT - Depth: 1.51m - 2.5m | 13,318.29 | C071 | Z9 | CONS | PT | Primary Test | bef |
| RHD4CZ9C071PT1501 |  | Backfilling and warning tape works for HDPE Pipline 160 mm - (RD-C-7/1)-Z9-C071-PT | 4d | 2027-06-05 | 2027-06-08 | RHD4CZ9C071PT1401, RHD4CZ9C071PT1502 | Skilled labor [33.87 h]; Unskilled Labor [67.74 h]; Equipment Opreator [67.74 h]; Excavator-Poclain [33.87 h]; Dump Truck [33.87 h]; HDPE (160mm Diameter) - PT - Depth: less than 1.5m [124.47 m]; HDPE (160mm Diameter) - PT - Depth: 1.51m - 2.5m | 13,318.29 | C071 | Z9 | CONS | PT | Backfilling | bef |
|  | 8745 | **RHD4-02-002-C071-(PT)-Gate Valves (Direct Buried)** |  | 2027-05-24 | 2027-06-10 |  |  |  |  |  |  |  |  |  |
| RHD4CZ9C071PT3100 |  | Installation for Direct Buried Gate Valves - (RD-C-7/1)-Z9-C071-PT | 2d | 2027-05-24 | 2027-05-25 | RHD4PRSHLDOSPT1200, RHD4PRSHLSTAGPT1200, RHD4CZ9C071PT1302 FF, RHD4CZ9C071PT1302 SS | Unskilled Labor [21.78 h]; Plumber [21.78 h]; Gate valves dia 150 mm - PT [2.7 nr]; Gate valves dia 200 mm - PT [0.9 nr] | 6,274.8 | C071 | Z9 | CONS | PT | Installation | bef |
| RHD4CZ9C071PT3200 |  | Stem and Service box for Direct Buried Gate Valves - (RD-C-7/1)-Z9-C071-PT | 2d | 2027-06-09 | 2027-06-10 | RHD4PRSHLDOSPT1300, RHD4PRSHLSTAGPT1300, RHD4CZ9C071PT3100, RHD4CZ9C071PT1502, RHD4CZ9C071PT1501 | Unskilled Labor [21.78 h]; Plumber [21.78 h]; Gate valves dia 150 mm - PT [0.3 nr]; Gate valves dia 200 mm - PT [0.1 nr] | 697.2 | C071 | Z9 | CONS | PT | Stem and Service box | bef |
|  | 8748 | **RHD4-02-002-C071-(PT)-Wash out Valve Chambers** |  | 2027-05-20 | 2027-05-29 |  |  |  |  |  |  |  |  |  |
| RHD4CZ9C071PT2101 |  | Excavation and Bedding for Wash out Valve Chambers for Potable Water Network - (RD-C-7/1)-Z9-C071-PT | 2d | 2027-05-20 | 2027-05-22 | RHD4ENSDZ9APPPT130, RHD4CZ9C071PT1102 | Skilled labor [10.89 h]; Unskilled Labor [10.89 h]; Equipment Opreator [2.18 h]; Excavator-Poclain [1.09 h]; Dump Truck [1.09 h]; Wash out chambers - PT [0.5 nr] | 9,372.5 | C071 | Z9 | CONS | PT | Excavation and Bedding | bef |
| RHD4CZ9C071PT2201 |  | PC works for Wash out Valve Chambers for Potable Water Network - (RD-C-7/1)-Z9-C071-PT | 2d | 2027-05-23 | 2027-05-24 | RHD4CZ9C071PT2101 | Skilled labor [10.89 h]; Unskilled Labor [21.78 h]; Equipment Opreator [1.09 h]; Concrete Pump [1.09 h]; Wash out chambers - PT [0.2 nr] | 3,749 | C071 | Z9 | CONS | PT | PC Works | bef |
| RHD4CZ9C071PT2301 |  | Installation for Wash out Valve Chambers for Potable Water Network - (RD-C-7/1)-Z9-C071-PT | 2d | 2027-05-25 | 2027-05-26 | RHD4PRSHLDOSPT1100, RHD4PRSHLDOSPT1400, RHD4PRSHLSTAGPT1100, RHD4PRSHLSTAGPT1400, RHD4CZ9C071PT2201 | Skilled labor [10.89 h]; Unskilled Labor [21.78 h]; Equipment Opreator [2.18 h]; Boom Truck [2.18 h]; Wash out chambers - PT [1.1 nr] | 20,619.5 | C071 | Z9 | CONS | PT | Installation | bef |
| RHD4CZ9C071PT2401 |  | Backfilling works for Wash out Valve Chambers for Potable Water Network - (RD-C-7/1)-Z9-C071-PT | 2d | 2027-05-27 | 2027-05-29 | RHD4CZ9C071PT2301 | Skilled labor [10.89 h]; Unskilled Labor [21.78 h]; Equipment Opreator [2.18 h]; Water Truck [1.09 h]; Dump Truck [1.09 h]; Wash out chambers - PT [0.2 nr] | 3,749 | C071 | Z9 | CONS | PT | Backfilling Works | bef |
|  | 8749 | **RHD4-02-002-C071-(PT)-Wash out Valves** |  | 2027-05-27 | 2027-05-31 |  |  |  |  |  |  |  |  |  |
| RHD4CZ9C071PT3102 |  | Installation for Wash out Valves for Potable Water Network - (RD-C-7/1)-Z9-C071-PT | 2d | 2027-05-27 | 2027-05-29 | RHD4PRSHLDOSPT1200, RHD4PRSHLSTAGPT1200, RHD4CZ9C071PT2301 | Unskilled Labor [10.89 h]; Plumber [10.89 h]; Wash out valve diameter 100 mm - PT [1.8 nr] | 6,746.4 | C071 | Z9 | CONS | PT | Installation | bef |
| RHD4CZ9C071PT3202 |  | Stem and Service box for Wash out Valves for Potable Water Network - (RD-C-7/1)-Z9-C071-PT | 2d | 2027-05-30 | 2027-05-31 | RHD4PRSHLDOSPT1300, RHD4PRSHLSTAGPT1300, RHD4CZ9C071PT3102, RHD4CZ9C071PT2401 | Unskilled Labor [10.89 h]; Plumber [10.89 h]; Wash out valve diameter 100 mm - PT [0.2 nr] | 749.6 | C071 | Z9 | CONS | PT | Stem and Service box | bef |
|  | 8750 | **RHD4-02-002-C071-(PT)-Air Valve Chambers** |  | 2027-05-23 | 2027-05-31 |  |  |  |  |  |  |  |  |  |
| RHD4CZ9C071PT2102 |  | Excavation and Bedding for Air Valve Chambers for Potable Water Network - (RD-C-7/1)-Z9-C071-PT | 2d | 2027-05-23 | 2027-05-24 | RHD4ENSDZ9APPPT130, RHD4CZ9C071PT2101 | Skilled labor [10.89 h]; Unskilled Labor [10.89 h]; Equipment Opreator [2.18 h]; Excavator-Poclain [1.09 h]; Dump Truck [1.09 h]; Air Valve chambers - PT [0.5 nr] | 2,386 | C071 | Z9 | CONS | PT | Excavation and Bedding | bef |
| RHD4CZ9C071PT2202 |  | PC works for Air Valve Chambers for Potable Water Network - (RD-C-7/1)-Z9-C071-PT | 2d | 2027-05-25 | 2027-05-26 | RHD4CZ9C071PT2102 | Skilled labor [10.89 h]; Unskilled Labor [21.78 h]; Equipment Opreator [1.09 h]; Concrete Pump [1.09 h]; Air Valve chambers - PT [0.2 nr] | 954.4 | C071 | Z9 | CONS | PT | PC Works | bef |
| RHD4CZ9C071PT2302 |  | Installation for Air Valve Chambers for Potable Water Network - (RD-C-7/1)-Z9-C071-PT | 2d | 2027-05-27 | 2027-05-29 | RHD4PRSHLDOSPT1100, RHD4PRSHLDOSPT1400, RHD4PRSHLSTAGPT1100, RHD4PRSHLSTAGPT1400, RHD4CZ9C071PT2202 | Skilled labor [10.89 h]; Unskilled Labor [21.78 h]; Equipment Opreator [2.18 h]; Boom Truck [2.18 h]; Air Valve chambers - PT [1.1 nr] | 5,249.2 | C071 | Z9 | CONS | PT | Installation | bef |
| RHD4CZ9C071PT2402 |  | Backfilling works for Air Valve Chambers for Potable Water Network - (RD-C-7/1)-Z9-C071-PT | 2d | 2027-05-30 | 2027-05-31 | RHD4CZ9C071PT2302 | Skilled labor [10.89 h]; Unskilled Labor [21.78 h]; Equipment Opreator [2.18 h]; Water Truck [1.09 h]; Dump Truck [1.09 h]; Air Valve chambers - PT [0.2 nr] | 954.4 | C071 | Z9 | CONS | PT | Backfilling Works | bef |
|  | 8751 | **RHD4-02-002-C071-(PT)-Air Valves** |  | 2027-05-20 | 2027-05-24 |  |  |  |  |  |  |  |  |  |
| RHD4CZ9C071PT3103 |  | Installation for Air Valves for Potable Water Network - (RD-C-7/1)-Z9-C071-PT | 2d | 2027-05-20 | 2027-05-22 | RHD4PRSHLDOSPT1200, RHD4PRSHLSTAGPT1200, RHD4CZ9C071PT1102 | Unskilled Labor [10.89 h]; Plumber [10.89 h]; Air valve diameter 50 mm - PT [1.8 nr] | 8,854.2 | C071 | Z9 | CONS | PT | Installation | bef |
| RHD4CZ9C071PT3203 |  | Stem and Service box for Air Valves for Potable Water Network - (RD-C-7/1)-Z9-C071-PT | 2d | 2027-05-23 | 2027-05-24 | RHD4PRSHLDOSPT1300, RHD4PRSHLSTAGPT1300, RHD4CZ9C071PT3103 | Unskilled Labor [10.89 h]; Plumber [10.89 h]; Air valve diameter 50 mm - PT [0.2 nr] | 983.8 | C071 | Z9 | CONS | PT | Stem and Service box | bef |

| ID | WBS | Activity | Duration | Start | Finish | Predecessors | Resources | Cost | RDH4-01-001-Road and Block Names-1 | RDH4-01-001-Zones-1 | RDH4-01-001-Phases-1 | RDH4-01-001-Networks-1 | RDH4-01-001-Work Method-1 | RDH4-01-001-MENEM |
| --- | --- | --- | --- | --- | --- | --- | --- | --- | --- | --- | --- | --- | --- | --- |
|  | 8752 | **RHD4-02-002-C071-(PT)-Fire Hydrant** |  | 2027-05-25 | 2027-06-06 |  |  |  |  |  |  |  |  |  |
| RHD4CZ9C071PT4100 |  | Excavation and Bedding and Pipe Installation for Fire Hydrant - (RD-C-7/1)-Z9-C071-PT | 3d | 2027-05-25 | 2027-05-27 | RHD4ENSDZ9APPPT130, RHD4CZ9C071PT2102 | Skilled labor [32.67 h]; Unskilled Labor [32.67 h]; Plumber [32.67 h]; Equipment Opreator [16.34 h]; Excavator-Poclain [16.34 h]; 3-outlet fire hydrant (2 x 2.5 inch and 1 x 4.5 inch) in the form of a separate dry vacuum cylinder [0.6 nr] | 7,572 | C071 | Z9 | CONS | PT | Excavation | bef |
| RHD4CZ9C071PT4200 |  | Valve Installation for Fire Hydrant - (RD-C-7/1)-Z9-C071-PT | 2d | 2027-05-29 | 2027-05-30 | RHD4CZ9C071PT4100 | Unskilled Labor [21.78 h]; Plumber [21.78 h]; 3-outlet fire hydrant (2 x 2.5 inch and 1 x 4.5 inch) in the form of a separate dry vacuum cylinder [1.2 nr] | 15,144 | C071 | Z9 | CONS | PT | Valve | bef |
| RHD4CZ9C071PT4300 |  | Stem for Fire Hydrant - (RD-C-7/1)-Z9-C071-PT | 2d | 2027-05-31 | 2027-06-01 | RHD4CZ9C071PT4200 | Unskilled Labor [21.78 h]; Plumber [21.78 h]; 3-outlet fire hydrant (2 x 2.5 inch and 1 x 4.5 inch) in the form of a separate dry vacuum cylinder [1.8 nr] | 22,716 | C071 | Z9 | CONS | PT | Stem | bef |
| RHD4CZ9C071PT4400 |  | Fire Installation for Fire Hydrant - (RD-C-7/1)-Z9-C071-PT | 2d | 2027-06-02 | 2027-06-03 | RHD4PRSHLDOSPT1500, RHD4PRSHLSTAGPT1500, RHD4CZ9C071PT4300 | Unskilled Labor [21.78 h]; Plumber [21.78 h]; Equipment Opreator [21.78 h]; Boom Truck [21.78 h]; 3-outlet fire hydrant (2 x 2.5 inch and 1 x 4.5 inch) in the form of a separate dry vacuum cylinder [2.1 nr] | 26,502 | C071 | Z9 | CONS | PT | Fire | bef |
| RHD4CZ9C071PT4500 |  | Protection Barriers for Fire Hydrant - (RD-C-7/1)-Z9-C071-PT | 2d | 2027-06-05 | 2027-06-06 | RHD4CZ9C071PT4400 | Unskilled Labor [13.07 h]; Plumber [13.07 h]; 3-outlet fire hydrant (2 x 2.5 inch and 1 x 4.5 inch) in the form of a separate dry vacuum cylinder [0.3 nr] | 3,786 | C071 | Z9 | CONS | PT | Protection Barriers | bef |
|  | 8754 | **RHD4-02-002-Z9-C071-Irrigation Network - IRR** |  | 2027-06-01 | 2027-06-24 |  |  |  |  |  |  |  |  |  |
|  | 8762 | **RHD4-02-002-C071-(IRR)-HDPE Pipes - 500 mm diameter** |  | 2027-06-01 | 2027-06-23 |  |  |  |  |  |  |  |  |  |
| RHD4CZ9C071IRR1107 |  | Excavation works for HDPE Pipline 500 mm - (RD-C-7/1)-Z9-C071-IRR | 5d | 2027-06-01 | 2027-06-06 | RHD4ENSDZ9APPIRR140, RHD4ENMSRR2000, RHD4CZ9C071PT1102 SS, RHD4CZ9C071PT2402 | Skilled labor [48.57 h]; Unskilled Labor [48.57 h]; Equipment Opreator [58.4 h]; Excavator-Poclain [48.57 h]; Dump Truck [9.69 h]; HDPE (500mm Diameter) - TSE - Depth: less than 1.5m [64.51 m]; HDPE (500mm Diameter) - TSE - Depth: more than 1.51m [3.68 m] | 44,192.32 | C071 | Z9 | CONS | IRR | Excavation | bef |
| RHD4CZ9C071IRR1207 |  | Bedding works for HDPE Pipline 500 mm - (RD-C-7/1)-Z9-C071-IRR | 4d | 2027-06-07 | 2027-06-10 | RHD4CZ9C071IRR1107 | Skilled labor [36.92 h]; Unskilled Labor [73.84 h]; Equipment Opreator [73.84 h]; Excavator-Poclain [36.92 h]; Dump Truck [36.92 h]; HDPE (500mm Diameter) - TSE - Depth: less than 1.5m [32.25 m]; HDPE (500mm Diameter) - TSE - Depth: more than 1.51m [1.23 m] | 21,678.31 | C071 | Z9 | CONS | IRR | Bedding | bef |
| RHD4CZ9C071IRR1307 |  | Installing for HDPE Pipline 500 mm - (RD-C-7/1)-Z9-C071-IRR | 5d | 2027-06-12 | 2027-06-16 | RHD4PRSHLDOSIRR1000, RHD4PRSHLSTAGIRR1000, RHD4CZ9C071IRR1207 | Unskilled Labor [97.25 h]; Plumber [48.57 h]; Equipment Opreator [48.57 h]; Boom Truck [48.57 h]; HDPE (500mm Diameter) - TSE - Depth: less than 1.5m [290.28 m]; HDPE (500mm Diameter) - TSE - Depth: more than 1.51m [9.81 m] | 194,241.7 | C071 | Z9 | CONS | IRR | Installation | bef |
| RHD4CZ9C071IRR1407 |  | Primary Test for HDPE Pipline 500 mm - (RD-C-7/1)-Z9-C071-IRR | 2d | 2027-06-17 | 2027-06-19 | RHD4CZ9C071IRR1307 | Unskilled Labor [14.92 h]; Plumber [14.92 h]; Equipment Opreator [14.92 h]; Water Truck [14.92 h]; HDPE (500mm Diameter) - TSE - Depth: less than 1.5m [129.01 m]; HDPE (500mm Diameter) - TSE - Depth: more than 1.51m [4.9 m] | 86,699.54 | C071 | Z9 | CONS | IRR | Primary Test | bef |
| RHD4CZ9C071IRR1507 |  | Backfilling and warning tape works for HDPE Pipline 500 mm - (RD-C-7/1)-Z9-C071-IRR | 4d | 2027-06-20 | 2027-06-23 | RHD4CZ9C071IRR1407 | Skilled labor [36.92 h]; Unskilled Labor [73.84 h]; Equipment Opreator [73.84 h]; Excavator-Poclain [36.92 h]; Dump Truck [36.92 h]; HDPE (500mm Diameter) - TSE - Depth: less than 1.5m [129.01 m]; HDPE (500mm Diameter) - TSE - Depth: more than 1.51m [4.9 m] | 86,699.54 | C071 | Z9 | CONS | IRR | Backfilling | bef |
|  | 8755 | **RHD4-02-002-C071-(IRR)-HDPE Pipes - 160 mm diameter** |  | 2027-06-07 | 2027-06-24 |  |  |  |  |  |  |  |  |  |
| RHD4CZ9C071IRR1100 |  | Excavation works for HDPE Pipline 160 mm - (RD-C-7/1)-Z9-C071-IRR | 4d | 2027-06-07 | 2027-06-10 | RHD4ENSDZ9APPIRR140, RHD4ENMSRR2000, RHD4CZ9C071IRR1107 | Skilled labor [39.1 h]; Unskilled Labor [39.1 h]; Equipment Opreator [46.83 h]; Excavator-Poclain [39.1 h]; Dump Truck [7.84 h]; HDPE (160mm Diameter) - TSE - Depth: less than 1.5m [53.78 m] | 6,614.57 | C071 | Z9 | CONS | IRR | Excavation | bef |
| RHD4CZ9C071IRR1200 |  | Bedding works for HDPE Pipline 160 mm - (RD-C-7/1)-Z9-C071-IRR | 3d | 2027-06-12 | 2027-06-14 | RHD4CZ9C071IRR1100 | Skilled labor [29.3 h]; Unskilled Labor [58.59 h]; Equipment Opreator [58.59 h]; Excavator-Poclain [29.3 h]; Dump Truck [29.3 h]; HDPE (160mm Diameter) - TSE - Depth: less than 1.5m [26.89 m] | 3,307.29 | C071 | Z9 | CONS | IRR | Bedding | bef |
| RHD4CZ9C071IRR1300 |  | Installing for HDPE Pipline 160 mm - (RD-C-7/1)-Z9-C071-IRR | 4d | 2027-06-15 | 2027-06-19 | RHD4PRSHLDOSIRR1000, RHD4PRSHLSTAGIRR1000, RHD4CZ9C071IRR1200 | Unskilled Labor [78.08 h]; Plumber [39.1 h]; Equipment Opreator [39.1 h]; Boom Truck [39.1 h]; HDPE (160mm Diameter) - TSE - Depth: less than 1.5m [242 m] | 29,766 | C071 | Z9 | CONS | IRR | Installation | bef |
| RHD4CZ9C071IRR1400 |  | Primary Test for HDPE Pipline 160 mm - (RD-C-7/1)-Z9-C071-IRR | 2d | 2027-06-20 | 2027-06-21 | RHD4CZ9C071IRR1300 | Unskilled Labor [11.76 h]; Plumber [11.76 h]; Equipment Opreator [11.76 h]; Water Truck [11.76 h]; HDPE (160mm Diameter) - TSE - Depth: less than 1.5m [107.55 m] | 13,229.14 | C071 | Z9 | CONS | IRR | Primary Test | bef |
| RHD4CZ9C071IRR1500 |  | Backfilling and warning tape works for HDPE Pipline 160 mm - (RD-C-7/1)-Z9-C071-IRR | 3d | 2027-06-22 | 2027-06-24 | RHD4CZ9C071IRR1400 | Skilled labor [29.3 h]; Unskilled Labor [58.59 h]; Equipment Opreator [58.59 h]; Excavator-Poclain [29.3 h]; Dump Truck [29.3 h]; HDPE (160mm Diameter) - TSE - Depth: less than 1.5m [107.55 m] | 13,229.14 | C071 | Z9 | CONS | IRR | Backfilling | bef |
|  | 6116 | **RHD4-02-002-C071-(IRR)-Butterfly Valve Chamber** |  | 2027-06-12 | 2027-06-20 |  |  |  |  |  |  |  |  |  |
| RHD4CZ9C071IRR2100 |  | Excavation and Bedding for Butterfly Valve Chamber for Irrigation Network - (RD-C-7/1)-Z9-C071-IRR | 2d | 2027-06-12 | 2027-06-13 | RHD4CZ9C071IRR1100 | Skilled labor [10.89 h]; Unskilled Labor [10.89 h]; Equipment Opreator [2.18 h]; Excavator-Poclain [1.09 h]; Dump Truck [1.09 h]; Valve chambers - TSE [0.5 nr] | 7,321.5 | C071 | Z9 | CONS | IRR | Excavation and Bedding | bef |
| RHD4CZ9C071IRR2200 |  | PC works for Butterfly Valve Chamber for Irrigation Network - (RD-C-7/1)-Z9-C071-IRR | 2d | 2027-06-14 | 2027-06-15 | RHD4CZ9C071IRR2100 | Skilled labor [10.89 h]; Unskilled Labor [21.78 h]; Equipment Opreator [1.09 h]; Concrete Pump [1.09 h]; Valve chambers - TSE [0.2 nr] | 2,928.6 | C071 | Z9 | CONS | IRR | PC Works | bef |
| RHD4CZ9C071IRR2300 |  | Installation for Butterfly Valve Chamber for Irrigation Network - (RD-C-7/1)-Z9-C071-IRR | 2d | 2027-06-16 | 2027-06-17 | RHD4CZ9C071IRR2200 | Skilled labor [10.89 h]; Unskilled Labor [21.78 h]; Equipment Opreator [2.18 h]; Boom Truck [2.18 h]; Valve chambers - TSE [1.1 nr] | 16,107.3 | C071 | Z9 | CONS | IRR | Installation | bef |
| RHD4CZ9C071IRR2400 |  | Backfilling works for Butterfly Valve Chamber for Irrigation Network - (RD-C-7/1)-Z9-C071-IRR | 2d | 2027-06-19 | 2027-06-20 | RHD4CZ9C071IRR2300 | Skilled labor [10.89 h]; Unskilled Labor [21.78 h]; Equipment Opreator [2.18 h]; Water Truck [1.09 h]; Dump Truck [1.09 h]; Valve chambers - TSE [0.2 nr] | 2,928.6 | C071 | Z9 | CONS | IRR | Backfilling Works | bef |

| ID | WBS | Activity | Duration | Start | Finish | Predecessors | Resources | Cost | RDH4-01-001-Road and Block Names-1 | RDH4-01-001-Zones-1 | RDH4-01-001-Phases-1 | RDH4-01-001-Networks-1 | RDH4-01-001-Work Method-1 | RDH4-01-001-MENEM |
| --- | --- | --- | --- | --- | --- | --- | --- | --- | --- | --- | --- | --- | --- | --- |
|  | 6117 | **RHD4-02-002-C071-(IRR)-Butterfly Valves** |  | 2027-06-20 | 2027-06-23 |  |  |  |  |  |  |  |  |  |
| RHD4CZ9C071IRR3101 |  | Installation for Butterfly Valves for Irrigation Network - (RD-C-7/1)-Z9-C071-IRR | 2d | 2027-06-20 | 2027-06-21 | RHD4CZ9C071IRR2300, RHD4CZ9C071IRR1300 | Unskilled Labor [10.89 h]; Plumber [10.89 h]; Butterfly valves dia 500 - TSE [1.8 nr] | 71,348.4 | C071 | Z9 | CONS | IRR | Installation | bef |
| RHD4CZ9C071IRR3201 |  | Stem and Service box for Butterfly Valves for Irrigation Network - (RD-C-7/1)-Z9-C071-IRR | 2d | 2027-06-22 | 2027-06-23 | RHD4CZ9C071IRR3101, RHD4CZ9C071IRR2400 | Unskilled Labor [10.89 h]; Plumber [10.89 h]; Butterfly valves dia 500 - TSE [0.2 nr] | 7,927.6 | C071 | Z9 | CONS | IRR | Stem and Service box | bef |
|  | 8788 | **RHD4-02-002-Z9-C071-Medium Voltage Network - MV** |  | 2027-04-27 | 2027-06-17 |  |  |  |  |  |  |  |  |  |
|  | 8789 | **RHD4-02-002-C071-(MV)-Medium Voltage cable trench** |  | 2027-04-27 | 2027-06-17 |  |  |  |  |  |  |  |  |  |
| RHD4CZ9C071MV1100 |  | Excavation for Medium Voltage Trench - (RD-C-7/1)-Z9-C071-MV | 9d | 2027-04-27 | 2027-05-06 | RHD4ENSDZ9APPMV150, RHD4CZ9C071RD3100 | Skilled labor [97.14 h]; Unskilled Labor [194.4 h]; Equipment Opreator [291.53 h]; Excavator-Poclain [97.14 h]; Dump Truck [194.4 h]; Excavation for Trench size 40cm wide and 80cm deep ( for 1 cables) [288.39 m3]; Excavation for Trench size 60cm wide and 80cm deep ( for 2 cables) [199.3 m3]; Excavation for Trench size 120cm wide and 80cm deep (for 4 cables) [59.35 m3]; Excavation for Trench size 180cm wide and 80cm deep (for 6 cables) [77.56 m3] | 6,246.02 | C071 | Z9 | CONS | MV | Excavation | AFT |
| RHD4CZ9C071MV1200 |  | Trench Backfilling for Medium Voltage Network - (RD-C-7/1)-Z9-C071-MV | 9d | 2027-06-08 | 2027-06-17 | RHD4CZ9C071MV3300 | Skilled labor [97.14 h]; Unskilled Labor [97.14 h]; Equipment Opreator [194.4 h]; Dump Truck [194.4 h]; Excavation for Trench size 40cm wide and 80cm deep ( for 1 cables) [123.6 m3]; Excavation for Trench size 60cm wide and 80cm deep ( for 2 cables) [85.42 m3]; Excavation for Trench size 120cm wide and 80cm deep (for 4 cables) [25.44 m3]; Excavation for Trench size 180cm wide and 80cm deep (for 6 cables) [33.24 m3] | 2,676.91 | C071 | Z9 | CONS | MV | Backfilling | AFT |
|  | 8790 | **RHD4-02-002-C071-(MV)-Medium Voltage duct banks** |  | 2027-05-08 | 2027-05-31 |  |  |  |  |  |  |  |  |  |
| RHD4CZ9C071MV2100 |  | Excavation of Duct Banks for Medium Voltage Network - (RD-C-7/1)-Z9-C071-MV | 4d | 2027-05-08 | 2027-05-11 | RHD4ENSDZ9APPMV150, RHD4CZ9C071MV1100 | Unskilled Labor [37.35 h]; Equipment Opreator [74.71 h]; Excavator-Poclain [37.35 h]; Dump Truck [37.35 h]; Duct bank for MV cables UPVC (4xø150mm) [2.36 m]; Duct bank for MV cables UPVC (6xø150mm) [2.79 m] | 2,601.98 | C071 | Z9 | CONS | MV | Excavation | bef |
| RHD4CZ9C071MV2200 |  | Installation of Duct Banks for Medium Voltage Network - (RD-C-7/1)-Z9-C071-MV | 6d | 2027-05-12 | 2027-05-23 | RHD4PRSHLDOSMV1000, RHD4PRSHLSTAGMV1000, RHD4CZ9C071MV2100 | Unskilled Labor [56 h]; Equipment Opreator [112.06 h]; Excavator-Poclain [56 h]; Dump Truck [56 h]; Duct bank for MV cables UPVC (4xø150mm) [2.36 m]; Duct bank for MV cables UPVC (6xø150mm) [2.79 m] | 2,601.98 | C071 | Z9 | CONS | MV | Installing | bef |
| RHD4CZ9C071MV2300 |  | Pouring of Duct Banks for Medium Voltage Network - (RD-C-7/1)-Z9-C071-MV | 4d | 2027-05-24 | 2027-05-27 | RHD4CZ9C071MV2200 | Unskilled Labor [37.35 h]; Equipment Opreator [74.71 h]; Excavator-Poclain [37.35 h]; Dump Truck [37.35 h]; Duct bank for MV cables UPVC (4xø150mm) [15.31 m]; Duct bank for MV cables UPVC (6xø150mm) [18.12 m] | 16,912.9 | C071 | Z9 | CONS | MV | Pouring | bef |
| RHD4CZ9C071MV2400 |  | Backfilling of Duct Banks for Medium Voltage Network - (RD-C-7/1)-Z9-C071-MV | 3d | 2027-05-29 | 2027-05-31 | RHD4CZ9C071MV2300 | Unskilled Labor [28 h]; Equipment Opreator [56 h]; Excavator-Poclain [28 h]; Dump Truck [28 h]; Duct bank for MV cables UPVC (4xø150mm) [3.53 m]; Duct bank for MV cables UPVC (6xø150mm) [4.18 m] | 3,902.98 | C071 | Z9 | CONS | MV | Backfilling | bef |
|  | 8791 | **RHD4-02-002-C071-(MV)-Medium Voltage cables 3Cx 500 mm²** |  | 2027-05-08 | 2027-06-07 |  |  |  |  |  |  |  |  |  |
| RHD4CZ9C071MV3100 |  | Installation of Medium Voltage Cables 3Cx 500 mm² - (RD-C-7/1)-Z9-C071-MV | 15d | 2027-05-08 | 2027-05-29 | RHD4PRSHLDOSMV1100, RHD4ENMSMV2000, RHD4ENMSMV2010, RHD4PRSHLSTAGMV1100, RHD4CZ9C071MV1100 | Skilled labor [159.11 h]; Unskilled Labor [636.54 h]; Electrician [318.32 h]; Equipment Opreator [477.43 h]; Boom Truck [159.11 h]; Cable Laying Machine [318.32 h]; Cable 13.8 kV 3Cx 500 mm² Al/XLPE,/LLDPE / Unarmored [1972.8 m] | 313,675.2 | C071 | Z9 | CONS | MV | Installation | AFT |
| RHD4CZ9C071MV3200 |  | Joints Installation of Medium Voltage Cables 3Cx 500 mm² - (RD-C-7/1)-Z9-C071-MV | 3d | 2027-05-30 | 2027-06-01 | RHD4PRSHLDOSMV1300, RHD4PRSHLSTAGMV1300, RHD4CZ9C071MV3100 | Skilled labor [27.2 h]; Unskilled Labor [108.9 h]; Electrician [54.45 h]; Equipment Opreator [27.2 h]; Boom Truck [27.2 h]; Straight joints cables for 13.8 kv 3Cx 500 mm², Al /XLPE/LLDPE [5 Unit] | 16,240 | C071 | Z9 | CONS | MV | Joints Installation | AFT |
| RHD4CZ9C071MV3300 |  | Testing of Medium Voltage Cables 3Cx 500 mm² - (RD-C-7/1)-Z9-C071-MV | 5d | 2027-06-02 | 2027-06-07 | RHD4CZ9C071MV3200, RHD4CZ9C071MV2400 | Skilled labor [47.7 h]; Unskilled Labor [191.02 h]; Electrician [95.51 h]; Cable 13.8 kV 3Cx 500 mm² Al/XLPE,/LLDPE / Unarmored [219.2 m] | 34,852.8 | C071 | Z9 | CONS | MV | Testing | AFT |
|  | 8795 | **RHD4-02-002-Z9-C071-Low Voltage Network - LV** |  | 2027-06-07 | 2027-07-19 |  |  |  |  |  |  |  |  |  |
|  | 8796 | **RHD4-02-002-C071-(LV)-Low Voltage duct banks** |  | 2027-06-07 | 2027-06-15 |  |  |  |  |  |  |  |  |  |
| RHD4CZ9C071LV2100 |  | Excavation of Duct Banks for Low Voltage Network - (RD-C-7/1)-Z9-C071-LV | 2d | 2027-06-07 | 2027-06-08 | RHD4ENSDZ9APPLV160, RHD4CZ9C071PT4500, RHD4CZ9C071MV2100 | Skilled labor [13.83 h]; Unskilled Labor [13.83 h]; Equipment Opreator [27.55 h]; Excavator-Poclain [13.83 h]; Dump Truck [13.83 h]; Duct bank for LV cables UPVC (4xø110mm) [1.9 m] | 568.1 | C071 | Z9 | CONS | LV | Excavation | bef |
| RHD4CZ9C071LV2200 |  | Installation of Duct Banks for Low Voltage Network - (RD-C-7/1)-Z9-C071-LV | 2d | 2027-06-09 | 2027-06-10 | RHD4PRSHLDOSLV1000, RHD4PRSHLSTAGLV1000, RHD4CZ9C071LV2100 | Carpenter [2.07 h]; Skilled labor [20.69 h]; Unskilled Labor [20.69 h]; Steel Fixer [2.07 h]; Duct bank for LV cables UPVC (4xø110mm) [1.9 m] | 568.1 | C071 | Z9 | CONS | LV | Installing | bef |
| RHD4CZ9C071LV2300 |  | Pouring of Duct Banks for Low Voltage Network - (RD-C-7/1)-Z9-C071-LV | 2d | 2027-06-12 | 2027-06-13 | RHD4CZ9C071LV2200 | Skilled labor [13.83 h]; Unskilled Labor [13.83 h]; Equipment Opreator [5.55 h]; Concrete Mixer Truck [2.72 h]; Concrete Pump [2.72 h]; Duct bank for LV cables UPVC (4xø110mm) [12.34 m] | 3,689.66 | C071 | Z9 | CONS | LV | Pouring | bef |
| RHD4CZ9C071LV2400 |  | Backfilling of Duct Banks for Low Voltage Network - (RD-C-7/1)-Z9-C071-LV | 2d | 2027-06-14 | 2027-06-15 | RHD4CZ9C071LV2300 | Skilled labor [10.35 h]; Unskilled Labor [10.35 h]; Equipment Opreator [4.14 h]; Excavator-Poclain [4.14 h]; Duct bank for LV cables UPVC (4xø110mm) [2.85 m] | 852.15 | C071 | Z9 | CONS | LV | Backfilling | bef |
|  | 8797 | **RHD4-02-002-C071-(LV)-Low Voltage Drawpit** |  | 2027-06-19 | 2027-06-22 |  |  |  |  |  |  |  |  |  |
| RHD4CZ9C071LV5100 |  | Excavation of Drawpit size 900x900x1000mm for Low Voltage Network - (RD-C-7/1)-Z9-C071-LV | 2d | 2027-06-19 | 2027-06-20 | RHD4ENSDZ9APPLV160, RHD4CZ9C071LV2400, RHD4CZ9C071MV1200 | Skilled labor [3.59 h]; Unskilled Labor [3.59 h]; Equipment Opreator [2.94 h]; Excavator-Poclain [1.42 h]; Dump Truck [1.42 h]; Drawpit with medium duty steel cover, size900x900x1000mm, [0.6 Unit] | 2,206.2 | C071 | Z9 | CONS | LV | Excavation | AFT |
| RHD4CZ9C071LV5200 |  | Installation of Drawpit size 900x900x1000mm for Low Voltage Network - (RD-C-7/1)-Z9-C071-LV | 2d | 2027-06-21 | 2027-06-22 | RHD4PRSHLDOSLV1400, RHD4PRSHLSTAGLV1400, RHD4CZ9C071LV5100 | Skilled labor [3.59 h]; Unskilled Labor [3.59 h]; Equipment Opreator [1.42 h]; Boom Truck [1.42 h]; Drawpit with medium duty steel cover, size900x900x1000mm, [3.4 Unit] | 12,501.8 | C071 | Z9 | CONS | LV | Installation | AFT |

| ID | WBS | Activity | Duration | Start | Finish | Predecessors | Resources | Cost | RDH4-01-001-Road and Block Names-1 | RDH4-01-001-Zones-1 | RDH4-01-001-Phases-1 | RDH4-01-001-Networks-1 | RDH4-01-001-Work Method-1 | RDH4-01-001-MENEM |
| --- | --- | --- | --- | --- | --- | --- | --- | --- | --- | --- | --- | --- | --- | --- |
|  | 8798 | **RHD4-02-002-C071-(LV)-Low Voltage cables** |  | 2027-06-23 | 2027-07-19 |  |  |  |  |  |  |  |  |  |
| RHD4CZ9C071LV3100 |  | Excavation for Low Voltage Cables for Low Voltage Network - (RD-C-7/1)-Z9-C071-LV | 7d | 2027-06-23 | 2027-06-30 | RHD4ENSDZ9APPLV160, RHD4CZ9C071LV5200, RHD4CZ3L122ICT5200 | Skilled labor [66.87 h]; Unskilled Labor [133.6 h]; Equipment Opreator [133.6 h]; Excavator-Poclain [66.87 h]; Boom Truck [66.87 h]; Cable, Copper 4x70mm2/ CU/XLPE/PVC [63.12 m]; Cable, Copper 4x50mm2/ CU/XLPE/PVC +1x25mm2 CU/PVC [32.08 m]; Cable, Copper 3x10mm2/ CU/XLPE/SWA/PVC [211.6 m] | 22,865.67 | C071 | Z9 | CONS | LV | Excavation | AFT |
| RHD4CZ9C071LV3200 |  | Cable Laying of Low Voltage Cables for Low Voltage Network - (RD-C-7/1)-Z9-C071-LV | 6d | 2027-07-01 | 2027-07-07 | RHD4PRSHLDOSLV1100, RHD4ENMSLV2000, RHD4ENMSLV2010, RHD4PRSHLSTAGLV1100, RHD4CZ9C071LV3100 | Skilled labor [55.65 h]; Unskilled Labor [222.71 h]; Electrician [111.41 h]; Equipment Opreator [167.06 h]; Boom Truck [55.65 h]; Cable Laying Machine [111.41 h]; Cable, Copper 4x70mm2/ CU/XLPE/PVC [189.37 m]; Cable, Copper 4x50mm2/ CU/XLPE/PVC +1x25mm2 CU/PVC [96.23 m]; Cable, Copper 3x10mm2/ CU/XLPE/SWA/PVC [634.81 m] | 68,597.54 | C071 | Z9 | CONS | LV | Cable Laying | AFT |
| RHD4CZ9C071LV3300 |  | Warning tape and Backfill for Low Voltage Cables for Low Voltage Network - (RD-C-7/1)-Z9-C071-LV | 6d | 2027-07-08 | 2027-07-14 | RHD4CZ9C071LV3200 | Skilled labor [55.65 h]; Unskilled Labor [222.71 h]; Electrician [111.41 h]; Equipment Opreator [55.65 h]; Boom Truck [55.65 h]; Cable, Copper 4x70mm2/ CU/XLPE/PVC [47.34 m]; Cable, Copper 4x50mm2/ CU/XLPE/PVC +1x25mm2 CU/PVC [24.06 m]; Cable, Copper 3x10mm2/ CU/XLPE/SWA/PVC [158.7 m] | 17,149.26 | C071 | Z9 | CONS | LV | Warning tape and Backfill | AFT |
| RHD4CZ9C071LV3400 |  | Testing of Low Voltage Cables for Low Voltage Network - (RD-C-7/1)-Z9-C071-LV | 4d | 2027-07-15 | 2027-07-19 | RHD4CZ9C071LV3300 | Skilled labor [33.43 h]; Unskilled Labor [133.6 h]; Electrician [66.87 h]; Equipment Opreator [33.43 h]; Boom Truck [33.43 h]; Cable, Copper 4x70mm2/ CU/XLPE/PVC [15.78 m]; Cable, Copper 4x50mm2/ CU/XLPE/PVC +1x25mm2 CU/PVC [8.02 m]; Cable, Copper 3x10mm2/ CU/XLPE/SWA/PVC [52.9 m] | 5,716.42 | C071 | Z9 | CONS | LV | Testing | AFT |
|  | 8801 | **RHD4-02-002-Z9-C071-Street Lighting Network - SL** |  | 2027-10-14 | 2027-12-27 |  |  |  |  |  |  |  |  |  |
|  | 8802 | **RHD4-02-002-C071-(SL)-Street Lighting duct banks** |  | 2027-10-14 | 2027-11-07 |  |  |  |  |  |  |  |  |  |
| RHD4CZ9C071SL2100 |  | Excavation of Duct Banks for Street Lighting Network - (RD-C-7/1)-Z9-C071-SL | 5d | 2027-10-14 | 2027-10-19 | RHD4ENSDZ9APPSL170, RHD4CZ9C071LV2100, RHD4CTUN1Z5STG21490 | Skilled labor [47.59 h]; Unskilled Labor [47.59 h]; Equipment Opreator [95.2 h]; Excavator-Poclain [47.59 h]; Dump Truck [47.59 h]; Road Crossing Duct for Street Lighting cables UPVC (2x?110mm) [4.01 m]; Road Crossing Duct for Street Lighting cables UPVC (4x?110mm) [2.54 m] | 1,481.01 | C071 | Z9 | CONS | SL | Excavation | bef |
| RHD4CZ9C071SL2200 |  | Installation of Duct Banks for Street Lighting Network - (RD-C-7/1)-Z9-C071-SL | 7d | 2027-10-20 | 2027-10-27 | RHD4PRSHLDOSSL1000, RHD4PRSHLSTAGSL1000, RHD4CZ9C071SL2100 | Carpenter [7.2 h]; Skilled labor [71.33 h]; Unskilled Labor [71.33 h]; Steel Fixer [7.2 h]; Road Crossing Duct for Street Lighting cables UPVC (2x?110mm) [4.01 m]; Road Crossing Duct for Street Lighting cables UPVC (4x?110mm) [2.54 m] | 1,481.01 | C071 | Z9 | CONS | SL | Installing | bef |
| RHD4CZ9C071SL2300 |  | Pouring of Duct Banks for Street Lighting Network - (RD-C-7/1)-Z9-C071-SL | 5d | 2027-10-28 | 2027-11-02 | RHD4CZ9C071SL2200 | Skilled labor [47.59 h]; Unskilled Labor [47.59 h]; Equipment Opreator [19.06 h]; Concrete Mixer Truck [9.47 h]; Concrete Pump [9.47 h]; Road Crossing Duct for Street Lighting cables UPVC (2x?110mm) [26.08 m]; Road Crossing Duct for Street Lighting cables UPVC (4x?110mm) [16.51 m] | 9,626.53 | C071 | Z9 | CONS | SL | Pouring | bef |
| RHD4CZ9C071SL2400 |  | Backfilling of Duct Banks for Street Lighting Network - (RD-C-7/1)-Z9-C071-SL | 4d | 2027-11-03 | 2027-11-07 | RHD4CZ9C071SL2300 | Skilled labor [35.72 h]; Unskilled Labor [35.72 h]; Equipment Opreator [14.27 h]; Excavator-Poclain [14.27 h]; Road Crossing Duct for Street Lighting cables UPVC (2x?110mm) [6.02 m]; Road Crossing Duct for Street Lighting cables UPVC (4x?110mm) [3.81 m] | 2,221.51 | C071 | Z9 | CONS | SL | Backfilling | bef |
|  | 8803 | **RHD4-02-002-C071-(SL)-Street Lighting Drawpit** |  | 2027-11-03 | 2027-11-07 |  |  |  |  |  |  |  |  |  |
| RHD4CZ9C071SL5100 |  | Excavation of Drawpit size 600x600x900mm for Street Lighting Network - (RD-C-7/1)-Z9-C071-SL | 2d | 2027-11-03 | 2027-11-04 | RHD4ENSDZ9APPSL170, RHD4CZ9C071SL2300, RHD4CZ9C071LV3400 | Skilled labor [7.3 h]; Unskilled Labor [7.3 h]; Equipment Opreator [5.77 h]; Excavator-Poclain [2.94 h]; Dump Truck [2.94 h]; Drawpit with medium duty steel cover, size600x600x900mm, [1.2 Unit] | 2,941.2 | C071 | Z9 | CONS | SL | Excavation | AFT |
| RHD4CZ9C071SL5200 |  | Installation of Drawpit size 600x600x900mm for Street Lighting Network - (RD-C-7/1)-Z9-C071-SL | 2d | 2027-11-06 | 2027-11-07 | RHD4PRSHLDOSSL1400, RHD4PRSHLSTAGSL1400, RHD4CZ9C071SL5100 | Skilled labor [7.3 h]; Unskilled Labor [7.3 h]; Equipment Opreator [2.94 h]; Boom Truck [2.94 h]; Drawpit with medium duty steel cover, size600x600x900mm, [6.8 Unit] | 16,666.8 | C071 | Z9 | CONS | SL | Installation | AFT |
|  | 8804 | **RHD4-02-002-C071-(SL)-Street Lighting cables** |  | 2027-11-08 | 2027-12-04 |  |  |  |  |  |  |  |  |  |
| RHD4CZ9C071SL3100 |  | Excavation for Street Lighting Cables for Street Lighting Network - (RD-C-7/1)-Z9-C071-SL | 7d | 2027-11-08 | 2027-11-15 | RHD4ENSDZ9APPSL170, RHD4CZ9C071SL5200 | Skilled labor [65.34 h]; Unskilled Labor [130.79 h]; Equipment Opreator [130.79 h]; Excavator-Poclain [65.34 h]; Boom Truck [65.34 h]; Cable, Copper 4x16mm2/ CU/XLPE/SWA/PVC + 1x16mm2 CU/PVC [39.68 m]; Cable, Copper 4x10mm2/ CU/XLPE/SWA/PVC + 1x10mm2 CU/PVC [260.5 m] | 15,423 | C071 | Z9 | CONS | SL | Excavation | AFT |
| RHD4CZ9C071SL3200 |  | Cable Laying of Street Lighting Cables for Street Lighting Network - (RD-C-7/1)-Z9-C071-SL | 6d | 2027-11-16 | 2027-11-22 | RHD4PRSHLDOSSL1100, RHD4ENMSSL2000, RHD4ENMSSL2010, RHD4PRSHLSTAGSL1100, RHD4CZ9C071SL3100 | Skilled labor [54.45 h]; Unskilled Labor [217.92 h]; Electrician [109.01 h]; Equipment Opreator [163.46 h]; Boom Truck [54.45 h]; Cable Laying Machine [109.01 h]; Cable, Copper 4x16mm2/ CU/XLPE/SWA/PVC + 1x16mm2 CU/PVC [119.04 m]; Cable, Copper 4x10mm2/ CU/XLPE/SWA/PVC + 1x10mm2 CU/PVC [781.5 m] | 46,268.99 | C071 | Z9 | CONS | SL | Cable Laying | AFT |
| RHD4CZ9C071SL3300 |  | Warning tape and Backfill for Street Lighting Cables for Street Lighting Network - (RD-C-7/1)-Z9-C071-SL | 6d | 2027-11-23 | 2027-11-29 | RHD4CZ9C071SL3200 | Skilled labor [54.45 h]; Unskilled Labor [217.92 h]; Electrician [109.01 h]; Equipment Opreator [54.45 h]; Boom Truck [54.45 h]; Cable, Copper 4x16mm2/ CU/XLPE/SWA/PVC + 1x16mm2 CU/PVC [29.76 m]; Cable, Copper 4x10mm2/ CU/XLPE/SWA/PVC + 1x10mm2 CU/PVC [195.38 m] | 11,567.26 | C071 | Z9 | CONS | SL | Warning tape and Backfill | AFT |
| RHD4CZ9C071SL3400 |  | Testing of Street Lighting Cables for Street Lighting Network - (RD-C-7/1)-Z9-C071-SL | 4d | 2027-11-30 | 2027-12-04 | RHD4CZ9C071SL3300 | Skilled labor [32.67 h]; Unskilled Labor [130.79 h]; Electrician [65.34 h]; Equipment Opreator [32.67 h]; Boom Truck [32.67 h]; Cable, Copper 4x16mm2/ CU/XLPE/SWA/PVC + 1x16mm2 CU/PVC [9.92 m]; Cable, Copper 4x10mm2/ CU/XLPE/SWA/PVC + 1x10mm2 CU/PVC [65.13 m] | 3,855.75 | C071 | Z9 | CONS | SL | Testing | AFT |
|  | 8805 | **RHD4-02-002-C071-(SL)-Street Lighting Poles** |  | 2027-12-05 | 2027-12-25 |  |  |  |  |  |  |  |  |  |
| RHD4CZ9C071SL1100 |  | Excavation for RC Base for Lighting Poles for Street Lighting Network - (RD-C-7/1)-Z9-C071-SL | 3d | 2027-12-05 | 2027-12-07 | RHD4ENSDZ9APPSL170, RHD4CZ9C071SL3400, RHD4CZ9C071SL2400 | Skilled labor [22.54 h]; Unskilled Labor [22.54 h]; Equipment Opreator [44.98 h]; Excavator-Poclain [22.54 h]; Dump Truck [22.54 h]; Lighting polesdouble arms, height of ( 12 ) meters [3.1 Unit] | 14,173.2 | C071 | Z9 | CONS | SL | Excavation | AFT |
| RHD4CZ9C071SL1200 |  | Installation for RC Base for Lighting Poles for Street Lighting Network - (RD-C-7/1)-Z9-C071-SL | 3d | 2027-12-08 | 2027-12-11 | RHD4CZ9C071SL1100 | Skilled labor [22.54 h]; Unskilled Labor [22.54 h]; Equipment Opreator [44.98 h]; Excavator-Poclain [22.54 h]; Dump Truck [22.54 h]; Lighting polesdouble arms, height of ( 12 ) meters [7.75 Unit] | 35,433 | C071 | Z9 | CONS | SL | RC Base | AFT |
| RHD4CZ9C071SL1300 |  | Backfill for RC Base for Lighting Poles for Street Lighting Network - (RD-C-7/1)-Z9-C071-SL | 3d | 2027-12-12 | 2027-12-14 | RHD4CZ9C071SL1200 | Skilled labor [22.54 h]; Unskilled Labor [22.54 h]; Equipment Opreator [44.98 h]; Excavator-Poclain [22.54 h]; Dump Truck [22.54 h]; Lighting polesdouble arms, height of ( 12 ) meters [1.55 Unit] | 7,086.6 | C071 | Z9 | CONS | SL | Backfill | AFT |
| RHD4CZ9C071SL1400 |  | Installation for Lighting Poles for Street Lighting Network - (RD-C-7/1)-Z9-C071-SL | 4d | 2027-12-15 | 2027-12-19 | RHD4PRSHLDOSSL1200, RHD4ENMSSL2000, RHD4ENMSSL2010, RHD4PRSHLSTAGSL1200, RHD4CZ9C071SL1300 | Skilled labor [33.76 h]; Unskilled Labor [33.76 h]; Electrician [33.76 h]; Equipment Opreator [33.76 h]; Boom Truck [33.76 h]; Lighting polesdouble arms, height of ( 12 ) meters [18.6 Unit] | 85,039.2 | C071 | Z9 | CONS | SL | Poles Installation | AFT |
| RHD4CZ9C071SL1500 |  | Luminaire Installation for Lighting Poles for Street Lighting Network - (RD-C-7/1)-Z9-C071-SL | 5d | 2027-12-20 | 2027-12-25 | RHD4PRSHLDOSSL1300, RHD4PRSHLSTAGSL1300, RHD4CZ9C071SL1400 | Unskilled Labor [90.06 h]; Electrician [44.98 h]; Equipment Opreator [17.97 h]; Boom Truck [17.97 h]; Street Lighting( LED) Luminaire of Output ?18553 lumen [62 Unit] | 39,494 | C071 | Z9 | CONS | SL | Luminaire Installation | AFT |

| ID | WBS | Activity | Duration | Start | Finish | Predecessors | Resources | Cost | RDH4-01-001-Road and Block Names-1 | RDH4-01-001-Zones-1 | RDH4-01-001-Phases-1 | RDH4-01-001-Networks-1 | RDH4-01-001-Work Method-1 | RDH4-01-001-MENEM |
| --- | --- | --- | --- | --- | --- | --- | --- | --- | --- | --- | --- | --- | --- | --- |
|  | 8806 | **RHD4-02-002-C071-(SL)-Street Lighting Feeder Pillars** |  |  |  |  |  |  |  |  |  |  |  |  |
|  | 8807 | **RHD4-02-002-C071-(SL)-Street Lighting Earthing System** |  | 2027-12-26 | 2027-12-27 |  |  |  |  |  |  |  |  |  |
| RHD4CZ9C071SL6100 |  | Installation of Earthing for Lighting Poles and Fedder Pillers for Street Lighting Network - (RD-C-7/1)-Z9-C071-SL | 2d | 2027-12-26 | 2027-12-27 | RHD4ENMSER2000, RHD4ENMSER2010, RHD4CZ9C071SL1500, RHD4CZ3L122LV5200 | Skilled labor [2.18 h]; Unskilled Labor [2.18 h]; Equipment Opreator [4.36 h]; Excavator-Poclain [2.18 h]; Dump Truck [2.18 h]; Street Lighting Feeder pillars - ER [1 Unit]; Including lighting poles circuits - ER [2 Unit] | 2,354 | C071 | Z9 | CONS | SL | Installation | AFT |
|  | 8813 | **RHD4-02-002-Z9-C071-Telecommunications Network - TC** |  | 2027-02-20 | 2028-04-26 |  |  |  |  |  |  |  |  |  |
|  | 8814 | **RHD4-02-002-C071-(TC)-Telecommunications Ducts** |  | 2027-12-28 | 2028-03-09 |  |  |  |  |  |  |  |  |  |
| RHD4CZ9C071TC2100 |  | Excavation of HDPE Ducts for Telecom Network - (RD-C-7/1)-Z9-C071-TC | 14d | 2027-12-28 | 2028-01-12 | RHD4ENSDZ9APPTC190, RHD4CZ9C071SL6100 | Skilled labor [150.61 h]; Unskilled Labor [150.61 h]; Equipment Opreator [301.12 h]; Excavator-Poclain [150.61 h]; Dump Truck [150.61 h]; (6*50mm) HDPE ducts -TC [381.18 m]; (6*50mm+2*32mm) HDPE ducts -TC [27 m]; (2*32mm) HDPE ducts -TC [6.62 m] | 36,711.92 | C071 | Z9 | CONS | TC | Excavation | AFT |
| RHD4CZ9C071TC2200 |  | Installation of HDPE Ducts for Telecom Network - (RD-C-7/1)-Z9-C071-TC | 21d | 2028-01-25 | 2028-02-17 | RHD4PRSHLDOSTC1000, RHD4PRSHLSTAGTC1000, RHD4CZ9C071TC2100, RHD4CZ6A015RD7100 | Carpenter [22.54 h]; Skilled labor [225.87 h]; Unskilled Labor [225.87 h]; Steel Fixer [22.54 h]; (6*50mm) HDPE ducts -TC [1238.84 m]; (6*50mm+2*32mm) HDPE ducts -TC [87.75 m]; (2*32mm) HDPE ducts -TC [21.52 m] | 119,313.91 | C071 | Z9 | CONS | TC | Installing | AFT |
| RHD4CZ9C071TC2400 |  | Backfilling of HDPE Ducts for Telecom Network - (RD-C-7/1)-Z9-C071-TC | 14d | 2028-02-19 | 2028-03-09 | RHD4CZ9C071TC2200 | Skilled labor [150.61 h]; Unskilled Labor [150.61 h]; Equipment Opreator [60.22 h]; Excavator-Poclain [60.22 h]; (6*50mm) HDPE ducts -TC [285.88 m]; (6*50mm+2*32mm) HDPE ducts -TC [20.25 m]; (2*32mm) HDPE ducts -TC [4.97 m] | 27,534.11 | C071 | Z9 | CONS | TC | Backfilling | AFT |
|  | 8815 | **RHD4-02-002-C071-(TC)-Telecommunications Manholes** |  | 2028-04-04 | 2028-04-26 |  |  |  |  |  |  |  |  |  |
| RHD4CZ9C071TC5100 |  | Excavation for Manholes for Telecom Network - (RD-C-7/1)-Z9-C071-TC | 10d | 2028-04-04 | 2028-04-15 | RHD4ENSDZ9APPTC190, RHD4CZ9C071TC2400, RHD4CZ3C011SL6100, RHD4CZ1C081RD7100, RHD4CZ7C032RD7100, RHD4CZ7C032RD8100, RHD4CZ4L09RD7100, RHD4CZ5RA07RD9200 | Skilled labor [43.56 h]; Unskilled Labor [43.56 h]; Equipment Opreator [34.85 h]; Excavator-Poclain [17.42 h]; Dump Truck [17.42 h]; Manhole Type 1 - TC [0.9 nr]; Manhole Type 2 - TC [1.95 nr] | 19,211.85 | C071 | Z9 | CONS | TC | Excavation | AFT |
| RHD4CZ9C071TC5200 |  | Installation of Manholes for Telecom Network - (RD-C-7/1)-Z9-C071-TC | 10d | 2028-04-16 | 2028-04-26 | RHD4PRSHLDOSTC1200, RHD4PRSHLSTAGTC1200, RHD4CZ9C071TC5100, RHD4CZ3C011SL1500 | Skilled labor [43.56 h]; Unskilled Labor [43.56 h]; Equipment Opreator [17.42 h]; Boom Truck [17.42 h]; Manhole Type 1 - TC [5.1 nr]; Manhole Type 2 - TC [11.05 nr] | 108,867.15 | C071 | Z9 | CONS | TC | Installation | AFT |
|  | 8816 | **RHD4-02-002-C071-(TC)-Telecomminications Road Crossings** |  | 2027-02-20 | 2027-03-25 |  |  |  |  |  |  |  |  |  |
| RHD4CZ9C071TC3100 |  | Excavation for Road Crossings for Telecom Network - (RD-C-7/1)-Z9-C071-TC | 5d | 2027-02-20 | 2027-02-25 | RHD4ENSDZ9APPTC190, RHD4PRSHLDOSICT1000 | Skilled labor [87.12 h]; Unskilled Labor [87.12 h]; Equipment Opreator [174.25 h]; Excavator-Poclain [87.12 h]; Dump Truck [87.12 h]; Road crossing ducts, (6*50mm) HDPE -TC [16 m] | 608 | C071 | Z9 | CONS | TC | Excavation | bef |
| RHD4CZ9C071TC3200 |  | Installation of Road Crossings for Telecom Network - (RD-C-7/1)-Z9-C071-TC | 7d | 2027-02-27 | 2027-03-06 | RHD4PRSHLDOSTC1100, RHD4PRSHLSTAGTC1100, RHD4CZ9C071TC3100 | Carpenter [11.65 h]; Skilled labor [116.2 h]; Unskilled Labor [116.2 h]; Steel Fixer [11.65 h]; Road crossing ducts, (6*50mm) HDPE -TC [16 m] | 608 | C071 | Z9 | CONS | TC | Installing | bef |
| RHD4CZ9C071TC3300 |  | Pouring of Road Crossings for Telecom Network - (RD-C-7/1)-Z9-C071-TC | 7d | 2027-03-07 | 2027-03-17 | RHD4CZ9C071TC3200 | Skilled labor [116.2 h]; Unskilled Labor [116.2 h]; Equipment Opreator [46.5 h]; Concrete Mixer Truck [23.2 h]; Concrete Pump [23.2 h]; Road crossing ducts, (6*50mm) HDPE -TC [104 m] | 3,952 | C071 | Z9 | CONS | TC | Pouring | bef |
| RHD4CZ9C071TC3400 |  | Backfilling of Road Crossings for Telecom Network - (RD-C-7/1)-Z9-C071-TC | 7d | 2027-03-18 | 2027-03-25 | RHD4CZ9C071TC3300 | Skilled labor [87.12 h]; Unskilled Labor [87.12 h]; Equipment Opreator [34.85 h]; Excavator-Poclain [34.85 h]; Road crossing ducts, (6*50mm) HDPE -TC [24 m] | 912 | C071 | Z9 | CONS | TC | Backfilling | bef |
|  | 8817 | **RHD4-02-002-Z9-C071-Information and Communication Technologies - ICT** |  | 2027-02-20 | 2028-07-17 |  |  |  |  |  |  |  |  |  |
|  | 8818 | **RHD4-02-002-C071-(ICT)-Information and Communication Technologies Ducts** |  | 2028-04-27 | 2028-06-26 |  |  |  |  |  |  |  |  |  |
| RHD4CZ9C071ICT2100 |  | Excavation of HDPE Ducts for ICT Network - (RD-C-7/1)-Z9-C071-ICT | 14d | 2028-04-27 | 2028-05-16 | RHD4ENSDZ9APPICT200, RHD4CZ9C071TC5200, RHD4GNLVZ7FT1500, RHD4CZ7L03CCTV1500 | Skilled labor [148.65 h]; Unskilled Labor [148.65 h]; Equipment Opreator [297.31 h]; Excavator-Poclain [148.65 h]; Dump Truck [148.65 h]; (2*50mm) HDPE ducts -ICT [394.2 m]; (2*50mm+2*32mm) HDPE ducts -ICT [15.26 m] | 16,078.32 | C071 | Z9 | CONS | ICT | Excavation | AFT |
| RHD4CZ9C071ICT2200 |  | Installation of HDPE Ducts for ICT Network - (RD-C-7/1)-Z9-C071-ICT | 21d | 2028-05-17 | 2028-06-10 | RHD4PRSHLDOSICT1000, RHD4PRSHLSTAGICT1000, RHD4CZ9C071ICT2100 | Carpenter [22.33 h]; Skilled labor [222.93 h]; Unskilled Labor [222.93 h]; Steel Fixer [22.33 h]; (2*50mm) HDPE ducts -ICT [1281.15 m]; (2*50mm+2*32mm) HDPE ducts -ICT [49.6 m] | 52,254.9 | C071 | Z9 | CONS | ICT | Installing | AFT |
| RHD4CZ9C071ICT2400 |  | Backfilling of HDPE Ducts for ICT Network - (RD-C-7/1)-Z9-C071-ICT | 14d | 2028-06-11 | 2028-06-26 | RHD4CZ9C071ICT2200 | Skilled labor [148.65 h]; Unskilled Labor [148.65 h]; Equipment Opreator [59.46 h]; Excavator-Poclain [59.46 h]; (2*50mm) HDPE ducts -ICT [295.65 m]; (2*50mm+2*32mm) HDPE ducts -ICT [11.45 m] | 12,058.74 | C071 | Z9 | CONS | ICT | Backfilling | AFT |
|  | 8819 | **RHD4-02-002-C071-(ICT)-Information and Communication Technologies Manholes** |  | 2028-06-27 | 2028-07-17 |  |  |  |  |  |  |  |  |  |
| RHD4CZ9C071ICT5100 |  | Excavation for Manholes for ICT Network - (RD-C-7/1)-Z9-C071-ICT | 9d | 2028-06-27 | 2028-07-06 | RHD4ENSDZ9APPICT200, RHD4CZ9C071ICT2400 | Skilled labor [35.39 h]; Unskilled Labor [35.39 h]; Equipment Opreator [28.31 h]; Excavator-Poclain [14.16 h]; Dump Truck [14.16 h]; Manhole Type 1 - ICT [3.5 nr]; Manhole Type 2 - ICT [1.2 nr] | 25,347.1 | C071 | Z9 | CONS | ICT | Excavation | AFT |
| RHD4CZ9C071ICT5200 |  | Installation of Manholes for ICT Network - (RD-C-7/1)-Z9-C071-ICT | 9d | 2028-07-08 | 2028-07-17 | RHD4PRSHLDOSICT1200, RHD4PRSHLSTAGICT1200, RHD4CZ9C071ICT5100, RHD4CZ8A011RD8100 | Skilled labor [35.39 h]; Unskilled Labor [35.39 h]; Equipment Opreator [14.16 h]; Boom Truck [14.16 h]; Manhole Type 1 - ICT [10.5 nr]; Manhole Type 2 - ICT [6.8 nr] | 93,298.9 | C071 | Z9 | CONS | ICT | Installation | AFT |

| ID | WBS | Activity | Duration | Start | Finish | Predecessors | Resources | Cost | RDH4-01-001-Road and Block Names-1 | RDH4-01-001-Zones-1 | RDH4-01-001-Phases-1 | RDH4-01-001-Networks-1 | RDH4-01-001-Work Method-1 | RDH4-01-001-MENEM |
| --- | --- | --- | --- | --- | --- | --- | --- | --- | --- | --- | --- | --- | --- | --- |
|  | 8820 | **RHD4-02-002-C071-(ICT)-Information and Communication Technologies Road Crossings** |  | 2027-02-20 | 2027-03-16 |  |  |  |  |  |  |  |  |  |
| RHD4CZ9C071ICT3100 |  | Excavation for Road Crossings for ICT Network - (RD-C-7/1)-Z9-C071-ICT | 4d | 2027-02-20 | 2027-02-24 | RHD4ENSDZ9APPICT200, RHD4PRSHLDOSICT1000 | Skilled labor [37.79 h]; Unskilled Labor [37.79 h]; Equipment Opreator [75.47 h]; Excavator-Poclain [37.79 h]; Dump Truck [37.79 h]; Road crossing ducts, (2*50mm) HDPE -ICT [6.93 m] | 263.34 | C071 | Z9 | CONS | ICT | Excavation | bef |
| RHD4CZ9C071ICT3200 |  | Installation of Road Crossings for ICT Network - (RD-C-7/1)-Z9-C071-ICT | 5d | 2027-02-25 | 2027-03-02 | RHD4PRSHLDOSICT1100, RHD4PRSHLSTAGICT1100, RHD4CZ9C071ICT3100 | Carpenter [5.01 h]; Skilled labor [50.31 h]; Unskilled Labor [50.31 h]; Steel Fixer [5.01 h]; Road crossing ducts, (2*50mm) HDPE -ICT [6.93 m] | 263.34 | C071 | Z9 | CONS | ICT | Installing | bef |
| RHD4CZ9C071ICT3300 |  | Pouring of Road Crossings for ICT Network - (RD-C-7/1)-Z9-C071-ICT | 5d | 2027-03-03 | 2027-03-08 | RHD4CZ9C071ICT3200 | Skilled labor [50.31 h]; Unskilled Labor [50.31 h]; Equipment Opreator [20.15 h]; Concrete Mixer Truck [10.02 h]; Concrete Pump [10.02 h]; Road crossing ducts, (2*50mm) HDPE -ICT [45.05 m] | 1,711.71 | C071 | Z9 | CONS | ICT | Pouring | bef |
| RHD4CZ9C071ICT3400 |  | Backfilling of Road Crossings for ICT Network - (RD-C-7/1)-Z9-C071-ICT | 4d | 2027-03-13 | 2027-03-16 | RHD4CZ9C071ICT3300 | Skilled labor [37.79 h]; Unskilled Labor [37.79 h]; Equipment Opreator [15.14 h]; Excavator-Poclain [15.14 h]; Road crossing ducts, (2*50mm) HDPE -ICT [10.4 m] | 395.2 | C071 | Z9 | CONS | ICT | Backfilling | bef |
|  | 8808 | **RHD4-02-002-Z9-C071-Landscape Network - LS** |  |  |  |  |  |  |  |  |  |  |  |  |
|  | 8809 | **RHD4-02-002-C071-(LS)-Landscape Lighting cables** |  |  |  |  |  |  |  |  |  |  |  |  |
|  | 8811 | **RHD4-02-002-C071-(LS)-Landscape Bollard Poles** |  |  |  |  |  |  |  |  |  |  |  |  |
|  | 8821 | **RHD4-02-002-Z9-C071-Security Network - CCTV** |  | 2028-07-08 | 2028-08-07 |  |  |  |  |  |  |  |  |  |
|  | 8822 | **RHD4-02-002-C071-(CCTV)-Civil Works** |  | 2028-07-08 | 2028-07-12 |  |  |  |  |  |  |  |  |  |
| RHD4CZ9C071CCTV2100 |  | Civil Works for Security Network - (RD-C-7/1)-Z9-C071-CCTV | 5d | 2028-07-08 | 2028-07-12 | RHD4CZ9C071ICT5200 SS, RHD4CZ8RA04RD9100 | Skilled labor [217.76 h]; Unskilled Labor [435.68 h]; Equipment Opreator [217.76 h]; Excavator-Poclain [54.45 h]; Dump Truck [54.45 h]; Civil works Digging, trenching, laying pipes Meter with supply and installation of Manholes and for power feeding sources related to all towers and poles – (from 35-meter pole to control room and from related UPS camersa distribution boards till overall 2 [150 m] | 17,400 | C071 | Z9 | CONS | CCTV | Civil Works | AFT |
|  | 8823 | **RHD4-02-002-C071-(CCTV)-CCTV Poles** |  | 2028-07-13 | 2028-07-24 |  |  |  |  |  |  |  |  |  |
| RHD4CZ9C071CCTV1100 |  | Excavation for RC Base for CCTV Poles for Security Network - (RD-C-7/1)-Z9-C071-CCTV | 2d | 2028-07-13 | 2028-07-15 | RHD4ENSDZ9APPCCTV210, RHD4CZ9C071CCTV2100, RHD4HOASZ9APPLV160 | Skilled labor [4.32 h]; Unskilled Labor [4.32 h]; Equipment Opreator [8.64 h]; Excavator-Poclain [2.18 h]; Dump Truck [2.18 h]; 25 Meters pole for CCTV Cameras [0.1 nr] | 14,090.2 | C071 | Z9 | CONS | CCTV | Excavation | AFT |
| RHD4CZ9C071CCTV1200 |  | Installation for RC Base for CCTV Poles for Security Network - (RD-C-7/1)-Z9-C071-CCTV | 2d | 2028-07-16 | 2028-07-17 | RHD4CZ9C071CCTV1100 | Skilled labor [4.32 h]; Unskilled Labor [4.32 h]; Equipment Opreator [8.64 h]; Excavator-Poclain [2.18 h]; Dump Truck [2.18 h]; 25 Meters pole for CCTV Cameras [0.25 nr] | 35,225.5 | C071 | Z9 | CONS | CCTV | RC Base | AFT |
| RHD4CZ9C071CCTV1300 |  | Backfill for RC Base for CCTV Poles for Security Network - (RD-C-7/1)-Z9-C071-CCTV | 2d | 2028-07-18 | 2028-07-19 | RHD4CZ9C071CCTV1200 | Skilled labor [2.88 h]; Unskilled Labor [2.88 h]; Equipment Opreator [5.44 h]; Excavator-Poclain [1.42 h]; Dump Truck [1.42 h]; 25 Meters pole for CCTV Cameras [0.05 nr] | 7,045.1 | C071 | Z9 | CONS | CCTV | Backfill | AFT |
| RHD4CZ9C071CCTV1400 |  | Installation for CCTV Poles for Security Network - (RD-C-7/1)-Z9-C071-CCTV | 2d | 2028-07-20 | 2028-07-22 | RHD4PRSHLDOSCCTV1000, RHD4PRSHLSTACCTV1000, RHD4CZ9C071CCTV1300 | Skilled labor [7.2 h]; Unskilled Labor [14.56 h]; Electrician [7.2 h]; Equipment Opreator [7.2 h]; Boom Truck [3.59 h]; 25 Meters pole for CCTV Cameras [0.6 nr] | 84,541.2 | C071 | Z9 | CONS | CCTV | Installation | AFT |
| RHD4CZ9C071CCTV1500 |  | Protection post Installation for CCTV Poles for Security Network - (RD-C-7/1)-Z9-C071-CCTV | 2d | 2028-07-23 | 2028-07-24 | RHD4CZ9C071CCTV1400 | Skilled labor [10.88 h]; Unskilled Labor [21.76 h]; Supply and Installation of minimum 4 Protection Post for each pole or tower with pipe ?220*6mm THK. [1 nr] | 4,903 | C071 | Z9 | CONS | CCTV | Protection post | AFT |
|  | 8824 | **RHD4-02-002-C071-(CCTV)-Camera** |  | 2028-07-25 | 2028-07-26 |  |  |  |  |  |  |  |  |  |
| RHD4CZ9C071CCTV3100 |  | Installation for Cameras for Security Network - (RD-C-7/1)-Z9-C071-CCTV | 2d | 2028-07-25 | 2028-07-26 | RHD4PRSHLDOSCCTV1100, RHD4PRSHLSTACCTV1100, RHD4CZ9C071CCTV1500 | Unskilled Labor [54.4 h]; Electrician [27.2 h]; Outdoor Camera, 5MP resolution, day/night, fixed bullet camera providing Forensic WDR. [4 nr]; Outdoor PTZ with IR, HDTV 1080 and 31x optical, 12x digital, total 372x zoom, H264/265 with Motion JPEG. [1 nr] | 61,727 | C071 | Z9 | CONS | CCTV | Installation | AFT |
|  | 8825 | **RHD4-02-002-C071-(CCTV)-Power and Infrastructure** |  | 2028-07-27 | 2028-07-29 |  |  |  |  |  |  |  |  |  |
| RHD4CZ9C071CCTV4100 |  | Installation of Power outlet, UPS and midspan for PTZ Camerafor Cameras for Security Network - (RD-C-7/1)-Z9-C071-CCTV | 2d | 2028-07-27 | 2028-07-29 | RHD4PRSHLDOSCCTV1300, RHD4PRSHLSTACCTV1300, RHD4CZ9C071CCTV3100 | Skilled labor [8.64 h]; Unskilled Labor [34.88 h]; Electrician [17.44 h]; Equipment Opreator [17.44 h]; Excavator-Poclain [4.36 h]; Dump Truck [4.36 h]; Outdoor ready IP66-rated midspan for PTZ Camera (The outdoor- ready midspan should be IP66/IP67- and NEMA 4X-rated [1 nr]; 1.2KVA Industrial type UPS located at FEC remote poles [1 nr] | 9,103 | C071 | Z9 | CONS | CCTV | Power | AFT |
|  | 8827 | **RHD4-02-002-C071-(CCTV)-CCTV Panels and Components** |  | 2028-07-30 | 2028-08-07 |  |  |  |  |  |  |  |  |  |
| RHD4CZ9C071CCTV6100 |  | Installation for CCTV Panels for Security Network - (RD-C-7/1)-Z9-C071-CCTV | 8d | 2028-07-30 | 2028-08-07 | RHD4PRSHLDOSCCTV1200, RHD4PRSHLSTACCTV1200, RHD4PRLOLSTACCTV1001, RHD4CZ9C071CCTV4100 | Skilled labor [174.24 h]; Unskilled Labor [522.72 h]; Electrician [174.24 h]; Pole mounted Filed Equipment cabinet (FEC) , with fan and ventilation, NEMEX 4X ,door, minimum size (600x600x400mm) , the cabinet/enclosurE [1 nr]; 8 Port Industrial PoE Switch 10/1000BaseT (-40 deg to +70 deg. Celsius) for remote poles and as specifiedin item 15. [1 nr]; UTP CAT6 Patch Cord , connect the industrial switch with the cameras, and radio wireless antenna [6 nr] | 21,585 | C071 | Z9 | CONS | CCTV | Equipment | AFT |
|  | 8838 | **RHD4-02-002-Z9-L05** |  | 2026-08-29 | 2027-09-25 |  |  |  |  |  |  |  |  |  |
|  | 8869 | **RHD4-02-002-Z9-L05-Crossings Sewage Network - SWCr** |  |  |  |  |  |  |  |  |  |  |  |  |
|  | 8874 | **RHD4-02-002-L05-(SWCr)-GRP Pipes - 700 mm diameter** |  |  |  |  |  |  |  |  |  |  |  |  |
|  | 8881 | **RHD4-02-002-L05-(SWCr)-MH Works - 1500 mm diameter** |  |  |  |  |  |  |  |  |  |  |  |  |
|  | 8913 | **RHD4-02-002-Z9-L05-Crossings Potable Network - PTCr** |  |  |  |  |  |  |  |  |  |  |  |  |
|  | 8915 | **RHD4-02-002-L05-(PTCr)-HDPE Pipes - 160 mm diameter** |  |  |  |  |  |  |  |  |  |  |  |  |
|  | 8919 | **RHD4-02-002-L05-(PTCr)-Gate Valves (Direct Buried)** |  |  |  |  |  |  |  |  |  |  |  |  |
|  | 8960 | **RHD4-02-002-Z9-L05-Crossings Irrigation Network - IRRC** |  |  |  |  |  |  |  |  |  |  |  |  |
|  | 8968 | **RHD4-02-002-L05-(IRRC)-HDPE Pipes - 500 mm diameter** |  |  |  |  |  |  |  |  |  |  |  |  |
|  | 8970 | **RHD4-02-002-L05-(IRRC)-Butterfly Valve Chamber** |  |  |  |  |  |  |  |  |  |  |  |  |
|  | 8971 | **RHD4-02-002-L05-(IRRC)-Butterfly Valves** |  |  |  |  |  |  |  |  |  |  |  |  |
|  | 9017 | **RHD4-02-002-Z9-L05-Road Works - RD** |  | 2027-02-08 | 2027-09-25 |  |  |  |  |  |  |  |  |  |
|  | 9018 | **RHD4-02-002-L05-(RD)-Subgrade** |  | 2027-02-08 | 2027-02-09 |  |  |  |  |  |  |  |  |  |
| RHD4CZ9L05RD1100 |  | Supply, lay and compaction subgrade compacted thickness 300 mm for Roads - (RD-L-5)-Z9-L05-RD | 2d | 2027-02-08 | 2027-02-09 | RHD4ENSDZ9APPEW100, RHD4ENSDZ9APPRD220, RHD4CZ9L05ST7500 | Skilled labor [19.6 h]; Unskilled Labor [39.2 h]; Electrician [19.6 h]; Equipment Opreator [134.06 h]; Water Truck [6.4 h]; Roller compactor [9.8 h]; Grader [19.6 h]; Dump Truck [98.12 h]; Subgrade [943.75 m3] | 17,931.25 | L05 | Z9 | CONS | RD | Subgrade | bef |

| ID | WBS | Activity | Duration | Start | Finish | Predecessors | Complete | Remaining | Planned start | Planned finish | Resources | Cost | Actual cost | RDH4-01-001-Road and Block Names-1 | RDH4-01-001-Zones-1 | RDH4-01-001-Phases-1 | RDH4-01-001-Networks-1 | RDH4-01-001-Work Method-1 | RDH4-01-001-MENEM |
| --- | --- | --- | --- | --- | --- | --- | --- | --- | --- | --- | --- | --- | --- | --- | --- | --- | --- | --- | --- |
|  | 9019 | **RHD4-02-002-L05-(RD)-Aggregate Base Course** |  | 2027-02-10 | 2027-02-11 |  |  |  |  |  |  |  |  |  |  |  |  |  |  |
| RHD4CZ9L05RD2100 |  | Supply, lay and compaction Aggregate base course compacted thickness 300 mmfor Roads - (RD-L-5)-Z9-L05-RD | 2d | 2027-02-10 | 2027-02-11 | RHD4PRSHLDOSRD1000, RHD4PRSHLSTAGRD1000, RHD4CZ9L05RD1100 |  |  |  |  | Skilled labor [7.3 h]; Unskilled Labor [14.48 h]; Equipment Opreator [92 h]; Water Truck [4.8 h]; Roller compactor [14.48 h]; Grader [14.48 h]; Dump Truck [58.15 h]; Aggregate Base Courses [592.77 m3] | 33,787.89 |  | L05 | Z9 | CONS | RD | ABC | bef |
|  | 9020 | **RHD4-02-002-L05-(RD)-Bituminous base course Two Layers, including (MC1)&(RC2)** |  | 2027-02-13 | 2027-08-29 |  |  |  |  |  |  |  |  |  |  |  |  |  |  |
| RHD4CZ9L05RD3100 |  | Supply, lay and Asphaltic base course including Prime Coat (MC1) for 1st Layer - (RD-L-5)-Z9-L05-RD | 2d | 2027-02-13 | 2027-02-14 | RHD4PRSHLDOSRD1100, RHD4ENMSASPH2000, RHD4ENMSASPH2010, RHD4PRSHLSTAGRD1100, RHD4CZ9L05RD2100 |  |  |  |  | Skilled labor [2.61 h]; Unskilled Labor [15.36 h]; Equipment Opreator [38.44 h]; Bobcat [2.61 h]; Roller compactor [2.61 h]; Asphalt Paver [2.61 h]; Rubber Compactor [5.12 h]; MC1/RC2 Sprinkler [2.61 h]; Dump Truck [23.09 h]; Bituminous base course (Grading I - Class A), including Prime coat (MC1) & tack coate (RC2) [93.84 m3] | 44,855.52 |  | L05 | Z9 | CONS | RD | 150 mm | AFT |
| RHD4CZ9L05RD3200 |  | Supply, lay and Asphaltic base course including Tack Coat (RC2) for 2nd Layer - (RD-L-5)-Z9-L05-RD | 2d | 2027-08-28 | 2027-08-29 | RHD4PRSHLDOSRD1100, RHD4PRSHLSTAGRD1100, RHD4CZ9L05ICT2400 |  |  |  |  | Skilled labor [2.61 h]; Unskilled Labor [15.36 h]; Equipment Opreator [38.44 h]; Bobcat [2.61 h]; Roller compactor [2.61 h]; Asphalt Paver [2.61 h]; Rubber Compactor [5.12 h]; MC1/RC2 Sprinkler [2.61 h]; Dump Truck [23.09 h]; Bituminous base course (Grading I - Class A), including Prime coat (MC1) & tack coate (RC2) [93.84 m3] | 44,855.52 |  | L05 | Z9 | CONS | RD | 150 mm | AFT |
|  | 9022 | **RHD4-02-002-L05-(RD)-Precast Concrete Curb** |  | 2027-08-30 | 2027-09-04 |  |  |  |  |  |  |  |  |  |  |  |  |  |  |
| RHD4CZ9L05RD5100 |  | Supply and installation Precast Concrete Kerb for Roads - (RD-L-5)-Z9-L05-RD | 5d | 2027-08-30 | 2027-09-04 | RHD4PRSHLDOSRD1200, RHD4ENMSRD2000, RHD4ENMSRD2010, RHD4PRSHLSTAGRD1200, RHD4CZ9L05RD3200 |  |  |  |  | Mason [142.99 h]; Skilled labor [47.7 h]; Unskilled Labor [142.99 h]; Equipment Opreator [95.4 h]; Bobcat [47.7 h]; Concrete Mixer Truck [47.7 h]; Precast Concrete Curbstone, type K1 [1970 m] | 108,350 |  | L05 | Z9 | CONS | RD | Curbs | AFT |
|  | 9025 | **RHD4-02-002-L05-(RD)-Traffic Signage** |  | 2027-09-05 | 2027-09-11 |  |  |  |  |  |  |  |  |  |  |  |  |  |  |
| RHD4CZ9L05RD8100 |  | Installation of Traffic Signage for Road Network - (RD-L-5)-Z9-L05-RD | 6d | 2027-09-05 | 2027-09-11 | RHD4PRSHLDOSRD1600, RHD4PRSHLSTAGRD1600, RHD4CZ9L05RD5100 |  |  |  |  | Skilled labor [130.68 h]; Unskilled Labor [65.34 h]; Electrician [2.18 h]; Equipment Opreator [13.94 h]; Boom Truck [13.07 h]; Concrete Mixer Truck [0.87 h]; Traffic signs, ground mounted, 1 Sheet Aluminium, (breakaway)Single post [2 nr] | 2,452 |  | L05 | Z9 | CONS | RD | Traffic Signage | AFT |
|  | 9023 | **RHD4-02-002-L05-(RD)-Precast Interlocking Block Pavers** |  | 2027-09-12 | 2027-09-13 |  |  |  |  |  |  |  |  |  |  |  |  |  |  |
| RHD4CZ9L05RD6100 |  | Interlocking block pavers for sidewalk-footpath for Side walks and Parking areas - (RD-L-5)-Z9-L05-RD | 2d | 2027-09-12 | 2027-09-13 | RHD4PRSHLDOSRD1300, RHD4PRSHLDOSRD1400, RHD4ENMSRD2000, RHD4ENMSRD2010, RHD4PRSHLSTAGRD1300, RHD4PRSHLSTAGRD1400, RHD4CZ9L05RD8100 |  |  |  |  | Skilled labor [12.41 h]; Unskilled Labor [18.73 h]; Equipment Opreator [20.26 h]; Boom Truck [6.21 h]; Bobcat [6.21 h]; Concrete Mixer Truck [6.21 h]; Water Truck [1.52 h]; Interlock 80 mm thick Pavers for parking including sand fill [143 m2] | 10,582 |  | L05 | Z9 | CONS | RD | Interlocking | AFT |
|  | 9021 | **RHD4-02-002-L05-(RD)-Bituminous concrete wearing course including tack coat (RC2)** |  | 2027-09-14 | 2027-09-15 |  |  |  |  |  |  |  |  |  |  |  |  |  |  |
| RHD4CZ9L05RD4100 |  | Supply, lay and compaction Asphaltic wearing course including tack Coat (RC2)for Road Network - (RD-L-5)-Z9-L05-RD | 2d | 2027-09-14 | 2027-09-15 | RHD4CZ9L05RD5100, RHD4CZ9L05RD6100 |  |  |  |  | Skilled labor [2.83 h]; Unskilled Labor [16.99 h]; Equipment Opreator [42.47 h]; Bobcat [2.83 h]; Roller compactor [2.83 h]; Asphalt Paver [2.83 h]; Rubber Compactor [5.66 h]; MC1/RC2 Sprinkler [2.83 h]; Dump Truck [25.48 h]; Bituminous concrete wearing course, (Grading I - Class A), including tack coat (RC2) [135.05 m3] | 73,332.15 |  | L05 | Z9 | CONS | RD | 50 mm | AFT |
|  | 9024 | **RHD4-02-002-L05-(RD)-Pavement Marking** |  | 2027-09-16 | 2027-09-25 |  |  |  |  |  |  |  |  |  |  |  |  |  |  |
| RHD4CZ9L05RD7100 |  | Pavement Markings for Road Network - (RD-L-5)-Z9-L05-RD | 7d | 2027-09-16 | 2027-09-25 | RHD4PRSHLDOSRD1500, RHD4PRSHLSTAGRD1500, RHD4CZ9L05RD4100 |  |  |  |  | Skilled labor [74.4 h]; Unskilled Labor [148.87 h]; Equipment Opreator [74.4 h]; Road Marking Machine [74.4 h]; Retroreflective Thermoplastic White Traffic Markings [192.08 m2]; Retroreflective Thermoplastic Yellow, Traffic Markings [169.36 m2]; Rumble strip [85 m]; Retroreflective raised pavement markers (cat eyes) [1285 nr] | 65,349.64 |  | L05 | Z9 | CONS | RD | Pavement Marking | AFT |
|  | 8842 | **RHD4-02-002-Z9-L05-Storm Network - ST** |  | 2026-09-19 | 2027-06-23 |  |  |  |  |  |  |  |  |  |  |  |  |  |  |
|  | 8859 | **RHD4-02-002-L05-(ST)-MH Works - 1200 mm diameter** |  | 2026-09-19 | 2027-06-23 |  |  |  |  |  |  |  |  |  |  |  |  |  |  |
| RHD4CZ9L05ST3100 |  | Excavation and PC Blinding works for MH 1200 mm - (RD-L-5)-Z9-L05-ST | 2d | 2026-09-19 A | 2026-09-20 A | RHD4ENSDZ9APPST110, RHD4ENMSST2000, RHD4ENMSST2010, RHD4CZ9L05ST2100 | 100% |  | 2026-12-02 | 2026-12-03 | Skilled labor [7.3 h]; Unskilled Labor [7.3 h]; Equipment Opreator [11.65 h]; Excavator-Poclain [7.3 h]; Water Truck [0.8 h]; Dump Truck [3.59 h]; MH (1200mm Diameter) - ST - depth 1.50 - 2.5m [0.5 nr] | 5,161.5 | 5,161.5 | L05 | Z9 | CONS | ST | Excavation | bef |
| RHD4CZ9L05ST3200 |  | Installation of Base for MH 1200 mm - (RD-L-5)-Z9-L05-ST | 2d | 2026-09-22 A | 2026-09-24 A | RHD4PRSHLSTAGST1608, RHD4CZ9L05ST3100 | 100% |  | 2026-12-05 | 2026-12-06 | Skilled labor [7.3 h]; Unskilled Labor [7.3 h]; Equipment Opreator [2.94 h]; Boom Truck [1.42 h]; Concrete Mixer Truck [1.42 h]; MH (1200mm Diameter) - ST - depth 1.50 - 2.5m [0.5 nr] | 5,161.5 | 5,161.5 | L05 | Z9 | CONS | ST | Installing Base | bef |
| RHD4CZ9L05ST3300 |  | MH Ring and C.Slab works and Backfilling works for MH 1200 mm - (RD-L-5)-Z9-L05-ST | 2d | 2027-05-02 | 2027-05-03 | RHD4PRSHLDOSST1608, RHD4CZ9L05ST3200 |  |  |  |  | Skilled labor [7.3 h]; Unskilled Labor [7.3 h]; Equipment Opreator [5.12 h]; Boom Truck [2.94 h]; Concrete Mixer Truck [2.18 h]; MH (1200mm Diameter) - ST - depth 1.50 - 2.5m [0.7 nr] | 7,226.1 |  | L05 | Z9 | CONS | ST | Installing Rings | bef |
| RHD4CZ9L05ST3400 |  | Steel Cover for MH 1200 mm - (RD-L-5)-Z9-L05-ST | 2d | 2027-06-20 | 2027-06-21 | RHD4PRSHLDOSST1708, RHD4PRSHLSTAGST1708, RHD4CZ9L05ST3300, RHD4CZ9L05ST2500, RHD4CZ9L05PT4400, RHD4CZ9C071ST3401 |  |  |  |  | Skilled labor [7.3 h]; Unskilled Labor [14.48 h]; Equipment Opreator [1.42 h]; Boom Truck [1.42 h]; MH (1200mm Diameter) - ST - depth 1.50 - 2.5m [0.1 nr] | 1,032.3 |  | L05 | Z9 | CONS | ST | Steel Cover | bef |
| RHD4CZ9L05ST3500 |  | Finishing, Benching, Testing works for MH 1200 mm - (RD-L-5)-Z9-L05-ST | 2d | 2027-06-22 | 2027-06-23 | RHD4CZ9L05ST3400, RHD4CZ9C071ST3501 |  |  |  |  | Skilled labor [7.3 h]; Unskilled Labor [14.48 h]; Plumber [7.3 h]; Equipment Opreator [1.42 h]; Water Truck [1.42 h]; MH (1200mm Diameter) - ST - depth 1.50 - 2.5m [0.2 nr] | 2,064.6 |  | L05 | Z9 | CONS | ST | Benching | bef |
|  | 8845 | **RHD4-02-002-L05-(ST)-GRP Pipes - 600 mm diameter** |  | 2026-09-19 | 2027-05-10 |  |  |  |  |  |  |  |  |  |  |  |  |  |  |
| RHD4CZ9L05ST1102 |  | Excavation works for GRP Pipe Line 600 mm - (RD-L-5)-Z9-L05-ST | 2d | 2026-09-19 A | 2027-05-01 | RHD4ENSDZ9APPST110, RHD4CZ9L05RW3000, RHD4CZ9L02ST1508 | 50% | 6d | 2026-11-25 | 2026-11-26 | Skilled labor [2.18 h]; Unskilled Labor [2.18 h]; Equipment Opreator [2.61 h]; Excavator-Poclain [2.18 h]; Dump Truck [0.44 h]; GRP (600mm Diameter) - ST - Depth less than 1.5 m [3.98 m]; GRP (600mm Diameter) - ST - Depth: 1.51m - 2.5m | 1,715.38 |  | L05 | Z9 | CONS | ST | Excavation | bef |
| RHD4CZ9L05ST1202 |  | Bedding works for GRP Pipe Line 600 mm - (RD-L-5)-Z9-L05-ST | 2d | 2026-09-22 A | 2027-05-03 | RHD4CZ9L05ST1102 | 50% | 2d | 2026-11-28 | 2026-11-29 | Skilled labor [2.18 h]; Unskilled Labor [4.36 h]; Equipment Opreator [4.36 h]; Excavator-Poclain [2.18 h]; Dump Truck [2.18 h]; GRP (600mm Diameter) - ST - Depth less than 1.5 m [1.99 m]; GRP (600mm Diameter) - ST - Depth: 1.51m - 2.5m | 857.69 |  | L05 | Z9 | CONS | ST | Bedding | bef |
| RHD4CZ9L05ST1302 |  | Installing for GRP Pipe Line 600 mm - (RD-L-5)-Z9-L05-ST | 2d | 2026-09-24 A | 2027-05-05 | RHD4PRSHLSTAGST1008, RHD4CZ9L05ST1202, RHD4PRSHLDOSST1608, RHD4PRSHLPOST1000, RHD4PRSHLDOSST1008, RHD4PRSHLDOSST1604, RHD4PRSHLDOSST1004 | 50% | 2d | 2026-11-30 | 2026-12-01 | Unskilled Labor [4.36 h]; Plumber [2.18 h]; GRP (600mm Diameter) - ST - Depth less than 1.5 m [17.89 m]; GRP (600mm Diameter) - ST - Depth: 1.51m - 2.5m | 7,710.59 |  | L05 | Z9 | CONS | ST | Installation | bef |
| RHD4CZ9L05ST1502 |  | Backfilling and warning tape works for GRP Pipe Line 600 mm - (RD-L-5)-Z9-L05-ST | 2d | 2026-09-27 A | 2027-05-10 | RHD4CZ9L05ST1402 | 50% | 2d | 2026-12-05 | 2026-12-06 | Skilled labor [2.18 h]; Unskilled Labor [4.36 h]; Equipment Opreator [4.36 h]; Excavator-Poclain [2.18 h]; Dump Truck [2.18 h]; GRP (600mm Diameter) - ST - Depth less than 1.5 m [7.95 m]; GRP (600mm Diameter) - ST - Depth: 1.51m - 2.5m | 3,426.45 |  | L05 | Z9 | CONS | ST | Backfilling | bef |
| RHD4CZ9L05ST1402 |  | Primary Test for GRP Pipe Line 600 mm - (RD-L-5)-Z9-L05-ST | 2d | 2027-05-06 | 2027-05-08 | RHD4CZ9L05ST1302 |  |  |  |  | Unskilled Labor [2.18 h]; Plumber [2.18 h]; Equipment Opreator [2.18 h]; Water Truck [2.18 h]; GRP (600mm Diameter) - ST - Depth less than 1.5 m [7.95 m]; GRP (600mm Diameter) - ST - Depth: 1.51m - 2.5m | 3,426.45 |  | L05 | Z9 | CONS | ST | Primary Test | bef |

| ID | WBS | Activity | Duration | Start | Finish | Predecessors | Complete | Remaining | Planned start | Planned finish | Resources | Cost | Actual cost | RDH4-01-001-Road and Block Names-1 | RDH4-01-001-Zones-1 | RDH4-01-001-Phases-1 | RDH4-01-001-Networks-1 | RDH4-01-001-Work Method-1 | RDH4-01-001-MENEM |
| --- | --- | --- | --- | --- | --- | --- | --- | --- | --- | --- | --- | --- | --- | --- | --- | --- | --- | --- | --- |
|  | 8844 | **RHD4-02-002-L05-(ST)-GRP Pipes - 500 mm diameter** |  | 2026-09-19 | 2027-05-08 |  |  |  |  |  |  |  |  |  |  |  |  |  |  |
| RHD4CZ9L05ST1101 |  | Excavation works for GRP Pipe Line 500 mm - (RD-L-5)-Z9-L05-ST | 2d | 2026-09-19 A | 2026-09-20 A | RHD4ENSDZ9APPST110, RHD4CZ9L05ST1102 | 100% |  | 2026-11-28 | 2026-11-29 | Skilled labor [1.31 h]; Unskilled Labor [1.31 h]; Equipment Opreator [1.52 h]; Excavator-Poclain [1.31 h]; Dump Truck [0.22 h]; GRP (500mm Diameter) - ST - Depth less than 1.5 m [2.9 m] | 1,029.5 | 1,029.5 | L05 | Z9 | CONS | ST | Excavation | bef |
| RHD4CZ9L05ST1201 |  | Bedding works for GRP Pipe Line 500 mm - (RD-L-5)-Z9-L05-ST | 2d | 2026-09-22 A | 2026-09-24 A | RHD4CZ9L05ST1101 | 100% |  | 2026-11-30 | 2026-12-01 | Skilled labor [1.09 h]; Unskilled Labor [2.07 h]; Equipment Opreator [2.07 h]; Excavator-Poclain [1.09 h]; Dump Truck [1.09 h]; GRP (500mm Diameter) - ST - Depth less than 1.5 m [1.45 m] | 514.93 | 514.93 | L05 | Z9 | CONS | ST | Bedding | bef |
| RHD4CZ9L05ST1301 |  | Installing for GRP Pipe Line 500 mm - (RD-L-5)-Z9-L05-ST | 2d | 2026-09-24 A | 2026-09-26 A | RHD4PRSHLSTAGST1008, RHD4CZ9L05ST1201, RHD4CZ9L05ST1302, RHD4PRSHLDOSST1608, RHD4PRSHLPOST1000, RHD4PRSHLDOSST1008, RHD4PRSHLDOSST1604, RHD4PRSHLDOSST1004 | 100% |  | 2026-12-02 | 2026-12-03 | Unskilled Labor [4.25 h]; Plumber [2.07 h]; GRP (500mm Diameter) - ST - Depth less than 1.5 m [13.05 m] | 4,634.35 | 4,634.35 | L05 | Z9 | CONS | ST | Installation | bef |
| RHD4CZ9L05ST1501 |  | Backfilling and warning tape works for GRP Pipe Line 500 mm - (RD-L-5)-Z9-L05-ST | 2d | 2026-09-27 A | 2026-09-28 A | RHD4CZ9L05ST1401, RHD4CZ9L05ST1502 | 100% |  | 2026-12-07 | 2026-12-08 | Skilled labor [1.6 h]; Unskilled Labor [3.16 h]; Equipment Opreator [3.16 h]; Excavator-Poclain [1.6 h]; Dump Truck [1.6 h]; GRP (500mm Diameter) - ST - Depth less than 1.5 m [5.8 m] | 2,059 | 2,059 | L05 | Z9 | CONS | ST | Backfilling | bef |
| RHD4CZ9L05ST1401 |  | Primary Test for GRP Pipe Line 500 mm - (RD-L-5)-Z9-L05-ST | 2d | 2027-05-06 | 2027-05-08 | RHD4CZ9L05ST1301 |  |  |  |  | Unskilled Labor [0.65 h]; Plumber [0.65 h]; Equipment Opreator [0.65 h]; Water Truck [0.65 h]; GRP (500mm Diameter) - ST - Depth less than 1.5 m [5.8 m] | 2,059 |  | L05 | Z9 | CONS | ST | Primary Test | bef |
|  | 8857 | **RHD4-02-002-L05-(ST)-UPVC Pipes - 300 mm diameter** |  | 2026-09-19 | 2027-05-12 |  |  |  |  |  |  |  |  |  |  |  |  |  |  |
| RHD4CZ9L05ST2100 |  | Excavation works for UPVC Pipe Line 300 mm - (RD-L-5)-Z9-L05-ST | 2d | 2026-09-19 A | 2026-09-20 A | RHD4ENSDZ9APPST110, RHD4CZ9L05ST1101 | 100% |  | 2026-11-30 | 2026-12-01 | Skilled labor [1.85 h]; Unskilled Labor [1.85 h]; Equipment Opreator [2.18 h]; Excavator-Poclain [1.85 h]; Dump Truck [0.33 h]; UPVC (300mm Diameter) - ST - Depth less than 1.5 [4.19 m] | 1,270.18 | 1,270.18 | L05 | Z9 | CONS | ST | Excavation | bef |
| RHD4CZ9L05ST2200 |  | Bedding works for UPVC Pipe Line 300 mm - (RD-L-5)-Z9-L05-ST | 2d | 2027-05-02 | 2027-05-03 | RHD4CZ9L05ST2100 |  |  |  |  | Skilled labor [1.52 h]; Unskilled Labor [3.05 h]; Equipment Opreator [3.05 h]; Excavator-Poclain [1.52 h]; Dump Truck [1.52 h]; UPVC (300mm Diameter) - ST - Depth less than 1.5 [2.1 m] | 636.3 |  | L05 | Z9 | CONS | ST | Bedding | bef |
| RHD4CZ9L05ST2300 |  | Installing for UPVC Pipe Line 300 mm - (RD-L-5)-Z9-L05-ST | 2d | 2027-05-04 | 2027-05-05 | RHD4PRSHLDOSST1108, RHD4PRSHLSTAGST1108, RHD4CZ9L05ST2200, RHD4CZ9L05ST7300 |  |  |  |  | Unskilled Labor [3.7 h]; Plumber [1.85 h]; UPVC (300mm Diameter) - ST - Depth less than 1.5 [18.86 m] | 5,715.79 |  | L05 | Z9 | CONS | ST | Installation | bef |
| RHD4CZ9L05ST2400 |  | Primary Test for UPVC Pipe Line 300 mm - (RD-L-5)-Z9-L05-ST | 2d | 2027-05-06 | 2027-05-08 | RHD4CZ9L05ST2300 |  |  |  |  | Unskilled Labor [0.87 h]; Plumber [0.87 h]; Equipment Opreator [0.87 h]; Water Truck [0.87 h]; UPVC (300mm Diameter) - ST - Depth less than 1.5 [8.38 m] | 2,540.35 |  | L05 | Z9 | CONS | ST | Primary Test | bef |
| RHD4CZ9L05ST2500 |  | Backfilling and warning tape works for UPVC Pipe Line 300 mm - (RD-L-5)-Z9-L05-ST | 2d | 2027-05-11 | 2027-05-12 | RHD4CZ9L05ST2400, RHD4CZ9L05ST6100, RHD4CZ9L05ST1501 |  |  |  |  | Skilled labor [2.29 h]; Unskilled Labor [4.57 h]; Equipment Opreator [4.57 h]; Excavator-Poclain [2.29 h]; Dump Truck [2.29 h]; UPVC (300mm Diameter) - ST - Depth less than 1.5 [8.38 m] | 2,540.35 |  | L05 | Z9 | CONS | ST | Backfilling | bef |
|  | 8865 | **RHD4-02-002-L05-(ST)-Concrete Encasement** |  | 2027-05-04 | 2027-05-05 |  |  |  |  |  |  |  |  |  |  |  |  |  |  |
| RHD4CZ9L05ST6100 |  | Pipe Encasement for Storm Pipelines - (RD-L-5)-Z9-L05-ST | 2d | 2027-05-04 | 2027-05-05 | RHD4CZ9L05ST2300 SS, RHD4CZ9L05ST2300 FF, RHD4CZ9L05ST2200 |  |  |  |  | Skilled labor [0.8 h]; Unskilled Labor [0.8 h]; Equipment Opreator [0.87 h]; Concrete Mixer Truck [0.11 h]; Dump Truck [0.8 h]; Pipe Encasement - ST [14.89 m3] | 7,534.34 |  | L05 | Z9 | CONS | ST | Pipe Encasement | bef |
|  | 8866 | **RHD4-02-002-Z9-L05-Catch Basin - ST** |  | 2026-08-29 | 2027-02-07 |  |  |  |  |  |  |  |  |  |  |  |  |  |  |
|  | 8867 | **RHD4-02-002-L05-(ST)-Single Catch Basin Works** |  | 2026-08-29 | 2027-02-07 |  |  |  |  |  |  |  |  |  |  |  |  |  |  |
| RHD4CZ9L05ST7100 |  | Excavation works for Single Catch Basin - (RD-L-5)-Z9-L05-ST | 2d | 2026-08-29 A | 2026-09-20 A | RHD4ENSDZ9APPST110, RHD4PRSHLDOSST1308 | 100% |  | 2026-08-29 | 2026-08-30 | Skilled labor [3.27 h]; Unskilled Labor [6.53 h]; Equipment Opreator [4.9 h]; Excavator-Poclain [3.27 h]; Dump Truck [1.6 h]; Single Catch basin - ST [0.75 nr] | 2,798.25 | 2,798.25 | L05 | Z9 | CONS | ST | Excavation | bef |
| RHD4CZ9L05ST7200 |  | PC Blinding, Installation and Pipe connection for Single Catch Basin - (RD-L-5)-Z9-L05-ST | 2d | 2026-10-27 A | 2027-01-31 | RHD4CZ9L05ST7100 | 67% | 2d | 2026-10-27 | 2026-10-28 | Skilled labor [3.27 h]; Unskilled Labor [6.53 h]; Plumber [1.6 h]; Equipment Opreator [0.65 h]; Boom Truck [0.65 h]; Single Catch basin - ST [0.6 nr] | 2,238.6 | 1,492.47 | L05 | Z9 | CONS | ST | Installation & Pipe Connection | bef |
| RHD4CZ9L05ST7300 |  | Rings & C.Slab & Final Backfill for Single Catch Basin - (RD-L-5)-Z9-L05-ST | 2d | 2026-10-29 A | 2027-02-02 | RHD4PRSHLDOSST1308, RHD4PRSHLSTAGST1308, RHD4CZ9L05ST7200 | 67% | 2d | 2026-10-29 | 2026-10-31 | Skilled labor [4.14 h]; Unskilled Labor [8.17 h]; Equipment Opreator [4.9 h]; Boom Truck [0.87 h]; Bobcat [4.14 h]; Single Catch basin - ST [1.05 nr] | 3,917.55 | 2,611.83 | L05 | Z9 | CONS | ST | Rings | bef |
| RHD4CZ9L05ST7400 |  | Steel Cover for Single Catch Basin - (RD-L-5)-Z9-L05-ST | 2d | 2027-02-03 | 2027-02-04 | RHD4PRSHLDOSST1708, RHD4CZ9L05ST7300 |  |  |  |  | Skilled labor [3.27 h]; Unskilled Labor [3.27 h]; Equipment Opreator [0.65 h]; Boom Truck [0.65 h]; Single Catch basin - ST [0.15 nr] | 559.65 |  | L05 | Z9 | CONS | ST | Steel Cover | bef |
| RHD4CZ9L05ST7500 |  | Finishing and Insulation works for Single Catch Basin - (RD-L-5)-Z9-L05-ST | 2d | 2027-02-06 | 2027-02-07 | RHD4CZ9L05ST7400 |  |  |  |  | Skilled labor [6.53 h]; Unskilled Labor [13.07 h]; Equipment Opreator [1.31 h]; Boom Truck [1.31 h]; Single Catch basin - ST [0.45 nr] | 1,678.95 |  | L05 | Z9 | CONS | ST | Insulation | bef |
|  | 8891 | **RHD4-02-002-Z9-L05-Sewage Network - SW** |  | 2027-05-13 | 2027-06-12 |  |  |  |  |  |  |  |  |  |  |  |  |  |  |
|  | 8896 | **RHD4-02-002-L05-(SW)-GRP Pipes - 700 mm diameter** |  |  |  |  |  |  |  |  |  |  |  |  |  |  |  |  |  |
|  | 1895 | **RHD4-02-002-L05-(SW)-GRP Pipes - 500 mm diameter** |  | 2027-05-13 | 2027-05-29 |  |  |  |  |  |  |  |  |  |  |  |  |  |  |
| RHD4CZ9L05SW1102 |  | Excavation works for GRP Pipe Line 500 mm - (RD-L-5)-Z9-L05-SW | 2d | 2027-05-13 | 2027-05-19 | RHD4CZ9L05ST2500 |  |  |  |  | Skilled labor [14.7 h]; Unskilled Labor [14.7 h]; Equipment Opreator [17.64 h]; Excavator-Poclain [14.7 h]; Dump Truck [2.94 h]; GRP (500mm Diameter) - SW - Depth: 2.51m - 3.5m [30.32 m]; GRP (500mm Diameter) - SW - Depth: 3.51m - 4.5m | 17,403.68 |  | L05 | Z9 | CONS | SW | Excavation | bef |
| RHD4CZ9L05SW1202 |  | Bedding works for GRP Pipe Line 500 mm - (RD-L-5)-Z9-L05-SW | 2d | 2027-05-20 | 2027-05-22 | RHD4CZ9L05SW1102 |  |  |  |  | Skilled labor [14.7 h]; Unskilled Labor [29.4 h]; Equipment Opreator [29.4 h]; Excavator-Poclain [14.7 h]; Dump Truck [14.7 h]; GRP (500mm Diameter) - SW - Depth: 2.51m - 3.5m [10.11 m]; GRP (500mm Diameter) - SW - Depth: 3.51m - 4.5m | 5,803.14 |  | L05 | Z9 | CONS | SW | Bedding | bef |
| RHD4CZ9L05SW1302 |  | Installing for GRP Pipe Line 500 mm - (RD-L-5)-Z9-L05-SW | 2d | 2027-05-23 | 2027-05-24 | RHD4CZ9L05SW1202 |  |  |  |  | Unskilled Labor [29.4 h]; Plumber [14.7 h]; Equipment Opreator [14.7 h]; Boom Truck [14.7 h]; GRP (500mm Diameter) - SW - Depth: 2.51m - 3.5m [80.86 m]; GRP (500mm Diameter) - SW - Depth: 3.51m - 4.5m | 46,413.64 |  | L05 | Z9 | CONS | SW | Installation | bef |
| RHD4CZ9L05SW1402 |  | Primary Test for GRP Pipe Line 500 mm - (RD-L-5)-Z9-L05-SW | 2d | 2027-05-25 | 2027-05-26 | RHD4CZ9L05SW1302 |  |  |  |  | Unskilled Labor [14.7 h]; Plumber [14.7 h]; Equipment Opreator [14.7 h]; Water Truck [14.7 h]; GRP (500mm Diameter) - SW - Depth: 2.51m - 3.5m [40.43 m]; GRP (500mm Diameter) - SW - Depth: 3.51m - 4.5m | 23,206.82 |  | L05 | Z9 | CONS | SW | Primary Test | bef |
| RHD4CZ9L05SW1502 |  | Backfilling and warning tape works for GRP Pipe Line 500 mm - (RD-L-5)-Z9-L05-SW | 2d | 2027-05-27 | 2027-05-29 | RHD4CZ9L05SW1402 |  |  |  |  | Skilled labor [14.7 h]; Unskilled Labor [29.4 h]; Equipment Opreator [29.4 h]; Excavator-Poclain [14.7 h]; Dump Truck [14.7 h]; GRP (500mm Diameter) - SW - Depth: 2.51m - 3.5m [40.43 m]; GRP (500mm Diameter) - SW - Depth: 3.51m - 4.5m | 23,206.82 |  | L05 | Z9 | CONS | SW | Backfilling | bef |

| ID | WBS | Activity | Duration | Start | Finish | Predecessors | Resources | Cost | RDH4-01-001-Road and Block Names-1 | RDH4-01-001-Zones-1 | RDH4-01-001-Phases-1 | RDH4-01-001-Networks-1 | RDH4-01-001-Work Method-1 | RDH4-01-001-MENEM |
| --- | --- | --- | --- | --- | --- | --- | --- | --- | --- | --- | --- | --- | --- | --- |
|  | 3794 | **RHD4-02-002-L05-(SW)-MH Works - 1200 mm diameter** |  | 2027-05-20 | 2027-06-12 |  |  |  |  |  |  |  |  |  |
| RHD4CZ9L05SW3100 |  | Excavation and PC Blinding works for MH 1200 mm - (RD-L-5)-Z9-L05-SW | 3d | 2027-05-20 | 2027-05-23 | RHD4CZ9L05SW1102 | Skilled labor [27.2 h]; Unskilled Labor [27.2 h]; Equipment Opreator [43.56 h]; Excavator-Poclain [27.2 h]; Water Truck [2.72 h]; Dump Truck [13.6 h]; MH (1200mm Diameter) - SW - depth 3.51 -4.5m [1.25 nr] | 16,650 | L05 | Z9 | CONS | SW | Excavation | bef |
| RHD4CZ9L05SW3200 |  | Installation of Base for MH 1200 mm - (RD-L-5)-Z9-L05-SW | 5d | 2027-05-24 | 2027-05-29 | RHD4CZ9L05SW3100 | Skilled labor [54.45 h]; Unskilled Labor [54.45 h]; Equipment Opreator [21.78 h]; Boom Truck [10.89 h]; Concrete Mixer Truck [10.89 h]; MH (1200mm Diameter) - SW - depth 3.51 -4.5m [1.25 nr] | 16,650 | L05 | Z9 | CONS | SW | Installing Base | bef |
| RHD4CZ9L05SW3300 |  | MH Ring and C.Slab works and Backfilling works for MH 1200 mm - (RD-L-5)-Z9-L05-SW | 5d | 2027-05-30 | 2027-06-03 | RHD4CZ9L05SW3200 | Skilled labor [54.45 h]; Unskilled Labor [54.45 h]; Equipment Opreator [38.12 h]; Boom Truck [21.78 h]; Concrete Mixer Truck [16.34 h]; MH (1200mm Diameter) - SW - depth 3.51 -4.5m [1.75 nr] | 23,310 | L05 | Z9 | CONS | SW | Installing Rings | bef |
| RHD4CZ9L05SW3400 |  | Steel Cover for MH 1200 mm - (RD-L-5)-Z9-L05-SW | 2d | 2027-06-05 | 2027-06-06 | RHD4CZ9L05SW3300 | Skilled labor [18.19 h]; Unskilled Labor [36.26 h]; Equipment Opreator [3.59 h]; Boom Truck [3.59 h]; MH (1200mm Diameter) - SW - depth 3.51 -4.5m [0.25 nr] | 3,330 | L05 | Z9 | CONS | SW | Steel Cover | bef |
| RHD4CZ9L05SW3500 |  | Finishing, Benching, Testing works for MH 1200 mm - (RD-L-5)-Z9-L05-SW | 5d | 2027-06-07 | 2027-06-12 | RHD4CZ9L05SW3400 | Skilled labor [54.45 h]; Unskilled Labor [108.9 h]; Plumber [54.45 h]; Equipment Opreator [10.89 h]; Water Truck [10.89 h]; MH (1200mm Diameter) - SW - depth 3.51 -4.5m [0.5 nr] | 6,660 | L05 | Z9 | CONS | SW | Benching | bef |
|  | 8903 | **RHD4-02-002-L05-(SW)-MH Works - 1500 mm diameter** |  |  |  |  |  |  |  |  |  |  |  |  |
|  | 8900 | **RHD4-02-002-L05-(SW)-Concrete Encasement** |  |  |  |  |  |  |  |  |  |  |  |  |
|  | 8928 | **RHD4-02-002-Z9-L05-Potable Network - PT** |  | 2027-05-30 | 2027-06-21 |  |  |  |  |  |  |  |  |  |
|  | 8930 | **RHD4-02-002-L05-(PT)-HDPE Pipes - 160 mm diameter** |  | 2027-05-30 | 2027-06-09 |  |  |  |  |  |  |  |  |  |
| RHD4CZ9L05PT1101 |  | Excavation works for HDPE Pipline 160 mm - (RD-L-5)-Z9-L05-PT | 2d | 2027-05-30 | 2027-05-31 | RHD4ENSDZ9APPPT130, RHD4ENMSPT2000, RHD4CZ9L05SW1502 | Skilled labor [10.67 h]; Unskilled Labor [10.67 h]; Equipment Opreator [12.85 h]; Excavator-Poclain [10.67 h]; Dump Truck [2.18 h]; HDPE (160mm Diameter) - PT - Depth: less than 1.5m [24.52 m] | 2,623.96 | L05 | Z9 | CONS | PT | Excavation | bef |
| RHD4CZ9L05PT1201 |  | Bedding works for HDPE Pipline 160 mm - (RD-L-5)-Z9-L05-PT | 2d | 2027-06-01 | 2027-06-02 | RHD4CZ9L05PT1101 | Skilled labor [8.93 h]; Unskilled Labor [17.75 h]; Equipment Opreator [17.75 h]; Excavator-Poclain [8.93 h]; Dump Truck [8.93 h]; HDPE (160mm Diameter) - PT - Depth: less than 1.5m [12.26 m] | 1,311.98 | L05 | Z9 | CONS | PT | Bedding | bef |
| RHD4CZ9L05PT1301 |  | Installing for HDPE Pipline 160 mm - (RD-L-5)-Z9-L05-PT | 2d | 2027-06-03 | 2027-06-05 | RHD4PRSHLDOSPT1000, RHD4PRSHLSTAGPT1000, RHD4CZ9L05PT1201 | Unskilled Labor [35.61 h]; Plumber [17.75 h]; Equipment Opreator [17.75 h]; Boom Truck [17.75 h]; HDPE (160mm Diameter) - PT - Depth: less than 1.5m [110.35 m] | 11,807.82 | L05 | Z9 | CONS | PT | Installation | bef |
| RHD4CZ9L05PT1401 |  | Primary Test for HDPE Pipline 160 mm - (RD-L-5)-Z9-L05-PT | 2d | 2027-06-06 | 2027-06-07 | RHD4CZ9L05PT1301 | Unskilled Labor [5.34 h]; Plumber [5.34 h]; Equipment Opreator [5.34 h]; Water Truck [5.34 h]; HDPE (160mm Diameter) - PT - Depth: less than 1.5m [49.05 m] | 5,247.92 | L05 | Z9 | CONS | PT | Primary Test | bef |
| RHD4CZ9L05PT1501 |  | Backfilling and warning tape works for HDPE Pipline 160 mm - (RD-L-5)-Z9-L05-PT | 2d | 2027-06-08 | 2027-06-09 | RHD4CZ9L05PT1401 | Skilled labor [13.4 h]; Unskilled Labor [26.68 h]; Equipment Opreator [26.68 h]; Excavator-Poclain [13.4 h]; Dump Truck [13.4 h]; HDPE (160mm Diameter) - PT - Depth: less than 1.5m [49.05 m] | 5,247.92 | L05 | Z9 | CONS | PT | Backfilling | bef |
|  | 6483 | **RHD4-02-002-L05-(PT)-Concrete Encasement** |  | 2027-06-03 | 2027-06-05 |  |  |  |  |  |  |  |  |  |
| RHD4CZ9L05PT5100 |  | Pipe Encasement for Potable Pipelines - (RD-L-5)-Z9-L05-PT | 2d | 2027-06-03 | 2027-06-05 | RHD4CZ9L05PT1201 | Skilled labor [16 h]; Unskilled Labor [16 h]; Equipment Opreator [17.53 h]; Concrete Mixer Truck [1.6 h]; Dump Truck [16 h]; Pipe Encasement - PT [7.34 m3] | 8,998.84 | L05 | Z9 | CONS | PT | Pipe Encasement | bef |
|  | 8939 | **RHD4-02-002-L05-(PT)-Air Valve Chambers** |  | 2027-06-01 | 2027-06-09 |  |  |  |  |  |  |  |  |  |
| RHD4CZ9L05PT2102 |  | Excavation and Bedding for Air Valve Chambers for Potable Water Network - (RD-L-5)-Z9-L05-PT | 2d | 2027-06-01 | 2027-06-02 | RHD4ENSDZ9APPPT130, RHD4CZ9L05PT1101 | Skilled labor [5.45 h]; Unskilled Labor [5.45 h]; Equipment Opreator [1.09 h]; Excavator-Poclain [0.54 h]; Dump Truck [0.54 h]; Air Valve chambers - PT [0.25 nr] | 1,193 | L05 | Z9 | CONS | PT | Excavation and Bedding | bef |
| RHD4CZ9L05PT2202 |  | PC works for Air Valve Chambers for Potable Water Network - (RD-L-5)-Z9-L05-PT | 2d | 2027-06-03 | 2027-06-05 | RHD4CZ9L05PT2102 | Skilled labor [5.45 h]; Unskilled Labor [10.89 h]; Equipment Opreator [0.54 h]; Concrete Pump [0.54 h]; Air Valve chambers - PT [0.1 nr] | 477.2 | L05 | Z9 | CONS | PT | PC Works | bef |
| RHD4CZ9L05PT2302 |  | Installation for Air Valve Chambers for Potable Water Network - (RD-L-5)-Z9-L05-PT | 2d | 2027-06-06 | 2027-06-07 | RHD4PRSHLDOSPT1100, RHD4PRSHLDOSPT1400, RHD4PRSHLSTAGPT1100, RHD4PRSHLSTAGPT1400, RHD4CZ9L05PT2202 | Skilled labor [5.45 h]; Unskilled Labor [10.89 h]; Equipment Opreator [1.09 h]; Boom Truck [1.09 h]; Air Valve chambers - PT [0.55 nr] | 2,624.6 | L05 | Z9 | CONS | PT | Installation | bef |
| RHD4CZ9L05PT2402 |  | Backfilling works for Air Valve Chambers for Potable Water Network - (RD-L-5)-Z9-L05-PT | 2d | 2027-06-08 | 2027-06-09 | RHD4CZ9L05PT2302 | Skilled labor [5.45 h]; Unskilled Labor [10.89 h]; Equipment Opreator [1.09 h]; Water Truck [0.54 h]; Dump Truck [0.54 h]; Air Valve chambers - PT [0.1 nr] | 477.2 | L05 | Z9 | CONS | PT | Backfilling Works | bef |
|  | 8940 | **RHD4-02-002-L05-(PT)-Air Valves** |  | 2027-06-06 | 2027-06-09 |  |  |  |  |  |  |  |  |  |
| RHD4CZ9L05PT3103 |  | Installation for Air Valves for Potable Water Network - (RD-L-5)-Z9-L05-PT | 2d | 2027-06-06 | 2027-06-07 | RHD4PRSHLDOSPT1200, RHD4PRSHLSTAGPT1200, RHD4CZ9L05PT1301 | Unskilled Labor [5.45 h]; Plumber [5.45 h]; Air valve diameter 50 mm - PT [0.9 nr] | 4,427.1 | L05 | Z9 | CONS | PT | Installation | bef |
| RHD4CZ9L05PT3203 |  | Stem and Service box for Air Valves for Potable Water Network - (RD-L-5)-Z9-L05-PT | 2d | 2027-06-08 | 2027-06-09 | RHD4PRSHLDOSPT1300, RHD4PRSHLSTAGPT1300, RHD4CZ9L05PT3103 | Unskilled Labor [5.45 h]; Plumber [5.45 h]; Air valve diameter 50 mm - PT [0.1 nr] | 491.9 | L05 | Z9 | CONS | PT | Stem and Service box | bef |

| ID | WBS | Activity | Duration | Start | Finish | Predecessors | Resources | Cost | RDH4-01-001-Road and Block Names-1 | RDH4-01-001-Zones-1 | RDH4-01-001-Phases-1 | RDH4-01-001-Networks-1 | RDH4-01-001-Work Method-1 | RDH4-01-001-MENEM |
| --- | --- | --- | --- | --- | --- | --- | --- | --- | --- | --- | --- | --- | --- | --- |
|  | 8941 | **RHD4-02-002-L05-(PT)-Fire Hydrant** |  | 2027-06-10 | 2027-06-21 |  |  |  |  |  |  |  |  |  |
| RHD4CZ9L05PT4100 |  | Excavation and Bedding and Pipe Installation for Fire Hydrant - (RD-L-5)-Z9-L05-PT | 2d | 2027-06-10 | 2027-06-12 | RHD4ENSDZ9APPPT130, RHD4CZ9L05PT1501 | Skilled labor [10.89 h]; Unskilled Labor [10.89 h]; Plumber [10.89 h]; Equipment Opreator [5.45 h]; Excavator-Poclain [5.45 h]; 3-outlet fire hydrant (2 x 2.5 inch and 1 x 4.5 inch) in the form of a separate dry vacuum cylinder [0.2 nr] | 2,524 | L05 | Z9 | CONS | PT | Excavation | bef |
| RHD4CZ9L05PT4200 |  | Valve Installation for Fire Hydrant - (RD-L-5)-Z9-L05-PT | 2d | 2027-06-13 | 2027-06-14 | RHD4CZ9L05PT4100 | Unskilled Labor [7.3 h]; Plumber [7.3 h]; 3-outlet fire hydrant (2 x 2.5 inch and 1 x 4.5 inch) in the form of a separate dry vacuum cylinder [0.4 nr] | 5,048 | L05 | Z9 | CONS | PT | Valve | bef |
| RHD4CZ9L05PT4300 |  | Stem for Fire Hydrant - (RD-L-5)-Z9-L05-PT | 2d | 2027-06-15 | 2027-06-16 | RHD4CZ9L05PT4200 | Unskilled Labor [7.3 h]; Plumber [7.3 h]; 3-outlet fire hydrant (2 x 2.5 inch and 1 x 4.5 inch) in the form of a separate dry vacuum cylinder [0.6 nr] | 7,572 | L05 | Z9 | CONS | PT | Stem | bef |
| RHD4CZ9L05PT4400 |  | Fire Installation for Fire Hydrant - (RD-L-5)-Z9-L05-PT | 2d | 2027-06-17 | 2027-06-19 | RHD4PRSHLDOSPT1500, RHD4PRSHLSTAGPT1500, RHD4CZ9L05PT4300 | Unskilled Labor [7.3 h]; Plumber [7.3 h]; Equipment Opreator [7.3 h]; Boom Truck [7.3 h]; 3-outlet fire hydrant (2 x 2.5 inch and 1 x 4.5 inch) in the form of a separate dry vacuum cylinder [0.7 nr] | 8,834 | L05 | Z9 | CONS | PT | Fire | bef |
| RHD4CZ9L05PT4500 |  | Protection Barriers for Fire Hydrant - (RD-L-5)-Z9-L05-PT | 2d | 2027-06-20 | 2027-06-21 | RHD4CZ9L05PT4400 | Unskilled Labor [4.36 h]; Plumber [4.36 h]; 3-outlet fire hydrant (2 x 2.5 inch and 1 x 4.5 inch) in the form of a separate dry vacuum cylinder [0.1 nr] | 1,262 | L05 | Z9 | CONS | PT | Protection Barriers | bef |
|  | 8934 | **RHD4-02-002-L05-(PT)-Gate Valves (Direct Buried)** |  | 2027-06-03 | 2027-06-12 |  |  |  |  |  |  |  |  |  |
| RHD4CZ9L05PT3100 |  | Installation for Direct Buried Gate Valves - (RD-L-5)-Z9-L05-PT | 2d | 2027-06-03 | 2027-06-05 | RHD4PRSHLDOSPT1200, RHD4PRSHLSTAGPT1200, RHD4CZ9L05PT1301 FF, RHD4CZ9L05PT1301 SS | Unskilled Labor [10.89 h]; Plumber [10.89 h]; Gate valves dia 150 mm - PT [1.8 nr] | 2,844 | L05 | Z9 | CONS | PT | Installation | bef |
| RHD4CZ9L05PT3200 |  | Stem and Service box for Direct Buried Gate Valves - (RD-L-5)-Z9-L05-PT | 2d | 2027-06-10 | 2027-06-12 | RHD4PRSHLDOSPT1300, RHD4PRSHLSTAGPT1300, RHD4CZ9L05PT3100, RHD4CZ9L05PT1501 | Unskilled Labor [10.89 h]; Plumber [10.89 h]; Gate valves dia 150 mm - PT [0.2 nr] | 316 | L05 | Z9 | CONS | PT | Stem and Service box | bef |
|  | 8943 | **RHD4-02-002-Z9-L05-Irrigation Network - IRR** |  | 2027-06-10 | 2027-06-21 |  |  |  |  |  |  |  |  |  |
|  | 8951 | **RHD4-02-002-L05-(IRR)-HDPE Pipes - 500 mm diameter** |  | 2027-06-10 | 2027-06-21 |  |  |  |  |  |  |  |  |  |
| RHD4CZ9L05IRR1107 |  | Excavation works for HDPE Pipline 500 mm - (RD-L-5)-Z9-L05-IRR | 2d | 2027-06-10 | 2027-06-12 | RHD4ENSDZ9APPIRR140, RHD4ENMSRR2000, RHD4CZ9L05PT1501 | Skilled labor [17.42 h]; Unskilled Labor [17.42 h]; Equipment Opreator [21.02 h]; Excavator-Poclain [17.42 h]; Dump Truck [3.48 h]; HDPE (500mm Diameter) - TSE - Depth: less than 1.5m [24.07 m] | 15,551.8 | L05 | Z9 | CONS | IRR | Excavation | bef |
| RHD4CZ9L05IRR1207 |  | Bedding works for HDPE Pipline 500 mm - (RD-L-5)-Z9-L05-IRR | 2d | 2027-06-13 | 2027-06-14 | RHD4CZ9L05IRR1107 | Skilled labor [13.07 h]; Unskilled Labor [26.25 h]; Equipment Opreator [26.25 h]; Excavator-Poclain [13.07 h]; Dump Truck [13.07 h]; HDPE (500mm Diameter) - TSE - Depth: less than 1.5m [12.04 m] | 7,775.9 | L05 | Z9 | CONS | IRR | Bedding | bef |
| RHD4CZ9L05IRR1307 |  | Installing for HDPE Pipline 500 mm - (RD-L-5)-Z9-L05-IRR | 2d | 2027-06-15 | 2027-06-16 | RHD4PRSHLDOSIRR1000, RHD4PRSHLSTAGIRR1000, RHD4CZ9L05IRR1207 | Unskilled Labor [34.96 h]; Plumber [17.42 h]; Equipment Opreator [17.42 h]; Boom Truck [17.42 h]; HDPE (500mm Diameter) - TSE - Depth: less than 1.5m [108.33 m] | 69,983.12 | L05 | Z9 | CONS | IRR | Installation | bef |
| RHD4CZ9L05IRR1407 |  | Primary Test for HDPE Pipline 500 mm - (RD-L-5)-Z9-L05-IRR | 2d | 2027-06-17 | 2027-06-19 | RHD4CZ9L05IRR1307 | Unskilled Labor [5.23 h]; Plumber [5.23 h]; Equipment Opreator [5.23 h]; Water Truck [5.23 h]; HDPE (500mm Diameter) - TSE - Depth: less than 1.5m [48.15 m] | 31,103.61 | L05 | Z9 | CONS | IRR | Primary Test | bef |
| RHD4CZ9L05IRR1507 |  | Backfilling and warning tape works for HDPE Pipline 500 mm - (RD-L-5)-Z9-L05-IRR | 2d | 2027-06-20 | 2027-06-21 | RHD4CZ9L05IRR1407 | Skilled labor [13.07 h]; Unskilled Labor [26.25 h]; Equipment Opreator [26.25 h]; Excavator-Poclain [13.07 h]; Dump Truck [13.07 h]; HDPE (500mm Diameter) - TSE - Depth: less than 1.5m [48.15 m] | 31,103.61 | L05 | Z9 | CONS | IRR | Backfilling | bef |
|  | 8977 | **RHD4-02-002-Z9-L05-Medium Voltage Network - MV** |  | 2027-02-15 | 2027-02-24 |  |  |  |  |  |  |  |  |  |
|  | 8978 | **RHD4-02-002-L05-(MV)-Medium Voltage cable trench** |  |  |  |  |  |  |  |  |  |  |  |  |
|  | 8979 | **RHD4-02-002-L05-(MV)-Medium Voltage duct banks** |  | 2027-02-15 | 2027-02-24 |  |  |  |  |  |  |  |  |  |
| RHD4CZ9L05MV2100 |  | Excavation of Duct Banks for Medium Voltage Network - (RD-L-5)-Z9-L05-MV | 2d | 2027-02-15 | 2027-02-16 | RHD4ENSDZ9APPMV150, RHD4CZ9L05RD3100 | Unskilled Labor [12 h]; Equipment Opreator [24.07 h]; Excavator-Poclain [12 h]; Dump Truck [12 h]; Duct bank for MV cables UPVC (2xø150mm) [1.65 m] | 339.9 | L05 | Z9 | CONS | MV | Excavation | bef |
| RHD4CZ9L05MV2200 |  | Installation of Duct Banks for Medium Voltage Network - (RD-L-5)-Z9-L05-MV | 2d | 2027-02-17 | 2027-02-18 | RHD4PRSHLDOSMV1000, RHD4PRSHLSTAGMV1000, RHD4CZ9L05MV2100 | Unskilled Labor [17.97 h]; Equipment Opreator [36.05 h]; Excavator-Poclain [17.97 h]; Dump Truck [17.97 h]; Duct bank for MV cables UPVC (2xø150mm) [1.65 m] | 339.9 | L05 | Z9 | CONS | MV | Installing | bef |
| RHD4CZ9L05MV2300 |  | Pouring of Duct Banks for Medium Voltage Network - (RD-L-5)-Z9-L05-MV | 2d | 2027-02-20 | 2027-02-21 | RHD4CZ9L05MV2200 | Unskilled Labor [12 h]; Equipment Opreator [24.07 h]; Excavator-Poclain [12 h]; Dump Truck [12 h]; Duct bank for MV cables UPVC (2xø150mm) [10.75 m] | 2,214.5 | L05 | Z9 | CONS | MV | Pouring | bef |
| RHD4CZ9L05MV2400 |  | Backfilling of Duct Banks for Medium Voltage Network - (RD-L-5)-Z9-L05-MV | 2d | 2027-02-23 | 2027-02-24 | RHD4CZ9L05MV2300 | Unskilled Labor [9.04 h]; Equipment Opreator [17.97 h]; Excavator-Poclain [9.04 h]; Dump Truck [9.04 h]; Duct bank for MV cables UPVC (2xø150mm) [2.48 m] | 510.88 | L05 | Z9 | CONS | MV | Backfilling | bef |
|  | 8980 | **RHD4-02-002-L05-(MV)-Medium Voltage cables 3Cx 500 mm²** |  | 2027-02-15 | 2027-02-18 |  |  |  |  |  |  |  |  |  |
| RHD4CZ9L05MV3100 |  | Installation of Medium Voltage Cables 3Cx 500 mm² - (RD-L-5)-Z9-L05-MV | 2d | 2027-02-15 | 2027-02-16 | RHD4PRSHLDOSMV1100, RHD4ENMSMV2000, RHD4ENMSMV2010, RHD4PRSHLSTAGMV1100, RHD4CZ9L05RD3100 | Skilled labor [1.2 h]; Unskilled Labor [4.8 h]; Electrician [2.4 h]; Equipment Opreator [3.59 h]; Boom Truck [1.2 h]; Cable Laying Machine [2.4 h]; Cable 13.8 kV 3Cx 500 mm² Al/XLPE,/LLDPE / Unarmored [14.89 m] | 2,367.73 | L05 | Z9 | CONS | MV | Installation | AFT |
| RHD4CZ9L05MV3300 |  | Testing of Medium Voltage Cables 3Cx 500 mm² - (RD-L-5)-Z9-L05-MV | 2d | 2027-02-17 | 2027-02-18 | RHD4CZ9L05MV3100 | Skilled labor [0.33 h]; Unskilled Labor [1.42 h]; Electrician [0.8 h]; Cable 13.8 kV 3Cx 500 mm² Al/XLPE,/LLDPE / Unarmored [1.65 m] | 263.08 | L05 | Z9 | CONS | MV | Testing | AFT |

| ID | WBS | Activity | Duration | Start | Finish | Predecessors | Resources | Cost | RDH4-01-001-Road and Block Names-1 | RDH4-01-001-Zones-1 | RDH4-01-001-Phases-1 | RDH4-01-001-Networks-1 | RDH4-01-001-Work Method-1 | RDH4-01-001-MENEM |
| --- | --- | --- | --- | --- | --- | --- | --- | --- | --- | --- | --- | --- | --- | --- |
|  | 8984 | **RHD4-02-002-Z9-L05-Low Voltage Network - LV** |  | 2027-06-22 | 2027-07-05 |  |  |  |  |  |  |  |  |  |
|  | 8985 | **RHD4-02-002-L05-(LV)-Low Voltage duct banks** |  |  |  |  |  |  |  |  |  |  |  |  |
|  | 8987 | **RHD4-02-002-L05-(LV)-Low Voltage cables** |  | 2027-06-22 | 2027-07-05 |  |  |  |  |  |  |  |  |  |
| RHD4CZ9L05LV3100 |  | Excavation for Low Voltage Cables for Low Voltage Network - (RD-L-5)-Z9-L05-LV | 4d | 2027-06-22 | 2027-06-26 | RHD4ENSDZ9APPLV160, RHD4CZ9L05MV3300, RHD4CZ9L05IRR1507 | Skilled labor [38.99 h]; Unskilled Labor [77.97 h]; Equipment Opreator [77.97 h]; Excavator-Poclain [38.99 h]; Boom Truck [38.99 h]; Cable, Copper 4x70mm2/ CU/XLPE/PVC [30.87 m]; Cable, Copper 3x10mm2/ CU/XLPE/SWA/PVC [148.14 m] | 10,994.41 | L05 | Z9 | CONS | LV | Excavation | AFT |
| RHD4CZ9L05LV3200 |  | Cable Laying of Low Voltage Cables for Low Voltage Network - (RD-L-5)-Z9-L05-LV | 3d | 2027-06-27 | 2027-06-29 | RHD4PRSHLDOSLV1100, RHD4ENMSLV2000, RHD4ENMSLV2010, RHD4PRSHLSTAGLV1100, RHD4CZ9L05LV3100 | Skilled labor [32.45 h]; Unskilled Labor [129.92 h]; Electrician [65.02 h]; Equipment Opreator [97.47 h]; Boom Truck [32.45 h]; Cable Laying Machine [65.02 h]; Cable, Copper 4x70mm2/ CU/XLPE/PVC [92.61 m]; Cable, Copper 3x10mm2/ CU/XLPE/SWA/PVC [444.43 m] | 32,983.23 | L05 | Z9 | CONS | LV | Cable Laying | AFT |
| RHD4CZ9L05LV3300 |  | Warning tape and Backfill for Low Voltage Cables for Low Voltage Network - (RD-L-5)-Z9-L05-LV | 3d | 2027-06-30 | 2027-07-03 | RHD4CZ9L05LV3200 | Skilled labor [32.45 h]; Unskilled Labor [129.92 h]; Electrician [65.02 h]; Equipment Opreator [32.45 h]; Boom Truck [32.45 h]; Cable, Copper 4x70mm2/ CU/XLPE/PVC [23.15 m]; Cable, Copper 3x10mm2/ CU/XLPE/SWA/PVC [111.11 m] | 8,245.81 | L05 | Z9 | CONS | LV | Warning tape and Backfill | AFT |
| RHD4CZ9L05LV3400 |  | Testing of Low Voltage Cables for Low Voltage Network - (RD-L-5)-Z9-L05-LV | 2d | 2027-07-04 | 2027-07-05 | RHD4CZ9L05LV3300 | Skilled labor [19.49 h]; Unskilled Labor [77.97 h]; Electrician [38.99 h]; Equipment Opreator [19.49 h]; Boom Truck [19.49 h]; Cable, Copper 4x70mm2/ CU/XLPE/PVC [7.72 m]; Cable, Copper 3x10mm2/ CU/XLPE/SWA/PVC [37.04 m] | 2,748.6 | L05 | Z9 | CONS | LV | Testing | AFT |
|  | 8990 | **RHD4-02-002-Z9-L05-Street Lighting Network - SL** |  | 2027-06-10 | 2027-08-03 |  |  |  |  |  |  |  |  |  |
|  | 8991 | **RHD4-02-002-L05-(SL)-Street Lighting duct banks** |  | 2027-06-10 | 2027-06-19 |  |  |  |  |  |  |  |  |  |
| RHD4CZ9L05SL2100 |  | Excavation of Duct Banks for Street Lighting Network - (RD-L-5)-Z9-L05-SL | 2d | 2027-06-10 | 2027-06-12 | RHD4ENSDZ9APPSL170, RHD4CZ9L05IRR1107 SS, RHD4CZ9L05MV2400 | Skilled labor [12.2 h]; Unskilled Labor [12.2 h]; Equipment Opreator [24.39 h]; Excavator-Poclain [12.2 h]; Dump Truck [12.2 h]; Road Crossing Duct for Street Lighting cables UPVC (2x?110mm) [1.68 m] | 339.08 | L05 | Z9 | CONS | SL | Excavation | bef |
| RHD4CZ9L05SL2200 |  | Installation of Duct Banks for Street Lighting Network - (RD-L-5)-Z9-L05-SL | 2d | 2027-06-13 | 2027-06-14 | RHD4PRSHLDOSSL1000, RHD4PRSHLSTAGSL1000, RHD4CZ9L05SL2100 | Carpenter [1.85 h]; Skilled labor [18.3 h]; Unskilled Labor [18.3 h]; Steel Fixer [1.85 h]; Road Crossing Duct for Street Lighting cables UPVC (2x?110mm) [1.68 m] | 339.08 | L05 | Z9 | CONS | SL | Installing | bef |
| RHD4CZ9L05SL2300 |  | Pouring of Duct Banks for Street Lighting Network - (RD-L-5)-Z9-L05-SL | 2d | 2027-06-15 | 2027-06-16 | RHD4CZ9L05SL2200 | Skilled labor [12.2 h]; Unskilled Labor [12.2 h]; Equipment Opreator [4.9 h]; Concrete Mixer Truck [2.4 h]; Concrete Pump [2.4 h]; Road Crossing Duct for Street Lighting cables UPVC (2x?110mm) [10.91 m] | 2,204 | L05 | Z9 | CONS | SL | Pouring | bef |
| RHD4CZ9L05SL2400 |  | Backfilling of Duct Banks for Street Lighting Network - (RD-L-5)-Z9-L05-SL | 2d | 2027-06-17 | 2027-06-19 | RHD4CZ9L05SL2300 | Skilled labor [9.15 h]; Unskilled Labor [9.15 h]; Equipment Opreator [3.7 h]; Excavator-Poclain [3.7 h]; Road Crossing Duct for Street Lighting cables UPVC (2x?110mm) [2.52 m] | 508.62 | L05 | Z9 | CONS | SL | Backfilling | bef |
|  | 8992 | **RHD4-02-002-L05-(SL)-Street Lighting Drawpit** |  | 2027-07-06 | 2027-07-10 |  |  |  |  |  |  |  |  |  |
| RHD4CZ9L05SL5100 |  | Excavation of Drawpit size 600x600x900mm for Street Lighting Network - (RD-L-5)-Z9-L05-SL | 2d | 2027-07-06 | 2027-07-07 | RHD4ENSDZ9APPSL170, RHD4CZ9L05SL2300, RHD4CZ9L05LV3400 | Skilled labor [1.85 h]; Unskilled Labor [1.85 h]; Equipment Opreator [1.42 h]; Excavator-Poclain [0.8 h]; Dump Truck [0.8 h]; Drawpit with medium duty steel cover, size600x600x900mm, [0.3 Unit] | 735.3 | L05 | Z9 | CONS | SL | Excavation | AFT |
| RHD4CZ9L05SL5200 |  | Installation of Drawpit size 600x600x900mm for Street Lighting Network - (RD-L-5)-Z9-L05-SL | 2d | 2027-07-08 | 2027-07-10 | RHD4PRSHLDOSSL1400, RHD4PRSHLSTAGSL1400, RHD4CZ9L05SL5100 | Skilled labor [1.85 h]; Unskilled Labor [1.85 h]; Equipment Opreator [0.8 h]; Boom Truck [0.8 h]; Drawpit with medium duty steel cover, size600x600x900mm, [1.7 Unit] | 4,166.7 | L05 | Z9 | CONS | SL | Installation | AFT |
|  | 8993 | **RHD4-02-002-L05-(SL)-Street Lighting cables** |  | 2027-07-11 | 2027-07-20 |  |  |  |  |  |  |  |  |  |
| RHD4CZ9L05SL3100 |  | Excavation for Street Lighting Cables for Street Lighting Network - (RD-L-5)-Z9-L05-SL | 3d | 2027-07-11 | 2027-07-13 | RHD4ENSDZ9APPSL170, RHD4CZ9L05SL5200 | Skilled labor [26.03 h]; Unskilled Labor [51.95 h]; Equipment Opreator [51.95 h]; Excavator-Poclain [26.03 h]; Boom Truck [26.03 h]; Cable, Copper 4x10mm2/ CU/XLPE/SWA/PVC + 1x10mm2 CU/PVC [119.32 m] | 5,846.85 | L05 | Z9 | CONS | SL | Excavation | AFT |
| RHD4CZ9L05SL3200 |  | Cable Laying of Street Lighting Cables for Street Lighting Network - (RD-L-5)-Z9-L05-SL | 2d | 2027-07-14 | 2027-07-15 | RHD4PRSHLDOSSL1100, RHD4ENMSSL2000, RHD4ENMSSL2010, RHD4PRSHLSTAGSL1100, RHD4CZ9L05SL3100 | Skilled labor [21.67 h]; Unskilled Labor [86.58 h]; Electrician [43.34 h]; Equipment Opreator [65.02 h]; Boom Truck [21.67 h]; Cable Laying Machine [43.34 h]; Cable, Copper 4x10mm2/ CU/XLPE/SWA/PVC + 1x10mm2 CU/PVC [357.97 m] | 17,540.54 | L05 | Z9 | CONS | SL | Cable Laying | AFT |
| RHD4CZ9L05SL3300 |  | Warning tape and Backfill for Street Lighting Cables for Street Lighting Network - (RD-L-5)-Z9-L05-SL | 2d | 2027-07-17 | 2027-07-18 | RHD4CZ9L05SL3200 | Skilled labor [21.67 h]; Unskilled Labor [86.58 h]; Electrician [43.34 h]; Equipment Opreator [21.67 h]; Boom Truck [21.67 h]; Cable, Copper 4x10mm2/ CU/XLPE/SWA/PVC + 1x10mm2 CU/PVC [89.49 m] | 4,385.13 | L05 | Z9 | CONS | SL | Warning tape and Backfill | AFT |
| RHD4CZ9L05SL3400 |  | Testing of Street Lighting Cables for Street Lighting Network - (RD-L-5)-Z9-L05-SL | 2d | 2027-07-19 | 2027-07-20 | RHD4CZ9L05SL3300 | Skilled labor [12.96 h]; Unskilled Labor [51.95 h]; Electrician [26.03 h]; Equipment Opreator [12.96 h]; Boom Truck [12.96 h]; Cable, Copper 4x10mm2/ CU/XLPE/SWA/PVC + 1x10mm2 CU/PVC [29.83 m] | 1,461.71 | L05 | Z9 | CONS | SL | Testing | AFT |
|  | 8994 | **RHD4-02-002-L05-(SL)-Street Lighting Poles** |  | 2027-07-21 | 2027-08-01 |  |  |  |  |  |  |  |  |  |
| RHD4CZ9L05SL1100 |  | Excavation for RC Base for Lighting Poles for Street Lighting Network - (RD-L-5)-Z9-L05-SL | 2d | 2027-07-21 | 2027-07-22 | RHD4ENSDZ9APPSL170, RHD4CZ9L05SL3400 | Skilled labor [8.71 h]; Unskilled Labor [8.71 h]; Equipment Opreator [17.42 h]; Excavator-Poclain [8.71 h]; Dump Truck [8.71 h]; Lighting poles single arms, height of ( 10 ) meters [1.2 Unit] | 4,088.4 | L05 | Z9 | CONS | SL | Excavation | AFT |
| RHD4CZ9L05SL1200 |  | Installation for RC Base for Lighting Poles for Street Lighting Network - (RD-L-5)-Z9-L05-SL | 2d | 2027-07-24 | 2027-07-25 | RHD4CZ9L05SL1100 | Skilled labor [8.71 h]; Unskilled Labor [8.71 h]; Equipment Opreator [17.42 h]; Excavator-Poclain [8.71 h]; Dump Truck [8.71 h]; Lighting poles single arms, height of ( 10 ) meters [3 Unit] | 10,221 | L05 | Z9 | CONS | SL | RC Base | AFT |
| RHD4CZ9L05SL1300 |  | Backfill for RC Base for Lighting Poles for Street Lighting Network - (RD-L-5)-Z9-L05-SL | 2d | 2027-07-26 | 2027-07-27 | RHD4CZ9L05SL1200 | Skilled labor [8.71 h]; Unskilled Labor [8.71 h]; Equipment Opreator [17.42 h]; Excavator-Poclain [8.71 h]; Dump Truck [8.71 h]; Lighting poles single arms, height of ( 10 ) meters [0.6 Unit] | 2,044.2 | L05 | Z9 | CONS | SL | Backfill | AFT |
| RHD4CZ9L05SL1400 |  | Installation for Lighting Poles for Street Lighting Network - (RD-L-5)-Z9-L05-SL | 2d | 2027-07-28 | 2027-07-29 | RHD4PRSHLDOSSL1200, RHD4ENMSSL2000, RHD4ENMSSL2010, RHD4PRSHLSTAGSL1200, RHD4CZ9L05SL1300 | Skilled labor [13.07 h]; Unskilled Labor [13.07 h]; Electrician [13.07 h]; Equipment Opreator [13.07 h]; Boom Truck [13.07 h]; Lighting poles single arms, height of ( 10 ) meters [7.2 Unit] | 24,530.4 | L05 | Z9 | CONS | SL | Poles Installation | AFT |
| RHD4CZ9L05SL1500 |  | Luminaire Installation for Lighting Poles for Street Lighting Network - (RD-L-5)-Z9-L05-SL | 2d | 2027-07-31 | 2027-08-01 | RHD4PRSHLDOSSL1300, RHD4PRSHLSTAGSL1300, RHD4CZ9L05SL1400 | Unskilled Labor [17.42 h]; Electrician [8.71 h]; Equipment Opreator [1.74 h]; Boom Truck [3.48 h]; Street Lighting( LED) Luminaire of Output ?10898 lumen [12 Unit] | 7,056 | L05 | Z9 | CONS | SL | Luminaire Installation | AFT |

| ID | WBS | Activity | Duration | Start | Finish | Predecessors | Resources | Cost | RDH4-01-001-Road and Block Names-1 | RDH4-01-001-Zones-1 | RDH4-01-001-Phases-1 | RDH4-01-001-Networks-1 | RDH4-01-001-Work Method-1 | RDH4-01-001-MENEM |
| --- | --- | --- | --- | --- | --- | --- | --- | --- | --- | --- | --- | --- | --- | --- |
|  | 8996 | **RHD4-02-002-L05-(SL)-Street Lighting Earthing System** |  | 2027-08-02 | 2027-08-03 |  |  |  |  |  |  |  |  |  |
| RHD4CZ9L05SL6100 |  | Installation of Earthing for Lighting Poles and Fedder Pillers for Street Lighting Network - (RD-L-5)-Z9-L05-SL | 2d | 2027-08-02 | 2027-08-03 | RHD4ENMSER2000, RHD4ENMSER2010, RHD4CZ9L05SL1500 | Skilled labor [0.8 h]; Unskilled Labor [0.8 h]; Equipment Opreator [1.42 h]; Excavator-Poclain [0.8 h]; Dump Truck [0.8 h]; Including lighting poles circuits - ER [1 Unit] | 613 | L05 | Z9 | CONS | SL | Installation | AFT |
|  | 9002 | **RHD4-02-002-Z9-L05-Telecommunications Network - TC** |  | 2027-08-04 | 2027-08-19 |  |  |  |  |  |  |  |  |  |
|  | 9003 | **RHD4-02-002-L05-(TC)-Telecommunications Ducts** |  | 2027-08-04 | 2027-08-15 |  |  |  |  |  |  |  |  |  |
| RHD4CZ9L05TC2100 |  | Excavation of HDPE Ducts for Telecom Network - (RD-L-5)-Z9-L05-TC | 3d | 2027-08-04 | 2027-08-07 | RHD4ENSDZ9APPTC190, RHD4CZ9L05SL6100 | Skilled labor [22.76 h]; Unskilled Labor [22.76 h]; Equipment Opreator [45.6 h]; Excavator-Poclain [22.76 h]; Dump Truck [22.76 h]; (6*50mm) HDPE ducts -TC [56.42 m]; (6*50mm+2*32mm) HDPE ducts -TC [5.88 m]; (2*32mm) HDPE ducts -TC [0.5 m] | 5,622.88 | L05 | Z9 | CONS | TC | Excavation | AFT |
| RHD4CZ9L05TC2200 |  | Installation of HDPE Ducts for Telecom Network - (RD-L-5)-Z9-L05-TC | 4d | 2027-08-08 | 2027-08-11 | RHD4PRSHLDOSTC1000, RHD4PRSHLSTAGTC1000, RHD4CZ9L05TC2100 | Carpenter [3.38 h]; Skilled labor [34.2 h]; Unskilled Labor [34.2 h]; Steel Fixer [3.38 h]; (6*50mm) HDPE ducts -TC [183.37 m]; (6*50mm+2*32mm) HDPE ducts -TC [19.11 m]; (2*32mm) HDPE ducts -TC [1.63 m] | 18,274.53 | L05 | Z9 | CONS | TC | Installing | AFT |
| RHD4CZ9L05TC2400 |  | Backfilling of HDPE Ducts for Telecom Network - (RD-L-5)-Z9-L05-TC | 3d | 2027-08-12 | 2027-08-15 | RHD4CZ9L05TC2200 | Skilled labor [22.76 h]; Unskilled Labor [22.76 h]; Equipment Opreator [9.15 h]; Excavator-Poclain [9.15 h]; (6*50mm) HDPE ducts -TC [42.31 m]; (6*50mm+2*32mm) HDPE ducts -TC [4.41 m]; (2*32mm) HDPE ducts -TC [0.38 m] | 4,217.33 | L05 | Z9 | CONS | TC | Backfilling | AFT |
|  | 9004 | **RHD4-02-002-L05-(TC)-Telecommunications Manholes** |  | 2027-08-16 | 2027-08-19 |  |  |  |  |  |  |  |  |  |
| RHD4CZ9L05TC5100 |  | Excavation for Manholes for Telecom Network - (RD-L-5)-Z9-L05-TC | 2d | 2027-08-16 | 2027-08-17 | RHD4ENSDZ9APPTC190, RHD4CZ9L05TC2400 | Skilled labor [5.45 h]; Unskilled Labor [5.45 h]; Equipment Opreator [4.36 h]; Excavator-Poclain [2.18 h]; Dump Truck [2.18 h]; Manhole Type 1 - TC [0.6 nr] | 4,044.6 | L05 | Z9 | CONS | TC | Excavation | AFT |
| RHD4CZ9L05TC5200 |  | Installation of Manholes for Telecom Network - (RD-L-5)-Z9-L05-TC | 2d | 2027-08-18 | 2027-08-19 | RHD4PRSHLDOSTC1200, RHD4PRSHLSTAGTC1200, RHD4CZ9L05TC5100 | Skilled labor [5.45 h]; Unskilled Labor [5.45 h]; Equipment Opreator [2.18 h]; Boom Truck [2.18 h]; Manhole Type 1 - TC [3.4 nr] | 22,919.4 | L05 | Z9 | CONS | TC | Installation | AFT |
|  | 9006 | **RHD4-02-002-Z9-L05-Information and Communication Technologies - ICT** |  | 2027-08-21 | 2027-08-26 |  |  |  |  |  |  |  |  |  |
|  | 9007 | **RHD4-02-002-L05-(ICT)-Information and Communication Technologies Ducts** |  | 2027-08-21 | 2027-08-26 |  |  |  |  |  |  |  |  |  |
| RHD4CZ9L05ICT2100 |  | Excavation of HDPE Ducts for ICT Network - (RD-L-5)-Z9-L05-ICT | 2d | 2027-08-21 | 2027-08-22 | RHD4ENSDZ9APPICT200, RHD4CZ9L05TC5200 | Skilled labor [12.09 h]; Unskilled Labor [12.09 h]; Equipment Opreator [24.07 h]; Excavator-Poclain [12.09 h]; Dump Truck [12.09 h]; (2*50mm) HDPE ducts -ICT [33.18 m] | 1,260.84 | L05 | Z9 | CONS | ICT | Excavation | AFT |
| RHD4CZ9L05ICT2200 |  | Installation of HDPE Ducts for ICT Network - (RD-L-5)-Z9-L05-ICT | 2d | 2027-08-23 | 2027-08-24 | RHD4PRSHLDOSICT1000, RHD4PRSHLSTAGICT1000, RHD4CZ9L05ICT2100 | Carpenter [1.85 h]; Skilled labor [18.08 h]; Unskilled Labor [18.08 h]; Steel Fixer [1.85 h]; (2*50mm) HDPE ducts -ICT [107.83 m] | 4,097.73 | L05 | Z9 | CONS | ICT | Installing | AFT |
| RHD4CZ9L05ICT2400 |  | Backfilling of HDPE Ducts for ICT Network - (RD-L-5)-Z9-L05-ICT | 2d | 2027-08-25 | 2027-08-26 | RHD4CZ9L05ICT2200 | Skilled labor [12.09 h]; Unskilled Labor [12.09 h]; Equipment Opreator [4.8 h]; Excavator-Poclain [4.8 h]; (2*50mm) HDPE ducts -ICT [24.89 m] | 945.63 | L05 | Z9 | CONS | ICT | Backfilling | AFT |
|  | 9008 | **RHD4-02-002-L05-(ICT)-Information and Communication Technologies Manholes** |  |  |  |  |  |  |  |  |  |  |  |  |
|  | 8997 | **RHD4-02-002-Z9-L05-Landscape Network - LS** |  |  |  |  |  |  |  |  |  |  |  |  |
|  | 8998 | **RHD4-02-002-L05-(LS)-Landscape Lighting cables** |  |  |  |  |  |  |  |  |  |  |  |  |
|  | 8999 | **RHD4-02-002-L05-(LS)-Landscape Feeder Pillars** |  |  |  |  |  |  |  |  |  |  |  |  |
|  | 9000 | **RHD4-02-002-L05-(LS)-Landscape Bollard Poles** |  |  |  |  |  |  |  |  |  |  |  |  |
|  | 9001 | **RHD4-02-002-L05-(LS)-Landscape Feeder Pillars Earthing** |  |  |  |  |  |  |  |  |  |  |  |  |
|  | 9010 | **RHD4-02-002-Z9-L05-Security Network - CCTV** |  |  |  |  |  |  |  |  |  |  |  |  |
|  | 9011 | **RHD4-02-002-L05-(CCTV)-Civil Works** |  |  |  |  |  |  |  |  |  |  |  |  |
|  | 9027 | **RHD4-02-002-Z9-L06** |  | 2026-08-29 | 2027-11-14 |  |  |  |  |  |  |  |  |  |
|  | 9058 | **RHD4-02-002-Z9-L06-Crossings Sewage Network - SWCr** |  |  |  |  |  |  |  |  |  |  |  |  |
|  | 9068 | **RHD4-02-002-L06-(SWCr)-MH Works - 1200 mm diameter** |  |  |  |  |  |  |  |  |  |  |  |  |
|  | 9069 | **RHD4-02-002-L06-(SWCr)-MH Works - 1200 mm diameter with Back drop** |  |  |  |  |  |  |  |  |  |  |  |  |
|  | 9064 | **RHD4-02-002-L06-(SWCr)-UPVC Pipes - 200 mm diameter** |  |  |  |  |  |  |  |  |  |  |  |  |
|  | 9102 | **RHD4-02-002-Z9-L06-Crossings Potable Network - PTCr** |  |  |  |  |  |  |  |  |  |  |  |  |
|  | 9103 | **RHD4-02-002-L06-(PTCr)-HDPE Pipes - 110 mm diameter** |  |  |  |  |  |  |  |  |  |  |  |  |
|  | 9108 | **RHD4-02-002-L06-(PTCr)-Gate Valves (Direct Buried)** |  |  |  |  |  |  |  |  |  |  |  |  |
|  | 9149 | **RHD4-02-002-Z9-L06-Crossings Irrigation Network - IRRC** |  |  |  |  |  |  |  |  |  |  |  |  |
|  | 9150 | **RHD4-02-002-L06-(IRRC)-HDPE Pipes - 160 mm diameter** |  |  |  |  |  |  |  |  |  |  |  |  |
|  | 9158 | **RHD4-02-002-L06-(IRRC)-Gate Valves (Direct Buried)** |  |  |  |  |  |  |  |  |  |  |  |  |
|  | 9206 | **RHD4-02-002-Z9-L06-Road Works - RD** |  | 2027-02-01 | 2027-11-14 |  |  |  |  |  |  |  |  |  |
|  | 9207 | **RHD4-02-002-L06-(RD)-Subgrade** |  | 2027-02-01 | 2027-02-10 |  |  |  |  |  |  |  |  |  |
| RHD4CZ9L06RD1100 |  | Supply, lay and compaction subgrade compacted thickness 300 mm for Roads - (RD-L-6)-Z9-L06-RD | 9d | 2027-02-01 | 2027-02-10 | RHD4ENSDZ9APPEW100, RHD4ENSDZ9APPRD220, RHD4CZ9L06ST1506 | Skilled labor [92.68 h]; Unskilled Labor [185.46 h]; Electrician [92.68 h]; Equipment Opreator [633.27 h]; Water Truck [30.6 h]; Roller compactor [46.4 h]; Grader [92.68 h]; Dump Truck [463.6 h]; Subgrade [4459.16 m3] | 84,724.04 | L06 | Z9 | CONS | RD | Subgrade | bef |

| ID | WBS | Activity | Duration | Start | Finish | Predecessors | Complete | Remaining | Planned start | Planned finish | Resources | Cost | Actual cost | RDH4-01-001-Road and Block Names-1 | RDH4-01-001-Zones-1 | RDH4-01-001-Phases-1 | RDH4-01-001-Networks-1 | RDH4-01-001-Work Method-1 | RDH4-01-001-MENEM |
| --- | --- | --- | --- | --- | --- | --- | --- | --- | --- | --- | --- | --- | --- | --- | --- | --- | --- | --- | --- |
|  | 9208 | **RHD4-02-002-L06-(RD)-Aggregate Base Course** |  | 2027-02-11 | 2027-02-18 |  |  |  |  |  |  |  |  |  |  |  |  |  |  |
| RHD4CZ9L06RD2100 |  | Supply, lay and compaction Aggregate base course compacted thickness 300 mmfor Roads - (RD-L-6)-Z9-L06-RD | 7d | 2027-02-11 | 2027-02-18 | RHD4PRSHLDOSRD1000, RHD4PRSHLSTAGRD1000, RHD4CZ9L06RD1100 |  |  |  |  | Skilled labor [34.3 h]; Unskilled Labor [68.72 h]; Equipment Opreator [434.74 h]; Water Truck [22.65 h]; Roller compactor [68.72 h]; Grader [68.72 h]; Dump Truck [274.65 h]; Aggregate Base Courses [2800.8 m3] | 159,645.6 |  | L06 | Z9 | CONS | RD | ABC | bef |
|  | 9209 | **RHD4-02-002-L06-(RD)-Bituminous base course Two Layers, including (MC1)&(RC2)** |  | 2027-03-04 | 2027-10-11 |  |  |  |  |  |  |  |  |  |  |  |  |  |  |
| RHD4CZ9L06RD3100 |  | Supply, lay and Asphaltic base course including Prime Coat (MC1) for 1st Layer - (RD-L-6)-Z9-L06-RD | 2d | 2027-03-04 | 2027-03-06 | RHD4PRSHLDOSRD1100, RHD4ENMSASPH2000, RHD4ENMSASPH2010, RHD4PRSHLSTAGRD1100, RHD4CZ9L06RD2100, RHD4CZ4C031RD3100 |  |  |  |  | Skilled labor [10.89 h]; Unskilled Labor [65.23 h]; Equipment Opreator [163.03 h]; Bobcat [10.89 h]; Roller compactor [10.89 h]; Asphalt Paver [10.89 h]; Rubber Compactor [21.78 h]; MC1/RC2 Sprinkler [10.89 h]; Dump Truck [97.8 h]; Bituminous base course (Grading I - Class A), including Prime coat (MC1) & tack coate (RC2) [397.68 m3] | 190,091.04 |  | L06 | Z9 | CONS | RD | 150 mm | AFT |
| RHD4CZ9L06RD3200 |  | Supply, lay and Asphaltic base course including Tack Coat (RC2) for 2nd Layer - (RD-L-6)-Z9-L06-RD | 2d | 2027-10-10 | 2027-10-11 | RHD4PRSHLDOSRD1100, RHD4PRSHLSTAGRD1100, RHD4CZ9L06ICT5200 |  |  |  |  | Skilled labor [10.89 h]; Unskilled Labor [65.23 h]; Equipment Opreator [163.03 h]; Bobcat [10.89 h]; Roller compactor [10.89 h]; Asphalt Paver [10.89 h]; Rubber Compactor [21.78 h]; MC1/RC2 Sprinkler [10.89 h]; Dump Truck [97.8 h]; Bituminous base course (Grading I - Class A), including Prime coat (MC1) & tack coate (RC2) [397.68 m3] | 190,091.04 |  | L06 | Z9 | CONS | RD | 150 mm | AFT |
|  | 9211 | **RHD4-02-002-L06-(RD)-Precast Concrete Curb** |  | 2027-10-12 | 2027-10-16 |  |  |  |  |  |  |  |  |  |  |  |  |  |  |
| RHD4CZ9L06RD5100 |  | Supply and installation Precast Concrete Kerb for Roads - (RD-L-6)-Z9-L06-RD | 4d | 2027-10-12 | 2027-10-16 | RHD4PRSHLDOSRD1200, RHD4ENMSRD2000, RHD4ENMSRD2010, RHD4PRSHLSTAGRD1200, RHD4CZ9L06RD3200 |  |  |  |  | Mason [120.34 h]; Skilled labor [40.08 h]; Unskilled Labor [120.34 h]; Equipment Opreator [80.26 h]; Bobcat [40.08 h]; Concrete Mixer Truck [40.08 h]; Precast Concrete Curbstone, type K1 [1263 m]; Precast Flush concrete Curbstone K3 [395.15 m] | 91,198.03 |  | L06 | Z9 | CONS | RD | Curbs | AFT |
|  | 9214 | **RHD4-02-002-L06-(RD)-Traffic Signage** |  | 2027-10-17 | 2027-10-25 |  |  |  |  |  |  |  |  |  |  |  |  |  |  |
| RHD4CZ9L06RD8100 |  | Installation of Traffic Signage for Road Network - (RD-L-6)-Z9-L06-RD | 8d | 2027-10-17 | 2027-10-25 | RHD4PRSHLDOSRD1600, RHD4PRSHLSTAGRD1600, RHD4CZ9L06RD5100 |  |  |  |  | Skilled labor [174.25 h]; Unskilled Labor [87.12 h]; Electrician [35.94 h]; Equipment Opreator [31.8 h]; Boom Truck [17.42 h]; Concrete Mixer Truck [14.4 h]; Traffic signs, ground mounted, 1 Sheet Aluminium, (breakaway)Single post [31 nr] | 38,006 |  | L06 | Z9 | CONS | RD | Traffic Signage | AFT |
|  | 9212 | **RHD4-02-002-L06-(RD)-Precast Interlocking Block Pavers** |  | 2027-10-26 | 2027-11-04 |  |  |  |  |  |  |  |  |  |  |  |  |  |  |
| RHD4CZ9L06RD6100 |  | Interlocking block pavers for sidewalk-footpath for Side walks and Parking areas - (RD-L-6)-Z9-L06-RD | 9d | 2027-10-26 | 2027-11-04 | RHD4PRSHLDOSRD1300, RHD4PRSHLDOSRD1400, RHD4ENMSRD2000, RHD4ENMSRD2010, RHD4PRSHLSTAGRD1300, RHD4PRSHLSTAGRD1400, RHD4CZ9L06RD8100 |  |  |  |  | Skilled labor [180.24 h]; Unskilled Labor [270.4 h]; Equipment Opreator [292.95 h]; Boom Truck [90.17 h]; Bobcat [90.17 h]; Concrete Mixer Truck [90.17 h]; Water Truck [22.54 h]; Interlock 80 mm thick Pavers for parking including sand fill [2069 m2] | 153,106 |  | L06 | Z9 | CONS | RD | Interlocking | AFT |
|  | 9210 | **RHD4-02-002-L06-(RD)-Bituminous concrete wearing course including tack coat (RC2)** |  | 2027-11-06 | 2027-11-07 |  |  |  |  |  |  |  |  |  |  |  |  |  |  |
| RHD4CZ9L06RD4100 |  | Supply, lay and compaction Asphaltic wearing course including tack Coat (RC2)for Road Network - (RD-L-6)-Z9-L06-RD | 2d | 2027-11-06 | 2027-11-07 | RHD4CZ9L06RD5100, RHD4CZ9L06RD6100 |  |  |  |  | Skilled labor [12 h]; Unskilled Labor [72 h]; Equipment Opreator [180 h]; Bobcat [12 h]; Roller compactor [12 h]; Asphalt Paver [12 h]; Rubber Compactor [23.96 h]; MC1/RC2 Sprinkler [12 h]; Dump Truck [108 h]; Bituminous concrete wearing course, (Grading I - Class A), including tack coat (RC2) [572.3 m3] | 310,758.9 |  | L06 | Z9 | CONS | RD | 50 mm | AFT |
|  | 9213 | **RHD4-02-002-L06-(RD)-Pavement Marking** |  | 2027-11-08 | 2027-11-14 |  |  |  |  |  |  |  |  |  |  |  |  |  |  |
| RHD4CZ9L06RD7100 |  | Pavement Markings for Road Network - (RD-L-6)-Z9-L06-RD | 6d | 2027-11-08 | 2027-11-14 | RHD4PRSHLDOSRD1500, RHD4PRSHLSTAGRD1500, RHD4CZ9L06RD4100 |  |  |  |  | Skilled labor [55.54 h]; Unskilled Labor [110.97 h]; Equipment Opreator [55.54 h]; Road Marking Machine [55.54 h]; Retroreflective Thermoplastic White Traffic Markings [202.98 m2]; Retroreflective Thermoplastic Yellow, Traffic Markings [178.97 m2]; Rumble strip [85 m]; Retroreflective raised pavement markers (cat eyes) [831 nr] | 50,549.45 |  | L06 | Z9 | CONS | RD | Pavement Marking | AFT |
|  | 9031 | **RHD4-02-002-Z9-L06-Storm Network - ST** |  | 2026-08-29 | 2027-05-30 |  |  |  |  |  |  |  |  |  |  |  |  |  |  |
|  | 5251 | **RHD4-02-002-L06-(ST)-GRP Pipes - 600 mm diameter** |  | 2026-08-30 | 2027-05-05 |  |  |  |  |  |  |  |  |  |  |  |  |  |  |
| RHD4CZ9L06ST1102 |  | Excavation works for GRP Pipe Line 600 mm - (RD-L-6)-Z9-L06-ST | 2d | 2026-08-30 A | 2026-08-31 A | RHD4CZ9L06ST1103 | 100% |  | 2026-12-12 | 2026-12-13 | Skilled labor [4.47 h]; Unskilled Labor [4.47 h]; Equipment Opreator [5.34 h]; Excavator-Poclain [4.47 h]; Dump Truck [0.87 h]; GRP (600mm Diameter) - ST - Depth less than 1.5 m [10.25 m] | 4,417.75 | 4,417.75 | L06 | Z9 | CONS | ST | Excavation | bef |
| RHD4CZ9L06ST1202 |  | Bedding works for GRP Pipe Line 600 mm - (RD-L-6)-Z9-L06-ST | 2d | 2026-09-01 A | 2026-09-02 A | RHD4CZ9L06ST1102 | 100% |  | 2026-12-14 | 2026-12-15 | Skilled labor [3.7 h]; Unskilled Labor [7.41 h]; Equipment Opreator [7.41 h]; Excavator-Poclain [3.7 h]; Dump Truck [3.7 h]; GRP (600mm Diameter) - ST - Depth less than 1.5 m [5.12 m] | 2,206.72 | 2,206.72 | L06 | Z9 | CONS | ST | Bedding | bef |
| RHD4CZ9L06ST1302 |  | Installing for GRP Pipe Line 600 mm - (RD-L-6)-Z9-L06-ST | 2d | 2026-09-05 A | 2026-09-06 A | RHD4CZ9L06ST1202 | 100% |  | 2026-12-16 | 2026-12-17 | Unskilled Labor [14.92 h]; Plumber [7.41 h]; GRP (600mm Diameter) - ST - Depth less than 1.5 m [46.12 m] | 19,877.72 | 19,877.72 | L06 | Z9 | CONS | ST | Installation | bef |
| RHD4CZ9L06ST1502 |  | Backfilling and warning tape works for GRP Pipe Line 600 mm - (RD-L-6)-Z9-L06-ST | 2d | 2026-09-07 A | 2026-09-08 A | RHD4CZ9L06ST1402, RHD4CZ9L06ST1505, RHD4CZ9C071ST1505 | 100% |  | 2026-12-21 | 2026-12-22 | Skilled labor [5.55 h]; Unskilled Labor [11.11 h]; Equipment Opreator [11.11 h]; Excavator-Poclain [5.55 h]; Dump Truck [5.55 h]; GRP (600mm Diameter) - ST - Depth less than 1.5 m [20.5 m] | 8,835.5 | 8,835.5 | L06 | Z9 | CONS | ST | Backfilling | bef |
| RHD4CZ9L06ST1402 |  | Primary Test for GRP Pipe Line 600 mm - (RD-L-6)-Z9-L06-ST | 2d | 2027-05-04 | 2027-05-05 | RHD4CZ9L06ST1302 |  |  |  |  | Unskilled Labor [2.18 h]; Plumber [2.18 h]; Equipment Opreator [2.18 h]; Water Truck [2.18 h]; GRP (600mm Diameter) - ST - Depth less than 1.5 m [20.5 m] | 8,835.5 |  | L06 | Z9 | CONS | ST | Primary Test | bef |
|  | 9048 | **RHD4-02-002-L06-(ST)-MH Works - 1200 mm diameter** |  | 2026-09-19 | 2027-05-30 |  |  |  |  |  |  |  |  |  |  |  |  |  |  |
| RHD4CZ9L06ST3100 |  | Excavation and PC Blinding works for MH 1200 mm - (RD-L-6)-Z9-L06-ST | 2d | 2026-09-19 A | 2026-09-20 A | RHD4ENSDZ9APPST110, RHD4ENMSST2000, RHD4ENMSST2010, RHD4CZ9L06ST3101 | 100% |  | 2027-01-11 | 2027-01-12 | Skilled labor [7.3 h]; Unskilled Labor [7.3 h]; Equipment Opreator [11.65 h]; Excavator-Poclain [7.3 h]; Water Truck [0.8 h]; Dump Truck [3.59 h]; MH (1200mm Diameter) - ST - depth 1.50 - 2.5m [0.5 nr] | 5,161.5 | 5,161.5 | L06 | Z9 | CONS | ST | Excavation | bef |
| RHD4CZ9L06ST3200 |  | Installation of Base for MH 1200 mm - (RD-L-6)-Z9-L06-ST | 2d | 2026-09-26 A | 2027-05-12 | RHD4PRSHLSTAGST1608, RHD4CZ9L06ST3100 | 50% | 2d | 2027-01-13 | 2027-01-14 | Skilled labor [7.3 h]; Unskilled Labor [7.3 h]; Equipment Opreator [2.94 h]; Boom Truck [1.42 h]; Concrete Mixer Truck [1.42 h]; MH (1200mm Diameter) - ST - depth 1.50 - 2.5m [0.5 nr] | 5,161.5 |  | L06 | Z9 | CONS | ST | Installing Base | bef |
| RHD4CZ9L06ST3300 |  | MH Ring and C.Slab works and Backfilling works for MH 1200 mm - (RD-L-6)-Z9-L06-ST | 2d | 2027-05-13 | 2027-05-19 | RHD4PRSHLDOSST1608, RHD4CZ9L06ST3200 |  |  |  |  | Skilled labor [7.3 h]; Unskilled Labor [7.3 h]; Equipment Opreator [5.12 h]; Boom Truck [2.94 h]; Concrete Mixer Truck [2.18 h]; MH (1200mm Diameter) - ST - depth 1.50 - 2.5m [0.7 nr] | 7,226.1 |  | L06 | Z9 | CONS | ST | Installing Rings | bef |
| RHD4CZ9L06ST3400 |  | Steel Cover for MH 1200 mm - (RD-L-6)-Z9-L06-ST | 2d | 2027-05-26 | 2027-05-27 | RHD4PRSHLDOSST1708, RHD4PRSHLSTAGST1708, RHD4CZ9L06ST3300, RHD4CZ9L06ST2500, RHD4CZ9L06ST1500 |  |  |  |  | Skilled labor [7.3 h]; Unskilled Labor [14.48 h]; Equipment Opreator [1.42 h]; Boom Truck [1.42 h]; MH (1200mm Diameter) - ST - depth 1.50 - 2.5m [0.1 nr] | 1,032.3 |  | L06 | Z9 | CONS | ST | Steel Cover | bef |
| RHD4CZ9L06ST3500 |  | Finishing, Benching, Testing works for MH 1200 mm - (RD-L-6)-Z9-L06-ST | 2d | 2027-05-29 | 2027-05-30 | RHD4CZ9L06ST3400 |  |  |  |  | Skilled labor [7.3 h]; Unskilled Labor [14.48 h]; Plumber [7.3 h]; Equipment Opreator [1.42 h]; Water Truck [1.42 h]; MH (1200mm Diameter) - ST - depth 1.50 - 2.5m [0.2 nr] | 2,064.6 |  | L06 | Z9 | CONS | ST | Benching | bef |

| ID | WBS | Activity | Duration | Start | Finish | Predecessors | Complete | Planned start | Planned finish | Resources | Cost | Actual cost | RDH4-01-001-Road and Block Names-1 | RDH4-01-001-Zones-1 | RDH4-01-001-Phases-1 | RDH4-01-001-Networks-1 | RDH4-01-001-Work Method-1 | RDH4-01-001-MENEM |
| --- | --- | --- | --- | --- | --- | --- | --- | --- | --- | --- | --- | --- | --- | --- | --- | --- | --- | --- |
|  | 9049 | **RHD4-02-002-L06-(ST)-MH Works - 1500 mm diameter** |  | 2026-09-19 | 2027-05-23 |  |  |  |  |  |  |  |  |  |  |  |  |  |
| RHD4CZ9L06ST3101 |  | Excavation and PC Blinding works for MH 1500 mm - (RD-L-6)-Z9-L06-ST | 4d | 2026-09-19 A | 2026-10-27 A | RHD4ENSDZ9APPST110, RHD4ENMSST2000, RHD4CZ9L06ST3102 | 100% | 2027-01-06 | 2027-01-10 | Skilled labor [38.12 h]; Unskilled Labor [38.12 h]; Equipment Opreator [60.99 h]; Excavator-Poclain [38.12 h]; Water Truck [3.81 h]; Dump Truck [19.06 h]; MH (1500mm Diameter) - ST - depth 1.50 - 2.5m [1 nr]; MH (1500mm Diameter) - ST - depth 2.51 - 3.5m [0.75 nr] | 26,962.5 | 26,962.5 | L06 | Z9 | CONS | ST | Excavation | bef |
| RHD4CZ9L06ST3201 |  | Installation of Base for MH 1500 mm - (RD-L-6)-Z9-L06-ST | 4d | 2026-09-24 A | 2026-10-28 A | RHD4PRSHLSTAGST1608, RHD4CZ9L06ST3101 | 100% | 2027-01-11 | 2027-01-14 | Skilled labor [38.12 h]; Unskilled Labor [38.12 h]; Equipment Opreator [15.25 h]; Boom Truck [7.62 h]; Concrete Mixer Truck [7.62 h]; MH (1500mm Diameter) - ST - depth 1.50 - 2.5m [1 nr]; MH (1500mm Diameter) - ST - depth 2.51 - 3.5m [0.75 nr] | 26,962.5 | 26,962.5 | L06 | Z9 | CONS | ST | Installing Base | bef |
| RHD4CZ9L06ST3301 |  | MH Ring and C.Slab works and Backfilling works for MH 1500 mm - (RD-L-6)-Z9-L06-ST | 4d | 2026-10-29 A | 2026-11-01 A | RHD4PRSHLDOSST1608, RHD4CZ9L06ST3201 | 100% | 2026-10-29 | 2026-11-02 | Skilled labor [38.12 h]; Unskilled Labor [38.12 h]; Equipment Opreator [26.68 h]; Boom Truck [15.25 h]; Concrete Mixer Truck [11.43 h]; MH (1500mm Diameter) - ST - depth 1.50 - 2.5m [1.4 nr]; MH (1500mm Diameter) - ST - depth 2.51 - 3.5m [1.05 nr] | 37,747.5 | 37,747.5 | L06 | Z9 | CONS | ST | Installing Rings | bef |
| RHD4CZ9L06ST3401 |  | Steel Cover for MH 1500 mm - (RD-L-6)-Z9-L06-ST | 3d | 2027-05-11 | 2027-05-13 | RHD4PRSHLDOSST1708, RHD4PRSHLSTAGST1708, RHD4CZ9L06ST3301 |  |  |  | Skilled labor [25.37 h]; Unskilled Labor [50.86 h]; Equipment Opreator [5.12 h]; Boom Truck [5.12 h]; MH (1500mm Diameter) - ST - depth 1.50 - 2.5m [0.2 nr]; MH (1500mm Diameter) - ST - depth 2.51 - 3.5m [0.15 nr] | 5,392.5 |  | L06 | Z9 | CONS | ST | Steel Cover | bef |
| RHD4CZ9L06ST3501 |  | Finishing, Benching, Testing works for MH 1500 mm - (RD-L-6)-Z9-L06-ST | 4d | 2027-05-19 | 2027-05-23 | RHD4CZ9L06ST3401 |  |  |  | Skilled labor [38.12 h]; Unskilled Labor [76.23 h]; Plumber [38.12 h]; Equipment Opreator [7.62 h]; Water Truck [7.62 h]; MH (1500mm Diameter) - ST - depth 1.50 - 2.5m [0.4 nr]; MH (1500mm Diameter) - ST - depth 2.51 - 3.5m [0.3 nr] | 10,785 |  | L06 | Z9 | CONS | ST | Benching | bef |
|  | 9050 | **RHD4-02-002-L06-(ST)-MH Works - 2000 mm diameter** |  | 2026-09-19 | 2027-05-25 |  |  |  |  |  |  |  |  |  |  |  |  |  |
| RHD4CZ9L06ST3102 |  | Excavation and PC Blinding works for MH 2000 mm - (RD-L-6)-Z9-L06-ST | 2d | 2026-09-19 A | 2026-09-20 A | RHD4ENSDZ9APPST110, RHD4ENMSST2000, RHD4CZ9L06ST2100 | 100% | 2027-01-04 | 2027-01-05 | Skilled labor [7.3 h]; Unskilled Labor [7.3 h]; Equipment Opreator [11.65 h]; Excavator-Poclain [7.3 h]; Water Truck [0.8 h]; Dump Truck [3.59 h]; MH (2000mm Diameter) - ST - depth 2.51 - 3.5m [0.5 nr] | 10,923.5 | 10,923.5 | L06 | Z9 | CONS | ST | Excavation | bef |
| RHD4CZ9L06ST3202 |  | Installation of Base for MH 2000 mm - (RD-L-6)-Z9-L06-ST | 2d | 2026-09-30 A | 2026-10-01 A | RHD4PRSHLSTAGST1608, RHD4CZ9L06ST3102 | 100% | 2027-01-06 | 2027-01-07 | Skilled labor [10.89 h]; Unskilled Labor [10.89 h]; Equipment Opreator [4.36 h]; Boom Truck [2.18 h]; Concrete Mixer Truck [2.18 h]; MH (2000mm Diameter) - ST - depth 2.51 - 3.5m [0.5 nr] | 10,923.5 | 10,923.5 | L06 | Z9 | CONS | ST | Installing Base | bef |
| RHD4CZ9L06ST3302 |  | MH Ring and C.Slab works and Backfilling works for MH 2000 mm - (RD-L-6)-Z9-L06-ST | 2d | 2027-05-11 | 2027-05-12 | RHD4PRSHLDOSST1608, RHD4CZ9L06ST3202 |  |  |  | Skilled labor [10.89 h]; Unskilled Labor [10.89 h]; Equipment Opreator [7.62 h]; Boom Truck [4.36 h]; Concrete Mixer Truck [3.27 h]; MH (2000mm Diameter) - ST - depth 2.51 - 3.5m [0.7 nr] | 15,292.9 |  | L06 | Z9 | CONS | ST | Installing Rings | bef |
| RHD4CZ9L06ST3402 |  | Steel Cover for MH 2000 mm - (RD-L-6)-Z9-L06-ST | 2d | 2027-05-19 | 2027-05-20 | RHD4PRSHLDOSST1708, RHD4PRSHLSTAGST1708, RHD4CZ9L06ST3302, RHD4CZ9L06ST3401 |  |  |  | Skilled labor [7.3 h]; Unskilled Labor [14.48 h]; Equipment Opreator [1.42 h]; Boom Truck [1.42 h]; MH (2000mm Diameter) - ST - depth 2.51 - 3.5m [0.1 nr] | 2,184.7 |  | L06 | Z9 | CONS | ST | Steel Cover | bef |
| RHD4CZ9L06ST3502 |  | Finishing, Benching, Testing works for MH 2000 mm - (RD-L-6)-Z9-L06-ST | 2d | 2027-05-24 | 2027-05-25 | RHD4CZ9L06ST3402, RHD4CZ9L06ST3501 |  |  |  | Skilled labor [7.3 h]; Unskilled Labor [14.48 h]; Plumber [7.3 h]; Equipment Opreator [1.42 h]; Water Truck [1.42 h]; MH (2000mm Diameter) - ST - depth 2.51 - 3.5m [0.2 nr] | 4,369.4 |  | L06 | Z9 | CONS | ST | Benching | bef |
|  | 9038 | **RHD4-02-002-L06-(ST)-GRP Pipes - 1000 mm diameter** |  | 2026-08-29 | 2027-01-31 |  |  |  |  |  |  |  |  |  |  |  |  |  |
| RHD4CZ9L06ST1106 |  | Excavation works for GRP Pipe Line 1000 mm - (RD-L-6)-Z9-L06-ST | 2d | 2026-08-29 A | 2026-08-30 A | RHD4ENSDZ9APPST110, RHD4CZ9L06RW3000, RHD4PRSHLDOSST1308 | 100% |  |  | Skilled labor [5.88 h]; Unskilled Labor [5.88 h]; Equipment Opreator [6.97 h]; Excavator-Poclain [5.88 h]; Dump Truck [1.2 h]; GRP (1000mm Diameter) - ST - Depth: 1.51m - 2.5m [16.08 m] | 14,732.03 |  | L06 | Z9 | CONS | ST | Excavation | bef |
| RHD4CZ9L06ST1206 |  | Bedding works for GRP Pipe Line 1000 mm - (RD-L-6)-Z9-L06-ST | 2d | 2026-08-30 A | 2026-08-31 A | RHD4CZ9L06ST1106 | 100% | 2026-08-31 | 2026-09-01 | Skilled labor [5.88 h]; Unskilled Labor [11.65 h]; Equipment Opreator [11.65 h]; Excavator-Poclain [5.88 h]; Dump Truck [5.88 h]; GRP (1000mm Diameter) - ST - Depth: 1.51m - 2.5m [5.36 m] | 4,910.68 | 4,910.68 | L06 | Z9 | CONS | ST | Bedding | bef |
| RHD4CZ9L06ST1306 |  | Installing for GRP Pipe Line 1000 mm - (RD-L-6)-Z9-L06-ST | 2d | 2026-09-01 A | 2026-09-02 A | RHD4PRSHLSTAGST1008, RHD4CZ9L06ST1206, RHD4PRSHLDOSST1608, RHD4PRSHLPOST1000, RHD4PRSHLDOSST1008, RHD4PRSHLDOSST1604, RHD4PRSHLDOSST1004 | 100% | 2026-09-02 | 2026-09-03 | Unskilled Labor [7.73 h]; Plumber [3.92 h]; GRP (1000mm Diameter) - ST - Depth: 1.51m - 2.5m [42.89 m] | 39,285.41 | 39,285.41 | L06 | Z9 | CONS | ST | Installation | bef |
| RHD4CZ9L06ST1506 |  | Backfilling and warning tape works for GRP Pipe Line 1000 mm - (RD-L-6)-Z9-L06-ST | 2d | 2026-09-07 A | 2026-09-20 A | RHD4CZ9L06ST1406 | 100% | 2026-09-07 | 2026-09-08 | Skilled labor [5.88 h]; Unskilled Labor [11.65 h]; Equipment Opreator [11.65 h]; Excavator-Poclain [5.88 h]; Dump Truck [5.88 h]; GRP (1000mm Diameter) - ST - Depth: 1.51m - 2.5m [21.44 m] | 19,642.7 | 19,642.7 | L06 | Z9 | CONS | ST | Backfilling | bef |
| RHD4CZ9L06ST1406 |  | Primary Test for GRP Pipe Line 1000 mm - (RD-L-6)-Z9-L06-ST | 2d | 2027-01-30 | 2027-01-31 | RHD4CZ9L06ST1306 |  |  |  | Unskilled Labor [2.94 h]; Plumber [2.94 h]; Equipment Opreator [2.94 h]; Water Truck [2.94 h]; GRP (1000mm Diameter) - ST - Depth: 1.51m - 2.5m [21.44 m] | 19,642.7 |  | L06 | Z9 | CONS | ST | Primary Test | bef |
|  | 9037 | **RHD4-02-002-L06-(ST)-GRP Pipes - 900 mm diameter** |  | 2026-08-31 | 2027-05-03 |  |  |  |  |  |  |  |  |  |  |  |  |  |
| RHD4CZ9L06ST1105 |  | Excavation works for GRP Pipe Line 900 mm - (RD-L-6)-Z9-L06-ST | 2d | 2026-08-31 A | 2026-09-01 A | RHD4ENSDZ9APPST110, RHD4CZ9L06ST1106, RHD4CZ9L05ST1102 | 100% | 2026-11-28 | 2026-11-29 | Skilled labor [1.96 h]; Unskilled Labor [1.96 h]; Equipment Opreator [2.4 h]; Excavator-Poclain [1.96 h]; Dump Truck [0.44 h]; GRP (900mm Diameter) - ST - Depth: 1.51m - 2.5m [5.52 m] | 4,399.44 | 4,399.44 | L06 | Z9 | CONS | ST | Excavation | bef |
| RHD4CZ9L06ST1205 |  | Bedding works for GRP Pipe Line 900 mm - (RD-L-6)-Z9-L06-ST | 2d | 2026-09-15 A | 2026-09-16 A | RHD4CZ9L06ST1105 | 100% | 2026-11-30 | 2026-12-01 | Skilled labor [1.96 h]; Unskilled Labor [4 h]; Equipment Opreator [4 h]; Excavator-Poclain [1.96 h]; Dump Truck [1.96 h]; GRP (900mm Diameter) - ST - Depth: 1.51m - 2.5m [1.84 m] | 1,468.07 | 1,468.07 | L06 | Z9 | CONS | ST | Bedding | bef |
| RHD4CZ9L06ST1305 |  | Installing for GRP Pipe Line 900 mm - (RD-L-6)-Z9-L06-ST | 2d | 2026-09-16 A | 2026-09-17 A | RHD4PRSHLSTAGST1008, RHD4CZ9L06ST1205, RHD4CZ9L06ST1306, RHD4PRSHLDOSST1608, RHD4PRSHLPOST1000, RHD4PRSHLDOSST1008, RHD4PRSHLDOSST1604, RHD4PRSHLDOSST1004 | 100% | 2026-12-02 | 2026-12-03 | Unskilled Labor [2.72 h]; Plumber [1.31 h]; GRP (900mm Diameter) - ST - Depth: 1.51m - 2.5m [14.73 m] | 11,739.81 | 11,739.81 | L06 | Z9 | CONS | ST | Installation | bef |
| RHD4CZ9L06ST1505 |  | Backfilling and warning tape works for GRP Pipe Line 900 mm - (RD-L-6)-Z9-L06-ST | 2d | 2026-09-17 A | 2026-09-19 A | RHD4CZ9L06ST1405, RHD4CZ9L06ST1506 | 100% | 2026-12-07 | 2026-12-08 | Skilled labor [1.96 h]; Unskilled Labor [4 h]; Equipment Opreator [4 h]; Excavator-Poclain [1.96 h]; Dump Truck [1.96 h]; GRP (900mm Diameter) - ST - Depth: 1.51m - 2.5m [7.37 m] | 5,872.3 | 5,872.3 | L06 | Z9 | CONS | ST | Backfilling | bef |
| RHD4CZ9L06ST1405 |  | Primary Test for GRP Pipe Line 900 mm - (RD-L-6)-Z9-L06-ST | 2d | 2027-05-02 | 2027-05-03 | RHD4CZ9L06ST1305 |  |  |  | Unskilled Labor [0.98 h]; Plumber [0.98 h]; Equipment Opreator [0.98 h]; Water Truck [0.98 h]; GRP (900mm Diameter) - ST - Depth: 1.51m - 2.5m [7.37 m] | 5,872.3 |  | L06 | Z9 | CONS | ST | Primary Test | bef |

| ID | WBS | Activity | Duration | Start | Finish | Predecessors | Complete | Remaining | Planned start | Planned finish | Resources | Cost | Actual cost | RDH4-01-001-Road and Block Names-1 | RDH4-01-001-Zones-1 | RDH4-01-001-Phases-1 | RDH4-01-001-Networks-1 | RDH4-01-001-Work Method-1 | RDH4-01-001-MENEM |
| --- | --- | --- | --- | --- | --- | --- | --- | --- | --- | --- | --- | --- | --- | --- | --- | --- | --- | --- | --- |
|  | 9036 | **RHD4-02-002-L06-(ST)-GRP Pipes - 800 mm diameter** |  | 2026-08-29 | 2027-05-03 |  |  |  |  |  |  |  |  |  |  |  |  |  |  |
| RHD4CZ9L06ST1104 |  | Excavation works for GRP Pipe Line 800 mm - (RD-L-6)-Z9-L06-ST | 2d | 2026-08-29 A | 2026-08-30 A | RHD4ENSDZ9APPST110, RHD4CZ9L06ST1105 SS | 100% |  | 2026-11-28 | 2026-11-29 | Skilled labor [13.5 h]; Unskilled Labor [13.5 h]; Equipment Opreator [16.12 h]; Excavator-Poclain [13.5 h]; Dump Truck [2.72 h]; GRP (800mm Diameter) - ST - Depth less than 1.5 m [17.31 m]; GRP (800mm Diameter) - ST - Depth: 1.51m - 2.5m [11.15 m] | 19,130.73 | 19,130.73 | L06 | Z9 | CONS | ST | Excavation | bef |
| RHD4CZ9L06ST1204 |  | Bedding works for GRP Pipe Line 800 mm - (RD-L-6)-Z9-L06-ST | 2d | 2026-08-30 A | 2026-08-31 A | RHD4CZ9L06ST1104 | 100% |  | 2026-11-30 | 2026-12-01 | Skilled labor [13.5 h]; Unskilled Labor [26.9 h]; Equipment Opreator [26.9 h]; Excavator-Poclain [13.5 h]; Dump Truck [13.5 h]; GRP (800mm Diameter) - ST - Depth less than 1.5 m [8.65 m]; GRP (800mm Diameter) - ST - Depth: 1.51m - 2.5m [3.72 m] | 8,259.89 | 8,259.89 | L06 | Z9 | CONS | ST | Bedding | bef |
| RHD4CZ9L06ST1304 |  | Installing for GRP Pipe Line 800 mm - (RD-L-6)-Z9-L06-ST | 2d | 2026-09-01 A | 2026-09-19 A | RHD4PRSHLSTAGST1008, RHD4CZ9L06ST1204, RHD4PRSHLDOSST1608, RHD4PRSHLPOST1000, RHD4PRSHLDOSST1008, RHD4PRSHLDOSST1604, RHD4PRSHLDOSST1004 | 100% |  | 2026-12-02 | 2026-12-03 | Unskilled Labor [17.97 h]; Plumber [8.93 h]; GRP (800mm Diameter) - ST - Depth less than 1.5 m [77.88 m]; GRP (800mm Diameter) - ST - Depth: 1.51m - 2.5m [29.72 m] | 71,719.08 | 71,719.08 | L06 | Z9 | CONS | ST | Installation | bef |
| RHD4CZ9L06ST1504 |  | Backfilling and warning tape works for GRP Pipe Line 800 mm - (RD-L-6)-Z9-L06-ST | 2d | 2026-09-19 A | 2026-09-20 A | RHD4CZ9L06ST1404 | 100% |  | 2026-12-07 | 2026-12-08 | Skilled labor [13.5 h]; Unskilled Labor [26.9 h]; Equipment Opreator [26.9 h]; Excavator-Poclain [13.5 h]; Dump Truck [13.5 h]; GRP (800mm Diameter) - ST - Depth less than 1.5 m [34.62 m]; GRP (800mm Diameter) - ST - Depth: 1.51m - 2.5m [14.86 m] | 33,038.58 | 33,038.58 | L06 | Z9 | CONS | ST | Backfilling | bef |
| RHD4CZ9L06ST1404 |  | Primary Test for GRP Pipe Line 800 mm - (RD-L-6)-Z9-L06-ST | 2d | 2027-05-02 | 2027-05-03 | RHD4CZ9L06ST1304 |  |  |  |  | Unskilled Labor [6.75 h]; Plumber [6.75 h]; Equipment Opreator [6.75 h]; Water Truck [6.75 h]; GRP (800mm Diameter) - ST - Depth less than 1.5 m [34.62 m]; GRP (800mm Diameter) - ST - Depth: 1.51m - 2.5m [14.86 m] | 33,038.58 |  | L06 | Z9 | CONS | ST | Primary Test | bef |
|  | 9035 | **RHD4-02-002-L06-(ST)-GRP Pipes - 700 mm diameter** |  | 2026-08-31 | 2027-05-05 |  |  |  |  |  |  |  |  |  |  |  |  |  |  |
| RHD4CZ9L06ST1103 |  | Excavation works for GRP Pipe Line 700 mm - (RD-L-6)-Z9-L06-ST | 2d | 2026-08-31 A | 2026-09-01 A | RHD4ENSDZ9APPST110, RHD4CZ9L06ST1504, RHD4CZ9L06ST1104 | 100% |  | 2026-12-09 | 2026-12-10 | Skilled labor [3.81 h]; Unskilled Labor [3.81 h]; Equipment Opreator [4.57 h]; Excavator-Poclain [3.81 h]; Dump Truck [0.8 h]; GRP (700mm Diameter) - ST - Depth: 1.51m - 2.5m [10.39 m] | 6,202.83 | 6,202.83 | L06 | Z9 | CONS | ST | Excavation | bef |
| RHD4CZ9L06ST1203 |  | Bedding works for GRP Pipe Line 700 mm - (RD-L-6)-Z9-L06-ST | 2d | 2026-09-19 A | 2026-09-20 A | RHD4CZ9L06ST1103 | 100% |  | 2026-12-12 | 2026-12-13 | Skilled labor [3.81 h]; Unskilled Labor [7.51 h]; Equipment Opreator [7.51 h]; Excavator-Poclain [3.81 h]; Dump Truck [3.81 h]; GRP (700mm Diameter) - ST - Depth: 1.51m - 2.5m [3.46 m] | 2,065.62 | 2,065.62 | L06 | Z9 | CONS | ST | Bedding | bef |
| RHD4CZ9L06ST1303 |  | Installing for GRP Pipe Line 700 mm - (RD-L-6)-Z9-L06-ST | 2d | 2026-09-20 A | 2026-09-21 A | RHD4PRSHLSTAGST1008, RHD4CZ9L06ST1203, RHD4CZ9L06ST1304, RHD4PRSHLDOSST1608, RHD4PRSHLPOST1000, RHD4PRSHLDOSST1008, RHD4PRSHLDOSST1604, RHD4PRSHLDOSST1004 | 100% |  | 2026-12-14 | 2026-12-15 | Unskilled Labor [3.81 h]; Plumber [1.85 h]; GRP (700mm Diameter) - ST - Depth: 1.51m - 2.5m [27.72 m] | 16,548.84 | 16,548.84 | L06 | Z9 | CONS | ST | Installation | bef |
| RHD4CZ9L06ST1503 |  | Backfilling and warning tape works for GRP Pipe Line 700 mm - (RD-L-6)-Z9-L06-ST | 2d | 2026-09-21 A | 2026-09-22 A | RHD4CZ9L06ST1403, RHD4CZ9L06ST1504 | 100% |  | 2026-12-19 | 2026-12-20 | Skilled labor [3.81 h]; Unskilled Labor [7.51 h]; Equipment Opreator [7.51 h]; Excavator-Poclain [3.81 h]; Dump Truck [3.81 h]; GRP (700mm Diameter) - ST - Depth: 1.51m - 2.5m [13.86 m] | 8,274.42 | 8,274.42 | L06 | Z9 | CONS | ST | Backfilling | bef |
| RHD4CZ9L06ST1403 |  | Primary Test for GRP Pipe Line 700 mm - (RD-L-6)-Z9-L06-ST | 2d | 2027-05-04 | 2027-05-05 | RHD4CZ9L06ST1303 |  |  |  |  | Unskilled Labor [1.85 h]; Plumber [1.85 h]; Equipment Opreator [1.85 h]; Water Truck [1.85 h]; GRP (700mm Diameter) - ST - Depth: 1.51m - 2.5m [13.86 m] | 8,274.42 |  | L06 | Z9 | CONS | ST | Primary Test | bef |
|  | 9032 | **RHD4-02-002-L06-(ST)-GRP Pipes - 400 mm diameter** |  | 2026-08-29 | 2027-05-08 |  |  |  |  |  |  |  |  |  |  |  |  |  |  |
| RHD4CZ9L06ST1100 |  | Excavation works for GRP Pipe Line 400 mm - (RD-L-6)-Z9-L06-ST | 2d | 2026-08-29 A | 2026-08-30 A | RHD4ENSDZ9APPST110, RHD4CZ9L06ST1503, RHD4CZ9L06ST1102 | 100% |  | 2026-12-21 | 2026-12-22 | Skilled labor [3.7 h]; Unskilled Labor [3.7 h]; Equipment Opreator [4.36 h]; Excavator-Poclain [3.7 h]; Dump Truck [0.8 h]; GRP (400mm Diameter) - ST - Depth: 1.51m - 2.5 m [17.55 m] | 5,738.85 | 5,738.85 | L06 | Z9 | CONS | ST | Excavation | bef |
| RHD4CZ9L06ST1200 |  | Bedding works for GRP Pipe Line 400 mm - (RD-L-6)-Z9-L06-ST | 2d | 2026-09-19 A | 2026-09-20 A | RHD4CZ9L06ST1100 | 100% |  | 2026-12-23 | 2026-12-24 | Skilled labor [3.7 h]; Unskilled Labor [7.3 h]; Equipment Opreator [7.3 h]; Excavator-Poclain [3.7 h]; Dump Truck [3.7 h]; GRP (400mm Diameter) - ST - Depth: 1.51m - 2.5 m [5.85 m] | 1,912.95 | 1,912.95 | L06 | Z9 | CONS | ST | Bedding | bef |
| RHD4CZ9L06ST1300 |  | Installing for GRP Pipe Line 400 mm - (RD-L-6)-Z9-L06-ST | 2d | 2026-09-20 A | 2026-09-21 A | RHD4PRSHLSTAGST1008, RHD4CZ9L06ST1200, RHD4CZ9L06ST1303, RHD4PRSHLDOSST1608, RHD4PRSHLPOST1000, RHD4PRSHLDOSST1008, RHD4PRSHLDOSST1604, RHD4PRSHLDOSST1004 | 100% |  | 2026-12-26 | 2026-12-27 | Unskilled Labor [7.3 h]; Plumber [3.7 h]; GRP (400mm Diameter) - ST - Depth: 1.51m - 2.5 m [46.8 m] | 15,303.6 | 15,303.6 | L06 | Z9 | CONS | ST | Installation | bef |
| RHD4CZ9L06ST1500 |  | Backfilling and warning tape works for GRP Pipe Line 400 mm - (RD-L-6)-Z9-L06-ST | 2d | 2026-09-22 A | 2026-09-24 A | RHD4CZ9L06ST1400, RHD4CZ9L06ST1503 | 100% |  | 2026-12-30 | 2026-12-31 | Skilled labor [3.7 h]; Unskilled Labor [7.3 h]; Equipment Opreator [7.3 h]; Excavator-Poclain [3.7 h]; Dump Truck [3.7 h]; GRP (400mm Diameter) - ST - Depth: 1.51m - 2.5 m [23.4 m] | 7,651.8 | 7,651.8 | L06 | Z9 | CONS | ST | Backfilling | bef |
| RHD4CZ9L06ST1400 |  | Primary Test for GRP Pipe Line 400 mm - (RD-L-6)-Z9-L06-ST | 2d | 2027-05-06 | 2027-05-08 | RHD4CZ9L06ST1300 |  |  |  |  | Unskilled Labor [3.7 h]; Plumber [3.7 h]; Equipment Opreator [3.7 h]; Water Truck [3.7 h]; GRP (400mm Diameter) - ST - Depth: 1.51m - 2.5 m [23.4 m] | 7,651.8 |  | L06 | Z9 | CONS | ST | Primary Test | bef |
|  | 9046 | **RHD4-02-002-L06-(ST)-UPVC Pipes - 300 mm diameter** |  | 2026-09-19 | 2027-05-25 |  |  |  |  |  |  |  |  |  |  |  |  |  |  |
| RHD4CZ9L06ST2100 |  | Excavation works for UPVC Pipe Line 300 mm - (RD-L-6)-Z9-L06-ST | 2d | 2026-09-19 A | 2027-05-10 | RHD4ENSDZ9APPST110, RHD4CZ9L06ST1500, RHD4CZ9L06ST1100 | 24% | 2d | 2027-01-02 | 2027-01-03 | Skilled labor [20 h]; Unskilled Labor [20 h]; Equipment Opreator [24.07 h]; Excavator-Poclain [20 h]; Dump Truck [4 h]; UPVC (300mm Diameter) - ST - Depth less than 1.5 [45.24 m]; UPVC (300mm Diameter) - ST - Depth: 1.51m - 2.5m | 13,707.72 |  | L06 | Z9 | CONS | ST | Excavation | bef |
| RHD4CZ9L06ST2200 |  | Bedding works for UPVC Pipe Line 300 mm - (RD-L-6)-Z9-L06-ST | 2d | 2026-09-21 A | 2027-05-12 | RHD4CZ9L06ST2100 | 18% | 2d | 2027-01-04 | 2027-01-05 | Skilled labor [16.99 h]; Unskilled Labor [33.98 h]; Equipment Opreator [33.98 h]; Excavator-Poclain [16.99 h]; Dump Truck [16.99 h]; UPVC (300mm Diameter) - ST - Depth less than 1.5 [22.62 m]; UPVC (300mm Diameter) - ST - Depth: 1.51m - 2.5m | 6,853.86 |  | L06 | Z9 | CONS | ST | Bedding | bef |
| RHD4CZ9L06ST2300 |  | Installing for UPVC Pipe Line 300 mm - (RD-L-6)-Z9-L06-ST | 2d | 2026-09-22 A | 2027-05-19 | RHD4PRSHLDOSST1108, RHD4PRSHLSTAGST1108, RHD4CZ9L06ST2200 | 9% | 2d | 2027-01-06 | 2027-01-07 | Unskilled Labor [40.08 h]; Plumber [20 h]; UPVC (300mm Diameter) - ST - Depth less than 1.5 [203.58 m]; UPVC (300mm Diameter) - ST - Depth: 1.51m - 2.5m | 61,684.74 |  | L06 | Z9 | CONS | ST | Installation | bef |
| RHD4CZ9L06ST2500 |  | Backfilling and warning tape works for UPVC Pipe Line 300 mm - (RD-L-6)-Z9-L06-ST | 3d | 2026-09-23 A | 2027-05-25 | RHD4CZ9L06ST2400, RHD4CZ9L06ST6100 | 9% | 3d | 2027-01-11 | 2027-01-13 | Skilled labor [24.61 h]; Unskilled Labor [49.22 h]; Equipment Opreator [49.22 h]; Excavator-Poclain [24.61 h]; Dump Truck [24.61 h]; UPVC (300mm Diameter) - ST - Depth less than 1.5 [90.48 m]; UPVC (300mm Diameter) - ST - Depth: 1.51m - 2.5m | 27,415.44 |  | L06 | Z9 | CONS | ST | Backfilling | bef |
| RHD4CZ9L06ST2400 |  | Primary Test for UPVC Pipe Line 300 mm - (RD-L-6)-Z9-L06-ST | 2d | 2027-05-20 | 2027-05-22 | RHD4CZ9L06ST2300 |  |  |  |  | Unskilled Labor [10.89 h]; Plumber [10.89 h]; Equipment Opreator [10.89 h]; Water Truck [10.89 h]; UPVC (300mm Diameter) - ST - Depth less than 1.5 [90.48 m]; UPVC (300mm Diameter) - ST - Depth: 1.51m - 2.5m | 27,415.44 |  | L06 | Z9 | CONS | ST | Primary Test | bef |

| ID | WBS | Activity | Duration | Start | Finish | Predecessors | Complete | Remaining | Planned start | Planned finish | Resources | Cost | Actual cost | RDH4-01-001-Road and Block Names-1 | RDH4-01-001-Zones-1 | RDH4-01-001-Phases-1 | RDH4-01-001-Networks-1 | RDH4-01-001-Work Method-1 | RDH4-01-001-MENEM |
| --- | --- | --- | --- | --- | --- | --- | --- | --- | --- | --- | --- | --- | --- | --- | --- | --- | --- | --- | --- |
|  | 9054 | **RHD4-02-002-L06-(ST)-Concrete Encasement** |  | 2027-05-13 | 2027-05-19 |  |  |  |  |  |  |  |  |  |  |  |  |  |  |
| RHD4CZ9L06ST6100 |  | Pipe Encasement for Storm Pipelines - (RD-L-6)-Z9-L06-ST | 2d | 2027-05-13 | 2027-05-19 | RHD4CZ9L06ST2300 SS, RHD4CZ9L06ST2300 FF, RHD4CZ9L06ST2200 |  |  |  |  | Skilled labor [5.23 h]; Unskilled Labor [5.23 h]; Equipment Opreator [5.77 h]; Concrete Mixer Truck [0.54 h]; Dump Truck [5.23 h]; Pipe Encasement - ST [95.85 m3] | 48,500.1 |  | L06 | Z9 | CONS | ST | Pipe Encasement | bef |
|  | 9055 | **RHD4-02-002-Z9-L06-Catch Basin - ST** |  | 2026-09-19 | 2027-06-08 |  |  |  |  |  |  |  |  |  |  |  |  |  |  |
|  | 9056 | **RHD4-02-002-L06-(ST)-Single Catch Basin Works** |  | 2026-09-19 | 2027-06-08 |  |  |  |  |  |  |  |  |  |  |  |  |  |  |
| RHD4CZ9L06ST7100 |  | Excavation works for Single Catch Basin - (RD-L-6)-Z9-L06-ST | 3d | 2026-09-19 A | 2027-05-23 | RHD4ENSDZ9APPST110, RHD4CZ9L06ST3300, RHD4CZ9L06ST3301 | 54% | 3d | 2027-01-20 | 2027-01-23 | Skilled labor [26.14 h]; Unskilled Labor [52.27 h]; Equipment Opreator [39.2 h]; Excavator-Poclain [26.14 h]; Dump Truck [13.07 h]; Single Catch basin - ST [6 nr] | 22,386 | 12,126.5 | L06 | Z9 | CONS | ST | Excavation | bef |
| RHD4CZ9L06ST7200 |  | PC Blinding, Installation and Pipe connection for Single Catch Basin - (RD-L-6)-Z9-L06-ST | 3d | 2026-09-20 A | 2027-05-26 | RHD4CZ9L06ST7100 | 54% | 3d | 2027-01-24 | 2027-01-26 | Skilled labor [26.14 h]; Unskilled Labor [52.27 h]; Plumber [13.07 h]; Equipment Opreator [5.23 h]; Boom Truck [5.23 h]; Single Catch basin - ST [4.8 nr] | 17,908.8 | 9,701.2 | L06 | Z9 | CONS | ST | Installation & Pipe Connection | bef |
| RHD4CZ9L06ST7300 |  | Rings & C.Slab & Final Backfill for Single Catch Basin - (RD-L-6)-Z9-L06-ST | 3d | 2026-09-22 A | 2027-05-30 | RHD4PRSHLDOSST1308, RHD4PRSHLSTAGST1308, RHD4CZ9L06ST7200 | 54% | 3d | 2027-01-27 | 2027-01-30 | Skilled labor [32.67 h]; Unskilled Labor [65.34 h]; Equipment Opreator [39.2 h]; Boom Truck [6.53 h]; Bobcat [32.67 h]; Single Catch basin - ST [8.4 nr] | 31,340.4 | 16,977.09 | L06 | Z9 | CONS | ST | Rings | bef |
| RHD4CZ9L06ST7400 |  | Steel Cover for Single Catch Basin - (RD-L-6)-Z9-L06-ST | 3d | 2027-05-31 | 2027-06-02 | RHD4PRSHLDOSST1708, RHD4CZ9L06ST7300 |  |  |  |  | Skilled labor [26.14 h]; Unskilled Labor [26.14 h]; Equipment Opreator [5.23 h]; Boom Truck [5.23 h]; Single Catch basin - ST [1.2 nr] | 4,477.2 |  | L06 | Z9 | CONS | ST | Steel Cover | bef |
| RHD4CZ9L06ST7500 |  | Finishing and Insulation works for Single Catch Basin - (RD-L-6)-Z9-L06-ST | 5d | 2027-06-03 | 2027-06-08 | RHD4CZ9L06ST7400 |  |  |  |  | Skilled labor [52.27 h]; Unskilled Labor [104.55 h]; Equipment Opreator [10.45 h]; Boom Truck [10.45 h]; Single Catch basin - ST [3.6 nr] | 13,431.6 |  | L06 | Z9 | CONS | ST | Insulation | bef |
|  | 9080 | **RHD4-02-002-Z9-L06-Sewage Network - SW** |  | 2026-09-15 | 2027-06-12 |  |  |  |  |  |  |  |  |  |  |  |  |  |  |
|  | 9090 | **RHD4-02-002-L06-(SW)-MH Works - 1200 mm diameter** |  | 2026-09-20 | 2027-06-12 |  |  |  |  |  |  |  |  |  |  |  |  |  |  |
| RHD4CZ9L06SW3100 |  | Excavation and PC Blinding works for MH 1200 mm - (RD-L-6)-Z9-L06-SW | 3d | 2026-09-20 A | 2026-10-20 A | RHD4ENSDZ9APPSW120, RHD4CZ9L06SW2100 | 100% |  | 2027-01-18 | 2027-01-20 | Skilled labor [32.67 h]; Unskilled Labor [32.67 h]; Equipment Opreator [52.27 h]; Excavator-Poclain [32.67 h]; Water Truck [3.27 h]; Dump Truck [16.34 h]; MH (1200mm Diameter) - SW - depth 0 - 1.5m [0.75 nr]; MH (1200mm Diameter) - SW - depth 2.51 - 3.5m [1 nr] | 18,023.25 | 18,023.25 | L06 | Z9 | CONS | SW | Excavation | bef |
| RHD4CZ9L06SW3200 |  | Installation of Base for MH 1200 mm - (RD-L-6)-Z9-L06-SW | 6d | 2026-10-21 A | 2026-10-27 A | RHD4CZ9L06SW3100 | 100% |  |  |  | Skilled labor [59.9 h]; Unskilled Labor [59.9 h]; Equipment Opreator [23.96 h]; Boom Truck [12 h]; Concrete Mixer Truck [12 h]; MH (1200mm Diameter) - SW - depth 0 - 1.5m [0.75 nr]; MH (1200mm Diameter) - SW - depth 2.51 - 3.5m [1 nr] | 18,023.25 | 18,023.25 | L06 | Z9 | CONS | SW | Installing Base | bef |
| RHD4CZ9L06SW3300 |  | MH Ring and C.Slab works and Backfilling works for MH 1200 mm - (RD-L-6)-Z9-L06-SW | 6d | 2027-05-26 | 2027-06-01 | RHD4PRSHLDOSSW1308, RHD4PRSHLSTAGSW1308, RHD4CZ9L06SW3200 |  |  |  |  | Skilled labor [59.9 h]; Unskilled Labor [59.9 h]; Equipment Opreator [41.93 h]; Boom Truck [23.96 h]; Concrete Mixer Truck [17.97 h]; MH (1200mm Diameter) - SW - depth 0 - 1.5m [1.05 nr]; MH (1200mm Diameter) - SW - depth 2.51 - 3.5m [1.4 nr] | 25,232.55 |  | L06 | Z9 | CONS | SW | Installing Rings | bef |
| RHD4CZ9L06SW3400 |  | Steel Cover for MH 1200 mm - (RD-L-6)-Z9-L06-SW | 3d | 2027-06-02 | 2027-06-05 | RHD4PRSHLDOSSW1408, RHD4PRSHLSTAGSW1408, RHD4CZ9L06SW3300 |  |  |  |  | Skilled labor [25.37 h]; Unskilled Labor [50.86 h]; Equipment Opreator [5.12 h]; Boom Truck [5.12 h]; MH (1200mm Diameter) - SW - depth 0 - 1.5m [0.15 nr]; MH (1200mm Diameter) - SW - depth 2.51 - 3.5m [0.2 nr] | 3,604.65 |  | L06 | Z9 | CONS | SW | Steel Cover | bef |
| RHD4CZ9L06SW3500 |  | Finishing, Benching, Testing works for MH 1200 mm - (RD-L-6)-Z9-L06-SW | 6d | 2027-06-06 | 2027-06-12 | RHD4CZ9L06SW3400 |  |  |  |  | Skilled labor [59.9 h]; Unskilled Labor [119.79 h]; Plumber [59.9 h]; Equipment Opreator [12 h]; Water Truck [12 h]; MH (1200mm Diameter) - SW - depth 0 - 1.5m [0.3 nr]; MH (1200mm Diameter) - SW - depth 2.51 - 3.5m [0.4 nr] | 7,209.3 |  | L06 | Z9 | CONS | SW | Benching | bef |
|  | 957 | **RHD4-02-002-L06-(SW)-MH Works - 1200 mm diameter with Back drop** |  | 2026-09-20 | 2027-06-03 |  |  |  |  |  |  |  |  |  |  |  |  |  |  |
| RHD4CZ9L06SW3101 |  | Excavation and PC Blinding works for MH 1200 mm - (RD-L-6)-Z9-L06-SW | 2d | 2026-09-20 A | 2026-10-20 A | RHD4CZ9L06SW3100 SS | 100% |  | 2027-01-18 | 2027-01-19 | Skilled labor [21.78 h]; Unskilled Labor [21.78 h]; Equipment Opreator [34.85 h]; Excavator-Poclain [21.78 h]; Water Truck [2.18 h]; Dump Truck [10.89 h]; MH (1200mm Diameter) - SW - depth 2.51- 3.5 m with back drop [0.75 nr]; MH (1200mm Diameter) - SW - depth 3.51 -4.5 m with back drop [0.25 nr] | 16,421 | 16,421 | L06 | Z9 | CONS | SW | Excavation | bef |
| RHD4CZ9L06SW3201 |  | Installation of Base for MH 1200 mm - (RD-L-6)-Z9-L06-SW | 3d | 2026-10-21 A | 2026-10-24 A | RHD4CZ9L06SW3101 | 100% |  |  |  | Skilled labor [27.2 h]; Unskilled Labor [27.2 h]; Equipment Opreator [10.89 h]; Boom Truck [5.45 h]; Concrete Mixer Truck [5.45 h]; MH (1200mm Diameter) - SW - depth 2.51- 3.5 m with back drop [0.75 nr]; MH (1200mm Diameter) - SW - depth 3.51 -4.5 m with back drop [0.25 nr] | 16,421 | 16,421 | L06 | Z9 | CONS | SW | Installing Base | bef |
| RHD4CZ9L06SW3301 |  | MH Ring and C.Slab works and Backfilling works for MH 1200 mm - (RD-L-6)-Z9-L06-SW | 3d | 2027-05-26 | 2027-05-29 | RHD4CZ9L06SW3201 |  |  |  |  | Skilled labor [27.2 h]; Unskilled Labor [27.2 h]; Equipment Opreator [19.06 h]; Boom Truck [10.89 h]; Concrete Mixer Truck [8.17 h]; MH (1200mm Diameter) - SW - depth 2.51- 3.5 m with back drop [1.05 nr]; MH (1200mm Diameter) - SW - depth 3.51 -4.5 m with back drop [0.35 nr] | 22,989.4 |  | L06 | Z9 | CONS | SW | Installing Rings | bef |
| RHD4CZ9L06SW3401 |  | Steel Cover for MH 1200 mm - (RD-L-6)-Z9-L06-SW | 2d | 2027-05-30 | 2027-05-31 | RHD4CZ9L06SW3301 |  |  |  |  | Skilled labor [14.48 h]; Unskilled Labor [29.08 h]; Equipment Opreator [2.94 h]; Boom Truck [2.94 h]; MH (1200mm Diameter) - SW - depth 2.51- 3.5 m with back drop [0.15 nr]; MH (1200mm Diameter) - SW - depth 3.51 -4.5 m with back drop [0.05 nr] | 3,284.2 |  | L06 | Z9 | CONS | SW | Steel Cover | bef |
| RHD4CZ9L06SW3501 |  | Finishing, Benching, Testing works for MH 1200 mm - (RD-L-6)-Z9-L06-SW | 3d | 2027-06-01 | 2027-06-03 | RHD4CZ9L06SW3401 |  |  |  |  | Skilled labor [27.2 h]; Unskilled Labor [54.45 h]; Plumber [27.2 h]; Equipment Opreator [5.45 h]; Water Truck [5.45 h]; MH (1200mm Diameter) - SW - depth 2.51- 3.5 m with back drop [0.3 nr]; MH (1200mm Diameter) - SW - depth 3.51 -4.5 m with back drop [0.1 nr] | 6,568.4 |  | L06 | Z9 | CONS | SW | Benching | bef |
|  | 9086 | **RHD4-02-002-L06-(SW)-UPVC Pipes - 200 mm diameter** |  | 2026-09-15 | 2027-05-29 |  |  |  |  |  |  |  |  |  |  |  |  |  |  |
| RHD4CZ9L06SW2100 |  | Excavation works for UPVC Pipe Line 200 mm - (RD-L-6)-Z9-L06-SW | 3d | 2026-09-15 A | 2026-09-22 A | RHD4ENSDZ9APPSW120, RHD4CZ9L06ST2500 | 100% |  | 2027-01-14 | 2027-01-17 | Skilled labor [31.36 h]; Unskilled Labor [31.36 h]; Equipment Opreator [37.6 h]; Excavator-Poclain [31.36 h]; Dump Truck [6.32 h]; UPVC (200mm Diameter) - SW - Depth: less than 1.5m [8.78 m]; UPVC (200mm Diameter) - SW - Depth: 1.51m - 2.5m [54.37 m]; UPVC (200mm Diameter) - SW - Depth: 2.51m - 3.5m [7.45 m]; UPVC (200mm Diameter) - SW - Depth: 3.51m - 4.5m | 15,658.39 | 15,658.39 | L06 | Z9 | CONS | SW | Excavation | bef |
| RHD4CZ9L06SW2200 |  | Bedding works for UPVC Pipe Line 200 mm - (RD-L-6)-Z9-L06-SW | 3d | 2026-09-23 A | 2026-09-24 A | RHD4CZ9L06SW2100 | 100% |  | 2027-01-18 | 2027-01-20 | Skilled labor [30.71 h]; Unskilled Labor [61.42 h]; Equipment Opreator [61.42 h]; Excavator-Poclain [30.71 h]; Dump Truck [30.71 h]; UPVC (200mm Diameter) - SW - Depth: less than 1.5m [4.39 m]; UPVC (200mm Diameter) - SW - Depth: 1.51m - 2.5m [18.12 m]; UPVC (200mm Diameter) - SW - Depth: 2.51m - 3.5m [2.48 m]; UPVC (200mm Diameter) - SW - Depth: 3.51m - 4.5m | 5,481.12 | 5,481.12 | L06 | Z9 | CONS | SW | Bedding | bef |
| RHD4CZ9L06SW2300 |  | Installing for UPVC Pipe Line 200 mm - (RD-L-6)-Z9-L06-SW | 4d | 2026-10-27 A | 2026-10-31 A | RHD4PRSHLDOSSW1008, RHD4PRSHLSTAGSW1008, RHD4CZ9L06SW2200 | 100% |  |  |  | Unskilled Labor [67.74 h]; Plumber [33.87 h]; Equipment Opreator [33.87 h]; Boom Truck [33.87 h]; UPVC (200mm Diameter) - SW - Depth: less than 1.5m [39.5 m]; UPVC (200mm Diameter) - SW - Depth: 1.51m - 2.5m [144.98 m]; UPVC (200mm Diameter) - SW - Depth: 2.51m - 3.5m [19.85 m]; UPVC (200mm Diameter) - SW - Depth: 3.51m - 4.5m | 44,644.76 | 44,644.76 | L06 | Z9 | CONS | SW | Installation | bef |
| RHD4CZ9L06SW2500 |  | Backfilling and warning tape works for UPVC Pipe Line 200 mm - (RD-L-6)-Z9-L06-SW | 3d | 2026-10-31 A | 2026-11-01 A | RHD4CZ9L06SW2400 | 100% |  | 2026-10-31 | 2026-11-02 | Skilled labor [32.34 h]; Unskilled Labor [64.58 h]; Equipment Opreator [64.58 h]; Excavator-Poclain [32.34 h]; Dump Truck [32.34 h]; UPVC (200mm Diameter) - SW - Depth: less than 1.5m [17.55 m]; UPVC (200mm Diameter) - SW - Depth: 1.51m - 2.5m [72.49 m]; UPVC (200mm Diameter) - SW - Depth: 2.51m - 3.5m [9.93 m]; UPVC (200mm Diameter) - SW - Depth: 3.51m - 4.5m | 21,927.91 | 21,927.91 | L06 | Z9 | CONS | SW | Backfilling | bef |
| RHD4CZ9L06SW2400 |  | Primary Test for UPVC Pipe Line 200 mm - (RD-L-6)-Z9-L06-SW | 3d | 2027-05-26 | 2027-05-29 | RHD4CZ9L06SW2300 |  |  |  |  | Unskilled Labor [22.87 h]; Plumber [22.87 h]; Equipment Opreator [22.87 h]; Water Truck [22.87 h]; UPVC (200mm Diameter) - SW - Depth: less than 1.5m [17.55 m]; UPVC (200mm Diameter) - SW - Depth: 1.51m - 2.5m [72.49 m]; UPVC (200mm Diameter) - SW - Depth: 2.51m - 3.5m [9.93 m]; UPVC (200mm Diameter) - SW - Depth: 3.51m - 4.5m | 21,927.91 |  | L06 | Z9 | CONS | SW | Primary Test | bef |

| ID | WBS | Activity | Duration | Start | Finish | Predecessors | Resources | Cost | RDH4-01-001-Road and Block Names-1 | RDH4-01-001-Zones-1 | RDH4-01-001-Phases-1 | RDH4-01-001-Networks-1 | RDH4-01-001-Work Method-1 | RDH4-01-001-MENEM |
| --- | --- | --- | --- | --- | --- | --- | --- | --- | --- | --- | --- | --- | --- | --- |
|  | 9089 | **RHD4-02-002-L06-(SW)-Concrete Encasement** |  |  |  |  |  |  |  |  |  |  |  |  |
|  | 9117 | **RHD4-02-002-Z9-L06-Potable Network - PT** |  | 2027-05-30 | 2027-06-24 |  |  |  |  |  |  |  |  |  |
|  | 9118 | **RHD4-02-002-L06-(PT)-HDPE Pipes - 110 mm diameter** |  | 2027-06-01 | 2027-06-14 |  |  |  |  |  |  |  |  |  |
| RHD4CZ9L06PT1100 |  | Excavation works for HDPE Pipline 110 mm - (RD-L-6)-Z9-L06-PT | 2d | 2027-06-01 | 2027-06-02 | RHD4ENSDZ9APPPT130, RHD4ENMSPT2000, RHD4CZ9L06PT1101 | Skilled labor [2.72 h]; Unskilled Labor [2.72 h]; Equipment Opreator [3.27 h]; Excavator-Poclain [2.72 h]; Dump Truck [0.54 h]; HDPE (110mm Diameter) - PT - Depth: less than 1.5m [6.28 m] | 533.8 | L06 | Z9 | CONS | PT | Excavation | bef |
| RHD4CZ9L06PT1200 |  | Bedding works for HDPE Pipline 110 mm - (RD-L-6)-Z9-L06-PT | 2d | 2027-06-03 | 2027-06-05 | RHD4CZ9L06PT1100, RHD4CZ9L06PT1201 | Skilled labor [2.29 h]; Unskilled Labor [4.57 h]; Equipment Opreator [4.57 h]; Excavator-Poclain [2.29 h]; Dump Truck [2.29 h]; HDPE (110mm Diameter) - PT - Depth: less than 1.5m [3.14 m] | 266.9 | L06 | Z9 | CONS | PT | Bedding | bef |
| RHD4CZ9L06PT1300 |  | Installing for HDPE Pipline 110 mm - (RD-L-6)-Z9-L06-PT | 2d | 2027-06-07 | 2027-06-08 | RHD4PRSHLDOSPT1000, RHD4PRSHLSTAGPT1000, RHD4CZ9L06PT1200, RHD4CZ9L06PT1301 | Unskilled Labor [9.15 h]; Plumber [4.57 h]; Equipment Opreator [4.57 h]; Boom Truck [4.57 h]; HDPE (110mm Diameter) - PT - Depth: less than 1.5m [28.26 m] | 2,402.1 | L06 | Z9 | CONS | PT | Installation | bef |
| RHD4CZ9L06PT1400 |  | Primary Test for HDPE Pipline 110 mm - (RD-L-6)-Z9-L06-PT | 2d | 2027-06-09 | 2027-06-10 | RHD4CZ9L06PT1300, RHD4CZ9L06PT1401 | Unskilled Labor [1.42 h]; Plumber [1.42 h]; Equipment Opreator [1.42 h]; Water Truck [1.42 h]; HDPE (110mm Diameter) - PT - Depth: less than 1.5m [12.56 m] | 1,067.6 | L06 | Z9 | CONS | PT | Primary Test | bef |
| RHD4CZ9L06PT1500 |  | Backfilling and warning tape works for HDPE Pipline 110 mm - (RD-L-6)-Z9-L06-PT | 2d | 2027-06-13 | 2027-06-14 | RHD4CZ9L06PT1400, RHD4CZ9L06PT1501 | Skilled labor [3.38 h]; Unskilled Labor [6.86 h]; Equipment Opreator [6.86 h]; Excavator-Poclain [3.38 h]; Dump Truck [3.38 h]; HDPE (110mm Diameter) - PT - Depth: less than 1.5m [12.56 m] | 1,067.6 | L06 | Z9 | CONS | PT | Backfilling | bef |
|  | 9119 | **RHD4-02-002-L06-(PT)-HDPE Pipes - 160 mm diameter** |  | 2027-05-30 | 2027-06-12 |  |  |  |  |  |  |  |  |  |
| RHD4CZ9L06PT1101 |  | Excavation works for HDPE Pipline 160 mm - (RD-L-6)-Z9-L06-PT | 2d | 2027-05-30 | 2027-05-31 | RHD4ENSDZ9APPPT130, RHD4ENMSPT2000, RHD4CZ9L06SW2500 | Skilled labor [19.49 h]; Unskilled Labor [19.49 h]; Equipment Opreator [23.41 h]; Excavator-Poclain [19.49 h]; Dump Truck [3.92 h]; HDPE (160mm Diameter) - PT - Depth: less than 1.5m [44.07 m]; HDPE (160mm Diameter) - PT - Depth: 1.51m - 2.5m | 4,715.49 | L06 | Z9 | CONS | PT | Excavation | bef |
| RHD4CZ9L06PT1201 |  | Bedding works for HDPE Pipline 160 mm - (RD-L-6)-Z9-L06-PT | 2d | 2027-06-01 | 2027-06-02 | RHD4CZ9L06PT1101 | Skilled labor [16.44 h]; Unskilled Labor [32.89 h]; Equipment Opreator [32.89 h]; Excavator-Poclain [16.44 h]; Dump Truck [16.44 h]; HDPE (160mm Diameter) - PT - Depth: less than 1.5m [22.04 m]; HDPE (160mm Diameter) - PT - Depth: 1.51m - 2.5m | 2,358.28 | L06 | Z9 | CONS | PT | Bedding | bef |
| RHD4CZ9L06PT1301 |  | Installing for HDPE Pipline 160 mm - (RD-L-6)-Z9-L06-PT | 3d | 2027-06-03 | 2027-06-06 | RHD4PRSHLDOSPT1000, RHD4PRSHLSTAGPT1000, RHD4CZ9L06PT1201 | Unskilled Labor [63.06 h]; Plumber [31.58 h]; Equipment Opreator [31.58 h]; Boom Truck [31.58 h]; HDPE (160mm Diameter) - PT - Depth: less than 1.5m [198.32 m]; HDPE (160mm Diameter) - PT - Depth: 1.51m - 2.5m | 21,220.24 | L06 | Z9 | CONS | PT | Installation | bef |
| RHD4CZ9L06PT1401 |  | Primary Test for HDPE Pipline 160 mm - (RD-L-6)-Z9-L06-PT | 2d | 2027-06-07 | 2027-06-08 | RHD4CZ9L06PT1301 | Unskilled Labor [10.45 h]; Plumber [10.45 h]; Equipment Opreator [10.45 h]; Water Truck [10.45 h]; HDPE (160mm Diameter) - PT - Depth: less than 1.5m [88.14 m]; HDPE (160mm Diameter) - PT - Depth: 1.51m - 2.5m | 9,430.98 | L06 | Z9 | CONS | PT | Primary Test | bef |
| RHD4CZ9L06PT1501 |  | Backfilling and warning tape works for HDPE Pipline 160 mm - (RD-L-6)-Z9-L06-PT | 3d | 2027-06-09 | 2027-06-12 | RHD4CZ9L06PT1401 | Skilled labor [23.96 h]; Unskilled Labor [48 h]; Equipment Opreator [48 h]; Excavator-Poclain [23.96 h]; Dump Truck [23.96 h]; HDPE (160mm Diameter) - PT - Depth: less than 1.5m [88.14 m]; HDPE (160mm Diameter) - PT - Depth: 1.51m - 2.5m | 9,430.98 | L06 | Z9 | CONS | PT | Backfilling | bef |
|  | 9123 | **RHD4-02-002-L06-(PT)-Gate Valves (Direct Buried)** |  | 2027-06-07 | 2027-06-14 |  |  |  |  |  |  |  |  |  |
| RHD4CZ9L06PT3100 |  | Installation for Direct Buried Gate Valves - (RD-L-6)-Z9-L06-PT | 2d | 2027-06-07 | 2027-06-08 | RHD4PRSHLDOSPT1200, RHD4PRSHLSTAGPT1200, RHD4CZ9L06PT1301 FF, RHD4CZ9L06PT1300 FF, RHD4CZ9L06PT1301 SS, RHD4CZ9L06PT1300 SS | Unskilled Labor [21.78 h]; Plumber [21.78 h]; Gate valves dia 100 mm - PT [1.8 nr]; Gate valves dia 150 mm - PT [1.8 nr] | 4,840.2 | L06 | Z9 | CONS | PT | Installation | bef |
| RHD4CZ9L06PT3200 |  | Stem and Service box for Direct Buried Gate Valves - (RD-L-6)-Z9-L06-PT | 2d | 2027-06-13 | 2027-06-14 | RHD4PRSHLDOSPT1300, RHD4PRSHLSTAGPT1300, RHD4CZ9L06PT3100, RHD4CZ9L06PT1501 | Unskilled Labor [21.78 h]; Plumber [21.78 h]; Gate valves dia 100 mm - PT [0.2 nr]; Gate valves dia 150 mm - PT [0.2 nr] | 537.8 | L06 | Z9 | CONS | PT | Stem and Service box | bef |
|  | 9128 | **RHD4-02-002-L06-(PT)-Air Valve Chambers** |  | 2027-06-07 | 2027-06-15 |  |  |  |  |  |  |  |  |  |
| RHD4CZ9L06PT2102 |  | Excavation and Bedding for Air Valve Chambers for Potable Water Network - (RD-L-6)-Z9-L06-PT | 2d | 2027-06-07 | 2027-06-08 | RHD4ENSDZ9APPPT130, RHD4CZ9L06PT1301 | Skilled labor [5.45 h]; Unskilled Labor [5.45 h]; Equipment Opreator [1.09 h]; Excavator-Poclain [0.54 h]; Dump Truck [0.54 h]; Air Valve chambers - PT [0.25 nr] | 1,193 | L06 | Z9 | CONS | PT | Excavation and Bedding | bef |
| RHD4CZ9L06PT2202 |  | PC works for Air Valve Chambers for Potable Water Network - (RD-L-6)-Z9-L06-PT | 2d | 2027-06-09 | 2027-06-10 | RHD4CZ9L06PT2102 | Skilled labor [5.45 h]; Unskilled Labor [10.89 h]; Equipment Opreator [0.54 h]; Concrete Pump [0.54 h]; Air Valve chambers - PT [0.1 nr] | 477.2 | L06 | Z9 | CONS | PT | PC Works | bef |
| RHD4CZ9L06PT2302 |  | Installation for Air Valve Chambers for Potable Water Network - (RD-L-6)-Z9-L06-PT | 2d | 2027-06-12 | 2027-06-13 | RHD4PRSHLDOSPT1100, RHD4PRSHLDOSPT1400, RHD4PRSHLSTAGPT1100, RHD4PRSHLSTAGPT1400, RHD4CZ9L06PT2202 | Skilled labor [5.45 h]; Unskilled Labor [10.89 h]; Equipment Opreator [1.09 h]; Boom Truck [1.09 h]; Air Valve chambers - PT [0.55 nr] | 2,624.6 | L06 | Z9 | CONS | PT | Installation | bef |
| RHD4CZ9L06PT2402 |  | Backfilling works for Air Valve Chambers for Potable Water Network - (RD-L-6)-Z9-L06-PT | 2d | 2027-06-14 | 2027-06-15 | RHD4CZ9L06PT2302 | Skilled labor [5.45 h]; Unskilled Labor [10.89 h]; Equipment Opreator [1.09 h]; Water Truck [0.54 h]; Dump Truck [0.54 h]; Air Valve chambers - PT [0.1 nr] | 477.2 | L06 | Z9 | CONS | PT | Backfilling Works | bef |
|  | 9129 | **RHD4-02-002-L06-(PT)-Air Valves** |  | 2027-06-01 | 2027-06-05 |  |  |  |  |  |  |  |  |  |
| RHD4CZ9L06PT3103 |  | Installation for Air Valves for Potable Water Network - (RD-L-6)-Z9-L06-PT | 2d | 2027-06-01 | 2027-06-02 | RHD4PRSHLDOSPT1200, RHD4PRSHLSTAGPT1200, RHD4CZ9L06PT1101 | Unskilled Labor [5.45 h]; Plumber [5.45 h]; Air valve diameter 50 mm - PT [0.9 nr] | 4,427.1 | L06 | Z9 | CONS | PT | Installation | bef |
| RHD4CZ9L06PT3203 |  | Stem and Service box for Air Valves for Potable Water Network - (RD-L-6)-Z9-L06-PT | 2d | 2027-06-03 | 2027-06-05 | RHD4PRSHLDOSPT1300, RHD4PRSHLSTAGPT1300, RHD4CZ9L06PT3103 | Unskilled Labor [5.45 h]; Plumber [5.45 h]; Air valve diameter 50 mm - PT [0.1 nr] | 491.9 | L06 | Z9 | CONS | PT | Stem and Service box | bef |

| ID | WBS | Activity | Duration | Start | Finish | Predecessors | Resources | Cost | RDH4-01-001-Road and Block Names-1 | RDH4-01-001-Zones-1 | RDH4-01-001-Phases-1 | RDH4-01-001-Networks-1 | RDH4-01-001-Work Method-1 | RDH4-01-001-MENEM |
| --- | --- | --- | --- | --- | --- | --- | --- | --- | --- | --- | --- | --- | --- | --- |
|  | 9130 | **RHD4-02-002-L06-(PT)-Fire Hydrant** |  | 2027-06-13 | 2027-06-24 |  |  |  |  |  |  |  |  |  |
| RHD4CZ9L06PT4100 |  | Excavation and Bedding and Pipe Installation for Fire Hydrant - (RD-L-6)-Z9-L06-PT | 3d | 2027-06-13 | 2027-06-15 | RHD4ENSDZ9APPPT130, RHD4CZ9L06PT1501 | Skilled labor [27.2 h]; Unskilled Labor [27.2 h]; Plumber [27.2 h]; Equipment Opreator [13.6 h]; Excavator-Poclain [13.6 h]; 3-outlet fire hydrant (2 x 2.5 inch and 1 x 4.5 inch) in the form of a separate dry vacuum cylinder [0.5 nr] | 6,310 | L06 | Z9 | CONS | PT | Excavation | bef |
| RHD4CZ9L06PT4200 |  | Valve Installation for Fire Hydrant - (RD-L-6)-Z9-L06-PT | 2d | 2027-06-16 | 2027-06-17 | RHD4CZ9L06PT4100 | Unskilled Labor [18.19 h]; Plumber [18.19 h]; 3-outlet fire hydrant (2 x 2.5 inch and 1 x 4.5 inch) in the form of a separate dry vacuum cylinder [1 nr] | 12,620 | L06 | Z9 | CONS | PT | Valve | bef |
| RHD4CZ9L06PT4300 |  | Stem for Fire Hydrant - (RD-L-6)-Z9-L06-PT | 2d | 2027-06-19 | 2027-06-20 | RHD4CZ9L06PT4200 | Unskilled Labor [18.19 h]; Plumber [18.19 h]; 3-outlet fire hydrant (2 x 2.5 inch and 1 x 4.5 inch) in the form of a separate dry vacuum cylinder [1.5 nr] | 18,930 | L06 | Z9 | CONS | PT | Stem | bef |
| RHD4CZ9L06PT4400 |  | Fire Installation for Fire Hydrant - (RD-L-6)-Z9-L06-PT | 2d | 2027-06-21 | 2027-06-22 | RHD4PRSHLDOSPT1500, RHD4PRSHLSTAGPT1500, RHD4CZ9L06PT4300 | Unskilled Labor [18.19 h]; Plumber [18.19 h]; Equipment Opreator [18.19 h]; Boom Truck [18.19 h]; 3-outlet fire hydrant (2 x 2.5 inch and 1 x 4.5 inch) in the form of a separate dry vacuum cylinder [1.75 nr] | 22,085 | L06 | Z9 | CONS | PT | Fire | bef |
| RHD4CZ9L06PT4500 |  | Protection Barriers for Fire Hydrant - (RD-L-6)-Z9-L06-PT | 2d | 2027-06-23 | 2027-06-24 | RHD4CZ9L06PT4400 | Unskilled Labor [10.89 h]; Plumber [10.89 h]; 3-outlet fire hydrant (2 x 2.5 inch and 1 x 4.5 inch) in the form of a separate dry vacuum cylinder [0.25 nr] | 3,155 | L06 | Z9 | CONS | PT | Protection Barriers | bef |
|  | 9132 | **RHD4-02-002-Z9-L06-Irrigation Network - IRR** |  | 2027-06-16 | 2027-07-01 |  |  |  |  |  |  |  |  |  |
|  | 9133 | **RHD4-02-002-L06-(IRR)-HDPE Pipes - 160 mm diameter** |  | 2027-06-16 | 2027-07-01 |  |  |  |  |  |  |  |  |  |
| RHD4CZ9L06IRR1100 |  | Excavation works for HDPE Pipline 160 mm - (RD-L-6)-Z9-L06-IRR | 3d | 2027-06-16 | 2027-06-19 | RHD4ENSDZ9APPIRR140, RHD4ENMSRR2000, RHD4CZ9L06PT2402, RHD4CZ9L06PT3203 | Skilled labor [32.24 h]; Unskilled Labor [32.24 h]; Equipment Opreator [38.77 h]; Excavator-Poclain [32.24 h]; Dump Truck [6.4 h]; HDPE (160mm Diameter) - TSE - Depth: less than 1.5m [44.45 m] | 5,467.6 | L06 | Z9 | CONS | IRR | Excavation | bef |
| RHD4CZ9L06IRR1200 |  | Bedding works for HDPE Pipline 160 mm - (RD-L-6)-Z9-L06-IRR | 3d | 2027-06-20 | 2027-06-22 | RHD4CZ9L06IRR1100 | Skilled labor [24.18 h]; Unskilled Labor [48.46 h]; Equipment Opreator [48.46 h]; Excavator-Poclain [24.18 h]; Dump Truck [24.18 h]; HDPE (160mm Diameter) - TSE - Depth: less than 1.5m [22.23 m] | 2,733.8 | L06 | Z9 | CONS | IRR | Bedding | bef |
| RHD4CZ9L06IRR1300 |  | Installing for HDPE Pipline 160 mm - (RD-L-6)-Z9-L06-IRR | 3d | 2027-06-23 | 2027-06-26 | RHD4PRSHLDOSIRR1000, RHD4PRSHLSTAGIRR1000, RHD4CZ9L06IRR1200 | Unskilled Labor [64.58 h]; Plumber [32.24 h]; Equipment Opreator [32.24 h]; Boom Truck [32.24 h]; HDPE (160mm Diameter) - TSE - Depth: less than 1.5m [200.03 m] | 24,604.18 | L06 | Z9 | CONS | IRR | Installation | bef |
| RHD4CZ9L06IRR1400 |  | Primary Test for HDPE Pipline 160 mm - (RD-L-6)-Z9-L06-IRR | 2d | 2027-06-27 | 2027-06-28 | RHD4CZ9L06IRR1300 | Unskilled Labor [9.69 h]; Plumber [9.69 h]; Equipment Opreator [9.69 h]; Water Truck [9.69 h]; HDPE (160mm Diameter) - TSE - Depth: less than 1.5m [88.9 m] | 10,934.7 | L06 | Z9 | CONS | IRR | Primary Test | bef |
| RHD4CZ9L06IRR1500 |  | Backfilling and warning tape works for HDPE Pipline 160 mm - (RD-L-6)-Z9-L06-IRR | 3d | 2027-06-29 | 2027-07-01 | RHD4CZ9L06IRR1400 | Skilled labor [24.18 h]; Unskilled Labor [48.46 h]; Equipment Opreator [48.46 h]; Excavator-Poclain [24.18 h]; Dump Truck [24.18 h]; HDPE (160mm Diameter) - TSE - Depth: less than 1.5m [88.9 m] | 10,934.7 | L06 | Z9 | CONS | IRR | Backfilling | bef |
|  | 9141 | **RHD4-02-002-L06-(IRR)-Gate Valves (Direct Buried)** |  | 2027-06-24 | 2027-06-28 |  |  |  |  |  |  |  |  |  |
| RHD4CZ9L06IRR3100 |  | Installation for Direct Buried Gate Valves - (RD-L-6)-Z9-L06-IRR | 2d | 2027-06-24 | 2027-06-26 | RHD4PRSHLDOSIRR1100, RHD4PRSHLSTAGIRR1100, RHD4CZ9L06IRR1300 SS, RHD4CZ9L06IRR1300 FF | Unskilled Labor [10.89 h]; Plumber [10.89 h]; Gate valves dia 100 mm - TSE [1.8 nr] | 2,844 | L06 | Z9 | CONS | IRR | Installation | bef |
| RHD4CZ9L06IRR3200 |  | Stem and Service box for Direct Buried Gate Valves - (RD-L-6)-Z9-L06-IRR | 2d | 2027-06-27 | 2027-06-28 | RHD4PRSHLDOSIRR1300, RHD4PRSHLSTAGIRR1300, RHD4CZ9L06IRR3100 | Unskilled Labor [10.89 h]; Plumber [10.89 h]; Gate valves dia 100 mm - TSE [0.2 nr] | 316 | L06 | Z9 | CONS | IRR | Stem and Service box | bef |
|  | 9144 | **RHD4-02-002-L06-(IRR)-Wash out Chamber** |  |  |  |  |  |  |  |  |  |  |  |  |
|  | 9145 | **RHD4-02-002-L06-(IRR)-Wash out Valves** |  |  |  |  |  |  |  |  |  |  |  |  |
|  | 9146 | **RHD4-02-002-L06-(IRR)-Air Valve Chamber** |  |  |  |  |  |  |  |  |  |  |  |  |
|  | 9147 | **RHD4-02-002-L06-(IRR)-Air Valves** |  |  |  |  |  |  |  |  |  |  |  |  |
|  | 9166 | **RHD4-02-002-Z9-L06-Medium Voltage Network - MV** |  | 2027-03-07 | 2027-04-07 |  |  |  |  |  |  |  |  |  |
|  | 9167 | **RHD4-02-002-L06-(MV)-Medium Voltage cable trench** |  | 2027-03-07 | 2027-04-07 |  |  |  |  |  |  |  |  |  |
| RHD4CZ9L06MV1100 |  | Excavation for Medium Voltage Trench - (RD-L-6)-Z9-L06-MV | 5d | 2027-03-07 | 2027-03-15 | RHD4ENSDZ9APPMV150, RHD4CZ9L06RD3100 | Skilled labor [51.08 h]; Unskilled Labor [102.15 h]; Equipment Opreator [153.34 h]; Excavator-Poclain [51.08 h]; Dump Truck [102.15 h]; Excavation for Trench size 40cm wide and 80cm deep ( for 1 cables) [310.63 m3]; Excavation for Trench size 60cm wide and 80cm deep ( for 2 cables) [17.84 m3] | 3,284.67 | L06 | Z9 | CONS | MV | Excavation | AFT |
| RHD4CZ9L06MV1200 |  | Trench Backfilling for Medium Voltage Network - (RD-L-6)-Z9-L06-MV | 5d | 2027-04-03 | 2027-04-07 | RHD4CZ9L06MV4200 | Skilled labor [51.08 h]; Unskilled Labor [51.08 h]; Equipment Opreator [102.15 h]; Dump Truck [102.15 h]; Excavation for Trench size 40cm wide and 80cm deep ( for 1 cables) [133.13 m3]; Excavation for Trench size 60cm wide and 80cm deep ( for 2 cables) [7.65 m3] | 1,407.71 | L06 | Z9 | CONS | MV | Backfilling | AFT |

| ID | WBS | Activity | Duration | Start | Finish | Predecessors | Resources | Cost | RDH4-01-001-Road and Block Names-1 | RDH4-01-001-Zones-1 | RDH4-01-001-Phases-1 | RDH4-01-001-Networks-1 | RDH4-01-001-Work Method-1 | RDH4-01-001-MENEM |
| --- | --- | --- | --- | --- | --- | --- | --- | --- | --- | --- | --- | --- | --- | --- |
|  | 9168 | **RHD4-02-002-L06-(MV)-Medium Voltage duct banks** |  | 2027-03-07 | 2027-03-18 |  |  |  |  |  |  |  |  |  |
| RHD4CZ9L06MV2100 |  | Excavation of Duct Banks for Medium Voltage Network - (RD-L-6)-Z9-L06-MV | 2d | 2027-03-07 | 2027-03-08 | RHD4ENSDZ9APPMV150, RHD4CZ9L06RD3100 | Unskilled Labor [11.76 h]; Equipment Opreator [23.41 h]; Excavator-Poclain [11.76 h]; Dump Truck [11.76 h]; Duct bank for MV cables UPVC (2xø150mm) [1.62 m] | 332.71 | L06 | Z9 | CONS | MV | Excavation | bef |
| RHD4CZ9L06MV2200 |  | Installation of Duct Banks for Medium Voltage Network - (RD-L-6)-Z9-L06-MV | 2d | 2027-03-13 | 2027-03-14 | RHD4PRSHLDOSMV1000, RHD4PRSHLSTAGMV1000, RHD4CZ9L06MV2100 | Unskilled Labor [17.64 h]; Equipment Opreator [35.2 h]; Excavator-Poclain [17.64 h]; Dump Truck [17.64 h]; Duct bank for MV cables UPVC (2xø150mm) [1.62 m] | 332.71 | L06 | Z9 | CONS | MV | Installing | bef |
| RHD4CZ9L06MV2300 |  | Pouring of Duct Banks for Medium Voltage Network - (RD-L-6)-Z9-L06-MV | 2d | 2027-03-15 | 2027-03-16 | RHD4CZ9L06MV2200 | Unskilled Labor [11.76 h]; Equipment Opreator [23.41 h]; Excavator-Poclain [11.76 h]; Dump Truck [11.76 h]; Duct bank for MV cables UPVC (2xø150mm) [10.5 m] | 2,163 | L06 | Z9 | CONS | MV | Pouring | bef |
| RHD4CZ9L06MV2400 |  | Backfilling of Duct Banks for Medium Voltage Network - (RD-L-6)-Z9-L06-MV | 2d | 2027-03-17 | 2027-03-18 | RHD4CZ9L06MV2300 | Unskilled Labor [8.8 h]; Equipment Opreator [17.64 h]; Excavator-Poclain [8.8 h]; Dump Truck [8.8 h]; Duct bank for MV cables UPVC (2xø150mm) [2.42 m] | 499.07 | L06 | Z9 | CONS | MV | Backfilling | bef |
|  | 9169 | **RHD4-02-002-L06-(MV)-Medium Voltage cables 3Cx 500 mm²** |  | 2027-03-16 | 2027-03-28 |  |  |  |  |  |  |  |  |  |
| RHD4CZ9L06MV3100 |  | Installation of Medium Voltage Cables 3Cx 500 mm² - (RD-L-6)-Z9-L06-MV | 5d | 2027-03-16 | 2027-03-21 | RHD4PRSHLDOSMV1100, RHD4ENMSMV2000, RHD4ENMSMV2010, RHD4PRSHLSTAGMV1100, RHD4CZ9L06MV1100 | Skilled labor [44.11 h]; Unskilled Labor [176.21 h]; Electrician [88.1 h]; Equipment Opreator [132.21 h]; Boom Truck [44.11 h]; Cable Laying Machine [88.1 h]; Cable 13.8 kV 3Cx 500 mm² Al/XLPE,/LLDPE / Unarmored [546.19 m] | 86,843.53 | L06 | Z9 | CONS | MV | Installation | AFT |
| RHD4CZ9L06MV3200 |  | Joints Installation of Medium Voltage Cables 3Cx 500 mm² - (RD-L-6)-Z9-L06-MV | 2d | 2027-03-22 | 2027-03-23 | RHD4PRSHLDOSMV1300, RHD4PRSHLSTAGMV1300, RHD4CZ9L06MV3100 | Skilled labor [5.45 h]; Unskilled Labor [21.78 h]; Electrician [10.89 h]; Equipment Opreator [5.45 h]; Boom Truck [5.45 h]; Straight joints cables for 13.8 kv 3Cx 500 mm², Al /XLPE/LLDPE [1 Unit] | 3,248 | L06 | Z9 | CONS | MV | Joints Installation | AFT |
| RHD4CZ9L06MV3300 |  | Testing of Medium Voltage Cables 3Cx 500 mm² - (RD-L-6)-Z9-L06-MV | 2d | 2027-03-24 | 2027-03-25 | RHD4CZ9L06MV3200 | Skilled labor [13.18 h]; Unskilled Labor [52.8 h]; Electrician [26.46 h]; Cable 13.8 kV 3Cx 500 mm² Al/XLPE,/LLDPE / Unarmored [60.69 m] | 9,649.28 | L06 | Z9 | CONS | MV | Testing | AFT |
| RHD4CZ9L06MV3400 |  | Termination of Medium Voltage Cables 3Cx 500 mm² - (RD-L-6)-Z9-L06-MV | 2d | 2027-03-27 | 2027-03-28 | RHD4CZ9L06MV3300 | Unskilled Labor [1.74 h]; Electrician [1.74 h]; Cable Termination for 13.8 kv 3Cx 500 mm², Al /XLPE/LLDPE [8 Unit] | 21,080 | L06 | Z9 | CONS | MV | Termination | AFT |
|  | 9170 | **RHD4-02-002-L06-(MV)-Medium Voltage cables 3Cx 50 mm²** |  | 2027-03-27 | 2027-03-28 |  |  |  |  |  |  |  |  |  |
| RHD4CZ9L06MV3401 |  | Termination of Medium Voltage Cables 3Cx 50 mm² - (RD-L-6)-Z9-L06-MV | 2d | 2027-03-27 | 2027-03-28 | RHD4CZ9L06MV3400 SS | Unskilled Labor [29.08 h]; Electrician [14.48 h]; Cable Termination for 13.8 kv 3Cx 500 mm², Al /XLPE/LLDPE [2 Unit] | 5,270 | L06 | Z9 | CONS | MV | Termination | AFT |
|  | 9171 | **RHD4-02-002-L06-(MV)-Normally open Point (Outdoor Type)** |  | 2027-03-29 | 2027-04-01 |  |  |  |  |  |  |  |  |  |
| RHD4CZ9L06MV4100 |  | Installation for Normally open Point - (RD-L-6)-Z9-L06-MV | 2d | 2027-03-29 | 2027-03-30 | RHD4PRSHLDOSMV1400, RHD4PRSHLSTAGMV1400, RHD4CZ9L06MV3401 | Unskilled Labor [0.11 h]; Equipment Opreator [0.22 h]; Excavator-Poclain [0.11 h]; Dump Truck [0.11 h]; Normally Open Point 13.8 KV Outdoor type [0.9 Unit] | 77,219.1 | L06 | Z9 | CONS | MV | Installation | AFT |
| RHD4CZ9L06MV4200 |  | Termination for Normally open Point - (RD-L-6)-Z9-L06-MV | 2d | 2027-03-31 | 2027-04-01 | RHD4CZ9L06MV4100 | Unskilled Labor [3.59 h]; Equipment Opreator [7.3 h]; Excavator-Poclain [3.59 h]; Dump Truck [3.59 h]; Normally Open Point 13.8 KV Outdoor type [0.1 Unit] | 8,579.9 | L06 | Z9 | CONS | MV | Termination | AFT |
|  | 9173 | **RHD4-02-002-Z9-L06-Low Voltage Network - LV** |  | 2027-06-29 | 2027-07-08 |  |  |  |  |  |  |  |  |  |
|  | 9174 | **RHD4-02-002-L06-(LV)-Low Voltage duct banks** |  |  |  |  |  |  |  |  |  |  |  |  |
|  | 9176 | **RHD4-02-002-L06-(LV)-Low Voltage cables** |  | 2027-06-29 | 2027-07-08 |  |  |  |  |  |  |  |  |  |
| RHD4CZ9L06LV3100 |  | Excavation for Low Voltage Cables for Low Voltage Network - (RD-L-6)-Z9-L06-LV | 3d | 2027-06-29 | 2027-07-01 | RHD4ENSDZ9APPLV160, RHD4CZ9L06MV1200, RHD4CZ9L06IRR3200 | Skilled labor [23.2 h]; Unskilled Labor [46.4 h]; Equipment Opreator [46.4 h]; Excavator-Poclain [23.2 h]; Boom Truck [23.2 h]; Cable, Copper 3x10mm2/ CU/XLPE/SWA/PVC [106.54 m] | 4,155.14 | L06 | Z9 | CONS | LV | Excavation | AFT |
| RHD4CZ9L06LV3200 |  | Cable Laying of Low Voltage Cables for Low Voltage Network - (RD-L-6)-Z9-L06-LV | 2d | 2027-07-03 | 2027-07-04 | RHD4PRSHLDOSLV1100, RHD4ENMSLV2000, RHD4ENMSLV2010, RHD4PRSHLSTAGLV1100, RHD4CZ9L06LV3100 | Skilled labor [19.38 h]; Unskilled Labor [77.32 h]; Electrician [38.66 h]; Equipment Opreator [58.05 h]; Boom Truck [19.38 h]; Cable Laying Machine [38.66 h]; Cable, Copper 3x10mm2/ CU/XLPE/SWA/PVC [319.63 m] | 12,465.41 | L06 | Z9 | CONS | LV | Cable Laying | AFT |
| RHD4CZ9L06LV3300 |  | Warning tape and Backfill for Low Voltage Cables for Low Voltage Network - (RD-L-6)-Z9-L06-LV | 2d | 2027-07-05 | 2027-07-06 | RHD4CZ9L06LV3200 | Skilled labor [19.38 h]; Unskilled Labor [77.32 h]; Electrician [38.66 h]; Equipment Opreator [19.38 h]; Boom Truck [19.38 h]; Cable, Copper 3x10mm2/ CU/XLPE/SWA/PVC [79.91 m] | 3,116.35 | L06 | Z9 | CONS | LV | Warning tape and Backfill | AFT |
| RHD4CZ9L06LV3400 |  | Testing of Low Voltage Cables for Low Voltage Network - (RD-L-6)-Z9-L06-LV | 2d | 2027-07-07 | 2027-07-08 | RHD4CZ9L06LV3300 | Skilled labor [11.65 h]; Unskilled Labor [46.4 h]; Electrician [23.2 h]; Equipment Opreator [11.65 h]; Boom Truck [11.65 h]; Cable, Copper 3x10mm2/ CU/XLPE/SWA/PVC [26.64 m] | 1,038.78 | L06 | Z9 | CONS | LV | Testing | AFT |
|  | 9179 | **RHD4-02-002-Z9-L06-Street Lighting Network - SL** |  | 2027-03-20 | 2027-08-11 |  |  |  |  |  |  |  |  |  |
|  | 9180 | **RHD4-02-002-L06-(SL)-Street Lighting duct banks** |  | 2027-03-20 | 2027-03-28 |  |  |  |  |  |  |  |  |  |
| RHD4CZ9L06SL2100 |  | Excavation of Duct Banks for Street Lighting Network - (RD-L-6)-Z9-L06-SL | 2d | 2027-03-20 | 2027-03-21 | RHD4ENSDZ9APPSL170, RHD4ENSDZ9APPLV160, RHD4CZ9L06MV2400 | Skilled labor [12.52 h]; Unskilled Labor [12.52 h]; Equipment Opreator [24.94 h]; Excavator-Poclain [12.52 h]; Dump Truck [12.52 h]; Road Crossing Duct for Street Lighting cables UPVC (4x?110mm) [1.72 m] | 454.08 | L06 | Z9 | CONS | SL | Excavation | bef |
| RHD4CZ9L06SL2200 |  | Installation of Duct Banks for Street Lighting Network - (RD-L-6)-Z9-L06-SL | 2d | 2027-03-22 | 2027-03-23 | RHD4PRSHLDOSSL1000, RHD4PRSHLSTAGSL1000, RHD4CZ9L06SL2100 | Carpenter [1.85 h]; Skilled labor [18.73 h]; Unskilled Labor [18.73 h]; Steel Fixer [1.85 h]; Road Crossing Duct for Street Lighting cables UPVC (4x?110mm) [1.72 m] | 454.08 | L06 | Z9 | CONS | SL | Installing | bef |
| RHD4CZ9L06SL2300 |  | Pouring of Duct Banks for Street Lighting Network - (RD-L-6)-Z9-L06-SL | 2d | 2027-03-24 | 2027-03-25 | RHD4CZ9L06SL2200 | Skilled labor [12.52 h]; Unskilled Labor [12.52 h]; Equipment Opreator [5.01 h]; Concrete Mixer Truck [2.5 h]; Concrete Pump [2.5 h]; Road Crossing Duct for Street Lighting cables UPVC (4x?110mm) [11.18 m] | 2,951.52 | L06 | Z9 | CONS | SL | Pouring | bef |
| RHD4CZ9L06SL2400 |  | Backfilling of Duct Banks for Street Lighting Network - (RD-L-6)-Z9-L06-SL | 2d | 2027-03-27 | 2027-03-28 | RHD4CZ9L06SL2300 | Skilled labor [9.37 h]; Unskilled Labor [9.37 h]; Equipment Opreator [3.7 h]; Excavator-Poclain [3.7 h]; Road Crossing Duct for Street Lighting cables UPVC (4x?110mm) [2.58 m] | 681.12 | L06 | Z9 | CONS | SL | Backfilling | bef |

| ID | WBS | Activity | Duration | Start | Finish | Predecessors | Resources | Cost | RDH4-01-001-Road and Block Names-1 | RDH4-01-001-Zones-1 | RDH4-01-001-Phases-1 | RDH4-01-001-Networks-1 | RDH4-01-001-Work Method-1 | RDH4-01-001-MENEM |
| --- | --- | --- | --- | --- | --- | --- | --- | --- | --- | --- | --- | --- | --- | --- |
|  | 9181 | **RHD4-02-002-L06-(SL)-Street Lighting Drawpit** |  | 2027-07-10 | 2027-07-13 |  |  |  |  |  |  |  |  |  |
| RHD4CZ9L06SL5100 |  | Excavation of Drawpit size 600x600x900mm for Street Lighting Network - (RD-L-6)-Z9-L06-SL | 2d | 2027-07-10 | 2027-07-11 | RHD4ENSDZ9APPSL170, RHD4CZ9L06SL2300, RHD4CZ9L06LV3400 | Skilled labor [1.85 h]; Unskilled Labor [1.85 h]; Equipment Opreator [1.42 h]; Excavator-Poclain [0.8 h]; Dump Truck [0.8 h]; Drawpit with medium duty steel cover, size600x600x900mm, [0.3 Unit] | 735.3 | L06 | Z9 | CONS | SL | Excavation | AFT |
| RHD4CZ9L06SL5200 |  | Installation of Drawpit size 600x600x900mm for Street Lighting Network - (RD-L-6)-Z9-L06-SL | 2d | 2027-07-12 | 2027-07-13 | RHD4PRSHLDOSSL1400, RHD4PRSHLSTAGSL1400, RHD4CZ9L06SL5100 | Skilled labor [1.85 h]; Unskilled Labor [1.85 h]; Equipment Opreator [0.8 h]; Boom Truck [0.8 h]; Drawpit with medium duty steel cover, size600x600x900mm, [1.7 Unit] | 4,166.7 | L06 | Z9 | CONS | SL | Installation | AFT |
|  | 9182 | **RHD4-02-002-L06-(SL)-Street Lighting cables** |  | 2027-07-14 | 2027-07-27 |  |  |  |  |  |  |  |  |  |
| RHD4CZ9L06SL3100 |  | Excavation for Street Lighting Cables for Street Lighting Network - (RD-L-6)-Z9-L06-SL | 4d | 2027-07-14 | 2027-07-18 | RHD4ENSDZ9APPSL170, RHD4CZ9L06SL5200 | Skilled labor [32.8 h]; Unskilled Labor [65.45 h]; Equipment Opreator [65.45 h]; Excavator-Poclain [32.8 h]; Boom Truck [32.8 h]; Cable, Copper 4x10mm2/ CU/XLPE/SWA/PVC + 1x10mm2 CU/PVC [150.26 m] | 7,362.86 | L06 | Z9 | CONS | SL | Excavation | AFT |
| RHD4CZ9L06SL3200 |  | Cable Laying of Street Lighting Cables for Street Lighting Network - (RD-L-6)-Z9-L06-SL | 3d | 2027-07-19 | 2027-07-21 | RHD4PRSHLDOSSL1100, RHD4ENMSSL2000, RHD4ENMSSL2010, RHD4PRSHLSTAGSL1100, RHD4CZ9L06SL3100 | Skilled labor [27.2 h]; Unskilled Labor [109.12 h]; Electrician [54.56 h]; Equipment Opreator [81.79 h]; Boom Truck [27.2 h]; Cable Laying Machine [54.56 h]; Cable, Copper 4x10mm2/ CU/XLPE/SWA/PVC + 1x10mm2 CU/PVC [450.79 m] | 22,088.58 | L06 | Z9 | CONS | SL | Cable Laying | AFT |
| RHD4CZ9L06SL3300 |  | Warning tape and Backfill for Street Lighting Cables for Street Lighting Network - (RD-L-6)-Z9-L06-SL | 3d | 2027-07-22 | 2027-07-25 | RHD4CZ9L06SL3200 | Skilled labor [27.2 h]; Unskilled Labor [109.12 h]; Electrician [54.56 h]; Equipment Opreator [27.2 h]; Boom Truck [27.2 h]; Cable, Copper 4x10mm2/ CU/XLPE/SWA/PVC + 1x10mm2 CU/PVC [112.7 m] | 5,522.3 | L06 | Z9 | CONS | SL | Warning tape and Backfill | AFT |
| RHD4CZ9L06SL3400 |  | Testing of Street Lighting Cables for Street Lighting Network - (RD-L-6)-Z9-L06-SL | 2d | 2027-07-26 | 2027-07-27 | RHD4CZ9L06SL3300 | Skilled labor [16.34 h]; Unskilled Labor [65.45 h]; Electrician [32.8 h]; Equipment Opreator [16.34 h]; Boom Truck [16.34 h]; Cable, Copper 4x10mm2/ CU/XLPE/SWA/PVC + 1x10mm2 CU/PVC [37.57 m] | 1,840.71 | L06 | Z9 | CONS | SL | Testing | AFT |
|  | 9183 | **RHD4-02-002-L06-(SL)-Street Lighting Poles** |  | 2027-07-28 | 2027-08-09 |  |  |  |  |  |  |  |  |  |
| RHD4CZ9L06SL1100 |  | Excavation for RC Base for Lighting Poles for Street Lighting Network - (RD-L-6)-Z9-L06-SL | 2d | 2027-07-28 | 2027-07-29 | RHD4ENSDZ9APPSL170, RHD4CZ9L06SL3400 | Skilled labor [20.36 h]; Unskilled Labor [20.36 h]; Equipment Opreator [40.62 h]; Excavator-Poclain [20.36 h]; Dump Truck [20.36 h]; Lighting poles single arms, height of ( 10 ) meters [2.8 Unit] | 9,539.6 | L06 | Z9 | CONS | SL | Excavation | AFT |
| RHD4CZ9L06SL1200 |  | Installation for RC Base for Lighting Poles for Street Lighting Network - (RD-L-6)-Z9-L06-SL | 2d | 2027-07-31 | 2027-08-01 | RHD4CZ9L06SL1100 | Skilled labor [20.36 h]; Unskilled Labor [20.36 h]; Equipment Opreator [40.62 h]; Excavator-Poclain [20.36 h]; Dump Truck [20.36 h]; Lighting poles single arms, height of ( 10 ) meters [7 Unit] | 23,849 | L06 | Z9 | CONS | SL | RC Base | AFT |
| RHD4CZ9L06SL1300 |  | Backfill for RC Base for Lighting Poles for Street Lighting Network - (RD-L-6)-Z9-L06-SL | 2d | 2027-08-02 | 2027-08-03 | RHD4CZ9L06SL1200 | Skilled labor [20.36 h]; Unskilled Labor [20.36 h]; Equipment Opreator [40.62 h]; Excavator-Poclain [20.36 h]; Dump Truck [20.36 h]; Lighting poles single arms, height of ( 10 ) meters [1.4 Unit] | 4,769.8 | L06 | Z9 | CONS | SL | Backfill | AFT |
| RHD4CZ9L06SL1400 |  | Installation for Lighting Poles for Street Lighting Network - (RD-L-6)-Z9-L06-SL | 3d | 2027-08-04 | 2027-08-07 | RHD4PRSHLDOSSL1200, RHD4ENMSSL2000, RHD4ENMSSL2010, RHD4PRSHLSTAGSL1200, RHD4CZ9L06SL1300 | Skilled labor [30.49 h]; Unskilled Labor [30.49 h]; Electrician [30.49 h]; Equipment Opreator [30.49 h]; Boom Truck [30.49 h]; Lighting poles single arms, height of ( 10 ) meters [16.8 Unit] | 57,237.6 | L06 | Z9 | CONS | SL | Poles Installation | AFT |
| RHD4CZ9L06SL1500 |  | Luminaire Installation for Lighting Poles for Street Lighting Network - (RD-L-6)-Z9-L06-SL | 2d | 2027-08-08 | 2027-08-09 | RHD4PRSHLDOSSL1300, RHD4PRSHLSTAGSL1300, RHD4CZ9L06SL1400 | Unskilled Labor [40.62 h]; Electrician [20.36 h]; Equipment Opreator [4 h]; Boom Truck [8.17 h]; Street Lighting( LED) Luminaire of Output ?10898 lumen [28 Unit] | 16,464 | L06 | Z9 | CONS | SL | Luminaire Installation | AFT |
|  | 9185 | **RHD4-02-002-L06-(SL)-Street Lighting Earthing System** |  | 2027-08-10 | 2027-08-11 |  |  |  |  |  |  |  |  |  |
| RHD4CZ9L06SL6100 |  | Installation of Earthing for Lighting Poles and Fedder Pillers for Street Lighting Network - (RD-L-6)-Z9-L06-SL | 2d | 2027-08-10 | 2027-08-11 | RHD4ENMSER2000, RHD4ENMSER2010, RHD4CZ9L06SL1500 | Skilled labor [0.8 h]; Unskilled Labor [0.8 h]; Equipment Opreator [1.42 h]; Excavator-Poclain [0.8 h]; Dump Truck [0.8 h]; Including lighting poles circuits - ER [1 Unit] | 613 | L06 | Z9 | CONS | SL | Installation | AFT |
|  | 9191 | **RHD4-02-002-Z9-L06-Telecommunications Network - TC** |  | 2027-08-12 | 2027-09-11 |  |  |  |  |  |  |  |  |  |
|  | 9192 | **RHD4-02-002-L06-(TC)-Telecommunications Ducts** |  | 2027-08-12 | 2027-09-04 |  |  |  |  |  |  |  |  |  |
| RHD4CZ9L06TC2100 |  | Excavation of HDPE Ducts for Telecom Network - (RD-L-6)-Z9-L06-TC | 6d | 2027-08-12 | 2027-08-18 | RHD4ENSDZ9APPTC190, RHD4CZ9L06SL6100 | Skilled labor [57.28 h]; Unskilled Labor [57.28 h]; Equipment Opreator [114.68 h]; Excavator-Poclain [57.28 h]; Dump Truck [57.28 h]; (6*50mm) HDPE ducts -TC [101.22 m]; (6*50mm+2*32mm) HDPE ducts -TC [53.2 m]; (2*32mm) HDPE ducts -TC [3.5 m] | 14,825.16 | L06 | Z9 | CONS | TC | Excavation | AFT |
| RHD4CZ9L06TC2200 |  | Installation of HDPE Ducts for Telecom Network - (RD-L-6)-Z9-L06-TC | 8d | 2027-08-19 | 2027-08-28 | RHD4PRSHLDOSTC1000, RHD4PRSHLSTAGTC1000, RHD4CZ9L06TC2100 | Carpenter [8.6 h]; Skilled labor [86.03 h]; Unskilled Labor [86.03 h]; Steel Fixer [8.6 h]; (6*50mm) HDPE ducts -TC [328.96 m]; (6*50mm+2*32mm) HDPE ducts -TC [172.9 m]; (2*32mm) HDPE ducts -TC [11.38 m] | 48,181.77 | L06 | Z9 | CONS | TC | Installing | AFT |
| RHD4CZ9L06TC2400 |  | Backfilling of HDPE Ducts for Telecom Network - (RD-L-6)-Z9-L06-TC | 6d | 2027-08-29 | 2027-09-04 | RHD4CZ9L06TC2200 | Skilled labor [57.28 h]; Unskilled Labor [57.28 h]; Equipment Opreator [22.98 h]; Excavator-Poclain [22.98 h]; (6*50mm) HDPE ducts -TC [75.92 m]; (6*50mm+2*32mm) HDPE ducts -TC [39.9 m]; (2*32mm) HDPE ducts -TC [2.62 m] | 11,118.87 | L06 | Z9 | CONS | TC | Backfilling | AFT |
|  | 9193 | **RHD4-02-002-L06-(TC)-Telecommunications Manholes** |  | 2027-09-05 | 2027-09-11 |  |  |  |  |  |  |  |  |  |
| RHD4CZ9L06TC5100 |  | Excavation for Manholes for Telecom Network - (RD-L-6)-Z9-L06-TC | 3d | 2027-09-05 | 2027-09-07 | RHD4ENSDZ9APPTC190, RHD4CZ9L06TC2400 | Skilled labor [8.17 h]; Unskilled Labor [8.17 h]; Equipment Opreator [6.53 h]; Excavator-Poclain [3.27 h]; Dump Truck [3.27 h]; Manhole Type 1 - TC [0.9 nr] | 6,066.9 | L06 | Z9 | CONS | TC | Excavation | AFT |
| RHD4CZ9L06TC5200 |  | Installation of Manholes for Telecom Network - (RD-L-6)-Z9-L06-TC | 3d | 2027-09-08 | 2027-09-11 | RHD4PRSHLDOSTC1200, RHD4PRSHLSTAGTC1200, RHD4CZ9L06TC5100 | Skilled labor [8.17 h]; Unskilled Labor [8.17 h]; Equipment Opreator [3.27 h]; Boom Truck [3.27 h]; Manhole Type 1 - TC [5.1 nr] | 34,379.1 | L06 | Z9 | CONS | TC | Installation | AFT |

| ID | WBS | Activity | Duration | Start | Finish | Predecessors | Resources | Cost | RDH4-01-001-Road and Block Names-1 | RDH4-01-001-Zones-1 | RDH4-01-001-Phases-1 | RDH4-01-001-Networks-1 | RDH4-01-001-Work Method-1 | RDH4-01-001-MENEM |
| --- | --- | --- | --- | --- | --- | --- | --- | --- | --- | --- | --- | --- | --- | --- |
|  | 9195 | **RHD4-02-002-Z9-L06-Information and Communication Technologies - ICT** |  | 2027-09-12 | 2027-10-09 |  |  |  |  |  |  |  |  |  |
|  | 9196 | **RHD4-02-002-L06-(ICT)-Information and Communication Technologies Ducts** |  | 2027-09-12 | 2027-10-02 |  |  |  |  |  |  |  |  |  |
| RHD4CZ9L06ICT2100 |  | Excavation of HDPE Ducts for ICT Network - (RD-L-6)-Z9-L06-ICT | 5d | 2027-09-12 | 2027-09-16 | RHD4ENSDZ9APPICT200, RHD4CZ9L06TC5200 | Skilled labor [48.57 h]; Unskilled Labor [48.57 h]; Equipment Opreator [97.25 h]; Excavator-Poclain [48.57 h]; Dump Truck [48.57 h]; (2*50mm) HDPE ducts -ICT [76.72 m]; (2*50mm+2*32mm) HDPE ducts -ICT [52.92 m]; (2*32mm) HDPE ducts -ICT [4.3 m] | 6,871.8 | L06 | Z9 | CONS | ICT | Excavation | AFT |
| RHD4CZ9L06ICT2200 |  | Installation of HDPE Ducts for ICT Network - (RD-L-6)-Z9-L06-ICT | 7d | 2027-09-18 | 2027-09-26 | RHD4PRSHLDOSICT1000, RHD4PRSHLSTAGICT1000, RHD4CZ9L06ICT2100 | Carpenter [7.3 h]; Skilled labor [72.97 h]; Unskilled Labor [72.97 h]; Steel Fixer [7.3 h]; (2*50mm) HDPE ducts -ICT [249.34 m]; (2*50mm+2*32mm) HDPE ducts -ICT [171.99 m]; (2*32mm) HDPE ducts -ICT [13.98 m] | 22,333.57 | L06 | Z9 | CONS | ICT | Installing | AFT |
| RHD4CZ9L06ICT2400 |  | Backfilling of HDPE Ducts for ICT Network - (RD-L-6)-Z9-L06-ICT | 5d | 2027-09-27 | 2027-10-02 | RHD4CZ9L06ICT2200 | Skilled labor [48.57 h]; Unskilled Labor [48.57 h]; Equipment Opreator [19.49 h]; Excavator-Poclain [19.49 h]; (2*50mm) HDPE ducts -ICT [57.54 m]; (2*50mm+2*32mm) HDPE ducts -ICT [39.69 m]; (2*32mm) HDPE ducts -ICT [3.23 m] | 5,153.9 | L06 | Z9 | CONS | ICT | Backfilling | AFT |
|  | 9197 | **RHD4-02-002-L06-(ICT)-Information and Communication Technologies Manholes** |  | 2027-10-03 | 2027-10-09 |  |  |  |  |  |  |  |  |  |
| RHD4CZ9L06ICT5100 |  | Excavation for Manholes for ICT Network - (RD-L-6)-Z9-L06-ICT | 3d | 2027-10-03 | 2027-10-05 | RHD4ENSDZ9APPICT200, RHD4CZ9L06ICT2400, RHD4CZ9B36EX1000 | Skilled labor [8.17 h]; Unskilled Labor [8.17 h]; Equipment Opreator [6.53 h]; Excavator-Poclain [3.27 h]; Dump Truck [3.27 h]; Manhole Type 1 - ICT [3.55 nr] | 19,129.68 | L06 | Z9 | CONS | ICT | Excavation | AFT |
| RHD4CZ9L06ICT5200 |  | Installation of Manholes for ICT Network - (RD-L-6)-Z9-L06-ICT | 3d | 2027-10-06 | 2027-10-09 | RHD4PRSHLDOSICT1200, RHD4PRSHLSTAGICT1200, RHD4CZ9L06ICT5100 | Skilled labor [8.17 h]; Unskilled Labor [8.17 h]; Equipment Opreator [25.05 h]; Boom Truck [3.27 h]; Manhole Type 1 - ICT [7.75 nr] | 41,780.28 | L06 | Z9 | CONS | ICT | Installation | AFT |
|  | 9186 | **RHD4-02-002-Z9-L06-Landscape Network - LS** |  |  |  |  |  |  |  |  |  |  |  |  |
|  | 9187 | **RHD4-02-002-L06-(LS)-Landscape Lighting cables** |  |  |  |  |  |  |  |  |  |  |  |  |
|  | 9188 | **RHD4-02-002-L06-(LS)-Landscape Feeder Pillars** |  |  |  |  |  |  |  |  |  |  |  |  |
|  | 9189 | **RHD4-02-002-L06-(LS)-Landscape Bollard Poles** |  |  |  |  |  |  |  |  |  |  |  |  |
|  | 9190 | **RHD4-02-002-L06-(LS)-Landscape Feeder Pillars Earthing** |  |  |  |  |  |  |  |  |  |  |  |  |
|  | 9199 | **RHD4-02-002-Z9-L06-Security Network - CCTV** |  |  |  |  |  |  |  |  |  |  |  |  |
|  | 9200 | **RHD4-02-002-L06-(CCTV)-Civil Works** |  |  |  |  |  |  |  |  |  |  |  |  |
|  | 8460 | **RHD4-02-002-Z9-L02** |  | 2026-08-15 | 2028-03-29 |  |  |  |  |  |  |  |  |  |
|  | 8491 | **RHD4-02-002-Z9-L02-Crossings Sewage Network - SWCr** |  |  |  |  |  |  |  |  |  |  |  |  |
|  | 8501 | **RHD4-02-002-L02-(SWCr)-MH Works - 1200 mm diameter** |  |  |  |  |  |  |  |  |  |  |  |  |
|  | 8503 | **RHD4-02-002-L02-(SWCr)-MH Works - 1500 mm diameter** |  |  |  |  |  |  |  |  |  |  |  |  |
|  | 8496 | **RHD4-02-002-L02-(SWCr)-GRP Pipes - 700 mm diameter** |  |  |  |  |  |  |  |  |  |  |  |  |
|  | 8497 | **RHD4-02-002-L02-(SWCr)-UPVC Pipes - 200 mm diameter** |  |  |  |  |  |  |  |  |  |  |  |  |
|  | 8535 | **RHD4-02-002-Z9-L02-Crossings Potable Network - PTCr** |  |  |  |  |  |  |  |  |  |  |  |  |
|  | 8537 | **RHD4-02-002-L02-(PTCr)-HDPE Pipes - 160 mm diameter** |  |  |  |  |  |  |  |  |  |  |  |  |
|  | 8536 | **RHD4-02-002-L02-(PTCr)-HDPE Pipes - 110 mm diameter** |  |  |  |  |  |  |  |  |  |  |  |  |
|  | 8541 | **RHD4-02-002-L02-(PTCr)-Gate Valves (Direct Buried)** |  |  |  |  |  |  |  |  |  |  |  |  |
|  | 8544 | **RHD4-02-002-L02-(PTCr)-Wash out Valve Chambers** |  |  |  |  |  |  |  |  |  |  |  |  |
|  | 8545 | **RHD4-02-002-L02-(PTCr)-Wash out Valves** |  |  |  |  |  |  |  |  |  |  |  |  |
|  | 8582 | **RHD4-02-002-Z9-L02-Crossings Irrigation Network - IRRC** |  |  |  |  |  |  |  |  |  |  |  |  |
|  | 8583 | **RHD4-02-002-L02-(IRRC)-HDPE Pipes - 160 mm diameter** |  |  |  |  |  |  |  |  |  |  |  |  |
|  | 8590 | **RHD4-02-002-L02-(IRRC)-HDPE Pipes - 500 mm diameter** |  |  |  |  |  |  |  |  |  |  |  |  |
|  | 8591 | **RHD4-02-002-L02-(IRRC)-Gate Valves (Direct Buried)** |  |  |  |  |  |  |  |  |  |  |  |  |
|  | 8592 | **RHD4-02-002-L02-(IRRC)-Butterfly Valve Chamber** |  |  |  |  |  |  |  |  |  |  |  |  |
|  | 8593 | **RHD4-02-002-L02-(IRRC)-Butterfly Valves** |  |  |  |  |  |  |  |  |  |  |  |  |
|  | 8594 | **RHD4-02-002-L02-(IRRC)-Wash out Chamber** |  |  |  |  |  |  |  |  |  |  |  |  |
|  | 8595 | **RHD4-02-002-L02-(IRRC)-Wash out Valves** |  |  |  |  |  |  |  |  |  |  |  |  |
|  | 8639 | **RHD4-02-002-Z9-L02-Road Works - RD** |  | 2027-03-06 | 2028-03-29 |  |  |  |  |  |  |  |  |  |
|  | 8640 | **RHD4-02-002-L02-(RD)-Subgrade** |  | 2027-03-06 | 2027-03-21 |  |  |  |  |  |  |  |  |  |
| RHD4CZ9L02RD1100 |  | Supply, lay and compaction subgrade compacted thickness 300 mm for Roads - (RD-L-2)-Z9-L02-RD | 11d | 2027-03-06 | 2027-03-21 | RHD4ENSDZ9APPEW100, RHD4ENSDZ9APPRD220, RHD4CZ9L02ICT3400, RHD4CZ9L02TC3400 | Skilled labor [116.2 h]; Unskilled Labor [232.29 h]; Electrician [116.2 h]; Equipment Opreator [793.47 h]; Water Truck [38.33 h]; Roller compactor [58.05 h]; Grader [116.2 h]; Dump Truck [580.89 h]; Subgrade [7263.38 m3] | 138,004.22 | L02 | Z9 | CONS | RD | Subgrade | bef |

| ID | WBS | Activity | Duration | Start | Finish | Predecessors | Complete | Remaining | Planned start | Planned finish | Resources | Cost | Actual cost | RDH4-01-001-Road and Block Names-1 | RDH4-01-001-Zones-1 | RDH4-01-001-Phases-1 | RDH4-01-001-Networks-1 | RDH4-01-001-Work Method-1 | RDH4-01-001-MENEM |
| --- | --- | --- | --- | --- | --- | --- | --- | --- | --- | --- | --- | --- | --- | --- | --- | --- | --- | --- | --- |
|  | 8641 | **RHD4-02-002-L02-(RD)-Aggregate Base Course** |  | 2027-03-22 | 2027-04-03 |  |  |  |  |  |  |  |  |  |  |  |  |  |  |
| RHD4CZ9L02RD2100 |  | Supply, lay and compaction Aggregate base course compacted thickness 300 mmfor Roads - (RD-L-2)-Z9-L02-RD | 11d | 2027-03-22 | 2027-04-03 | RHD4PRSHLDOSRD1000, RHD4PRSHLSTAGRD1000, RHD4CZ9L02RD1100 |  |  |  |  | Skilled labor [56 h]; Unskilled Labor [111.84 h]; Equipment Opreator [708.09 h]; Water Truck [36.92 h]; Roller compactor [111.84 h]; Grader [111.84 h]; Dump Truck [447.48 h]; Aggregate Base Courses [4562.13 m3] | 260,041.41 |  | L02 | Z9 | CONS | RD | ABC | bef |
|  | 8642 | **RHD4-02-002-L02-(RD)-Bituminous base course Two Layers, including (MC1)&(RC2)** |  | 2027-04-04 | 2027-12-19 |  |  |  |  |  |  |  |  |  |  |  |  |  |  |
| RHD4CZ9L02RD3100 |  | Supply, lay and Asphaltic base course including Prime Coat (MC1) for 1st Layer - (RD-L-2)-Z9-L02-RD | 2d | 2027-04-04 | 2027-04-05 | RHD4PRSHLDOSRD1100, RHD4ENMSASPH2000, RHD4ENMSASPH2010, RHD4PRSHLSTAGRD1100, RHD4CZ9L02RD2100, RHD4CZ5L07RD3100, RHD4CZ7C02RD3100 |  |  |  |  | Skilled labor [17.42 h]; Unskilled Labor [104.33 h]; Equipment Opreator [260.71 h]; Bobcat [17.42 h]; Roller compactor [17.42 h]; Asphalt Paver [17.42 h]; Rubber Compactor [34.74 h]; MC1/RC2 Sprinkler [17.42 h]; Dump Truck [156.39 h]; Bituminous base course (Grading I - Class A), including Prime coat (MC1) & tack coate (RC2) [635.9 m3] | 303,960.2 |  | L02 | Z9 | CONS | RD | 150 mm | AFT |
| RHD4CZ9L02RD3200 |  | Supply, lay and Asphaltic base course including Tack Coat (RC2) for 2nd Layer - (RD-L-2)-Z9-L02-RD | 2d | 2027-12-18 | 2027-12-19 | RHD4PRSHLDOSRD1100, RHD4PRSHLSTAGRD1100, RHD4CZ9L02CCTV6100 |  |  |  |  | Skilled labor [17.42 h]; Unskilled Labor [104.33 h]; Equipment Opreator [260.71 h]; Bobcat [17.42 h]; Roller compactor [17.42 h]; Asphalt Paver [17.42 h]; Rubber Compactor [34.74 h]; MC1/RC2 Sprinkler [17.42 h]; Dump Truck [156.39 h]; Bituminous base course (Grading I - Class A), including Prime coat (MC1) & tack coate (RC2) [635.9 m3] | 303,960.2 |  | L02 | Z9 | CONS | RD | 150 mm | AFT |
|  | 8644 | **RHD4-02-002-L02-(RD)-Precast Concrete Curb** |  | 2028-02-09 | 2028-02-24 |  |  |  |  |  |  |  |  |  |  |  |  |  |  |
| RHD4CZ9L02RD5100 |  | Supply and installation Precast Concrete Kerb for Roads - (RD-L-2)-Z9-L02-RD | 13d | 2028-02-09 | 2028-02-24 | RHD4PRSHLDOSRD1200, RHD4ENMSRD2000, RHD4ENMSRD2010, RHD4PRSHLSTAGRD1200, RHD4CZ9L02RD3200, RHD4HOASZ1APPLV160 |  |  |  |  | Mason [393.14 h]; Skilled labor [131.01 h]; Unskilled Labor [393.14 h]; Equipment Opreator [262.13 h]; Bobcat [131.01 h]; Concrete Mixer Truck [131.01 h]; Precast Concrete Curbstone, type K1 [3408 m]; Precast Flush concrete Curbstone K3 [2006.75 m] | 297,811.09 |  | L02 | Z9 | CONS | RD | Curbs | AFT |
|  | 8647 | **RHD4-02-002-L02-(RD)-Traffic Signage** |  | 2028-02-26 | 2028-03-09 |  |  |  |  |  |  |  |  |  |  |  |  |  |  |
| RHD4CZ9L02RD8100 |  | Installation of Traffic Signage for Road Network - (RD-L-2)-Z9-L02-RD | 9d | 2028-02-26 | 2028-03-09 | RHD4PRSHLDOSRD1600, RHD4PRSHLSTAGRD1600, RHD4CZ9L02RD5100, RHD4CZ9L06RD8100 |  |  |  |  | Skilled labor [196 h]; Unskilled Labor [98.01 h]; Electrician [51.2 h]; Equipment Opreator [40.08 h]; Boom Truck [19.6 h]; Concrete Mixer Truck [20.47 h]; Traffic signs, ground mounted, 1 Sheet Aluminium, (breakaway)Single post [43 nr]; Traffic signs, ground mounted, 1 Sheets Aluminium, (breakaway)Double post [2 nr] | 56,396 |  | L02 | Z9 | CONS | RD | Traffic Signage | AFT |
|  | 8645 | **RHD4-02-002-L02-(RD)-Precast Interlocking Block Pavers** |  | 2028-03-11 | 2028-03-22 |  |  |  |  |  |  |  |  |  |  |  |  |  |  |
| RHD4CZ9L02RD6100 |  | Interlocking block pavers for sidewalk-footpath for Side walks and Parking areas - (RD-L-2)-Z9-L02-RD | 11d | 2028-03-11 | 2028-03-22 | RHD4PRSHLDOSRD1300, RHD4ENMSRD2000, RHD4ENMSRD2010, RHD4PRSHLSTAGRD1300, RHD4CZ9L02RD8100 |  |  |  |  | Skilled labor [232.29 h]; Unskilled Labor [348.38 h]; Equipment Opreator [377.35 h]; Boom Truck [116.09 h]; Bobcat [116.09 h]; Concrete Mixer Truck [116.09 h]; Water Truck [29.08 h]; Interlock 80 mm thick Pavers for parking including sand fill [3732 m2] | 276,168 |  | L02 | Z9 | CONS | RD | Interlocking | AFT |
|  | 8643 | **RHD4-02-002-L02-(RD)-Bituminous concrete wearing course including tack coat (RC2)** |  | 2028-03-23 | 2028-03-25 |  |  |  |  |  |  |  |  |  |  |  |  |  |  |
| RHD4CZ9L02RD4100 |  | Supply, lay and compaction Asphaltic wearing course including tack Coat (RC2)for Road Network - (RD-L-2)-Z9-L02-RD | 2d | 2028-03-23 | 2028-03-25 | RHD4CZ9L02RD5100, RHD4CZ9L02RD6100 |  |  |  |  | Skilled labor [19.2 h]; Unskilled Labor [115.11 h]; Equipment Opreator [287.83 h]; Bobcat [19.2 h]; Roller compactor [19.2 h]; Asphalt Paver [19.2 h]; Rubber Compactor [38.33 h]; MC1/RC2 Sprinkler [19.2 h]; Dump Truck [172.72 h]; Bituminous concrete wearing course, (Grading I - Class A), including tack coat (RC2) [915.12 m3] | 496,910.16 |  | L02 | Z9 | CONS | RD | 50 mm | AFT |
|  | 8646 | **RHD4-02-002-L02-(RD)-Pavement Marking** |  | 2028-03-26 | 2028-03-29 |  |  |  |  |  |  |  |  |  |  |  |  |  |  |
| RHD4CZ9L02RD7100 |  | Pavement Markings for Road Network - (RD-L-2)-Z9-L02-RD | 4d | 2028-03-26 | 2028-03-29 | RHD4PRSHLDOSRD1500, RHD4PRSHLSTAGRD1500, RHD4CZ9L02RD4100 |  |  |  |  | Skilled labor [40.95 h]; Unskilled Labor [82 h]; Equipment Opreator [40.95 h]; Road Marking Machine [40.95 h]; Retroreflective Thermoplastic White Traffic Markings [373.62 m2]; Retroreflective Thermoplastic Yellow, Traffic Markings [385.63 m2]; Retroreflective raised pavement markers (cat eyes) [226 nr] | 31,220.75 |  | L02 | Z9 | CONS | RD | Pavement Marking | AFT |
|  | 8464 | **RHD4-02-002-Z9-L02-Storm Network - ST** |  | 2026-08-27 | 2027-04-27 |  |  |  |  |  |  |  |  |  |  |  |  |  |  |
|  | 8482 | **RHD4-02-002-L02-(ST)-MH Works - 1500 mm diameter** |  | 2026-09-12 | 2027-04-25 |  |  |  |  |  |  |  |  |  |  |  |  |  |  |
| RHD4CZ9L02ST3101 |  | Excavation and PC Blinding works for MH 1500 mm - (RD-L-2)-Z9-L02-ST | 5d | 2026-09-12 A | 2026-09-16 A | RHD4ENSDZ9APPST110, RHD4ENMSST2000, RHD4CZ9L02ST3102 | 100% |  | 2026-11-01 | 2026-11-05 | Skilled labor [49.01 h]; Unskilled Labor [49.01 h]; Equipment Opreator [78.4 h]; Excavator-Poclain [49.01 h]; Water Truck [4.9 h]; Dump Truck [24.5 h]; MH (1500mm Diameter) - ST - depth 1.50 - 2.5m [2.25 nr] | 32,818.5 | 32,818.5 | L02 | Z9 | CONS | ST | Excavation | bef |
| RHD4CZ9L02ST3201 |  | Installation of Base for MH 1500 mm - (RD-L-2)-Z9-L02-ST | 5d | 2026-10-27 A | 2026-11-01 A | RHD4PRSHLSTAGST1608, RHD4CZ9L02ST3101 | 100% |  |  |  | Skilled labor [49.01 h]; Unskilled Labor [49.01 h]; Equipment Opreator [19.6 h]; Boom Truck [9.8 h]; Concrete Mixer Truck [9.8 h]; MH (1500mm Diameter) - ST - depth 1.50 - 2.5m [2.25 nr] | 32,818.5 | 32,818.5 | L02 | Z9 | CONS | ST | Installing Base | bef |
| RHD4CZ9L02ST3301 |  | MH Ring and C.Slab works and Backfilling works for MH 1500 mm - (RD-L-2)-Z9-L02-ST | 5d | 2026-10-31 A | 2027-04-15 | RHD4PRSHLDOSST1608, RHD4CZ9L02ST3201 | 33% | 5d | 2026-10-31 | 2026-11-04 | Skilled labor [49.01 h]; Unskilled Labor [49.01 h]; Equipment Opreator [34.3 h]; Boom Truck [19.6 h]; Concrete Mixer Truck [14.7 h]; MH (1500mm Diameter) - ST - depth 1.50 - 2.5m [3.15 nr] | 45,945.9 | 15,313.77 | L02 | Z9 | CONS | ST | Installing Rings | bef |
| RHD4CZ9L02ST3401 |  | Steel Cover for MH 1500 mm - (RD-L-2)-Z9-L02-ST | 3d | 2027-04-17 | 2027-04-19 | RHD4PRSHLDOSST1708, RHD4PRSHLSTAGST1708, RHD4CZ9L02ST3301 |  |  |  |  | Skilled labor [32.67 h]; Unskilled Labor [65.34 h]; Equipment Opreator [6.53 h]; Boom Truck [6.53 h]; MH (1500mm Diameter) - ST - depth 1.50 - 2.5m [0.45 nr] | 6,563.7 |  | L02 | Z9 | CONS | ST | Steel Cover | bef |
| RHD4CZ9L02ST3501 |  | Finishing, Benching, Testing works for MH 1500 mm - (RD-L-2)-Z9-L02-ST | 5d | 2027-04-20 | 2027-04-25 | RHD4CZ9L02ST3401 |  |  |  |  | Skilled labor [49.01 h]; Unskilled Labor [98.01 h]; Plumber [49.01 h]; Equipment Opreator [9.8 h]; Water Truck [9.8 h]; MH (1500mm Diameter) - ST - depth 1.50 - 2.5m [0.9 nr] | 13,127.4 |  | L02 | Z9 | CONS | ST | Benching | bef |
|  | 8481 | **RHD4-02-002-L02-(ST)-MH Works - 1200 mm diameter** |  | 2026-08-29 | 2027-04-27 |  |  |  |  |  |  |  |  |  |  |  |  |  |  |
| RHD4CZ9L02ST3100 |  | Excavation and PC Blinding works for MH 1200 mm - (RD-L-2)-Z9-L02-ST | 2d | 2026-08-29 A | 2026-09-16 A | RHD4ENSDZ9APPST110, RHD4ENMSST2000, RHD4ENMSST2010, RHD4CZ9L02ST3101 | 100% |  | 2026-11-07 | 2026-11-08 | Skilled labor [18.19 h]; Unskilled Labor [18.19 h]; Equipment Opreator [29.08 h]; Excavator-Poclain [18.19 h]; Water Truck [1.85 h]; Dump Truck [9.04 h]; MH (1200mm Diameter) - ST - depth 1.50 - 2.5m [1 nr]; MH (1200mm Diameter) - ST - depth 2.51 - 3.5m [0.25 nr] | 13,292.25 | 13,292.25 | L02 | Z9 | CONS | ST | Excavation | bef |
| RHD4CZ9L02ST3200 |  | Installation of Base for MH 1200 mm - (RD-L-2)-Z9-L02-ST | 2d | 2026-10-27 A | 2026-10-28 A | RHD4PRSHLSTAGST1608, RHD4CZ9L02ST3100 | 100% |  |  |  | Skilled labor [19.93 h]; Unskilled Labor [19.93 h]; Equipment Opreator [7.95 h]; Boom Truck [4 h]; Concrete Mixer Truck [4 h]; MH (1200mm Diameter) - ST - depth 1.50 - 2.5m [1 nr]; MH (1200mm Diameter) - ST - depth 2.51 - 3.5m [0.25 nr] | 13,292.25 | 13,292.25 | L02 | Z9 | CONS | ST | Installing Base | bef |
| RHD4CZ9L02ST3300 |  | MH Ring and C.Slab works and Backfilling works for MH 1200 mm - (RD-L-2)-Z9-L02-ST | 2d | 2027-04-11 | 2027-04-12 | RHD4PRSHLDOSST1608, RHD4CZ9L02ST3200 |  |  |  |  | Skilled labor [19.93 h]; Unskilled Labor [19.93 h]; Equipment Opreator [13.94 h]; Boom Truck [7.95 h]; Concrete Mixer Truck [5.99 h]; MH (1200mm Diameter) - ST - depth 1.50 - 2.5m [1.4 nr]; MH (1200mm Diameter) - ST - depth 2.51 - 3.5m [0.35 nr] | 18,609.15 |  | L02 | Z9 | CONS | ST | Installing Rings | bef |
| RHD4CZ9L02ST3400 |  | Steel Cover for MH 1200 mm - (RD-L-2)-Z9-L02-ST | 2d | 2027-04-24 | 2027-04-25 | RHD4PRSHLDOSST1708, RHD4PRSHLSTAGST1708, RHD4CZ9L02ST3300, RHD4CZ9L02ST2500 |  |  |  |  | Skilled labor [18.19 h]; Unskilled Labor [36.26 h]; Equipment Opreator [3.59 h]; Boom Truck [3.59 h]; MH (1200mm Diameter) - ST - depth 1.50 - 2.5m [0.2 nr]; MH (1200mm Diameter) - ST - depth 2.51 - 3.5m [0.05 nr] | 2,658.45 |  | L02 | Z9 | CONS | ST | Steel Cover | bef |
| RHD4CZ9L02ST3500 |  | Finishing, Benching, Testing works for MH 1200 mm - (RD-L-2)-Z9-L02-ST | 2d | 2027-04-26 | 2027-04-27 | RHD4CZ9L02ST3400 |  |  |  |  | Skilled labor [18.19 h]; Unskilled Labor [36.26 h]; Plumber [18.19 h]; Equipment Opreator [3.59 h]; Water Truck [3.59 h]; MH (1200mm Diameter) - ST - depth 1.50 - 2.5m [0.4 nr]; MH (1200mm Diameter) - ST - depth 2.51 - 3.5m [0.1 nr] | 5,316.9 |  | L02 | Z9 | CONS | ST | Benching | bef |

| ID | WBS | Activity | Duration | Start | Finish | Predecessors | Complete | Remaining | Planned start | Planned finish | Resources | Cost | Actual cost | RDH4-01-001-Road and Block Names-1 | RDH4-01-001-Zones-1 | RDH4-01-001-Phases-1 | RDH4-01-001-Networks-1 | RDH4-01-001-Work Method-1 | RDH4-01-001-MENEM |
| --- | --- | --- | --- | --- | --- | --- | --- | --- | --- | --- | --- | --- | --- | --- | --- | --- | --- | --- | --- |
|  | 8483 | **RHD4-02-002-L02-(ST)-MH Works - 2000 mm diameter** |  | 2026-08-29 | 2027-04-21 |  |  |  |  |  |  |  |  |  |  |  |  |  |  |
| RHD4CZ9L02ST3102 |  | Excavation and PC Blinding works for MH 2000 mm - (RD-L-2)-Z9-L02-ST | 2d | 2026-08-29 A | 2026-09-15 A | RHD4ENSDZ9APPST110, RHD4ENMSST2000, RHD4CZ9L02ST2100 | 100% |  | 2026-10-29 | 2026-10-31 | Skilled labor [21.78 h]; Unskilled Labor [21.78 h]; Equipment Opreator [34.85 h]; Excavator-Poclain [21.78 h]; Water Truck [2.18 h]; Dump Truck [10.89 h]; MH (2000mm Diameter) - ST - depth 2.51 - 3.5m [1.5 nr] | 32,770.5 | 32,770.5 | L02 | Z9 | CONS | ST | Excavation | bef |
| RHD4CZ9L02ST3202 |  | Installation of Base for MH 2000 mm - (RD-L-2)-Z9-L02-ST | 3d | 2026-10-27 A | 2027-04-13 | RHD4PRSHLSTAGST1608, RHD4CZ9L02ST3102 | 67% | 3d | 2026-10-27 | 2026-10-29 | Skilled labor [32.67 h]; Unskilled Labor [32.67 h]; Equipment Opreator [13.07 h]; Boom Truck [6.53 h]; Concrete Mixer Truck [6.53 h]; MH (2000mm Diameter) - ST - depth 2.51 - 3.5m [1.5 nr] | 32,770.5 | 21,848.09 | L02 | Z9 | CONS | ST | Installing Base | bef |
| RHD4CZ9L02ST3302 |  | MH Ring and C.Slab works and Backfilling works for MH 2000 mm - (RD-L-2)-Z9-L02-ST | 3d | 2027-04-14 | 2027-04-17 | RHD4PRSHLDOSST1608, RHD4CZ9L02ST3202 |  |  |  |  | Skilled labor [32.67 h]; Unskilled Labor [32.67 h]; Equipment Opreator [22.87 h]; Boom Truck [13.07 h]; Concrete Mixer Truck [9.8 h]; MH (2000mm Diameter) - ST - depth 2.51 - 3.5m [2.1 nr] | 45,878.7 |  | L02 | Z9 | CONS | ST | Installing Rings | bef |
| RHD4CZ9L02ST3402 |  | Steel Cover for MH 2000 mm - (RD-L-2)-Z9-L02-ST | 2d | 2027-04-18 | 2027-04-19 | RHD4PRSHLDOSST1708, RHD4PRSHLSTAGST1708, RHD4CZ9L02ST3302 |  |  |  |  | Skilled labor [21.78 h]; Unskilled Labor [43.56 h]; Equipment Opreator [4.36 h]; Boom Truck [4.36 h]; MH (2000mm Diameter) - ST - depth 2.51 - 3.5m [0.3 nr] | 6,554.1 |  | L02 | Z9 | CONS | ST | Steel Cover | bef |
| RHD4CZ9L02ST3502 |  | Finishing, Benching, Testing works for MH 2000 mm - (RD-L-2)-Z9-L02-ST | 2d | 2027-04-20 | 2027-04-21 | RHD4CZ9L02ST3402 |  |  |  |  | Skilled labor [21.78 h]; Unskilled Labor [43.56 h]; Plumber [21.78 h]; Equipment Opreator [4.36 h]; Water Truck [4.36 h]; MH (2000mm Diameter) - ST - depth 2.51 - 3.5m [0.6 nr] | 13,108.2 |  | L02 | Z9 | CONS | ST | Benching | bef |
|  | 8473 | **RHD4-02-002-L02-(ST)-GRP Pipes - 1200 mm diameter** |  | 2026-08-27 | 2027-04-24 |  |  |  |  |  |  |  |  |  |  |  |  |  |  |
| RHD4CZ9L02ST1108 |  | Excavation works for GRP Pipe Line 1200 mm - (RD-L-2)-Z9-L02-ST | 2d | 2026-08-27 A | 2026-08-29 A | RHD4ENSDZ9APPST110, RHD4CZ9L02RW3000, RHD4CZ9C071ST1107 | 100% |  | 2026-10-19 | 2026-10-20 | Skilled labor [13.94 h]; Unskilled Labor [13.94 h]; Equipment Opreator [16.66 h]; Excavator-Poclain [13.94 h]; Dump Truck [2.83 h]; GRP (1200mm Diameter) - ST - Depth less than 1.5 m [8.88 m]; GRP (1200mm Diameter) - ST - Depth: 1.51m - 2.5m [23.22 m]; GRP (1200mm Diameter) - ST - Depth: 2.51m - 3.5m | 37,378.68 | 37,378.68 | L02 | Z9 | CONS | ST | Excavation | bef |
| RHD4CZ9L02ST1208 |  | Bedding works for GRP Pipe Line 1200 mm - (RD-L-2)-Z9-L02-ST | 2d | 2026-08-29 A | 2026-08-30 A | RHD4CZ9L02ST1108 | 100% |  | 2026-10-21 | 2026-10-22 | Skilled labor [12.74 h]; Unskilled Labor [25.48 h]; Equipment Opreator [25.48 h]; Excavator-Poclain [12.74 h]; Dump Truck [12.74 h]; GRP (1200mm Diameter) - ST - Depth less than 1.5 m [4.44 m]; GRP (1200mm Diameter) - ST - Depth: 1.51m - 2.5m [7.74 m]; GRP (1200mm Diameter) - ST - Depth: 2.51m - 3.5m | 14,130.48 | 14,130.48 | L02 | Z9 | CONS | ST | Bedding | bef |
| RHD4CZ9L02ST1308 |  | Installing for GRP Pipe Line 1200 mm - (RD-L-2)-Z9-L02-ST | 2d | 2026-09-01 A | 2027-04-19 | RHD4PRSHLSTAGST1008, RHD4CZ9L02ST1208, RHD4CZ9L02ST3301, RHD4CZ9L02ST3302, RHD4PRSHLDOSST1608, RHD4PRSHLPOST1000, RHD4PRSHLDOSST1008, RHD4PRSHLDOSST1604, RHD4PRSHLDOSST1004 | 26% | 2d | 2026-11-18 | 2026-11-19 | Unskilled Labor [17.97 h]; Plumber [8.93 h]; GRP (1200mm Diameter) - ST - Depth less than 1.5 m [39.96 m]; GRP (1200mm Diameter) - ST - Depth: 1.51m - 2.5m [61.93 m]; GRP (1200mm Diameter) - ST - Depth: 2.51m - 3.5m | 118,068.38 |  | L02 | Z9 | CONS | ST | Installation | bef |
| RHD4CZ9L02ST1508 |  | Backfilling and warning tape works for GRP Pipe Line 1200 mm - (RD-L-2)-Z9-L02-ST | 2d | 2026-09-01 A | 2027-04-24 | RHD4CZ9L02ST1408, RHD4CZ9L02ST1504, RHD4CZ9L02ST1506 | 24% | 2d | 2026-11-23 | 2026-11-24 | Skilled labor [14.59 h]; Unskilled Labor [29.08 h]; Equipment Opreator [29.08 h]; Excavator-Poclain [14.59 h]; Dump Truck [14.59 h]; GRP (1200mm Diameter) - ST - Depth less than 1.5 m [17.76 m]; GRP (1200mm Diameter) - ST - Depth: 1.51m - 2.5m [30.96 m]; GRP (1200mm Diameter) - ST - Depth: 2.51m - 3.5m | 56,521.92 |  | L02 | Z9 | CONS | ST | Backfilling | bef |
| RHD4CZ9L02ST1408 |  | Primary Test for GRP Pipe Line 1200 mm - (RD-L-2)-Z9-L02-ST | 2d | 2027-04-20 | 2027-04-21 | RHD4CZ9L02ST1308 |  |  |  |  | Unskilled Labor [7.08 h]; Plumber [7.08 h]; Equipment Opreator [7.08 h]; Water Truck [7.08 h]; GRP (1200mm Diameter) - ST - Depth less than 1.5 m [17.76 m]; GRP (1200mm Diameter) - ST - Depth: 1.51m - 2.5m [30.96 m]; GRP (1200mm Diameter) - ST - Depth: 2.51m - 3.5m | 56,521.92 |  | L02 | Z9 | CONS | ST | Primary Test | bef |
|  | 8472 | **RHD4-02-002-L02-(ST)-GRP Pipes - 1100 mm diameter** |  | 2026-08-29 | 2027-03-14 |  |  |  |  |  |  |  |  |  |  |  |  |  |  |
| RHD4CZ9L02ST1107 |  | Excavation works for GRP Pipe Line 1100 mm - (RD-L-2)-Z9-L02-ST | 2d | 2026-08-29 A | 2026-08-30 A | RHD4ENSDZ9APPST110, RHD4CZ9L02ST1108 SS | 100% |  | 2026-10-19 | 2026-10-20 | Skilled labor [4.9 h]; Unskilled Labor [4.9 h]; Equipment Opreator [5.88 h]; Excavator-Poclain [4.9 h]; Dump Truck [0.98 h]; GRP (1100mm Diameter) - ST - Depth: 2.51m - 3.5m; GRP (1200mm Diameter) - ST - Depth: 1.51m - 2.5m |  |  | L02 | Z9 | CONS | ST | Excavation | bef |
| RHD4CZ9L02ST1207 |  | Bedding works for GRP Pipe Line 1100 mm - (RD-L-2)-Z9-L02-ST | 2d | 2027-03-02 | 2027-03-03 | RHD4CZ9L02ST1107, RHD4CZ9L02ST1208 |  |  |  |  | Skilled labor [4.9 h]; Unskilled Labor [9.8 h]; Equipment Opreator [9.8 h]; Excavator-Poclain [4.9 h]; Dump Truck [4.9 h]; GRP (1100mm Diameter) - ST - Depth: 2.51m - 3.5m; GRP (1200mm Diameter) - ST - Depth: 1.51m - 2.5m |  |  | L02 | Z9 | CONS | ST | Bedding | bef |
| RHD4CZ9L02ST1307 |  | Installing for GRP Pipe Line 1100 mm - (RD-L-2)-Z9-L02-ST | 2d | 2027-03-04 | 2027-03-06 | RHD4PRSHLSTAGST1008, RHD4CZ9L02ST1207, RHD4PRSHLDOSST1608, RHD4PRSHLPOST1000, RHD4PRSHLDOSST1008, RHD4PRSHLDOSST1604, RHD4PRSHLDOSST1004 |  |  |  |  | Unskilled Labor [5.88 h]; Plumber [2.94 h]; GRP (1100mm Diameter) - ST - Depth: 2.51m - 3.5m; GRP (1200mm Diameter) - ST - Depth: 1.51m - 2.5m |  |  | L02 | Z9 | CONS | ST | Installation | bef |
| RHD4CZ9L02ST1407 |  | Primary Test for GRP Pipe Line 1100 mm - (RD-L-2)-Z9-L02-ST | 2d | 2027-03-07 | 2027-03-08 | RHD4CZ9L02ST1307 |  |  |  |  | Unskilled Labor [2.4 h]; Plumber [2.4 h]; Equipment Opreator [2.4 h]; Water Truck [2.4 h]; GRP (1100mm Diameter) - ST - Depth: 2.51m - 3.5m; GRP (1200mm Diameter) - ST - Depth: 1.51m - 2.5m |  |  | L02 | Z9 | CONS | ST | Primary Test | bef |
| RHD4CZ9L02ST1507 |  | Backfilling and warning tape works for GRP Pipe Line 1100 mm - (RD-L-2)-Z9-L02-ST | 2d | 2027-03-13 | 2027-03-14 | RHD4CZ9L02ST1407 |  |  |  |  | Skilled labor [4.9 h]; Unskilled Labor [9.8 h]; Equipment Opreator [9.8 h]; Excavator-Poclain [4.9 h]; Dump Truck [4.9 h]; GRP (1100mm Diameter) - ST - Depth: 2.51m - 3.5m; GRP (1200mm Diameter) - ST - Depth: 1.51m - 2.5m |  |  | L02 | Z9 | CONS | ST | Backfilling | bef |
|  | 8471 | **RHD4-02-002-L02-(ST)-GRP Pipes - 1000 mm diameter** |  | 2026-08-29 | 2027-03-14 |  |  |  |  |  |  |  |  |  |  |  |  |  |  |
| RHD4CZ9L02ST1106 |  | Excavation works for GRP Pipe Line 1000 mm - (RD-L-2)-Z9-L02-ST | 2d | 2026-08-29 A | 2026-08-30 A | RHD4ENSDZ9APPST110, RHD4CZ9L02ST1107 | 100% |  | 2026-10-21 | 2026-10-22 | Skilled labor [3.48 h]; Unskilled Labor [3.48 h]; Equipment Opreator [4.14 h]; Excavator-Poclain [3.48 h]; Dump Truck [0.65 h]; GRP (1000mm Diameter) - ST - Depth: 1.51m - 2.5m [9.61 m] | 8,802.76 | 8,802.76 | L02 | Z9 | CONS | ST | Excavation | bef |
| RHD4CZ9L02ST1206 |  | Bedding works for GRP Pipe Line 1000 mm - (RD-L-2)-Z9-L02-ST | 2d | 2026-09-19 A | 2026-09-20 A | RHD4CZ9L02ST1106, RHD4CZ9L02ST1207 | 100% |  | 2026-10-26 | 2026-10-27 | Skilled labor [3.48 h]; Unskilled Labor [6.97 h]; Equipment Opreator [6.97 h]; Excavator-Poclain [3.48 h]; Dump Truck [3.48 h]; GRP (1000mm Diameter) - ST - Depth: 1.51m - 2.5m [3.2 m] | 2,931.2 | 2,931.2 | L02 | Z9 | CONS | ST | Bedding | bef |
| RHD4CZ9L02ST1306 |  | Installing for GRP Pipe Line 1000 mm - (RD-L-2)-Z9-L02-ST | 2d | 2026-09-20 A | 2026-09-21 A | RHD4PRSHLSTAGST1008, RHD4CZ9L02ST1206, RHD4CZ9L02ST1307, RHD4PRSHLDOSST1608, RHD4PRSHLPOST1000, RHD4PRSHLDOSST1008, RHD4PRSHLDOSST1604, RHD4PRSHLDOSST1004 | 100% |  | 2026-10-28 | 2026-10-29 | Unskilled Labor [4.68 h]; Plumber [2.29 h]; GRP (1000mm Diameter) - ST - Depth: 1.51m - 2.5m [25.63 m] | 23,477.08 | 23,477.08 | L02 | Z9 | CONS | ST | Installation | bef |
| RHD4CZ9L02ST1506 |  | Backfilling and warning tape works for GRP Pipe Line 1000 mm - (RD-L-2)-Z9-L02-ST | 2d | 2026-09-22 A | 2026-09-22 A | RHD4CZ9L02ST1406, RHD4CZ9L02ST1507 | 100% |  | 2026-11-02 | 2026-11-03 | Skilled labor [3.48 h]; Unskilled Labor [6.97 h]; Equipment Opreator [6.97 h]; Excavator-Poclain [3.48 h]; Dump Truck [3.48 h]; GRP (1000mm Diameter) - ST - Depth: 1.51m - 2.5m [12.82 m] | 11,743.12 | 11,743.12 | L02 | Z9 | CONS | ST | Backfilling | bef |
| RHD4CZ9L02ST1406 |  | Primary Test for GRP Pipe Line 1000 mm - (RD-L-2)-Z9-L02-ST | 2d | 2027-03-13 | 2027-03-14 | RHD4CZ9L02ST1306, RHD4CZ9L02ST1407 |  |  |  |  | Unskilled Labor [1.74 h]; Plumber [1.74 h]; Equipment Opreator [1.74 h]; Water Truck [1.74 h]; GRP (1000mm Diameter) - ST - Depth: 1.51m - 2.5m [12.82 m] | 11,743.12 |  | L02 | Z9 | CONS | ST | Primary Test | bef |

| ID | WBS | Activity | Duration | Start | Finish | Predecessors | Complete | Remaining | Planned start | Planned finish | Resources | Cost | Actual cost | RDH4-01-001-Road and Block Names-1 | RDH4-01-001-Zones-1 | RDH4-01-001-Phases-1 | RDH4-01-001-Networks-1 | RDH4-01-001-Work Method-1 | RDH4-01-001-MENEM |
| --- | --- | --- | --- | --- | --- | --- | --- | --- | --- | --- | --- | --- | --- | --- | --- | --- | --- | --- | --- |
|  | 8470 | **RHD4-02-002-L02-(ST)-GRP Pipes - 900 mm diameter** |  | 2026-08-29 | 2027-03-03 |  |  |  |  |  |  |  |  |  |  |  |  |  |  |
| RHD4CZ9L02ST1105 |  | Excavation works for GRP Pipe Line 900 mm - (RD-L-2)-Z9-L02-ST | 2d | 2026-08-29 A | 2026-08-30 A | RHD4ENSDZ9APPST110, RHD4CZ9L02ST1106 SS | 100% |  | 2026-10-21 | 2026-10-22 | Skilled labor [17.32 h]; Unskilled Labor [17.32 h]; Equipment Opreator [20.69 h]; Excavator-Poclain [17.32 h]; Dump Truck [3.48 h]; GRP (900mm Diameter) - ST - Depth less than 1.5 m [31.73 m]; GRP (900mm Diameter) - ST - Depth: 1.51m - 2.5m | 23,765.77 | 23,765.77 | L02 | Z9 | CONS | ST | Excavation | bef |
| RHD4CZ9L02ST1205 |  | Bedding works for GRP Pipe Line 900 mm - (RD-L-2)-Z9-L02-ST | 2d | 2026-09-01 A | 2026-09-02 A | RHD4CZ9L02ST1105 | 100% |  | 2026-10-24 | 2026-10-25 | Skilled labor [17.32 h]; Unskilled Labor [34.52 h]; Equipment Opreator [34.52 h]; Excavator-Poclain [17.32 h]; Dump Truck [17.32 h]; GRP (900mm Diameter) - ST - Depth less than 1.5 m [15.86 m]; GRP (900mm Diameter) - ST - Depth: 1.51m - 2.5m | 11,879.14 | 11,879.14 | L02 | Z9 | CONS | ST | Bedding | bef |
| RHD4CZ9L02ST1305 |  | Installing for GRP Pipe Line 900 mm - (RD-L-2)-Z9-L02-ST | 2d | 2026-09-03 A | 2026-09-19 A | RHD4PRSHLSTAGST1008, RHD4CZ9L02ST1205, RHD4PRSHLDOSST1608, RHD4PRSHLPOST1000, RHD4PRSHLDOSST1008, RHD4PRSHLDOSST1604, RHD4PRSHLDOSST1004 | 100% |  | 2026-10-26 | 2026-10-27 | Unskilled Labor [23.09 h]; Plumber [11.54 h]; GRP (900mm Diameter) - ST - Depth less than 1.5 m [142.77 m]; GRP (900mm Diameter) - ST - Depth: 1.51m - 2.5m | 106,934.73 | 106,934.73 | L02 | Z9 | CONS | ST | Installation | bef |
| RHD4CZ9L02ST1505 |  | Backfilling and warning tape works for GRP Pipe Line 900 mm - (RD-L-2)-Z9-L02-ST | 2d | 2026-09-20 A | 2026-09-21 A | RHD4CZ9L02ST1405 | 100% |  | 2026-10-31 | 2026-11-01 | Skilled labor [17.32 h]; Unskilled Labor [34.52 h]; Equipment Opreator [34.52 h]; Excavator-Poclain [17.32 h]; Dump Truck [17.32 h]; GRP (900mm Diameter) - ST - Depth less than 1.5 m [63.45 m]; GRP (900mm Diameter) - ST - Depth: 1.51m - 2.5m | 47,524.05 | 47,524.05 | L02 | Z9 | CONS | ST | Backfilling | bef |
| RHD4CZ9L02ST1405 |  | Primary Test for GRP Pipe Line 900 mm - (RD-L-2)-Z9-L02-ST | 2d | 2027-03-02 | 2027-03-03 | RHD4CZ9L02ST1305 |  |  |  |  | Unskilled Labor [8.6 h]; Plumber [8.6 h]; Equipment Opreator [8.6 h]; Water Truck [8.6 h]; GRP (900mm Diameter) - ST - Depth less than 1.5 m [63.45 m]; GRP (900mm Diameter) - ST - Depth: 1.51m - 2.5m | 47,524.05 |  | L02 | Z9 | CONS | ST | Primary Test | bef |
|  | 8469 | **RHD4-02-002-L02-(ST)-GRP Pipes - 800 mm diameter** |  | 2026-08-29 | 2027-03-14 |  |  |  |  |  |  |  |  |  |  |  |  |  |  |
| RHD4CZ9L02ST1104 |  | Excavation works for GRP Pipe Line 800 mm - (RD-L-2)-Z9-L02-ST | 2d | 2026-08-29 A | 2026-08-30 A | RHD4ENSDZ9APPST110, RHD4CZ9L02ST1105 SS | 100% |  | 2026-10-21 | 2026-10-22 | Skilled labor [5.99 h]; Unskilled Labor [5.99 h]; Equipment Opreator [7.2 h]; Excavator-Poclain [5.99 h]; Dump Truck [1.2 h]; GRP (800mm Diameter) - ST - Depth less than 1.5 m [10.96 m]; GRP (800mm Diameter) - ST - Depth: 1.51m - 2.5m | 7,156.88 | 7,156.88 | L02 | Z9 | CONS | ST | Excavation | bef |
| RHD4CZ9L02ST1204 |  | Bedding works for GRP Pipe Line 800 mm - (RD-L-2)-Z9-L02-ST | 2d | 2027-03-02 | 2027-03-03 | RHD4CZ9L02ST1104 |  |  |  |  | Skilled labor [5.99 h]; Unskilled Labor [12 h]; Equipment Opreator [12 h]; Excavator-Poclain [5.99 h]; Dump Truck [5.99 h]; GRP (800mm Diameter) - ST - Depth less than 1.5 m [5.48 m]; GRP (800mm Diameter) - ST - Depth: 1.51m - 2.5m | 3,578.44 |  | L02 | Z9 | CONS | ST | Bedding | bef |
| RHD4CZ9L02ST1304 |  | Installing for GRP Pipe Line 800 mm - (RD-L-2)-Z9-L02-ST | 2d | 2027-03-04 | 2027-03-06 | RHD4PRSHLSTAGST1008, RHD4CZ9L02ST1204, RHD4CZ9L02ST1305, RHD4PRSHLDOSST1608, RHD4PRSHLPOST1000, RHD4PRSHLDOSST1008, RHD4PRSHLDOSST1604, RHD4PRSHLDOSST1004 |  |  |  |  | Unskilled Labor [7.95 h]; Plumber [4 h]; GRP (800mm Diameter) - ST - Depth less than 1.5 m [49.33 m]; GRP (800mm Diameter) - ST - Depth: 1.51m - 2.5m | 32,212.49 |  | L02 | Z9 | CONS | ST | Installation | bef |
| RHD4CZ9L02ST1404 |  | Primary Test for GRP Pipe Line 800 mm - (RD-L-2)-Z9-L02-ST | 2d | 2027-03-07 | 2027-03-08 | RHD4CZ9L02ST1304, RHD4CZ9L02ST1405 |  |  |  |  | Unskilled Labor [2.94 h]; Plumber [2.94 h]; Equipment Opreator [2.94 h]; Water Truck [2.94 h]; GRP (800mm Diameter) - ST - Depth less than 1.5 m [21.92 m]; GRP (800mm Diameter) - ST - Depth: 1.51m - 2.5m | 14,313.76 |  | L02 | Z9 | CONS | ST | Primary Test | bef |
| RHD4CZ9L02ST1504 |  | Backfilling and warning tape works for GRP Pipe Line 800 mm - (RD-L-2)-Z9-L02-ST | 2d | 2027-03-13 | 2027-03-14 | RHD4CZ9L02ST1404, RHD4CZ9L02ST1505 |  |  |  |  | Skilled labor [5.99 h]; Unskilled Labor [12 h]; Equipment Opreator [12 h]; Excavator-Poclain [5.99 h]; Dump Truck [5.99 h]; GRP (800mm Diameter) - ST - Depth less than 1.5 m [21.92 m]; GRP (800mm Diameter) - ST - Depth: 1.51m - 2.5m | 14,313.76 |  | L02 | Z9 | CONS | ST | Backfilling | bef |
|  | 8468 | **RHD4-02-002-L02-(ST)-GRP Pipes - 700 mm diameter** |  |  |  |  |  |  |  |  |  |  |  |  |  |  |  |  |  |
|  | 8467 | **RHD4-02-002-L02-(ST)-GRP Pipes - 600 mm diameter** |  | 2026-08-29 | 2027-03-16 |  |  |  |  |  |  |  |  |  |  |  |  |  |  |
| RHD4CZ9L02ST1102 |  | Excavation works for GRP Pipe Line 600 mm - (RD-L-2)-Z9-L02-ST | 2d | 2026-08-29 A | 2027-03-03 | RHD4ENSDZ9APPST110, RHD4CZ9L02ST1104 SS | 71% | 2d | 2026-10-21 | 2026-10-22 | Skilled labor [13.6 h]; Unskilled Labor [13.6 h]; Equipment Opreator [16.34 h]; Excavator-Poclain [13.6 h]; Dump Truck [2.72 h]; GRP (600mm Diameter) - ST - Depth less than 1.5 m [6.88 m]; GRP (600mm Diameter) - ST - Depth: 1.51m - 2.5m [27.06 m] | 15,548.18 |  | L02 | Z9 | CONS | ST | Excavation | bef |
| RHD4CZ9L02ST1202 |  | Bedding works for GRP Pipe Line 600 mm - (RD-L-2)-Z9-L02-ST | 2d | 2027-03-04 | 2027-03-06 | RHD4CZ9L02ST1102 |  |  |  |  | Skilled labor [13.6 h]; Unskilled Labor [27.12 h]; Equipment Opreator [27.12 h]; Excavator-Poclain [13.6 h]; Dump Truck [13.6 h]; GRP (600mm Diameter) - ST - Depth less than 1.5 m [3.44 m]; GRP (600mm Diameter) - ST - Depth: 1.51m - 2.5m [9.02 m] | 5,676.94 |  | L02 | Z9 | CONS | ST | Bedding | bef |
| RHD4CZ9L02ST1302 |  | Installing for GRP Pipe Line 600 mm - (RD-L-2)-Z9-L02-ST | 2d | 2027-03-07 | 2027-03-08 | RHD4PRSHLSTAGST1008, RHD4CZ9L02ST1202, RHD4PRSHLDOSST1608, RHD4PRSHLPOST1000, RHD4PRSHLDOSST1008, RHD4PRSHLDOSST1604, RHD4PRSHLDOSST1004 |  |  |  |  | Unskilled Labor [27.12 h]; Plumber [13.6 h]; GRP (600mm Diameter) - ST - Depth less than 1.5 m [30.97 m]; GRP (600mm Diameter) - ST - Depth: 1.51m - 2.5m [72.15 m] | 46,897.82 |  | L02 | Z9 | CONS | ST | Installation | bef |
| RHD4CZ9L02ST1402 |  | Primary Test for GRP Pipe Line 600 mm - (RD-L-2)-Z9-L02-ST | 2d | 2027-03-13 | 2027-03-14 | RHD4CZ9L02ST1302 |  |  |  |  | Unskilled Labor [13.6 h]; Plumber [13.6 h]; Equipment Opreator [13.6 h]; Water Truck [13.6 h]; GRP (600mm Diameter) - ST - Depth less than 1.5 m [13.77 m]; GRP (600mm Diameter) - ST - Depth: 1.51m - 2.5m [36.08 m] | 22,712.07 |  | L02 | Z9 | CONS | ST | Primary Test | bef |
| RHD4CZ9L02ST1502 |  | Backfilling and warning tape works for GRP Pipe Line 600 mm - (RD-L-2)-Z9-L02-ST | 2d | 2027-03-15 | 2027-03-16 | RHD4CZ9L02ST1402 |  |  |  |  | Skilled labor [13.6 h]; Unskilled Labor [27.12 h]; Equipment Opreator [27.12 h]; Excavator-Poclain [13.6 h]; Dump Truck [13.6 h]; GRP (600mm Diameter) - ST - Depth less than 1.5 m [13.77 m]; GRP (600mm Diameter) - ST - Depth: 1.51m - 2.5m [36.08 m] | 22,712.07 |  | L02 | Z9 | CONS | ST | Backfilling | bef |
|  | 8466 | **RHD4-02-002-L02-(ST)-GRP Pipes - 500 mm diameter** |  | 2026-09-01 | 2027-03-18 |  |  |  |  |  |  |  |  |  |  |  |  |  |  |
| RHD4CZ9L02ST1101 |  | Excavation works for GRP Pipe Line 500 mm - (RD-L-2)-Z9-L02-ST | 2d | 2026-09-01 A | 2026-09-02 A | RHD4ENSDZ9APPST110, RHD4CZ9L02ST1102 | 100% |  | 2026-10-24 | 2026-10-25 | Skilled labor [3.7 h]; Unskilled Labor [3.7 h]; Equipment Opreator [4.47 h]; Excavator-Poclain [3.7 h]; Dump Truck [0.8 h]; GRP (500mm Diameter) - ST - Depth: 1.51m - 2.5m [10.31 m] | 4,072.25 | 4,072.25 | L02 | Z9 | CONS | ST | Excavation | bef |
| RHD4CZ9L02ST1201 |  | Bedding works for GRP Pipe Line 500 mm - (RD-L-2)-Z9-L02-ST | 2d | 2027-03-07 | 2027-03-08 | RHD4CZ9L02ST1101, RHD4CZ9L02ST1202 |  |  |  |  | Skilled labor [3.7 h]; Unskilled Labor [7.51 h]; Equipment Opreator [7.51 h]; Excavator-Poclain [3.7 h]; Dump Truck [3.7 h]; GRP (500mm Diameter) - ST - Depth: 1.51m - 2.5m [3.44 m] | 1,357.42 |  | L02 | Z9 | CONS | ST | Bedding | bef |
| RHD4CZ9L02ST1301 |  | Installing for GRP Pipe Line 500 mm - (RD-L-2)-Z9-L02-ST | 2d | 2027-03-13 | 2027-03-14 | RHD4PRSHLSTAGST1008, RHD4CZ9L02ST1201, RHD4CZ9L02ST1302, RHD4PRSHLDOSST1608, RHD4PRSHLPOST1000, RHD4PRSHLDOSST1008, RHD4PRSHLDOSST1604, RHD4PRSHLDOSST1004 |  |  |  |  | Unskilled Labor [7.51 h]; Plumber [3.7 h]; GRP (500mm Diameter) - ST - Depth: 1.51m - 2.5m [27.49 m] | 10,859.34 |  | L02 | Z9 | CONS | ST | Installation | bef |
| RHD4CZ9L02ST1401 |  | Primary Test for GRP Pipe Line 500 mm - (RD-L-2)-Z9-L02-ST | 2d | 2027-03-15 | 2027-03-16 | RHD4CZ9L02ST1301, RHD4CZ9L02ST1402 |  |  |  |  | Unskilled Labor [3.7 h]; Plumber [3.7 h]; Equipment Opreator [3.7 h]; Water Truck [3.7 h]; GRP (500mm Diameter) - ST - Depth: 1.51m - 2.5m [13.75 m] | 5,429.67 |  | L02 | Z9 | CONS | ST | Primary Test | bef |
| RHD4CZ9L02ST1501 |  | Backfilling and warning tape works for GRP Pipe Line 500 mm - (RD-L-2)-Z9-L02-ST | 2d | 2027-03-17 | 2027-03-18 | RHD4CZ9L02ST1401, RHD4CZ9L02ST1502 |  |  |  |  | Skilled labor [3.7 h]; Unskilled Labor [7.51 h]; Equipment Opreator [7.51 h]; Excavator-Poclain [3.7 h]; Dump Truck [3.7 h]; GRP (500mm Diameter) - ST - Depth: 1.51m - 2.5m [13.75 m] | 5,429.67 |  | L02 | Z9 | CONS | ST | Backfilling | bef |

| ID | WBS | Activity | Duration | Start | Finish | Predecessors | Complete | Remaining | Planned start | Planned finish | Resources | Cost | Actual cost | RDH4-01-001-Road and Block Names-1 | RDH4-01-001-Zones-1 | RDH4-01-001-Phases-1 | RDH4-01-001-Networks-1 | RDH4-01-001-Work Method-1 | RDH4-01-001-MENEM |
| --- | --- | --- | --- | --- | --- | --- | --- | --- | --- | --- | --- | --- | --- | --- | --- | --- | --- | --- | --- |
|  | 8479 | **RHD4-02-002-L02-(ST)-UPVC Pipes - 300 mm diameter** |  | 2026-09-19 | 2027-04-22 |  |  |  |  |  |  |  |  |  |  |  |  |  |  |
| RHD4CZ9L02ST2100 |  | Excavation works for UPVC Pipe Line 300 mm - (RD-L-2)-Z9-L02-ST | 3d | 2026-09-19 A | 2027-04-10 | RHD4ENSDZ9APPST110, RHD4CZ9L02ST1101, RHD4CZ3C083ST7500, RHD4CZ5C051PT3200 | 13% | 3d | 2026-10-26 | 2026-10-28 | Skilled labor [25.7 h]; Unskilled Labor [25.7 h]; Equipment Opreator [30.82 h]; Excavator-Poclain [25.7 h]; Dump Truck [5.12 h]; UPVC (300mm Diameter) - ST - Depth less than 1.5 [56.86 m]; UPVC (300mm Diameter) - ST - Depth: 1.51m - 2.5m | 17,228.58 |  | L02 | Z9 | CONS | ST | Excavation | bef |
| RHD4CZ9L02ST2200 |  | Bedding works for UPVC Pipe Line 300 mm - (RD-L-2)-Z9-L02-ST | 3d | 2026-09-21 A | 2027-04-13 | RHD4CZ9L02ST2100 | 14% | 3d | 2026-10-29 | 2026-11-01 | Skilled labor [22.11 h]; Unskilled Labor [44.32 h]; Equipment Opreator [44.32 h]; Excavator-Poclain [22.11 h]; Dump Truck [22.11 h]; UPVC (300mm Diameter) - ST - Depth less than 1.5 [28.43 m]; UPVC (300mm Diameter) - ST - Depth: 1.51m - 2.5m | 8,614.29 |  | L02 | Z9 | CONS | ST | Bedding | bef |
| RHD4CZ9L02ST2300 |  | Installing for UPVC Pipe Line 300 mm - (RD-L-2)-Z9-L02-ST | 3d | 2026-09-22 A | 2027-04-17 | RHD4PRSHLDOSST1108, RHD4PRSHLSTAGST1108, RHD4CZ9L02ST2200 | 12% | 3d | 2026-11-02 | 2026-11-04 | Unskilled Labor [51.29 h]; Plumber [25.7 h]; UPVC (300mm Diameter) - ST - Depth less than 1.5 [255.88 m]; UPVC (300mm Diameter) - ST - Depth: 1.51m - 2.5m | 77,531.64 |  | L02 | Z9 | CONS | ST | Installation | bef |
| RHD4CZ9L02ST2400 |  | Primary Test for UPVC Pipe Line 300 mm - (RD-L-2)-Z9-L02-ST | 2d | 2027-04-18 | 2027-04-19 | RHD4CZ9L02ST2300, RHD4CZ9L02ST6100 |  |  |  |  | Unskilled Labor [15.03 h]; Plumber [15.03 h]; Equipment Opreator [15.03 h]; Water Truck [15.03 h]; UPVC (300mm Diameter) - ST - Depth less than 1.5 [113.72 m]; UPVC (300mm Diameter) - ST - Depth: 1.51m - 2.5m | 34,457.16 |  | L02 | Z9 | CONS | ST | Primary Test | bef |
| RHD4CZ9L02ST2500 |  | Backfilling and warning tape works for UPVC Pipe Line 300 mm - (RD-L-2)-Z9-L02-ST | 3d | 2027-04-20 | 2027-04-22 | RHD4CZ9L02ST2400, RHD4CZ9L02ST6100 |  |  |  |  | Skilled labor [30.93 h]; Unskilled Labor [61.97 h]; Equipment Opreator [61.97 h]; Excavator-Poclain [30.93 h]; Dump Truck [30.93 h]; UPVC (300mm Diameter) - ST - Depth less than 1.5 [113.72 m]; UPVC (300mm Diameter) - ST - Depth: 1.51m - 2.5m | 34,457.16 |  | L02 | Z9 | CONS | ST | Backfilling | bef |
|  | 8487 | **RHD4-02-002-L02-(ST)-Concrete Encasement** |  | 2027-04-15 | 2027-04-17 |  |  |  |  |  |  |  |  |  |  |  |  |  |  |
| RHD4CZ9L02ST6100 |  | Pipe Encasement for Storm Pipelines - (RD-L-2)-Z9-L02-ST | 2d | 2027-04-15 | 2027-04-17 | RHD4CZ9L02ST2300 SS, RHD4CZ9L02ST2300 FF, RHD4CZ9L02ST2200 |  |  |  |  | Skilled labor [8.8 h]; Unskilled Labor [8.8 h]; Equipment Opreator [9.8 h]; Concrete Mixer Truck [0.87 h]; Dump Truck [8.8 h]; Pipe Encasement - ST [162.84 m3] | 82,397.04 |  | L02 | Z9 | CONS | ST | Pipe Encasement | bef |
|  | 8488 | **RHD4-02-002-Z9-L02-Catch Basin - ST** |  | 2026-10-27 | 2027-05-05 |  |  |  |  |  |  |  |  |  |  |  |  |  |  |
|  | 8489 | **RHD4-02-002-L02-(ST)-Single Catch Basin Works** |  | 2026-10-27 | 2027-05-05 |  |  |  |  |  |  |  |  |  |  |  |  |  |  |
| RHD4CZ9L02ST7100 |  | Excavation works for Single Catch Basin - (RD-L-2)-Z9-L02-ST | 4d | 2026-10-27 A | 2026-10-29 A | RHD4ENSDZ9APPST110, RHD4CZ9L02ST3300 | 100% |  | 2026-10-27 | 2026-10-31 | Skilled labor [37.03 h]; Unskilled Labor [74.05 h]; Equipment Opreator [55.54 h]; Excavator-Poclain [37.03 h]; Dump Truck [18.51 h]; Single Catch basin - ST [8.5 nr] | 31,713.5 | 31,713.5 | L02 | Z9 | CONS | ST | Excavation | bef |
| RHD4CZ9L02ST7300 |  | Rings & C.Slab & Final Backfill for Single Catch Basin - (RD-L-2)-Z9-L02-ST | 5d | 2026-10-29 A | 2027-04-22 | RHD4PRSHLDOSST1308, RHD4PRSHLSTAGST1308, RHD4CZ9L02ST7200 | 45% | 5d | 2026-10-29 | 2026-11-03 | Skilled labor [46.28 h]; Unskilled Labor [92.57 h]; Equipment Opreator [55.54 h]; Boom Truck [9.26 h]; Bobcat [46.28 h]; Single Catch basin - ST [11.9 nr] | 44,398.9 | 20,148.22 | L02 | Z9 | CONS | ST | Rings | bef |
| RHD4CZ9L02ST7200 |  | PC Blinding, Installation and Pipe connection for Single Catch Basin - (RD-L-2)-Z9-L02-ST | 4d | 2026-10-31 A | 2027-04-17 | RHD4CZ9L02ST7100 | 45% | 4d | 2026-10-31 | 2026-11-03 | Skilled labor [37.03 h]; Unskilled Labor [74.05 h]; Plumber [18.51 h]; Equipment Opreator [7.41 h]; Boom Truck [7.41 h]; Single Catch basin - ST [6.8 nr] | 25,370.8 | 11,513.27 | L02 | Z9 | CONS | ST | Installation & Pipe Connection | bef |
| RHD4CZ9L02ST7400 |  | Steel Cover for Single Catch Basin - (RD-L-2)-Z9-L02-ST | 4d | 2027-04-24 | 2027-04-27 | RHD4PRSHLDOSST1708, RHD4CZ9L02ST7300 |  |  |  |  | Skilled labor [37.03 h]; Unskilled Labor [37.03 h]; Equipment Opreator [7.41 h]; Boom Truck [7.41 h]; Single Catch basin - ST [1.7 nr] | 6,342.7 |  | L02 | Z9 | CONS | ST | Steel Cover | bef |
| RHD4CZ9L02ST7500 |  | Finishing and Insulation works for Single Catch Basin - (RD-L-2)-Z9-L02-ST | 7d | 2027-04-28 | 2027-05-05 | RHD4CZ9L02ST7400 |  |  |  |  | Skilled labor [74.05 h]; Unskilled Labor [148.11 h]; Equipment Opreator [14.81 h]; Boom Truck [14.81 h]; Single Catch basin - ST [5.1 nr] | 19,028.1 |  | L02 | Z9 | CONS | ST | Insulation | bef |
|  | 8513 | **RHD4-02-002-Z9-L02-Sewage Network - SW** |  | 2026-08-15 | 2027-08-07 |  |  |  |  |  |  |  |  |  |  |  |  |  |  |
|  | 1895 | **RHD4-02-002-L02-(SW)-GRP Pipes - 500 mm diameter** |  | 2027-04-26 | 2027-05-06 |  |  |  |  |  |  |  |  |  |  |  |  |  |  |
| RHD4CZ9L02SW1102 |  | Excavation works for GRP Pipe Line 500 mm - (RD-L-2)-Z9-L02-SW | 2d | 2027-04-26 | 2027-04-27 | RHD4CZ9L02ST3501, RHD4CZ9L02ST2500 |  |  |  |  | Skilled labor [14.16 h]; Unskilled Labor [14.16 h]; Equipment Opreator [17.1 h]; Excavator-Poclain [14.16 h]; Dump Truck [2.83 h]; GRP (500mm Diameter) - SW - Depth: 2.51m - 3.5m; GRP (500mm Diameter) - SW - Depth: 3.51m - 4.5m [13.17 m]; GRP (500mm Diameter) - SW - Depth: 4.51m - 5.5m | 8,679.03 |  | L02 | Z9 | CONS | SW | Excavation | bef |
| RHD4CZ9L02SW1202 |  | Bedding works for GRP Pipe Line 500 mm - (RD-L-2)-Z9-L02-SW | 2d | 2027-04-28 | 2027-04-29 | RHD4CZ9L02SW1102 |  |  |  |  | Skilled labor [14.16 h]; Unskilled Labor [28.42 h]; Equipment Opreator [28.42 h]; Excavator-Poclain [14.16 h]; Dump Truck [14.16 h]; GRP (500mm Diameter) - SW - Depth: 2.51m - 3.5m; GRP (500mm Diameter) - SW - Depth: 3.51m - 4.5m [4.39 m]; GRP (500mm Diameter) - SW - Depth: 4.51m - 5.5m | 2,893.01 |  | L02 | Z9 | CONS | SW | Bedding | bef |
| RHD4CZ9L02SW1302 |  | Installing for GRP Pipe Line 500 mm - (RD-L-2)-Z9-L02-SW | 2d | 2027-05-01 | 2027-05-02 | RHD4CZ9L02SW1202 |  |  |  |  | Unskilled Labor [28.42 h]; Plumber [14.16 h]; Equipment Opreator [14.16 h]; Boom Truck [14.16 h]; GRP (500mm Diameter) - SW - Depth: 2.51m - 3.5m; GRP (500mm Diameter) - SW - Depth: 3.51m - 4.5m [35.12 m]; GRP (500mm Diameter) - SW - Depth: 4.51m - 5.5m | 23,144.08 |  | L02 | Z9 | CONS | SW | Installation | bef |
| RHD4CZ9L02SW1402 |  | Primary Test for GRP Pipe Line 500 mm - (RD-L-2)-Z9-L02-SW | 2d | 2027-05-03 | 2027-05-04 | RHD4CZ9L02SW1302 |  |  |  |  | Unskilled Labor [14.16 h]; Plumber [14.16 h]; Equipment Opreator [14.16 h]; Water Truck [14.16 h]; GRP (500mm Diameter) - SW - Depth: 2.51m - 3.5m; GRP (500mm Diameter) - SW - Depth: 3.51m - 4.5m [17.56 m]; GRP (500mm Diameter) - SW - Depth: 4.51m - 5.5m | 11,572.04 |  | L02 | Z9 | CONS | SW | Primary Test | bef |
| RHD4CZ9L02SW1502 |  | Backfilling and warning tape works for GRP Pipe Line 500 mm - (RD-L-2)-Z9-L02-SW | 2d | 2027-05-05 | 2027-05-06 | RHD4CZ9L02SW1402 |  |  |  |  | Skilled labor [14.16 h]; Unskilled Labor [28.42 h]; Equipment Opreator [28.42 h]; Excavator-Poclain [14.16 h]; Dump Truck [14.16 h]; GRP (500mm Diameter) - SW - Depth: 2.51m - 3.5m; GRP (500mm Diameter) - SW - Depth: 3.51m - 4.5m [17.56 m]; GRP (500mm Diameter) - SW - Depth: 4.51m - 5.5m | 11,572.04 |  | L02 | Z9 | CONS | SW | Backfilling | bef |
|  | 957 | **RHD4-02-002-L02-(SW)-MH Works - 1200 mm diameter with Back drop** |  | 2027-05-04 | 2027-05-19 |  |  |  |  |  |  |  |  |  |  |  |  |  |  |
| RHD4CZ9L02SW3101 |  | Excavation and PC Blinding works for MH 1200 mm - (RD-L-2)-Z9-L02-SW | 2d | 2027-05-04 | 2027-05-05 | RHD4CZ9L02SW2100, RHD4CZ5RA07PT3202 |  |  |  |  | Skilled labor [5.45 h]; Unskilled Labor [5.45 h]; Equipment Opreator [8.71 h]; Excavator-Poclain [5.45 h]; Water Truck [0.54 h]; Dump Truck [2.72 h]; MH (1200mm Diameter) - SW - depth 4.51-5.5 m with back drop [0.25 nr] | 5,008.5 |  | L02 | Z9 | CONS | SW | Excavation | bef |
| RHD4CZ9L02SW3201 |  | Installation of Base for MH 1200 mm - (RD-L-2)-Z9-L02-SW | 2d | 2027-05-06 | 2027-05-08 | RHD4CZ9L02SW3101 |  |  |  |  | Skilled labor [10.89 h]; Unskilled Labor [10.89 h]; Equipment Opreator [4.36 h]; Boom Truck [2.18 h]; Concrete Mixer Truck [2.18 h]; MH (1200mm Diameter) - SW - depth 4.51-5.5 m with back drop [0.25 nr] | 5,008.5 |  | L02 | Z9 | CONS | SW | Installing Base | bef |
| RHD4CZ9L02SW3301 |  | MH Ring and C.Slab works and Backfilling works for MH 1200 mm - (RD-L-2)-Z9-L02-SW | 2d | 2027-05-09 | 2027-05-10 | RHD4CZ9L02SW3201 |  |  |  |  | Skilled labor [10.89 h]; Unskilled Labor [10.89 h]; Equipment Opreator [7.62 h]; Boom Truck [4.36 h]; Concrete Mixer Truck [3.27 h]; MH (1200mm Diameter) - SW - depth 4.51-5.5 m with back drop [0.35 nr] | 7,011.9 |  | L02 | Z9 | CONS | SW | Installing Rings | bef |
| RHD4CZ9L02SW3401 |  | Steel Cover for MH 1200 mm - (RD-L-2)-Z9-L02-SW | 2d | 2027-05-11 | 2027-05-12 | RHD4CZ9L02SW3301 |  |  |  |  | Skilled labor [3.59 h]; Unskilled Labor [7.3 h]; Equipment Opreator [0.8 h]; Boom Truck [0.8 h]; MH (1200mm Diameter) - SW - depth 4.51-5.5 m with back drop [0.05 nr] | 1,001.7 |  | L02 | Z9 | CONS | SW | Steel Cover | bef |
| RHD4CZ9L02SW3501 |  | Finishing, Benching, Testing works for MH 1200 mm - (RD-L-2)-Z9-L02-SW | 2d | 2027-05-13 | 2027-05-19 | RHD4CZ9L02SW3401, RHD4CZ9L02SW1502, RHD4CZ9L02ST1508 |  |  |  |  | Skilled labor [10.89 h]; Unskilled Labor [21.78 h]; Plumber [10.89 h]; Equipment Opreator [2.18 h]; Water Truck [2.18 h]; MH (1200mm Diameter) - SW - depth 4.51-5.5 m with back drop [0.1 nr] | 2,003.4 |  | L02 | Z9 | CONS | SW | Benching | bef |

| ID | WBS | Activity | Duration | Start | Finish | Predecessors | Complete | Remaining | Planned start | Planned finish | Resources | Cost | Actual cost | RDH4-01-001-Road and Block Names-1 | RDH4-01-001-Zones-1 | RDH4-01-001-Phases-1 | RDH4-01-001-Networks-1 | RDH4-01-001-Work Method-1 | RDH4-01-001-MENEM |
| --- | --- | --- | --- | --- | --- | --- | --- | --- | --- | --- | --- | --- | --- | --- | --- | --- | --- | --- | --- |
|  | 8523 | **RHD4-02-002-L02-(SW)-MH Works - 1200 mm diameter** |  | 2026-09-15 | 2027-08-07 |  |  |  |  |  |  |  |  |  |  |  |  |  |  |
| RHD4CZ9L02SW3100 |  | Excavation and PC Blinding works for MH 1200 mm - (RD-L-2)-Z9-L02-SW | 13d | 2026-09-15 A | 2027-05-27 | RHD4ENSDZ9APPSW120, RHD4CZ9L02SW3501, RHD4CZ9L02SW3101 | 66% | 7d | 2026-12-21 | 2027-01-04 | Skilled labor [132.54 h]; Unskilled Labor [132.54 h]; Equipment Opreator [212 h]; Excavator-Poclain [132.54 h]; Water Truck [13.29 h]; Dump Truck [66.21 h]; MH (1200mm Diameter) - SW - depth 0 - 1.5m [1.25 nr]; MH (1200mm Diameter) - SW - depth 1.51 - 2.5m [1.25 nr]; MH (1200mm Diameter) - SW - depth 2.51 - 3.5m [3.25 nr]; MH (1200mm Diameter) - SW - depth 3.51 -4.5m [0.5 nr]; MH (1200mm Diameter) - SW - depth 4.51 -5.5m [0.25 nr] | 71,035.75 | 46,968.25 | L02 | Z9 | CONS | SW | Excavation | bef |
| RHD4CZ9L02SW3200 |  | Installation of Base for MH 1200 mm - (RD-L-2)-Z9-L02-SW | 21d | 2026-09-19 A | 2027-06-08 | RHD4CZ9L02SW3100 | 30% | 10d | 2027-01-05 | 2027-01-28 | Skilled labor [228.7 h]; Unskilled Labor [228.7 h]; Equipment Opreator [91.48 h]; Boom Truck [45.74 h]; Concrete Mixer Truck [45.74 h]; MH (1200mm Diameter) - SW - depth 0 - 1.5m [1.25 nr]; MH (1200mm Diameter) - SW - depth 1.51 - 2.5m [1.25 nr]; MH (1200mm Diameter) - SW - depth 2.51 - 3.5m [3.25 nr]; MH (1200mm Diameter) - SW - depth 3.51 -4.5m [0.5 nr]; MH (1200mm Diameter) - SW - depth 4.51 -5.5m [0.25 nr] | 71,035.75 | 21,089.5 | L02 | Z9 | CONS | SW | Installing Base | bef |
| RHD4CZ9L02SW3300 |  | MH Ring and C.Slab works and Backfilling works for MH 1200 mm - (RD-L-2)-Z9-L02-SW | 21d | 2027-06-09 | 2027-07-03 | RHD4PRSHLDOSSW1308, RHD4PRSHLSTAGSW1308, RHD4CZ9L02SW3200 |  |  |  |  | Skilled labor [228.7 h]; Unskilled Labor [228.7 h]; Equipment Opreator [160.09 h]; Boom Truck [91.48 h]; Concrete Mixer Truck [68.61 h]; MH (1200mm Diameter) - SW - depth 0 - 1.5m [1.75 nr]; MH (1200mm Diameter) - SW - depth 1.51 - 2.5m [1.75 nr]; MH (1200mm Diameter) - SW - depth 2.51 - 3.5m [4.55 nr]; MH (1200mm Diameter) - SW - depth 3.51 -4.5m [0.7 nr]; MH (1200mm Diameter) - SW - depth 4.51 -5.5m [0.35 nr] | 99,450.05 |  | L02 | Z9 | CONS | SW | Installing Rings | bef |
| RHD4CZ9L02SW3400 |  | Steel Cover for MH 1200 mm - (RD-L-2)-Z9-L02-SW | 9d | 2027-07-04 | 2027-07-13 | RHD4PRSHLDOSSW1408, RHD4PRSHLSTAGSW1408, RHD4CZ9L02SW3300 |  |  |  |  | Skilled labor [94.4 h]; Unskilled Labor [188.73 h]; Equipment Opreator [18.84 h]; Boom Truck [18.84 h]; MH (1200mm Diameter) - SW - depth 0 - 1.5m [0.25 nr]; MH (1200mm Diameter) - SW - depth 1.51 - 2.5m [0.25 nr]; MH (1200mm Diameter) - SW - depth 2.51 - 3.5m [0.65 nr]; MH (1200mm Diameter) - SW - depth 3.51 -4.5m [0.1 nr]; MH (1200mm Diameter) - SW - depth 4.51 -5.5m [0.05 nr] | 14,207.15 |  | L02 | Z9 | CONS | SW | Steel Cover | bef |
| RHD4CZ9L02SW3500 |  | Finishing, Benching, Testing works for MH 1200 mm - (RD-L-2)-Z9-L02-SW | 21d | 2027-07-14 | 2027-08-07 | RHD4CZ9L02SW3400 |  |  |  |  | Skilled labor [228.7 h]; Unskilled Labor [457.39 h]; Plumber [228.7 h]; Equipment Opreator [45.74 h]; Water Truck [45.74 h]; MH (1200mm Diameter) - SW - depth 0 - 1.5m [0.5 nr]; MH (1200mm Diameter) - SW - depth 1.51 - 2.5m [0.5 nr]; MH (1200mm Diameter) - SW - depth 2.51 - 3.5m [1.3 nr]; MH (1200mm Diameter) - SW - depth 3.51 -4.5m [0.2 nr]; MH (1200mm Diameter) - SW - depth 4.51 -5.5m [0.1 nr] | 28,414.3 |  | L02 | Z9 | CONS | SW | Benching | bef |
|  | 8518 | **RHD4-02-002-L02-(SW)-GRP Pipes - 700 mm diameter** |  |  |  |  |  |  |  |  |  |  |  |  |  |  |  |  |  |
|  | 8519 | **RHD4-02-002-L02-(SW)-UPVC Pipes - 200 mm diameter** |  | 2026-08-15 | 2027-06-07 |  |  |  |  |  |  |  |  |  |  |  |  |  |  |
| RHD4CZ9L02SW2100 |  | Excavation works for UPVC Pipe Line 200 mm - (RD-L-2)-Z9-L02-SW | 8d | 2026-08-15 A | 2027-04-29 | RHD4ENSDZ9APPSW120, RHD4CZ9L02SW1102 | 88% | 2d | 2026-11-30 | 2026-12-08 | Skilled labor [78.96 h]; Unskilled Labor [78.96 h]; Equipment Opreator [94.75 h]; Excavator-Poclain [78.96 h]; Dump Truck [15.79 h]; UPVC (200mm Diameter) - SW - Depth: less than 1.5m [57.69 m]; UPVC (200mm Diameter) - SW - Depth: 1.51m - 2.5m [97.51 m]; UPVC (200mm Diameter) - SW - Depth: 2.51m - 3.5m [14.26 m] | 35,907.43 | 26,335.07 | L02 | Z9 | CONS | SW | Excavation | bef |
| RHD4CZ9L02SW2200 |  | Bedding works for UPVC Pipe Line 200 mm - (RD-L-2)-Z9-L02-SW | 7d | 2026-08-16 A | 2027-05-08 | RHD4CZ9L02SW2100 | 84% | 7d | 2026-12-09 | 2026-12-16 | Skilled labor [76 h]; Unskilled Labor [151.92 h]; Equipment Opreator [151.92 h]; Excavator-Poclain [76 h]; Dump Truck [76 h]; UPVC (200mm Diameter) - SW - Depth: less than 1.5m [28.84 m]; UPVC (200mm Diameter) - SW - Depth: 1.51m - 2.5m [32.5 m]; UPVC (200mm Diameter) - SW - Depth: 2.51m - 3.5m [4.75 m] | 13,697.2 | 11,557 | L02 | Z9 | CONS | SW | Bedding | bef |
| RHD4CZ9L02SW2300 |  | Installing for UPVC Pipe Line 200 mm - (RD-L-2)-Z9-L02-SW | 9d | 2026-08-17 A | 2027-05-23 | RHD4PRSHLDOSSW1008, RHD4PRSHLSTAGSW1008, RHD4CZ9L02SW2200 | 84% | 9d | 2026-12-17 | 2026-12-27 | Unskilled Labor [181.54 h]; Plumber [90.83 h]; Equipment Opreator [90.83 h]; Boom Truck [90.83 h]; UPVC (200mm Diameter) - SW - Depth: less than 1.5m [259.6 m]; UPVC (200mm Diameter) - SW - Depth: 1.51m - 2.5m [274.57 m]; UPVC (200mm Diameter) - SW - Depth: 2.51m - 3.5m [38.01 m] | 117,941.23 | 98,675.27 | L02 | Z9 | CONS | SW | Installation | bef |
| RHD4CZ9L02SW2500 |  | Backfilling and warning tape works for UPVC Pipe Line 200 mm - (RD-L-2)-Z9-L02-SW | 8d | 2026-08-18 A | 2027-06-07 | RHD4CZ9L02SW2400 | 84% | 8d | 2027-01-03 | 2027-01-11 | Skilled labor [83.42 h]; Unskilled Labor [166.73 h]; Equipment Opreator [166.73 h]; Excavator-Poclain [83.42 h]; Dump Truck [83.42 h]; UPVC (200mm Diameter) - SW - Depth: less than 1.5m [115.38 m]; UPVC (200mm Diameter) - SW - Depth: 1.51m - 2.5m [130.01 m]; UPVC (200mm Diameter) - SW - Depth: 2.51m - 3.5m [19.01 m] | 54,797.63 | 46,234.82 | L02 | Z9 | CONS | SW | Backfilling | bef |
| RHD4CZ9L02SW2400 |  | Primary Test for UPVC Pipe Line 200 mm - (RD-L-2)-Z9-L02-SW | 5d | 2027-05-24 | 2027-05-29 | RHD4CZ9L02SW2300 |  |  |  |  | Unskilled Labor [53.47 h]; Plumber [53.47 h]; Equipment Opreator [53.47 h]; Water Truck [53.47 h]; UPVC (200mm Diameter) - SW - Depth: less than 1.5m [115.38 m]; UPVC (200mm Diameter) - SW - Depth: 1.51m - 2.5m [130.01 m]; UPVC (200mm Diameter) - SW - Depth: 2.51m - 3.5m [19.01 m] | 54,797.63 |  | L02 | Z9 | CONS | SW | Primary Test | bef |
|  | 8522 | **RHD4-02-002-L02-(SW)-Concrete Encasement** |  |  |  |  |  |  |  |  |  |  |  |  |  |  |  |  |  |
|  | 8550 | **RHD4-02-002-Z9-L02-Potable Network - PT** |  | 2027-05-30 | 2027-08-26 |  |  |  |  |  |  |  |  |  |  |  |  |  |  |
|  | 8552 | **RHD4-02-002-L02-(PT)-HDPE Pipes - 160 mm diameter** |  | 2027-05-30 | 2027-07-14 |  |  |  |  |  |  |  |  |  |  |  |  |  |  |
| RHD4CZ9L02PT1101 |  | Excavation works for HDPE Pipline 160 mm - (RD-L-2)-Z9-L02-PT | 8d | 2027-05-30 | 2027-06-07 | RHD4ENSDZ9APPPT130, RHD4ENMSPT2000, RHD4CZ9L02SW2400, RHD4CZ9L02SW2100 |  |  |  |  | Skilled labor [76.99 h]; Unskilled Labor [76.99 h]; Equipment Opreator [92.46 h]; Excavator-Poclain [76.99 h]; Dump Truck [15.36 h]; HDPE (160mm Diameter) - PT - Depth: less than 1.5m [158.89 m]; HDPE (160mm Diameter) - PT - Depth: 1.51m - 2.5m [14.37 m]; HDPE (160mm Diameter) - PT - Depth: more than 2.5m [0.35 m] | 19,112.12 |  | L02 | Z9 | CONS | PT | Excavation | bef |
| RHD4CZ9L02PT1201 |  | Bedding works for HDPE Pipline 160 mm - (RD-L-2)-Z9-L02-PT | 7d | 2027-06-08 | 2027-06-15 | RHD4CZ9L02PT1101 |  |  |  |  | Skilled labor [66.76 h]; Unskilled Labor [133.6 h]; Equipment Opreator [133.6 h]; Excavator-Poclain [66.76 h]; Dump Truck [66.76 h]; HDPE (160mm Diameter) - PT - Depth: less than 1.5m [79.45 m]; HDPE (160mm Diameter) - PT - Depth: 1.51m - 2.5m [4.79 m]; HDPE (160mm Diameter) - PT - Depth: more than 2.5m [0.12 m] | 9,205.45 |  | L02 | Z9 | CONS | PT | Bedding | bef |
| RHD4CZ9L02PT1301 |  | Installing for HDPE Pipline 160 mm - (RD-L-2)-Z9-L02-PT | 11d | 2027-06-16 | 2027-06-28 | RHD4PRSHLDOSPT1000, RHD4PRSHLSTAGPT1000, RHD4CZ9L02PT1201 |  |  |  |  | Unskilled Labor [235.67 h]; Plumber [117.83 h]; Equipment Opreator [117.83 h]; Boom Truck [117.83 h]; HDPE (160mm Diameter) - PT - Depth: less than 1.5m [715.01 m]; HDPE (160mm Diameter) - PT - Depth: 1.51m - 2.5m [38.31 m]; HDPE (160mm Diameter) - PT - Depth: more than 2.5m [0.92 m] | 82,131.01 |  | L02 | Z9 | CONS | PT | Installation | bef |
| RHD4CZ9L02PT1401 |  | Primary Test for HDPE Pipline 160 mm - (RD-L-2)-Z9-L02-PT | 5d | 2027-06-29 | 2027-07-04 | RHD4CZ9L02PT1301 |  |  |  |  | Unskilled Labor [46.4 h]; Plumber [46.4 h]; Equipment Opreator [46.4 h]; Water Truck [46.4 h]; HDPE (160mm Diameter) - PT - Depth: less than 1.5m [317.78 m]; HDPE (160mm Diameter) - PT - Depth: 1.51m - 2.5m [19.15 m]; HDPE (160mm Diameter) - PT - Depth: more than 2.5m [0.46 m] | 36,814.22 |  | L02 | Z9 | CONS | PT | Primary Test | bef |
| RHD4CZ9L02PT1501 |  | Backfilling and warning tape works for HDPE Pipline 160 mm - (RD-L-2)-Z9-L02-PT | 9d | 2027-07-05 | 2027-07-14 | RHD4CZ9L02PT1401 |  |  |  |  | Skilled labor [92.35 h]; Unskilled Labor [184.59 h]; Equipment Opreator [184.59 h]; Excavator-Poclain [92.35 h]; Dump Truck [92.35 h]; HDPE (160mm Diameter) - PT - Depth: less than 1.5m [317.78 m]; HDPE (160mm Diameter) - PT - Depth: 1.51m - 2.5m [19.15 m]; HDPE (160mm Diameter) - PT - Depth: more than 2.5m [0.46 m] | 36,814.22 |  | L02 | Z9 | CONS | PT | Backfilling | bef |
|  | 6478 | **RHD4-02-002-L02-(PT)-Wash out Valve Chambers** |  | 2027-06-08 | 2027-07-03 |  |  |  |  |  |  |  |  |  |  |  |  |  |  |
| RHD4CZ9L02PT2101 |  | Excavation and Bedding for Wash out Valve Chambers for Potable Water Network - (RD-L-2)-Z9-L02-PT | 2d | 2027-06-08 | 2027-06-09 | RHD4CZ9L02PT1101 |  |  |  |  | Skilled labor [5.45 h]; Unskilled Labor [5.45 h]; Equipment Opreator [1.09 h]; Excavator-Poclain [0.54 h]; Dump Truck [0.54 h]; Wash out chambers - PT [0.25 nr] | 4,686.25 |  | L02 | Z9 | CONS | PT | Excavation and Bedding | bef |
| RHD4CZ9L02PT2201 |  | PC works for Wash out Valve Chambers for Potable Water Network - (RD-L-2)-Z9-L02-PT | 2d | 2027-06-10 | 2027-06-12 | RHD4CZ9L02PT2101 |  |  |  |  | Skilled labor [5.45 h]; Unskilled Labor [10.89 h]; Equipment Opreator [0.54 h]; Concrete Pump [0.54 h]; Wash out chambers - PT [0.1 nr] | 1,874.5 |  | L02 | Z9 | CONS | PT | PC Works | bef |
| RHD4CZ9L02PT2301 |  | Installation for Wash out Valve Chambers for Potable Water Network - (RD-L-2)-Z9-L02-PT | 2d | 2027-06-13 | 2027-06-14 | RHD4CZ9L02PT2201 |  |  |  |  | Skilled labor [5.45 h]; Unskilled Labor [10.89 h]; Equipment Opreator [1.09 h]; Boom Truck [1.09 h]; Wash out chambers - PT [0.55 nr] | 10,309.75 |  | L02 | Z9 | CONS | PT | Installation | bef |
| RHD4CZ9L02PT2401 |  | Backfilling works for Wash out Valve Chambers for Potable Water Network - (RD-L-2)-Z9-L02-PT | 2d | 2027-07-01 | 2027-07-03 | RHD4CZ9L02PT2301, RHD4CZ9L02PT5100 |  |  |  |  | Skilled labor [5.45 h]; Unskilled Labor [10.89 h]; Equipment Opreator [1.09 h]; Water Truck [0.54 h]; Dump Truck [0.54 h]; Wash out chambers - PT [0.1 nr] | 1,874.5 |  | L02 | Z9 | CONS | PT | Backfilling Works | bef |

| ID | WBS | Activity | Duration | Start | Finish | Predecessors | Resources | Cost | RDH4-01-001-Road and Block Names-1 | RDH4-01-001-Zones-1 | RDH4-01-001-Phases-1 | RDH4-01-001-Networks-1 | RDH4-01-001-Work Method-1 | RDH4-01-001-MENEM |
| --- | --- | --- | --- | --- | --- | --- | --- | --- | --- | --- | --- | --- | --- | --- |
|  | 6479 | **RHD4-02-002-L02-(PT)-Wash out Valves** |  | 2027-06-29 | 2027-07-05 |  |  |  |  |  |  |  |  |  |
| RHD4CZ9L02PT3102 |  | Installation for Wash out Valves for Potable Water Network - (RD-L-2)-Z9-L02-PT | 2d | 2027-06-29 | 2027-06-30 | RHD4CZ9L02PT2301, RHD4CZ9L02PT1301 | Unskilled Labor [5.45 h]; Plumber [5.45 h]; Wash out valve diameter 100 mm - PT [0.9 nr] | 3,373.2 | L02 | Z9 | CONS | PT | Installation | bef |
| RHD4CZ9L02PT3202 |  | Stem and Service box for Wash out Valves for Potable Water Network - (RD-L-2)-Z9-L02-PT | 2d | 2027-07-04 | 2027-07-05 | RHD4CZ9L02PT3102, RHD4CZ9L02PT2401, RHD4CZ9L02SW3501 | Unskilled Labor [5.45 h]; Plumber [5.45 h]; Wash out valve diameter 100 mm - PT [0.1 nr] | 374.8 | L02 | Z9 | CONS | PT | Stem and Service box | bef |
|  | 6483 | **RHD4-02-002-L02-(PT)-Concrete Encasement** |  | 2027-06-29 | 2027-06-30 |  |  |  |  |  |  |  |  |  |
| RHD4CZ9L02PT5100 |  | Pipe Encasement for Potable Pipelines - (RD-L-2)-Z9-L02-PT | 2d | 2027-06-29 | 2027-06-30 | RHD4CZ9L02PT1301 | Skilled labor [0.8 h]; Unskilled Labor [0.8 h]; Equipment Opreator [0.8 h]; Concrete Mixer Truck [0.11 h]; Dump Truck [0.8 h]; Pipe Encasement - PT [0.34 m3] | 416.84 | L02 | Z9 | CONS | PT | Pipe Encasement | bef |
|  | 8551 | **RHD4-02-002-L02-(PT)-HDPE Pipes - 110 mm diameter** |  | 2027-05-30 | 2027-07-08 |  |  |  |  |  |  |  |  |  |
| RHD4CZ9L02PT1100 |  | Excavation works for HDPE Pipline 110 mm - (RD-L-2)-Z9-L02-PT | 2d | 2027-05-30 | 2027-05-31 | RHD4ENSDZ9APPPT130, RHD4ENMSPT2000, RHD4CZ9L02PT1101 SS | Skilled labor [8.17 h]; Unskilled Labor [8.17 h]; Equipment Opreator [9.8 h]; Excavator-Poclain [8.17 h]; Dump Truck [1.6 h]; HDPE (110mm Diameter) - PT - Depth: less than 1.5m [18.84 m] | 1,601.4 | L02 | Z9 | CONS | PT | Excavation | bef |
| RHD4CZ9L02PT1200 |  | Bedding works for HDPE Pipline 110 mm - (RD-L-2)-Z9-L02-PT | 2d | 2027-06-16 | 2027-06-17 | RHD4CZ9L02PT1100, RHD4CZ9L02PT1201 | Skilled labor [6.86 h]; Unskilled Labor [13.72 h]; Equipment Opreator [13.72 h]; Excavator-Poclain [6.86 h]; Dump Truck [6.86 h]; HDPE (110mm Diameter) - PT - Depth: less than 1.5m [9.42 m] | 800.7 | L02 | Z9 | CONS | PT | Bedding | bef |
| RHD4CZ9L02PT1300 |  | Installing for HDPE Pipline 110 mm - (RD-L-2)-Z9-L02-PT | 2d | 2027-06-19 | 2027-06-20 | RHD4PRSHLDOSPT1000, RHD4PRSHLSTAGPT1000, RHD4CZ9L02PT1200 | Unskilled Labor [27.33 h]; Plumber [13.72 h]; Equipment Opreator [13.72 h]; Boom Truck [13.72 h]; HDPE (110mm Diameter) - PT - Depth: less than 1.5m [84.78 m] | 7,206.3 | L02 | Z9 | CONS | PT | Installation | bef |
| RHD4CZ9L02PT1400 |  | Primary Test for HDPE Pipline 110 mm - (RD-L-2)-Z9-L02-PT | 2d | 2027-07-05 | 2027-07-06 | RHD4CZ9L02PT1300, RHD4CZ9L02PT1401 | Unskilled Labor [4.14 h]; Plumber [4.14 h]; Equipment Opreator [4.14 h]; Water Truck [4.14 h]; HDPE (110mm Diameter) - PT - Depth: less than 1.5m [37.68 m] | 3,202.8 | L02 | Z9 | CONS | PT | Primary Test | bef |
| RHD4CZ9L02PT1500 |  | Backfilling and warning tape works for HDPE Pipline 110 mm - (RD-L-2)-Z9-L02-PT | 2d | 2027-07-07 | 2027-07-08 | RHD4CZ9L02PT1400 | Skilled labor [10.24 h]; Unskilled Labor [20.47 h]; Equipment Opreator [20.47 h]; Excavator-Poclain [10.24 h]; Dump Truck [10.24 h]; HDPE (110mm Diameter) - PT - Depth: less than 1.5m [37.68 m] | 3,202.8 | L02 | Z9 | CONS | PT | Backfilling | bef |
|  | 8556 | **RHD4-02-002-L02-(PT)-Gate Valves (Direct Buried)** |  | 2027-06-22 | 2027-07-05 |  |  |  |  |  |  |  |  |  |
| RHD4CZ9L02PT3100 |  | Installation for Direct Buried Gate Valves - (RD-L-2)-Z9-L02-PT | 6d | 2027-06-22 | 2027-06-28 | RHD4PRSHLDOSPT1200, RHD4PRSHLSTAGPT1200, RHD4CZ9L02PT1301 FF, RHD4CZ9L02PT1300 FF, RHD4CZ9L02PT1301 SS, RHD4CZ9L02PT1300 SS | Unskilled Labor [65.34 h]; Plumber [65.34 h]; Gate valves dia 100 mm - PT [5.4 nr]; Gate valves dia 150 mm - PT [5.4 nr] | 14,520.6 | L02 | Z9 | CONS | PT | Installation | bef |
| RHD4CZ9L02PT3200 |  | Stem and Service box for Direct Buried Gate Valves - (RD-L-2)-Z9-L02-PT | 6d | 2027-06-29 | 2027-07-05 | RHD4PRSHLDOSPT1300, RHD4PRSHLSTAGPT1300, RHD4CZ9L02PT3100 | Unskilled Labor [65.34 h]; Plumber [65.34 h]; Gate valves dia 100 mm - PT [0.6 nr]; Gate valves dia 150 mm - PT [0.6 nr] | 1,613.4 | L02 | Z9 | CONS | PT | Stem and Service box | bef |
|  | 8561 | **RHD4-02-002-L02-(PT)-Air Valve Chambers** |  | 2027-06-01 | 2027-06-09 |  |  |  |  |  |  |  |  |  |
| RHD4CZ9L02PT2102 |  | Excavation and Bedding for Air Valve Chambers for Potable Water Network - (RD-L-2)-Z9-L02-PT | 2d | 2027-06-01 | 2027-06-02 | RHD4ENSDZ9APPPT130, RHD4CZ9L02PT1100 | Skilled labor [5.45 h]; Unskilled Labor [5.45 h]; Equipment Opreator [1.09 h]; Excavator-Poclain [0.54 h]; Dump Truck [0.54 h]; Air Valve chambers - PT [0.25 nr] | 1,193 | L02 | Z9 | CONS | PT | Excavation and Bedding | bef |
| RHD4CZ9L02PT2202 |  | PC works for Air Valve Chambers for Potable Water Network - (RD-L-2)-Z9-L02-PT | 2d | 2027-06-03 | 2027-06-05 | RHD4CZ9L02PT2102 | Skilled labor [5.45 h]; Unskilled Labor [10.89 h]; Equipment Opreator [0.54 h]; Concrete Pump [0.54 h]; Air Valve chambers - PT [0.1 nr] | 477.2 | L02 | Z9 | CONS | PT | PC Works | bef |
| RHD4CZ9L02PT2302 |  | Installation for Air Valve Chambers for Potable Water Network - (RD-L-2)-Z9-L02-PT | 2d | 2027-06-06 | 2027-06-07 | RHD4PRSHLDOSPT1100, RHD4PRSHLDOSPT1400, RHD4PRSHLSTAGPT1100, RHD4PRSHLSTAGPT1400, RHD4CZ9L02PT2202 | Skilled labor [5.45 h]; Unskilled Labor [10.89 h]; Equipment Opreator [1.09 h]; Boom Truck [1.09 h]; Air Valve chambers - PT [0.55 nr] | 2,624.6 | L02 | Z9 | CONS | PT | Installation | bef |
| RHD4CZ9L02PT2402 |  | Backfilling works for Air Valve Chambers for Potable Water Network - (RD-L-2)-Z9-L02-PT | 2d | 2027-06-08 | 2027-06-09 | RHD4CZ9L02PT2302 | Skilled labor [5.45 h]; Unskilled Labor [10.89 h]; Equipment Opreator [1.09 h]; Water Truck [0.54 h]; Dump Truck [0.54 h]; Air Valve chambers - PT [0.1 nr] | 477.2 | L02 | Z9 | CONS | PT | Backfilling Works | bef |
|  | 8562 | **RHD4-02-002-L02-(PT)-Air Valves** |  | 2027-06-08 | 2027-06-12 |  |  |  |  |  |  |  |  |  |
| RHD4CZ9L02PT3103 |  | Installation for Air Valves for Potable Water Network - (RD-L-2)-Z9-L02-PT | 2d | 2027-06-08 | 2027-06-09 | RHD4PRSHLDOSPT1200, RHD4PRSHLSTAGPT1200, RHD4CZ9L02PT2302 | Unskilled Labor [5.45 h]; Plumber [5.45 h]; Air valve diameter 50 mm - PT [0.9 nr] | 4,427.1 | L02 | Z9 | CONS | PT | Installation | bef |
| RHD4CZ9L02PT3203 |  | Stem and Service box for Air Valves for Potable Water Network - (RD-L-2)-Z9-L02-PT | 2d | 2027-06-10 | 2027-06-12 | RHD4PRSHLDOSPT1300, RHD4PRSHLSTAGPT1300, RHD4CZ9L02PT3103, RHD4CZ9L02PT2402 | Unskilled Labor [5.45 h]; Plumber [5.45 h]; Air valve diameter 50 mm - PT [0.1 nr] | 491.9 | L02 | Z9 | CONS | PT | Stem and Service box | bef |
|  | 8563 | **RHD4-02-002-L02-(PT)-Fire Hydrant** |  | 2027-07-15 | 2027-08-26 |  |  |  |  |  |  |  |  |  |
| RHD4CZ9L02PT4100 |  | Excavation and Bedding and Pipe Installation for Fire Hydrant - (RD-L-2)-Z9-L02-PT | 11d | 2027-07-15 | 2027-07-27 | RHD4ENSDZ9APPPT130, RHD4CZ9L02PT1501, RHD4CZ9L02PT1500 | Skilled labor [114.35 h]; Unskilled Labor [114.35 h]; Plumber [114.35 h]; Equipment Opreator [57.17 h]; Excavator-Poclain [57.17 h]; 3-outlet fire hydrant (2 x 2.5 inch and 1 x 4.5 inch) in the form of a separate dry vacuum cylinder [2.1 nr] | 26,502 | L02 | Z9 | CONS | PT | Excavation | bef |
| RHD4CZ9L02PT4200 |  | Valve Installation for Fire Hydrant - (RD-L-2)-Z9-L02-PT | 7d | 2027-07-28 | 2027-08-04 | RHD4CZ9L02PT4100 | Unskilled Labor [76.23 h]; Plumber [76.23 h]; 3-outlet fire hydrant (2 x 2.5 inch and 1 x 4.5 inch) in the form of a separate dry vacuum cylinder [4.2 nr] | 53,004 | L02 | Z9 | CONS | PT | Valve | bef |
| RHD4CZ9L02PT4300 |  | Stem for Fire Hydrant - (RD-L-2)-Z9-L02-PT | 7d | 2027-08-05 | 2027-08-12 | RHD4CZ9L02PT4200 | Unskilled Labor [76.23 h]; Plumber [76.23 h]; 3-outlet fire hydrant (2 x 2.5 inch and 1 x 4.5 inch) in the form of a separate dry vacuum cylinder [6.3 nr] | 79,506 | L02 | Z9 | CONS | PT | Stem | bef |
| RHD4CZ9L02PT4400 |  | Fire Installation for Fire Hydrant - (RD-L-2)-Z9-L02-PT | 7d | 2027-08-14 | 2027-08-21 | RHD4PRSHLDOSPT1500, RHD4PRSHLSTAGPT1500, RHD4CZ9L02PT4300, RHD4CZ9L02PT3203 | Unskilled Labor [76.23 h]; Plumber [76.23 h]; Equipment Opreator [76.23 h]; Boom Truck [76.23 h]; 3-outlet fire hydrant (2 x 2.5 inch and 1 x 4.5 inch) in the form of a separate dry vacuum cylinder [7.35 nr] | 92,757 | L02 | Z9 | CONS | PT | Fire | bef |
| RHD4CZ9L02PT4500 |  | Protection Barriers for Fire Hydrant - (RD-L-2)-Z9-L02-PT | 5d | 2027-08-22 | 2027-08-26 | RHD4CZ9L02PT4400 | Unskilled Labor [45.74 h]; Plumber [45.74 h]; 3-outlet fire hydrant (2 x 2.5 inch and 1 x 4.5 inch) in the form of a separate dry vacuum cylinder [1.05 nr] | 13,251 | L02 | Z9 | CONS | PT | Protection Barriers | bef |

| ID | WBS | Activity | Duration | Start | Finish | Predecessors | Resources | Cost | RDH4-01-001-Road and Block Names-1 | RDH4-01-001-Zones-1 | RDH4-01-001-Phases-1 | RDH4-01-001-Networks-1 | RDH4-01-001-Work Method-1 | RDH4-01-001-MENEM |
| --- | --- | --- | --- | --- | --- | --- | --- | --- | --- | --- | --- | --- | --- | --- |
|  | 8565 | **RHD4-02-002-Z9-L02-Irrigation Network - IRR** |  | 2027-06-08 | 2027-10-11 |  |  |  |  |  |  |  |  |  |
|  | 8566 | **RHD4-02-002-L02-(IRR)-HDPE Pipes - 160 mm diameter** |  | 2027-06-12 | 2027-10-11 |  |  |  |  |  |  |  |  |  |
| RHD4CZ9L02IRR1100 |  | Excavation works for HDPE Pipline 160 mm - (RD-L-2)-Z9-L02-IRR | 12d | 2027-06-12 | 2027-06-24 | RHD4ENSDZ9APPIRR140, RHD4ENMSRR2000, RHD4CZ9L02IRR1107 | Skilled labor [125.67 h]; Unskilled Labor [125.67 h]; Equipment Opreator [150.83 h]; Excavator-Poclain [125.67 h]; Dump Truck [25.16 h]; HDPE (160mm Diameter) - TSE - Depth: less than 1.5m [158.72 m]; HDPE (160mm Diameter) - TSE - Depth: more than 1.51m [21.59 m] | 22,783.26 | L02 | Z9 | CONS | IRR | Excavation | bef |
| RHD4CZ9L02IRR1200 |  | Bedding works for HDPE Pipline 160 mm - (RD-L-2)-Z9-L02-IRR | 9d | 2027-06-26 | 2027-07-05 | RHD4CZ9L02IRR1100 | Skilled labor [96.92 h]; Unskilled Labor [193.74 h]; Equipment Opreator [193.74 h]; Excavator-Poclain [96.92 h]; Dump Truck [96.92 h]; HDPE (160mm Diameter) - TSE - Depth: less than 1.5m [79.36 m]; HDPE (160mm Diameter) - TSE - Depth: more than 1.51m [7.2 m] | 10,848.79 | L02 | Z9 | CONS | IRR | Bedding | bef |
| RHD4CZ9L02IRR1300 |  | Installing for HDPE Pipline 160 mm - (RD-L-2)-Z9-L02-IRR | 12d | 2027-09-12 | 2027-09-26 | RHD4PRSHLDOSIRR1000, RHD4PRSHLSTAGIRR1000, RHD4CZ9L02IRR1200, RHD4CZ7L015ST3500, RHD4CZ7RA05ICT2400, RHD4CZ7C02SW3500 | Unskilled Labor [251.35 h]; Plumber [125.67 h]; Equipment Opreator [125.67 h]; Boom Truck [125.67 h]; HDPE (160mm Diameter) - TSE - Depth: less than 1.5m [714.26 m]; HDPE (160mm Diameter) - TSE - Depth: more than 1.51m [57.58 m] | 96,548.87 | L02 | Z9 | CONS | IRR | Installation | bef |
| RHD4CZ9L02IRR1400 |  | Primary Test for HDPE Pipline 160 mm - (RD-L-2)-Z9-L02-IRR | 4d | 2027-09-27 | 2027-09-30 | RHD4CZ9L02IRR1300 | Unskilled Labor [39.75 h]; Plumber [39.75 h]; Equipment Opreator [39.75 h]; Water Truck [39.75 h]; HDPE (160mm Diameter) - TSE - Depth: less than 1.5m [317.45 m]; HDPE (160mm Diameter) - TSE - Depth: more than 1.51m [28.79 m] | 43,393.64 | L02 | Z9 | CONS | IRR | Primary Test | bef |
| RHD4CZ9L02IRR1500 |  | Backfilling and warning tape works for HDPE Pipline 160 mm - (RD-L-2)-Z9-L02-IRR | 9d | 2027-10-02 | 2027-10-11 | RHD4CZ9L02IRR1400 | Skilled labor [96.92 h]; Unskilled Labor [193.74 h]; Equipment Opreator [193.74 h]; Excavator-Poclain [96.92 h]; Dump Truck [96.92 h]; HDPE (160mm Diameter) - TSE - Depth: less than 1.5m [317.45 m]; HDPE (160mm Diameter) - TSE - Depth: more than 1.51m [28.79 m] | 43,393.64 | L02 | Z9 | CONS | IRR | Backfilling | bef |
|  | 6116 | **RHD4-02-002-L02-(IRR)-Butterfly Valve Chamber** |  | 2027-06-12 | 2027-06-20 |  |  |  |  |  |  |  |  |  |
| RHD4CZ9L02IRR2100 |  | Excavation and Bedding for Butterfly Valve Chamber for Irrigation Network - (RD-L-2)-Z9-L02-IRR | 2d | 2027-06-12 | 2027-06-13 | RHD4CZ9L02IRR3103 SS | Skilled labor [10.89 h]; Unskilled Labor [10.89 h]; Equipment Opreator [2.18 h]; Excavator-Poclain [1.09 h]; Dump Truck [1.09 h]; Valve chambers - TSE [0.5 nr] | 7,321.5 | L02 | Z9 | CONS | IRR | Excavation and Bedding | bef |
| RHD4CZ9L02IRR2200 |  | PC works for Butterfly Valve Chamber for Irrigation Network - (RD-L-2)-Z9-L02-IRR | 2d | 2027-06-14 | 2027-06-15 | RHD4CZ9L02IRR2100 | Skilled labor [10.89 h]; Unskilled Labor [21.78 h]; Equipment Opreator [1.09 h]; Concrete Pump [1.09 h]; Valve chambers - TSE [0.2 nr] | 2,928.6 | L02 | Z9 | CONS | IRR | PC Works | bef |
| RHD4CZ9L02IRR2300 |  | Installation for Butterfly Valve Chamber for Irrigation Network - (RD-L-2)-Z9-L02-IRR | 2d | 2027-06-16 | 2027-06-17 | RHD4CZ9L02IRR2200 | Skilled labor [10.89 h]; Unskilled Labor [21.78 h]; Equipment Opreator [2.18 h]; Boom Truck [2.18 h]; Valve chambers - TSE [1.1 nr] | 16,107.3 | L02 | Z9 | CONS | IRR | Installation | bef |
| RHD4CZ9L02IRR2400 |  | Backfilling works for Butterfly Valve Chamber for Irrigation Network - (RD-L-2)-Z9-L02-IRR | 2d | 2027-06-19 | 2027-06-20 | RHD4CZ9L02IRR2300 | Skilled labor [10.89 h]; Unskilled Labor [21.78 h]; Equipment Opreator [2.18 h]; Water Truck [1.09 h]; Dump Truck [1.09 h]; Valve chambers - TSE [0.2 nr] | 2,928.6 | L02 | Z9 | CONS | IRR | Backfilling Works | bef |
|  | 8573 | **RHD4-02-002-L02-(IRR)-HDPE Pipes - 500 mm diameter** |  | 2027-06-08 | 2027-06-21 |  |  |  |  |  |  |  |  |  |
| RHD4CZ9L02IRR1107 |  | Excavation works for HDPE Pipline 500 mm - (RD-L-2)-Z9-L02-IRR | 3d | 2027-06-08 | 2027-06-10 | RHD4ENSDZ9APPIRR140, RHD4ENMSRR2000, RHD4CZ9L02PT1101 | Skilled labor [22.4 h]; Unskilled Labor [22.4 h]; Equipment Opreator [26.9 h]; Excavator-Poclain [22.4 h]; Dump Truck [4.47 h]; HDPE (500mm Diameter) - TSE - Depth: less than 1.5m [28.11 m]; HDPE (500mm Diameter) - TSE - Depth: more than 1.51m [4.23 m] | 21,054.67 | L02 | Z9 | CONS | IRR | Excavation | bef |
| RHD4CZ9L02IRR1207 |  | Bedding works for HDPE Pipline 500 mm - (RD-L-2)-Z9-L02-IRR | 2d | 2027-06-12 | 2027-06-13 | RHD4CZ9L02IRR1107 | Skilled labor [17.32 h]; Unskilled Labor [34.74 h]; Equipment Opreator [34.74 h]; Excavator-Poclain [17.32 h]; Dump Truck [17.32 h]; HDPE (500mm Diameter) - TSE - Depth: less than 1.5m [14.05 m]; HDPE (500mm Diameter) - TSE - Depth: more than 1.51m [1.41 m] | 10,044.41 | L02 | Z9 | CONS | IRR | Bedding | bef |
| RHD4CZ9L02IRR1307 |  | Installing for HDPE Pipline 500 mm - (RD-L-2)-Z9-L02-IRR | 3d | 2027-06-14 | 2027-06-16 | RHD4PRSHLDOSIRR1000, RHD4PRSHLSTAGIRR1000, RHD4CZ9L02IRR1207 | Unskilled Labor [44.87 h]; Plumber [22.4 h]; Equipment Opreator [22.4 h]; Boom Truck [22.4 h]; HDPE (500mm Diameter) - TSE - Depth: less than 1.5m [126.48 m]; HDPE (500mm Diameter) - TSE - Depth: more than 1.51m [11.28 m] | 89,433.85 | L02 | Z9 | CONS | IRR | Installation | bef |
| RHD4CZ9L02IRR1407 |  | Primary Test for HDPE Pipline 500 mm - (RD-L-2)-Z9-L02-IRR | 2d | 2027-06-17 | 2027-06-19 | RHD4CZ9L02IRR1307 | Unskilled Labor [7.2 h]; Plumber [7.2 h]; Equipment Opreator [7.2 h]; Water Truck [7.2 h]; HDPE (500mm Diameter) - TSE - Depth: less than 1.5m [56.21 m]; HDPE (500mm Diameter) - TSE - Depth: more than 1.51m [5.64 m] | 40,177.64 | L02 | Z9 | CONS | IRR | Primary Test | bef |
| RHD4CZ9L02IRR1507 |  | Backfilling and warning tape works for HDPE Pipline 500 mm - (RD-L-2)-Z9-L02-IRR | 2d | 2027-06-20 | 2027-06-21 | RHD4CZ9L02IRR1407 | Skilled labor [17.32 h]; Unskilled Labor [34.74 h]; Equipment Opreator [34.74 h]; Excavator-Poclain [17.32 h]; Dump Truck [17.32 h]; HDPE (500mm Diameter) - TSE - Depth: less than 1.5m [56.21 m]; HDPE (500mm Diameter) - TSE - Depth: more than 1.51m [5.64 m] | 40,177.64 | L02 | Z9 | CONS | IRR | Backfilling | bef |
|  | 8574 | **RHD4-02-002-L02-(IRR)-Gate Valves (Direct Buried)** |  | 2027-09-18 | 2027-10-04 |  |  |  |  |  |  |  |  |  |
| RHD4CZ9L02IRR3100 |  | Installation for Direct Buried Gate Valves - (RD-L-2)-Z9-L02-IRR | 7d | 2027-09-18 | 2027-09-26 | RHD4PRSHLDOSIRR1100, RHD4PRSHLSTAGIRR1100, RHD4CZ9L02IRR1307 SS, RHD4CZ9L02IRR1307 FF, RHD4CZ9L02IRR1300 SS, RHD4CZ9L02IRR1300 FF | Unskilled Labor [70.79 h]; Plumber [70.79 h]; Gate valves dia 100 mm - TSE [11.7 nr] | 18,486 | L02 | Z9 | CONS | IRR | Installation | bef |
| RHD4CZ9L02IRR3200 |  | Stem and Service box for Direct Buried Gate Valves - (RD-L-2)-Z9-L02-IRR | 7d | 2027-09-27 | 2027-10-04 | RHD4PRSHLDOSIRR1300, RHD4PRSHLSTAGIRR1300, RHD4CZ9L02IRR3100 | Unskilled Labor [70.79 h]; Plumber [70.79 h]; Gate valves dia 100 mm - TSE [1.3 nr] | 2,054 | L02 | Z9 | CONS | IRR | Stem and Service box | bef |
|  | 8577 | **RHD4-02-002-L02-(IRR)-Wash out Chamber** |  | 2027-06-26 | 2027-07-08 |  |  |  |  |  |  |  |  |  |
| RHD4CZ9L02IRR2101 |  | Excavation and Bedding for Wash out Chamber for Irrigation Network - (RD-L-2)-Z9-L02-IRR | 3d | 2027-06-26 | 2027-06-28 | RHD4ENSDZ9APPIRR140, RHD4CZ9L02IRR1100 | Skilled labor [27.2 h]; Unskilled Labor [27.2 h]; Equipment Opreator [5.45 h]; Excavator-Poclain [2.72 h]; Dump Truck [2.72 h]; Wash out chambers - TSE [1.25 nr] | 23,431.25 | L02 | Z9 | CONS | IRR | Excavation and Bedding | bef |
| RHD4CZ9L02IRR2201 |  | PC works for Wash out Chamber for Irrigation Network - (RD-L-2)-Z9-L02-IRR | 3d | 2027-06-29 | 2027-07-01 | RHD4CZ9L02IRR2101 | Skilled labor [27.2 h]; Unskilled Labor [54.45 h]; Equipment Opreator [2.72 h]; Concrete Pump [2.72 h]; Wash out chambers - TSE [0.5 nr] | 9,372.5 | L02 | Z9 | CONS | IRR | PC Works | bef |
| RHD4CZ9L02IRR2301 |  | Installation for Wash out Chamber for Irrigation Network - (RD-L-2)-Z9-L02-IRR | 3d | 2027-07-03 | 2027-07-05 | RHD4PRSHLDOSIRR1200, RHD4PRSHLDOSIRR1400, RHD4PRSHLSTAGIRR1200, RHD4PRSHLSTAGIRR1400, RHD4CZ9L02IRR2201 | Skilled labor [27.2 h]; Unskilled Labor [54.45 h]; Equipment Opreator [5.45 h]; Boom Truck [5.45 h]; Wash out chambers - TSE [2.75 nr] | 51,548.75 | L02 | Z9 | CONS | IRR | Installation | bef |
| RHD4CZ9L02IRR2401 |  | Backfilling works for Wash out Chamber for Irrigation Network - (RD-L-2)-Z9-L02-IRR | 3d | 2027-07-06 | 2027-07-08 | RHD4CZ9L02IRR2301 | Skilled labor [27.2 h]; Unskilled Labor [54.45 h]; Equipment Opreator [5.45 h]; Water Truck [2.72 h]; Dump Truck [2.72 h]; Wash out chambers - TSE [0.5 nr] | 9,372.5 | L02 | Z9 | CONS | IRR | Backfilling Works | bef |

| ID | WBS | Activity | Duration | Start | Finish | Predecessors | Resources | Cost | RDH4-01-001-Road and Block Names-1 | RDH4-01-001-Zones-1 | RDH4-01-001-Phases-1 | RDH4-01-001-Networks-1 | RDH4-01-001-Work Method-1 | RDH4-01-001-MENEM |
| --- | --- | --- | --- | --- | --- | --- | --- | --- | --- | --- | --- | --- | --- | --- |
|  | 8578 | **RHD4-02-002-L02-(IRR)-Wash out Valves** |  | 2027-06-12 | 2027-06-17 |  |  |  |  |  |  |  |  |  |
| RHD4CZ9L02IRR3102 |  | Installation for Wash out Valve for Irrigation Network - (RD-L-2)-Z9-L02-IRR | 3d | 2027-06-12 | 2027-06-14 | RHD4PRSHLDOSIRR1100, RHD4PRSHLSTAGIRR1100, RHD4CZ9L02IRR1100 SS | Unskilled Labor [27.2 h]; Plumber [27.2 h]; Wash out valve diameter 100 mm - TSE [3.6 nr]; Wash out valve diameter 150 mm - TSE [0.9 nr] | 17,241.3 | L02 | Z9 | CONS | IRR | Installation | bef |
| RHD4CZ9L02IRR3202 |  | Stem and Service box for Wash out Valve for Irrigation Network - (RD-L-2)-Z9-L02-IRR | 3d | 2027-06-15 | 2027-06-17 | RHD4PRSHLDOSIRR1300, RHD4PRSHLSTAGIRR1300, RHD4CZ9L02IRR3102 | Unskilled Labor [27.2 h]; Plumber [27.2 h]; Wash out valve diameter 100 mm - TSE [0.4 nr]; Wash out valve diameter 150 mm - TSE [0.1 nr] | 1,915.7 | L02 | Z9 | CONS | IRR | Stem and Service box | bef |
|  | 8579 | **RHD4-02-002-L02-(IRR)-Air Valve Chamber** |  | 2027-06-26 | 2027-07-04 |  |  |  |  |  |  |  |  |  |
| RHD4CZ9L02IRR2102 |  | Excavation and Bedding for Valve Chamber for Irrigation Network - (RD-L-2)-Z9-L02-IRR | 2d | 2027-06-26 | 2027-06-27 | RHD4ENSDZ9APPIRR140, RHD4CZ9L02IRR1100 | Skilled labor [16.34 h]; Unskilled Labor [16.34 h]; Equipment Opreator [3.27 h]; Excavator-Poclain [1.6 h]; Dump Truck [1.6 h]; Air Valve chambers - TSE [0.75 nr] | 3,579 | L02 | Z9 | CONS | IRR | Excavation and Bedding | bef |
| RHD4CZ9L02IRR2202 |  | PC works for Valve Chamber for Irrigation Network - (RD-L-2)-Z9-L02-IRR | 2d | 2027-06-28 | 2027-06-29 | RHD4CZ9L02IRR2102 | Skilled labor [16.34 h]; Unskilled Labor [32.67 h]; Equipment Opreator [1.6 h]; Concrete Pump [1.6 h]; Air Valve chambers - TSE [0.3 nr] | 1,431.6 | L02 | Z9 | CONS | IRR | PC Works | bef |
| RHD4CZ9L02IRR2302 |  | Installation for Valve Chamber for Irrigation Network - (RD-L-2)-Z9-L02-IRR | 2d | 2027-06-30 | 2027-07-01 | RHD4PRSHLDOSIRR1200, RHD4PRSHLDOSIRR1400, RHD4PRSHLSTAGIRR1200, RHD4PRSHLSTAGIRR1400, RHD4CZ9L02IRR2202 | Skilled labor [16.34 h]; Unskilled Labor [32.67 h]; Equipment Opreator [3.27 h]; Boom Truck [3.27 h]; Air Valve chambers - TSE [1.65 nr] | 7,873.8 | L02 | Z9 | CONS | IRR | Installation | bef |
| RHD4CZ9L02IRR2402 |  | Backfilling works for Valve Chamber for Irrigation Network - (RD-L-2)-Z9-L02-IRR | 2d | 2027-07-03 | 2027-07-04 | RHD4CZ9L02IRR2302 | Skilled labor [16.34 h]; Unskilled Labor [32.67 h]; Equipment Opreator [3.27 h]; Water Truck [1.6 h]; Dump Truck [1.6 h]; Air Valve chambers - TSE [0.3 nr] | 1,431.6 | L02 | Z9 | CONS | IRR | Backfilling Works | bef |
|  | 8580 | **RHD4-02-002-L02-(IRR)-Air Valves** |  | 2027-06-12 | 2027-07-06 |  |  |  |  |  |  |  |  |  |
| RHD4CZ9L02IRR3103 |  | Installation for Air Valves for Irrigation Network - (RD-L-2)-Z9-L02-IRR | 2d | 2027-06-12 | 2027-06-13 | RHD4PRSHLDOSIRR1100, RHD4PRSHLSTAGIRR1100, RHD4CZ9L02IRR3102 SS | Unskilled Labor [16.34 h]; Plumber [16.34 h]; Air valve diameter 50 mm - TSE [2.7 nr] | 13,281.3 | L02 | Z9 | CONS | IRR | Installation | bef |
| RHD4CZ9L02IRR3203 |  | Stem and Service box for Air Valves for Irrigation Network - (RD-L-2)-Z9-L02-IRR | 2d | 2027-07-05 | 2027-07-06 | RHD4PRSHLDOSIRR1300, RHD4PRSHLSTAGIRR1300, RHD4CZ9L02IRR3103, RHD4CZ9L02IRR2402 | Unskilled Labor [16.34 h]; Plumber [16.34 h]; Air valve diameter 50 mm - TSE [0.3 nr] | 1,475.7 | L02 | Z9 | CONS | IRR | Stem and Service box | bef |
|  | 6117 | **RHD4-02-002-L02-(IRR)-Butterfly Valves** |  | 2027-06-16 | 2027-06-20 |  |  |  |  |  |  |  |  |  |
| RHD4CZ9L02IRR3101 |  | Installation for Butterfly Valves for Irrigation Network - (RD-L-2)-Z9-L02-IRR | 2d | 2027-06-16 | 2027-06-17 | RHD4CZ9L02IRR2300 SS | Unskilled Labor [10.89 h]; Plumber [10.89 h]; Butterfly valves dia 500 - TSE [1.8 nr] | 71,348.4 | L02 | Z9 | CONS | IRR | Installation | bef |
| RHD4CZ9L02IRR3201 |  | Stem and Service box for Butterfly Valves for Irrigation Network - (RD-L-2)-Z9-L02-IRR | 2d | 2027-06-19 | 2027-06-20 | RHD4CZ9L02IRR3101 | Unskilled Labor [10.89 h]; Plumber [10.89 h]; Butterfly valves dia 500 - TSE [0.2 nr] | 7,927.6 | L02 | Z9 | CONS | IRR | Stem and Service box | bef |
|  | 8599 | **RHD4-02-002-Z9-L02-Medium Voltage Network - MV** |  | 2027-07-14 | 2027-09-08 |  |  |  |  |  |  |  |  |  |
|  | 8600 | **RHD4-02-002-L02-(MV)-Medium Voltage cable trench** |  | 2027-07-14 | 2027-08-31 |  |  |  |  |  |  |  |  |  |
| RHD4CZ9L02MV1100 |  | Excavation for Medium Voltage Trench - (RD-L-2)-Z9-L02-MV | 9d | 2027-07-14 | 2027-07-24 | RHD4ENSDZ9APPMV150, RHD4CZ9L02RD3100, RHD4CZ8A011MV1100 | Skilled labor [266.05 h]; Unskilled Labor [532.1 h]; Equipment Opreator [798.15 h]; Excavator-Poclain [266.05 h]; Dump Truck [532.1 h]; Excavation for Trench size 40cm wide and 80cm deep ( for 1 cables) [1232.59 m3]; Excavation for Trench size 60cm wide and 80cm deep ( for 2 cables) [200.48 m3]; Excavation for Trench size 120cm wide and 80cm deep (for 4 cables) [276.99 m3] | 17,100.64 | L02 | Z9 | CONS | MV | Excavation | AFT |
| RHD4CZ9L02MV1200 |  | Trench Backfilling for Medium Voltage Network - (RD-L-2)-Z9-L02-MV | 9d | 2027-08-22 | 2027-08-31 | RHD4CZ9L02MV3401, RHD4CZ9L02MV3400 | Skilled labor [266.05 h]; Unskilled Labor [266.05 h]; Equipment Opreator [532.1 h]; Dump Truck [532.1 h]; Excavation for Trench size 40cm wide and 80cm deep ( for 1 cables) [528.25 m3]; Excavation for Trench size 60cm wide and 80cm deep ( for 2 cables) [85.92 m3]; Excavation for Trench size 120cm wide and 80cm deep (for 4 cables) [118.71 m3] | 7,328.84 | L02 | Z9 | CONS | MV | Backfilling | AFT |
|  | 8601 | **RHD4-02-002-L02-(MV)-Medium Voltage duct banks** |  | 2027-07-25 | 2027-08-17 |  |  |  |  |  |  |  |  |  |
| RHD4CZ9L02MV2100 |  | Excavation of Duct Banks for Medium Voltage Network - (RD-L-2)-Z9-L02-MV | 5d | 2027-07-25 | 2027-07-29 | RHD4ENSDZ9APPMV150, RHD4CZ9L02MV1100 | Unskilled Labor [46.28 h]; Equipment Opreator [92.57 h]; Excavator-Poclain [46.28 h]; Dump Truck [46.28 h]; Duct bank for MV cables UPVC (2xø150mm) [6.38 m] | 1,313.52 | L02 | Z9 | CONS | MV | Excavation | bef |
| RHD4CZ9L02MV2200 |  | Installation of Duct Banks for Medium Voltage Network - (RD-L-2)-Z9-L02-MV | 7d | 2027-07-31 | 2027-08-07 | RHD4PRSHLDOSMV1000, RHD4PRSHLSTAGMV1000, RHD4CZ9L02MV2100 | Unskilled Labor [69.48 h]; Equipment Opreator [138.85 h]; Excavator-Poclain [69.48 h]; Dump Truck [69.48 h]; Duct bank for MV cables UPVC (2xø150mm) [6.38 m] | 1,313.52 | L02 | Z9 | CONS | MV | Installing | bef |
| RHD4CZ9L02MV2300 |  | Pouring of Duct Banks for Medium Voltage Network - (RD-L-2)-Z9-L02-MV | 5d | 2027-08-08 | 2027-08-12 | RHD4CZ9L02MV2200 | Unskilled Labor [46.28 h]; Equipment Opreator [92.57 h]; Excavator-Poclain [46.28 h]; Dump Truck [46.28 h]; Duct bank for MV cables UPVC (2xø150mm) [41.45 m] | 8,537.87 | L02 | Z9 | CONS | MV | Pouring | bef |
| RHD4CZ9L02MV2400 |  | Backfilling of Duct Banks for Medium Voltage Network - (RD-L-2)-Z9-L02-MV | 4d | 2027-08-14 | 2027-08-17 | RHD4CZ9L02MV2300 | Unskilled Labor [34.74 h]; Equipment Opreator [69.48 h]; Excavator-Poclain [34.74 h]; Dump Truck [34.74 h]; Duct bank for MV cables UPVC (2xø150mm) [9.56 m] | 1,970.28 | L02 | Z9 | CONS | MV | Backfilling | bef |
|  | 8602 | **RHD4-02-002-L02-(MV)-Medium Voltage cables 3Cx 500 mm²** |  | 2027-07-25 | 2027-08-21 |  |  |  |  |  |  |  |  |  |
| RHD4CZ9L02MV3100 |  | Installation of Medium Voltage Cables 3Cx 500 mm² - (RD-L-2)-Z9-L02-MV | 9d | 2027-07-25 | 2027-08-03 | RHD4PRSHLDOSMV1100, RHD4ENMSMV2000, RHD4ENMSMV2010, RHD4PRSHLSTAGMV1100, RHD4CZ9L02MV1100 | Skilled labor [93 h]; Unskilled Labor [371.91 h]; Electrician [185.9 h]; Equipment Opreator [278.9 h]; Boom Truck [93 h]; Cable Laying Machine [185.9 h]; Cable 13.8 kV 3Cx 500 mm² Al/XLPE,/LLDPE / Unarmored [3841.41 m] | 610,783.57 | L02 | Z9 | CONS | MV | Installation | AFT |
| RHD4CZ9L02MV3200 |  | Joints Installation of Medium Voltage Cables 3Cx 500 mm² - (RD-L-2)-Z9-L02-MV | 4d | 2027-08-04 | 2027-08-08 | RHD4PRSHLDOSMV1300, RHD4PRSHLSTAGMV1300, RHD4CZ9L02MV3100 | Skilled labor [43.56 h]; Unskilled Labor [174.25 h]; Electrician [87.12 h]; Equipment Opreator [43.56 h]; Boom Truck [43.56 h]; Straight joints cables for 13.8 kv 3Cx 500 mm², Al /XLPE/LLDPE [8 Unit] | 25,984 | L02 | Z9 | CONS | MV | Joints Installation | AFT |
| RHD4CZ9L02MV3300 |  | Testing of Medium Voltage Cables 3Cx 500 mm² - (RD-L-2)-Z9-L02-MV | 9d | 2027-08-09 | 2027-08-18 | RHD4CZ9L02MV3200 | Skilled labor [93 h]; Unskilled Labor [371.91 h]; Electrician [185.9 h]; Cable 13.8 kV 3Cx 500 mm² Al/XLPE,/LLDPE / Unarmored [426.82 m] | 67,864.84 | L02 | Z9 | CONS | MV | Testing | AFT |
| RHD4CZ9L02MV3400 |  | Termination of Medium Voltage Cables 3Cx 500 mm² - (RD-L-2)-Z9-L02-MV | 2d | 2027-08-19 | 2027-08-21 | RHD4CZ9L02MV3300 | Unskilled Labor [6.97 h]; Electrician [6.97 h]; Cable Termination for 13.8 kv 3Cx 500 mm², Al /XLPE/LLDPE [32 Unit] | 84,320 | L02 | Z9 | CONS | MV | Termination | AFT |

| ID | WBS | Activity | Duration | Start | Finish | Predecessors | Resources | Cost | RDH4-01-001-Road and Block Names-1 | RDH4-01-001-Zones-1 | RDH4-01-001-Phases-1 | RDH4-01-001-Networks-1 | RDH4-01-001-Work Method-1 | RDH4-01-001-MENEM |
| --- | --- | --- | --- | --- | --- | --- | --- | --- | --- | --- | --- | --- | --- | --- |
|  | 8603 | **RHD4-02-002-L02-(MV)-Medium Voltage cables 3Cx 50 mm²** |  | 2027-07-25 | 2027-08-01 |  |  |  |  |  |  |  |  |  |
| RHD4CZ9L02MV3101 |  | Installation of Medium Voltage Cables 3Cx 50 mm² - (RD-L-2)-Z9-L02-MV | 2d | 2027-07-25 | 2027-07-26 | RHD4PRSHLDOSMV1200, RHD4ENMSMV2000, RHD4ENMSMV2010, RHD4PRSHLSTAGMV1200, RHD4CZ9L02MV1100 | Unskilled Labor [5.23 h]; Electrician [2.61 h]; Equipment Opreator [3.92 h]; Boom Truck [1.31 h]; Cable Laying Machine [2.61 h]; Single Core Copper Cable 13.8 kV 3Cx 50 mm² Cu/XLPE/PVC / Unarmored [10.8 m] | 1,209.6 | L02 | Z9 | CONS | MV | Installation | AFT |
| RHD4CZ9L02MV3301 |  | Testing of Medium Voltage Cables 3Cx 50 mm² - (RD-L-2)-Z9-L02-MV | 2d | 2027-07-27 | 2027-07-28 | RHD4CZ9L02MV3101 | Unskilled Labor [1.09 h]; Electrician [0.54 h]; Single Core Copper Cable 13.8 kV 3Cx 50 mm² Cu/XLPE/PVC / Unarmored [1.2 m] | 134.4 | L02 | Z9 | CONS | MV | Testing | AFT |
| RHD4CZ9L02MV3401 |  | Termination of Medium Voltage Cables 3Cx 50 mm² - (RD-L-2)-Z9-L02-MV | 3d | 2027-07-29 | 2027-08-01 | RHD4CZ9L02MV3301 | Unskilled Labor [116.2 h]; Electrician [58.05 h]; Cable Termination for 13.8 kv 3Cx 500 mm², Al /XLPE/LLDPE [8 Unit] | 21,080 | L02 | Z9 | CONS | MV | Termination | AFT |
|  | 8604 | **RHD4-02-002-L02-(MV)-Normally open Point (Outdoor Type)** |  | 2027-09-01 | 2027-09-05 |  |  |  |  |  |  |  |  |  |
| RHD4CZ9L02MV4100 |  | Installation for Normally open Point - (RD-L-2)-Z9-L02-MV | 2d | 2027-09-01 | 2027-09-02 | RHD4PRSHLDOSMV1400, RHD4PRSHLSTAGMV1400, RHD4CZ9L02MV1200 | Unskilled Labor [0.22 h]; Equipment Opreator [0.44 h]; Excavator-Poclain [0.22 h]; Dump Truck [0.22 h]; Normally Open Point 13.8 KV Outdoor type [1.8 Unit] | 154,438.2 | L02 | Z9 | CONS | MV | Installation | AFT |
| RHD4CZ9L02MV4200 |  | Termination for Normally open Point - (RD-L-2)-Z9-L02-MV | 2d | 2027-09-04 | 2027-09-05 | RHD4CZ9L02MV4100 | Unskilled Labor [7.3 h]; Equipment Opreator [14.48 h]; Excavator-Poclain [7.3 h]; Dump Truck [7.3 h]; Normally Open Point 13.8 KV Outdoor type [0.2 Unit] | 17,159.8 | L02 | Z9 | CONS | MV | Termination | AFT |
|  | 8605 | **RHD4-02-002-L02-(MV)-Unit Substations** |  | 2027-08-02 | 2027-09-08 |  |  |  |  |  |  |  |  |  |
| RHD4CZ9L02MV5100 |  | Excavation for Unit Substations for Medium Voltage Network - (RD-L-2)-Z9-L02-MV | 5d | 2027-08-02 | 2027-08-07 | RHD4ENSDZ9APPMV150, RHD4CZ9L02RD3100, RHD4CZ9L02MV3401 | Skilled labor [54.45 h]; Unskilled Labor [54.45 h]; Equipment Opreator [108.9 h]; Excavator-Poclain [54.45 h]; Dump Truck [54.45 h]; Unit Substation 13.8/0.4 K V, 500kVA ,Including concrete foundations and fencing, According to the specifications and standards of SEC [0.1 Unit]; Unit Substation 13.8/0.4 K V, 1000kVA ,Including concrete foundations and fencing, According to the specifications and standards of SEC [0.1 Unit]; Ring Main Unit RMU, 13.8KV, According to the specifications and standards of SEC [0.3 Unit] | 33,093.9 | L02 | Z9 | CONS | MV | Excavation | AFT |
| RHD4CZ9L02MV5200 |  | Concrete Base Placement for Unit Substations for Medium Voltage Network - (RD-L-2)-Z9-L02-MV | 5d | 2027-08-08 | 2027-08-12 | RHD4CZ9L02MV5100 | Skilled labor [54.45 h]; Unskilled Labor [54.45 h]; Equipment Opreator [54.45 h]; Boom Truck [54.45 h]; Unit Substation 13.8/0.4 K V, 500kVA ,Including concrete foundations and fencing, According to the specifications and standards of SEC [0.15 Unit]; Unit Substation 13.8/0.4 K V, 1000kVA ,Including concrete foundations and fencing, According to the specifications and standards of SEC [0.15 Unit]; Ring Main Unit RMU, 13.8KV, According to the specifications and standards of SEC [0.45 Unit] | 49,640.85 | L02 | Z9 | CONS | MV | Concrete Base Placement | AFT |
| RHD4CZ9L02MV5300 |  | Installation for Fences and doors for Medium Voltage Network - (RD-L-2)-Z9-L02-MV | 13d | 2027-08-14 | 2027-08-28 | RHD4CZ9L02MV5200 | Skilled labor [136.13 h]; Unskilled Labor [136.13 h]; Equipment Opreator [163.36 h]; Excavator-Poclain [27.2 h]; Boom Truck [136.13 h]; Unit Substation 13.8/0.4 K V, 500kVA ,Including concrete foundations and fencing, According to the specifications and standards of SEC [0.1 Unit]; Unit Substation 13.8/0.4 K V, 1000kVA ,Including concrete foundations and fencing, According to the specifications and standards of SEC [0.1 Unit]; Ring Main Unit RMU, 13.8KV, According to the specifications and standards of SEC [0.3 Unit] | 33,093.9 | L02 | Z9 | CONS | MV | Fence Installation | AFT |
| RHD4CZ9L02MV5400 |  | Installation for Unit Substations for Medium Voltage Network - (RD-L-2)-Z9-L02-MV | 10d | 2027-08-29 | 2027-09-08 | RHD4PRLOLSTAGMV1601, RHD4PRLOLSTAGMV1602, RHD4CZ9L02MV5300, RHD4CZ9L02MV2400 | Skilled labor [108.9 h]; Unskilled Labor [217.81 h]; Electrician [217.81 h]; Unit Substation 13.8/0.4 K V, 500kVA ,Including concrete foundations and fencing, According to the specifications and standards of SEC [0.65 Unit]; Unit Substation 13.8/0.4 K V, 1000kVA ,Including concrete foundations and fencing, According to the specifications and standards of SEC [0.65 Unit]; Ring Main Unit RMU, 13.8KV, According to the specifications and standards of SEC [1.95 Unit] | 215,110.35 | L02 | Z9 | CONS | MV | Substation Installation | AFT |
|  | 8606 | **RHD4-02-002-Z9-L02-Low Voltage Network - LV** |  | 2027-06-10 | 2027-07-29 |  |  |  |  |  |  |  |  |  |
|  | 8607 | **RHD4-02-002-L02-(LV)-Low Voltage duct banks** |  | 2027-06-10 | 2027-07-04 |  |  |  |  |  |  |  |  |  |
| RHD4CZ9L02LV2100 |  | Excavation of Duct Banks for Low Voltage Network - (RD-L-2)-Z9-L02-LV | 5d | 2027-06-10 | 2027-06-15 | RHD4ENSDZ9APPLV160, RHD4CZ9L02PT2402 | Skilled labor [44.65 h]; Unskilled Labor [44.65 h]; Equipment Opreator [89.3 h]; Excavator-Poclain [44.65 h]; Dump Truck [44.65 h]; Duct bank for LV cables UPVC (2xø110mm) [2.45 m]; Duct bank for LV cables UPVC (4xø110mm) [3.69 m] | 1,600.4 | L02 | Z9 | CONS | LV | Excavation | bef |
| RHD4CZ9L02LV2200 |  | Installation of Duct Banks for Low Voltage Network - (RD-L-2)-Z9-L02-LV | 7d | 2027-06-16 | 2027-06-23 | RHD4PRSHLDOSLV1000, RHD4PRSHLSTAGLV1000, RHD4CZ9L02LV2100 | Carpenter [6.64 h]; Skilled labor [66.98 h]; Unskilled Labor [66.98 h]; Steel Fixer [6.64 h]; Duct bank for LV cables UPVC (2xø110mm) [2.45 m]; Duct bank for LV cables UPVC (4xø110mm) [3.69 m] | 1,600.4 | L02 | Z9 | CONS | LV | Installing | bef |
| RHD4CZ9L02LV2300 |  | Pouring of Duct Banks for Low Voltage Network - (RD-L-2)-Z9-L02-LV | 5d | 2027-06-24 | 2027-06-29 | RHD4CZ9L02LV2200 | Skilled labor [44.65 h]; Unskilled Labor [44.65 h]; Equipment Opreator [17.86 h]; Concrete Mixer Truck [8.93 h]; Concrete Pump [8.93 h]; Duct bank for LV cables UPVC (2xø110mm) [15.95 m]; Duct bank for LV cables UPVC (4xø110mm) [24.02 m] | 10,402.61 | L02 | Z9 | CONS | LV | Pouring | bef |
| RHD4CZ9L02LV2400 |  | Backfilling of Duct Banks for Low Voltage Network - (RD-L-2)-Z9-L02-LV | 4d | 2027-06-30 | 2027-07-04 | RHD4CZ9L02LV2300 | Skilled labor [33.43 h]; Unskilled Labor [33.43 h]; Equipment Opreator [13.4 h]; Excavator-Poclain [13.4 h]; Duct bank for LV cables UPVC (2xø110mm) [3.68 m]; Duct bank for LV cables UPVC (4xø110mm) [5.54 m] | 2,400.6 | L02 | Z9 | CONS | LV | Backfilling | bef |
|  | 8608 | **RHD4-02-002-L02-(LV)-Low Voltage Drawpit** |  | 2027-06-30 | 2027-07-04 |  |  |  |  |  |  |  |  |  |
| RHD4CZ9L02LV5100 |  | Excavation of Drawpit size 900x900x1000mm for Low Voltage Network - (RD-L-2)-Z9-L02-LV | 2d | 2027-06-30 | 2027-07-01 | RHD4ENSDZ9APPLV160, RHD4CZ9L02LV2300 | Skilled labor [7.3 h]; Unskilled Labor [7.3 h]; Equipment Opreator [5.77 h]; Excavator-Poclain [2.94 h]; Dump Truck [2.94 h]; Drawpit with medium duty steel cover, size900x900x1000mm, [1.2 Unit] | 4,412.4 | L02 | Z9 | CONS | LV | Excavation | AFT |
| RHD4CZ9L02LV5200 |  | Installation of Drawpit size 900x900x1000mm for Low Voltage Network - (RD-L-2)-Z9-L02-LV | 2d | 2027-07-03 | 2027-07-04 | RHD4PRSHLDOSLV1400, RHD4PRSHLSTAGLV1400, RHD4CZ9L02LV5100 | Skilled labor [7.3 h]; Unskilled Labor [7.3 h]; Equipment Opreator [2.94 h]; Boom Truck [2.94 h]; Drawpit with medium duty steel cover, size900x900x1000mm, [6.8 Unit] | 25,003.6 | L02 | Z9 | CONS | LV | Installation | AFT |
|  | 8609 | **RHD4-02-002-L02-(LV)-Low Voltage cables** |  | 2027-07-05 | 2027-07-20 |  |  |  |  |  |  |  |  |  |
| RHD4CZ9L02LV3100 |  | Excavation for Low Voltage Cables for Low Voltage Network - (RD-L-2)-Z9-L02-LV | 4d | 2027-07-05 | 2027-07-08 | RHD4ENSDZ9APPLV160, RHD4CZ9L02LV5200, RHD4CZ9L02LV2400 | Skilled labor [39.2 h]; Unskilled Labor [78.4 h]; Equipment Opreator [78.4 h]; Excavator-Poclain [39.2 h]; Boom Truck [39.2 h]; Cable, Copper 4x300mm2/ CU/XLPE/PVC [17.68 m]; Cable, Copper 4x185mm2/ CU/XLPE/PVC [13.27 m]; Cable, Copper 4x70mm2/ CU/XLPE/PVC [34.8 m]; Cable, Copper 4x50mm2/ CU/XLPE/PVC +1x25mm2 CU/PVC [2.23 m]; Cable, Copper 3x10mm2/ CU/XLPE/SWA/PVC [112.08 m] | 26,151.67 | L02 | Z9 | CONS | LV | Excavation | AFT |
| RHD4CZ9L02LV3200 |  | Cable Laying of Low Voltage Cables for Low Voltage Network - (RD-L-2)-Z9-L02-LV | 4d | 2027-07-10 | 2027-07-13 | RHD4PRSHLDOSLV1100, RHD4ENMSLV2000, RHD4ENMSLV2010, RHD4PRSHLSTAGLV1100, RHD4CZ9L02LV3100 | Skilled labor [32.67 h]; Unskilled Labor [130.68 h]; Electrician [65.34 h]; Equipment Opreator [98.01 h]; Boom Truck [32.67 h]; Cable Laying Machine [65.34 h]; Cable, Copper 4x300mm2/ CU/XLPE/PVC [53.04 m]; Cable, Copper 4x185mm2/ CU/XLPE/PVC [39.81 m]; Cable, Copper 4x70mm2/ CU/XLPE/PVC [104.41 m]; Cable, Copper 4x50mm2/ CU/XLPE/PVC +1x25mm2 CU/PVC [6.68 m]; Cable, Copper 3x10mm2/ CU/XLPE/SWA/PVC [336.24 m] | 78,457.02 | L02 | Z9 | CONS | LV | Cable Laying | AFT |
| RHD4CZ9L02LV3300 |  | Warning tape and Backfill for Low Voltage Cables for Low Voltage Network - (RD-L-2)-Z9-L02-LV | 4d | 2027-07-14 | 2027-07-18 | RHD4CZ9L02LV3200 | Skilled labor [32.67 h]; Unskilled Labor [130.68 h]; Electrician [65.34 h]; Equipment Opreator [32.67 h]; Boom Truck [32.67 h]; Cable, Copper 4x300mm2/ CU/XLPE/PVC [13.26 m]; Cable, Copper 4x185mm2/ CU/XLPE/PVC [9.95 m]; Cable, Copper 4x70mm2/ CU/XLPE/PVC [26.1 m]; Cable, Copper 4x50mm2/ CU/XLPE/PVC +1x25mm2 CU/PVC [1.67 m]; Cable, Copper 3x10mm2/ CU/XLPE/SWA/PVC [84.06 m] | 19,613.75 | L02 | Z9 | CONS | LV | Warning tape and Backfill | AFT |
| RHD4CZ9L02LV3400 |  | Testing of Low Voltage Cables for Low Voltage Network - (RD-L-2)-Z9-L02-LV | 2d | 2027-07-19 | 2027-07-20 | RHD4CZ9L02LV3300 | Skilled labor [19.6 h]; Unskilled Labor [78.4 h]; Electrician [39.2 h]; Equipment Opreator [19.6 h]; Boom Truck [19.6 h]; Cable, Copper 4x300mm2/ CU/XLPE/PVC [4.42 m]; Cable, Copper 4x185mm2/ CU/XLPE/PVC [3.32 m]; Cable, Copper 4x70mm2/ CU/XLPE/PVC [8.7 m]; Cable, Copper 4x50mm2/ CU/XLPE/PVC +1x25mm2 CU/PVC [0.56 m]; Cable, Copper 3x10mm2/ CU/XLPE/SWA/PVC [28.02 m] | 6,537.92 | L02 | Z9 | CONS | LV | Testing | AFT |

| ID | WBS | Activity | Duration | Start | Finish | Predecessors | Resources | Cost | RDH4-01-001-Road and Block Names-1 | RDH4-01-001-Zones-1 | RDH4-01-001-Phases-1 | RDH4-01-001-Networks-1 | RDH4-01-001-Work Method-1 | RDH4-01-001-MENEM |
| --- | --- | --- | --- | --- | --- | --- | --- | --- | --- | --- | --- | --- | --- | --- |
|  | 8610 | **RHD4-02-002-L02-(LV)-Low Voltage Distribution Pillars** |  | 2027-07-21 | 2027-07-29 |  |  |  |  |  |  |  |  |  |
| RHD4CZ9L02LV4100 |  | Leveling for Distribution Pillars for Low Voltage Network - (RD-L-2)-Z9-L02-LV | 3d | 2027-07-21 | 2027-07-24 | RHD4CZ9L02LV3400 | Skilled labor [27.2 h]; Unskilled Labor [54.45 h]; Equipment Opreator [10.89 h]; Excavator-Poclain [5.45 h]; Boom Truck [5.45 h]; 0.6/1 KV Low Voltage Distribution Pillars with main breaker MCCB type and 5 Outgoing feeders MCCB type [0.15 Unit]; 0.6/1 KV Low Voltage Distribution Panels for Industrial UPS - Cameras [0.15 Unit]; Supply and installation of KWH meter mounting frame including concrete block wall for installation of KWH meter according to the standards and specifications of SEC [0.45 Unit] | 6,701.55 | L02 | Z9 | CONS | LV | Leveling | AFT |
| RHD4CZ9L02LV4200 |  | Lean Concrete for Distribution Pillars for Low Voltage Network - (RD-L-2)-Z9-L02-LV | 2d | 2027-07-25 | 2027-07-26 | RHD4CZ9L02LV4100 | Skilled labor [18.19 h]; Unskilled Labor [36.26 h]; Equipment Opreator [7.3 h]; Concrete Mixer Truck [3.59 h]; Concrete Pump [3.59 h]; 0.6/1 KV Low Voltage Distribution Pillars with main breaker MCCB type and 5 Outgoing feeders MCCB type [0.25 Unit]; 0.6/1 KV Low Voltage Distribution Panels for Industrial UPS - Cameras [0.25 Unit]; Supply and installation of KWH meter mounting frame including concrete block wall for installation of KWH meter according to the standards and specifications of SEC [0.75 Unit] | 11,169.25 | L02 | Z9 | CONS | LV | Lean Concrete | AFT |
| RHD4CZ9L02LV4300 |  | Installation of Distribution Pillars for Low Voltage Network - (RD-L-2)-Z9-L02-LV | 3d | 2027-07-27 | 2027-07-29 | RHD4PRSHLDOSLV1200, RHD4PRSHLDOSLV1300, RHD4PRSHLSTAGLV1200, RHD4PRSHLSTAGLV1300, RHD4CZ9L02LV4200 | Skilled labor [27.2 h]; Unskilled Labor [108.9 h]; Electrician [54.45 h]; Equipment Opreator [27.2 h]; Boom Truck [27.2 h]; 0.6/1 KV Low Voltage Distribution Pillars with main breaker MCCB type and 5 Outgoing feeders MCCB type [0.6 Unit]; 0.6/1 KV Low Voltage Distribution Panels for Industrial UPS - Cameras [0.6 Unit]; Supply and installation of KWH meter mounting frame including concrete block wall for installation of KWH meter according to the standards and specifications of SEC [1.8 Unit] | 26,806.2 | L02 | Z9 | CONS | LV | Installation | AFT |
|  | 8611 | **RHD4-02-002-L02-(LV)-Low Voltage Distribution Pillars Earthing** |  |  |  |  |  |  |  |  |  |  |  |  |
|  | 8612 | **RHD4-02-002-Z9-L02-Street Lighting Network - SL** |  | 2027-06-16 | 2027-12-01 |  |  |  |  |  |  |  |  |  |
|  | 8613 | **RHD4-02-002-L02-(SL)-Street Lighting duct banks** |  | 2027-06-16 | 2027-07-25 |  |  |  |  |  |  |  |  |  |
| RHD4CZ9L02SL2100 |  | Excavation of Duct Banks for Street Lighting Network - (RD-L-2)-Z9-L02-SL | 8d | 2027-06-16 | 2027-06-24 | RHD4ENSDZ9APPSL170, RHD4CZ9L02LV2100 | Skilled labor [85.6 h]; Unskilled Labor [85.6 h]; Equipment Opreator [171.2 h]; Excavator-Poclain [85.6 h]; Dump Truck [85.6 h]; Road Crossing Duct for Street Lighting cables UPVC (2x?110mm) [9.66 m]; Road Crossing Duct for Street Lighting cables UPVC (4x?110mm) [2.12 m] | 2,512.52 | L02 | Z9 | CONS | SL | Excavation | bef |
| RHD4CZ9L02SL2200 |  | Installation of Duct Banks for Street Lighting Network - (RD-L-2)-Z9-L02-SL | 12d | 2027-06-26 | 2027-07-08 | RHD4PRSHLDOSSL1000, RHD4PRSHLSTAGSL1000, RHD4CZ9L02SL2100 | Carpenter [12.85 h]; Skilled labor [128.4 h]; Unskilled Labor [128.4 h]; Steel Fixer [12.85 h]; Road Crossing Duct for Street Lighting cables UPVC (2x?110mm) [9.66 m]; Road Crossing Duct for Street Lighting cables UPVC (4x?110mm) [2.12 m] | 2,512.52 | L02 | Z9 | CONS | SL | Installing | bef |
| RHD4CZ9L02SL2300 |  | Pouring of Duct Banks for Street Lighting Network - (RD-L-2)-Z9-L02-SL | 8d | 2027-07-10 | 2027-07-18 | RHD4CZ9L02SL2200 | Skilled labor [85.6 h]; Unskilled Labor [85.6 h]; Equipment Opreator [34.2 h]; Concrete Mixer Truck [17.1 h]; Concrete Pump [17.1 h]; Road Crossing Duct for Street Lighting cables UPVC (2x?110mm) [62.81 m]; Road Crossing Duct for Street Lighting cables UPVC (4x?110mm) [13.8 m] | 16,330.44 | L02 | Z9 | CONS | SL | Pouring | bef |
| RHD4CZ9L02SL2400 |  | Backfilling of Duct Banks for Street Lighting Network - (RD-L-2)-Z9-L02-SL | 6d | 2027-07-19 | 2027-07-25 | RHD4CZ9L02SL2300 | Skilled labor [64.14 h]; Unskilled Labor [64.14 h]; Equipment Opreator [25.7 h]; Excavator-Poclain [25.7 h]; Road Crossing Duct for Street Lighting cables UPVC (2x?110mm) [14.49 m]; Road Crossing Duct for Street Lighting cables UPVC (4x?110mm) [3.19 m] | 3,768.78 | L02 | Z9 | CONS | SL | Backfilling | bef |
|  | 8614 | **RHD4-02-002-L02-(SL)-Street Lighting Drawpit** |  | 2027-07-31 | 2027-08-03 |  |  |  |  |  |  |  |  |  |
| RHD4CZ9L02SL5100 |  | Excavation of Drawpit size 600x600x900mm for Street Lighting Network - (RD-L-2)-Z9-L02-SL | 2d | 2027-07-31 | 2027-08-01 | RHD4ENSDZ9APPSL170, RHD4CZ9L02SL2400, RHD4CZ9L02SL2300, RHD4CZ9L02LV4300 | Skilled labor [10.89 h]; Unskilled Labor [10.89 h]; Equipment Opreator [8.71 h]; Excavator-Poclain [4.36 h]; Dump Truck [4.36 h]; Drawpit with medium duty steel cover, size600x600x900mm, [1.8 Unit] | 4,411.8 | L02 | Z9 | CONS | SL | Excavation | AFT |
| RHD4CZ9L02SL5200 |  | Installation of Drawpit size 600x600x900mm for Street Lighting Network - (RD-L-2)-Z9-L02-SL | 2d | 2027-08-02 | 2027-08-03 | RHD4PRSHLDOSSL1400, RHD4PRSHLSTAGSL1400, RHD4CZ9L02SL5100 | Skilled labor [10.89 h]; Unskilled Labor [10.89 h]; Equipment Opreator [4.36 h]; Boom Truck [4.36 h]; Drawpit with medium duty steel cover, size600x600x900mm, [10.2 Unit] | 25,000.2 | L02 | Z9 | CONS | SL | Installation | AFT |
|  | 8615 | **RHD4-02-002-L02-(SL)-Street Lighting cables** |  | 2027-08-04 | 2027-10-02 |  |  |  |  |  |  |  |  |  |
| RHD4CZ9L02SL3100 |  | Excavation for Street Lighting Cables for Street Lighting Network - (RD-L-2)-Z9-L02-SL | 16d | 2027-08-04 | 2027-08-22 | RHD4ENSDZ9APPSL170, RHD4CZ9L02SL5200 | Skilled labor [169.13 h]; Unskilled Labor [338.25 h]; Equipment Opreator [338.25 h]; Excavator-Poclain [169.13 h]; Boom Truck [169.13 h]; Cable, Copper 4x10mm2/ CU/XLPE/SWA/PVC + 1x10mm2 CU/PVC [776.51 m] | 38,048.77 | L02 | Z9 | CONS | SL | Excavation | AFT |
| RHD4CZ9L02SL3200 |  | Cable Laying of Street Lighting Cables for Street Lighting Network - (RD-L-2)-Z9-L02-SL | 13d | 2027-08-23 | 2027-09-06 | RHD4PRSHLDOSSL1100, RHD4ENMSSL2000, RHD4ENMSSL2010, RHD4PRSHLSTAGSL1100, RHD4CZ9L02SL3100 | Skilled labor [140.92 h]; Unskilled Labor [563.79 h]; Electrician [281.84 h]; Equipment Opreator [422.87 h]; Boom Truck [140.92 h]; Cable Laying Machine [281.84 h]; Cable, Copper 4x10mm2/ CU/XLPE/SWA/PVC + 1x10mm2 CU/PVC [2329.52 m] | 114,146.3 | L02 | Z9 | CONS | SL | Cable Laying | AFT |
| RHD4CZ9L02SL3300 |  | Warning tape and Backfill for Street Lighting Cables for Street Lighting Network - (RD-L-2)-Z9-L02-SL | 13d | 2027-09-07 | 2027-09-21 | RHD4CZ9L02SL3200 | Skilled labor [140.92 h]; Unskilled Labor [563.79 h]; Electrician [281.84 h]; Equipment Opreator [140.92 h]; Boom Truck [140.92 h]; Cable, Copper 4x10mm2/ CU/XLPE/SWA/PVC + 1x10mm2 CU/PVC [582.38 m] | 28,536.58 | L02 | Z9 | CONS | SL | Warning tape and Backfill | AFT |
| RHD4CZ9L02SL3400 |  | Testing of Street Lighting Cables for Street Lighting Network - (RD-L-2)-Z9-L02-SL | 8d | 2027-09-22 | 2027-10-02 | RHD4CZ9L02SL3300, RHD4CZ9L02MV5400 | Skilled labor [84.62 h]; Unskilled Labor [338.25 h]; Electrician [169.13 h]; Equipment Opreator [84.62 h]; Boom Truck [84.62 h]; Cable, Copper 4x10mm2/ CU/XLPE/SWA/PVC + 1x10mm2 CU/PVC [194.13 m] | 9,512.19 | L02 | Z9 | CONS | SL | Testing | AFT |
|  | 8616 | **RHD4-02-002-L02-(SL)-Street Lighting Poles** |  | 2027-10-03 | 2027-11-22 |  |  |  |  |  |  |  |  |  |
| RHD4CZ9L02SL1100 |  | Excavation for RC Base for Lighting Poles for Street Lighting Network - (RD-L-2)-Z9-L02-SL | 8d | 2027-10-03 | 2027-10-11 | RHD4ENSDZ9APPSL170, RHD4CZ9L02SL3400, RHD4CZ9L02MV4200 | Skilled labor [84.94 h]; Unskilled Labor [84.94 h]; Equipment Opreator [169.89 h]; Excavator-Poclain [84.94 h]; Dump Truck [84.94 h]; Lighting poles single arms, height of ( 10 ) meters [11.7 Unit] | 39,861.9 | L02 | Z9 | CONS | SL | Excavation | AFT |
| RHD4CZ9L02SL1200 |  | Installation for RC Base for Lighting Poles for Street Lighting Network - (RD-L-2)-Z9-L02-SL | 8d | 2027-10-12 | 2027-10-20 | RHD4CZ9L02SL1100 | Skilled labor [84.94 h]; Unskilled Labor [84.94 h]; Equipment Opreator [169.89 h]; Excavator-Poclain [84.94 h]; Dump Truck [84.94 h]; Lighting poles single arms, height of ( 10 ) meters [29.25 Unit] | 99,654.75 | L02 | Z9 | CONS | SL | RC Base | AFT |
| RHD4CZ9L02SL1300 |  | Backfill for RC Base for Lighting Poles for Street Lighting Network - (RD-L-2)-Z9-L02-SL | 8d | 2027-10-21 | 2027-10-30 | RHD4CZ9L02SL1200 | Skilled labor [84.94 h]; Unskilled Labor [84.94 h]; Equipment Opreator [169.89 h]; Excavator-Poclain [84.94 h]; Dump Truck [84.94 h]; Lighting poles single arms, height of ( 10 ) meters [5.85 Unit] | 19,930.95 | L02 | Z9 | CONS | SL | Backfill | AFT |
| RHD4CZ9L02SL1400 |  | Installation for Lighting Poles for Street Lighting Network - (RD-L-2)-Z9-L02-SL | 12d | 2027-10-31 | 2027-11-13 | RHD4PRSHLDOSSL1200, RHD4ENMSSL2000, RHD4ENMSSL2010, RHD4PRSHLSTAGSL1200, RHD4CZ9L02SL1300, RHD4CZ9L02SL3400 | Skilled labor [127.42 h]; Unskilled Labor [127.42 h]; Electrician [127.42 h]; Equipment Opreator [127.42 h]; Boom Truck [127.42 h]; Lighting poles single arms, height of ( 10 ) meters [70.2 Unit] | 239,171.4 | L02 | Z9 | CONS | SL | Poles Installation | AFT |
| RHD4CZ9L02SL1500 |  | Luminaire Installation for Lighting Poles for Street Lighting Network - (RD-L-2)-Z9-L02-SL | 8d | 2027-11-14 | 2027-11-22 | RHD4PRSHLDOSSL1300, RHD4PRSHLSTAGSL1300, RHD4CZ9L02SL1400 | Unskilled Labor [169.89 h]; Electrician [84.94 h]; Equipment Opreator [16.99 h]; Boom Truck [33.98 h]; Street Lighting( LED) Luminaire of Output ?10898 lumen [117 Unit] | 68,796 | L02 | Z9 | CONS | SL | Luminaire Installation | AFT |

| ID | WBS | Activity | Duration | Start | Finish | Predecessors | Resources | Cost | RDH4-01-001-Road and Block Names-1 | RDH4-01-001-Zones-1 | RDH4-01-001-Phases-1 | RDH4-01-001-Networks-1 | RDH4-01-001-Work Method-1 | RDH4-01-001-MENEM |
| --- | --- | --- | --- | --- | --- | --- | --- | --- | --- | --- | --- | --- | --- | --- |
|  | 8617 | **RHD4-02-002-L02-(SL)-Street Lighting Feeder Pillars** |  | 2027-11-23 | 2027-11-29 |  |  |  |  |  |  |  |  |  |
| RHD4CZ9L02SL4100 |  | Leveling for Distribution Pillars for Street Lighting Network - (RD-L-2)-Z9-L02-SL | 2d | 2027-11-23 | 2027-11-24 | RHD4CZ9L02SL1500 | Skilled labor [21.78 h]; Unskilled Labor [43.56 h]; Equipment Opreator [8.71 h]; Excavator-Poclain [4.36 h]; Boom Truck [4.36 h]; 0.6/1 KV Steet Lighting Feeder Pillar [0.3 Unit] | 6,876.3 | L02 | Z9 | CONS | SL | Leveling | AFT |
| RHD4CZ9L02SL4200 |  | Lean Concrete for Distribution Pillars for Street Lighting Network - (RD-L-2)-Z9-L02-SL | 2d | 2027-11-25 | 2027-11-27 | RHD4CZ9L02SL4100 | Skilled labor [21.78 h]; Unskilled Labor [43.56 h]; Equipment Opreator [8.71 h]; Concrete Mixer Truck [4.36 h]; Concrete Pump [4.36 h]; 0.6/1 KV Steet Lighting Feeder Pillar [0.5 Unit] | 11,460.5 | L02 | Z9 | CONS | SL | Lean Concrete | AFT |
| RHD4CZ9L02SL4300 |  | Installation of Distribution Pillars for Street Lighting Network - (RD-L-2)-Z9-L02-SL | 2d | 2027-11-28 | 2027-11-29 | RHD4CZ9L02SL4200, RHD4CZ9L02SL1400 | Skilled labor [21.78 h]; Unskilled Labor [87.12 h]; Electrician [43.56 h]; Equipment Opreator [21.78 h]; Boom Truck [21.78 h]; 0.6/1 KV Steet Lighting Feeder Pillar [1.2 Unit] | 27,505.2 | L02 | Z9 | CONS | SL | Installation | AFT |
|  | 8618 | **RHD4-02-002-L02-(SL)-Street Lighting Earthing System** |  | 2027-11-30 | 2027-12-01 |  |  |  |  |  |  |  |  |  |
| RHD4CZ9L02SL6100 |  | Installation of Earthing for Lighting Poles and Fedder Pillers for Street Lighting Network - (RD-L-2)-Z9-L02-SL | 2d | 2027-11-30 | 2027-12-01 | RHD4ENMSER2000, RHD4ENMSER2010, RHD4CZ9L02SL4300 | Skilled labor [3.59 h]; Unskilled Labor [3.59 h]; Equipment Opreator [7.3 h]; Excavator-Poclain [3.59 h]; Dump Truck [3.59 h]; Street Lighting Feeder pillars - ER [1 Unit]; Including lighting poles circuits - ER [4 Unit] | 3,580 | L02 | Z9 | CONS | SL | Installation | AFT |
|  | 8624 | **RHD4-02-002-Z9-L02-Telecommunications Network - TC** |  | 2027-01-30 | 2027-09-20 |  |  |  |  |  |  |  |  |  |
|  | 8625 | **RHD4-02-002-L02-(TC)-Telecommunications Ducts** |  | 2027-08-04 | 2027-09-04 |  |  |  |  |  |  |  |  |  |
| RHD4CZ9L02TC2100 |  | Excavation of HDPE Ducts for Telecom Network - (RD-L-2)-Z9-L02-TC | 9d | 2027-08-04 | 2027-08-14 | RHD4ENSDZ9APPTC190, RHD4CZ9L02SL3100 SS | Skilled labor [97.8 h]; Unskilled Labor [97.8 h]; Equipment Opreator [195.7 h]; Excavator-Poclain [97.8 h]; Dump Truck [97.8 h]; (6*50mm) HDPE ducts -TC [276.71 m]; (6*50mm+2*32mm) HDPE ducts -TC [112.98 m]; (6*50mm+4*32mm) HDPE ducts -TC [18.22 m]; (2*32mm) HDPE ducts -TC [41.28 m] | 40,236.77 | L02 | Z9 | CONS | TC | Excavation | AFT |
| RHD4CZ9L02TC2200 |  | Installation of HDPE Ducts for Telecom Network - (RD-L-2)-Z9-L02-TC | 9d | 2027-08-15 | 2027-08-24 | RHD4PRSHLDOSTC1000, RHD4PRSHLSTAGTC1000, RHD4CZ9L02TC2100 | Carpenter [9.8 h]; Skilled labor [97.8 h]; Unskilled Labor [97.8 h]; Steel Fixer [9.8 h]; (6*50mm) HDPE ducts -TC [899.3 m]; (6*50mm+2*32mm) HDPE ducts -TC [367.19 m]; (6*50mm+4*32mm) HDPE ducts -TC [59.22 m]; (2*32mm) HDPE ducts -TC [134.16 m] | 130,769.59 | L02 | Z9 | CONS | TC | Installing | AFT |
| RHD4CZ9L02TC2400 |  | Backfilling of HDPE Ducts for Telecom Network - (RD-L-2)-Z9-L02-TC | 9d | 2027-08-25 | 2027-09-04 | RHD4CZ9L02TC2200 | Skilled labor [97.8 h]; Unskilled Labor [97.8 h]; Equipment Opreator [39.1 h]; Excavator-Poclain [39.1 h]; (6*50mm) HDPE ducts -TC [207.53 m]; (6*50mm+2*32mm) HDPE ducts -TC [84.73 m]; (6*50mm+4*32mm) HDPE ducts -TC [13.66 m]; (2*32mm) HDPE ducts -TC [30.96 m] | 30,177.58 | L02 | Z9 | CONS | TC | Backfilling | AFT |
|  | 8626 | **RHD4-02-002-L02-(TC)-Telecommunications Manholes** |  | 2027-09-05 | 2027-09-20 |  |  |  |  |  |  |  |  |  |
| RHD4CZ9L02TC5100 |  | Excavation for Manholes for Telecom Network - (RD-L-2)-Z9-L02-TC | 7d | 2027-09-05 | 2027-09-12 | RHD4ENSDZ9APPTC190, RHD4CZ9L02TC2400 | Skilled labor [21.78 h]; Unskilled Labor [21.78 h]; Equipment Opreator [17.42 h]; Excavator-Poclain [8.71 h]; Dump Truck [8.71 h]; Manhole Type 1 - TC [1.8 nr]; Manhole Type 2 - TC [0.45 nr] | 15,167.25 | L02 | Z9 | CONS | TC | Excavation | AFT |
| RHD4CZ9L02TC5200 |  | Installation of Manholes for Telecom Network - (RD-L-2)-Z9-L02-TC | 7d | 2027-09-13 | 2027-09-20 | RHD4PRSHLDOSTC1200, RHD4PRSHLSTAGTC1200, RHD4CZ9L02TC5100, RHD4CZ9L02PT3202, RHD4CZ9L06ST1502 | Skilled labor [21.78 h]; Unskilled Labor [21.78 h]; Equipment Opreator [8.71 h]; Boom Truck [8.71 h]; Manhole Type 1 - TC [10.2 nr]; Manhole Type 2 - TC [2.55 nr] | 85,947.75 | L02 | Z9 | CONS | TC | Installation | AFT |
|  | 8627 | **RHD4-02-002-L02-(TC)-Telecomminications Road Crossings** |  | 2027-01-30 | 2027-02-07 |  |  |  |  |  |  |  |  |  |
| RHD4CZ9L02TC3100 |  | Excavation for Road Crossings for Telecom Network - (RD-L-2)-Z9-L02-TC | 2d | 2027-01-30 | 2027-01-31 | RHD4ENSDZ9APPTC190, RHD4CZ9L05ST7100 | Skilled labor [10.89 h]; Unskilled Labor [10.89 h]; Equipment Opreator [21.78 h]; Excavator-Poclain [10.89 h]; Dump Truck [10.89 h]; Road crossing ducts, (6*50mm) HDPE -TC [2 m] | 76 | L02 | Z9 | CONS | TC | Excavation | bef |
| RHD4CZ9L02TC3200 |  | Installation of Road Crossings for Telecom Network - (RD-L-2)-Z9-L02-TC | 2d | 2027-02-01 | 2027-02-02 | RHD4PRSHLDOSTC1100, RHD4PRSHLSTAGTC1100, RHD4CZ9L02TC3100 | Carpenter [1.42 h]; Skilled labor [14.48 h]; Unskilled Labor [14.48 h]; Steel Fixer [1.42 h]; Road crossing ducts, (6*50mm) HDPE -TC [2 m] | 76 | L02 | Z9 | CONS | TC | Installing | bef |
| RHD4CZ9L02TC3300 |  | Pouring of Road Crossings for Telecom Network - (RD-L-2)-Z9-L02-TC | 2d | 2027-02-03 | 2027-02-04 | RHD4CZ9L02TC3200 | Skilled labor [14.48 h]; Unskilled Labor [14.48 h]; Equipment Opreator [5.77 h]; Concrete Mixer Truck [2.94 h]; Concrete Pump [2.94 h]; Road crossing ducts, (6*50mm) HDPE -TC [13 m] | 494 | L02 | Z9 | CONS | TC | Pouring | bef |
| RHD4CZ9L02TC3400 |  | Backfilling of Road Crossings for Telecom Network - (RD-L-2)-Z9-L02-TC | 2d | 2027-02-06 | 2027-02-07 | RHD4CZ9L02TC3300 | Skilled labor [10.89 h]; Unskilled Labor [10.89 h]; Equipment Opreator [4.36 h]; Excavator-Poclain [4.36 h]; Road crossing ducts, (6*50mm) HDPE -TC [3 m] | 114 | L02 | Z9 | CONS | TC | Backfilling | bef |
|  | 8628 | **RHD4-02-002-Z9-L02-Information and Communication Technologies - ICT** |  | 2027-02-01 | 2027-11-15 |  |  |  |  |  |  |  |  |  |
|  | 8629 | **RHD4-02-002-L02-(ICT)-Information and Communication Technologies Ducts** |  | 2027-09-13 | 2027-10-23 |  |  |  |  |  |  |  |  |  |
| RHD4CZ9L02ICT2100 |  | Excavation of HDPE Ducts for ICT Network - (RD-L-2)-Z9-L02-ICT | 10d | 2027-09-13 | 2027-09-25 | RHD4ENSDZ9APPICT200, RHD4PRSHLDOSST1501, RHD4PRSHLDOSRD1300, RHD4PRSHLDOSST1504, RHD4PRSHLSTAGRD1300, RHD4CZ9L02TC5100 | Skilled labor [103.57 h]; Unskilled Labor [103.57 h]; Equipment Opreator [207.24 h]; Excavator-Poclain [103.57 h]; Dump Truck [103.57 h]; (2*50mm) HDPE ducts -ICT [427.6 m]; (2*50mm+2*32mm) HDPE ducts -ICT [192 m]; (2*50mm+4*32mm) HDPE ducts -ICT [27.14 m]; (2*32mm) HDPE ducts -ICT [19.27 m] | 33,061.88 | L02 | Z9 | CONS | ICT | Excavation | AFT |
| RHD4CZ9L02ICT2200 |  | Installation of HDPE Ducts for ICT Network - (RD-L-2)-Z9-L02-ICT | 14d | 2027-09-26 | 2027-10-11 | RHD4PRSHLDOSICT1000, RHD4PRSHLSTAGICT1000, RHD4CZ9L02ICT2100 | Carpenter [14.48 h]; Skilled labor [145.06 h]; Unskilled Labor [145.06 h]; Steel Fixer [14.48 h]; (2*50mm) HDPE ducts -ICT [1389.7 m]; (2*50mm+2*32mm) HDPE ducts -ICT [624 m]; (2*50mm+4*32mm) HDPE ducts -ICT [88.2 m]; (2*32mm) HDPE ducts -ICT [62.61 m] | 107,451.12 | L02 | Z9 | CONS | ICT | Installing | AFT |
| RHD4CZ9L02ICT2400 |  | Backfilling of HDPE Ducts for ICT Network - (RD-L-2)-Z9-L02-ICT | 10d | 2027-10-12 | 2027-10-23 | RHD4CZ9L02ICT2200 | Skilled labor [103.57 h]; Unskilled Labor [103.57 h]; Equipment Opreator [41.49 h]; Excavator-Poclain [41.49 h]; (2*50mm) HDPE ducts -ICT [320.7 m]; (2*50mm+2*32mm) HDPE ducts -ICT [144 m]; (2*50mm+4*32mm) HDPE ducts -ICT [20.36 m]; (2*32mm) HDPE ducts -ICT [14.45 m] | 24,796.41 | L02 | Z9 | CONS | ICT | Backfilling | AFT |

| ID | WBS | Activity | Duration | Start | Finish | Predecessors | Resources | Cost | RDH4-01-001-Road and Block Names-1 | RDH4-01-001-Zones-1 | RDH4-01-001-Phases-1 | RDH4-01-001-Networks-1 | RDH4-01-001-Work Method-1 | RDH4-01-001-MENEM |
| --- | --- | --- | --- | --- | --- | --- | --- | --- | --- | --- | --- | --- | --- | --- |
|  | 8630 | **RHD4-02-002-L02-(ICT)-Information and Communication Technologies Manholes** |  | 2027-10-24 | 2027-11-15 |  |  |  |  |  |  |  |  |  |
| RHD4CZ9L02ICT5100 |  | Excavation for Manholes for ICT Network - (RD-L-2)-Z9-L02-ICT | 10d | 2027-10-24 | 2027-11-03 | RHD4ENSDZ9APPICT200, RHD4CZ9L02ICT2400 | Skilled labor [34.09 h]; Unskilled Labor [34.09 h]; Equipment Opreator [27.2 h]; Excavator-Poclain [13.6 h]; Dump Truck [13.6 h]; Manhole Type 1 - ICT [6.6 nr]; Manhole Type 2 - ICT [0.9 nr] | 40,447.5 | L02 | Z9 | CONS | ICT | Excavation | AFT |
| RHD4CZ9L02ICT5200 |  | Installation of Manholes for ICT Network - (RD-L-2)-Z9-L02-ICT | 10d | 2027-11-04 | 2027-11-15 | RHD4PRSHLDOSICT1200, RHD4PRSHLSTAGICT1200, RHD4CZ9L02ICT5100 | Skilled labor [34.09 h]; Unskilled Labor [34.09 h]; Equipment Opreator [13.6 h]; Boom Truck [13.6 h]; Manhole Type 1 - ICT [15.7 nr]; Manhole Type 2 - ICT [5.1 nr] | 112,174.4 | L02 | Z9 | CONS | ICT | Installation | AFT |
|  | 8631 | **RHD4-02-002-L02-(ICT)-Information and Communication Technologies Road Crossings** |  | 2027-02-01 | 2027-03-04 |  |  |  |  |  |  |  |  |  |
| RHD4CZ9L02ICT3100 |  | Excavation for Road Crossings for ICT Network - (RD-L-2)-Z9-L02-ICT | 3d | 2027-02-01 | 2027-02-03 | RHD4ENSDZ9APPICT200, RHD4CZ9L02TC3100 | Skilled labor [30.71 h]; Unskilled Labor [30.71 h]; Equipment Opreator [61.31 h]; Excavator-Poclain [30.71 h]; Dump Truck [30.71 h]; Road crossing ducts, (2*50mm) HDPE -ICT [5.63 m] | 213.94 | L02 | Z9 | CONS | ICT | Excavation | bef |
| RHD4CZ9L02ICT3200 |  | Installation of Road Crossings for ICT Network - (RD-L-2)-Z9-L02-ICT | 4d | 2027-02-20 | 2027-02-24 | RHD4PRSHLDOSICT1100, RHD4PRSHLSTAGICT1100, RHD4CZ9L02ICT3100, RHD4CZ9L02TC3200 | Carpenter [4.14 h]; Skilled labor [40.8 h]; Unskilled Labor [40.8 h]; Steel Fixer [4.14 h]; Road crossing ducts, (2*50mm) HDPE -ICT [5.63 m] | 213.94 | L02 | Z9 | CONS | ICT | Installing | bef |
| RHD4CZ9L02ICT3300 |  | Pouring of Road Crossings for ICT Network - (RD-L-2)-Z9-L02-ICT | 4d | 2027-02-25 | 2027-03-01 | RHD4CZ9L02ICT3200 | Skilled labor [40.8 h]; Unskilled Labor [40.8 h]; Equipment Opreator [16.34 h]; Concrete Mixer Truck [8.17 h]; Concrete Pump [8.17 h]; Road crossing ducts, (2*50mm) HDPE -ICT [36.6 m] | 1,390.8 | L02 | Z9 | CONS | ICT | Pouring | bef |
| RHD4CZ9L02ICT3400 |  | Backfilling of Road Crossings for ICT Network - (RD-L-2)-Z9-L02-ICT | 3d | 2027-03-02 | 2027-03-04 | RHD4CZ9L02ICT3300 | Skilled labor [30.71 h]; Unskilled Labor [30.71 h]; Equipment Opreator [12.31 h]; Excavator-Poclain [12.31 h]; Road crossing ducts, (2*50mm) HDPE -ICT [8.45 m] | 320.91 | L02 | Z9 | CONS | ICT | Backfilling | bef |
|  | 8619 | **RHD4-02-002-Z9-L02-Landscape Network - LS** |  |  |  |  |  |  |  |  |  |  |  |  |
|  | 8620 | **RHD4-02-002-L02-(LS)-Landscape Lighting cables** |  |  |  |  |  |  |  |  |  |  |  |  |
|  | 8621 | **RHD4-02-002-L02-(LS)-Landscape Feeder Pillars** |  |  |  |  |  |  |  |  |  |  |  |  |
|  | 8622 | **RHD4-02-002-L02-(LS)-Landscape Bollard Poles** |  |  |  |  |  |  |  |  |  |  |  |  |
|  | 8623 | **RHD4-02-002-L02-(LS)-Landscape Feeder Pillars Earthing** |  |  |  |  |  |  |  |  |  |  |  |  |
|  | 8632 | **RHD4-02-002-Z9-L02-Security Network - CCTV** |  | 2027-11-16 | 2027-12-16 |  |  |  |  |  |  |  |  |  |
|  | 8633 | **RHD4-02-002-L02-(CCTV)-Civil Works** |  | 2027-11-16 | 2027-11-21 |  |  |  |  |  |  |  |  |  |
| RHD4CZ9L02CCTV2100 |  | Civil Works for Security Network - (RD-L-2)-Z9-L02-CCTV | 5d | 2027-11-16 | 2027-11-21 | RHD4CZ9L02ICT5200 | Skilled labor [217.76 h]; Unskilled Labor [435.68 h]; Equipment Opreator [217.76 h]; Excavator-Poclain [54.45 h]; Dump Truck [54.45 h]; Civil works Digging, trenching, laying pipes Meter with supply and installation of Manholes and for power feeding sources related to all towers and poles – (from 35-meter pole to control room and from related UPS camersa distribution boards till overall 2 [150 m] | 17,400 | L02 | Z9 | CONS | CCTV | Civil Works | AFT |
|  | 8634 | **RHD4-02-002-L02-(CCTV)-CCTV Poles** |  | 2027-11-22 | 2027-12-02 |  |  |  |  |  |  |  |  |  |
| RHD4CZ9L02CCTV1100 |  | Excavation for RC Base for CCTV Poles for Security Network - (RD-L-2)-Z9-L02-CCTV | 2d | 2027-11-22 | 2027-11-23 | RHD4ENSDZ9APPCCTV210, RHD4CZ9L02CCTV2100 | Skilled labor [13.12 h]; Unskilled Labor [13.12 h]; Equipment Opreator [26.08 h]; Excavator-Poclain [6.53 h]; Dump Truck [6.53 h]; 25 Meters pole for CCTV Cameras [0.3 nr] | 42,270.6 | L02 | Z9 | CONS | CCTV | Excavation | AFT |
| RHD4CZ9L02CCTV1200 |  | Installation for RC Base for CCTV Poles for Security Network - (RD-L-2)-Z9-L02-CCTV | 2d | 2027-11-24 | 2027-11-25 | RHD4PRSHLSTAGLS1000, RHD4PRSHLPOSL1300 SS, RHD4GNPPMAT1100, RHD4ENMARSUBSL400 SS, RHD4GNPPSD1100, RHD4ENSDZ9SUBCCTV210 SS, RHD4CZ9L02CCTV1100 | Skilled labor [13.12 h]; Unskilled Labor [13.12 h]; Equipment Opreator [26.08 h]; Excavator-Poclain [6.53 h]; Dump Truck [6.53 h]; 25 Meters pole for CCTV Cameras [0.75 nr] | 105,676.5 | L02 | Z9 | CONS | CCTV | RC Base | AFT |
| RHD4CZ9L02CCTV1300 |  | Backfill for RC Base for CCTV Poles for Security Network - (RD-L-2)-Z9-L02-CCTV | 2d | 2027-11-27 | 2027-11-28 | RHD4CZ9L02CCTV1200 | Skilled labor [8.32 h]; Unskilled Labor [8.32 h]; Equipment Opreator [16.32 h]; Excavator-Poclain [4.14 h]; Dump Truck [4.14 h]; 25 Meters pole for CCTV Cameras [0.15 nr] | 21,135.3 | L02 | Z9 | CONS | CCTV | Backfill | AFT |
| RHD4CZ9L02CCTV1400 |  | Installation for CCTV Poles for Security Network - (RD-L-2)-Z9-L02-CCTV | 2d | 2027-11-29 | 2027-11-30 | RHD4PRSHLDOSCCTV1000, RHD4PRSHLSTACCTV1000, RHD4CZ9L02CCTV1300 | Skilled labor [21.76 h]; Unskilled Labor [43.52 h]; Electrician [21.76 h]; Equipment Opreator [21.76 h]; Boom Truck [10.89 h]; 25 Meters pole for CCTV Cameras [1.8 nr] | 253,623.6 | L02 | Z9 | CONS | CCTV | Installation | AFT |
| RHD4CZ9L02CCTV1500 |  | Protection post Installation for CCTV Poles for Security Network - (RD-L-2)-Z9-L02-CCTV | 2d | 2027-12-01 | 2027-12-02 | RHD4CZ9L02CCTV1400 | Skilled labor [10.88 h]; Unskilled Labor [21.76 h]; Supply and Installation of minimum 4 Protection Post for each pole or tower with pipe ?220*6mm THK. [1 nr] | 4,903 | L02 | Z9 | CONS | CCTV | Protection post | AFT |
|  | 8635 | **RHD4-02-002-L02-(CCTV)-Camera** |  | 2027-12-04 | 2027-12-05 |  |  |  |  |  |  |  |  |  |
| RHD4CZ9L02CCTV3100 |  | Installation for Cameras for Security Network - (RD-L-2)-Z9-L02-CCTV | 2d | 2027-12-04 | 2027-12-05 | RHD4PRSHLDOSCCTV1100, RHD4PRSHLSTACCTV1100, RHD4CZ9L02CCTV1400, RHD4CZ9L02CCTV4100 | Unskilled Labor [119.84 h]; Electrician [59.84 h]; Outdoor Camera, 5MP resolution, day/night, fixed bullet camera providing Forensic WDR. [8 nr]; Outdoor PTZ with IR, HDTV 1080 and 31x optical, 12x digital, total 372x zoom, H264/265 with Motion JPEG. [3 nr] | 151,329 | L02 | Z9 | CONS | CCTV | Installation | AFT |

| ID | WBS | Activity | Duration | Start | Finish | Predecessors | Resources | Cost | RDH4-01-001-Road and Block Names-1 | RDH4-01-001-Zones-1 | RDH4-01-001-Phases-1 | RDH4-01-001-Networks-1 | RDH4-01-001-Work Method-1 | RDH4-01-001-MENEM |
| --- | --- | --- | --- | --- | --- | --- | --- | --- | --- | --- | --- | --- | --- | --- |
|  | 8636 | **RHD4-02-002-L02-(CCTV)-Power and Infrastructure** |  | 2027-12-01 | 2027-12-02 |  |  |  |  |  |  |  |  |  |
| RHD4CZ9L02CCTV4100 |  | Installation of Power outlet, UPS and midspan for PTZ Camerafor Cameras for Security Network - (RD-L-2)-Z9-L02-CCTV | 2d | 2027-12-01 | 2027-12-02 | RHD4PRSHLDOSCCTV1300, RHD4PRSHLSTACCTV1300, RHD4CZ9L02CCTV1400 | Skilled labor [17.44 h]; Unskilled Labor [69.76 h]; Electrician [34.88 h]; Equipment Opreator [34.88 h]; Excavator-Poclain [8.71 h]; Dump Truck [8.71 h]; Outdoor ready IP66-rated midspan for PTZ Camera (The outdoor- ready midspan should be IP66/IP67- and NEMA 4X-rated [3 nr]; 1.2KVA Industrial type UPS located at FEC remote poles [1 nr] | 15,051 | L02 | Z9 | CONS | CCTV | Power | AFT |
|  | 8638 | **RHD4-02-002-L02-(CCTV)-CCTV Panels and Components** |  | 2027-12-06 | 2027-12-16 |  |  |  |  |  |  |  |  |  |
| RHD4CZ9L02CCTV6100 |  | Installation for CCTV Panels for Security Network - (RD-L-2)-Z9-L02-CCTV | 10d | 2027-12-06 | 2027-12-16 | RHD4PRSHLDOSCCTV1200, RHD4PRSHLSTACCTV1200, RHD4PRLOLSTACCTV1001, RHD4CZ9L02CCTV3100 | Skilled labor [217.76 h]; Unskilled Labor [653.44 h]; Electrician [217.76 h]; Pole mounted Filed Equipment cabinet (FEC) , with fan and ventilation, NEMEX 4X ,door, minimum size (600x600x400mm) , the cabinet/enclosurE [1 nr]; 8 Port Industrial PoE Switch 10/1000BaseT (-40 deg to +70 deg. Celsius) for remote poles and as specifiedin item 15. [3 nr]; UTP CAT6 Patch Cord , connect the industrial switch with the cameras, and radio wireless antenna [6 nr] | 42,757 | L02 | Z9 | CONS | CCTV | Equipment | AFT |
|  | 5622 | **RHD4-02-002-Z7** |  | 2026-01-29 | 2028-05-30 |  |  |  |  |  |  |  |  |  |
|  | 6190 | **RHD4-02-002-Z7-C032** |  | 2027-02-20 | 2027-10-14 |  |  |  |  |  |  |  |  |  |
|  | 6265 | **RHD4-02-002-Z7-C032-Crossings Potable Network - PTCr** |  |  |  |  |  |  |  |  |  |  |  |  |
|  | 6268 | **RHD4-02-002-C032-(PTCr)-HDPE Pipes - 200 mm diameter** |  |  |  |  |  |  |  |  |  |  |  |  |
|  | 6271 | **RHD4-02-002-C032-(PTCr)-Gate Valves (Direct Buried)** |  |  |  |  |  |  |  |  |  |  |  |  |
|  | 6278 | **RHD4-02-002-C032-(PTCr)-Fire Hydrant** |  |  |  |  |  |  |  |  |  |  |  |  |
|  | 6312 | **RHD4-02-002-Z7-C032-Crossings Irrigation Network - IRRC** |  |  |  |  |  |  |  |  |  |  |  |  |
|  | 6313 | **RHD4-02-002-C032-(IRRC)-HDPE Pipes - 160 mm diameter** |  |  |  |  |  |  |  |  |  |  |  |  |
|  | 6321 | **RHD4-02-002-C032-(IRRC)-Gate Valves (Direct Buried)** |  |  |  |  |  |  |  |  |  |  |  |  |
|  | 6324 | **RHD4-02-002-C032-(IRRC)-Wash out Chamber** |  |  |  |  |  |  |  |  |  |  |  |  |
|  | 6325 | **RHD4-02-002-C032-(IRRC)-Wash out Valves** |  |  |  |  |  |  |  |  |  |  |  |  |
|  | 6326 | **RHD4-02-002-C032-(IRRC)-Air Valve Chamber** |  |  |  |  |  |  |  |  |  |  |  |  |
|  | 6327 | **RHD4-02-002-C032-(IRRC)-Air Valves** |  |  |  |  |  |  |  |  |  |  |  |  |
|  | 6369 | **RHD4-02-002-Z7-C032-Road Works - RD** |  | 2027-03-04 | 2027-10-14 |  |  |  |  |  |  |  |  |  |
|  | 6370 | **RHD4-02-002-C032-(RD)-Subgrade** |  | 2027-03-04 | 2027-03-14 |  |  |  |  |  |  |  |  |  |
| RHD4CZ7C032RD1100 |  | Supply, lay and compaction subgrade compacted thickness 300 mm for Roads - (RD-C-3/2)-Z7-C032-RD | 6d | 2027-03-04 | 2027-03-14 | RHD4ENSDZ7APPEW100, RHD4ENSDZ7APPRD220, RHD4CZ7C032ICT3400, RHD4CZ7C032TC3400, RHD4CZ4L09ST3502, RHD4CZ5L08ST7500 | Skilled labor [112.93 h]; Unskilled Labor [225.87 h]; Electrician [112.93 h]; Equipment Opreator [771.15 h]; Water Truck [37.24 h]; Roller compactor [56.41 h]; Grader [112.93 h]; Dump Truck [564.56 h]; Subgrade [5430.56 m3] | 103,180.64 | C032 | Z7 | CONS | RD | Subgrade | bef |
|  | 6371 | **RHD4-02-002-C032-(RD)-Aggregate Base Course** |  | 2027-03-15 | 2027-03-20 |  |  |  |  |  |  |  |  |  |
| RHD4CZ7C032RD2100 |  | Supply, lay and compaction Aggregate base course compacted thickness 300 mmfor Roads - (RD-C-3/2)-Z7-C032-RD | 5d | 2027-03-15 | 2027-03-20 | RHD4PRSHLDOSRD1000, RHD4PRSHLSTAGRD1000, RHD4CZ7C032RD1100, RHD4CZ5C051ST7500 | Skilled labor [41.82 h]; Unskilled Labor [83.64 h]; Equipment Opreator [529.38 h]; Water Truck [27.55 h]; Roller compactor [83.64 h]; Grader [83.64 h]; Dump Truck [334.55 h]; Aggregate Base Courses [3410.94 m3] | 194,423.58 | C032 | Z7 | CONS | RD | ABC | bef |
|  | 6372 | **RHD4-02-002-C032-(RD)-Bituminous base course Two Layers, including (MC1)&(RC2)** |  | 2027-03-21 | 2027-09-29 |  |  |  |  |  |  |  |  |  |
| RHD4CZ7C032RD3100 |  | Supply, lay and Asphaltic base course including Prime Coat (MC1) for 1st Layer - (RD-C-3/2)-Z7-C032-RD | 4d | 2027-03-21 | 2027-03-24 | RHD4PRSHLDOSRD1100, RHD4ENMSASPH2000, RHD4ENMSASPH2010, RHD4PRSHLSTAGRD1100, RHD4CZ7C032RD2100 | Skilled labor [33.22 h]; Unskilled Labor [199.29 h]; Equipment Opreator [498.12 h]; Bobcat [33.22 h]; Roller compactor [33.22 h]; Asphalt Paver [33.22 h]; Rubber Compactor [66.4 h]; MC1/RC2 Sprinkler [33.22 h]; Dump Truck [298.83 h]; Bituminous base course (Grading I - Class A), including Prime coat (MC1) & tack coate (RC2) [1214.99 m3] | 580,765.22 | C032 | Z7 | CONS | RD | 150 mm | AFT |
| RHD4CZ7C032RD3200 |  | Supply, lay and Asphaltic base course including Tack Coat (RC2) for 2nd Layer - (RD-C-3/2)-Z7-C032-RD | 4d | 2027-09-26 | 2027-09-29 | RHD4PRSHLDOSRD1100, RHD4PRSHLSTAGRD1100, RHD4CZ7C032CCTV4200 | Skilled labor [33.22 h]; Unskilled Labor [199.29 h]; Equipment Opreator [498.12 h]; Bobcat [33.22 h]; Roller compactor [33.22 h]; Asphalt Paver [33.22 h]; Rubber Compactor [66.4 h]; MC1/RC2 Sprinkler [33.22 h]; Dump Truck [298.83 h]; Bituminous base course (Grading I - Class A), including Prime coat (MC1) & tack coate (RC2) [1214.99 m3] | 580,765.22 | C032 | Z7 | CONS | RD | 150 mm | AFT |

| ID | WBS | Activity | Duration | Start | Finish | Predecessors | Resources | Cost | RDH4-01-001-Road and Block Names-1 | RDH4-01-001-Zones-1 | RDH4-01-001-Phases-1 | RDH4-01-001-Networks-1 | RDH4-01-001-Work Method-1 | RDH4-01-001-MENEM |
| --- | --- | --- | --- | --- | --- | --- | --- | --- | --- | --- | --- | --- | --- | --- |
|  | 6374 | **RHD4-02-002-C032-(RD)-Precast Concrete Curb** |  | 2027-09-30 | 2027-10-07 |  |  |  |  |  |  |  |  |  |
| RHD4CZ7C032RD5100 |  | Supply and installation Precast Concrete Kerb for Roads - (RD-C-3/2)-Z7-C032-RD | 7d | 2027-09-30 | 2027-10-07 | RHD4PRSHLDOSRD1200, RHD4ENMSRD2000, RHD4ENMSRD2010, RHD4PRSHLSTAGRD1200, RHD4CZ7C032RD3200 | Mason [220.75 h]; Skilled labor [73.6 h]; Unskilled Labor [220.75 h]; Equipment Opreator [147.13 h]; Bobcat [73.6 h]; Concrete Mixer Truck [73.6 h]; Precast Concrete Curbstone, type K1 [3040 m] | 167,200 | C032 | Z7 | CONS | RD | Curbs | AFT |
|  | 6377 | **RHD4-02-002-C032-(RD)-Traffic Signage** |  | 2027-10-09 | 2027-10-14 |  |  |  |  |  |  |  |  |  |
| RHD4CZ7C032RD8100 |  | Installation of Traffic Signage for Road Network - (RD-C-3/2)-Z7-C032-RD | 6d | 2027-10-09 | 2027-10-14 | RHD4PRSHLDOSRD1600, RHD4PRSHLSTAGRD1600, RHD4CZ7C032RD5100 | Skilled labor [130.68 h]; Unskilled Labor [65.34 h]; Electrician [17.42 h]; Equipment Opreator [20 h]; Boom Truck [13.07 h]; Concrete Mixer Truck [6.97 h]; Traffic signs, ground mounted, 1 Sheet Aluminium, (breakaway)Single post [15 nr] | 18,390 | C032 | Z7 | CONS | RD | Traffic Signage | AFT |
|  | 6375 | **RHD4-02-002-C032-(RD)-Precast Interlocking Block Pavers** |  |  |  |  |  |  |  |  |  |  |  |  |
|  | 6373 | **RHD4-02-002-C032-(RD)-Bituminous concrete wearing course including tack coat (RC2)** |  | 2027-10-09 | 2027-10-10 |  |  |  |  |  |  |  |  |  |
| RHD4CZ7C032RD4100 |  | Supply, lay and compaction Asphaltic wearing course including tack Coat (RC2)for Road Network - (RD-C-3/2)-Z7-C032-RD | 2d | 2027-10-09 | 2027-10-10 | RHD4CZ7C032RD5100 | Skilled labor [17.1 h]; Unskilled Labor [102.7 h]; Equipment Opreator [256.58 h]; Bobcat [17.1 h]; Roller compactor [17.1 h]; Asphalt Paver [17.1 h]; Rubber Compactor [34.2 h]; MC1/RC2 Sprinkler [17.1 h]; Dump Truck [153.99 h]; Bituminous concrete wearing course, (Grading I - Class A), including tack coat (RC2) [815.96 m3] | 443,066.28 | C032 | Z7 | CONS | RD | 50 mm | AFT |
|  | 6376 | **RHD4-02-002-C032-(RD)-Pavement Marking** |  | 2027-10-11 | 2027-10-14 |  |  |  |  |  |  |  |  |  |
| RHD4CZ7C032RD7100 |  | Pavement Markings for Road Network - (RD-C-3/2)-Z7-C032-RD | 4d | 2027-10-11 | 2027-10-14 | RHD4PRSHLDOSRD1500, RHD4PRSHLSTAGRD1500, RHD4CZ7C032RD4100 | Skilled labor [37.03 h]; Unskilled Labor [74.05 h]; Equipment Opreator [37.03 h]; Road Marking Machine [37.03 h]; Retroreflective Thermoplastic White Traffic Markings [147.7 m2]; Retroreflective Thermoplastic Yellow, Traffic Markings [130.23 m2]; Retroreflective raised pavement markers (cat eyes) [590 nr] | 28,675.83 | C032 | Z7 | CONS | RD | Pavement Marking | AFT |
|  | 6194 | **RHD4-02-002-Z7-C032-Storm Network - ST** |  |  |  |  |  |  |  |  |  |  |  |  |
|  | 6213 | **RHD4-02-002-C032-(ST)-MH Works - 2000 mm diameter** |  |  |  |  |  |  |  |  |  |  |  |  |
|  | 6212 | **RHD4-02-002-C032-(ST)-MH Works - 1500 mm diameter** |  |  |  |  |  |  |  |  |  |  |  |  |
|  | 6211 | **RHD4-02-002-C032-(ST)-MH Works - 1200 mm diameter** |  |  |  |  |  |  |  |  |  |  |  |  |
|  | 6208 | **RHD4-02-002-C032-(ST)-GRP Pipes - 1800 mm diameter** |  |  |  |  |  |  |  |  |  |  |  |  |
|  | 6207 | **RHD4-02-002-C032-(ST)-GRP Pipes - 1600 mm diameter** |  |  |  |  |  |  |  |  |  |  |  |  |
|  | 6206 | **RHD4-02-002-C032-(ST)-GRP Pipes - 1500 mm diameter** |  |  |  |  |  |  |  |  |  |  |  |  |
|  | 6200 | **RHD4-02-002-C032-(ST)-GRP Pipes - 900 mm diameter** |  |  |  |  |  |  |  |  |  |  |  |  |
|  | 6197 | **RHD4-02-002-C032-(ST)-GRP Pipes - 600 mm diameter** |  |  |  |  |  |  |  |  |  |  |  |  |
|  | 6196 | **RHD4-02-002-C032-(ST)-GRP Pipes - 500 mm diameter** |  |  |  |  |  |  |  |  |  |  |  |  |
|  | 6195 | **RHD4-02-002-C032-(ST)-GRP Pipes - 400 mm diameter** |  |  |  |  |  |  |  |  |  |  |  |  |
|  | 6209 | **RHD4-02-002-C032-(ST)-UPVC Pipes - 300 mm diameter** |  |  |  |  |  |  |  |  |  |  |  |  |
|  | 6217 | **RHD4-02-002-C032-(ST)-Concrete Encasement** |  |  |  |  |  |  |  |  |  |  |  |  |
|  | 6218 | **RHD4-02-002-Z7-C032-Catch Basin - ST** |  |  |  |  |  |  |  |  |  |  |  |  |
|  | 6219 | **RHD4-02-002-C032-(ST)-Single Catch Basin Works** |  |  |  |  |  |  |  |  |  |  |  |  |
|  | 6280 | **RHD4-02-002-Z7-C032-Potable Network - PT** |  | 2027-05-22 | 2027-06-23 |  |  |  |  |  |  |  |  |  |
|  | 6283 | **RHD4-02-002-C032-(PT)-HDPE Pipes - 200 mm diameter** |  | 2027-05-22 | 2027-06-07 |  |  |  |  |  |  |  |  |  |
| RHD4CZ7C032PT1102 |  | Excavation works for HDPE Pipline 200 mm - (RD-C-3/2)-Z7-C032-PT | 2d | 2027-05-22 | 2027-05-23 | RHD4ENSDZ7APPPT130, RHD4ENMSPT2000, RHD4CZ7C032RW3000, RHD4CZ7A012ST1106, RHD4CZ7A012SW1500, RHD4ENMSEW2000, RHD4ENMSEW2010, RHD4ENSDZ7APPEW100 SS, RHD4ENSDZ8APPEW100 SS | Skilled labor [10.78 h]; Unskilled Labor [10.78 h]; Equipment Opreator [12.96 h]; Excavator-Poclain [10.78 h]; Dump Truck [2.18 h]; HDPE (200mm Diameter) - PT - Depth: less than 1.5m [24 m]; HDPE (200mm Diameter) - PT - Depth: more than 1.5m | 3,360 | C032 | Z7 | CONS | PT | Excavation | bef |
| RHD4CZ7C032PT1202 |  | Bedding works for HDPE Pipline 200 mm - (RD-C-3/2)-Z7-C032-PT | 2d | 2027-05-24 | 2027-05-25 | RHD4CZ7C032PT1102 | Skilled labor [9.15 h]; Unskilled Labor [18.3 h]; Equipment Opreator [18.3 h]; Excavator-Poclain [9.15 h]; Dump Truck [9.15 h]; HDPE (200mm Diameter) - PT - Depth: less than 1.5m [12 m]; HDPE (200mm Diameter) - PT - Depth: more than 1.5m | 1,680 | C032 | Z7 | CONS | PT | Bedding | bef |
| RHD4CZ7C032PT1302 |  | Installing for HDPE Pipline 200 mm - (RD-C-3/2)-Z7-C032-PT | 2d | 2027-05-26 | 2027-05-27 | RHD4PRSHLDOSPT1000, RHD4PRSHLSTAGPT1000, RHD4CZ7C032PT1202 | Unskilled Labor [34.85 h]; Plumber [17.42 h]; Equipment Opreator [17.42 h]; Boom Truck [17.42 h]; HDPE (200mm Diameter) - PT - Depth: less than 1.5m [108 m]; HDPE (200mm Diameter) - PT - Depth: more than 1.5m | 15,120 | C032 | Z7 | CONS | PT | Installation | bef |
| RHD4CZ7C032PT1402 |  | Primary Test for HDPE Pipline 200 mm - (RD-C-3/2)-Z7-C032-PT | 2d | 2027-06-03 | 2027-06-05 | RHD4CZ7C032PT5100, RHD4CZ7C032PT1302 | Unskilled Labor [5.77 h]; Plumber [5.77 h]; Equipment Opreator [5.77 h]; Water Truck [5.77 h]; HDPE (200mm Diameter) - PT - Depth: less than 1.5m [48 m]; HDPE (200mm Diameter) - PT - Depth: more than 1.5m | 6,720 | C032 | Z7 | CONS | PT | Primary Test | bef |
| RHD4CZ7C032PT1502 |  | Backfilling and warning tape works for HDPE Pipline 200 mm - (RD-C-3/2)-Z7-C032-PT | 2d | 2027-06-06 | 2027-06-07 | RHD4CZ7C032PT1402 | Skilled labor [13.29 h]; Unskilled Labor [26.57 h]; Equipment Opreator [26.57 h]; Excavator-Poclain [13.29 h]; Dump Truck [13.29 h]; HDPE (200mm Diameter) - PT - Depth: less than 1.5m [48 m]; HDPE (200mm Diameter) - PT - Depth: more than 1.5m | 6,720 | C032 | Z7 | CONS | PT | Backfilling | bef |

| ID | WBS | Activity | Duration | Start | Finish | Predecessors | Resources | Cost | RDH4-01-001-Road and Block Names-1 | RDH4-01-001-Zones-1 | RDH4-01-001-Phases-1 | RDH4-01-001-Networks-1 | RDH4-01-001-Work Method-1 | RDH4-01-001-MENEM |
| --- | --- | --- | --- | --- | --- | --- | --- | --- | --- | --- | --- | --- | --- | --- |
|  | 6282 | **RHD4-02-002-C032-(PT)-HDPE Pipes - 160 mm diameter** |  | 2027-05-24 | 2027-06-07 |  |  |  |  |  |  |  |  |  |
| RHD4CZ7C032PT1101 |  | Excavation works for HDPE Pipline 160 mm - (RD-C-3/2)-Z7-C032-PT | 2d | 2027-05-24 | 2027-05-25 | RHD4ENSDZ7APPPT130, RHD4ENMSPT2000, RHD4CZ7C032PT1102 | Skilled labor [13.4 h]; Unskilled Labor [13.4 h]; Equipment Opreator [16.12 h]; Excavator-Poclain [13.4 h]; Dump Truck [2.72 h]; HDPE (160mm Diameter) - PT - Depth: less than 1.5m [30.8 m] | 3,295.6 | C032 | Z7 | CONS | PT | Excavation | bef |
| RHD4CZ7C032PT1201 |  | Bedding works for HDPE Pipline 160 mm - (RD-C-3/2)-Z7-C032-PT | 2d | 2027-05-26 | 2027-05-27 | RHD4CZ7C032PT1101 | Skilled labor [11.2 h]; Unskilled Labor [22.33 h]; Equipment Opreator [22.33 h]; Excavator-Poclain [11.2 h]; Dump Truck [11.2 h]; HDPE (160mm Diameter) - PT - Depth: less than 1.5m [15.4 m] | 1,647.8 | C032 | Z7 | CONS | PT | Bedding | bef |
| RHD4CZ7C032PT1301 |  | Installing for HDPE Pipline 160 mm - (RD-C-3/2)-Z7-C032-PT | 3d | 2027-05-29 | 2027-05-31 | RHD4PRSHLDOSPT1000, RHD4PRSHLSTAGPT1000, RHD4CZ7C032PT1201 | Unskilled Labor [44.76 h]; Plumber [22.33 h]; Equipment Opreator [22.33 h]; Boom Truck [22.33 h]; HDPE (160mm Diameter) - PT - Depth: less than 1.5m [138.59 m] | 14,828.76 | C032 | Z7 | CONS | PT | Installation | bef |
| RHD4CZ7C032PT1401 |  | Primary Test for HDPE Pipline 160 mm - (RD-C-3/2)-Z7-C032-PT | 2d | 2027-06-03 | 2027-06-05 | RHD4CZ7C032PT1301, RHD4CZ7C032PT5100 | Unskilled Labor [6.75 h]; Plumber [6.75 h]; Equipment Opreator [6.75 h]; Water Truck [6.75 h]; HDPE (160mm Diameter) - PT - Depth: less than 1.5m [61.59 m] | 6,590.56 | C032 | Z7 | CONS | PT | Primary Test | bef |
| RHD4CZ7C032PT1501 |  | Backfilling and warning tape works for HDPE Pipline 160 mm - (RD-C-3/2)-Z7-C032-PT | 2d | 2027-06-06 | 2027-06-07 | RHD4CZ7C032PT1401 | Skilled labor [16.8 h]; Unskilled Labor [33.54 h]; Equipment Opreator [33.54 h]; Excavator-Poclain [16.8 h]; Dump Truck [16.8 h]; HDPE (160mm Diameter) - PT - Depth: less than 1.5m [61.59 m] | 6,590.56 | C032 | Z7 | CONS | PT | Backfilling | bef |
|  | 6286 | **RHD4-02-002-C032-(PT)-Gate Valves (Direct Buried)** |  | 2027-05-30 | 2027-06-09 |  |  |  |  |  |  |  |  |  |
| RHD4CZ7C032PT3100 |  | Installation for Direct Buried Gate Valves - (RD-C-3/2)-Z7-C032-PT | 2d | 2027-05-30 | 2027-05-31 | RHD4PRSHLDOSPT1200, RHD4PRSHLSTAGPT1200, RHD4CZ7C032PT1302 FF, RHD4CZ7C032PT1301 FF, RHD4CZ7C032PT1302 SS, RHD4CZ7C032PT1301 SS | Unskilled Labor [16.34 h]; Plumber [16.34 h]; Gate valves dia 150 mm - PT [1.8 nr]; Gate valves dia 200 mm - PT [0.9 nr] | 4,852.8 | C032 | Z7 | CONS | PT | Installation | bef |
| RHD4CZ7C032PT3200 |  | Stem and Service box for Direct Buried Gate Valves - (RD-C-3/2)-Z7-C032-PT | 2d | 2027-06-08 | 2027-06-09 | RHD4PRSHLDOSPT1300, RHD4PRSHLSTAGPT1300, RHD4CZ7C032PT3100, RHD4CZ7C032PT1502, RHD4CZ7C032PT1501 | Unskilled Labor [16.34 h]; Plumber [16.34 h]; Gate valves dia 150 mm - PT [0.2 nr]; Gate valves dia 200 mm - PT [0.1 nr] | 539.2 | C032 | Z7 | CONS | PT | Stem and Service box | bef |
|  | 6289 | **RHD4-02-002-C032-(PT)-Wash out Valve Chambers** |  | 2027-06-01 | 2027-06-09 |  |  |  |  |  |  |  |  |  |
| RHD4CZ7C032PT2101 |  | Excavation and Bedding for Wash out Valve Chambers for Potable Water Network - (RD-C-3/2)-Z7-C032-PT | 2d | 2027-06-01 | 2027-06-02 | RHD4ENSDZ7APPPT130, RHD4CZ7C032PT1301 | Skilled labor [5.45 h]; Unskilled Labor [5.45 h]; Equipment Opreator [1.09 h]; Excavator-Poclain [0.54 h]; Dump Truck [0.54 h]; Wash out chambers - PT [0.25 nr] | 4,686.25 | C032 | Z7 | CONS | PT | Excavation and Bedding | bef |
| RHD4CZ7C032PT2201 |  | PC works for Wash out Valve Chambers for Potable Water Network - (RD-C-3/2)-Z7-C032-PT | 2d | 2027-06-03 | 2027-06-05 | RHD4CZ7C032PT2101 | Skilled labor [5.45 h]; Unskilled Labor [10.89 h]; Equipment Opreator [0.54 h]; Concrete Pump [0.54 h]; Wash out chambers - PT [0.1 nr] | 1,874.5 | C032 | Z7 | CONS | PT | PC Works | bef |
| RHD4CZ7C032PT2301 |  | Installation for Wash out Valve Chambers for Potable Water Network - (RD-C-3/2)-Z7-C032-PT | 2d | 2027-06-06 | 2027-06-07 | RHD4PRSHLDOSPT1100, RHD4PRSHLDOSPT1400, RHD4PRSHLSTAGPT1100, RHD4PRSHLSTAGPT1400, RHD4CZ7C032PT2201 | Skilled labor [5.45 h]; Unskilled Labor [10.89 h]; Equipment Opreator [1.09 h]; Boom Truck [1.09 h]; Wash out chambers - PT [0.55 nr] | 10,309.75 | C032 | Z7 | CONS | PT | Installation | bef |
| RHD4CZ7C032PT2401 |  | Backfilling works for Wash out Valve Chambers for Potable Water Network - (RD-C-3/2)-Z7-C032-PT | 2d | 2027-06-08 | 2027-06-09 | RHD4CZ7C032PT2301 | Skilled labor [5.45 h]; Unskilled Labor [10.89 h]; Equipment Opreator [1.09 h]; Water Truck [0.54 h]; Dump Truck [0.54 h]; Wash out chambers - PT [0.1 nr] | 1,874.5 | C032 | Z7 | CONS | PT | Backfilling Works | bef |
|  | 6290 | **RHD4-02-002-C032-(PT)-Wash out Valves** |  | 2027-06-08 | 2027-06-12 |  |  |  |  |  |  |  |  |  |
| RHD4CZ7C032PT3102 |  | Installation for Wash out Valves for Potable Water Network - (RD-C-3/2)-Z7-C032-PT | 2d | 2027-06-08 | 2027-06-09 | RHD4PRSHLDOSPT1200, RHD4PRSHLSTAGPT1200, RHD4CZ7C032PT2301 | Unskilled Labor [5.45 h]; Plumber [5.45 h]; Wash out valve diameter 100 mm - PT [0.9 nr] | 3,373.2 | C032 | Z7 | CONS | PT | Installation | bef |
| RHD4CZ7C032PT3202 |  | Stem and Service box for Wash out Valves for Potable Water Network - (RD-C-3/2)-Z7-C032-PT | 2d | 2027-06-10 | 2027-06-12 | RHD4PRSHLDOSPT1300, RHD4PRSHLSTAGPT1300, RHD4CZ7C032PT3102, RHD4CZ7C032PT2401 | Unskilled Labor [5.45 h]; Plumber [5.45 h]; Wash out valve diameter 100 mm - PT [0.1 nr] | 374.8 | C032 | Z7 | CONS | PT | Stem and Service box | bef |
|  | 6293 | **RHD4-02-002-C032-(PT)-Fire Hydrant** |  | 2027-06-13 | 2027-06-23 |  |  |  |  |  |  |  |  |  |
| RHD4CZ7C032PT4100 |  | Excavation and Bedding and Pipe Installation for Fire Hydrant - (RD-C-3/2)-Z7-C032-PT | 2d | 2027-06-13 | 2027-06-14 | RHD4ENSDZ7APPPT130, RHD4CZ7C032PT3202 | Skilled labor [16.34 h]; Unskilled Labor [16.34 h]; Plumber [16.34 h]; Equipment Opreator [8.17 h]; Excavator-Poclain [8.17 h]; 3-outlet fire hydrant (2 x 2.5 inch and 1 x 4.5 inch) in the form of a separate dry vacuum cylinder [0.3 nr] | 3,786 | C032 | Z7 | CONS | PT | Excavation | bef |
| RHD4CZ7C032PT4200 |  | Valve Installation for Fire Hydrant - (RD-C-3/2)-Z7-C032-PT | 2d | 2027-06-15 | 2027-06-16 | RHD4CZ7C032PT4100 | Unskilled Labor [10.89 h]; Plumber [10.89 h]; 3-outlet fire hydrant (2 x 2.5 inch and 1 x 4.5 inch) in the form of a separate dry vacuum cylinder [0.6 nr] | 7,572 | C032 | Z7 | CONS | PT | Valve | bef |
| RHD4CZ7C032PT4300 |  | Stem for Fire Hydrant - (RD-C-3/2)-Z7-C032-PT | 2d | 2027-06-17 | 2027-06-19 | RHD4CZ7C032PT4200 | Unskilled Labor [10.89 h]; Plumber [10.89 h]; 3-outlet fire hydrant (2 x 2.5 inch and 1 x 4.5 inch) in the form of a separate dry vacuum cylinder [0.9 nr] | 11,358 | C032 | Z7 | CONS | PT | Stem | bef |
| RHD4CZ7C032PT4400 |  | Fire Installation for Fire Hydrant - (RD-C-3/2)-Z7-C032-PT | 2d | 2027-06-20 | 2027-06-21 | RHD4PRSHLDOSPT1500, RHD4PRSHLSTAGPT1500, RHD4CZ7C032PT4300, RHD4CZ7C032PT2401 | Unskilled Labor [10.89 h]; Plumber [10.89 h]; Equipment Opreator [10.89 h]; Boom Truck [10.89 h]; 3-outlet fire hydrant (2 x 2.5 inch and 1 x 4.5 inch) in the form of a separate dry vacuum cylinder [1.05 nr] | 13,251 | C032 | Z7 | CONS | PT | Fire | bef |
| RHD4CZ7C032PT4500 |  | Protection Barriers for Fire Hydrant - (RD-C-3/2)-Z7-C032-PT | 2d | 2027-06-22 | 2027-06-23 | RHD4CZ7C032PT4400, RHD4CZ7C032PT3200 | Unskilled Labor [6.53 h]; Plumber [6.53 h]; 3-outlet fire hydrant (2 x 2.5 inch and 1 x 4.5 inch) in the form of a separate dry vacuum cylinder [0.15 nr] | 1,893 | C032 | Z7 | CONS | PT | Protection Barriers | bef |
|  | 6294 | **RHD4-02-002-C032-(PT)-Concrete Encasement** |  | 2027-05-29 | 2027-06-02 |  |  |  |  |  |  |  |  |  |
| RHD4CZ7C032PT5100 |  | Pipe Encasement for Potable Pipelines - (RD-C-3/2)-Z7-C032-PT | 5d | 2027-05-29 | 2027-06-02 | RHD4CZ7C032PT1302 FF, RHD4CZ7C032PT1301 FF, RHD4CZ7C032PT1302 SS, RHD4CZ7C032PT1301 SS, RHD4CZ7C032PT1202, RHD4CZ7C032PT1201 | Skilled labor [46.4 h]; Unskilled Labor [46.4 h]; Equipment Opreator [51.08 h]; Concrete Mixer Truck [4.68 h]; Dump Truck [46.4 h]; Pipe Encasement - PT [21.31 m3] | 26,126.06 | C032 | Z7 | CONS | PT | Pipe Encasement | bef |

| ID | WBS | Activity | Duration | Start | Finish | Predecessors | Resources | Cost | RDH4-01-001-Road and Block Names-1 | RDH4-01-001-Zones-1 | RDH4-01-001-Phases-1 | RDH4-01-001-Networks-1 | RDH4-01-001-Work Method-1 | RDH4-01-001-MENEM |
| --- | --- | --- | --- | --- | --- | --- | --- | --- | --- | --- | --- | --- | --- | --- |
|  | 1755 | **RHD4-02-002-Z7-C032-Irrigation Network - IRR** |  | 2027-05-27 | 2027-06-19 |  |  |  |  |  |  |  |  |  |
|  | 1770 | **RHD4-02-002-C032-(IRR)-Air Valves** |  | 2027-06-03 | 2027-06-16 |  |  |  |  |  |  |  |  |  |
| RHD4CZ7C032IRR3103 |  | Installation for Air Valves for Irrigation Network - (RD-C-3/2)-Z7-C032-IRR | 2d | 2027-06-03 | 2027-06-05 | RHD4CZ7C032IRR2302 | Unskilled Labor [5.45 h]; Plumber [5.45 h]; Air valve diameter 50 mm - TSE [0.9 nr] | 4,427.1 | C032 | Z7 | CONS | IRR | Installation | bef |
| RHD4CZ7C032IRR3203 |  | Stem and Service box for Air Valves for Irrigation Network - (RD-C-3/2)-Z7-C032-IRR | 2d | 2027-06-15 | 2027-06-16 | RHD4CZ7C032IRR3103, RHD4CZ7C032IRR2402 | Unskilled Labor [5.45 h]; Plumber [5.45 h]; Air valve diameter 50 mm - TSE [0.1 nr] | 491.9 | C032 | Z7 | CONS | IRR | Stem and Service box | bef |
|  | 6107 | **RHD4-02-002-C032-(IRR)-HDPE Pipes - 160 mm diameter** |  | 2027-05-27 | 2027-06-16 |  |  |  |  |  |  |  |  |  |
| RHD4CZ7C032IRR1100 |  | Excavation works for HDPE Pipline 160 mm - (RD-C-3/2)-Z7-C032-IRR | 4d | 2027-05-27 | 2027-05-31 | RHD4CZ7C032PT1301 FF | Skilled labor [42.15 h]; Unskilled Labor [42.15 h]; Equipment Opreator [50.64 h]; Excavator-Poclain [42.15 h]; Dump Truck [8.39 h]; HDPE (160mm Diameter) - TSE - Depth: less than 1.5m [50.6 m]; HDPE (160mm Diameter) - TSE - Depth: more than 1.51m [11.25 m] | 7,922.55 | C032 | Z7 | CONS | IRR | Excavation | bef |
| RHD4CZ7C032IRR1200 |  | Bedding works for HDPE Pipline 160 mm - (RD-C-3/2)-Z7-C032-IRR | 4d | 2027-06-01 | 2027-06-05 | RHD4CZ7C032IRR1100 | Skilled labor [33 h]; Unskilled Labor [66 h]; Equipment Opreator [66 h]; Excavator-Poclain [33 h]; Dump Truck [33 h]; HDPE (160mm Diameter) - TSE - Depth: less than 1.5m [25.3 m]; HDPE (160mm Diameter) - TSE - Depth: more than 1.51m [3.75 m] | 3,678.15 | C032 | Z7 | CONS | IRR | Bedding | bef |
| RHD4CZ7C032IRR1300 |  | Installing for HDPE Pipline 160 mm - (RD-C-3/2)-Z7-C032-IRR | 4d | 2027-06-06 | 2027-06-09 | RHD4CZ7C032IRR1200 | Unskilled Labor [84.4 h]; Plumber [42.15 h]; Equipment Opreator [42.15 h]; Boom Truck [42.15 h]; HDPE (160mm Diameter) - TSE - Depth: less than 1.5m [227.7 m]; HDPE (160mm Diameter) - TSE - Depth: more than 1.51m [30.01 m] | 32,538.61 | C032 | Z7 | CONS | IRR | Installation | bef |
| RHD4CZ7C032IRR1400 |  | Primary Test for HDPE Pipline 160 mm - (RD-C-3/2)-Z7-C032-IRR | 2d | 2027-06-10 | 2027-06-12 | RHD4CZ7C032IRR1300 | Unskilled Labor [13.72 h]; Plumber [13.72 h]; Equipment Opreator [13.72 h]; Water Truck [13.72 h]; HDPE (160mm Diameter) - TSE - Depth: less than 1.5m [101.2 m]; HDPE (160mm Diameter) - TSE - Depth: more than 1.51m [15 m] | 14,712.6 | C032 | Z7 | CONS | IRR | Primary Test | bef |
| RHD4CZ7C032IRR1500 |  | Backfilling and warning tape works for HDPE Pipline 160 mm - (RD-C-3/2)-Z7-C032-IRR | 4d | 2027-06-13 | 2027-06-16 | RHD4CZ7C032IRR1400 | Skilled labor [33 h]; Unskilled Labor [66 h]; Equipment Opreator [66 h]; Excavator-Poclain [33 h]; Dump Truck [33 h]; HDPE (160mm Diameter) - TSE - Depth: less than 1.5m [101.2 m]; HDPE (160mm Diameter) - TSE - Depth: more than 1.51m [15 m] | 14,712.6 | C032 | Z7 | CONS | IRR | Backfilling | bef |
|  | 6115 | **RHD4-02-002-C032-(IRR)-Gate Valves (Direct Buried)** |  | 2027-06-08 | 2027-06-19 |  |  |  |  |  |  |  |  |  |
| RHD4CZ7C032IRR3100 |  | Installation for Direct Buried Gate Valves - (RD-C-3/2)-Z7-C032-IRR | 2d | 2027-06-08 | 2027-06-09 | RHD4CZ7C032IRR1300 SS, RHD4CZ7C032IRR1300 FF | Unskilled Labor [21.78 h]; Plumber [21.78 h]; Gate valves dia 100 mm - TSE [3.6 nr] | 5,688 | C032 | Z7 | CONS | IRR | Installation | bef |
| RHD4CZ7C032IRR3200 |  | Stem and Service box for Direct Buried Gate Valves - (RD-C-3/2)-Z7-C032-IRR | 2d | 2027-06-17 | 2027-06-19 | RHD4CZ7C032IRR3100, RHD4CZ7C032IRR1500 | Unskilled Labor [21.78 h]; Plumber [21.78 h]; Gate valves dia 100 mm - TSE [0.4 nr] | 632 | C032 | Z7 | CONS | IRR | Stem and Service box | bef |
|  | 6685 | **RHD4-02-002-C032-(IRR)-Wash out Chamber** |  | 2027-05-27 | 2027-06-05 |  |  |  |  |  |  |  |  |  |
| RHD4CZ7C032IRR2101 |  | Excavation and Bedding for Wash out Chamber for Irrigation Network - (RD-C-3/2)-Z7-C032-IRR | 2d | 2027-05-27 | 2027-05-29 | RHD4CZ7C032IRR1100 SS | Skilled labor [5.45 h]; Unskilled Labor [5.45 h]; Equipment Opreator [1.09 h]; Excavator-Poclain [0.54 h]; Dump Truck [0.54 h]; Wash out chambers - TSE [0.25 nr] | 4,686.25 | C032 | Z7 | CONS | IRR | Excavation and Bedding | bef |
| RHD4CZ7C032IRR2201 |  | PC works for Wash out Chamber for Irrigation Network - (RD-C-3/2)-Z7-C032-IRR | 2d | 2027-05-30 | 2027-05-31 | RHD4CZ7C032IRR2101 | Skilled labor [5.45 h]; Unskilled Labor [10.89 h]; Equipment Opreator [0.54 h]; Concrete Pump [0.54 h]; Wash out chambers - TSE [0.1 nr] | 1,874.5 | C032 | Z7 | CONS | IRR | PC Works | bef |
| RHD4CZ7C032IRR2301 |  | Installation for Wash out Chamber for Irrigation Network - (RD-C-3/2)-Z7-C032-IRR | 2d | 2027-06-01 | 2027-06-02 | RHD4CZ7C032IRR2201 | Skilled labor [5.45 h]; Unskilled Labor [10.89 h]; Equipment Opreator [1.09 h]; Boom Truck [1.09 h]; Wash out chambers - TSE [0.55 nr] | 10,309.75 | C032 | Z7 | CONS | IRR | Installation | bef |
| RHD4CZ7C032IRR2401 |  | Backfilling works for Wash out Chamber for Irrigation Network - (RD-C-3/2)-Z7-C032-IRR | 2d | 2027-06-03 | 2027-06-05 | RHD4CZ7C032IRR2301 | Skilled labor [5.45 h]; Unskilled Labor [10.89 h]; Equipment Opreator [1.09 h]; Water Truck [0.54 h]; Dump Truck [0.54 h]; Wash out chambers - TSE [0.1 nr] | 1,874.5 | C032 | Z7 | CONS | IRR | Backfilling Works | bef |
|  | 6686 | **RHD4-02-002-C032-(IRR)-Wash out Valves** |  | 2027-06-03 | 2027-06-07 |  |  |  |  |  |  |  |  |  |
| RHD4CZ7C032IRR3102 |  | Installation for Wash out Valve for Irrigation Network - (RD-C-3/2)-Z7-C032-IRR | 2d | 2027-06-03 | 2027-06-05 | RHD4CZ7C032IRR2301 | Unskilled Labor [5.45 h]; Plumber [5.45 h]; Wash out valve diameter 100 mm - TSE [0.9 nr] | 3,373.2 | C032 | Z7 | CONS | IRR | Installation | bef |
| RHD4CZ7C032IRR3202 |  | Stem and Service box for Wash out Valve for Irrigation Network - (RD-C-3/2)-Z7-C032-IRR | 2d | 2027-06-06 | 2027-06-07 | RHD4CZ7C032IRR3102, RHD4CZ7C032IRR2401 | Unskilled Labor [5.45 h]; Plumber [5.45 h]; Wash out valve diameter 100 mm - TSE [0.1 nr] | 374.8 | C032 | Z7 | CONS | IRR | Stem and Service box | bef |
|  | 1769 | **RHD4-02-002-C032-(IRR)-Air Valve Chamber** |  | 2027-05-27 | 2027-06-14 |  |  |  |  |  |  |  |  |  |
| RHD4CZ7C032IRR2102 |  | Excavation and Bedding for Valve Chamber for Irrigation Network - (RD-C-3/2)-Z7-C032-IRR | 2d | 2027-05-27 | 2027-05-29 | RHD4CZ7C032IRR2101 SS | Skilled labor [5.45 h]; Unskilled Labor [5.45 h]; Equipment Opreator [1.09 h]; Excavator-Poclain [0.54 h]; Dump Truck [0.54 h]; Air Valve chambers - TSE [0.25 nr] | 1,193 | C032 | Z7 | CONS | IRR | Excavation and Bedding | bef |
| RHD4CZ7C032IRR2202 |  | PC works for Valve Chamber for Irrigation Network - (RD-C-3/2)-Z7-C032-IRR | 2d | 2027-05-30 | 2027-05-31 | RHD4CZ7C032IRR2102 | Skilled labor [5.45 h]; Unskilled Labor [10.89 h]; Equipment Opreator [0.54 h]; Concrete Pump [0.54 h]; Air Valve chambers - TSE [0.1 nr] | 477.2 | C032 | Z7 | CONS | IRR | PC Works | bef |
| RHD4CZ7C032IRR2302 |  | Installation for Valve Chamber for Irrigation Network - (RD-C-3/2)-Z7-C032-IRR | 2d | 2027-06-01 | 2027-06-02 | RHD4CZ7C032IRR2202 | Skilled labor [5.45 h]; Unskilled Labor [10.89 h]; Equipment Opreator [1.09 h]; Boom Truck [1.09 h]; Air Valve chambers - TSE [0.55 nr] | 2,624.6 | C032 | Z7 | CONS | IRR | Installation | bef |
| RHD4CZ7C032IRR2402 |  | Backfilling works for Valve Chamber for Irrigation Network - (RD-C-3/2)-Z7-C032-IRR | 2d | 2027-06-13 | 2027-06-14 | RHD4CZ7C032IRR2302, RHD4CZ7C032IRR5100 | Skilled labor [5.45 h]; Unskilled Labor [10.89 h]; Equipment Opreator [1.09 h]; Water Truck [0.54 h]; Dump Truck [0.54 h]; Air Valve chambers - TSE [0.1 nr] | 477.2 | C032 | Z7 | CONS | IRR | Backfilling Works | bef |

| ID | WBS | Activity | Duration | Start | Finish | Predecessors | Resources | Cost | RDH4-01-001-Road and Block Names-1 | RDH4-01-001-Zones-1 | RDH4-01-001-Phases-1 | RDH4-01-001-Networks-1 | RDH4-01-001-Work Method-1 | RDH4-01-001-MENEM |
| --- | --- | --- | --- | --- | --- | --- | --- | --- | --- | --- | --- | --- | --- | --- |
|  | 1771 | **RHD4-02-002-C032-(IRR)-Concrete Encasement** |  | 2027-06-10 | 2027-06-12 |  |  |  |  |  |  |  |  |  |
| RHD4CZ7C032IRR5100 |  | Pipe Encasement for Irrigation Pipelines - (RD-C-3/2)-Z7-C032-IRR | 2d | 2027-06-10 | 2027-06-12 | RHD4CZ7C032IRR1300 | Skilled labor [17.86 h]; Unskilled Labor [17.86 h]; Equipment Opreator [19.6 h]; Concrete Mixer Truck [1.74 h]; Dump Truck [17.86 h]; Pipe Encasement - TSE [8.19 m3] | 10,040.94 | C032 | Z7 | CONS | IRR | Pipe Encasement | bef |
|  | 6329 | **RHD4-02-002-Z7-C032-Medium Voltage Network - MV** |  | 2027-03-25 | 2027-08-16 |  |  |  |  |  |  |  |  |  |
|  | 6330 | **RHD4-02-002-C032-(MV)-Medium Voltage cable trench** |  | 2027-07-14 | 2027-08-16 |  |  |  |  |  |  |  |  |  |
| RHD4CZ7C032MV1100 |  | Excavation for Medium Voltage Trench - (RD-C-3/2)-Z7-C032-MV | 6d | 2027-07-14 | 2027-07-20 | RHD4ENSDZ7APPMV150, RHD4CZ7C032RD3100, RHD4CZ8A011MV1100 | Skilled labor [54.67 h]; Unskilled Labor [109.34 h]; Equipment Opreator [163.9 h]; Excavator-Poclain [54.67 h]; Dump Truck [109.34 h]; Excavation for Trench size 60cm wide and 80cm deep ( for 2 cables) [105.3 m3]; Excavation for Trench size 120cm wide and 80cm deep (for 4 cables) [130.26 m3]; Excavation for Trench size 240cm wide and 80cm deep (for 9 cables) [55.42 m3]; Excavation for Trench size 300cm wide and 80cm deep (for 10 cables) [60.29 m3] | 3,512.61 | C032 | Z7 | CONS | MV | Excavation | AFT |
| RHD4CZ7C032MV1200 |  | Trench Backfilling for Medium Voltage Network - (RD-C-3/2)-Z7-C032-MV | 6d | 2027-08-10 | 2027-08-16 | RHD4CZ7C032MV3300 | Skilled labor [54.67 h]; Unskilled Labor [54.67 h]; Equipment Opreator [109.34 h]; Dump Truck [109.34 h]; Excavation for Trench size 60cm wide and 80cm deep ( for 2 cables) [45.13 m3]; Excavation for Trench size 120cm wide and 80cm deep (for 4 cables) [55.82 m3]; Excavation for Trench size 240cm wide and 80cm deep (for 9 cables) [23.75 m3]; Excavation for Trench size 300cm wide and 80cm deep (for 10 cables) [25.84 m3] | 1,505.39 | C032 | Z7 | CONS | MV | Backfilling | AFT |
|  | 6331 | **RHD4-02-002-C032-(MV)-Medium Voltage duct banks** |  | 2027-03-25 | 2027-04-28 |  |  |  |  |  |  |  |  |  |
| RHD4CZ7C032MV2100 |  | Excavation of Duct Banks for Medium Voltage Network - (RD-C-3/2)-Z7-C032-MV | 8d | 2027-03-25 | 2027-04-03 | RHD4ENSDZ7APPMV150, RHD4CZ7C032RD3100 | Unskilled Labor [79.39 h]; Equipment Opreator [158.89 h]; Excavator-Poclain [79.39 h]; Dump Truck [79.39 h]; Duct bank for MV cables UPVC (4xø150mm) [4.1 m]; Duct bank for MV cables UPVC (6xø150mm) [2.71 m]; Duct bank for MV cables UPVC (12xø150mm) [4.14 m] | 8,187.16 | C032 | Z7 | CONS | MV | Excavation | bef |
| RHD4CZ7C032MV2200 |  | Installation of Duct Banks for Medium Voltage Network - (RD-C-3/2)-Z7-C032-MV | 11d | 2027-04-04 | 2027-04-15 | RHD4PRSHLDOSMV1000, RHD4PRSHLSTAGMV1000, RHD4CZ7C032MV2100 | Unskilled Labor [119.14 h]; Equipment Opreator [238.28 h]; Excavator-Poclain [119.14 h]; Dump Truck [119.14 h]; Duct bank for MV cables UPVC (4xø150mm) [4.1 m]; Duct bank for MV cables UPVC (6xø150mm) [2.71 m]; Duct bank for MV cables UPVC (12xø150mm) [4.14 m] | 8,187.16 | C032 | Z7 | CONS | MV | Installing | bef |
| RHD4CZ7C032MV2300 |  | Pouring of Duct Banks for Medium Voltage Network - (RD-C-3/2)-Z7-C032-MV | 8d | 2027-04-17 | 2027-04-25 | RHD4CZ7C032MV2200 | Unskilled Labor [79.39 h]; Equipment Opreator [158.89 h]; Excavator-Poclain [79.39 h]; Dump Truck [79.39 h]; Duct bank for MV cables UPVC (4xø150mm) [26.63 m]; Duct bank for MV cables UPVC (6xø150mm) [17.6 m]; Duct bank for MV cables UPVC (12xø150mm) [26.89 m] | 53,209 | C032 | Z7 | CONS | MV | Pouring | bef |
| RHD4CZ7C032MV2400 |  | Backfilling of Duct Banks for Medium Voltage Network - (RD-C-3/2)-Z7-C032-MV | 3d | 2027-04-26 | 2027-04-28 | RHD4CZ7C032MV2300 | Unskilled Labor [59.57 h]; Equipment Opreator [119.14 h]; Excavator-Poclain [59.57 h]; Dump Truck [59.57 h]; Duct bank for MV cables UPVC (4xø150mm) [6.15 m]; Duct bank for MV cables UPVC (6xø150mm) [4.06 m]; Duct bank for MV cables UPVC (12xø150mm) [6.2 m] | 12,273.87 | C032 | Z7 | CONS | MV | Backfilling | bef |
|  | 6332 | **RHD4-02-002-C032-(MV)-Medium Voltage cables 3Cx 500 mm²** |  | 2027-07-21 | 2027-08-09 |  |  |  |  |  |  |  |  |  |
| RHD4CZ7C032MV3100 |  | Installation of Medium Voltage Cables 3Cx 500 mm² - (RD-C-3/2)-Z7-C032-MV | 7d | 2027-07-21 | 2027-07-28 | RHD4PRSHLDOSMV1100, RHD4ENMSMV2000, RHD4ENMSMV2010, RHD4PRSHLSTAGMV1100, RHD4CZ7C032MV1100 | Skilled labor [69.04 h]; Unskilled Labor [276 h]; Electrician [137.98 h]; Equipment Opreator [207.03 h]; Boom Truck [69.04 h]; Cable Laying Machine [137.98 h]; Cable 13.8 kV 3Cx 500 mm² Al/XLPE,/LLDPE / Unarmored [2850.89 m] | 453,292.15 | C032 | Z7 | CONS | MV | Installation | AFT |
| RHD4CZ7C032MV3200 |  | Joints Installation of Medium Voltage Cables 3Cx 500 mm² - (RD-C-3/2)-Z7-C032-MV | 3d | 2027-07-29 | 2027-08-01 | RHD4PRSHLDOSMV1300, RHD4PRSHLSTAGMV1300, RHD4CZ7C032MV3100, RHD4CZ5A014IRR1503 | Skilled labor [27.2 h]; Unskilled Labor [108.9 h]; Electrician [54.45 h]; Equipment Opreator [27.2 h]; Boom Truck [27.2 h]; Straight joints cables for 13.8 kv 3Cx 500 mm², Al /XLPE/LLDPE [5 Unit] | 16,240 | C032 | Z7 | CONS | MV | Joints Installation | AFT |
| RHD4CZ7C032MV3300 |  | Testing of Medium Voltage Cables 3Cx 500 mm² - (RD-C-3/2)-Z7-C032-MV | 7d | 2027-08-02 | 2027-08-09 | RHD4CZ7C032MV3200 | Skilled labor [69.04 h]; Unskilled Labor [276 h]; Electrician [137.98 h]; Cable 13.8 kV 3Cx 500 mm² Al/XLPE,/LLDPE / Unarmored [316.77 m] | 50,365.79 | C032 | Z7 | CONS | MV | Testing | AFT |
|  | 6336 | **RHD4-02-002-Z7-C032-Low Voltage Network - LV** |  | 2027-03-14 | 2027-05-01 |  |  |  |  |  |  |  |  |  |
|  | 6337 | **RHD4-02-002-C032-(LV)-Low Voltage duct banks** |  |  |  |  |  |  |  |  |  |  |  |  |
|  | 6338 | **RHD4-02-002-C032-(LV)-Low Voltage Drawpit** |  | 2027-03-14 | 2027-03-17 |  |  |  |  |  |  |  |  |  |
| RHD4CZ7C032LV5100 |  | Excavation of Drawpit size 900x900x1000mm for Low Voltage Network - (RD-C-3/2)-Z7-C032-LV | 2d | 2027-03-14 | 2027-03-15 | RHD4ENSDZ7APPLV160, RHD4CZ5C051PT1500 SS | Skilled labor [2.72 h]; Unskilled Labor [2.72 h]; Equipment Opreator [2.18 h]; Excavator-Poclain [1.09 h]; Dump Truck [1.09 h]; Drawpit with medium duty steel cover, size900x900x1000mm, [0.45 Unit] | 1,654.65 | C032 | Z7 | CONS | LV | Excavation | AFT |
| RHD4CZ7C032LV5200 |  | Installation of Drawpit size 900x900x1000mm for Low Voltage Network - (RD-C-3/2)-Z7-C032-LV | 2d | 2027-03-16 | 2027-03-17 | RHD4PRSHLDOSLV1400, RHD4PRSHLSTAGLV1400, RHD4CZ7C032LV5100 | Skilled labor [2.72 h]; Unskilled Labor [2.72 h]; Equipment Opreator [1.09 h]; Boom Truck [1.09 h]; Drawpit with medium duty steel cover, size900x900x1000mm, [2.55 Unit] | 9,376.35 | C032 | Z7 | CONS | LV | Installation | AFT |
|  | 6339 | **RHD4-02-002-C032-(LV)-Low Voltage cables** |  | 2027-03-18 | 2027-05-01 |  |  |  |  |  |  |  |  |  |
| RHD4CZ7C032LV3100 |  | Excavation for Low Voltage Cables for Low Voltage Network - (RD-C-3/2)-Z7-C032-LV | 3d | 2027-03-18 | 2027-03-21 | RHD4ENSDZ7APPLV160, RHD4CZ7C032LV5200 | Skilled labor [22.4 h]; Unskilled Labor [44.87 h]; Equipment Opreator [44.87 h]; Excavator-Poclain [22.4 h]; Boom Truck [22.4 h]; Cable, Copper 4x185mm2/ CU/XLPE/PVC [5.6 m]; Cable, Copper 4x70mm2/ CU/XLPE/PVC [2.55 m]; Cable, Copper 3x10mm2/ CU/XLPE/SWA/PVC [94.85 m] | 6,291.78 | C032 | Z7 | CONS | LV | Excavation | AFT |
| RHD4CZ7C032LV3200 |  | Cable Laying of Low Voltage Cables for Low Voltage Network - (RD-C-3/2)-Z7-C032-LV | 2d | 2027-03-22 | 2027-03-23 | RHD4PRSHLDOSLV1100, RHD4ENMSLV2000, RHD4ENMSLV2010, RHD4PRSHLSTAGLV1100, RHD4CZ7C032LV3100 | Skilled labor [18.73 h]; Unskilled Labor [74.82 h]; Electrician [37.35 h]; Equipment Opreator [56.09 h]; Boom Truck [18.73 h]; Cable Laying Machine [37.35 h]; Cable, Copper 4x185mm2/ CU/XLPE/PVC [16.8 m]; Cable, Copper 4x70mm2/ CU/XLPE/PVC [7.66 m]; Cable, Copper 3x10mm2/ CU/XLPE/SWA/PVC [284.56 m] | 18,877.02 | C032 | Z7 | CONS | LV | Cable Laying | AFT |
| RHD4CZ7C032LV3300 |  | Warning tape and Backfill for Low Voltage Cables for Low Voltage Network - (RD-C-3/2)-Z7-C032-LV | 2d | 2027-03-24 | 2027-03-25 | RHD4CZ7C032LV3200 | Skilled labor [18.73 h]; Unskilled Labor [74.82 h]; Electrician [37.35 h]; Equipment Opreator [18.73 h]; Boom Truck [18.73 h]; Cable, Copper 4x185mm2/ CU/XLPE/PVC [4.2 m]; Cable, Copper 4x70mm2/ CU/XLPE/PVC [1.92 m]; Cable, Copper 3x10mm2/ CU/XLPE/SWA/PVC [71.14 m] | 4,720.1 | C032 | Z7 | CONS | LV | Warning tape and Backfill | AFT |
| RHD4CZ7C032LV3400 |  | Testing of Low Voltage Cables for Low Voltage Network - (RD-C-3/2)-Z7-C032-LV | 2d | 2027-04-29 | 2027-05-01 | RHD4CZ7C032LV3300, RHD4CZ7C032MV2400 | Skilled labor [11.2 h]; Unskilled Labor [44.87 h]; Electrician [22.4 h]; Equipment Opreator [11.2 h]; Boom Truck [11.2 h]; Cable, Copper 4x185mm2/ CU/XLPE/PVC [1.4 m]; Cable, Copper 4x70mm2/ CU/XLPE/PVC [0.64 m]; Cable, Copper 3x10mm2/ CU/XLPE/SWA/PVC [23.71 m] | 1,573.37 | C032 | Z7 | CONS | LV | Testing | AFT |

| ID | WBS | Activity | Duration | Start | Finish | Predecessors | Resources | Cost | RDH4-01-001-Road and Block Names-1 | RDH4-01-001-Zones-1 | RDH4-01-001-Phases-1 | RDH4-01-001-Networks-1 | RDH4-01-001-Work Method-1 | RDH4-01-001-MENEM |
| --- | --- | --- | --- | --- | --- | --- | --- | --- | --- | --- | --- | --- | --- | --- |
|  | 4259 | **RHD4-02-002-C032-(LV)-Low Voltage Distribution Pillars** |  |  |  |  |  |  |  |  |  |  |  |  |
|  | 6342 | **RHD4-02-002-Z7-C032-Street Lighting Network - SL** |  | 2027-02-23 | 2027-06-29 |  |  |  |  |  |  |  |  |  |
|  | 6343 | **RHD4-02-002-C032-(SL)-Street Lighting duct banks** |  | 2027-02-23 | 2027-03-16 |  |  |  |  |  |  |  |  |  |
| RHD4CZ7C032SL2100 |  | Excavation of Duct Banks for Street Lighting Network - (RD-C-3/2)-Z7-C032-SL | 4d | 2027-02-23 | 2027-02-27 | RHD4ENSDZ7APPSL170, RHD4CZ5C051SW3300 | Skilled labor [35.39 h]; Unskilled Labor [35.39 h]; Equipment Opreator [70.79 h]; Excavator-Poclain [35.39 h]; Dump Truck [35.39 h]; Road Crossing Duct for Street Lighting cables UPVC (2x?110mm) [4.88 m] | 985.21 | C032 | Z7 | CONS | SL | Excavation | bef |
| RHD4CZ7C032SL2200 |  | Installation of Duct Banks for Street Lighting Network - (RD-C-3/2)-Z7-C032-SL | 5d | 2027-02-28 | 2027-03-04 | RHD4PRSHLDOSSL1000, RHD4PRSHLSTAGSL1000, RHD4CZ7C032SL2100 | Carpenter [5.34 h]; Skilled labor [53.14 h]; Unskilled Labor [53.14 h]; Steel Fixer [5.34 h]; Road Crossing Duct for Street Lighting cables UPVC (2x?110mm) [4.88 m] | 985.21 | C032 | Z7 | CONS | SL | Installing | bef |
| RHD4CZ7C032SL2300 |  | Pouring of Duct Banks for Street Lighting Network - (RD-C-3/2)-Z7-C032-SL | 4d | 2027-03-06 | 2027-03-13 | RHD4CZ7C032SL2200 | Skilled labor [35.39 h]; Unskilled Labor [35.39 h]; Equipment Opreator [14.16 h]; Concrete Mixer Truck [7.08 h]; Concrete Pump [7.08 h]; Road Crossing Duct for Street Lighting cables UPVC (2x?110mm) [31.7 m] | 6,403.4 | C032 | Z7 | CONS | SL | Pouring | bef |
| RHD4CZ7C032SL2400 |  | Backfilling of Duct Banks for Street Lighting Network - (RD-C-3/2)-Z7-C032-SL | 3d | 2027-03-14 | 2027-03-16 | RHD4CZ7C032SL2300 | Skilled labor [26.57 h]; Unskilled Labor [26.57 h]; Equipment Opreator [10.67 h]; Excavator-Poclain [10.67 h]; Road Crossing Duct for Street Lighting cables UPVC (2x?110mm) [7.32 m] | 1,477.82 | C032 | Z7 | CONS | SL | Backfilling | bef |
|  | 6344 | **RHD4-02-002-C032-(SL)-Street Lighting Drawpit** |  | 2027-05-09 | 2027-05-12 |  |  |  |  |  |  |  |  |  |
| RHD4CZ7C032SL5100 |  | Excavation of Drawpit size 600x600x900mm for Street Lighting Network - (RD-C-3/2)-Z7-C032-SL | 2d | 2027-05-09 | 2027-05-10 | RHD4ENSDZ7APPSL170, RHD4CZ7C032SL2300, RHD4CZ7C032LV3400, RHD4CZ9C071ST1505, RHD4CZ7C013MV3300 | Skilled labor [1.85 h]; Unskilled Labor [1.85 h]; Equipment Opreator [1.42 h]; Excavator-Poclain [0.8 h]; Dump Truck [0.8 h]; Drawpit with medium duty steel cover, size600x600x900mm, [0.3 Unit] | 735.3 | C032 | Z7 | CONS | SL | Excavation | AFT |
| RHD4CZ7C032SL5200 |  | Installation of Drawpit size 600x600x900mm for Street Lighting Network - (RD-C-3/2)-Z7-C032-SL | 2d | 2027-05-11 | 2027-05-12 | RHD4PRSHLDOSSL1400, RHD4PRSHLSTAGSL1400, RHD4CZ7C032SL5100 | Skilled labor [1.85 h]; Unskilled Labor [1.85 h]; Equipment Opreator [0.8 h]; Boom Truck [0.8 h]; Drawpit with medium duty steel cover, size600x600x900mm, [1.7 Unit] | 4,166.7 | C032 | Z7 | CONS | SL | Installation | AFT |
|  | 6345 | **RHD4-02-002-C032-(SL)-Street Lighting cables** |  | 2027-05-13 | 2027-05-27 |  |  |  |  |  |  |  |  |  |
| RHD4CZ7C032SL3100 |  | Excavation for Street Lighting Cables for Street Lighting Network - (RD-C-3/2)-Z7-C032-SL | 3d | 2027-05-13 | 2027-05-20 | RHD4ENSDZ7APPSL170, RHD4CZ7C032SL5200 | Skilled labor [24.94 h]; Unskilled Labor [49.88 h]; Equipment Opreator [49.88 h]; Excavator-Poclain [24.94 h]; Boom Truck [24.94 h]; Cable, Copper 4x10mm2/ CU/XLPE/SWA/PVC + 1x10mm2 CU/PVC [114.39 m] | 5,605.17 | C032 | Z7 | CONS | SL | Excavation | AFT |
| RHD4CZ7C032SL3200 |  | Cable Laying of Street Lighting Cables for Street Lighting Network - (RD-C-3/2)-Z7-C032-SL | 2d | 2027-05-22 | 2027-05-23 | RHD4PRSHLDOSSL1100, RHD4ENMSSL2000, RHD4ENMSSL2010, RHD4PRSHLSTAGSL1100, RHD4CZ7C032SL3100 | Skilled labor [20.8 h]; Unskilled Labor [83.09 h]; Electrician [41.49 h]; Equipment Opreator [62.29 h]; Boom Truck [20.8 h]; Cable Laying Machine [41.49 h]; Cable, Copper 4x10mm2/ CU/XLPE/SWA/PVC + 1x10mm2 CU/PVC [343.17 m] | 16,815.5 | C032 | Z7 | CONS | SL | Cable Laying | AFT |
| RHD4CZ7C032SL3300 |  | Warning tape and Backfill for Street Lighting Cables for Street Lighting Network - (RD-C-3/2)-Z7-C032-SL | 2d | 2027-05-24 | 2027-05-25 | RHD4CZ7C032SL3200 | Skilled labor [20.8 h]; Unskilled Labor [83.09 h]; Electrician [41.49 h]; Equipment Opreator [20.8 h]; Boom Truck [20.8 h]; Cable, Copper 4x10mm2/ CU/XLPE/SWA/PVC + 1x10mm2 CU/PVC [85.79 m] | 4,203.87 | C032 | Z7 | CONS | SL | Warning tape and Backfill | AFT |
| RHD4CZ7C032SL3400 |  | Testing of Street Lighting Cables for Street Lighting Network - (RD-C-3/2)-Z7-C032-SL | 2d | 2027-05-26 | 2027-05-27 | RHD4CZ7C032SL3300 | Skilled labor [12.41 h]; Unskilled Labor [49.88 h]; Electrician [24.94 h]; Equipment Opreator [12.41 h]; Boom Truck [12.41 h]; Cable, Copper 4x10mm2/ CU/XLPE/SWA/PVC + 1x10mm2 CU/PVC [28.6 m] | 1,401.4 | C032 | Z7 | CONS | SL | Testing | AFT |
|  | 6346 | **RHD4-02-002-C032-(SL)-Street Lighting Poles** |  | 2027-06-15 | 2027-06-29 |  |  |  |  |  |  |  |  |  |
| RHD4CZ7C032SL1100 |  | Excavation for RC Base for Lighting Poles for Street Lighting Network - (RD-C-3/2)-Z7-C032-SL | 2d | 2027-06-15 | 2027-06-16 | RHD4ENSDZ7APPSL170, RHD4CZ7C032SL3400, RHD4CZ9C071ST6100, RHD4CZ1L101ST7500 | Skilled labor [11.65 h]; Unskilled Labor [11.65 h]; Equipment Opreator [23.2 h]; Excavator-Poclain [11.65 h]; Dump Truck [11.65 h]; Lighting polesdouble arms, height of ( 12 ) meters [1.6 Unit] | 7,315.2 | C032 | Z7 | CONS | SL | Excavation | AFT |
| RHD4CZ7C032SL1200 |  | Installation for RC Base for Lighting Poles for Street Lighting Network - (RD-C-3/2)-Z7-C032-SL | 2d | 2027-06-17 | 2027-06-19 | RHD4CZ7C032SL1100 | Skilled labor [11.65 h]; Unskilled Labor [11.65 h]; Equipment Opreator [23.2 h]; Excavator-Poclain [11.65 h]; Dump Truck [11.65 h]; Lighting polesdouble arms, height of ( 12 ) meters [4 Unit] | 18,288 | C032 | Z7 | CONS | SL | RC Base | AFT |
| RHD4CZ7C032SL1300 |  | Backfill for RC Base for Lighting Poles for Street Lighting Network - (RD-C-3/2)-Z7-C032-SL | 2d | 2027-06-20 | 2027-06-21 | RHD4CZ7C032SL1200 | Skilled labor [11.65 h]; Unskilled Labor [11.65 h]; Equipment Opreator [23.2 h]; Excavator-Poclain [11.65 h]; Dump Truck [11.65 h]; Lighting polesdouble arms, height of ( 12 ) meters [0.8 Unit] | 3,657.6 | C032 | Z7 | CONS | SL | Backfill | AFT |
| RHD4CZ7C032SL1400 |  | Installation for Lighting Poles for Street Lighting Network - (RD-C-3/2)-Z7-C032-SL | 2d | 2027-06-22 | 2027-06-23 | RHD4PRSHLDOSSL1200, RHD4ENMSSL2000, RHD4ENMSSL2010, RHD4PRSHLSTAGSL1200, RHD4CZ7C032SL1300 | Skilled labor [17.42 h]; Unskilled Labor [17.42 h]; Electrician [17.42 h]; Equipment Opreator [17.42 h]; Boom Truck [17.42 h]; Lighting polesdouble arms, height of ( 12 ) meters [9.6 Unit] | 43,891.2 | C032 | Z7 | CONS | SL | Poles Installation | AFT |
| RHD4CZ7C032SL1500 |  | Luminaire Installation for Lighting Poles for Street Lighting Network - (RD-C-3/2)-Z7-C032-SL | 3d | 2027-06-27 | 2027-06-29 | RHD4PRSHLDOSSL1300, RHD4PRSHLSTAGSL1300, RHD4CZ7C032SL1400, RHD4CZ7C032SL6100 | Unskilled Labor [46.5 h]; Electrician [23.2 h]; Equipment Opreator [9.26 h]; Boom Truck [9.26 h]; Street Lighting( LED) Luminaire of Output ?18553 lumen [32 Unit] | 20,384 | C032 | Z7 | CONS | SL | Luminaire Installation | AFT |
|  | 6348 | **RHD4-02-002-C032-(SL)-Street Lighting Earthing System** |  | 2027-06-24 | 2027-06-26 |  |  |  |  |  |  |  |  |  |
| RHD4CZ7C032SL6100 |  | Installation of Earthing for Lighting Poles and Fedder Pillers for Street Lighting Network - (RD-C-3/2)-Z7-C032-SL | 2d | 2027-06-24 | 2027-06-26 | RHD4ENMSER2000, RHD4ENMSER2010, RHD4CZ7C032SL1400 | Skilled labor [2.18 h]; Unskilled Labor [2.18 h]; Equipment Opreator [4.36 h]; Excavator-Poclain [2.18 h]; Dump Truck [2.18 h]; Including lighting poles circuits - ER [3 Unit] | 1,839 | C032 | Z7 | CONS | SL | Installation | AFT |
|  | 6354 | **RHD4-02-002-Z7-C032-Telecommunications Network - TC** |  | 2027-02-20 | 2027-07-22 |  |  |  |  |  |  |  |  |  |
|  | 6355 | **RHD4-02-002-C032-(TC)-Telecommunications Ducts** |  | 2027-06-30 | 2027-07-22 |  |  |  |  |  |  |  |  |  |
| RHD4CZ7C032TC2100 |  | Excavation of HDPE Ducts for Telecom Network - (RD-C-3/2)-Z7-C032-TC | 6d | 2027-06-30 | 2027-07-06 | RHD4ENSDZ7APPTC190, RHD4CZ7C032SL1500 | Skilled labor [56.41 h]; Unskilled Labor [56.41 h]; Equipment Opreator [112.8 h]; Excavator-Poclain [56.41 h]; Dump Truck [56.41 h]; (6*50mm) HDPE ducts -TC [155.4 m] | 13,675.2 | C032 | Z7 | CONS | TC | Excavation | AFT |
| RHD4CZ7C032TC2200 |  | Installation of HDPE Ducts for Telecom Network - (RD-C-3/2)-Z7-C032-TC | 8d | 2027-07-07 | 2027-07-15 | RHD4PRSHLDOSTC1000, RHD4PRSHLSTAGTC1000, RHD4CZ7C032TC2100 | Carpenter [8.49 h]; Skilled labor [84.62 h]; Unskilled Labor [84.62 h]; Steel Fixer [8.49 h]; (6*50mm) HDPE ducts -TC [505.05 m] | 44,444.4 | C032 | Z7 | CONS | TC | Installing | AFT |
| RHD4CZ7C032TC2400 |  | Backfilling of HDPE Ducts for Telecom Network - (RD-C-3/2)-Z7-C032-TC | 6d | 2027-07-17 | 2027-07-22 | RHD4CZ7C032TC2200, RHD4CZ7C032TC5200 | Skilled labor [56.41 h]; Unskilled Labor [56.41 h]; Equipment Opreator [22.54 h]; Excavator-Poclain [22.54 h]; (6*50mm) HDPE ducts -TC [116.55 m] | 10,256.4 | C032 | Z7 | CONS | TC | Backfilling | AFT |

| ID | WBS | Activity | Duration | Start | Finish | Predecessors | Resources | Cost | RDH4-01-001-Road and Block Names-1 | RDH4-01-001-Zones-1 | RDH4-01-001-Phases-1 | RDH4-01-001-Networks-1 | RDH4-01-001-Work Method-1 | RDH4-01-001-MENEM |
| --- | --- | --- | --- | --- | --- | --- | --- | --- | --- | --- | --- | --- | --- | --- |
|  | 6356 | **RHD4-02-002-C032-(TC)-Telecommunications Manholes** |  | 2027-07-07 | 2027-07-13 |  |  |  |  |  |  |  |  |  |
| RHD4CZ7C032TC5100 |  | Excavation for Manholes for Telecom Network - (RD-C-3/2)-Z7-C032-TC | 3d | 2027-07-07 | 2027-07-10 | RHD4ENSDZ7APPTC190, RHD4CZ7C032TC2100 | Skilled labor [10.89 h]; Unskilled Labor [10.89 h]; Equipment Opreator [8.71 h]; Excavator-Poclain [4.36 h]; Dump Truck [4.36 h]; Manhole Type 1 - TC [0.3 nr]; Manhole Type 2 - TC [0.45 nr] | 5,055.75 | C032 | Z7 | CONS | TC | Excavation | AFT |
| RHD4CZ7C032TC5200 |  | Installation of Manholes for Telecom Network - (RD-C-3/2)-Z7-C032-TC | 3d | 2027-07-11 | 2027-07-13 | RHD4PRSHLDOSTC1200, RHD4PRSHLSTAGTC1200, RHD4CZ7C032TC5100, RHD4CZ7C032TC2200 SS | Skilled labor [10.89 h]; Unskilled Labor [10.89 h]; Equipment Opreator [4.36 h]; Boom Truck [4.36 h]; Manhole Type 1 - TC [1.7 nr]; Manhole Type 2 - TC [2.55 nr] | 28,649.25 | C032 | Z7 | CONS | TC | Installation | AFT |
|  | 6357 | **RHD4-02-002-C032-(TC)-Telecomminications Road Crossings** |  | 2027-02-20 | 2027-03-03 |  |  |  |  |  |  |  |  |  |
| RHD4CZ7C032TC3100 |  | Excavation for Road Crossings for Telecom Network - (RD-C-3/2)-Z7-C032-TC | 2d | 2027-02-20 | 2027-02-21 | RHD4ENSDZ7APPTC190, RHD4PRSHLDOSICT1000 | Skilled labor [18.73 h]; Unskilled Labor [18.73 h]; Equipment Opreator [37.46 h]; Excavator-Poclain [18.73 h]; Dump Truck [18.73 h]; Road crossing ducts, (6*50mm) HDPE -TC [3.44 m] | 130.72 | C032 | Z7 | CONS | TC | Excavation | bef |
| RHD4CZ7C032TC3200 |  | Installation of Road Crossings for Telecom Network - (RD-C-3/2)-Z7-C032-TC | 3d | 2027-02-23 | 2027-02-25 | RHD4PRSHLDOSTC1100, RHD4PRSHLSTAGTC1100, RHD4CZ7C032TC3100, RHD4CZ5L08ST3500, RHD4CZ5L016ST1500 | Carpenter [2.5 h]; Skilled labor [24.94 h]; Unskilled Labor [24.94 h]; Steel Fixer [2.5 h]; Road crossing ducts, (6*50mm) HDPE -TC [3.44 m] | 130.72 | C032 | Z7 | CONS | TC | Installing | bef |
| RHD4CZ7C032TC3300 |  | Pouring of Road Crossings for Telecom Network - (RD-C-3/2)-Z7-C032-TC | 3d | 2027-02-27 | 2027-03-01 | RHD4CZ7C032TC3200 | Skilled labor [24.94 h]; Unskilled Labor [24.94 h]; Equipment Opreator [10.02 h]; Concrete Mixer Truck [5.01 h]; Concrete Pump [5.01 h]; Road crossing ducts, (6*50mm) HDPE -TC [22.36 m] | 849.68 | C032 | Z7 | CONS | TC | Pouring | bef |
| RHD4CZ7C032TC3400 |  | Backfilling of Road Crossings for Telecom Network - (RD-C-3/2)-Z7-C032-TC | 2d | 2027-03-02 | 2027-03-03 | RHD4CZ7C032TC3300 | Skilled labor [18.73 h]; Unskilled Labor [18.73 h]; Equipment Opreator [7.51 h]; Excavator-Poclain [7.51 h]; Road crossing ducts, (6*50mm) HDPE -TC [5.16 m] | 196.08 | C032 | Z7 | CONS | TC | Backfilling | bef |
|  | 6358 | **RHD4-02-002-Z7-C032-Information and Communication Technologies - ICT** |  | 2027-02-20 | 2027-08-21 |  |  |  |  |  |  |  |  |  |
|  | 6359 | **RHD4-02-002-C032-(ICT)-Information and Communication Technologies Ducts** |  | 2027-07-24 | 2027-08-21 |  |  |  |  |  |  |  |  |  |
| RHD4CZ7C032ICT2100 |  | Excavation of HDPE Ducts for ICT Network - (RD-C-3/2)-Z7-C032-ICT | 6d | 2027-07-24 | 2027-07-29 | RHD4ENSDZ7APPICT200, RHD4CZ7C032TC2400, RHD4CZ7C032MV2400 | Skilled labor [59.79 h]; Unskilled Labor [59.79 h]; Equipment Opreator [119.58 h]; Excavator-Poclain [59.79 h]; Dump Truck [59.79 h]; (2*50mm) HDPE ducts -ICT [164.7 m] | 6,258.6 | C032 | Z7 | CONS | ICT | Excavation | AFT |
| RHD4CZ7C032ICT2200 |  | Installation of HDPE Ducts for ICT Network - (RD-C-3/2)-Z7-C032-ICT | 9d | 2027-07-31 | 2027-08-09 | RHD4PRSHLDOSICT1000, RHD4PRSHLSTAGICT1000, RHD4CZ7C032ICT2100 | Carpenter [8.93 h]; Skilled labor [89.74 h]; Unskilled Labor [89.74 h]; Steel Fixer [8.93 h]; (2*50mm) HDPE ducts -ICT [535.27 m] | 20,340.45 | C032 | Z7 | CONS | ICT | Installing | AFT |
| RHD4CZ7C032ICT2400 |  | Backfilling of HDPE Ducts for ICT Network - (RD-C-3/2)-Z7-C032-ICT | 6d | 2027-08-15 | 2027-08-21 | RHD4CZ7C032ICT5200 | Skilled labor [59.79 h]; Unskilled Labor [59.79 h]; Equipment Opreator [23.96 h]; Excavator-Poclain [23.96 h]; (2*50mm) HDPE ducts -ICT [123.53 m] | 4,693.95 | C032 | Z7 | CONS | ICT | Backfilling | AFT |
|  | 6360 | **RHD4-02-002-C032-(ICT)-Information and Communication Technologies Manholes** |  | 2027-08-10 | 2027-08-14 |  |  |  |  |  |  |  |  |  |
| RHD4CZ7C032ICT5100 |  | Excavation for Manholes for ICT Network - (RD-C-3/2)-Z7-C032-ICT | 2d | 2027-08-10 | 2027-08-11 | RHD4ENSDZ7APPICT200, RHD4CZ7C032ICT2200 | Skilled labor [8.17 h]; Unskilled Labor [8.17 h]; Equipment Opreator [6.53 h]; Excavator-Poclain [3.27 h]; Dump Truck [3.27 h]; Manhole Type 1 - ICT [0.3 nr]; Manhole Type 2 - ICT [0.3 nr] | 3,235.8 | C032 | Z7 | CONS | ICT | Excavation | AFT |
| RHD4CZ7C032ICT5200 |  | Installation of Manholes for ICT Network - (RD-C-3/2)-Z7-C032-ICT | 2d | 2027-08-12 | 2027-08-14 | RHD4PRSHLDOSICT1200, RHD4PRSHLSTAGICT1200, RHD4CZ7C032ICT5100 | Skilled labor [8.17 h]; Unskilled Labor [8.17 h]; Equipment Opreator [3.27 h]; Boom Truck [3.27 h]; Manhole Type 1 - ICT [1.7 nr]; Manhole Type 2 - ICT [1.7 nr] | 18,336.2 | C032 | Z7 | CONS | ICT | Installation | AFT |
|  | 6361 | **RHD4-02-002-C032-(ICT)-Information and Communication Technologies Road Crossings** |  | 2027-02-20 | 2027-03-01 |  |  |  |  |  |  |  |  |  |
| RHD4CZ7C032ICT3100 |  | Excavation for Road Crossings for ICT Network - (RD-C-3/2)-Z7-C032-ICT | 2d | 2027-02-20 | 2027-02-21 | RHD4ENSDZ7APPICT200, RHD4PRSHLDOSICT1000 | Skilled labor [13.72 h]; Unskilled Labor [13.72 h]; Equipment Opreator [27.55 h]; Excavator-Poclain [13.72 h]; Dump Truck [13.72 h]; Road crossing ducts, (2*50mm) HDPE -ICT [2.53 m] | 96.14 | C032 | Z7 | CONS | ICT | Excavation | bef |
| RHD4CZ7C032ICT3200 |  | Installation of Road Crossings for ICT Network - (RD-C-3/2)-Z7-C032-ICT | 2d | 2027-02-23 | 2027-02-24 | RHD4PRSHLDOSICT1100, RHD4PRSHLSTAGICT1100, RHD4CZ7C032ICT3100 | Carpenter [1.85 h]; Skilled labor [18.4 h]; Unskilled Labor [18.4 h]; Steel Fixer [1.85 h]; Road crossing ducts, (2*50mm) HDPE -ICT [2.53 m] | 96.14 | C032 | Z7 | CONS | ICT | Installing | bef |
| RHD4CZ7C032ICT3300 |  | Pouring of Road Crossings for ICT Network - (RD-C-3/2)-Z7-C032-ICT | 2d | 2027-02-25 | 2027-02-27 | RHD4CZ7C032ICT3200 | Skilled labor [18.4 h]; Unskilled Labor [18.4 h]; Equipment Opreator [7.3 h]; Concrete Mixer Truck [3.7 h]; Concrete Pump [3.7 h]; Road crossing ducts, (2*50mm) HDPE -ICT [16.45 m] | 624.91 | C032 | Z7 | CONS | ICT | Pouring | bef |
| RHD4CZ7C032ICT3400 |  | Backfilling of Road Crossings for ICT Network - (RD-C-3/2)-Z7-C032-ICT | 2d | 2027-02-28 | 2027-03-01 | RHD4CZ7C032ICT3300 | Skilled labor [13.72 h]; Unskilled Labor [13.72 h]; Equipment Opreator [5.55 h]; Excavator-Poclain [5.55 h]; Road crossing ducts, (2*50mm) HDPE -ICT [3.8 m] | 144.4 | C032 | Z7 | CONS | ICT | Backfilling | bef |
|  | 6349 | **RHD4-02-002-Z7-C032-Landscape Network - LS** |  |  |  |  |  |  |  |  |  |  |  |  |
|  | 6350 | **RHD4-02-002-C032-(LS)-Landscape Lighting cables** |  |  |  |  |  |  |  |  |  |  |  |  |
|  | 6351 | **RHD4-02-002-C032-(LS)-Landscape Feeder Pillars** |  |  |  |  |  |  |  |  |  |  |  |  |
|  | 6352 | **RHD4-02-002-C032-(LS)-Landscape Bollard Poles** |  |  |  |  |  |  |  |  |  |  |  |  |
|  | 6353 | **RHD4-02-002-C032-(LS)-Landscape Feeder Pillars Earthing** |  |  |  |  |  |  |  |  |  |  |  |  |
|  | 6362 | **RHD4-02-002-Z7-C032-Security Network - CCTV** |  | 2027-08-22 | 2027-09-25 |  |  |  |  |  |  |  |  |  |
|  | 6363 | **RHD4-02-002-C032-(CCTV)-Civil Works** |  | 2027-08-22 | 2027-08-26 |  |  |  |  |  |  |  |  |  |
| RHD4CZ7C032CCTV2100 |  | Civil Works for Security Network - (RD-C-3/2)-Z7-C032-CCTV | 5d | 2027-08-22 | 2027-08-26 | RHD4CZ7C032ICT2400 | Skilled labor [217.76 h]; Unskilled Labor [435.68 h]; Equipment Opreator [217.76 h]; Excavator-Poclain [54.45 h]; Dump Truck [54.45 h]; Civil works Digging, trenching, laying pipes Meter with supply and installation of Manholes and for power feeding sources related to all towers and poles – (from 35-meter pole to control room and from related UPS camersa distribution boards till overall 2 [150 m] | 17,400 | C032 | Z7 | CONS | CCTV | Civil Works | AFT |

| ID | WBS | Activity | Duration | Start | Finish | Predecessors | Complete | Planned start | Planned finish | Resources | Cost | Actual cost | RDH4-01-001-Road and Block Names-1 | RDH4-01-001-Zones-1 | RDH4-01-001-Phases-1 | RDH4-01-001-Networks-1 | RDH4-01-001-Work Method-1 | RDH4-01-001-MENEM |
| --- | --- | --- | --- | --- | --- | --- | --- | --- | --- | --- | --- | --- | --- | --- | --- | --- | --- | --- |
|  | 6364 | **RHD4-02-002-C032-(CCTV)-CCTV Poles** |  | 2027-08-28 | 2027-09-07 |  |  |  |  |  |  |  |  |  |  |  |  |  |
| RHD4CZ7C032CCTV1100 |  | Excavation for RC Base for CCTV Poles for Security Network - (RD-C-3/2)-Z7-C032-CCTV | 2d | 2027-08-28 | 2027-08-29 | RHD4ENSDZ7APPCCTV210, RHD4CZ7C032CCTV2100 |  |  |  | Skilled labor [4.32 h]; Unskilled Labor [4.32 h]; Equipment Opreator [8.64 h]; Excavator-Poclain [2.18 h]; Dump Truck [2.18 h]; 25 Meters pole for CCTV Cameras [0.1 nr] | 14,090.2 |  | C032 | Z7 | CONS | CCTV | Excavation | AFT |
| RHD4CZ7C032CCTV1200 |  | Installation for RC Base for CCTV Poles for Security Network - (RD-C-3/2)-Z7-C032-CCTV | 2d | 2027-08-30 | 2027-08-31 | RHD4CZ7C032CCTV1100 |  |  |  | Skilled labor [4.32 h]; Unskilled Labor [4.32 h]; Equipment Opreator [8.64 h]; Excavator-Poclain [2.18 h]; Dump Truck [2.18 h]; 25 Meters pole for CCTV Cameras [0.25 nr] | 35,225.5 |  | C032 | Z7 | CONS | CCTV | RC Base | AFT |
| RHD4CZ7C032CCTV1300 |  | Backfill for RC Base for CCTV Poles for Security Network - (RD-C-3/2)-Z7-C032-CCTV | 2d | 2027-09-01 | 2027-09-02 | RHD4CZ7C032CCTV1200 |  |  |  | Skilled labor [2.88 h]; Unskilled Labor [2.88 h]; Equipment Opreator [5.44 h]; Excavator-Poclain [1.42 h]; Dump Truck [1.42 h]; 25 Meters pole for CCTV Cameras [0.05 nr] | 7,045.1 |  | C032 | Z7 | CONS | CCTV | Backfill | AFT |
| RHD4CZ7C032CCTV1400 |  | Installation for CCTV Poles for Security Network - (RD-C-3/2)-Z7-C032-CCTV | 2d | 2027-09-04 | 2027-09-05 | RHD4PRSHLDOSCCTV1000, RHD4PRSHLSTACCTV1000, RHD4CZ7C032CCTV1300 |  |  |  | Skilled labor [7.2 h]; Unskilled Labor [14.56 h]; Electrician [7.2 h]; Equipment Opreator [7.2 h]; Boom Truck [3.59 h]; 25 Meters pole for CCTV Cameras [0.6 nr] | 84,541.2 |  | C032 | Z7 | CONS | CCTV | Installation | AFT |
| RHD4CZ7C032CCTV1500 |  | Protection post Installation for CCTV Poles for Security Network - (RD-C-3/2)-Z7-C032-CCTV | 2d | 2027-09-06 | 2027-09-07 | RHD4CZ7C032CCTV1400 |  |  |  | Skilled labor [10.88 h]; Unskilled Labor [21.76 h]; Supply and Installation of minimum 4 Protection Post for each pole or tower with pipe ?220*6mm THK. [1 nr] | 4,903 |  | C032 | Z7 | CONS | CCTV | Protection post | AFT |
|  | 6365 | **RHD4-02-002-C032-(CCTV)-Camera** |  | 2027-09-08 | 2027-09-09 |  |  |  |  |  |  |  |  |  |  |  |  |  |
| RHD4CZ7C032CCTV3100 |  | Installation for Cameras for Security Network - (RD-C-3/2)-Z7-C032-CCTV | 2d | 2027-09-08 | 2027-09-09 | RHD4PRSHLDOSCCTV1100, RHD4PRSHLSTACCTV1100, RHD4CZ7C032CCTV1500 |  |  |  | Unskilled Labor [54.4 h]; Electrician [27.2 h]; Outdoor Camera, 5MP resolution, day/night, fixed bullet camera providing Forensic WDR. [4 nr]; Outdoor PTZ with IR, HDTV 1080 and 31x optical, 12x digital, total 372x zoom, H264/265 with Motion JPEG. [1 nr] | 61,727 |  | C032 | Z7 | CONS | CCTV | Installation | AFT |
|  | 6366 | **RHD4-02-002-C032-(CCTV)-Power and Infrastructure** |  | 2027-09-20 | 2027-09-25 |  |  |  |  |  |  |  |  |  |  |  |  |  |
| RHD4CZ7C032CCTV4100 |  | Installation of Power outlet, UPS and midspan for PTZ Camerafor Cameras for Security Network - (RD-C-3/2)-Z7-C032-CCTV | 2d | 2027-09-20 | 2027-09-21 | RHD4PRSHLDOSCCTV1300, RHD4PRSHLSTACCTV1300, RHD4CZ7C032CCTV1400, RHD4CZ7C032CCTV6100 |  |  |  | Skilled labor [8.64 h]; Unskilled Labor [34.88 h]; Electrician [17.44 h]; Equipment Opreator [17.44 h]; Excavator-Poclain [4.36 h]; Dump Truck [4.36 h]; Outdoor ready IP66-rated midspan for PTZ Camera (The outdoor- ready midspan should be IP66/IP67- and NEMA 4X-rated [1 nr]; 1.2KVA Industrial type UPS located at FEC remote poles [1 nr] | 9,103 |  | C032 | Z7 | CONS | CCTV | Power | AFT |
| RHD4CZ7C032CCTV4200 |  | Short Range Wireless PoP wireless Bridgefor CCTV Poles for Security Network - (RD-C-3/2)-Z7-C032-CCTV | 2d | 2027-09-22 | 2027-09-25 | RHD4CZ7C032CCTV4100 |  |  |  | Skilled labor [10.88 h]; Unskilled Labor [21.76 h]; Electrician [10.88 h]; Equipment Opreator [21.76 h]; Excavator-Poclain [5.45 h]; Dump Truck [5.45 h]; Short Range wireless point to point wireless bridge [2 nr] | 29,274 |  | C032 | Z7 | CONS | CCTV | Wireless Pop | AFT |
|  | 6368 | **RHD4-02-002-C032-(CCTV)-CCTV Panels and Components** |  | 2027-09-11 | 2027-09-19 |  |  |  |  |  |  |  |  |  |  |  |  |  |
| RHD4CZ7C032CCTV6100 |  | Installation for CCTV Panels for Security Network - (RD-C-3/2)-Z7-C032-CCTV | 8d | 2027-09-11 | 2027-09-19 | RHD4PRSHLDOSCCTV1200, RHD4PRSHLSTACCTV1200, RHD4PRLOLSTACCTV1001, RHD4CZ7C032CCTV3100 |  |  |  | Skilled labor [174.24 h]; Unskilled Labor [522.72 h]; Electrician [174.24 h]; Pole mounted Filed Equipment cabinet (FEC) , with fan and ventilation, NEMEX 4X ,door, minimum size (600x600x400mm) , the cabinet/enclosurE [1 nr]; 8 Port Industrial PoE Switch 10/1000BaseT (-40 deg to +70 deg. Celsius) for remote poles and as specifiedin item 15. [1 nr]; UTP CAT6 Patch Cord , connect the industrial switch with the cameras, and radio wireless antenna [6 nr] | 21,585 |  | C032 | Z7 | CONS | CCTV | Equipment | AFT |
|  | 6379 | **RHD4-02-002-Z7-L03** |  | 2026-07-28 | 2028-01-12 |  |  |  |  |  |  |  |  |  |  |  |  |  |
|  | 6410 | **RHD4-02-002-Z7-L03-Crossings Sewage Network - SWCr** |  |  |  |  |  |  |  |  |  |  |  |  |  |  |  |  |
|  | 6420 | **RHD4-02-002-L03-(SWCr)-MH Works - 1200 mm diameter** |  |  |  |  |  |  |  |  |  |  |  |  |  |  |  |  |
|  | 6422 | **RHD4-02-002-L03-(SWCr)-MH Works - 1500 mm diameter** |  |  |  |  |  |  |  |  |  |  |  |  |  |  |  |  |
|  | 6423 | **RHD4-02-002-L03-(SWCr)-MH Works - 1500 mm diameter with Back drop** |  |  |  |  |  |  |  |  |  |  |  |  |  |  |  |  |
|  | 6415 | **RHD4-02-002-L03-(SWCr)-GRP Pipes - 700 mm diameter** |  |  |  |  |  |  |  |  |  |  |  |  |  |  |  |  |
|  | 6414 | **RHD4-02-002-L03-(SWCr)-GRP Pipes - 600 mm diameter** |  |  |  |  |  |  |  |  |  |  |  |  |  |  |  |  |
|  | 6412 | **RHD4-02-002-L03-(SWCr)-GRP Pipes - 400 mm diameter** |  |  |  |  |  |  |  |  |  |  |  |  |  |  |  |  |
|  | 6411 | **RHD4-02-002-L03-(SWCr)-GRP Pipes - 300 mm diameter** |  |  |  |  |  |  |  |  |  |  |  |  |  |  |  |  |
|  | 6417 | **RHD4-02-002-L03-(SWCr)-HDPE Pipes - 250 mm diameter** |  |  |  |  |  |  |  |  |  |  |  |  |  |  |  |  |
|  | 6416 | **RHD4-02-002-L03-(SWCr)-UPVC Pipes - 200 mm diameter** |  |  |  |  |  |  |  |  |  |  |  |  |  |  |  |  |
|  | 6424 | **RHD4-02-002-L03-(SWCr)-Wash out Chambers** |  |  |  |  |  |  |  |  |  |  |  |  |  |  |  |  |
|  | 6425 | **RHD4-02-002-L03-(SWCr)-Wash out Valves** |  |  |  |  |  |  |  |  |  |  |  |  |  |  |  |  |
|  | 6454 | **RHD4-02-002-Z7-L03-Crossings Potable Network - PTCr** |  |  |  |  |  |  |  |  |  |  |  |  |  |  |  |  |
|  | 6455 | **RHD4-02-002-L03-(PTCr)-HDPE Pipes - 110 mm diameter** |  |  |  |  |  |  |  |  |  |  |  |  |  |  |  |  |
|  | 6456 | **RHD4-02-002-L03-(PTCr)-HDPE Pipes - 160 mm diameter** |  |  |  |  |  |  |  |  |  |  |  |  |  |  |  |  |
|  | 6460 | **RHD4-02-002-L03-(PTCr)-Gate Valves (Direct Buried)** |  |  |  |  |  |  |  |  |  |  |  |  |  |  |  |  |
|  | 6465 | **RHD4-02-002-L03-(PTCr)-Air Valve Chambers** |  |  |  |  |  |  |  |  |  |  |  |  |  |  |  |  |
|  | 6466 | **RHD4-02-002-L03-(PTCr)-Air Valves** |  |  |  |  |  |  |  |  |  |  |  |  |  |  |  |  |
|  | 6467 | **RHD4-02-002-L03-(PTCr)-Fire Hydrant** |  |  |  |  |  |  |  |  |  |  |  |  |  |  |  |  |
|  | 6501 | **RHD4-02-002-Z7-L03-Crossings Irrigation Network - IRRC** |  |  |  |  |  |  |  |  |  |  |  |  |  |  |  |  |
|  | 6502 | **RHD4-02-002-L03-(IRRC)-HDPE Pipes - 160 mm diameter** |  |  |  |  |  |  |  |  |  |  |  |  |  |  |  |  |
|  | 6506 | **RHD4-02-002-L03-(IRRC)-HDPE Pipes - 315 mm diameter** |  |  |  |  |  |  |  |  |  |  |  |  |  |  |  |  |
|  | 6510 | **RHD4-02-002-L03-(IRRC)-Gate Valves (Direct Buried)** |  |  |  |  |  |  |  |  |  |  |  |  |  |  |  |  |
|  | 6511 | **RHD4-02-002-L03-(IRRC)-Butterfly Valve Chamber** |  |  |  |  |  |  |  |  |  |  |  |  |  |  |  |  |
|  | 6512 | **RHD4-02-002-L03-(IRRC)-Butterfly Valves** |  |  |  |  |  |  |  |  |  |  |  |  |  |  |  |  |
|  | 6513 | **RHD4-02-002-L03-(IRRC)-Wash out Chamber** |  |  |  |  |  |  |  |  |  |  |  |  |  |  |  |  |
|  | 6514 | **RHD4-02-002-L03-(IRRC)-Wash out Valves** |  |  |  |  |  |  |  |  |  |  |  |  |  |  |  |  |
|  | 6515 | **RHD4-02-002-L03-(IRRC)-Air Valve Chamber** |  |  |  |  |  |  |  |  |  |  |  |  |  |  |  |  |
|  | 6516 | **RHD4-02-002-L03-(IRRC)-Air Valves** |  |  |  |  |  |  |  |  |  |  |  |  |  |  |  |  |
|  | 6558 | **RHD4-02-002-Z7-L03-Road Works - RD** |  | 2026-07-28 | 2028-01-12 |  |  |  |  |  |  |  |  |  |  |  |  |  |
|  | 6559 | **RHD4-02-002-L03-(RD)-Subgrade** |  | 2026-07-28 | 2026-08-03 |  |  |  |  |  |  |  |  |  |  |  |  |  |
| RHD4CZ7L03RD1100 |  | Supply, lay and compaction subgrade compacted thickness 300 mm for Roads - (RD-L-3)-Z7-L03-RD(Completed) | 6d | 2026-07-28 A | 2026-08-03 A | RHD4ENSDZ7APPEW100, RHD4ENSDZ7APPRD220, RHD4CZ7L03RW3000, RHD4CZ7L03ST1508, RHD4CZ7L03TC3400, RHD4CZ7L03ICT3400 | 100% | 2026-08-27 | 2026-09-02 | Skilled labor [84.4 h]; Unskilled Labor [168.8 h]; Electrician [84.4 h]; Equipment Opreator [576.64 h]; Water Truck [27.88 h]; Roller compactor [42.25 h]; Grader [84.4 h]; Dump Truck [422.11 h]; Subgrade [5800.46 m3] | 110,208.74 | 110,208.74 | L03 | Z7 | CONS | RD | Subgrade | bef |

| ID | WBS | Activity | Duration | Start | Finish | Predecessors | Complete | Planned start | Planned finish | Resources | Cost | Actual cost | RDH4-01-001-Road and Block Names-1 | RDH4-01-001-Zones-1 | RDH4-01-001-Phases-1 | RDH4-01-001-Networks-1 | RDH4-01-001-Work Method-1 | RDH4-01-001-MENEM |
| --- | --- | --- | --- | --- | --- | --- | --- | --- | --- | --- | --- | --- | --- | --- | --- | --- | --- | --- |
|  | 6560 | **RHD4-02-002-L03-(RD)-Aggregate Base Course** |  | 2027-03-02 | 2027-03-08 |  |  |  |  |  |  |  |  |  |  |  |  |  |
| RHD4CZ7L03RD2100 |  | Supply, lay and compaction Aggregate base course compacted thickness 300 mmfor Roads - (RD-L-3)-Z7-L03-RD | 6d | 2027-03-02 | 2027-03-08 | RHD4PRSHLDOSRD1000, RHD4PRSHLSTAGRD1000, RHD4CZ7L03RD1100 |  |  |  | Skilled labor [44.65 h]; Unskilled Labor [89.3 h]; Equipment Opreator [565.54 h]; Water Truck [29.51 h]; Roller compactor [89.3 h]; Grader [89.3 h]; Dump Truck [357.31 h]; Aggregate Base Courses [3643.27 m3] | 207,666.39 |  | L03 | Z7 | CONS | RD | ABC | bef |
|  | 6561 | **RHD4-02-002-L03-(RD)-Bituminous base course Two Layers, including (MC1)&(RC2)** |  | 2027-03-13 | 2027-12-05 |  |  |  |  |  |  |  |  |  |  |  |  |  |
| RHD4CZ7L03RD3100 |  | Supply, lay and Asphaltic base course including Prime Coat (MC1) for 1st Layer - (RD-L-3)-Z7-L03-RD | 2d | 2027-03-13 | 2027-03-14 | RHD4PRSHLDOSRD1100, RHD4ENMSASPH2000, RHD4ENMSASPH2010, RHD4PRSHLSTAGRD1100, RHD4CZ7L03RD2100 |  |  |  | Skilled labor [14.27 h]; Unskilled Labor [85.92 h]; Equipment Opreator [214.76 h]; Bobcat [14.27 h]; Roller compactor [14.27 h]; Asphalt Paver [14.27 h]; Rubber Compactor [28.64 h]; MC1/RC2 Sprinkler [14.27 h]; Dump Truck [128.8 h]; Bituminous base course (Grading I - Class A), including Prime coat (MC1) & tack coate (RC2) [523.68 m3] | 250,319.04 |  | L03 | Z7 | CONS | RD | 150 mm | AFT |
| RHD4CZ7L03RD3200 |  | Supply, lay and Asphaltic base course including Tack Coat (RC2) for 2nd Layer - (RD-L-3)-Z7-L03-RD | 2d | 2027-12-04 | 2027-12-05 | RHD4PRSHLDOSRD1100, RHD4PRSHLSTAGRD1100, RHD4CZ7L03CCTV6100 |  |  |  | Skilled labor [14.27 h]; Unskilled Labor [85.92 h]; Equipment Opreator [214.76 h]; Bobcat [14.27 h]; Roller compactor [14.27 h]; Asphalt Paver [14.27 h]; Rubber Compactor [28.64 h]; MC1/RC2 Sprinkler [14.27 h]; Dump Truck [128.8 h]; Bituminous base course (Grading I - Class A), including Prime coat (MC1) & tack coate (RC2) [523.68 m3] | 250,319.04 |  | L03 | Z7 | CONS | RD | 150 mm | AFT |
|  | 6563 | **RHD4-02-002-L03-(RD)-Precast Concrete Curb** |  | 2027-12-06 | 2027-12-15 |  |  |  |  |  |  |  |  |  |  |  |  |  |
| RHD4CZ7L03RD5100 |  | Supply and installation Precast Concrete Kerb for Roads - (RD-L-3)-Z7-L03-RD | 9d | 2027-12-06 | 2027-12-15 | RHD4PRSHLDOSRD1200, RHD4ENMSRD2000, RHD4ENMSRD2010, RHD4PRSHLSTAGRD1200, RHD4CZ7L03RD3200, RHD4CZ7C032RD5100 |  |  |  | Mason [277.49 h]; Skilled labor [92.46 h]; Unskilled Labor [277.49 h]; Equipment Opreator [184.92 h]; Bobcat [92.46 h]; Concrete Mixer Truck [92.46 h]; Precast Concrete Curbstone, type K1 [2809 m]; Precast Flush concrete Curbstone K3 [1012.35 m] | 210,174.36 |  | L03 | Z7 | CONS | RD | Curbs | AFT |
|  | 6566 | **RHD4-02-002-L03-(RD)-Traffic Signage** |  | 2027-12-16 | 2027-12-23 |  |  |  |  |  |  |  |  |  |  |  |  |  |
| RHD4CZ7L03RD8100 |  | Installation of Traffic Signage for Road Network - (RD-L-3)-Z7-L03-RD | 7d | 2027-12-16 | 2027-12-23 | RHD4PRSHLDOSRD1600, RHD4PRSHLSTAGRD1600, RHD4CZ7L03RD5100, RHD4CZ7L03TC2400, RHD4CZ7L03ICT2400, RHD4CZ7C032RD8100 |  |  |  | Skilled labor [152.46 h]; Unskilled Labor [76.23 h]; Electrician [30.49 h]; Equipment Opreator [27.44 h]; Boom Truck [15.25 h]; Concrete Mixer Truck [12.2 h]; Traffic signs, ground mounted, 1 Sheet Aluminium, (breakaway)Single post [25 nr]; Traffic signs, ground mounted, 1 Sheets Aluminium, (breakaway)Double post [2 nr] | 34,328 |  | L03 | Z7 | CONS | RD | Traffic Signage | AFT |
|  | 6564 | **RHD4-02-002-L03-(RD)-Precast Interlocking Block Pavers** |  | 2027-12-25 | 2028-01-04 |  |  |  |  |  |  |  |  |  |  |  |  |  |
| RHD4CZ7L03RD6100 |  | Interlocking block pavers for sidewalk-footpath for Side walks and Parking areas - (RD-L-3)-Z7-L03-RD | 10d | 2027-12-25 | 2028-01-04 | RHD4PRSHLDOSRD1300, RHD4PRSHLDOSRD1400, RHD4ENMSRD2000, RHD4ENMSRD2010, RHD4PRSHLSTAGRD1300, RHD4PRSHLSTAGRD1400, RHD4CZ7L03RD8100 |  |  |  | Skilled labor [217.6 h]; Unskilled Labor [326.27 h]; Equipment Opreator [353.5 h]; Boom Truck [108.8 h]; Bobcat [108.8 h]; Concrete Mixer Truck [108.8 h]; Water Truck [27.2 h]; Interlock 80 mm thick Pavers for parking including sand fill [2497 m2] | 184,778 |  | L03 | Z7 | CONS | RD | Interlocking | AFT |
|  | 6562 | **RHD4-02-002-L03-(RD)-Bituminous concrete wearing course including tack coat (RC2)** |  | 2028-01-05 | 2028-01-06 |  |  |  |  |  |  |  |  |  |  |  |  |  |
| RHD4CZ7L03RD4100 |  | Supply, lay and compaction Asphaltic wearing course including tack Coat (RC2)for Road Network - (RD-L-3)-Z7-L03-RD | 2d | 2028-01-05 | 2028-01-06 | RHD4CZ7L03RD5100, RHD4CZ7L03RD6100, RHD4CZ7C032RD4100 |  |  |  | Skilled labor [15.79 h]; Unskilled Labor [94.85 h]; Equipment Opreator [236.97 h]; Bobcat [15.79 h]; Roller compactor [15.79 h]; Asphalt Paver [15.79 h]; Rubber Compactor [31.58 h]; MC1/RC2 Sprinkler [15.79 h]; Dump Truck [142.23 h]; Bituminous concrete wearing course, (Grading I - Class A), including tack coat (RC2) [753.63 m3] | 409,221.09 |  | L03 | Z7 | CONS | RD | 50 mm | AFT |
|  | 6565 | **RHD4-02-002-L03-(RD)-Pavement Marking** |  | 2028-01-08 | 2028-01-12 |  |  |  |  |  |  |  |  |  |  |  |  |  |
| RHD4CZ7L03RD7100 |  | Pavement Markings for Road Network - (RD-L-3)-Z7-L03-RD | 5d | 2028-01-08 | 2028-01-12 | RHD4PRSHLDOSRD1500, RHD4PRSHLSTAGRD1500, RHD4CZ7L03RD4100, RHD4CZ7C032RD7100 |  |  |  | Skilled labor [44.11 h]; Unskilled Labor [88.1 h]; Equipment Opreator [44.11 h]; Road Marking Machine [44.11 h]; Retroreflective Thermoplastic White Traffic Markings [253.21 m2]; Retroreflective Thermoplastic Yellow, Traffic Markings [223.25 m2]; Rumble strip [151 m]; Retroreflective raised pavement markers (cat eyes) [414 nr] | 47,419.26 |  | L03 | Z7 | CONS | RD | Pavement Marking | AFT |
|  | 6383 | **RHD4-02-002-Z7-L03-Storm Network - ST** |  | 2026-08-04 | 2027-05-23 |  |  |  |  |  |  |  |  |  |  |  |  |  |
|  | 6402 | **RHD4-02-002-L03-(ST)-MH Works - 2000 mm diameter** |  | 2026-08-04 | 2027-04-26 |  |  |  |  |  |  |  |  |  |  |  |  |  |
| RHD4CZ7L03ST3102 |  | Excavation and PC Blinding works for MH 2000 mm - (RD-L-3)-Z7-L03-ST | 2d | 2026-08-04 A | 2026-08-06 A | RHD4ENSDZ7APPST110, RHD4ENMSST2000, RHD4CZ7L03ST2100 | 100% | 2026-12-29 | 2026-12-30 | Skilled labor [7.3 h]; Unskilled Labor [7.3 h]; Equipment Opreator [11.65 h]; Excavator-Poclain [7.3 h]; Water Truck [0.8 h]; Dump Truck [3.59 h]; MH (2000mm Diameter) - ST - depth 1.50 - 2.5m [0.5 nr] | 8,460.5 | 8,460.5 | L03 | Z7 | CONS | ST | Excavation | bef |
| RHD4CZ7L03ST3202 |  | Installation of Base for MH 2000 mm - (RD-L-3)-Z7-L03-ST | 2d | 2026-08-06 A | 2026-08-08 A | RHD4PRSHLSTAGST1606, RHD4CZ7L03ST3102 | 100% | 2026-12-31 | 2027-01-02 | Skilled labor [7.3 h]; Unskilled Labor [7.3 h]; Equipment Opreator [2.94 h]; Boom Truck [1.42 h]; Concrete Mixer Truck [1.42 h]; MH (2000mm Diameter) - ST - depth 1.50 - 2.5m [0.5 nr] | 8,460.5 | 8,460.5 | L03 | Z7 | CONS | ST | Installing Base | bef |
| RHD4CZ7L03ST3302 |  | MH Ring and C.Slab works and Backfilling works for MH 2000 mm - (RD-L-3)-Z7-L03-ST | 2d | 2027-04-20 | 2027-04-21 | RHD4PRSHLDOSST1606, RHD4CZ7L03ST3202 |  |  |  | Skilled labor [7.3 h]; Unskilled Labor [7.3 h]; Equipment Opreator [5.12 h]; Boom Truck [2.94 h]; Concrete Mixer Truck [2.18 h]; MH (2000mm Diameter) - ST - depth 1.50 - 2.5m [0.7 nr] | 11,844.7 |  | L03 | Z7 | CONS | ST | Installing Rings | bef |
| RHD4CZ7L03ST3402 |  | Steel Cover for MH 2000 mm - (RD-L-3)-Z7-L03-ST | 2d | 2027-04-22 | 2027-04-24 | RHD4PRSHLDOSST1706, RHD4PRSHLSTAGST1706, RHD4CZ7L03ST3302 |  |  |  | Skilled labor [7.3 h]; Unskilled Labor [14.48 h]; Equipment Opreator [1.42 h]; Boom Truck [1.42 h]; MH (2000mm Diameter) - ST - depth 1.50 - 2.5m [0.1 nr] | 1,692.1 |  | L03 | Z7 | CONS | ST | Steel Cover | bef |
| RHD4CZ7L03ST3502 |  | Finishing, Benching, Testing works for MH 2000 mm - (RD-L-3)-Z7-L03-ST | 2d | 2027-04-25 | 2027-04-26 | RHD4CZ7L03ST3402 |  |  |  | Skilled labor [7.3 h]; Unskilled Labor [14.48 h]; Plumber [7.3 h]; Equipment Opreator [1.42 h]; Water Truck [1.42 h]; MH (2000mm Diameter) - ST - depth 1.50 - 2.5m [0.2 nr] | 3,384.2 |  | L03 | Z7 | CONS | ST | Benching | bef |
|  | 3743 | **RHD4-02-002-L03-(ST)-GRP Pipes - 1100 mm diameter** |  | 2026-08-04 | 2027-04-19 |  |  |  |  |  |  |  |  |  |  |  |  |  |
| RHD4CZ7L03ST1107 |  | Excavation works for GRP Pipe Line 1100 mm - (RD-L-3)-Z7-L03-ST | 2d | 2026-08-04 A | 2026-08-05 A | RHD4ENMSEW2000, RHD4ENMSEW2010, RHD4ENSDZ7APPEW100 SS, RHD4CZ4A013ST6100, RHD4CZ7L03MV2400, RHD4CZ7L03SL2400 | 100% | 2026-12-13 | 2026-12-14 | Skilled labor [3.92 h]; Unskilled Labor [3.92 h]; Equipment Opreator [4.68 h]; Excavator-Poclain [3.92 h]; Dump Truck [0.8 h]; GRP (1100mm Diameter) - ST - Depth: 1.51m - 2.5m [10.76 m] | 11,384.08 | 11,384.08 | L03 | Z7 | CONS | ST | Excavation | bef |
| RHD4CZ7L03ST1207 |  | Bedding works for GRP Pipe Line 1100 mm - (RD-L-3)-Z7-L03-ST | 2d | 2026-08-06 A | 2026-08-08 A | RHD4CZ7L03ST1107 | 100% | 2026-12-15 | 2026-12-16 | Skilled labor [3.92 h]; Unskilled Labor [7.84 h]; Equipment Opreator [7.84 h]; Excavator-Poclain [3.92 h]; Dump Truck [3.92 h]; GRP (1100mm Diameter) - ST - Depth: 1.51m - 2.5m [3.59 m] | 3,798.22 | 3,798.22 | L03 | Z7 | CONS | ST | Bedding | bef |
| RHD4CZ7L03ST1307 |  | Installing for GRP Pipe Line 1100 mm - (RD-L-3)-Z7-L03-ST | 2d | 2027-04-13 | 2027-04-14 | RHD4CZ7L03ST1207 |  |  |  | Unskilled Labor [5.23 h]; Plumber [2.61 h]; GRP (1100mm Diameter) - ST - Depth: 1.51m - 2.5m [28.69 m] | 30,354.02 |  | L03 | Z7 | CONS | ST | Installation | bef |
| RHD4CZ7L03ST1407 |  | Primary Test for GRP Pipe Line 1100 mm - (RD-L-3)-Z7-L03-ST | 2d | 2027-04-15 | 2027-04-17 | RHD4CZ7L03ST1307 |  |  |  | Unskilled Labor [1.96 h]; Plumber [1.96 h]; Equipment Opreator [1.96 h]; Water Truck [1.96 h]; GRP (1100mm Diameter) - ST - Depth: 1.51m - 2.5m [14.34 m] | 15,171.72 |  | L03 | Z7 | CONS | ST | Primary Test | bef |
| RHD4CZ7L03ST1507 |  | Backfilling and warning tape works for GRP Pipe Line 1100 mm - (RD-L-3)-Z7-L03-ST | 2d | 2027-04-18 | 2027-04-19 | RHD4CZ7L03ST1407 |  |  |  | Skilled labor [3.92 h]; Unskilled Labor [7.84 h]; Equipment Opreator [7.84 h]; Excavator-Poclain [3.92 h]; Dump Truck [3.92 h]; GRP (1100mm Diameter) - ST - Depth: 1.51m - 2.5m [14.34 m] | 15,171.72 |  | L03 | Z7 | CONS | ST | Backfilling | bef |

| ID | WBS | Activity | Duration | Start | Finish | Predecessors | Complete | Remaining | Planned start | Planned finish | Resources | Cost | Actual cost | RDH4-01-001-Road and Block Names-1 | RDH4-01-001-Zones-1 | RDH4-01-001-Phases-1 | RDH4-01-001-Networks-1 | RDH4-01-001-Work Method-1 | RDH4-01-001-MENEM |
| --- | --- | --- | --- | --- | --- | --- | --- | --- | --- | --- | --- | --- | --- | --- | --- | --- | --- | --- | --- |
|  | 5254 | **RHD4-02-002-L03-(ST)-GRP Pipes - 900 mm diameter** |  | 2026-08-04 | 2027-04-14 |  |  |  |  |  |  |  |  |  |  |  |  |  |  |
| RHD4CZ7L03ST1105 |  | Excavation works for GRP Pipe Line 900 mm - (RD-L-3)-Z7-L03-ST | 2d | 2026-08-04 A | 2026-08-05 A | RHD4CZ7L03ST1107 | 100% |  | 2026-12-15 | 2026-12-16 | Skilled labor [4.25 h]; Unskilled Labor [4.25 h]; Equipment Opreator [5.12 h]; Excavator-Poclain [4.25 h]; Dump Truck [0.87 h]; GRP (900mm Diameter) - ST - Depth less than 1.5 m [9.8 m] | 7,340.2 | 7,340.2 | L03 | Z7 | CONS | ST | Excavation | bef |
| RHD4CZ7L03ST1205 |  | Bedding works for GRP Pipe Line 900 mm - (RD-L-3)-Z7-L03-ST | 2d | 2026-08-06 A | 2026-08-08 A | RHD4CZ7L03ST1105 | 100% |  | 2026-12-17 | 2026-12-19 | Skilled labor [2.4 h]; Unskilled Labor [4.8 h]; Equipment Opreator [4.8 h]; Excavator-Poclain [2.4 h]; Dump Truck [2.4 h]; GRP (900mm Diameter) - ST - Depth less than 1.5 m [4.9 m] | 3,670.1 | 3,670.1 | L03 | Z7 | CONS | ST | Bedding | bef |
| RHD4CZ7L03ST1305 |  | Installing for GRP Pipe Line 900 mm - (RD-L-3)-Z7-L03-ST | 2d | 2026-08-09 A | 2026-08-10 A | RHD4CZ7L03ST1205 | 100% |  | 2026-12-20 | 2026-12-21 | Unskilled Labor [7.08 h]; Plumber [3.59 h]; GRP (900mm Diameter) - ST - Depth less than 1.5 m [44.12 m] | 33,045.88 | 33,045.88 | L03 | Z7 | CONS | ST | Installation | bef |
| RHD4CZ7L03ST1505 |  | Backfilling and warning tape works for GRP Pipe Line 900 mm - (RD-L-3)-Z7-L03-ST | 2d | 2026-09-15 A | 2026-09-16 A | RHD4CZ7L03ST1405, RHD4CZ7L03ST1507 | 100% |  | 2026-12-24 | 2026-12-26 | Skilled labor [5.34 h]; Unskilled Labor [10.67 h]; Equipment Opreator [10.67 h]; Excavator-Poclain [5.34 h]; Dump Truck [5.34 h]; GRP (900mm Diameter) - ST - Depth less than 1.5 m [19.61 m] | 14,687.89 | 14,687.89 | L03 | Z7 | CONS | ST | Backfilling | bef |
| RHD4CZ7L03ST1405 |  | Primary Test for GRP Pipe Line 900 mm - (RD-L-3)-Z7-L03-ST | 2d | 2027-04-13 | 2027-04-14 | RHD4CZ7L03ST1305 |  |  |  |  | Unskilled Labor [2.4 h]; Plumber [2.4 h]; Equipment Opreator [2.4 h]; Water Truck [2.4 h]; GRP (900mm Diameter) - ST - Depth less than 1.5 m [19.61 m] | 14,687.89 |  | L03 | Z7 | CONS | ST | Primary Test | bef |
|  | 6022 | **RHD4-02-002-L03-(ST)-MH Works - 1200 mm diameter** |  | 2026-08-04 | 2027-05-23 |  |  |  |  |  |  |  |  |  |  |  |  |  |  |
| RHD4CZ7L03ST3100 |  | Excavation and PC Blinding works for MH 1200 mm - (RD-L-3)-Z7-L03-ST | 2d | 2026-08-04 A | 2026-10-27 A | RHD4CZ7L03ST3101 | 100% |  | 2027-01-06 | 2027-01-07 | Skilled labor [9.47 h]; Unskilled Labor [9.47 h]; Equipment Opreator [15.14 h]; Excavator-Poclain [9.47 h]; Water Truck [0.98 h]; Dump Truck [4.68 h]; MH (1200mm Diameter) - ST - depth less than 1.5 [0.25 nr]; MH (1200mm Diameter) - ST - depth 1.50 - 2.5m [0.5 nr] | 7,353 | 7,353 | L03 | Z7 | CONS | ST | Excavation | bef |
| RHD4CZ7L03ST3200 |  | Installation of Base for MH 1200 mm - (RD-L-3)-Z7-L03-ST | 2d | 2026-08-06 A | 2027-04-27 | RHD4CZ7L03ST3100 | 65% | 2d | 2027-01-09 | 2027-01-10 | Skilled labor [10.02 h]; Unskilled Labor [10.02 h]; Equipment Opreator [4 h]; Boom Truck [1.96 h]; Concrete Mixer Truck [1.96 h]; MH (1200mm Diameter) - ST - depth less than 1.5 [0.25 nr]; MH (1200mm Diameter) - ST - depth 1.50 - 2.5m [0.5 nr] | 7,353 | 4,772.25 | L03 | Z7 | CONS | ST | Installing Base | bef |
| RHD4CZ7L03ST3300 |  | MH Ring and C.Slab works and Backfilling works for MH 1200 mm - (RD-L-3)-Z7-L03-ST | 2d | 2027-04-28 | 2027-04-29 | RHD4CZ7L03ST3200 |  |  |  |  | Skilled labor [10.02 h]; Unskilled Labor [10.02 h]; Equipment Opreator [6.97 h]; Boom Truck [4 h]; Concrete Mixer Truck [3.05 h]; MH (1200mm Diameter) - ST - depth less than 1.5 [0.35 nr]; MH (1200mm Diameter) - ST - depth 1.50 - 2.5m [0.7 nr] | 10,294.2 |  | L03 | Z7 | CONS | ST | Installing Rings | bef |
| RHD4CZ7L03ST3400 |  | Steel Cover for MH 1200 mm - (RD-L-3)-Z7-L03-ST | 2d | 2027-05-11 | 2027-05-12 | RHD4CZ7L03ST3300, RHD4CZ7L03ST1500, RHD4CZ7L03ST3401 |  |  |  |  | Skilled labor [10.89 h]; Unskilled Labor [21.78 h]; Equipment Opreator [2.18 h]; Boom Truck [2.18 h]; MH (1200mm Diameter) - ST - depth less than 1.5 [0.05 nr]; MH (1200mm Diameter) - ST - depth 1.50 - 2.5m [0.1 nr] | 1,470.6 |  | L03 | Z7 | CONS | ST | Steel Cover | bef |
| RHD4CZ7L03ST3500 |  | Finishing, Benching, Testing works for MH 1200 mm - (RD-L-3)-Z7-L03-ST | 2d | 2027-05-22 | 2027-05-23 | RHD4CZ7L03ST3400, RHD4CZ7L03ST3501, RHD4CZ7L03ST1502 |  |  |  |  | Skilled labor [9.47 h]; Unskilled Labor [18.84 h]; Plumber [9.47 h]; Equipment Opreator [1.85 h]; Water Truck [1.85 h]; MH (1200mm Diameter) - ST - depth less than 1.5 [0.1 nr]; MH (1200mm Diameter) - ST - depth 1.50 - 2.5m [0.2 nr] | 2,941.2 |  | L03 | Z7 | CONS | ST | Benching | bef |
|  | 6023 | **RHD4-02-002-L03-(ST)-MH Works - 1500 mm diameter** |  | 2026-08-04 | 2027-05-20 |  |  |  |  |  |  |  |  |  |  |  |  |  |  |
| RHD4CZ7L03ST3101 |  | Excavation and PC Blinding works for MH 1500 mm - (RD-L-3)-Z7-L03-ST | 5d | 2026-08-04 A | 2027-04-25 | RHD4CZ7L03ST3102 | 89% | 5d | 2026-12-31 | 2027-01-05 | Skilled labor [49.01 h]; Unskilled Labor [49.01 h]; Equipment Opreator [78.4 h]; Excavator-Poclain [49.01 h]; Water Truck [4.9 h]; Dump Truck [24.5 h]; MH (1500mm Diameter) - ST - depth 1.50 - 2.5m [2.25 nr] | 32,818.5 | 29,172.36 | L03 | Z7 | CONS | ST | Excavation | bef |
| RHD4CZ7L03ST3201 |  | Installation of Base for MH 1500 mm - (RD-L-3)-Z7-L03-ST | 5d | 2026-08-06 A | 2027-05-01 | RHD4CZ7L03ST3101 | 56% | 5d | 2027-01-06 | 2027-01-11 | Skilled labor [49.01 h]; Unskilled Labor [49.01 h]; Equipment Opreator [19.6 h]; Boom Truck [9.8 h]; Concrete Mixer Truck [9.8 h]; MH (1500mm Diameter) - ST - depth 1.50 - 2.5m [2.25 nr] | 32,818.5 | 18,233.96 | L03 | Z7 | CONS | ST | Installing Base | bef |
| RHD4CZ7L03ST3301 |  | MH Ring and C.Slab works and Backfilling works for MH 1500 mm - (RD-L-3)-Z7-L03-ST | 5d | 2027-05-02 | 2027-05-06 | RHD4CZ7L03ST3201 |  |  |  |  | Skilled labor [49.01 h]; Unskilled Labor [49.01 h]; Equipment Opreator [34.3 h]; Boom Truck [19.6 h]; Concrete Mixer Truck [14.7 h]; MH (1500mm Diameter) - ST - depth 1.50 - 2.5m [3.15 nr] | 45,945.9 |  | L03 | Z7 | CONS | ST | Installing Rings | bef |
| RHD4CZ7L03ST3401 |  | Steel Cover for MH 1500 mm - (RD-L-3)-Z7-L03-ST | 3d | 2027-05-08 | 2027-05-10 | RHD4CZ7L03ST3301, RHD4CZ7L03ST1500 |  |  |  |  | Skilled labor [32.67 h]; Unskilled Labor [65.34 h]; Equipment Opreator [6.53 h]; Boom Truck [6.53 h]; MH (1500mm Diameter) - ST - depth 1.50 - 2.5m [0.45 nr] | 6,563.7 |  | L03 | Z7 | CONS | ST | Steel Cover | bef |
| RHD4CZ7L03ST3501 |  | Finishing, Benching, Testing works for MH 1500 mm - (RD-L-3)-Z7-L03-ST | 5d | 2027-05-11 | 2027-05-20 | RHD4CZ7L03ST3401 |  |  |  |  | Skilled labor [49.01 h]; Unskilled Labor [98.01 h]; Plumber [49.01 h]; Equipment Opreator [9.8 h]; Water Truck [9.8 h]; MH (1500mm Diameter) - ST - depth 1.50 - 2.5m [0.9 nr] | 13,127.4 |  | L03 | Z7 | CONS | ST | Benching | bef |
|  | 6014 | **RHD4-02-002-L03-(ST)-GRP Pipes - 1200 mm diameter** |  | 2026-08-13 | 2027-02-16 |  |  |  |  |  |  |  |  |  |  |  |  |  |  |
| RHD4CZ7L03ST1108 |  | Excavation works for GRP Pipe Line 1200 mm - (RD-L-3)-Z7-L03-ST | 2d | 2026-08-13 A | 2026-08-17 A | RHD4ENSDZ7APPEW100, RHD4ENSDZ7APPRD220, RHD4CZ4A013ST3100 | 100% |  | 2026-08-13 | 2026-08-15 | Skilled labor [5.12 h]; Unskilled Labor [5.12 h]; Equipment Opreator [6.1 h]; Excavator-Poclain [5.12 h]; Dump Truck [0.98 h]; GRP (1200mm Diameter) - ST - Depth: 1.51m - 2.5m [14.05 m] | 16,550.9 | 16,550.9 | L03 | Z7 | CONS | ST | Excavation | bef |
| RHD4CZ7L03ST1208 |  | Bedding works for GRP Pipe Line 1200 mm - (RD-L-3)-Z7-L03-ST | 2d | 2027-02-08 | 2027-02-09 | RHD4CZ7L03ST1108 |  |  |  |  | Skilled labor [5.12 h]; Unskilled Labor [10.24 h]; Equipment Opreator [10.24 h]; Excavator-Poclain [5.12 h]; Dump Truck [5.12 h]; GRP (1200mm Diameter) - ST - Depth: 1.51m - 2.5m [4.68 m] | 5,513.04 |  | L03 | Z7 | CONS | ST | Bedding | bef |
| RHD4CZ7L03ST1308 |  | Installing for GRP Pipe Line 1200 mm - (RD-L-3)-Z7-L03-ST | 2d | 2027-02-10 | 2027-02-11 | RHD4CZ7L03ST1208 |  |  |  |  | Unskilled Labor [6.75 h]; Plumber [3.38 h]; GRP (1200mm Diameter) - ST - Depth: 1.51m - 2.5m [37.48 m] | 44,151.44 |  | L03 | Z7 | CONS | ST | Installation | bef |
| RHD4CZ7L03ST1408 |  | Primary Test for GRP Pipe Line 1200 mm - (RD-L-3)-Z7-L03-ST | 2d | 2027-02-13 | 2027-02-14 | RHD4CZ7L03ST1308 |  |  |  |  | Unskilled Labor [2.5 h]; Plumber [2.5 h]; Equipment Opreator [2.5 h]; Water Truck [2.5 h]; GRP (1200mm Diameter) - ST - Depth: 1.51m - 2.5m [18.74 m] | 22,075.72 |  | L03 | Z7 | CONS | ST | Primary Test | bef |
| RHD4CZ7L03ST1508 |  | Backfilling and warning tape works for GRP Pipe Line 1200 mm - (RD-L-3)-Z7-L03-ST | 2d | 2027-02-15 | 2027-02-16 | RHD4CZ7L03ST1408 |  |  |  |  | Skilled labor [5.12 h]; Unskilled Labor [10.24 h]; Equipment Opreator [10.24 h]; Excavator-Poclain [5.12 h]; Dump Truck [5.12 h]; GRP (1200mm Diameter) - ST - Depth: 1.51m - 2.5m [18.74 m] | 22,075.72 |  | L03 | Z7 | CONS | ST | Backfilling | bef |

| ID | WBS | Activity | Duration | Start | Finish | Predecessors | Complete | Remaining | Planned start | Planned finish | Resources | Cost | Actual cost | RDH4-01-001-Road and Block Names-1 | RDH4-01-001-Zones-1 | RDH4-01-001-Phases-1 | RDH4-01-001-Networks-1 | RDH4-01-001-Work Method-1 | RDH4-01-001-MENEM |
| --- | --- | --- | --- | --- | --- | --- | --- | --- | --- | --- | --- | --- | --- | --- | --- | --- | --- | --- | --- |
|  | 6010 | **RHD4-02-002-L03-(ST)-GRP Pipes - 800 mm diameter** |  | 2026-08-04 | 2027-04-25 |  |  |  |  |  |  |  |  |  |  |  |  |  |  |
| RHD4CZ7L03ST1104 |  | Excavation works for GRP Pipe Line 800 mm - (RD-L-3)-Z7-L03-ST | 2d | 2026-08-04 A | 2027-04-14 | RHD4CZ7L03ST1105 | 39% | 2d | 2026-12-17 | 2026-12-19 | Skilled labor [20.36 h]; Unskilled Labor [20.36 h]; Equipment Opreator [24.39 h]; Excavator-Poclain [20.36 h]; Dump Truck [4 h]; GRP (800mm Diameter) - ST - Depth less than 1.5 m [42.65 m]; GRP (800mm Diameter) - ST - Depth: 1.51m - 2.5m | 27,850.45 |  | L03 | Z7 | CONS | ST | Excavation | bef |
| RHD4CZ7L03ST1204 |  | Bedding works for GRP Pipe Line 800 mm - (RD-L-3)-Z7-L03-ST | 2d | 2026-08-06 A | 2027-04-17 | RHD4CZ7L03ST1104 | 47% | 2d | 2026-12-20 | 2026-12-21 | Skilled labor [15.25 h]; Unskilled Labor [30.49 h]; Equipment Opreator [30.49 h]; Excavator-Poclain [15.25 h]; Dump Truck [15.25 h]; GRP (800mm Diameter) - ST - Depth less than 1.5 m [21.33 m]; GRP (800mm Diameter) - ST - Depth: 1.51m - 2.5m | 13,928.49 |  | L03 | Z7 | CONS | ST | Bedding | bef |
| RHD4CZ7L03ST1304 |  | Installing for GRP Pipe Line 800 mm - (RD-L-3)-Z7-L03-ST | 2d | 2026-08-08 A | 2027-04-19 | RHD4CZ7L03ST1204, RHD4CZ7L03ST1308 | 49% | 2d | 2026-12-22 | 2026-12-23 | Unskilled Labor [30.93 h]; Plumber [15.46 h]; GRP (800mm Diameter) - ST - Depth less than 1.5 m [191.95 m]; GRP (800mm Diameter) - ST - Depth: 1.51m - 2.5m | 125,343.35 |  | L03 | Z7 | CONS | ST | Installation | bef |
| RHD4CZ7L03ST1504 |  | Backfilling and warning tape works for GRP Pipe Line 800 mm - (RD-L-3)-Z7-L03-ST | 3d | 2026-09-16 A | 2027-04-25 | RHD4CZ7L03ST1404, RHD4CZ7L03ST1508 | 46% | 3d | 2026-12-27 | 2026-12-29 | Skilled labor [23.2 h]; Unskilled Labor [46.5 h]; Equipment Opreator [46.5 h]; Excavator-Poclain [23.2 h]; Dump Truck [23.2 h]; GRP (800mm Diameter) - ST - Depth less than 1.5 m [85.31 m]; GRP (800mm Diameter) - ST - Depth: 1.51m - 2.5m | 55,707.43 |  | L03 | Z7 | CONS | ST | Backfilling | bef |
| RHD4CZ7L03ST1404 |  | Primary Test for GRP Pipe Line 800 mm - (RD-L-3)-Z7-L03-ST | 2d | 2027-04-20 | 2027-04-21 | RHD4CZ7L03ST1304, RHD4CZ7L03ST1408 |  |  |  |  | Unskilled Labor [10.78 h]; Plumber [10.78 h]; Equipment Opreator [10.78 h]; Water Truck [10.78 h]; GRP (800mm Diameter) - ST - Depth less than 1.5 m [85.31 m]; GRP (800mm Diameter) - ST - Depth: 1.51m - 2.5m | 55,707.43 |  | L03 | Z7 | CONS | ST | Primary Test | bef |
|  | 6008 | **RHD4-02-002-L03-(ST)-GRP Pipes - 600 mm diameter** |  | 2026-08-04 | 2027-04-24 |  |  |  |  |  |  |  |  |  |  |  |  |  |  |
| RHD4CZ7L03ST1102 |  | Excavation works for GRP Pipe Line 600 mm - (RD-L-3)-Z7-L03-ST | 2d | 2026-08-04 A | 2026-08-05 A | RHD4CZ7L03ST1103 | 100% |  | 2026-12-22 | 2026-12-23 | Skilled labor [2.29 h]; Unskilled Labor [2.29 h]; Equipment Opreator [2.72 h]; Excavator-Poclain [2.29 h]; Dump Truck [0.44 h]; GRP (600mm Diameter) - ST - Depth less than 1.5 m [5.28 m] | 2,275.68 | 2,275.68 | L03 | Z7 | CONS | ST | Excavation | bef |
| RHD4CZ7L03ST1202 |  | Bedding works for GRP Pipe Line 600 mm - (RD-L-3)-Z7-L03-ST | 2d | 2026-08-06 A | 2026-08-08 A | RHD4CZ7L03ST1102 | 100% |  | 2026-12-24 | 2026-12-26 | Skilled labor [1.96 h]; Unskilled Labor [3.81 h]; Equipment Opreator [3.81 h]; Excavator-Poclain [1.96 h]; Dump Truck [1.96 h]; GRP (600mm Diameter) - ST - Depth less than 1.5 m [2.64 m] | 1,137.84 | 1,137.84 | L03 | Z7 | CONS | ST | Bedding | bef |
| RHD4CZ7L03ST1302 |  | Installing for GRP Pipe Line 600 mm - (RD-L-3)-Z7-L03-ST | 2d | 2026-08-09 A | 2026-08-10 A | RHD4CZ7L03ST1202, RHD4CZ7L03ST1304 | 100% |  | 2026-12-27 | 2026-12-28 | Unskilled Labor [7.62 h]; Plumber [3.81 h]; GRP (600mm Diameter) - ST - Depth less than 1.5 m [23.75 m] | 10,236.25 | 10,236.25 | L03 | Z7 | CONS | ST | Installation | bef |
| RHD4CZ7L03ST1502 |  | Backfilling and warning tape works for GRP Pipe Line 600 mm - (RD-L-3)-Z7-L03-ST | 2d | 2026-09-19 A | 2026-09-20 A | RHD4CZ7L03ST1402, RHD4CZ7L03ST1504, RHD4CZ7L03ST1503 | 100% |  | 2026-12-31 | 2027-01-02 | Skilled labor [2.83 h]; Unskilled Labor [5.77 h]; Equipment Opreator [5.77 h]; Excavator-Poclain [2.83 h]; Dump Truck [2.83 h]; GRP (600mm Diameter) - ST - Depth less than 1.5 m [10.55 m] | 4,547.05 | 4,547.05 | L03 | Z7 | CONS | ST | Backfilling | bef |
| RHD4CZ7L03ST1402 |  | Primary Test for GRP Pipe Line 600 mm - (RD-L-3)-Z7-L03-ST | 2d | 2027-04-22 | 2027-04-24 | RHD4CZ7L03ST1302, RHD4CZ7L03ST1404 |  |  |  |  | Unskilled Labor [1.2 h]; Plumber [1.2 h]; Equipment Opreator [1.2 h]; Water Truck [1.2 h]; GRP (600mm Diameter) - ST - Depth less than 1.5 m [10.55 m] | 4,547.05 |  | L03 | Z7 | CONS | ST | Primary Test | bef |
|  | 6006 | **RHD4-02-002-L03-(ST)-GRP Pipes - 400 mm diameter** |  | 2026-08-04 | 2027-04-26 |  |  |  |  |  |  |  |  |  |  |  |  |  |  |
| RHD4CZ7L03ST1100 |  | Excavation works for GRP Pipe Line 400 mm - (RD-L-3)-Z7-L03-ST | 2d | 2026-08-04 A | 2027-04-17 | RHD4CZ7L03ST1102 | 45% | 2d | 2026-12-24 | 2026-12-26 | Skilled labor [4.14 h]; Unskilled Labor [4.14 h]; Equipment Opreator [5.01 h]; Excavator-Poclain [4.14 h]; Dump Truck [0.87 h]; GRP (400mm Diameter) - ST - Depth less than 1.5 m [9.56 m] | 2,772.4 |  | L03 | Z7 | CONS | ST | Excavation | bef |
| RHD4CZ7L03ST1200 |  | Bedding works for GRP Pipe Line 400 mm - (RD-L-3)-Z7-L03-ST | 2d | 2026-08-06 A | 2027-04-19 | RHD4CZ7L03ST1100 | 45% | 2d | 2026-12-27 | 2026-12-28 | Skilled labor [3.48 h]; Unskilled Labor [6.97 h]; Equipment Opreator [6.97 h]; Excavator-Poclain [3.48 h]; Dump Truck [3.48 h]; GRP (400mm Diameter) - ST - Depth less than 1.5 m [4.78 m] | 1,386.2 |  | L03 | Z7 | CONS | ST | Bedding | bef |
| RHD4CZ7L03ST1300 |  | Installing for GRP Pipe Line 400 mm - (RD-L-3)-Z7-L03-ST | 2d | 2026-08-08 A | 2027-04-21 | RHD4CZ7L03ST1200 | 45% | 2d | 2026-12-29 | 2026-12-30 | Unskilled Labor [13.83 h]; Plumber [6.97 h]; GRP (400mm Diameter) - ST - Depth less than 1.5 m [43.02 m] | 12,475.8 |  | L03 | Z7 | CONS | ST | Installation | bef |
| RHD4CZ7L03ST1500 |  | Backfilling and warning tape works for GRP Pipe Line 400 mm - (RD-L-3)-Z7-L03-ST | 2d | 2026-09-19 A | 2027-04-26 | RHD4CZ7L03ST1400 | 45% | 2d | 2027-01-03 | 2027-01-04 | Skilled labor [5.23 h]; Unskilled Labor [10.45 h]; Equipment Opreator [10.45 h]; Excavator-Poclain [5.23 h]; Dump Truck [5.23 h]; GRP (400mm Diameter) - ST - Depth less than 1.5 m [19.12 m] | 5,544.8 |  | L03 | Z7 | CONS | ST | Backfilling | bef |
| RHD4CZ7L03ST1400 |  | Primary Test for GRP Pipe Line 400 mm - (RD-L-3)-Z7-L03-ST | 2d | 2027-04-22 | 2027-04-24 | RHD4CZ7L03ST1300 |  |  |  |  | Unskilled Labor [2.07 h]; Plumber [2.07 h]; Equipment Opreator [2.07 h]; Water Truck [2.07 h]; GRP (400mm Diameter) - ST - Depth less than 1.5 m [19.12 m] | 5,544.8 |  | L03 | Z7 | CONS | ST | Primary Test | bef |
|  | 3739 | **RHD4-02-002-L03-(ST)-GRP Pipes - 700 mm diameter** |  | 2026-08-04 | 2027-04-17 |  |  |  |  |  |  |  |  |  |  |  |  |  |  |
| RHD4CZ7L03ST1103 |  | Excavation works for GRP Pipe Line 700 mm - (RD-L-3)-Z7-L03-ST | 2d | 2026-08-04 A | 2026-08-05 A | RHD4CZ7L03ST1104 | 100% |  | 2026-12-20 | 2026-12-21 | Skilled labor [2.94 h]; Unskilled Labor [2.94 h]; Equipment Opreator [3.59 h]; Excavator-Poclain [2.94 h]; Dump Truck [0.54 h]; GRP (700mm Diameter) - ST - Depth less than 1.5 m [6.83 m] | 3,783.82 | 3,783.82 | L03 | Z5 | CONS | ST | Excavation | bef |
| RHD4CZ7L03ST1203 |  | Bedding works for GRP Pipe Line 700 mm - (RD-L-3)-Z7-L03-ST | 2d | 2026-08-06 A | 2026-08-08 A | RHD4CZ7L03ST1103 | 100% |  | 2026-12-22 | 2026-12-23 | Skilled labor [2.5 h]; Unskilled Labor [5.01 h]; Equipment Opreator [5.01 h]; Excavator-Poclain [2.5 h]; Dump Truck [2.5 h]; GRP (700mm Diameter) - ST - Depth less than 1.5 m [3.42 m] | 1,894.68 | 1,894.68 | L03 | Z5 | CONS | ST | Bedding | bef |
| RHD4CZ7L03ST1303 |  | Installing for GRP Pipe Line 700 mm - (RD-L-3)-Z7-L03-ST | 2d | 2026-08-09 A | 2026-08-10 A | RHD4CZ7L03ST1203 | 100% |  | 2026-12-24 | 2026-12-26 | Unskilled Labor [3.27 h]; Plumber [1.6 h]; GRP (700mm Diameter) - ST - Depth less than 1.5 m [30.76 m] | 17,041.04 | 17,041.04 | L03 | Z5 | CONS | ST | Installation | bef |
| RHD4CZ7L03ST1503 |  | Backfilling and warning tape works for GRP Pipe Line 700 mm - (RD-L-3)-Z7-L03-ST | 2d | 2026-09-19 A | 2026-09-20 A | RHD4CZ7L03ST1403, RHD4CZ7L03ST1505 | 100% |  | 2026-12-29 | 2026-12-30 | Skilled labor [3.7 h]; Unskilled Labor [7.41 h]; Equipment Opreator [7.41 h]; Excavator-Poclain [3.7 h]; Dump Truck [3.7 h]; GRP (700mm Diameter) - ST - Depth less than 1.5 m [13.67 m] | 7,573.18 | 7,573.18 | L03 | Z5 | CONS | ST | Backfilling | bef |
| RHD4CZ7L03ST1403 |  | Primary Test for GRP Pipe Line 700 mm - (RD-L-3)-Z7-L03-ST | 2d | 2027-04-15 | 2027-04-17 | RHD4CZ7L03ST1303 |  |  |  |  | Unskilled Labor [1.6 h]; Plumber [1.6 h]; Equipment Opreator [1.6 h]; Water Truck [1.6 h]; GRP (700mm Diameter) - ST - Depth less than 1.5 m [13.67 m] | 7,573.18 |  | L03 | Z5 | CONS | ST | Primary Test | bef |

| ID | WBS | Activity | Duration | Start | Finish | Predecessors | Complete | Remaining | Planned start | Planned finish | Calendar | Resources | Cost | Actual cost | RDH4-01-001-Road and Block Names-1 | RDH4-01-001-Zones-1 | RDH4-01-001-Phases-1 | RDH4-01-001-Networks-1 | RDH4-01-001-Work Method-1 | RDH4-01-001-MENEM |
| --- | --- | --- | --- | --- | --- | --- | --- | --- | --- | --- | --- | --- | --- | --- | --- | --- | --- | --- | --- | --- |
|  | 6396 | **RHD4-02-002-L03-(ST)-GRP Pipes - 1600 mm diameter** |  |  |  |  |  |  |  |  |  |  |  |  |  |  |  |  |  |  |
|  | 6395 | **RHD4-02-002-L03-(ST)-GRP Pipes - 1500 mm diameter** |  |  |  |  |  |  |  |  |  |  |  |  |  |  |  |  |  |  |
|  | 6394 | **RHD4-02-002-L03-(ST)-GRP Pipes - 1400 mm diameter** |  |  |  |  |  |  |  |  |  |  |  |  |  |  |  |  |  |  |
|  | 6393 | **RHD4-02-002-L03-(ST)-GRP Pipes - 1300 mm diameter** |  |  |  |  |  |  |  |  |  |  |  |  |  |  |  |  |  |  |
|  | 6399 | **RHD4-02-002-L03-(ST)-UPVC Pipes - 400 mm diameter** |  |  |  |  |  |  |  |  |  |  |  |  |  |  |  |  |  |  |
|  | 6398 | **RHD4-02-002-L03-(ST)-UPVC Pipes - 300 mm diameter** |  | 2026-08-23 | 2027-04-29 |  |  |  |  |  |  |  |  |  |  |  |  |  |  |  |
| RHD4CZ7L03ST2100 |  | Excavation works for UPVC Pipe Line 300 mm - (RD-L-3)-Z7-L03-ST | 2d | 2026-08-23 A | 2027-04-19 | RHD4ENSDZ7APPST110, RHD4CZ7L03ST1100 | 74% | 2d | 2026-12-27 | 2026-12-28 |  | Skilled labor [20.69 h]; Unskilled Labor [20.69 h]; Equipment Opreator [24.8 h]; Excavator-Poclain [20.69 h]; Dump Truck [4.14 h]; UPVC (300mm Diameter) - ST - Depth less than 1.5 [47.5 m]; UPVC (300mm Diameter) - ST - Depth: 1.51m - 2.5m | 14,392.5 |  | L03 | Z7 | CONS | ST | Excavation | bef |
| RHD4CZ7L03ST2200 |  | Bedding works for UPVC Pipe Line 300 mm - (RD-L-3)-Z7-L03-ST | 2d | 2026-08-25 A | 2027-04-21 | RHD4CZ7L03ST2100 | 74% | 2d | 2026-12-29 | 2026-12-30 |  | Skilled labor [17.32 h]; Unskilled Labor [34.63 h]; Equipment Opreator [34.63 h]; Excavator-Poclain [17.32 h]; Dump Truck [17.32 h]; UPVC (300mm Diameter) - ST - Depth less than 1.5 [23.75 m]; UPVC (300mm Diameter) - ST - Depth: 1.51m - 2.5m | 7,196.25 |  | L03 | Z7 | CONS | ST | Bedding | bef |
| RHD4CZ7L03ST2300 |  | Installing for UPVC Pipe Line 300 mm - (RD-L-3)-Z7-L03-ST | 2d | 2026-08-29 A | 2027-04-24 | RHD4PRSHLDOSST1106, RHD4PRSHLSTAGST1106, RHD4CZ7L03ST2200 | 55% | 2d | 2026-12-31 | 2027-01-02 |  | Unskilled Labor [41.49 h]; Plumber [20.69 h]; UPVC (300mm Diameter) - ST - Depth less than 1.5 [213.75 m]; UPVC (300mm Diameter) - ST - Depth: 1.51m - 2.5m | 64,766.25 |  | L03 | Z7 | CONS | ST | Installation | bef |
| RHD4CZ7L03ST2400 |  | Primary Test for UPVC Pipe Line 300 mm - (RD-L-3)-Z7-L03-ST | 2d | 2027-04-25 | 2027-04-26 | RHD4CZ7L03ST2300 |  |  |  |  |  | Unskilled Labor [10.45 h]; Plumber [10.45 h]; Equipment Opreator [10.45 h]; Water Truck [10.45 h]; UPVC (300mm Diameter) - ST - Depth less than 1.5 [95 m]; UPVC (300mm Diameter) - ST - Depth: 1.51m - 2.5m | 28,785 |  | L03 | Z7 | CONS | ST | Primary Test | bef |
| RHD4CZ7L03ST2500 |  | Backfilling and warning tape works for UPVC Pipe Line 300 mm - (RD-L-3)-Z7-L03-ST | 3d | 2027-04-27 | 2027-04-29 | RHD4CZ7L03ST2400, RHD4CZ7L03ST6100 |  |  |  |  |  | Skilled labor [25.92 h]; Unskilled Labor [51.73 h]; Equipment Opreator [51.73 h]; Excavator-Poclain [25.92 h]; Dump Truck [25.92 h]; UPVC (300mm Diameter) - ST - Depth less than 1.5 [95 m]; UPVC (300mm Diameter) - ST - Depth: 1.51m - 2.5m | 28,785 |  | L03 | Z7 | CONS | ST | Backfilling | bef |
|  | 6406 | **RHD4-02-002-L03-(ST)-Concrete Encasement** |  | 2026-09-15 | 2027-04-24 |  |  |  |  |  |  |  |  |  |  |  |  |  |  |  |
| RHD4CZ7L03ST6100 |  | Pipe Encasement for Storm Pipelines - (RD-L-3)-Z7-L03-ST | 2d | 2026-09-15 A | 2027-04-24 | RHD4CZ7L03ST2300 SS, RHD4CZ7L03ST2300 FF, RHD4CZ7L03ST2200 | 30% | 2d | 2026-12-31 | 2027-01-02 |  | Skilled labor [19.2 h]; Unskilled Labor [19.2 h]; Equipment Opreator [21.13 h]; Concrete Mixer Truck [1.96 h]; Dump Truck [19.2 h]; Pipe Encasement - ST [352.14 m3] | 178,182.84 |  | L03 | Z7 | CONS | ST | Pipe Encasement | bef |
|  | 6407 | **RHD4-02-002-Z7-L03-Catch Basin - ST** |  | 2026-08-25 | 2027-05-10 |  |  |  |  |  |  |  |  |  |  |  |  |  |  |  |
|  | 6408 | **RHD4-02-002-L03-(ST)-Single Catch Basin Works** |  | 2026-08-25 | 2027-05-10 |  |  |  |  |  |  |  |  |  |  |  |  |  |  |  |
| RHD4CZ7L03ST7100 |  | Excavation works for Single Catch Basin - (RD-L-3)-Z7-L03-ST | 3d | 2026-08-25 A | 2027-04-22 | RHD4ENSDZ7APPST110, RHD4CZ7L03ST3102 | 76% | 3d | 2026-12-31 | 2027-01-03 |  | Skilled labor [27.2 h]; Unskilled Labor [54.45 h]; Equipment Opreator [40.8 h]; Excavator-Poclain [27.2 h]; Dump Truck [13.6 h]; Single Catch basin - ST [6.25 nr] | 23,318.75 | 17,722.25 | L03 | Z7 | CONS | ST | Excavation | bef |
| RHD4CZ7L03ST7200 |  | PC Blinding, Installation and Pipe connection for Single Catch Basin - (RD-L-3)-Z7-L03-ST | 3d | 2026-09-19 A | 2027-04-26 | RHD4CZ7L03ST7100 | 76% | 3d | 2027-01-04 | 2027-01-06 |  | Skilled labor [27.2 h]; Unskilled Labor [54.45 h]; Plumber [13.6 h]; Equipment Opreator [5.45 h]; Boom Truck [5.45 h]; Single Catch basin - ST [5 nr] | 18,655 | 14,177.8 | L03 | Z7 | CONS | ST | Installation & Pipe Connection | bef |
| RHD4CZ7L03ST7300 |  | Rings & C.Slab & Final Backfill for Single Catch Basin - (RD-L-3)-Z7-L03-ST | 4d | 2026-10-27 A | 2027-05-01 | RHD4PRSHLDOSST1306, RHD4PRSHLSTAGST1306, RHD4CZ7L03ST7200 | 68% | 4d | 2026-10-27 | 2026-10-31 |  | Skilled labor [34.09 h]; Unskilled Labor [68.06 h]; Equipment Opreator [40.8 h]; Boom Truck [6.86 h]; Bobcat [34.09 h]; Single Catch basin - ST [8.75 nr] | 32,646.25 | 22,199.45 | L03 | Z7 | CONS | ST | Rings | bef |
| RHD4CZ7L03ST7400 |  | Steel Cover for Single Catch Basin - (RD-L-3)-Z7-L03-ST | 3d | 2027-05-02 | 2027-05-04 | RHD4PRSHLDOSST1706, RHD4CZ7L03ST7300 |  |  |  |  |  | Skilled labor [27.2 h]; Unskilled Labor [27.2 h]; Equipment Opreator [5.45 h]; Boom Truck [5.45 h]; Single Catch basin - ST [1.25 nr] | 4,663.75 |  | L03 | Z7 | CONS | ST | Steel Cover | bef |
| RHD4CZ7L03ST7500 |  | Finishing and Insulation works for Single Catch Basin - (RD-L-3)-Z7-L03-ST | 5d | 2027-05-05 | 2027-05-10 | RHD4CZ7L03ST7400 |  |  |  |  |  | Skilled labor [54.45 h]; Unskilled Labor [108.9 h]; Equipment Opreator [10.89 h]; Boom Truck [10.89 h]; Single Catch basin - ST [3.75 nr] | 13,991.25 |  | L03 | Z7 | CONS | ST | Insulation | bef |
|  | 6409 | **RHD4-02-002-L03-(ST)-Double Catch Basin Works** |  |  |  |  |  |  |  |  |  |  |  |  |  |  |  |  |  |  |
|  | 6432 | **RHD4-02-002-Z7-L03-Sewage Network - SW** |  | 2026-08-11 | 2027-07-07 |  |  |  |  |  |  |  |  |  |  |  |  |  |  |  |
|  | 1 | **Wash out Chamber for HDPE force Main** |  | 2027-05-07 | 2027-05-14 |  |  |  |  |  |  |  |  |  |  |  |  |  |  |  |
| RHD4CZ7L03SW4100 |  | Excavation and Bedding for Wash out Chamber for HDPE force Main - (RD-L-3)-Z7-L03-SW | 2d | 2027-05-07 | 2027-05-08 | RHD4CZ7L03SW2500 |  |  |  |  | RHD4 - (7 Days - 8 Hours)-48 | Skilled labor [5.45 h]; Unskilled Labor [5.45 h]; Equipment Opreator [1.09 h]; Excavator-Poclain [0.54 h]; Dump Truck [0.54 h]; Wash out chamber - SW [0.25 nr] | 4,686.25 |  | L03 | Z7 | CONS | SW |  | bef |
| RHD4CZ7L03SW4200 |  | PC works for Wash out Chamber for HDPE force Main - (RD-L-3)-Z7-L03-SW | 2d | 2027-05-09 | 2027-05-10 | RHD4CZ7L03SW4100 |  |  |  |  | RHD4 - (7 Days - 8 Hours)-48 | Skilled labor [5.45 h]; Unskilled Labor [10.89 h]; Equipment Opreator [0.54 h]; Concrete Pump [0.54 h]; Wash out chamber - SW [0.1 nr] | 1,874.5 |  | L03 | Z7 | CONS | SW |  | bef |
| RHD4CZ7L03SW4300 |  | Installation for Wash out Chamber for HDPE force Main - (RD-L-3)-Z7-L03-SW | 2d | 2027-05-11 | 2027-05-12 | RHD4CZ7L03SW4200 |  |  |  |  | RHD4 - (7 Days - 8 Hours)-48 | Skilled labor [5.45 h]; Unskilled Labor [10.89 h]; Equipment Opreator [1.09 h]; Boom Truck [1.09 h]; Wash out chamber - SW [0.55 nr] | 10,309.75 |  | L03 | Z7 | CONS | SW |  | bef |
| RHD4CZ7L03SW4400 |  | Backfilling works for Wash out Chamber for HDPE force Main - (RD-L-3)-Z7-L03-SW | 2d | 2027-05-13 | 2027-05-14 | RHD4CZ7L03SW4300 |  |  |  |  | RHD4 - (7 Days - 8 Hours)-48 | Skilled labor [5.45 h]; Unskilled Labor [10.89 h]; Equipment Opreator [1.09 h]; Water Truck [0.54 h]; Dump Truck [0.54 h]; Wash out chamber - SW [0.1 nr] | 1,874.5 |  | L03 | Z7 | CONS | SW |  | bef |

| ID | WBS | Activity | Duration | Start | Finish | Predecessors | Complete | Remaining | Planned start | Planned finish | Calendar | Resources | Cost | Actual cost | RDH4-01-001-Road and Block Names-1 | RDH4-01-001-Zones-1 | RDH4-01-001-Phases-1 | RDH4-01-001-Networks-1 | RDH4-01-001-MENEM | RDH4-01-001-Work Method-1 |
| --- | --- | --- | --- | --- | --- | --- | --- | --- | --- | --- | --- | --- | --- | --- | --- | --- | --- | --- | --- | --- |
|  | 2 | **Wash out Valves** |  | 2027-05-27 | 2027-05-30 |  |  |  |  |  |  |  |  |  |  |  |  |  |  |  |
| RHD4CZ7L03SW5100 |  | Installation for Wash out Valves for HDPE force Main - (RD-L-3)-Z7-L03-SW | 2d | 2027-05-27 | 2027-05-28 | RHD4CZ7L03SW2800 |  |  |  |  | RHD4 - (7 Days - 8 Hours)-48 | Unskilled Labor [5.45 h]; Plumber [5.45 h]; Wash out valve with dia (100mm) - SW [0.9 nr] | 3,373.2 |  | L03 | Z7 | CONS | SW | bef |  |
| RHD4CZ7L03SW5200 |  | Stem and Service box for Wash out Valves for HDPE force Main - (RD-L-3)-Z7-L03-SW | 2d | 2027-05-29 | 2027-05-30 | RHD4CZ7L03SW5100, RHD4CZ7L03SW4400 |  |  |  |  | RHD4 - (7 Days - 8 Hours)-48 | Unskilled Labor [5.45 h]; Plumber [5.45 h]; Wash out valve with dia (100mm) - SW [0.1 nr] | 374.8 |  | L03 | Z7 | CONS | SW | bef |  |
|  | 3 | **Air Valves** |  | 2027-05-27 | 2027-05-30 |  |  |  |  |  |  |  |  |  |  |  |  |  |  |  |
| RHD4CZ7L03SW5101 |  | Installation for Air Valves for HDPE force Main - (RD-L-3)-Z7-L03-SW | 2d | 2027-05-27 | 2027-05-28 | RHD4CZ7L03SW2800 |  |  |  |  | RHD4 - (7 Days - 8 Hours)-48 | Unskilled Labor [5.45 h]; Plumber [5.45 h]; Air valves with dia (50mm) - SW [0.9 nr] | 4,427.1 |  | L03 | Z7 | CONS | SW | bef |  |
| RHD4CZ7L03SW5201 |  | Stem and Service box for Air Valves for HDPE force Main - (RD-L-3)-Z7-L03-SW | 2d | 2027-05-29 | 2027-05-30 | RHD4CZ7L03SW5101, RHD4CZ7L03SW4400 |  |  |  |  | RHD4 - (7 Days - 8 Hours)-48 | Unskilled Labor [5.45 h]; Plumber [5.45 h]; Air valves with dia (50mm) - SW [0.1 nr] | 491.9 |  | L03 | Z7 | CONS | SW | bef |  |
|  | 4 | **Air Valve Chamber** |  | 2027-05-07 | 2027-05-25 |  |  |  |  |  |  |  |  |  |  |  |  |  |  |  |
| RHD4CZ7L03SW4101 |  | Excavation and Bedding for Air Valve Chamber for HDPE force Main - (RD-L-3)-Z7-L03-SW | 2d | 2027-05-07 | 2027-05-08 | RHD4CZ7L03SW4100 SS |  |  |  |  | RHD4 - (7 Days - 8 Hours)-48 | Skilled labor [5.45 h]; Unskilled Labor [5.45 h]; Equipment Opreator [1.09 h]; Excavator-Poclain [0.54 h]; Dump Truck [0.54 h]; Air valve chamber - SW [0.25 nr] | 1,193 |  | L03 | Z7 | CONS | SW | bef |  |
| RHD4CZ7L03SW4201 |  | PC works for Air Valve Chamber for HDPE force Main - (RD-L-3)-Z7-L03-SW | 2d | 2027-05-09 | 2027-05-10 | RHD4CZ7L03SW4101 |  |  |  |  | RHD4 - (7 Days - 8 Hours)-48 | Skilled labor [5.45 h]; Unskilled Labor [10.89 h]; Equipment Opreator [0.54 h]; Concrete Pump [0.54 h]; Air valve chamber - SW [0.1 nr] | 477.2 |  | L03 | Z7 | CONS | SW | bef |  |
| RHD4CZ7L03SW4301 |  | Installation for Air Valve Chamber for HDPE force Main - (RD-L-3)-Z7-L03-SW | 2d | 2027-05-11 | 2027-05-12 | RHD4CZ7L03SW4201 |  |  |  |  | RHD4 - (7 Days - 8 Hours)-48 | Skilled labor [5.45 h]; Unskilled Labor [10.89 h]; Equipment Opreator [1.09 h]; Boom Truck [1.09 h]; Air valve chamber - SW [0.55 nr] | 2,624.6 |  | L03 | Z7 | CONS | SW | bef |  |
| RHD4CZ7L03SW4401 |  | Backfilling works for Air Valve Chamber for HDPE force Main - (RD-L-3)-Z7-L03-SW | 2d | 2027-05-24 | 2027-05-25 | RHD4CZ7L03SW4301, RHD4CZ7L03ST3500, RHD4CZ7L03ST3501 |  |  |  |  | RHD4 - (7 Days - 8 Hours)-48 | Skilled labor [5.45 h]; Unskilled Labor [10.89 h]; Equipment Opreator [1.09 h]; Water Truck [0.54 h]; Dump Truck [0.54 h]; Air valve chamber - SW [0.1 nr] | 477.2 |  | L03 | Z7 | CONS | SW | bef |  |
|  | 5 | **Discharge Chamber** |  | 2027-05-07 | 2027-05-14 |  |  |  |  |  |  |  |  |  |  |  |  |  |  |  |
| RHD4CZ7L03SW4103 |  | Excavation and Bedding for Discharge Chamber for HDPE force Main - (RD-L-3)-Z7-L03-SW | 2d | 2027-05-07 | 2027-05-08 | RHD4CZ7L03SW4101 SS |  |  |  |  | RHD4 - (7 Days - 8 Hours)-48 | Skilled labor [5.45 h]; Unskilled Labor [5.45 h]; Equipment Opreator [1.09 h]; Excavator-Poclain [0.54 h]; Dump Truck [0.54 h]; Discharge chamber, size 1500*2000 mm - SW [0.25 nr] | 5,618 |  | L03 | Z7 | CONS | SW | bef |  |
| RHD4CZ7L03SW4203 |  | PC works for Discharge Chamber for HDPE force Main - (RD-L-3)-Z7-L03-SW | 2d | 2027-05-09 | 2027-05-10 | RHD4CZ7L03SW4103 |  |  |  |  | RHD4 - (7 Days - 8 Hours)-48 | Skilled labor [5.45 h]; Unskilled Labor [10.89 h]; Equipment Opreator [0.54 h]; Concrete Pump [0.54 h]; Discharge chamber, size 1500*2000 mm - SW [0.1 nr] | 2,247.2 |  | L03 | Z7 | CONS | SW | bef |  |
| RHD4CZ7L03SW4303 |  | Installation for Discharge Chamber for HDPE force Main - (RD-L-3)-Z7-L03-SW | 2d | 2027-05-11 | 2027-05-12 | RHD4CZ7L03SW4203 |  |  |  |  | RHD4 - (7 Days - 8 Hours)-48 | Skilled labor [5.45 h]; Unskilled Labor [10.89 h]; Equipment Opreator [1.09 h]; Boom Truck [1.09 h]; Discharge chamber, size 1500*2000 mm - SW [0.55 nr] | 12,359.6 |  | L03 | Z7 | CONS | SW | bef |  |
| RHD4CZ7L03SW4403 |  | Backfilling works for Discharge Chamber for HDPE force Main - (RD-L-3)-Z7-L03-SW | 2d | 2027-05-13 | 2027-05-14 | RHD4CZ7L03SW4303 |  |  |  |  | RHD4 - (7 Days - 8 Hours)-48 | Skilled labor [5.45 h]; Unskilled Labor [10.89 h]; Equipment Opreator [1.09 h]; Water Truck [0.54 h]; Dump Truck [0.54 h]; Discharge chamber, size 1500*2000 mm - SW [0.1 nr] | 2,247.2 |  | L03 | Z7 | CONS | SW | bef |  |
|  | 4358 | **RHD4-02-002-L03-(SW)-HDPE Pipes - 250 mm diameter** |  | 2027-05-05 | 2027-06-05 |  |  |  |  |  |  |  |  |  |  |  |  |  |  |  |
| RHD4CZ7L03SW2600 |  | Excavation works for HDPE Force Main Pipeline 250 mm - (RD-L-3)-Z7-L03-SW | 4d | 2027-05-05 | 2027-05-09 | RHD4CZ7L03SW1100 |  |  |  |  |  | Skilled labor [41.93 h]; Unskilled Labor [41.93 h]; Equipment Opreator [50.31 h]; Excavator-Poclain [41.93 h]; Dump Truck [8.39 h]; HDPE (250mm Diameter) - SW - in trenches depth:0- 1.5m [86.69 m]; HDPE (250mm Diameter) - SW - in trenches depth: 1.51 than 2.5m [8.1 m] | 19,405.91 |  | L03 | Z7 | CONS | SW | bef | Excavation |
| RHD4CZ7L03SW2700 |  | Bedding works for HDPE Force Main Pipeline 250 mm - (RD-L-3)-Z7-L03-SW | 4d | 2027-05-10 | 2027-05-13 | RHD4CZ7L03SW2600 |  |  |  |  |  | Skilled labor [35.83 h]; Unskilled Labor [71.55 h]; Equipment Opreator [71.55 h]; Excavator-Poclain [35.83 h]; Dump Truck [35.83 h]; HDPE (250mm Diameter) - SW - in trenches depth:0- 1.5m [43.34 m]; HDPE (250mm Diameter) - SW - in trenches depth: 1.51 than 2.5m [2.7 m] | 9,342.86 |  | L03 | Z7 | CONS | SW | bef | Bedding |
| RHD4CZ7L03SW2800 |  | Installing for HDPE Force Main Pipeline 250 mm - (RD-L-3)-Z7-L03-SW | 7d | 2027-05-19 | 2027-05-26 | RHD4CZ7L03SW2700 |  |  |  |  |  | Unskilled Labor [133.08 h]; Plumber [66.54 h]; Equipment Opreator [66.54 h]; Boom Truck [66.54 h]; HDPE (250mm Diameter) - SW - in trenches depth:0- 1.5m [390.1 m]; HDPE (250mm Diameter) - SW - in trenches depth: 1.51 than 2.5m [21.6 m] | 83,375.5 |  | L03 | Z7 | CONS | SW | bef | Installation |
| RHD4CZ7L03SW2900 |  | Primary Test for HDPE Force Main Pipeline 250 mm - (RD-L-3)-Z7-L03-SW | 3d | 2027-05-27 | 2027-05-30 | RHD4CZ7L03SW2800 |  |  |  |  |  | Unskilled Labor [23.52 h]; Plumber [23.52 h]; Equipment Opreator [23.52 h]; Water Truck [23.52 h]; HDPE (250mm Diameter) - SW - in trenches depth:0- 1.5m [173.38 m]; HDPE (250mm Diameter) - SW - in trenches depth: 1.51 than 2.5m [10.8 m] | 37,375.42 |  | L03 | Z7 | CONS | SW | bef | Primary Test |
| RHD4CZ7L03SW3000 |  | Backfilling and warning tape works for HDPE Force Main Pipeline 250 mm - (RD-L-3)-Z7-L03-SW | 5d | 2027-05-31 | 2027-06-05 | RHD4CZ7L03SW2900 |  |  |  |  |  | Skilled labor [51.2 h]; Unskilled Labor [102.4 h]; Equipment Opreator [102.4 h]; Excavator-Poclain [51.2 h]; Dump Truck [51.2 h]; HDPE (250mm Diameter) - SW - in trenches depth:0- 1.5m [173.38 m]; HDPE (250mm Diameter) - SW - in trenches depth: 1.51 than 2.5m [10.8 m] | 37,375.42 |  | L03 | Z7 | CONS | SW | bef | Backfilling |
|  | 6444 | **RHD4-02-002-L03-(SW)-MH Works - 1500 mm diameter** |  |  |  |  |  |  |  |  |  |  |  |  |  |  |  |  |  |  |
|  | 6442 | **RHD4-02-002-L03-(SW)-MH Works - 1200 mm diameter** |  | 2026-08-11 | 2027-07-07 |  |  |  |  |  |  |  |  |  |  |  |  |  |  |  |
| RHD4CZ7L03SW3100 |  | Excavation and PC Blinding works for MH 1200 mm - (RD-L-3)-Z7-L03-SW | 10d | 2026-08-11 A | 2027-05-11 | RHD4ENSDZ7APPSW120, RHD4CZ7L03SW2600 | 70% | 2d | 2027-01-18 | 2027-01-28 |  | Skilled labor [107.05 h]; Unskilled Labor [107.05 h]; Equipment Opreator [171.31 h]; Excavator-Poclain [107.05 h]; Water Truck [10.67 h]; Dump Truck [53.6 h]; MH (1200mm Diameter) - SW - depth 0 - 1.5m [0.25 nr]; MH (1200mm Diameter) - SW - depth 1.51 - 2.5m [1.5 nr]; MH (1200mm Diameter) - SW - depth 2.51 - 3.5m [3 nr]; MH (1200mm Diameter) - SW - depth 3.51 -4.5m [0.25 nr] | 54,786.75 | 38,350.72 | L03 | Z7 | CONS | SW | bef | Excavation |
| RHD4CZ7L03SW3200 |  | Installation of Base for MH 1200 mm - (RD-L-3)-Z7-L03-SW | 17d | 2026-08-12 A | 2027-05-20 | RHD4CZ7L03SW3100 | 70% | 4d | 2027-01-30 | 2027-02-17 |  | Skilled labor [179.69 h]; Unskilled Labor [179.69 h]; Equipment Opreator [71.88 h]; Boom Truck [35.94 h]; Concrete Mixer Truck [35.94 h]; MH (1200mm Diameter) - SW - depth 0 - 1.5m [0.25 nr]; MH (1200mm Diameter) - SW - depth 1.51 - 2.5m [1.5 nr]; MH (1200mm Diameter) - SW - depth 2.51 - 3.5m [3 nr]; MH (1200mm Diameter) - SW - depth 3.51 -4.5m [0.25 nr] | 54,786.75 | 38,350.72 | L03 | Z7 | CONS | SW | bef | Installing Base |
| RHD4CZ7L03SW3300 |  | MH Ring and C.Slab works and Backfilling works for MH 1200 mm - (RD-L-3)-Z7-L03-SW | 17d | 2027-05-22 | 2027-06-09 | RHD4PRSHLDOSSW1306, RHD4PRSHLSTAGSW1306, RHD4CZ7L03SW3200 |  |  |  |  |  | Skilled labor [179.69 h]; Unskilled Labor [179.69 h]; Equipment Opreator [125.78 h]; Boom Truck [71.88 h]; Concrete Mixer Truck [53.91 h]; MH (1200mm Diameter) - SW - depth 0 - 1.5m [0.35 nr]; MH (1200mm Diameter) - SW - depth 1.51 - 2.5m [2.1 nr]; MH (1200mm Diameter) - SW - depth 2.51 - 3.5m [4.2 nr]; MH (1200mm Diameter) - SW - depth 3.51 -4.5m [0.35 nr] | 76,701.45 |  | L03 | Z7 | CONS | SW | bef | Installing Rings |
| RHD4CZ7L03SW3400 |  | Steel Cover for MH 1200 mm - (RD-L-3)-Z7-L03-SW | 7d | 2027-06-10 | 2027-06-17 | RHD4PRSHLDOSSW1406, RHD4PRSHLSTAGSW1406, RHD4CZ7L03SW3300 |  |  |  |  |  | Skilled labor [72.64 h]; Unskilled Labor [145.17 h]; Equipment Opreator [14.48 h]; Boom Truck [14.48 h]; MH (1200mm Diameter) - SW - depth 0 - 1.5m [0.05 nr]; MH (1200mm Diameter) - SW - depth 1.51 - 2.5m [0.3 nr]; MH (1200mm Diameter) - SW - depth 2.51 - 3.5m [0.6 nr]; MH (1200mm Diameter) - SW - depth 3.51 -4.5m [0.05 nr] | 10,957.35 |  | L03 | Z7 | CONS | SW | bef | Steel Cover |
| RHD4CZ7L03SW3500 |  | Finishing, Benching, Testing works for MH 1200 mm - (RD-L-3)-Z7-L03-SW | 17d | 2027-06-19 | 2027-07-07 | RHD4CZ7L03SW3400 |  |  |  |  |  | Skilled labor [179.69 h]; Unskilled Labor [359.38 h]; Plumber [179.69 h]; Equipment Opreator [35.94 h]; Water Truck [35.94 h]; MH (1200mm Diameter) - SW - depth 0 - 1.5m [0.1 nr]; MH (1200mm Diameter) - SW - depth 1.51 - 2.5m [0.6 nr]; MH (1200mm Diameter) - SW - depth 2.51 - 3.5m [1.2 nr]; MH (1200mm Diameter) - SW - depth 3.51 -4.5m [0.1 nr] | 21,914.7 |  | L03 | Z7 | CONS | SW | bef | Benching |

| ID | WBS | Activity | Duration | Start | Finish | Predecessors | Complete | Remaining | Planned start | Planned finish | Resources | Cost | Actual cost | RDH4-01-001-Road and Block Names-1 | RDH4-01-001-Zones-1 | RDH4-01-001-Phases-1 | RDH4-01-001-Networks-1 | RDH4-01-001-Work Method-1 | RDH4-01-001-MENEM |
| --- | --- | --- | --- | --- | --- | --- | --- | --- | --- | --- | --- | --- | --- | --- | --- | --- | --- | --- | --- |
|  | 6437 | **RHD4-02-002-L03-(SW)-GRP Pipes - 700 mm diameter** |  |  |  |  |  |  |  |  |  |  |  |  |  |  |  |  |  |
|  | 6434 | **RHD4-02-002-L03-(SW)-GRP Pipes - 400 mm diameter** |  | 2027-05-01 | 2027-05-11 |  |  |  |  |  |  |  |  |  |  |  |  |  |  |
| RHD4CZ7L03SW1101 |  | Excavation works for GRP Pipe Line 400 mm - (RD-L-3)-Z7-L03-SW | 2d | 2027-05-01 | 2027-05-02 | RHD4ENSDZ7APPSW120, RHD4CZ7L03ST2500 |  |  |  |  | Skilled labor [8.49 h]; Unskilled Labor [8.49 h]; Equipment Opreator [10.24 h]; Excavator-Poclain [8.49 h]; Dump Truck [1.74 h]; GRP (400mm Diameter) - SW - Depth: less than 2.5m [17.87 m]; GRP (400mm Diameter) - SW - Depth: 2.51m - 3.5m | 8,041.5 |  | L03 | Z7 | CONS | SW | Excavation | bef |
| RHD4CZ7L03SW1201 |  | Bedding works for GRP Pipe Line 400 mm - (RD-L-3)-Z7-L03-SW | 2d | 2027-05-03 | 2027-05-04 | RHD4CZ7L03SW1101 |  |  |  |  | Skilled labor [7.73 h]; Unskilled Labor [15.36 h]; Equipment Opreator [15.36 h]; Excavator-Poclain [7.73 h]; Dump Truck [7.73 h]; GRP (400mm Diameter) - SW - Depth: less than 2.5m [8.94 m]; GRP (400mm Diameter) - SW - Depth: 2.51m - 3.5m | 4,023 |  | L03 | Z7 | CONS | SW | Bedding | bef |
| RHD4CZ7L03SW1301 |  | Installing for GRP Pipe Line 400 mm - (RD-L-3)-Z7-L03-SW | 2d | 2027-05-05 | 2027-05-06 | RHD4PRSHLSTAGSW1106, RHD4CZ7L03SW1201, RHD4PRSHLDOSSW1306, RHD4PRSHLPOSW1100, RHD4PRSHLDOSSW1106 |  |  |  |  | Unskilled Labor [23.52 h]; Plumber [11.76 h]; Equipment Opreator [11.76 h]; Boom Truck [11.76 h]; GRP (400mm Diameter) - SW - Depth: less than 2.5m [80.42 m]; GRP (400mm Diameter) - SW - Depth: 2.51m - 3.5m | 36,189 |  | L03 | Z7 | CONS | SW | Installation | bef |
| RHD4CZ7L03SW1401 |  | Primary Test for GRP Pipe Line 400 mm - (RD-L-3)-Z7-L03-SW | 2d | 2027-05-08 | 2027-05-09 | RHD4CZ7L03SW1301 |  |  |  |  | Unskilled Labor [6.1 h]; Plumber [6.1 h]; Equipment Opreator [6.1 h]; Water Truck [6.1 h]; GRP (400mm Diameter) - SW - Depth: less than 2.5m [35.74 m]; GRP (400mm Diameter) - SW - Depth: 2.51m - 3.5m | 16,083 |  | L03 | Z7 | CONS | SW | Primary Test | bef |
| RHD4CZ7L03SW1501 |  | Backfilling and warning tape works for GRP Pipe Line 400 mm - (RD-L-3)-Z7-L03-SW | 2d | 2027-05-10 | 2027-05-11 | RHD4CZ7L03SW1401 |  |  |  |  | Skilled labor [9.69 h]; Unskilled Labor [19.49 h]; Equipment Opreator [19.49 h]; Excavator-Poclain [9.69 h]; Dump Truck [9.69 h]; GRP (400mm Diameter) - SW - Depth: less than 2.5m [35.74 m]; GRP (400mm Diameter) - SW - Depth: 2.51m - 3.5m | 16,083 |  | L03 | Z7 | CONS | SW | Backfilling | bef |
|  | 6433 | **RHD4-02-002-L03-(SW)-GRP Pipes - 300 mm diameter** |  | 2026-08-11 | 2027-05-13 |  |  |  |  |  |  |  |  |  |  |  |  |  |  |
| RHD4CZ7L03SW1100 |  | Excavation works for GRP Pipe Line 300 mm - (RD-L-3)-Z7-L03-SW | 2d | 2026-08-11 A | 2027-05-04 | RHD4ENSDZ7APPSW120, RHD4CZ7L03SW1101 | 62% | 2d | 2027-01-11 | 2027-01-12 | Skilled labor [19.28 h]; Unskilled Labor [19.28 h]; Equipment Opreator [23.09 h]; Excavator-Poclain [19.28 h]; Dump Truck [3.81 h]; GRP (300mm Diameter) - SW - Depth: 1.51m - 2.5m [36.67 m]; GRP (300mm Diameter) - SW - Depth: 2.51m - 3.5m [10.54 m] | 16,511.43 | 10,294.32 | L03 | Z7 | CONS | SW | Excavation | bef |
| RHD4CZ7L03SW1200 |  | Bedding works for GRP Pipe Line 300 mm - (RD-L-3)-Z7-L03-SW | 2d | 2026-08-13 A | 2027-05-06 | RHD4CZ7L03SW1100 | 62% | 2d | 2027-01-13 | 2027-01-14 | Skilled labor [19.28 h]; Unskilled Labor [38.44 h]; Equipment Opreator [38.44 h]; Excavator-Poclain [19.28 h]; Dump Truck [19.28 h]; GRP (300mm Diameter) - SW - Depth: 1.51m - 2.5m [12.22 m]; GRP (300mm Diameter) - SW - Depth: 2.51m - 3.5m [3.51 m] | 5,501.34 | 3,429.68 | L03 | Z7 | CONS | SW | Bedding | bef |
| RHD4CZ7L03SW1300 |  | Installing for GRP Pipe Line 300 mm - (RD-L-3)-Z7-L03-SW | 2d | 2026-09-20 A | 2027-05-09 | RHD4PRSHLSTAGSW1106, RHD4CZ7L03SW1200, RHD4CZ7L03SW1301, RHD4PRSHLDOSSW1306, RHD4PRSHLPOSW1100, RHD4PRSHLDOSSW1106 | 62% | 2d | 2027-01-16 | 2027-01-17 | Unskilled Labor [38.44 h]; Plumber [19.28 h]; Equipment Opreator [19.28 h]; Boom Truck [19.28 h]; GRP (300mm Diameter) - SW - Depth: 1.51m - 2.5m [97.79 m]; GRP (300mm Diameter) - SW - Depth: 2.51m - 3.5m [28.1 m] | 44,028.87 | 27,450.5 | L03 | Z7 | CONS | SW | Installation | bef |
| RHD4CZ7L03SW1400 |  | Primary Test for GRP Pipe Line 300 mm - (RD-L-3)-Z7-L03-SW | 2d | 2027-05-10 | 2027-05-11 | RHD4CZ7L03SW1300 |  |  |  |  | Unskilled Labor [19.28 h]; Plumber [19.28 h]; Equipment Opreator [19.28 h]; Water Truck [19.28 h]; GRP (300mm Diameter) - SW - Depth: 1.51m - 2.5m [48.9 m]; GRP (300mm Diameter) - SW - Depth: 2.51m - 3.5m [14.05 m] | 22,016.1 |  | L03 | Z7 | CONS | SW | Primary Test | bef |
| RHD4CZ7L03SW1500 |  | Backfilling and warning tape works for GRP Pipe Line 300 mm - (RD-L-3)-Z7-L03-SW | 2d | 2027-05-12 | 2027-05-13 | RHD4CZ7L03SW1400, RHD4CZ7L03SW1501 |  |  |  |  | Skilled labor [19.28 h]; Unskilled Labor [38.44 h]; Equipment Opreator [38.44 h]; Excavator-Poclain [19.28 h]; Dump Truck [19.28 h]; GRP (300mm Diameter) - SW - Depth: 1.51m - 2.5m [48.9 m]; GRP (300mm Diameter) - SW - Depth: 2.51m - 3.5m [14.05 m] | 22,016.1 |  | L03 | Z7 | CONS | SW | Backfilling | bef |
|  | 6438 | **RHD4-02-002-L03-(SW)-UPVC Pipes - 200 mm diameter** |  | 2026-08-11 | 2027-05-06 |  |  |  |  |  |  |  |  |  |  |  |  |  |  |
| RHD4CZ7L03SW2100 |  | Excavation works for UPVC Pipe Line 200 mm - (RD-L-3)-Z7-L03-SW | 3d | 2026-08-11 A | 2026-09-19 A | RHD4ENSDZ7APPSW120, RHD4CZ7L03SW1100 | 100% |  | 2027-01-13 | 2027-01-16 | Skilled labor [29.3 h]; Unskilled Labor [29.3 h]; Equipment Opreator [35.07 h]; Excavator-Poclain [29.3 h]; Dump Truck [5.88 h]; UPVC (200mm Diameter) - SW - Depth: less than 1.5m [28.78 m]; UPVC (200mm Diameter) - SW - Depth: 1.51m - 2.5m [43.2 m] | 14,554.8 | 14,554.8 | L03 | Z7 | CONS | SW | Excavation | bef |
| RHD4CZ7L03SW2200 |  | Bedding works for UPVC Pipe Line 200 mm - (RD-L-3)-Z7-L03-SW | 3d | 2026-08-12 A | 2026-09-21 A | RHD4CZ7L03SW2100 | 100% |  | 2027-01-17 | 2027-01-19 | Skilled labor [27.88 h]; Unskilled Labor [55.76 h]; Equipment Opreator [55.76 h]; Excavator-Poclain [27.88 h]; Dump Truck [27.88 h]; UPVC (200mm Diameter) - SW - Depth: less than 1.5m [14.39 m]; UPVC (200mm Diameter) - SW - Depth: 1.51m - 2.5m [14.4 m] | 5,715 | 5,715 | L03 | Z7 | CONS | SW | Bedding | bef |
| RHD4CZ7L03SW2300 |  | Installing for UPVC Pipe Line 200 mm - (RD-L-3)-Z7-L03-SW | 4d | 2026-08-15 A | 2026-09-23 A | RHD4PRSHLSTAGSW1006, RHD4CZ7L03SW2200, RHD4PRSHLPOSW1000, RHD4PRSHLDOSSW1006, RHD4PRSHLDOSSW1306, RHD4PRSHLPOSW1100, RHD4PRSHLDOSSW1106, RHD4PRSHLDOSSW1004, RHD4PRSHLDOSSW1304, RHD4PRSHLDOSSW1104 | 100% |  | 2027-01-20 | 2027-01-24 | Unskilled Labor [69.7 h]; Plumber [34.85 h]; Equipment Opreator [34.85 h]; Boom Truck [34.85 h]; UPVC (200mm Diameter) - SW - Depth: less than 1.5m [129.53 m]; UPVC (200mm Diameter) - SW - Depth: 1.51m - 2.5m [115.2 m] | 48,313.8 | 48,313.8 | L03 | Z7 | CONS | SW | Installation | bef |
| RHD4CZ7L03SW2500 |  | Backfilling and warning tape works for UPVC Pipe Line 200 mm - (RD-L-3)-Z7-L03-SW | 3d | 2026-08-17 A | 2026-10-27 A | RHD4CZ7L03SW2400 | 100% |  | 2027-01-27 | 2027-01-30 | Skilled labor [31.36 h]; Unskilled Labor [62.73 h]; Equipment Opreator [62.73 h]; Excavator-Poclain [31.36 h]; Dump Truck [31.36 h]; UPVC (200mm Diameter) - SW - Depth: less than 1.5m [57.57 m]; UPVC (200mm Diameter) - SW - Depth: 1.51m - 2.5m [57.6 m] | 22,861.8 | 22,861.8 | L03 | Z7 | CONS | SW | Backfilling | bef |
| RHD4CZ7L03SW2400 |  | Primary Test for UPVC Pipe Line 200 mm - (RD-L-3)-Z7-L03-SW | 2d | 2027-05-05 | 2027-05-06 | RHD4CZ7L03SW2300 |  |  |  |  | Unskilled Labor [18.08 h]; Plumber [18.08 h]; Equipment Opreator [18.08 h]; Water Truck [18.08 h]; UPVC (200mm Diameter) - SW - Depth: less than 1.5m [57.57 m]; UPVC (200mm Diameter) - SW - Depth: 1.51m - 2.5m [57.6 m] | 22,861.8 |  | L03 | Z7 | CONS | SW | Primary Test | bef |
|  | 6441 | **RHD4-02-002-L03-(SW)-Concrete Encasement** |  |  |  |  |  |  |  |  |  |  |  |  |  |  |  |  |  |
|  | 6469 | **RHD4-02-002-Z7-L03-Potable Network - PT** |  | 2027-05-08 | 2027-07-21 |  |  |  |  |  |  |  |  |  |  |  |  |  |  |
|  | 6470 | **RHD4-02-002-L03-(PT)-HDPE Pipes - 110 mm diameter** |  | 2027-05-13 | 2027-06-21 |  |  |  |  |  |  |  |  |  |  |  |  |  |  |
| RHD4CZ7L03PT1100 |  | Excavation works for HDPE Pipline 110 mm - (RD-L-3)-Z7-L03-PT | 2d | 2027-05-13 | 2027-05-19 | RHD4ENSDZ7APPPT130, RHD4ENMSPT2000, RHD4CZ7L03PT1101 |  |  |  |  | Skilled labor [6.97 h]; Unskilled Labor [6.97 h]; Equipment Opreator [8.39 h]; Excavator-Poclain [6.97 h]; Dump Truck [1.42 h]; HDPE (110mm Diameter) - PT - Depth: less than 1.5m [16.12 m] | 1,370.2 |  | L03 | Z7 | CONS | PT | Excavation | bef |
| RHD4CZ7L03PT1200 |  | Bedding works for HDPE Pipline 110 mm - (RD-L-3)-Z7-L03-PT | 2d | 2027-05-23 | 2027-05-24 | RHD4CZ7L03PT1100, RHD4CZ7L03PT1201 |  |  |  |  | Skilled labor [5.88 h]; Unskilled Labor [11.65 h]; Equipment Opreator [11.65 h]; Excavator-Poclain [5.88 h]; Dump Truck [5.88 h]; HDPE (110mm Diameter) - PT - Depth: less than 1.5m [8.06 m] | 685.1 |  | L03 | Z7 | CONS | PT | Bedding | bef |
| RHD4CZ7L03PT1300 |  | Installing for HDPE Pipline 110 mm - (RD-L-3)-Z7-L03-PT | 2d | 2027-05-31 | 2027-06-01 | RHD4PRSHLDOSPT1000, RHD4PRSHLSTAGPT1000, RHD4CZ7L03PT1200, RHD4CZ7L03PT1301 |  |  |  |  | Unskilled Labor [23.41 h]; Plumber [11.65 h]; Equipment Opreator [11.65 h]; Boom Truck [11.65 h]; HDPE (110mm Diameter) - PT - Depth: less than 1.5m [72.54 m] | 6,165.9 |  | L03 | Z7 | CONS | PT | Installation | bef |
| RHD4CZ7L03PT1400 |  | Primary Test for HDPE Pipline 110 mm - (RD-L-3)-Z7-L03-PT | 2d | 2027-06-13 | 2027-06-14 | RHD4CZ7L03PT1300, RHD4CZ7L03PT1401, RHD4CZ7L03PT5100 |  |  |  |  | Unskilled Labor [3.48 h]; Plumber [3.48 h]; Equipment Opreator [3.48 h]; Water Truck [3.48 h]; HDPE (110mm Diameter) - PT - Depth: less than 1.5m [32.24 m] | 2,740.4 |  | L03 | Z7 | CONS | PT | Primary Test | bef |
| RHD4CZ7L03PT1500 |  | Backfilling and warning tape works for HDPE Pipline 110 mm - (RD-L-3)-Z7-L03-PT | 2d | 2027-06-20 | 2027-06-21 | RHD4CZ7L03PT1400, RHD4CZ7L03PT1501 |  |  |  |  | Skilled labor [8.8 h]; Unskilled Labor [17.53 h]; Equipment Opreator [17.53 h]; Excavator-Poclain [8.8 h]; Dump Truck [8.8 h]; HDPE (110mm Diameter) - PT - Depth: less than 1.5m [32.24 m] | 2,740.4 |  | L03 | Z7 | CONS | PT | Backfilling | bef |

| ID | WBS | Activity | Duration | Start | Finish | Predecessors | Resources | Cost | RDH4-01-001-Road and Block Names-1 | RDH4-01-001-Zones-1 | RDH4-01-001-Phases-1 | RDH4-01-001-Networks-1 | RDH4-01-001-Work Method-1 | RDH4-01-001-MENEM |
| --- | --- | --- | --- | --- | --- | --- | --- | --- | --- | --- | --- | --- | --- | --- |
|  | 6102 | **RHD4-02-002-L03-(PT)-Air Valve Chambers** |  | 2027-06-29 | 2027-07-07 |  |  |  |  |  |  |  |  |  |
| RHD4CZ7L03PT2102 |  | Excavation and Bedding for Air Valve Chambers for Potable Water Network - (RD-L-3)-Z7-L03-PT | 2d | 2027-06-29 | 2027-06-30 | RHD4CZ7L03PT3202 SS | Skilled labor [5.45 h]; Unskilled Labor [5.45 h]; Equipment Opreator [1.09 h]; Excavator-Poclain [0.54 h]; Dump Truck [0.54 h]; Air Valve chambers - PT [0.25 nr] | 1,193 | L03 | Z7 | CONS | PT | Excavation and Bedding | bef |
| RHD4CZ7L03PT2202 |  | PC works for Air Valve Chambers for Potable Water Network - (RD-L-3)-Z7-L03-PT | 2d | 2027-07-01 | 2027-07-03 | RHD4CZ7L03PT2102 | Skilled labor [5.45 h]; Unskilled Labor [10.89 h]; Equipment Opreator [0.54 h]; Concrete Pump [0.54 h]; Air Valve chambers - PT [0.1 nr] | 477.2 | L03 | Z7 | CONS | PT | PC Works | bef |
| RHD4CZ7L03PT2302 |  | Installation for Air Valve Chambers for Potable Water Network - (RD-L-3)-Z7-L03-PT | 2d | 2027-07-04 | 2027-07-05 | RHD4CZ7L03PT2202 | Skilled labor [5.45 h]; Unskilled Labor [10.89 h]; Equipment Opreator [1.09 h]; Boom Truck [1.09 h]; Air Valve chambers - PT [0.55 nr] | 2,624.6 | L03 | Z7 | CONS | PT | Installation | bef |
| RHD4CZ7L03PT2402 |  | Backfilling works for Air Valve Chambers for Potable Water Network - (RD-L-3)-Z7-L03-PT | 2d | 2027-07-06 | 2027-07-07 | RHD4CZ7L03PT2302 | Skilled labor [5.45 h]; Unskilled Labor [10.89 h]; Equipment Opreator [1.09 h]; Water Truck [0.54 h]; Dump Truck [0.54 h]; Air Valve chambers - PT [0.1 nr] | 477.2 | L03 | Z7 | CONS | PT | Backfilling Works | bef |
|  | 6103 | **RHD4-02-002-L03-(PT)-Air Valves** |  | 2027-07-06 | 2027-07-10 |  |  |  |  |  |  |  |  |  |
| RHD4CZ7L03PT3103 |  | Installation for Air Valves for Potable Water Network - (RD-L-3)-Z7-L03-PT | 2d | 2027-07-06 | 2027-07-07 | RHD4CZ7L03PT2302 | Unskilled Labor [5.45 h]; Plumber [5.45 h]; Air valve diameter 50 mm - PT [0.9 nr] | 4,427.1 | L03 | Z7 | CONS | PT | Installation | bef |
| RHD4CZ7L03PT3203 |  | Stem and Service box for Air Valves for Potable Water Network - (RD-L-3)-Z7-L03-PT | 2d | 2027-07-08 | 2027-07-10 | RHD4CZ7L03PT3103, RHD4CZ7L03PT2402 | Unskilled Labor [5.45 h]; Plumber [5.45 h]; Air valve diameter 50 mm - PT [0.1 nr] | 491.9 | L03 | Z7 | CONS | PT | Stem and Service box | bef |
|  | 6478 | **RHD4-02-002-L03-(PT)-Wash out Valve Chambers** |  | 2027-06-20 | 2027-06-28 |  |  |  |  |  |  |  |  |  |
| RHD4CZ7L03PT2101 |  | Excavation and Bedding for Wash out Valve Chambers for Potable Water Network - (RD-L-3)-Z7-L03-PT | 2d | 2027-06-20 | 2027-06-21 | RHD4ENSDZ7APPPT130, RHD4CZ7L03PT1501 | Skilled labor [5.45 h]; Unskilled Labor [5.45 h]; Equipment Opreator [1.09 h]; Excavator-Poclain [0.54 h]; Dump Truck [0.54 h]; Wash out chambers - PT [0.25 nr] | 4,686.25 | L03 | Z7 | CONS | PT | Excavation and Bedding | bef |
| RHD4CZ7L03PT2201 |  | PC works for Wash out Valve Chambers for Potable Water Network - (RD-L-3)-Z7-L03-PT | 2d | 2027-06-22 | 2027-06-23 | RHD4CZ7L03PT2101 | Skilled labor [5.45 h]; Unskilled Labor [10.89 h]; Equipment Opreator [0.54 h]; Concrete Pump [0.54 h]; Wash out chambers - PT [0.1 nr] | 1,874.5 | L03 | Z7 | CONS | PT | PC Works | bef |
| RHD4CZ7L03PT2301 |  | Installation for Wash out Valve Chambers for Potable Water Network - (RD-L-3)-Z7-L03-PT | 2d | 2027-06-24 | 2027-06-26 | RHD4PRSHLDOSPT1100, RHD4PRSHLDOSPT1400, RHD4PRSHLSTAGPT1100, RHD4PRSHLSTAGPT1400, RHD4CZ7L03PT2201 | Skilled labor [5.45 h]; Unskilled Labor [10.89 h]; Equipment Opreator [1.09 h]; Boom Truck [1.09 h]; Wash out chambers - PT [0.55 nr] | 10,309.75 | L03 | Z7 | CONS | PT | Installation | bef |
| RHD4CZ7L03PT2401 |  | Backfilling works for Wash out Valve Chambers for Potable Water Network - (RD-L-3)-Z7-L03-PT | 2d | 2027-06-27 | 2027-06-28 | RHD4CZ7L03PT2301 | Skilled labor [5.45 h]; Unskilled Labor [10.89 h]; Equipment Opreator [1.09 h]; Water Truck [0.54 h]; Dump Truck [0.54 h]; Wash out chambers - PT [0.1 nr] | 1,874.5 | L03 | Z7 | CONS | PT | Backfilling Works | bef |
|  | 6479 | **RHD4-02-002-L03-(PT)-Wash out Valves** |  | 2027-06-20 | 2027-06-30 |  |  |  |  |  |  |  |  |  |
| RHD4CZ7L03PT3102 |  | Installation for Wash out Valves for Potable Water Network - (RD-L-3)-Z7-L03-PT | 2d | 2027-06-20 | 2027-06-21 | RHD4PRSHLDOSPT1200, RHD4PRSHLSTAGPT1200, RHD4CZ7L03PT2101 SS | Unskilled Labor [5.45 h]; Plumber [5.45 h]; Wash out valve diameter 100 mm - PT [0.9 nr] | 3,373.2 | L03 | Z7 | CONS | PT | Installation | bef |
| RHD4CZ7L03PT3202 |  | Stem and Service box for Wash out Valves for Potable Water Network - (RD-L-3)-Z7-L03-PT | 2d | 2027-06-29 | 2027-06-30 | RHD4PRSHLDOSPT1300, RHD4PRSHLSTAGPT1300, RHD4CZ7L03PT3102, RHD4CZ7L03PT2401 | Unskilled Labor [5.45 h]; Plumber [5.45 h]; Wash out valve diameter 100 mm - PT [0.1 nr] | 374.8 | L03 | Z7 | CONS | PT | Stem and Service box | bef |
|  | 6482 | **RHD4-02-002-L03-(PT)-Fire Hydrant** |  | 2027-06-29 | 2027-07-20 |  |  |  |  |  |  |  |  |  |
| RHD4CZ7L03PT4100 |  | Excavation and Bedding and Pipe Installation for Fire Hydrant - (RD-L-3)-Z7-L03-PT | 5d | 2027-06-29 | 2027-07-04 | RHD4ENSDZ7APPPT130, RHD4CZ7L03PT1501, RHD4CZ7L03PT1500, RHD4CZ7L03PT2401 | Skilled labor [54.45 h]; Unskilled Labor [54.45 h]; Plumber [54.45 h]; Equipment Opreator [27.2 h]; Excavator-Poclain [27.2 h]; 3-outlet fire hydrant (2 x 2.5 inch and 1 x 4.5 inch) in the form of a separate dry vacuum cylinder [1 nr] | 12,620 | L03 | Z7 | CONS | PT | Excavation | bef |
| RHD4CZ7L03PT4200 |  | Valve Installation for Fire Hydrant - (RD-L-3)-Z7-L03-PT | 4d | 2027-07-05 | 2027-07-08 | RHD4CZ7L03PT4100 | Unskilled Labor [36.26 h]; Plumber [36.26 h]; 3-outlet fire hydrant (2 x 2.5 inch and 1 x 4.5 inch) in the form of a separate dry vacuum cylinder [2 nr] | 25,240 | L03 | Z7 | CONS | PT | Valve | bef |
| RHD4CZ7L03PT4300 |  | Stem for Fire Hydrant - (RD-L-3)-Z7-L03-PT | 4d | 2027-07-10 | 2027-07-13 | RHD4CZ7L03PT4200 | Unskilled Labor [36.26 h]; Plumber [36.26 h]; 3-outlet fire hydrant (2 x 2.5 inch and 1 x 4.5 inch) in the form of a separate dry vacuum cylinder [3 nr] | 37,860 | L03 | Z7 | CONS | PT | Stem | bef |
| RHD4CZ7L03PT4400 |  | Fire Installation for Fire Hydrant - (RD-L-3)-Z7-L03-PT | 4d | 2027-07-14 | 2027-07-18 | RHD4PRSHLDOSPT1500, RHD4PRSHLSTAGPT1500, RHD4CZ7L03PT4300 | Unskilled Labor [36.26 h]; Plumber [36.26 h]; Equipment Opreator [36.26 h]; Boom Truck [36.26 h]; 3-outlet fire hydrant (2 x 2.5 inch and 1 x 4.5 inch) in the form of a separate dry vacuum cylinder [3.5 nr] | 44,170 | L03 | Z7 | CONS | PT | Fire | bef |
| RHD4CZ7L03PT4500 |  | Protection Barriers for Fire Hydrant - (RD-L-3)-Z7-L03-PT | 2d | 2027-07-19 | 2027-07-20 | RHD4CZ7L03PT4400 | Unskilled Labor [21.78 h]; Plumber [21.78 h]; 3-outlet fire hydrant (2 x 2.5 inch and 1 x 4.5 inch) in the form of a separate dry vacuum cylinder [0.5 nr] | 6,310 | L03 | Z7 | CONS | PT | Protection Barriers | bef |
|  | 6483 | **RHD4-02-002-L03-(PT)-Concrete Encasement** |  | 2027-05-31 | 2027-06-08 |  |  |  |  |  |  |  |  |  |
| RHD4CZ7L03PT5100 |  | Pipe Encasement for Potable Pipelines - (RD-L-3)-Z7-L03-PT | 8d | 2027-05-31 | 2027-06-08 | RHD4CZ7L03PT1301 FF, RHD4CZ7L03PT1300 FF, RHD4CZ7L03PT1301 SS, RHD4CZ7L03PT1300 SS, RHD4CZ7L03PT1201 | Skilled labor [80.26 h]; Unskilled Labor [80.26 h]; Equipment Opreator [88.32 h]; Concrete Mixer Truck [8.06 h]; Dump Truck [80.26 h]; Pipe Encasement - PT [36.85 m3] | 45,178.1 | L03 | Z7 | CONS | PT | Pipe Encasement | bef |

| ID | WBS | Activity | Duration | Start | Finish | Predecessors | Resources | Cost | RDH4-01-001-Road and Block Names-1 | RDH4-01-001-Zones-1 | RDH4-01-001-Phases-1 | RDH4-01-001-Networks-1 | RDH4-01-001-Work Method-1 | RDH4-01-001-MENEM |
| --- | --- | --- | --- | --- | --- | --- | --- | --- | --- | --- | --- | --- | --- | --- |
|  | 6097 | **RHD4-02-002-L03-(PT)-Gate Valves (Direct Buried)** |  | 2027-07-11 | 2027-07-21 |  |  |  |  |  |  |  |  |  |
| RHD4CZ7L03PT3100 |  | Installation for Direct Buried Gate Valves - (RD-L-3)-Z7-L03-PT | 5d | 2027-07-11 | 2027-07-15 | RHD4CZ7L03PT3102 SS, RHD4CZ7L03PT3203 | Unskilled Labor [49.01 h]; Plumber [49.01 h]; Gate valves dia 100 mm - PT [4.5 nr]; Gate valves dia 150 mm - PT [3.6 nr] | 10,678.5 | L03 | Z7 | CONS | PT | Installation | bef |
| RHD4CZ7L03PT3200 |  | Stem and Service box for Direct Buried Gate Valves - (RD-L-3)-Z7-L03-PT | 5d | 2027-07-17 | 2027-07-21 | RHD4CZ7L03PT3100, RHD4CZ7L03ST3500 | Unskilled Labor [49.01 h]; Plumber [49.01 h]; Gate valves dia 100 mm - PT [0.5 nr]; Gate valves dia 150 mm - PT [0.4 nr] | 1,186.5 | L03 | Z7 | CONS | PT | Stem and Service box | bef |
|  | 6471 | **RHD4-02-002-L03-(PT)-HDPE Pipes - 160 mm diameter** |  | 2027-05-08 | 2027-06-19 |  |  |  |  |  |  |  |  |  |
| RHD4CZ7L03PT1101 |  | Excavation works for HDPE Pipline 160 mm - (RD-L-3)-Z7-L03-PT | 5d | 2027-05-08 | 2027-05-12 | RHD4ENSDZ7APPPT130, RHD4ENMSPT2000, RHD4CZ7L03SW2500 | Skilled labor [48 h]; Unskilled Labor [48 h]; Equipment Opreator [57.6 h]; Excavator-Poclain [48 h]; Dump Truck [9.6 h]; HDPE (160mm Diameter) - PT - Depth: less than 1.5m [104.76 m]; HDPE (160mm Diameter) - PT - Depth: 1.51m - 2.5m [3.65 m] | 11,727.62 | L03 | Z7 | CONS | PT | Excavation | bef |
| RHD4CZ7L03PT1201 |  | Bedding works for HDPE Pipline 160 mm - (RD-L-3)-Z7-L03-PT | 4d | 2027-05-13 | 2027-05-22 | RHD4CZ7L03PT1101 | Skilled labor [41.17 h]; Unskilled Labor [82.22 h]; Equipment Opreator [82.22 h]; Excavator-Poclain [41.17 h]; Dump Truck [41.17 h]; HDPE (160mm Diameter) - PT - Depth: less than 1.5m [52.38 m]; HDPE (160mm Diameter) - PT - Depth: 1.51m - 2.5m [1.22 m] | 5,777.9 | L03 | Z7 | CONS | PT | Bedding | bef |
| RHD4CZ7L03PT1301 |  | Installing for HDPE Pipline 160 mm - (RD-L-3)-Z7-L03-PT | 7d | 2027-05-23 | 2027-05-30 | RHD4PRSHLDOSPT1000, RHD4PRSHLSTAGPT1000, RHD4CZ7L03PT1201 | Unskilled Labor [151.16 h]; Plumber [75.58 h]; Equipment Opreator [75.58 h]; Boom Truck [75.58 h]; HDPE (160mm Diameter) - PT - Depth: less than 1.5m [471.43 m]; HDPE (160mm Diameter) - PT - Depth: 1.51m - 2.5m [9.72 m] | 51,823.25 | L03 | Z7 | CONS | PT | Installation | bef |
| RHD4CZ7L03PT1401 |  | Primary Test for HDPE Pipline 160 mm - (RD-L-3)-Z7-L03-PT | 3d | 2027-06-09 | 2027-06-12 | RHD4CZ7L03PT1301, RHD4CZ7L03PT5100 | Unskilled Labor [27.33 h]; Plumber [27.33 h]; Equipment Opreator [27.33 h]; Water Truck [27.33 h]; HDPE (160mm Diameter) - PT - Depth: less than 1.5m [209.52 m]; HDPE (160mm Diameter) - PT - Depth: 1.51m - 2.5m [4.86 m] | 23,108.76 | L03 | Z7 | CONS | PT | Primary Test | bef |
| RHD4CZ7L03PT1501 |  | Backfilling and warning tape works for HDPE Pipline 160 mm - (RD-L-3)-Z7-L03-PT | 6d | 2027-06-13 | 2027-06-19 | RHD4CZ7L03PT1401 | Skilled labor [58.4 h]; Unskilled Labor [116.74 h]; Equipment Opreator [116.74 h]; Excavator-Poclain [58.4 h]; Dump Truck [58.4 h]; HDPE (160mm Diameter) - PT - Depth: less than 1.5m [209.52 m]; HDPE (160mm Diameter) - PT - Depth: 1.51m - 2.5m [4.86 m] | 23,108.76 | L03 | Z7 | CONS | PT | Backfilling | bef |
|  | 6484 | **RHD4-02-002-Z7-L03-Irrigation Network - IRR** |  | 2027-05-13 | 2027-08-21 |  |  |  |  |  |  |  |  |  |
|  | 6485 | **RHD4-02-002-L03-(IRR)-HDPE Pipes - 160 mm diameter** |  | 2027-05-24 | 2027-06-03 |  |  |  |  |  |  |  |  |  |
| RHD4CZ7L03IRR1100 |  | Excavation works for HDPE Pipline 160 mm - (RD-L-3)-Z7-L03-IRR | 2d | 2027-05-24 | 2027-05-25 | RHD4ENSDZ7APPIRR140, RHD4ENMSRR2000, RHD4CZ7L03PT1101, RHD4CZ7L03IRR1104 | Skilled labor [12.2 h]; Unskilled Labor [12.2 h]; Equipment Opreator [14.59 h]; Excavator-Poclain [12.2 h]; Dump Truck [2.4 h]; HDPE (160mm Diameter) - TSE - Depth: less than 1.5m [16.8 m] | 2,066.4 | L03 | Z7 | CONS | IRR | Excavation | bef |
| RHD4CZ7L03IRR1200 |  | Bedding works for HDPE Pipline 160 mm - (RD-L-3)-Z7-L03-IRR | 2d | 2027-05-26 | 2027-05-27 | RHD4CZ7L03IRR1100 | Skilled labor [9.15 h]; Unskilled Labor [18.3 h]; Equipment Opreator [18.3 h]; Excavator-Poclain [9.15 h]; Dump Truck [9.15 h]; HDPE (160mm Diameter) - TSE - Depth: less than 1.5m [8.4 m] | 1,033.2 | L03 | Z7 | CONS | IRR | Bedding | bef |
| RHD4CZ7L03IRR1300 |  | Installing for HDPE Pipline 160 mm - (RD-L-3)-Z7-L03-IRR | 2d | 2027-05-29 | 2027-05-30 | RHD4PRSHLDOSIRR1000, RHD4PRSHLSTAGIRR1000, RHD4CZ7L03IRR1200 | Unskilled Labor [24.39 h]; Plumber [12.2 h]; Equipment Opreator [12.2 h]; Boom Truck [12.2 h]; HDPE (160mm Diameter) - TSE - Depth: less than 1.5m [75.6 m] | 9,298.8 | L03 | Z7 | CONS | IRR | Installation | bef |
| RHD4CZ7L03IRR1400 |  | Primary Test for HDPE Pipline 160 mm - (RD-L-3)-Z7-L03-IRR | 2d | 2027-05-31 | 2027-06-01 | RHD4CZ7L03IRR1300 | Unskilled Labor [3.7 h]; Plumber [3.7 h]; Equipment Opreator [3.7 h]; Water Truck [3.7 h]; HDPE (160mm Diameter) - TSE - Depth: less than 1.5m [33.6 m] | 4,132.8 | L03 | Z7 | CONS | IRR | Primary Test | bef |
| RHD4CZ7L03IRR1500 |  | Backfilling and warning tape works for HDPE Pipline 160 mm - (RD-L-3)-Z7-L03-IRR | 2d | 2027-06-02 | 2027-06-03 | RHD4CZ7L03IRR1400 | Skilled labor [9.15 h]; Unskilled Labor [18.3 h]; Equipment Opreator [18.3 h]; Excavator-Poclain [9.15 h]; Dump Truck [9.15 h]; HDPE (160mm Diameter) - TSE - Depth: less than 1.5m [33.6 m] | 4,132.8 | L03 | Z7 | CONS | IRR | Backfilling | bef |
|  | 6489 | **RHD4-02-002-L03-(IRR)-HDPE Pipes - 315 mm diameter** |  | 2027-05-13 | 2027-06-14 |  |  |  |  |  |  |  |  |  |
| RHD4CZ7L03IRR1104 |  | Excavation works for HDPE Pipline 315 mm - (RD-L-3)-Z7-L03-IRR | 5d | 2027-05-13 | 2027-05-23 | RHD4ENSDZ7APPIRR140, RHD4ENMSRR2000, RHD4CZ7L03PT1101 | Skilled labor [76.67 h]; Unskilled Labor [76.67 h]; Equipment Opreator [92 h]; Excavator-Poclain [76.67 h]; Dump Truck [15.36 h]; HDPE (315mm Diameter) - TSE - Depth: less than 1.5m [90.67 m]; HDPE (315mm Diameter) - TSE - Depth: more than 1.51m [22.34 m] | 33,827.98 | L03 | Z7 | CONS | IRR | Excavation | bef |
| RHD4CZ7L03IRR1204 |  | Bedding works for HDPE Pipline 315 mm - (RD-L-3)-Z7-L03-IRR | 5d | 2027-05-24 | 2027-05-29 | RHD4CZ7L03IRR1104 | Skilled labor [60.22 h]; Unskilled Labor [120.34 h]; Equipment Opreator [120.34 h]; Excavator-Poclain [60.22 h]; Dump Truck [60.22 h]; HDPE (315mm Diameter) - TSE - Depth: less than 1.5m [45.34 m]; HDPE (315mm Diameter) - TSE - Depth: more than 1.51m [7.45 m] | 15,704.99 | L03 | Z7 | CONS | IRR | Bedding | bef |
| RHD4CZ7L03IRR1304 |  | Installing for HDPE Pipline 315 mm - (RD-L-3)-Z7-L03-IRR | 5d | 2027-05-30 | 2027-06-03 | RHD4PRSHLDOSIRR1000, RHD4PRSHLSTAGIRR1000, RHD4CZ7L03IRR1204 | Unskilled Labor [153.34 h]; Plumber [76.67 h]; Equipment Opreator [76.67 h]; Boom Truck [76.67 h]; HDPE (315mm Diameter) - TSE - Depth: less than 1.5m [408.03 m]; HDPE (315mm Diameter) - TSE - Depth: more than 1.51m [59.57 m] | 138,913.92 | L03 | Z7 | CONS | IRR | Installation | bef |
| RHD4CZ7L03IRR1404 |  | Primary Test for HDPE Pipline 315 mm - (RD-L-3)-Z7-L03-IRR | 3d | 2027-06-05 | 2027-06-07 | RHD4CZ7L03IRR1304 | Unskilled Labor [25.16 h]; Plumber [25.16 h]; Equipment Opreator [25.16 h]; Water Truck [25.16 h]; HDPE (315mm Diameter) - TSE - Depth: less than 1.5m [181.35 m]; HDPE (315mm Diameter) - TSE - Depth: more than 1.51m [29.78 m] | 62,813.46 | L03 | Z7 | CONS | IRR | Primary Test | bef |
| RHD4CZ7L03IRR1504 |  | Backfilling and warning tape works for HDPE Pipline 315 mm - (RD-L-3)-Z7-L03-IRR | 6d | 2027-06-08 | 2027-06-14 | RHD4CZ7L03IRR1404 | Skilled labor [60.22 h]; Unskilled Labor [120.34 h]; Equipment Opreator [120.34 h]; Excavator-Poclain [60.22 h]; Dump Truck [60.22 h]; HDPE (315mm Diameter) - TSE - Depth: less than 1.5m [181.35 m]; HDPE (315mm Diameter) - TSE - Depth: more than 1.51m [29.78 m] | 62,813.46 | L03 | Z7 | CONS | IRR | Backfilling | bef |
|  | 6490 | **RHD4-02-002-L03-(IRR)-HDPE Pipes - 400 mm diameter** |  |  |  |  |  |  |  |  |  |  |  |  |
|  | 6493 | **RHD4-02-002-L03-(IRR)-Gate Valves (Direct Buried)** |  | 2027-06-01 | 2027-06-07 |  |  |  |  |  |  |  |  |  |
| RHD4CZ7L03IRR3100 |  | Installation for Direct Buried Gate Valves - (RD-L-3)-Z7-L03-IRR | 3d | 2027-06-01 | 2027-06-03 | RHD4PRSHLDOSIRR1100, RHD4PRSHLSTAGIRR1100, RHD4CZ7L03IRR1304 SS, RHD4CZ7L03IRR1304 FF, RHD4CZ7L03IRR1300 SS, RHD4CZ7L03IRR1300 FF | Unskilled Labor [32.67 h]; Plumber [32.67 h]; Gate valves dia 100 mm - TSE [5.4 nr] | 8,532 | L03 | Z7 | CONS | IRR | Installation | bef |
| RHD4CZ7L03IRR3200 |  | Stem and Service box for Direct Buried Gate Valves - (RD-L-3)-Z7-L03-IRR | 3d | 2027-06-05 | 2027-06-07 | RHD4PRSHLDOSIRR1300, RHD4PRSHLSTAGIRR1300, RHD4CZ7L03IRR3100, RHD4CZ7L03IRR1500 | Unskilled Labor [32.67 h]; Plumber [32.67 h]; Gate valves dia 100 mm - TSE [0.6 nr] | 948 | L03 | Z7 | CONS | IRR | Stem and Service box | bef |

| ID | WBS | Activity | Duration | Start | Finish | Predecessors | Resources | Cost | RDH4-01-001-Road and Block Names-1 | RDH4-01-001-Zones-1 | RDH4-01-001-Phases-1 | RDH4-01-001-Networks-1 | RDH4-01-001-Work Method-1 | RDH4-01-001-MENEM |
| --- | --- | --- | --- | --- | --- | --- | --- | --- | --- | --- | --- | --- | --- | --- |
|  | 6494 | **RHD4-02-002-L03-(IRR)-Butterfly Valve Chamber** |  | 2027-06-15 | 2027-08-18 |  |  |  |  |  |  |  |  |  |
| RHD4CZ7L03IRR2100 |  | Excavation and Bedding for Butterfly Valve Chamber for Irrigation Network - (RD-L-3)-Z7-L03-IRR | 2d | 2027-06-15 | 2027-06-16 | RHD4ENSDZ7APPIRR140, RHD4CZ7L03IRR1504, RHD4CZ7L03IRR1500 | Skilled labor [21.78 h]; Unskilled Labor [21.78 h]; Equipment Opreator [4.36 h]; Excavator-Poclain [2.18 h]; Dump Truck [2.18 h]; Valve chambers - TSE [1 nr] | 14,643 | L03 | Z7 | CONS | IRR | Excavation and Bedding | bef |
| RHD4CZ7L03IRR2200 |  | PC works for Butterfly Valve Chamber for Irrigation Network - (RD-L-3)-Z7-L03-IRR | 2d | 2027-06-17 | 2027-06-19 | RHD4CZ7L03IRR2100 | Skilled labor [21.78 h]; Unskilled Labor [43.56 h]; Equipment Opreator [2.18 h]; Concrete Pump [2.18 h]; Valve chambers - TSE [0.4 nr] | 5,857.2 | L03 | Z7 | CONS | IRR | PC Works | bef |
| RHD4CZ7L03IRR2300 |  | Installation for Butterfly Valve Chamber for Irrigation Network - (RD-L-3)-Z7-L03-IRR | 2d | 2027-06-20 | 2027-06-21 | RHD4PRSHLDOSIRR1200, RHD4PRSHLDOSIRR1400, RHD4PRSHLSTAGIRR1200, RHD4PRSHLSTAGIRR1400, RHD4CZ7L03IRR2200 | Skilled labor [21.78 h]; Unskilled Labor [43.56 h]; Equipment Opreator [4.36 h]; Boom Truck [4.36 h]; Valve chambers - TSE [2.2 nr] | 32,214.6 | L03 | Z7 | CONS | IRR | Installation | bef |
| RHD4CZ7L03IRR2400 |  | Backfilling works for Butterfly Valve Chamber for Irrigation Network - (RD-L-3)-Z7-L03-IRR | 2d | 2027-08-17 | 2027-08-18 | RHD4CZ7L03IRR2300, RHD4CZ7C032MV1200, RHD4CZ7C032MV3300 | Skilled labor [21.78 h]; Unskilled Labor [43.56 h]; Equipment Opreator [4.36 h]; Water Truck [2.18 h]; Dump Truck [2.18 h]; Valve chambers - TSE [0.4 nr] | 5,857.2 | L03 | Z7 | CONS | IRR | Backfilling Works | bef |
|  | 6495 | **RHD4-02-002-L03-(IRR)-Butterfly Valves** |  | 2027-06-22 | 2027-08-21 |  |  |  |  |  |  |  |  |  |
| RHD4CZ7L03IRR3101 |  | Installation for Butterfly Valves for Irrigation Network - (RD-L-3)-Z7-L03-IRR | 2d | 2027-06-22 | 2027-06-23 | RHD4PRSHLDOSIRR1100, RHD4PRSHLSTAGIRR1100, RHD4CZ7L03IRR2300 | Unskilled Labor [21.78 h]; Plumber [21.78 h]; Butterfly valves dia 315 - TSE [3.6 nr] | 45,021.6 | L03 | Z7 | CONS | IRR | Installation | bef |
| RHD4CZ7L03IRR3201 |  | Stem and Service box for Butterfly Valves for Irrigation Network - (RD-L-3)-Z7-L03-IRR | 2d | 2027-08-19 | 2027-08-21 | RHD4PRSHLDOSIRR1300, RHD4PRSHLSTAGIRR1300, RHD4CZ7L03IRR3101, RHD4CZ7L03IRR2400 | Unskilled Labor [21.78 h]; Plumber [21.78 h]; Butterfly valves dia 315 - TSE [0.4 nr] | 5,002.4 | L03 | Z7 | CONS | IRR | Stem and Service box | bef |
|  | 6498 | **RHD4-02-002-L03-(IRR)-Air Valve Chamber** |  | 2027-06-15 | 2027-06-23 |  |  |  |  |  |  |  |  |  |
| RHD4CZ7L03IRR2102 |  | Excavation and Bedding for Valve Chamber for Irrigation Network - (RD-L-3)-Z7-L03-IRR | 2d | 2027-06-15 | 2027-06-16 | RHD4ENSDZ7APPIRR140, RHD4CZ7L03IRR1504, RHD4CZ7L03IRR1500 | Skilled labor [10.89 h]; Unskilled Labor [10.89 h]; Equipment Opreator [2.18 h]; Excavator-Poclain [1.09 h]; Dump Truck [1.09 h]; Air Valve chambers - TSE [0.5 nr] | 2,386 | L03 | Z7 | CONS | IRR | Excavation and Bedding | bef |
| RHD4CZ7L03IRR2202 |  | PC works for Valve Chamber for Irrigation Network - (RD-L-3)-Z7-L03-IRR | 2d | 2027-06-17 | 2027-06-19 | RHD4CZ7L03IRR2102 | Skilled labor [10.89 h]; Unskilled Labor [21.78 h]; Equipment Opreator [1.09 h]; Concrete Pump [1.09 h]; Air Valve chambers - TSE [0.2 nr] | 954.4 | L03 | Z7 | CONS | IRR | PC Works | bef |
| RHD4CZ7L03IRR2302 |  | Installation for Valve Chamber for Irrigation Network - (RD-L-3)-Z7-L03-IRR | 2d | 2027-06-20 | 2027-06-21 | RHD4PRSHLDOSIRR1200, RHD4PRSHLDOSIRR1400, RHD4PRSHLSTAGIRR1200, RHD4PRSHLSTAGIRR1400, RHD4CZ7L03IRR2202 | Skilled labor [10.89 h]; Unskilled Labor [21.78 h]; Equipment Opreator [2.18 h]; Boom Truck [2.18 h]; Air Valve chambers - TSE [1.1 nr] | 5,249.2 | L03 | Z7 | CONS | IRR | Installation | bef |
| RHD4CZ7L03IRR2402 |  | Backfilling works for Valve Chamber for Irrigation Network - (RD-L-3)-Z7-L03-IRR | 2d | 2027-06-22 | 2027-06-23 | RHD4CZ7L03IRR2302 | Skilled labor [10.89 h]; Unskilled Labor [21.78 h]; Equipment Opreator [2.18 h]; Water Truck [1.09 h]; Dump Truck [1.09 h]; Air Valve chambers - TSE [0.2 nr] | 954.4 | L03 | Z7 | CONS | IRR | Backfilling Works | bef |
|  | 6499 | **RHD4-02-002-L03-(IRR)-Air Valves** |  | 2027-06-22 | 2027-06-26 |  |  |  |  |  |  |  |  |  |
| RHD4CZ7L03IRR3103 |  | Installation for Air Valves for Irrigation Network - (RD-L-3)-Z7-L03-IRR | 2d | 2027-06-22 | 2027-06-23 | RHD4PRSHLDOSIRR1100, RHD4PRSHLSTAGIRR1100, RHD4CZ7L03IRR2302 | Unskilled Labor [10.89 h]; Plumber [10.89 h]; Air valve diameter 50 mm - TSE [1.8 nr] | 8,854.2 | L03 | Z7 | CONS | IRR | Installation | bef |
| RHD4CZ7L03IRR3203 |  | Stem and Service box for Air Valves for Irrigation Network - (RD-L-3)-Z7-L03-IRR | 2d | 2027-06-24 | 2027-06-26 | RHD4PRSHLDOSIRR1300, RHD4PRSHLSTAGIRR1300, RHD4CZ7L03IRR3103, RHD4CZ7L03IRR2402 | Unskilled Labor [10.89 h]; Plumber [10.89 h]; Air valve diameter 50 mm - TSE [0.2 nr] | 983.8 | L03 | Z7 | CONS | IRR | Stem and Service box | bef |
|  | 6685 | **RHD4-02-002-L03-(IRR)-Wash out Chamber** |  | 2027-05-24 | 2027-06-01 |  |  |  |  |  |  |  |  |  |
| RHD4CZ7L03IRR2101 |  | Excavation and Bedding for Wash out Chamber for Irrigation Network - (RD-L-3)-Z7-L03-IRR | 2d | 2027-05-24 | 2027-05-25 | RHD4CZ7L03IRR1100 SS | Skilled labor [5.45 h]; Unskilled Labor [5.45 h]; Equipment Opreator [1.09 h]; Excavator-Poclain [0.54 h]; Dump Truck [0.54 h]; Wash out chambers - TSE [0.25 nr] | 4,686.25 | L03 | Z7 | CONS | IRR | Excavation and Bedding | bef |
| RHD4CZ7L03IRR2201 |  | PC works for Wash out Chamber for Irrigation Network - (RD-L-3)-Z7-L03-IRR | 2d | 2027-05-26 | 2027-05-27 | RHD4CZ7L03IRR2101 | Skilled labor [5.45 h]; Unskilled Labor [10.89 h]; Equipment Opreator [0.54 h]; Concrete Pump [0.54 h]; Wash out chambers - TSE [0.1 nr] | 1,874.5 | L03 | Z7 | CONS | IRR | PC Works | bef |
| RHD4CZ7L03IRR2301 |  | Installation for Wash out Chamber for Irrigation Network - (RD-L-3)-Z7-L03-IRR | 2d | 2027-05-29 | 2027-05-30 | RHD4CZ7L03IRR2201 | Skilled labor [5.45 h]; Unskilled Labor [10.89 h]; Equipment Opreator [1.09 h]; Boom Truck [1.09 h]; Wash out chambers - TSE [0.55 nr] | 10,309.75 | L03 | Z7 | CONS | IRR | Installation | bef |
| RHD4CZ7L03IRR2401 |  | Backfilling works for Wash out Chamber for Irrigation Network - (RD-L-3)-Z7-L03-IRR | 2d | 2027-05-31 | 2027-06-01 | RHD4CZ7L03IRR2301 | Skilled labor [5.45 h]; Unskilled Labor [10.89 h]; Equipment Opreator [1.09 h]; Water Truck [0.54 h]; Dump Truck [0.54 h]; Wash out chambers - TSE [0.1 nr] | 1,874.5 | L03 | Z7 | CONS | IRR | Backfilling Works | bef |
|  | 6686 | **RHD4-02-002-L03-(IRR)-Wash out Valves** |  | 2027-05-31 | 2027-07-24 |  |  |  |  |  |  |  |  |  |
| RHD4CZ7L03IRR3102 |  | Installation for Wash out Valve for Irrigation Network - (RD-L-3)-Z7-L03-IRR | 2d | 2027-05-31 | 2027-06-01 | RHD4CZ7L03IRR2301 | Unskilled Labor [5.45 h]; Plumber [5.45 h]; Wash out valve diameter 100 mm - TSE [0.9 nr] | 3,373.2 | L03 | Z7 | CONS | IRR | Installation | bef |
| RHD4CZ7L03IRR3202 |  | Stem and Service box for Wash out Valve for Irrigation Network - (RD-L-3)-Z7-L03-IRR | 2d | 2027-07-22 | 2027-07-24 | RHD4CZ7L03IRR3102, RHD4CZ7L03IRR2401, RHD4CZ7L03PT3200, RHD4CZ7L015SW2500 | Unskilled Labor [5.45 h]; Plumber [5.45 h]; Wash out valve diameter 100 mm - TSE [0.1 nr] | 374.8 | L03 | Z7 | CONS | IRR | Stem and Service box | bef |

| ID | WBS | Activity | Duration | Start | Finish | Predecessors | Resources | Cost | RDH4-01-001-Road and Block Names-1 | RDH4-01-001-Zones-1 | RDH4-01-001-Phases-1 | RDH4-01-001-Networks-1 | RDH4-01-001-Work Method-1 | RDH4-01-001-MENEM |
| --- | --- | --- | --- | --- | --- | --- | --- | --- | --- | --- | --- | --- | --- | --- |
|  | 6518 | **RHD4-02-002-Z7-L03-Medium Voltage Network - MV** |  | 2027-03-15 | 2027-09-20 |  |  |  |  |  |  |  |  |  |
|  | 6519 | **RHD4-02-002-L03-(MV)-Medium Voltage cable trench** |  | 2027-07-14 | 2027-09-02 |  |  |  |  |  |  |  |  |  |
| RHD4CZ7L03MV1100 |  | Excavation for Medium Voltage Trench - (RD-L-3)-Z7-L03-MV | 15d | 2027-07-14 | 2027-07-31 | RHD4ENSDZ7APPMV150, RHD4CZ7L03RD3100, RHD4CZ8A011MV1100 | Skilled labor [155.3 h]; Unskilled Labor [310.59 h]; Equipment Opreator [465.78 h]; Excavator-Poclain [155.3 h]; Dump Truck [310.59 h]; Excavation for Trench size 60cm wide and 80cm deep ( for 2 cables) [362.78 m3]; Excavation for Trench size 120cm wide and 80cm deep (for 4 cables) [635.25 m3] | 9,980.27 | L03 | Z7 | CONS | MV | Excavation | AFT |
| RHD4CZ7L03MV1200 |  | Trench Backfilling for Medium Voltage Network - (RD-L-3)-Z7-L03-MV | 15d | 2027-08-17 | 2027-09-02 | RHD4CZ7L03MV3200, RHD4CZ7L03MV3101 | Skilled labor [155.3 h]; Unskilled Labor [155.3 h]; Equipment Opreator [310.59 h]; Dump Truck [310.59 h]; Excavation for Trench size 60cm wide and 80cm deep ( for 2 cables) [155.48 m3]; Excavation for Trench size 120cm wide and 80cm deep (for 4 cables) [272.25 m3] | 4,277.26 | L03 | Z7 | CONS | MV | Backfilling | AFT |
|  | 6520 | **RHD4-02-002-L03-(MV)-Medium Voltage duct banks** |  | 2027-03-15 | 2027-03-28 |  |  |  |  |  |  |  |  |  |
| RHD4CZ7L03MV2100 |  | Excavation of Duct Banks for Medium Voltage Network - (RD-L-3)-Z7-L03-MV | 3d | 2027-03-15 | 2027-03-17 | RHD4ENSDZ7APPMV150, RHD4CZ7L03RD3100 | Unskilled Labor [24.61 h]; Equipment Opreator [49.22 h]; Excavator-Poclain [24.61 h]; Dump Truck [24.61 h]; Duct bank for MV cables UPVC (4xø150mm) [3.39 m] | 1,349.02 | L03 | Z7 | CONS | MV | Excavation | bef |
| RHD4CZ7L03MV2200 |  | Installation of Duct Banks for Medium Voltage Network - (RD-L-3)-Z7-L03-MV | 4d | 2027-03-18 | 2027-03-22 | RHD4PRSHLDOSMV1000, RHD4PRSHLSTAGMV1000, RHD4CZ7L03MV2100 | Unskilled Labor [36.92 h]; Equipment Opreator [73.84 h]; Excavator-Poclain [36.92 h]; Dump Truck [36.92 h]; Duct bank for MV cables UPVC (4xø150mm) [3.39 m] | 1,349.02 | L03 | Z7 | CONS | MV | Installing | bef |
| RHD4CZ7L03MV2300 |  | Pouring of Duct Banks for Medium Voltage Network - (RD-L-3)-Z7-L03-MV | 3d | 2027-03-23 | 2027-03-25 | RHD4CZ7L03MV2200 | Unskilled Labor [24.61 h]; Equipment Opreator [49.22 h]; Excavator-Poclain [24.61 h]; Dump Truck [24.61 h]; Duct bank for MV cables UPVC (4xø150mm) [22.03 m] | 8,768.64 | L03 | Z7 | CONS | MV | Pouring | bef |
| RHD4CZ7L03MV2400 |  | Backfilling of Duct Banks for Medium Voltage Network - (RD-L-3)-Z7-L03-MV | 2d | 2027-03-27 | 2027-03-28 | RHD4CZ7L03MV2300 | Unskilled Labor [18.4 h]; Equipment Opreator [36.92 h]; Excavator-Poclain [18.4 h]; Dump Truck [18.4 h]; Duct bank for MV cables UPVC (4xø150mm) [5.08 m] | 2,023.53 | L03 | Z7 | CONS | MV | Backfilling | bef |
|  | 6521 | **RHD4-02-002-L03-(MV)-Medium Voltage cables 3Cx 500 mm²** |  | 2027-08-01 | 2027-09-20 |  |  |  |  |  |  |  |  |  |
| RHD4CZ7L03MV3100 |  | Installation of Medium Voltage Cables 3Cx 500 mm² - (RD-L-3)-Z7-L03-MV | 10d | 2027-08-01 | 2027-08-11 | RHD4PRSHLDOSMV1100, RHD4ENMSMV2000, RHD4ENMSMV2010, RHD4PRSHLSTAGMV1100, RHD4CZ7L03MV1100 | Skilled labor [105.2 h]; Unskilled Labor [420.8 h]; Electrician [210.4 h]; Equipment Opreator [315.6 h]; Boom Truck [105.2 h]; Cable Laying Machine [210.4 h]; Cable 13.8 kV 3Cx 500 mm² Al/XLPE,/LLDPE / Unarmored [4347.26 m] | 691,215.07 | L03 | Z7 | CONS | MV | Installation | AFT |
| RHD4CZ7L03MV3200 |  | Joints Installation of Medium Voltage Cables 3Cx 500 mm² - (RD-L-3)-Z7-L03-MV | 4d | 2027-08-12 | 2027-08-16 | RHD4PRSHLDOSMV1300, RHD4PRSHLSTAGMV1300, RHD4CZ7L03MV3100 | Skilled labor [38.12 h]; Unskilled Labor [152.46 h]; Electrician [76.23 h]; Equipment Opreator [38.12 h]; Boom Truck [38.12 h]; Straight joints cables for 13.8 kv 3Cx 500 mm², Al /XLPE/LLDPE [7 Unit] | 22,736 | L03 | Z7 | CONS | MV | Joints Installation | AFT |
| RHD4CZ7L03MV3300 |  | Testing of Medium Voltage Cables 3Cx 500 mm² - (RD-L-3)-Z7-L03-MV | 10d | 2027-09-04 | 2027-09-14 | RHD4CZ7L03MV3200, RHD4CZ7L03MV1200, RHD4CZ7L03MV4200 | Skilled labor [105.2 h]; Unskilled Labor [420.8 h]; Electrician [210.4 h]; Cable 13.8 kV 3Cx 500 mm² Al/XLPE,/LLDPE / Unarmored [483.03 m] | 76,801.67 | L03 | Z7 | CONS | MV | Testing | AFT |
| RHD4CZ7L03MV3400 |  | Termination of Medium Voltage Cables 3Cx 500 mm² - (RD-L-3)-Z7-L03-MV | 2d | 2027-09-19 | 2027-09-20 | RHD4CZ7L03MV3300, RHD4CZ7L03MV5400 | Unskilled Labor [3.16 h]; Electrician [3.16 h]; Cable Termination for 13.8 kv 3Cx 500 mm², Al /XLPE/LLDPE [14.4 Unit] | 37,944 | L03 | Z7 | CONS | MV | Termination | AFT |
|  | 6522 | **RHD4-02-002-L03-(MV)-Medium Voltage cables 3Cx 50 mm²** |  | 2027-08-01 | 2027-09-20 |  |  |  |  |  |  |  |  |  |
| RHD4CZ7L03MV3101 |  | Installation of Medium Voltage Cables 3Cx 50 mm² - (RD-L-3)-Z7-L03-MV | 2d | 2027-08-01 | 2027-08-02 | RHD4PRSHLDOSMV1200, RHD4ENMSMV2000, RHD4ENMSMV2010, RHD4PRSHLSTAGMV1200, RHD4CZ7L03MV1100 | Unskilled Labor [1.74 h]; Electrician [0.87 h]; Equipment Opreator [1.31 h]; Boom Truck [0.44 h]; Cable Laying Machine [0.87 h]; Single Core Copper Cable 13.8 kV 3Cx 50 mm² Cu/XLPE/PVC / Unarmored [3.6 m] | 403.2 | L03 | Z7 | CONS | MV | Installation | AFT |
| RHD4CZ7L03MV3301 |  | Testing of Medium Voltage Cables 3Cx 50 mm² - (RD-L-3)-Z7-L03-MV | 2d | 2027-08-03 | 2027-08-04 | RHD4CZ7L03MV3101 | Unskilled Labor [0.33 h]; Electrician [0.22 h]; Single Core Copper Cable 13.8 kV 3Cx 50 mm² Cu/XLPE/PVC / Unarmored [0.4 m] | 44.8 | L03 | Z7 | CONS | MV | Testing | AFT |
| RHD4CZ7L03MV3401 |  | Termination of Medium Voltage Cables 3Cx 50 mm² - (RD-L-3)-Z7-L03-MV | 2d | 2027-09-19 | 2027-09-20 | RHD4CZ7L03MV3301, RHD4CZ7L03MV5400 | Unskilled Labor [52.27 h]; Electrician [26.14 h]; Cable Termination for 13.8 kv 3Cx 500 mm², Al /XLPE/LLDPE [3.6 Unit] | 9,486 | L03 | Z7 | CONS | MV | Termination | AFT |
|  | 6523 | **RHD4-02-002-L03-(MV)-Normally open Point (Outdoor Type)** |  | 2027-08-10 | 2027-08-14 |  |  |  |  |  |  |  |  |  |
| RHD4CZ7L03MV4100 |  | Installation for Normally open Point - (RD-L-3)-Z7-L03-MV | 2d | 2027-08-10 | 2027-08-11 | RHD4PRSHLDOSMV1400, RHD4PRSHLSTAGMV1400, RHD4CZ7L03MV3101 SS, RHD4CZ7L03MV3100 FF | Unskilled Labor [0.11 h]; Equipment Opreator [0.22 h]; Excavator-Poclain [0.11 h]; Dump Truck [0.11 h]; Normally Open Point 13.8 KV Outdoor type [0.9 Unit] | 77,219.1 | L03 | Z7 | CONS | MV | Installation | AFT |
| RHD4CZ7L03MV4200 |  | Termination for Normally open Point - (RD-L-3)-Z7-L03-MV | 2d | 2027-08-12 | 2027-08-14 | RHD4CZ7L03MV4100 | Unskilled Labor [3.59 h]; Equipment Opreator [7.3 h]; Excavator-Poclain [3.59 h]; Dump Truck [3.59 h]; Normally Open Point 13.8 KV Outdoor type [0.1 Unit] | 8,579.9 | L03 | Z7 | CONS | MV | Termination | AFT |
|  | 6524 | **RHD4-02-002-L03-(MV)-Unit Substations** |  | 2027-09-04 | 2027-09-18 |  |  |  |  |  |  |  |  |  |
| RHD4CZ7L03MV5100 |  | Excavation for Unit Substations for Medium Voltage Network - (RD-L-3)-Z7-L03-MV | 2d | 2027-09-04 | 2027-09-05 | RHD4ENSDZ7APPMV150, RHD4CZ7L03MV1200, RHD4CZ7L03MV4200 | Skilled labor [21.78 h]; Unskilled Labor [21.78 h]; Equipment Opreator [43.56 h]; Excavator-Poclain [21.78 h]; Dump Truck [21.78 h]; Unit Substation 13.8/0.4 K V, 500kVA ,Including concrete foundations and fencing, According to the specifications and standards of SEC [0.1 Unit]; Ring Main Unit RMU, 13.8KV, According to the specifications and standards of SEC [0.1 Unit] | 12,257 | L03 | Z7 | CONS | MV | Excavation | AFT |
| RHD4CZ7L03MV5200 |  | Concrete Base Placement for Unit Substations for Medium Voltage Network - (RD-L-3)-Z7-L03-MV | 2d | 2027-09-06 | 2027-09-07 | RHD4CZ7L03MV5100 | Skilled labor [21.78 h]; Unskilled Labor [21.78 h]; Equipment Opreator [21.78 h]; Boom Truck [21.78 h]; Unit Substation 13.8/0.4 K V, 500kVA ,Including concrete foundations and fencing, According to the specifications and standards of SEC [0.15 Unit]; Ring Main Unit RMU, 13.8KV, According to the specifications and standards of SEC [0.15 Unit] | 18,385.5 | L03 | Z7 | CONS | MV | Concrete Base Placement | AFT |
| RHD4CZ7L03MV5300 |  | Installation for Fences and doors for Medium Voltage Network - (RD-L-3)-Z7-L03-MV | 5d | 2027-09-08 | 2027-09-13 | RHD4CZ7L03MV5200 | Skilled labor [54.45 h]; Unskilled Labor [54.45 h]; Equipment Opreator [65.34 h]; Excavator-Poclain [10.89 h]; Boom Truck [54.45 h]; Unit Substation 13.8/0.4 K V, 500kVA ,Including concrete foundations and fencing, According to the specifications and standards of SEC [0.1 Unit]; Ring Main Unit RMU, 13.8KV, According to the specifications and standards of SEC [0.1 Unit] | 12,257 | L03 | Z7 | CONS | MV | Fence Installation | AFT |
| RHD4CZ7L03MV5400 |  | Installation for Unit Substations for Medium Voltage Network - (RD-L-3)-Z7-L03-MV | 4d | 2027-09-14 | 2027-09-18 | RHD4PRLOLSTAGMV1601, RHD4PRLOLSTAGMV1602, RHD4CZ7L03MV5300 | Skilled labor [43.56 h]; Unskilled Labor [87.12 h]; Electrician [87.12 h]; Unit Substation 13.8/0.4 K V, 500kVA ,Including concrete foundations and fencing, According to the specifications and standards of SEC [0.65 Unit]; Ring Main Unit RMU, 13.8KV, According to the specifications and standards of SEC [0.65 Unit] | 79,670.5 | L03 | Z7 | CONS | MV | Substation Installation | AFT |

| ID | WBS | Activity | Duration | Start | Finish | Predecessors | Resources | Cost | RDH4-01-001-Road and Block Names-1 | RDH4-01-001-Zones-1 | RDH4-01-001-Phases-1 | RDH4-01-001-Networks-1 | RDH4-01-001-Work Method-1 | RDH4-01-001-MENEM |
| --- | --- | --- | --- | --- | --- | --- | --- | --- | --- | --- | --- | --- | --- | --- |
|  | 6525 | **RHD4-02-002-Z7-L03-Low Voltage Network - LV** |  | 2027-04-13 | 2027-05-10 |  |  |  |  |  |  |  |  |  |
|  | 6526 | **RHD4-02-002-L03-(LV)-Low Voltage duct banks** |  |  |  |  |  |  |  |  |  |  |  |  |
|  | 6527 | **RHD4-02-002-L03-(LV)-Low Voltage Drawpit** |  | 2027-04-13 | 2027-04-17 |  |  |  |  |  |  |  |  |  |
| RHD4CZ7L03LV5100 |  | Excavation of Drawpit size 900x900x1000mm for Low Voltage Network - (RD-L-3)-Z7-L03-LV | 2d | 2027-04-13 | 2027-04-14 | RHD4ENSDZ7APPLV160, RHD4CZ7L03RD3100, RHD4CZ7L03ST1107 | Skilled labor [1.85 h]; Unskilled Labor [1.85 h]; Equipment Opreator [1.42 h]; Excavator-Poclain [0.8 h]; Dump Truck [0.8 h]; Drawpit with medium duty steel cover, size900x900x1000mm, [0.3 Unit] | 1,103.1 | L03 | Z7 | CONS | LV | Excavation | AFT |
| RHD4CZ7L03LV5200 |  | Installation of Drawpit size 900x900x1000mm for Low Voltage Network - (RD-L-3)-Z7-L03-LV | 2d | 2027-04-15 | 2027-04-17 | RHD4PRSHLDOSLV1400, RHD4PRSHLSTAGLV1400, RHD4CZ7L03LV5100 | Skilled labor [1.85 h]; Unskilled Labor [1.85 h]; Equipment Opreator [0.8 h]; Boom Truck [0.8 h]; Drawpit with medium duty steel cover, size900x900x1000mm, [1.7 Unit] | 6,250.9 | L03 | Z7 | CONS | LV | Installation | AFT |
|  | 6528 | **RHD4-02-002-L03-(LV)-Low Voltage cables** |  | 2027-04-18 | 2027-05-03 |  |  |  |  |  |  |  |  |  |
| RHD4CZ7L03LV3100 |  | Excavation for Low Voltage Cables for Low Voltage Network - (RD-L-3)-Z7-L03-LV | 4d | 2027-04-18 | 2027-04-21 | RHD4ENSDZ7APPLV160, RHD4CZ7L03LV5200 | Skilled labor [39.64 h]; Unskilled Labor [79.2 h]; Equipment Opreator [79.2 h]; Excavator-Poclain [39.64 h]; Boom Truck [39.64 h]; Cable, Copper 4x50mm2/ CU/XLPE/PVC +1x25mm2 CU/PVC [36.02 m]; Cable, Copper 3x10mm2/ CU/XLPE/SWA/PVC [145.78 m] | 10,116.03 | L03 | Z7 | CONS | LV | Excavation | AFT |
| RHD4CZ7L03LV3200 |  | Cable Laying of Low Voltage Cables for Low Voltage Network - (RD-L-3)-Z7-L03-LV | 4d | 2027-04-22 | 2027-04-26 | RHD4PRSHLDOSLV1100, RHD4ENMSLV2000, RHD4ENMSLV2010, RHD4PRSHLSTAGLV1100, RHD4CZ7L03LV3100 | Skilled labor [33 h]; Unskilled Labor [132 h]; Electrician [66 h]; Equipment Opreator [98.99 h]; Boom Truck [33 h]; Cable Laying Machine [66 h]; Cable, Copper 4x50mm2/ CU/XLPE/PVC +1x25mm2 CU/PVC [108.07 m]; Cable, Copper 3x10mm2/ CU/XLPE/SWA/PVC [437.35 m] | 30,349.31 | L03 | Z7 | CONS | LV | Cable Laying | AFT |
| RHD4CZ7L03LV3300 |  | Warning tape and Backfill for Low Voltage Cables for Low Voltage Network - (RD-L-3)-Z7-L03-LV | 4d | 2027-04-27 | 2027-05-01 | RHD4CZ7L03LV3200 | Skilled labor [33 h]; Unskilled Labor [132 h]; Electrician [66 h]; Equipment Opreator [33 h]; Boom Truck [33 h]; Cable, Copper 4x50mm2/ CU/XLPE/PVC +1x25mm2 CU/PVC [27.02 m]; Cable, Copper 3x10mm2/ CU/XLPE/SWA/PVC [109.34 m] | 7,587.64 | L03 | Z7 | CONS | LV | Warning tape and Backfill | AFT |
| RHD4CZ7L03LV3400 |  | Testing of Low Voltage Cables for Low Voltage Network - (RD-L-3)-Z7-L03-LV | 2d | 2027-05-02 | 2027-05-03 | RHD4CZ7L03LV3300 | Skilled labor [19.82 h]; Unskilled Labor [79.2 h]; Electrician [39.64 h]; Equipment Opreator [19.82 h]; Boom Truck [19.82 h]; Cable, Copper 4x50mm2/ CU/XLPE/PVC +1x25mm2 CU/PVC [9.01 m]; Cable, Copper 3x10mm2/ CU/XLPE/SWA/PVC [36.45 m] | 2,529.62 | L03 | Z7 | CONS | LV | Testing | AFT |
|  | 6529 | **RHD4-02-002-L03-(LV)-Low Voltage Distribution Pillars** |  | 2027-05-04 | 2027-05-10 |  |  |  |  |  |  |  |  |  |
| RHD4CZ7L03LV4100 |  | Leveling for Distribution Pillars for Low Voltage Network - (RD-L-3)-Z7-L03-LV | 2d | 2027-05-04 | 2027-05-05 | RHD4CZ7L03LV3400 | Skilled labor [16.34 h]; Unskilled Labor [32.67 h]; Equipment Opreator [6.53 h]; Excavator-Poclain [3.27 h]; Boom Truck [3.27 h]; 0.6/1 KV Low Voltage Distribution Panels for Industrial UPS - Cameras [0.15 Unit]; Supply and installation of KWH meter mounting frame including concrete block wall for installation of KWH meter according to the standards and specifications of SEC [0.3 Unit] | 3,612.75 | L03 | Z7 | CONS | LV | Leveling | AFT |
| RHD4CZ7L03LV4200 |  | Lean Concrete for Distribution Pillars for Low Voltage Network - (RD-L-3)-Z7-L03-LV | 2d | 2027-05-06 | 2027-05-08 | RHD4CZ7L03LV4100 | Skilled labor [10.89 h]; Unskilled Labor [21.78 h]; Equipment Opreator [4.36 h]; Concrete Mixer Truck [2.18 h]; Concrete Pump [2.18 h]; 0.6/1 KV Low Voltage Distribution Panels for Industrial UPS - Cameras [0.25 Unit]; Supply and installation of KWH meter mounting frame including concrete block wall for installation of KWH meter according to the standards and specifications of SEC [0.5 Unit] | 6,021.25 | L03 | Z7 | CONS | LV | Lean Concrete | AFT |
| RHD4CZ7L03LV4300 |  | Installation of Distribution Pillars for Low Voltage Network - (RD-L-3)-Z7-L03-LV | 2d | 2027-05-09 | 2027-05-10 | RHD4PRSHLDOSLV1200, RHD4PRSHLDOSLV1300, RHD4PRSHLSTAGLV1200, RHD4PRSHLSTAGLV1300, RHD4CZ7L03LV4200 | Skilled labor [16.34 h]; Unskilled Labor [65.34 h]; Electrician [32.67 h]; Equipment Opreator [16.34 h]; Boom Truck [16.34 h]; 0.6/1 KV Low Voltage Distribution Panels for Industrial UPS - Cameras [0.6 Unit]; Supply and installation of KWH meter mounting frame including concrete block wall for installation of KWH meter according to the standards and specifications of SEC [1.2 Unit] | 14,451 | L03 | Z7 | CONS | LV | Installation | AFT |
|  | 6530 | **RHD4-02-002-L03-(LV)-Low Voltage Distribution Pillars Earthing** |  |  |  |  |  |  |  |  |  |  |  |  |
|  | 6531 | **RHD4-02-002-Z7-L03-Street Lighting Network - SL** |  | 2027-03-18 | 2027-07-31 |  |  |  |  |  |  |  |  |  |
|  | 6532 | **RHD4-02-002-L03-(SL)-Street Lighting duct banks** |  | 2027-03-18 | 2027-03-27 |  |  |  |  |  |  |  |  |  |
| RHD4CZ7L03SL2100 |  | Excavation of Duct Banks for Street Lighting Network - (RD-L-3)-Z7-L03-SL | 2d | 2027-03-18 | 2027-03-20 | RHD4ENSDZ7APPSL170, RHD4CZ7L03MV2100 | Skilled labor [13.07 h]; Unskilled Labor [13.07 h]; Equipment Opreator [26.25 h]; Excavator-Poclain [13.07 h]; Dump Truck [13.07 h]; Road Crossing Duct for Street Lighting cables UPVC (2x?110mm) [1.81 m] | 364.8 | L03 | Z7 | CONS | SL | Excavation | bef |
| RHD4CZ7L03SL2200 |  | Installation of Duct Banks for Street Lighting Network - (RD-L-3)-Z7-L03-SL | 2d | 2027-03-21 | 2027-03-22 | RHD4PRSHLDOSSL1000, RHD4PRSHLSTAGSL1000, RHD4CZ7L03SL2100 | Carpenter [1.96 h]; Skilled labor [19.71 h]; Unskilled Labor [19.71 h]; Steel Fixer [1.96 h]; Road Crossing Duct for Street Lighting cables UPVC (2x?110mm) [1.81 m] | 364.8 | L03 | Z7 | CONS | SL | Installing | bef |
| RHD4CZ7L03SL2300 |  | Pouring of Duct Banks for Street Lighting Network - (RD-L-3)-Z7-L03-SL | 2d | 2027-03-23 | 2027-03-24 | RHD4CZ7L03SL2200 | Skilled labor [13.07 h]; Unskilled Labor [13.07 h]; Equipment Opreator [5.23 h]; Concrete Mixer Truck [2.61 h]; Concrete Pump [2.61 h]; Road Crossing Duct for Street Lighting cables UPVC (2x?110mm) [11.74 m] | 2,371.2 | L03 | Z7 | CONS | SL | Pouring | bef |
| RHD4CZ7L03SL2400 |  | Backfilling of Duct Banks for Street Lighting Network - (RD-L-3)-Z7-L03-SL | 2d | 2027-03-25 | 2027-03-27 | RHD4CZ7L03SL2300 | Skilled labor [9.8 h]; Unskilled Labor [9.8 h]; Equipment Opreator [3.92 h]; Excavator-Poclain [3.92 h]; Road Crossing Duct for Street Lighting cables UPVC (2x?110mm) [2.71 m] | 547.2 | L03 | Z7 | CONS | SL | Backfilling | bef |
|  | 6533 | **RHD4-02-002-L03-(SL)-Street Lighting Drawpit** |  | 2027-05-11 | 2027-05-19 |  |  |  |  |  |  |  |  |  |
| RHD4CZ7L03SL5100 |  | Excavation of Drawpit size 600x600x900mm for Street Lighting Network - (RD-L-3)-Z7-L03-SL | 2d | 2027-05-11 | 2027-05-12 | RHD4ENSDZ7APPSL170, RHD4CZ7L03ST1502, RHD4CZ7L03SL2300, RHD4CZ7L03LV4300 | Skilled labor [1.85 h]; Unskilled Labor [1.85 h]; Equipment Opreator [1.42 h]; Excavator-Poclain [0.8 h]; Dump Truck [0.8 h]; Drawpit with medium duty steel cover, size600x600x900mm, [0.3 Unit] | 735.3 | L03 | Z7 | CONS | SL | Excavation | AFT |
| RHD4CZ7L03SL5200 |  | Installation of Drawpit size 600x600x900mm for Street Lighting Network - (RD-L-3)-Z7-L03-SL | 2d | 2027-05-13 | 2027-05-19 | RHD4PRSHLDOSSL1400, RHD4PRSHLSTAGSL1400, RHD4CZ7L03SL5100 | Skilled labor [1.85 h]; Unskilled Labor [1.85 h]; Equipment Opreator [0.8 h]; Boom Truck [0.8 h]; Drawpit with medium duty steel cover, size600x600x900mm, [1.7 Unit] | 4,166.7 | L03 | Z7 | CONS | SL | Installation | AFT |

| ID | WBS | Activity | Duration | Start | Finish | Predecessors | Resources | Cost | RDH4-01-001-Road and Block Names-1 | RDH4-01-001-Zones-1 | RDH4-01-001-Phases-1 | RDH4-01-001-Networks-1 | RDH4-01-001-Work Method-1 | RDH4-01-001-MENEM |
| --- | --- | --- | --- | --- | --- | --- | --- | --- | --- | --- | --- | --- | --- | --- |
|  | 6534 | **RHD4-02-002-L03-(SL)-Street Lighting cables** |  | 2027-05-20 | 2027-06-27 |  |  |  |  |  |  |  |  |  |
| RHD4CZ7L03SL3100 |  | Excavation for Street Lighting Cables for Street Lighting Network - (RD-L-3)-Z7-L03-SL | 10d | 2027-05-20 | 2027-05-31 | RHD4ENSDZ7APPSL170, RHD4CZ7L03SL5200 | Skilled labor [106.62 h]; Unskilled Labor [213.34 h]; Equipment Opreator [213.34 h]; Excavator-Poclain [106.62 h]; Boom Truck [106.62 h]; Cable, Copper 4x10mm2/ CU/XLPE/SWA/PVC + 1x10mm2 CU/PVC [489.65 m] | 23,992.79 | L03 | Z7 | CONS | SL | Excavation | AFT |
| RHD4CZ7L03SL3200 |  | Cable Laying of Street Lighting Cables for Street Lighting Network - (RD-L-3)-Z7-L03-SL | 9d | 2027-06-01 | 2027-06-10 | RHD4PRSHLDOSSL1100, RHD4ENMSSL2000, RHD4ENMSSL2010, RHD4PRSHLSTAGSL1100, RHD4CZ7L03SL3100 | Skilled labor [88.87 h]; Unskilled Labor [355.46 h]; Electrician [177.73 h]; Equipment Opreator [266.6 h]; Boom Truck [88.87 h]; Cable Laying Machine [177.73 h]; Cable, Copper 4x10mm2/ CU/XLPE/SWA/PVC + 1x10mm2 CU/PVC [1468.95 m] | 71,978.36 | L03 | Z7 | CONS | SL | Cable Laying | AFT |
| RHD4CZ7L03SL3300 |  | Warning tape and Backfill for Street Lighting Cables for Street Lighting Network - (RD-L-3)-Z7-L03-SL | 9d | 2027-06-12 | 2027-06-21 | RHD4CZ7L03SL3200 | Skilled labor [88.87 h]; Unskilled Labor [355.46 h]; Electrician [177.73 h]; Equipment Opreator [88.87 h]; Boom Truck [88.87 h]; Cable, Copper 4x10mm2/ CU/XLPE/SWA/PVC + 1x10mm2 CU/PVC [367.24 m] | 17,994.59 | L03 | Z7 | CONS | SL | Warning tape and Backfill | AFT |
| RHD4CZ7L03SL3400 |  | Testing of Street Lighting Cables for Street Lighting Network - (RD-L-3)-Z7-L03-SL | 5d | 2027-06-22 | 2027-06-27 | RHD4CZ7L03SL3300 | Skilled labor [53.36 h]; Unskilled Labor [213.34 h]; Electrician [106.62 h]; Equipment Opreator [53.36 h]; Boom Truck [53.36 h]; Cable, Copper 4x10mm2/ CU/XLPE/SWA/PVC + 1x10mm2 CU/PVC [122.41 m] | 5,998.2 | L03 | Z7 | CONS | SL | Testing | AFT |
|  | 6535 | **RHD4-02-002-L03-(SL)-Street Lighting Poles** |  | 2027-06-28 | 2027-07-31 |  |  |  |  |  |  |  |  |  |
| RHD4CZ7L03SL1100 |  | Excavation for RC Base for Lighting Poles for Street Lighting Network - (RD-L-3)-Z7-L03-SL | 5d | 2027-06-28 | 2027-07-03 | RHD4ENSDZ7APPSL170, RHD4CZ7L03SL3400 | Skilled labor [49.33 h]; Unskilled Labor [49.33 h]; Equipment Opreator [98.78 h]; Excavator-Poclain [49.33 h]; Dump Truck [49.33 h]; Lighting poles single arms, height of ( 10 ) meters [6.8 Unit] | 23,167.6 | L03 | Z7 | CONS | SL | Excavation | AFT |
| RHD4CZ7L03SL1200 |  | Installation for RC Base for Lighting Poles for Street Lighting Network - (RD-L-3)-Z7-L03-SL | 5d | 2027-07-04 | 2027-07-08 | RHD4CZ7L03SL1100 | Skilled labor [49.33 h]; Unskilled Labor [49.33 h]; Equipment Opreator [98.78 h]; Excavator-Poclain [49.33 h]; Dump Truck [49.33 h]; Lighting poles single arms, height of ( 10 ) meters [17 Unit] | 57,919 | L03 | Z7 | CONS | SL | RC Base | AFT |
| RHD4CZ7L03SL1300 |  | Backfill for RC Base for Lighting Poles for Street Lighting Network - (RD-L-3)-Z7-L03-SL | 5d | 2027-07-10 | 2027-07-14 | RHD4CZ7L03SL1200 | Skilled labor [49.33 h]; Unskilled Labor [49.33 h]; Equipment Opreator [98.78 h]; Excavator-Poclain [49.33 h]; Dump Truck [49.33 h]; Lighting poles single arms, height of ( 10 ) meters [3.4 Unit] | 11,583.8 | L03 | Z7 | CONS | SL | Backfill | AFT |
| RHD4CZ7L03SL1400 |  | Installation for Lighting Poles for Street Lighting Network - (RD-L-3)-Z7-L03-SL | 7d | 2027-07-15 | 2027-07-22 | RHD4PRSHLDOSSL1200, RHD4ENMSSL2000, RHD4ENMSSL2010, RHD4PRSHLSTAGSL1200, RHD4CZ7L03SL1300, RHD4CZ7L03SL3400 | Skilled labor [74.05 h]; Unskilled Labor [74.05 h]; Electrician [74.05 h]; Equipment Opreator [74.05 h]; Boom Truck [74.05 h]; Lighting poles single arms, height of ( 10 ) meters [40.8 Unit] | 139,005.6 | L03 | Z7 | CONS | SL | Poles Installation | AFT |
| RHD4CZ7L03SL1500 |  | Luminaire Installation for Lighting Poles for Street Lighting Network - (RD-L-3)-Z7-L03-SL | 5d | 2027-07-26 | 2027-07-31 | RHD4PRSHLDOSSL1300, RHD4PRSHLSTAGSL1300, RHD4CZ7L03SL1400, RHD4CZ7L03SL6100 | Unskilled Labor [98.78 h]; Electrician [49.33 h]; Equipment Opreator [9.91 h]; Boom Truck [19.71 h]; Street Lighting( LED) Luminaire of Output ?10898 lumen [68 Unit] | 39,984 | L03 | Z7 | CONS | SL | Luminaire Installation | AFT |
|  | 6537 | **RHD4-02-002-L03-(SL)-Street Lighting Earthing System** |  | 2027-07-24 | 2027-07-25 |  |  |  |  |  |  |  |  |  |
| RHD4CZ7L03SL6100 |  | Installation of Earthing for Lighting Poles and Fedder Pillers for Street Lighting Network - (RD-L-3)-Z7-L03-SL | 2d | 2027-07-24 | 2027-07-25 | RHD4ENMSER2000, RHD4ENMSER2010, RHD4CZ7L03SL1400 | Skilled labor [0.8 h]; Unskilled Labor [0.8 h]; Equipment Opreator [1.42 h]; Excavator-Poclain [0.8 h]; Dump Truck [0.8 h]; Including lighting poles circuits - ER [1 Unit] | 613 | L03 | Z7 | CONS | SL | Installation | AFT |
|  | 5023 | **RHD4-02-002-L03-(SL)-Street Lighting Feeder Pillars** |  |  |  |  |  |  |  |  |  |  |  |  |
|  | 6543 | **RHD4-02-002-Z7-L03-Telecommunications Network - TC** |  | 2027-02-08 | 2027-09-11 |  |  |  |  |  |  |  |  |  |
|  | 6544 | **RHD4-02-002-L03-(TC)-Telecommunications Ducts** |  | 2027-08-01 | 2027-09-11 |  |  |  |  |  |  |  |  |  |
| RHD4CZ7L03TC2100 |  | Excavation of HDPE Ducts for Telecom Network - (RD-L-3)-Z7-L03-TC | 12d | 2027-08-01 | 2027-08-14 | RHD4ENSDZ7APPTC190, RHD4CZ7L03TC3400, RHD4CZ7L03SL1500 | Skilled labor [123.39 h]; Unskilled Labor [123.39 h]; Equipment Opreator [246.78 h]; Excavator-Poclain [123.39 h]; Dump Truck [123.39 h]; (6*50mm) HDPE ducts -TC [220.5 m]; (6*50mm+2*32mm) HDPE ducts -TC [112.18 m]; (2*32mm) HDPE ducts -TC [7.26 m] | 31,878.46 | L03 | Z7 | CONS | TC | Excavation | AFT |
| RHD4CZ7L03TC2200 |  | Installation of HDPE Ducts for Telecom Network - (RD-L-3)-Z7-L03-TC | 7d | 2027-08-15 | 2027-08-22 | RHD4PRSHLDOSTC1000, RHD4PRSHLSTAGTC1000, RHD4CZ7L03TC2100 | Carpenter [7.41 h]; Skilled labor [74.05 h]; Unskilled Labor [74.05 h]; Steel Fixer [7.41 h]; (6*50mm) HDPE ducts -TC [716.62 m]; (6*50mm+2*32mm) HDPE ducts -TC [364.58 m]; (2*32mm) HDPE ducts -TC [23.6 m] | 103,605.16 | L03 | Z7 | CONS | TC | Installing | AFT |
| RHD4CZ7L03TC2400 |  | Backfilling of HDPE Ducts for Telecom Network - (RD-L-3)-Z7-L03-TC | 12d | 2027-08-29 | 2027-09-11 | RHD4CZ7L03TC2200, RHD4CZ7L03TC5200 | Skilled labor [123.39 h]; Unskilled Labor [123.39 h]; Equipment Opreator [49.33 h]; Excavator-Poclain [49.33 h]; (6*50mm) HDPE ducts -TC [165.38 m]; (6*50mm+2*32mm) HDPE ducts -TC [84.14 m]; (2*32mm) HDPE ducts -TC [5.45 m] | 23,908.85 | L03 | Z7 | CONS | TC | Backfilling | AFT |
|  | 6545 | **RHD4-02-002-L03-(TC)-Telecommunications Manholes** |  | 2027-08-15 | 2027-08-28 |  |  |  |  |  |  |  |  |  |
| RHD4CZ7L03TC5100 |  | Excavation for Manholes for Telecom Network - (RD-L-3)-Z7-L03-TC | 6d | 2027-08-15 | 2027-08-21 | RHD4ENSDZ7APPTC190, RHD4CZ7L03TC2100 | Skilled labor [21.78 h]; Unskilled Labor [21.78 h]; Equipment Opreator [17.42 h]; Excavator-Poclain [8.71 h]; Dump Truck [8.71 h]; Manhole Type 1 - TC [1.2 nr]; Manhole Type 2 - TC [0.6 nr] | 12,133.8 | L03 | Z7 | CONS | TC | Excavation | AFT |
| RHD4CZ7L03TC5200 |  | Installation of Manholes for Telecom Network - (RD-L-3)-Z7-L03-TC | 6d | 2027-08-22 | 2027-08-28 | RHD4PRSHLDOSTC1200, RHD4PRSHLSTAGTC1200, RHD4CZ7L03TC5100, RHD4CZ7L03TC2200 SS | Skilled labor [21.78 h]; Unskilled Labor [21.78 h]; Equipment Opreator [8.71 h]; Boom Truck [8.71 h]; Manhole Type 1 - TC [6.8 nr]; Manhole Type 2 - TC [3.4 nr] | 68,758.2 | L03 | Z7 | CONS | TC | Installation | AFT |
|  | 6546 | **RHD4-02-002-L03-(TC)-Telecomminications Road Crossings** |  | 2027-02-08 | 2027-02-18 |  |  |  |  |  |  |  |  |  |
| RHD4CZ7L03TC3100 |  | Excavation for Road Crossings for Telecom Network - (RD-L-3)-Z7-L03-TC | 2d | 2027-02-08 | 2027-02-09 | RHD4ENSDZ7APPTC190, RHD4CZ7L03ST1108 | Skilled labor [19.49 h]; Unskilled Labor [19.49 h]; Equipment Opreator [38.88 h]; Excavator-Poclain [19.49 h]; Dump Truck [19.49 h]; Road crossing ducts, (6*50mm) HDPE -TC [3.57 m] | 135.66 | L03 | Z7 | CONS | TC | Excavation | bef |
| RHD4CZ7L03TC3200 |  | Installation of Road Crossings for Telecom Network - (RD-L-3)-Z7-L03-TC | 3d | 2027-02-10 | 2027-02-13 | RHD4PRSHLDOSTC1100, RHD4PRSHLSTAGTC1100, RHD4CZ7L03TC3100 | Carpenter [2.61 h]; Skilled labor [25.92 h]; Unskilled Labor [25.92 h]; Steel Fixer [2.61 h]; Road crossing ducts, (6*50mm) HDPE -TC [3.57 m] | 135.66 | L03 | Z7 | CONS | TC | Installing | bef |
| RHD4CZ7L03TC3300 |  | Pouring of Road Crossings for Telecom Network - (RD-L-3)-Z7-L03-TC | 3d | 2027-02-14 | 2027-02-16 | RHD4CZ7L03TC3200 | Skilled labor [25.92 h]; Unskilled Labor [25.92 h]; Equipment Opreator [10.35 h]; Concrete Mixer Truck [5.23 h]; Concrete Pump [5.23 h]; Road crossing ducts, (6*50mm) HDPE -TC [23.2 m] | 881.6 | L03 | Z7 | CONS | TC | Pouring | bef |
| RHD4CZ7L03TC3400 |  | Backfilling of Road Crossings for Telecom Network - (RD-L-3)-Z7-L03-TC | 2d | 2027-02-17 | 2027-02-18 | RHD4CZ7L03TC3300 | Skilled labor [19.49 h]; Unskilled Labor [19.49 h]; Equipment Opreator [7.73 h]; Excavator-Poclain [7.73 h]; Road crossing ducts, (6*50mm) HDPE -TC [5.36 m] | 203.49 | L03 | Z7 | CONS | TC | Backfilling | bef |

| ID | WBS | Activity | Duration | Start | Finish | Predecessors | Resources | Cost | RDH4-01-001-Road and Block Names-1 | RDH4-01-001-Zones-1 | RDH4-01-001-Phases-1 | RDH4-01-001-Networks-1 | RDH4-01-001-Work Method-1 | RDH4-01-001-MENEM |
| --- | --- | --- | --- | --- | --- | --- | --- | --- | --- | --- | --- | --- | --- | --- |
|  | 6547 | **RHD4-02-002-Z7-L03-Information and Communication Technologies - ICT** |  | 2027-02-08 | 2027-11-03 |  |  |  |  |  |  |  |  |  |
|  | 6548 | **RHD4-02-002-L03-(ICT)-Information and Communication Technologies Ducts** |  | 2027-09-12 | 2027-11-03 |  |  |  |  |  |  |  |  |  |
| RHD4CZ7L03ICT2100 |  | Excavation of HDPE Ducts for ICT Network - (RD-L-3)-Z7-L03-ICT | 13d | 2027-09-12 | 2027-09-27 | RHD4ENSDZ7APPICT200, RHD4CZ7L03ICT3400, RHD4CZ7L03TC2400 | Skilled labor [134.17 h]; Unskilled Labor [134.17 h]; Equipment Opreator [268.34 h]; Excavator-Poclain [134.17 h]; Dump Truck [134.17 h]; (2*50mm) HDPE ducts -ICT [246 m]; (2*50mm+2*32mm) HDPE ducts -ICT [111.86 m]; (2*32mm) HDPE ducts -ICT [11.68 m] | 17,799.04 | L03 | Z7 | CONS | ICT | Excavation | AFT |
| RHD4CZ7L03ICT2200 |  | Installation of HDPE Ducts for ICT Network - (RD-L-3)-Z7-L03-ICT | 19d | 2027-09-28 | 2027-10-19 | RHD4PRSHLDOSICT1000, RHD4PRSHLSTAGICT1000, RHD4CZ7L03ICT2100 | Carpenter [20.15 h]; Skilled labor [201.25 h]; Unskilled Labor [201.25 h]; Steel Fixer [20.15 h]; (2*50mm) HDPE ducts -ICT [799.5 m]; (2*50mm+2*32mm) HDPE ducts -ICT [363.55 m]; (2*32mm) HDPE ducts -ICT [37.96 m] | 57,846.88 | L03 | Z7 | CONS | ICT | Installing | AFT |
| RHD4CZ7L03ICT2400 |  | Backfilling of HDPE Ducts for ICT Network - (RD-L-3)-Z7-L03-ICT | 13d | 2027-10-20 | 2027-11-03 | RHD4CZ7L03ICT2200, RHD4CZ7L03ICT5200 | Skilled labor [134.17 h]; Unskilled Labor [134.17 h]; Equipment Opreator [53.69 h]; Excavator-Poclain [53.69 h]; (2*50mm) HDPE ducts -ICT [184.5 m]; (2*50mm+2*32mm) HDPE ducts -ICT [83.9 m]; (2*32mm) HDPE ducts -ICT [8.76 m] | 13,349.64 | L03 | Z7 | CONS | ICT | Backfilling | AFT |
|  | 6549 | **RHD4-02-002-L03-(ICT)-Information and Communication Technologies Manholes** |  | 2027-09-28 | 2027-10-13 |  |  |  |  |  |  |  |  |  |
| RHD4CZ7L03ICT5100 |  | Excavation for Manholes for ICT Network - (RD-L-3)-Z7-L03-ICT | 7d | 2027-09-28 | 2027-10-05 | RHD4ENSDZ7APPICT200, RHD4CZ7L03ICT2100 | Skilled labor [24.5 h]; Unskilled Labor [24.5 h]; Equipment Opreator [19.6 h]; Excavator-Poclain [9.8 h]; Dump Truck [9.8 h]; Manhole Type 1 - ICT [1.5 nr]; Manhole Type 2 - ICT [0.6 nr] | 11,325.3 | L03 | Z7 | CONS | ICT | Excavation | AFT |
| RHD4CZ7L03ICT5200 |  | Installation of Manholes for ICT Network - (RD-L-3)-Z7-L03-ICT | 7d | 2027-10-06 | 2027-10-13 | RHD4PRSHLDOSICT1200, RHD4PRSHLSTAGICT1200, RHD4CZ7L03ICT5100 | Skilled labor [24.5 h]; Unskilled Labor [24.5 h]; Equipment Opreator [9.8 h]; Boom Truck [9.8 h]; Manhole Type 1 - ICT [8.5 nr]; Manhole Type 2 - ICT [3.4 nr] | 64,176.7 | L03 | Z7 | CONS | ICT | Installation | AFT |
|  | 6550 | **RHD4-02-002-L03-(ICT)-Information and Communication Technologies Road Crossings** |  | 2027-02-08 | 2027-03-01 |  |  |  |  |  |  |  |  |  |
| RHD4CZ7L03ICT3100 |  | Excavation for Road Crossings for ICT Network - (RD-L-3)-Z7-L03-ICT | 2d | 2027-02-08 | 2027-02-09 | RHD4ENSDZ7APPICT200, RHD4CZ7L03ST1108 | Skilled labor [19.71 h]; Unskilled Labor [19.71 h]; Equipment Opreator [39.42 h]; Excavator-Poclain [19.71 h]; Dump Truck [19.71 h]; Road crossing ducts, (2*50mm) HDPE -ICT [3.62 m] | 137.56 | L03 | Z7 | CONS | ICT | Excavation | bef |
| RHD4CZ7L03ICT3200 |  | Installation of Road Crossings for ICT Network - (RD-L-3)-Z7-L03-ICT | 3d | 2027-02-20 | 2027-02-23 | RHD4PRSHLDOSICT1100, RHD4PRSHLSTAGICT1100, RHD4CZ7L03ICT3100 | Carpenter [2.61 h]; Skilled labor [26.25 h]; Unskilled Labor [26.25 h]; Steel Fixer [2.61 h]; Road crossing ducts, (2*50mm) HDPE -ICT [3.62 m] | 137.56 | L03 | Z7 | CONS | ICT | Installing | bef |
| RHD4CZ7L03ICT3300 |  | Pouring of Road Crossings for ICT Network - (RD-L-3)-Z7-L03-ICT | 3d | 2027-02-24 | 2027-02-27 | RHD4CZ7L03ICT3200 | Skilled labor [26.25 h]; Unskilled Labor [26.25 h]; Equipment Opreator [10.56 h]; Concrete Mixer Truck [5.23 h]; Concrete Pump [5.23 h]; Road crossing ducts, (2*50mm) HDPE -ICT [23.53 m] | 894.14 | L03 | Z7 | CONS | ICT | Pouring | bef |
| RHD4CZ7L03ICT3400 |  | Backfilling of Road Crossings for ICT Network - (RD-L-3)-Z7-L03-ICT | 2d | 2027-02-28 | 2027-03-01 | RHD4CZ7L03ICT3300 | Skilled labor [19.71 h]; Unskilled Labor [19.71 h]; Equipment Opreator [7.84 h]; Excavator-Poclain [7.84 h]; Road crossing ducts, (2*50mm) HDPE -ICT [5.43 m] | 206.34 | L03 | Z7 | CONS | ICT | Backfilling | bef |
|  | 6538 | **RHD4-02-002-Z7-L03-Landscape Network - LS** |  |  |  |  |  |  |  |  |  |  |  |  |
|  | 6539 | **RHD4-02-002-L03-(LS)-Landscape Lighting cables** |  |  |  |  |  |  |  |  |  |  |  |  |
|  | 6541 | **RHD4-02-002-L03-(LS)-Landscape Bollard Poles** |  |  |  |  |  |  |  |  |  |  |  |  |
|  | 6551 | **RHD4-02-002-Z7-L03-Security Network - CCTV** |  | 2027-11-04 | 2027-12-02 |  |  |  |  |  |  |  |  |  |
|  | 6552 | **RHD4-02-002-L03-(CCTV)-Civil Works** |  | 2027-11-04 | 2027-11-09 |  |  |  |  |  |  |  |  |  |
| RHD4CZ7L03CCTV2100 |  | Civil Works for Security Network - (RD-L-3)-Z7-L03-CCTV | 5d | 2027-11-04 | 2027-11-09 | RHD4CZ7L03ICT2400, RHD4CZ7L03TC2400, RHD4CZ7L03MV3401, RHD4CZ7L03MV3400 | Skilled labor [217.76 h]; Unskilled Labor [435.68 h]; Equipment Opreator [217.76 h]; Excavator-Poclain [54.45 h]; Dump Truck [54.45 h]; Civil works Digging, trenching, laying pipes Meter with supply and installation of Manholes and for power feeding sources related to all towers and poles – (from 35-meter pole to control room and from related UPS camersa distribution boards till overall 2 [150 m] | 17,400 | L03 | Z7 | CONS | CCTV | Civil Works | AFT |
|  | 6553 | **RHD4-02-002-L03-(CCTV)-CCTV Poles** |  | 2027-11-10 | 2027-11-21 |  |  |  |  |  |  |  |  |  |
| RHD4CZ7L03CCTV1100 |  | Excavation for RC Base for CCTV Poles for Security Network - (RD-L-3)-Z7-L03-CCTV | 2d | 2027-11-10 | 2027-11-11 | RHD4ENSDZ7APPCCTV210, RHD4CZ7L03CCTV2100 | Skilled labor [4.32 h]; Unskilled Labor [4.32 h]; Equipment Opreator [8.64 h]; Excavator-Poclain [2.18 h]; Dump Truck [2.18 h]; 25 Meters pole for CCTV Cameras [0.1 nr] | 14,090.2 | L03 | Z7 | CONS | CCTV | Excavation | AFT |
| RHD4CZ7L03CCTV1200 |  | Installation for RC Base for CCTV Poles for Security Network - (RD-L-3)-Z7-L03-CCTV | 2d | 2027-11-13 | 2027-11-14 | RHD4CZ7L03CCTV1100 | Skilled labor [4.32 h]; Unskilled Labor [4.32 h]; Equipment Opreator [8.64 h]; Excavator-Poclain [2.18 h]; Dump Truck [2.18 h]; 25 Meters pole for CCTV Cameras [0.25 nr] | 35,225.5 | L03 | Z7 | CONS | CCTV | RC Base | AFT |
| RHD4CZ7L03CCTV1300 |  | Backfill for RC Base for CCTV Poles for Security Network - (RD-L-3)-Z7-L03-CCTV | 2d | 2027-11-15 | 2027-11-16 | RHD4CZ7L03CCTV1200 | Skilled labor [2.88 h]; Unskilled Labor [2.88 h]; Equipment Opreator [5.44 h]; Excavator-Poclain [1.42 h]; Dump Truck [1.42 h]; 25 Meters pole for CCTV Cameras [0.05 nr] | 7,045.1 | L03 | Z7 | CONS | CCTV | Backfill | AFT |
| RHD4CZ7L03CCTV1400 |  | Installation for CCTV Poles for Security Network - (RD-L-3)-Z7-L03-CCTV | 2d | 2027-11-17 | 2027-11-18 | RHD4PRSHLDOSCCTV1000, RHD4PRSHLSTACCTV1000, RHD4CZ7L03CCTV1300 | Skilled labor [7.2 h]; Unskilled Labor [14.56 h]; Electrician [7.2 h]; Equipment Opreator [7.2 h]; Boom Truck [3.59 h]; 25 Meters pole for CCTV Cameras [0.6 nr] | 84,541.2 | L03 | Z7 | CONS | CCTV | Installation | AFT |
| RHD4CZ7L03CCTV1500 |  | Protection post Installation for CCTV Poles for Security Network - (RD-L-3)-Z7-L03-CCTV | 2d | 2027-11-20 | 2027-11-21 | RHD4CZ7L03CCTV1400 | Skilled labor [10.88 h]; Unskilled Labor [21.76 h]; Supply and Installation of minimum 4 Protection Post for each pole or tower with pipe ?220*6mm THK. [1 nr] | 4,903 | L03 | Z7 | CONS | CCTV | Protection post | AFT |

| ID | WBS | Activity | Duration | Start | Finish | Predecessors | Resources | Cost | RDH4-01-001-Road and Block Names-1 | RDH4-01-001-Zones-1 | RDH4-01-001-Phases-1 | RDH4-01-001-Networks-1 | RDH4-01-001-Work Method-1 | RDH4-01-001-MENEM |
| --- | --- | --- | --- | --- | --- | --- | --- | --- | --- | --- | --- | --- | --- | --- |
|  | 6554 | **RHD4-02-002-L03-(CCTV)-Camera** |  | 2027-11-22 | 2027-11-23 |  |  |  |  |  |  |  |  |  |
| RHD4CZ7L03CCTV3100 |  | Installation for Cameras for Security Network - (RD-L-3)-Z7-L03-CCTV | 2d | 2027-11-22 | 2027-11-23 | RHD4PRSHLDOSCCTV1100, RHD4PRSHLSTACCTV1100, RHD4CZ7L03CCTV1400, RHD4CZ7L03CCTV4100 | Unskilled Labor [32.64 h]; Electrician [16.32 h]; Outdoor Camera, 5MP resolution, day/night, fixed bullet camera providing Forensic WDR. [2 nr]; Outdoor PTZ with IR, HDTV 1080 and 31x optical, 12x digital, total 372x zoom, H264/265 with Motion JPEG. [1 nr] | 44,801 | L03 | Z7 | CONS | CCTV | Installation | AFT |
|  | 6555 | **RHD4-02-002-L03-(CCTV)-Power and Infrastructure** |  | 2027-11-20 | 2027-11-23 |  |  |  |  |  |  |  |  |  |
| RHD4CZ7L03CCTV4100 |  | Installation of Power outlet, UPS and midspan for PTZ Camerafor Cameras for Security Network - (RD-L-3)-Z7-L03-CCTV | 2d | 2027-11-20 | 2027-11-21 | RHD4PRSHLDOSCCTV1300, RHD4PRSHLSTACCTV1300, RHD4CZ7L03CCTV1400 | Skilled labor [8.64 h]; Unskilled Labor [34.88 h]; Electrician [17.44 h]; Equipment Opreator [17.44 h]; Excavator-Poclain [4.36 h]; Dump Truck [4.36 h]; Outdoor ready IP66-rated midspan for PTZ Camera (The outdoor- ready midspan should be IP66/IP67- and NEMA 4X-rated [1 nr]; 1.2KVA Industrial type UPS located at FEC remote poles [1 nr] | 9,103 | L03 | Z7 | CONS | CCTV | Power | AFT |
| RHD4CZ7L03CCTV4200 |  | Short Range Wireless PoP wireless Bridgefor CCTV Poles for Security Network - (RD-L-3)-Z7-L03-CCTV | 2d | 2027-11-22 | 2027-11-23 | RHD4CZ7L03CCTV4100 | Skilled labor [10.88 h]; Unskilled Labor [21.76 h]; Electrician [10.88 h]; Equipment Opreator [21.76 h]; Excavator-Poclain [5.45 h]; Dump Truck [5.45 h]; Short Range wireless point to point wireless bridge [2 nr] | 29,274 | L03 | Z7 | CONS | CCTV | Wireless Pop | AFT |
|  | 6557 | **RHD4-02-002-L03-(CCTV)-CCTV Panels and Components** |  | 2027-11-24 | 2027-12-02 |  |  |  |  |  |  |  |  |  |
| RHD4CZ7L03CCTV6100 |  | Installation for CCTV Panels for Security Network - (RD-L-3)-Z7-L03-CCTV | 8d | 2027-11-24 | 2027-12-02 | RHD4PRSHLDOSCCTV1200, RHD4PRSHLSTACCTV1200, RHD4PRLOLSTACCTV1001, RHD4CZ7L03CCTV4200, RHD4CZ7L03CCTV3100 | Skilled labor [174.24 h]; Unskilled Labor [522.72 h]; Electrician [174.24 h]; Pole mounted Filed Equipment cabinet (FEC) , with fan and ventilation, NEMEX 4X ,door, minimum size (600x600x400mm) , the cabinet/enclosurE [1 nr]; 8 Port Industrial PoE Switch 10/1000BaseT (-40 deg to +70 deg. Celsius) for remote poles and as specifiedin item 15. [1 nr]; UTP CAT6 Patch Cord , connect the industrial switch with the cameras, and radio wireless antenna [6 nr] | 21,585 | L03 | Z7 | CONS | CCTV | Equipment | AFT |
|  | 6757 | **RHD4-02-002-Z7-L131** |  | 2026-10-27 | 2028-01-29 |  |  |  |  |  |  |  |  |  |
|  | 6788 | **RHD4-02-002-Z7-L131-Crossings Sewage Network - SWCr** |  |  |  |  |  |  |  |  |  |  |  |  |
|  | 6800 | **RHD4-02-002-L131-(SWCr)-MH Works - 1500 mm diameter** |  |  |  |  |  |  |  |  |  |  |  |  |
|  | 6798 | **RHD4-02-002-L131-(SWCr)-MH Works - 1200 mm diameter** |  |  |  |  |  |  |  |  |  |  |  |  |
|  | 6801 | **RHD4-02-002-L131-(SWCr)-MH Works - 1500 mm diameter with Back drop** |  |  |  |  |  |  |  |  |  |  |  |  |
|  | 6793 | **RHD4-02-002-L131-(SWCr)-GRP Pipes - 700 mm diameter** |  |  |  |  |  |  |  |  |  |  |  |  |
|  | 6794 | **RHD4-02-002-L131-(SWCr)-UPVC Pipes - 200 mm diameter** |  |  |  |  |  |  |  |  |  |  |  |  |
|  | 6832 | **RHD4-02-002-Z7-L131-Crossings Potable Network - PTCr** |  |  |  |  |  |  |  |  |  |  |  |  |
|  | 6833 | **RHD4-02-002-L131-(PTCr)-HDPE Pipes - 110 mm diameter** |  |  |  |  |  |  |  |  |  |  |  |  |
|  | 6834 | **RHD4-02-002-L131-(PTCr)-HDPE Pipes - 160 mm diameter** |  |  |  |  |  |  |  |  |  |  |  |  |
|  | 6838 | **RHD4-02-002-L131-(PTCr)-Gate Valves (Direct Buried)** |  |  |  |  |  |  |  |  |  |  |  |  |
|  | 6845 | **RHD4-02-002-L131-(PTCr)-Fire Hydrant** |  |  |  |  |  |  |  |  |  |  |  |  |
|  | 6879 | **RHD4-02-002-Z7-L131-Crossings Irrigation Network - IRRC** |  |  |  |  |  |  |  |  |  |  |  |  |
|  | 6880 | **RHD4-02-002-L131-(IRRC)-HDPE Pipes - 160 mm diameter** |  |  |  |  |  |  |  |  |  |  |  |  |
|  | 6881 | **RHD4-02-002-L131-(IRRC)-HDPE Pipes - 180 mm diameter** |  |  |  |  |  |  |  |  |  |  |  |  |
|  | 6888 | **RHD4-02-002-L131-(IRRC)-Gate Valves (Direct Buried)** |  |  |  |  |  |  |  |  |  |  |  |  |
|  | 6891 | **RHD4-02-002-L131-(IRRC)-Wash out Chamber** |  |  |  |  |  |  |  |  |  |  |  |  |
|  | 6892 | **RHD4-02-002-L131-(IRRC)-Wash out Valves** |  |  |  |  |  |  |  |  |  |  |  |  |
|  | 6936 | **RHD4-02-002-Z7-L131-Road Works - RD** |  | 2027-02-20 | 2028-01-26 |  |  |  |  |  |  |  |  |  |
|  | 6937 | **RHD4-02-002-L131-(RD)-Subgrade** |  | 2027-02-20 | 2027-02-28 |  |  |  |  |  |  |  |  |  |
| RHD4CZ7L131RD1100 |  | Supply, lay and compaction subgrade compacted thickness 300 mm for Roads - (RD-L-13/1)-Z7-L131-RD | 7d | 2027-02-20 | 2027-02-28 | RHD4ENSDZ7APPEW100, RHD4ENSDZ7APPRD220, RHD4CZ7L131ST1505 | Skilled labor [74.27 h]; Unskilled Labor [148.65 h]; Electrician [74.27 h]; Equipment Opreator [507.49 h]; Water Truck [24.5 h]; Roller compactor [37.14 h]; Grader [74.27 h]; Dump Truck [371.58 h]; Subgrade [3573.86 m3] | 67,903.34 | L131 | Z7 | CONS | RD | Subgrade | bef |

| ID | WBS | Activity | Duration | Start | Finish | Predecessors | Resources | Cost | RDH4-01-001-Road and Block Names-1 | RDH4-01-001-Zones-1 | RDH4-01-001-Phases-1 | RDH4-01-001-Networks-1 | RDH4-01-001-Work Method-1 | RDH4-01-001-MENEM |
| --- | --- | --- | --- | --- | --- | --- | --- | --- | --- | --- | --- | --- | --- | --- |
|  | 6938 | **RHD4-02-002-L131-(RD)-Aggregate Base Course** |  | 2027-03-01 | 2027-03-07 |  |  |  |  |  |  |  |  |  |
| RHD4CZ7L131RD2100 |  | Supply, lay and compaction Aggregate base course compacted thickness 300 mmfor Roads - (RD-L-13/1)-Z7-L131-RD | 6d | 2027-03-01 | 2027-03-07 | RHD4PRSHLDOSRD1000, RHD4PRSHLSTAGRD1000, RHD4CZ7L131RD1100 | Skilled labor [27.55 h]; Unskilled Labor [55 h]; Equipment Opreator [348.38 h]; Water Truck [18.19 h]; Roller compactor [55 h]; Grader [55 h]; Dump Truck [220.2 h]; Aggregate Base Courses [2244.74 m3] | 127,950.18 | L131 | Z7 | CONS | RD | ABC | bef |
|  | 6939 | **RHD4-02-002-L131-(RD)-Bituminous base course Two Layers, including (MC1)&(RC2)** |  | 2027-03-08 | 2027-12-07 |  |  |  |  |  |  |  |  |  |
| RHD4CZ7L131RD3100 |  | Supply, lay and Asphaltic base course including Prime Coat (MC1) for 1st Layer - (RD-L-13/1)-Z7-L131-RD | 2d | 2027-03-08 | 2027-03-13 | RHD4PRSHLDOSRD1100, RHD4ENMSASPH2000, RHD4ENMSASPH2010, RHD4PRSHLSTAGRD1100, RHD4CZ7L131RD2100 | Skilled labor [9.26 h]; Unskilled Labor [55.43 h]; Equipment Opreator [138.53 h]; Bobcat [9.26 h]; Roller compactor [9.26 h]; Asphalt Paver [9.26 h]; Rubber Compactor [18.51 h]; MC1/RC2 Sprinkler [9.26 h]; Dump Truck [83.09 h]; Bituminous base course (Grading I - Class A), including Prime coat (MC1) & tack coate (RC2) [337.97 m3] | 161,549.66 | L131 | Z7 | CONS | RD | 150 mm | AFT |
| RHD4CZ7L131RD3200 |  | Supply, lay and Asphaltic base course including Tack Coat (RC2) for 2nd Layer - (RD-L-13/1)-Z7-L131-RD | 2d | 2027-12-06 | 2027-12-07 | RHD4PRSHLDOSRD1100, RHD4PRSHLSTAGRD1100, RHD4CZ7L131RD3100, RHD4CZ7L03RD3200 | Skilled labor [9.26 h]; Unskilled Labor [55.43 h]; Equipment Opreator [138.53 h]; Bobcat [9.26 h]; Roller compactor [9.26 h]; Asphalt Paver [9.26 h]; Rubber Compactor [18.51 h]; MC1/RC2 Sprinkler [9.26 h]; Dump Truck [83.09 h]; Bituminous base course (Grading I - Class A), including Prime coat (MC1) & tack coate (RC2) [337.97 m3] | 161,549.66 | L131 | Z7 | CONS | RD | 150 mm | AFT |
|  | 6941 | **RHD4-02-002-L131-(RD)-Precast Concrete Curb** |  | 2027-12-16 | 2027-12-22 |  |  |  |  |  |  |  |  |  |
| RHD4CZ7L131RD5100 |  | Supply and installation Precast Concrete Kerb for Roads - (RD-L-13/1)-Z7-L131-RD | 6d | 2027-12-16 | 2027-12-22 | RHD4PRSHLDOSRD1200, RHD4ENMSRD2000, RHD4ENMSRD2010, RHD4PRSHLSTAGRD1200, RHD4CZ7L131RD3200, RHD4CZ7L03RD5100 | Mason [186.01 h]; Skilled labor [61.97 h]; Unskilled Labor [186.01 h]; Equipment Opreator [124.04 h]; Bobcat [61.97 h]; Concrete Mixer Truck [61.97 h]; Precast Concrete Curbstone, type K1 [2130 m]; Precast Flush concrete Curbstone K3 [431.63 m] | 140,889.76 | L131 | Z7 | CONS | RD | Curbs | AFT |
|  | 6944 | **RHD4-02-002-L131-(RD)-Traffic Signage** |  | 2028-01-01 | 2028-01-06 |  |  |  |  |  |  |  |  |  |
| RHD4CZ7L131RD8100 |  | Installation of Traffic Signage for Road Network - (RD-L-13/1)-Z7-L131-RD | 6d | 2028-01-01 | 2028-01-06 | RHD4PRSHLDOSRD1600, RHD4PRSHLSTAGRD1600, RHD4CZ7L131RD5100, RHD4CZ7L131TC2400, RHD4CZ7L131ICT2400, RHD4CZ7L03RD8100 | Skilled labor [130.68 h]; Unskilled Labor [65.34 h]; Electrician [21.78 h]; Equipment Opreator [21.78 h]; Boom Truck [13.07 h]; Concrete Mixer Truck [8.71 h]; Traffic signs, ground mounted, 1 Sheet Aluminium, (breakaway)Single post [19 nr] | 23,294 | L131 | Z7 | CONS | RD | Traffic Signage | AFT |
|  | 6942 | **RHD4-02-002-L131-(RD)-Precast Interlocking Block Pavers** |  | 2028-01-08 | 2028-01-12 |  |  |  |  |  |  |  |  |  |
| RHD4CZ7L131RD6100 |  | Interlocking block pavers for sidewalk-footpath for Side walks and Parking areas - (RD-L-13/1)-Z7-L131-RD | 5d | 2028-01-08 | 2028-01-12 | RHD4PRSHLDOSRD1300, RHD4PRSHLDOSRD1400, RHD4ENMSRD2000, RHD4ENMSRD2010, RHD4PRSHLSTAGRD1300, RHD4PRSHLSTAGRD1400, RHD4CZ7L131RD8100, RHD4CZ7L03RD6100 | Skilled labor [93.44 h]; Unskilled Labor [140.05 h]; Equipment Opreator [151.81 h]; Boom Truck [46.72 h]; Bobcat [46.72 h]; Concrete Mixer Truck [46.72 h]; Water Truck [11.65 h]; Interlock 80 mm thick Pavers for parking including sand fill [1072 m2] | 79,328 | L131 | Z7 | CONS | RD | Interlocking | AFT |
|  | 6940 | **RHD4-02-002-L131-(RD)-Bituminous concrete wearing course including tack coat (RC2)** |  | 2028-01-20 | 2028-01-22 |  |  |  |  |  |  |  |  |  |
| RHD4CZ7L131RD4100 |  | Supply, lay and compaction Asphaltic wearing course including tack Coat (RC2)for Road Network - (RD-L-13/1)-Z7-L131-RD | 2d | 2028-01-20 | 2028-01-22 | RHD4CZ7L131RD5100, RHD4CZ7L131RD6100, RHD4CZ7L03RD4100, RHD4CZ7L131CTV4200 | Skilled labor [10.24 h]; Unskilled Labor [61.2 h]; Equipment Opreator [153.01 h]; Bobcat [10.24 h]; Roller compactor [10.24 h]; Asphalt Paver [10.24 h]; Rubber Compactor [20.36 h]; MC1/RC2 Sprinkler [10.24 h]; Dump Truck [91.81 h]; Bituminous concrete wearing course, (Grading I - Class A), including tack coat (RC2) [486.36 m3] | 264,093.48 | L131 | Z7 | CONS | RD | 50 mm | AFT |
|  | 6943 | **RHD4-02-002-L131-(RD)-Pavement Marking** |  | 2028-01-23 | 2028-01-26 |  |  |  |  |  |  |  |  |  |
| RHD4CZ7L131RD7100 |  | Pavement Markings for Road Network - (RD-L-13/1)-Z7-L131-RD | 4d | 2028-01-23 | 2028-01-26 | RHD4PRSHLDOSRD1500, RHD4PRSHLSTAGRD1500, RHD4CZ7L131RD4100 | Skilled labor [41.49 h]; Unskilled Labor [83.09 h]; Equipment Opreator [41.49 h]; Road Marking Machine [41.49 h]; Retroreflective Thermoplastic White Traffic Markings [170.84 m2]; Retroreflective Thermoplastic Yellow, Traffic Markings [150.63 m2]; Rumble strip [139 m]; Retroreflective raised pavement markers (cat eyes) [513 nr] | 44,504.57 | L131 | Z7 | CONS | RD | Pavement Marking | AFT |
|  | 6761 | **RHD4-02-002-Z7-L131-Storm Network - ST** |  | 2027-02-08 | 2027-06-06 |  |  |  |  |  |  |  |  |  |
|  | 6779 | **RHD4-02-002-L131-(ST)-MH Works - 1500 mm diameter** |  | 2027-05-01 | 2027-06-06 |  |  |  |  |  |  |  |  |  |
| RHD4CZ7L131ST3101 |  | Excavation and PC Blinding works for MH 1500 mm - (RD-L-13/1)-Z7-L131-ST | 6d | 2027-05-01 | 2027-05-06 | RHD4ENSDZ7APPST110, RHD4ENMSST2000, RHD4CZ7L131ST2100 | Skilled labor [65.34 h]; Unskilled Labor [65.34 h]; Equipment Opreator [104.55 h]; Excavator-Poclain [65.34 h]; Water Truck [6.53 h]; Dump Truck [32.67 h]; MH (1500mm Diameter) - ST - depth 1.50 - 2.5m [3 nr] | 43,758 | L131 | Z7 | CONS | ST | Excavation | bef |
| RHD4CZ7L131ST3201 |  | Installation of Base for MH 1500 mm - (RD-L-13/1)-Z7-L131-ST | 6d | 2027-05-08 | 2027-05-13 | RHD4PRSHLSTAGST1606, RHD4CZ7L131ST3101 | Skilled labor [65.34 h]; Unskilled Labor [65.34 h]; Equipment Opreator [26.14 h]; Boom Truck [13.07 h]; Concrete Mixer Truck [13.07 h]; MH (1500mm Diameter) - ST - depth 1.50 - 2.5m [3 nr] | 43,758 | L131 | Z7 | CONS | ST | Installing Base | bef |
| RHD4CZ7L131ST3301 |  | MH Ring and C.Slab works and Backfilling works for MH 1500 mm - (RD-L-13/1)-Z7-L131-ST | 6d | 2027-05-19 | 2027-05-25 | RHD4PRSHLDOSST1606, RHD4CZ7L131ST3201 | Skilled labor [65.34 h]; Unskilled Labor [65.34 h]; Equipment Opreator [45.74 h]; Boom Truck [26.14 h]; Concrete Mixer Truck [19.6 h]; MH (1500mm Diameter) - ST - depth 1.50 - 2.5m [4.2 nr] | 61,261.2 | L131 | Z7 | CONS | ST | Installing Rings | bef |
| RHD4CZ7L131ST3401 |  | Steel Cover for MH 1500 mm - (RD-L-13/1)-Z7-L131-ST | 4d | 2027-05-26 | 2027-05-30 | RHD4PRSHLDOSST1706, RHD4PRSHLSTAGST1706, RHD4CZ7L131ST3301 | Skilled labor [43.56 h]; Unskilled Labor [87.12 h]; Equipment Opreator [8.71 h]; Boom Truck [8.71 h]; MH (1500mm Diameter) - ST - depth 1.50 - 2.5m [0.6 nr] | 8,751.6 | L131 | Z7 | CONS | ST | Steel Cover | bef |
| RHD4CZ7L131ST3501 |  | Finishing, Benching, Testing works for MH 1500 mm - (RD-L-13/1)-Z7-L131-ST | 6d | 2027-05-31 | 2027-06-06 | RHD4CZ7L131ST3401, RHD4CZ7L131ST2500 | Skilled labor [65.34 h]; Unskilled Labor [130.68 h]; Plumber [65.34 h]; Equipment Opreator [13.07 h]; Water Truck [13.07 h]; MH (1500mm Diameter) - ST - depth 1.50 - 2.5m [1.2 nr] | 17,503.2 | L131 | Z7 | CONS | ST | Benching | bef |
|  | 6008 | **RHD4-02-002-L131-(ST)-GRP Pipes - 600 mm diameter** |  | 2027-04-26 | 2027-05-06 |  |  |  |  |  |  |  |  |  |
| RHD4CZ7L131ST1102 |  | Excavation works for GRP Pipe Line 600 mm - (RD-L-13/1)-Z7-L131-ST | 2d | 2027-04-26 | 2027-04-27 | RHD4CZ7L131ST1103 | Skilled labor [1.74 h]; Unskilled Labor [1.74 h]; Equipment Opreator [2.18 h]; Excavator-Poclain [1.74 h]; Dump Truck [0.33 h]; GRP (600mm Diameter) - ST - Depth less than 1.5 m [3.26 m]; GRP (600mm Diameter) - ST - Depth: 1.51m - 2.5m | 1,405.06 | L131 | Z7 | CONS | ST | Excavation | bef |
| RHD4CZ7L131ST1202 |  | Bedding works for GRP Pipe Line 600 mm - (RD-L-13/1)-Z7-L131-ST | 2d | 2027-04-28 | 2027-04-29 | RHD4CZ7L131ST1102 | Skilled labor [1.74 h]; Unskilled Labor [3.59 h]; Equipment Opreator [3.59 h]; Excavator-Poclain [1.74 h]; Dump Truck [1.74 h]; GRP (600mm Diameter) - ST - Depth less than 1.5 m [1.63 m]; GRP (600mm Diameter) - ST - Depth: 1.51m - 2.5m | 702.53 | L131 | Z7 | CONS | ST | Bedding | bef |
| RHD4CZ7L131ST1302 |  | Installing for GRP Pipe Line 600 mm - (RD-L-13/1)-Z7-L131-ST | 2d | 2027-05-01 | 2027-05-02 | RHD4CZ7L131ST1202 | Unskilled Labor [3.59 h]; Plumber [1.74 h]; GRP (600mm Diameter) - ST - Depth less than 1.5 m [14.65 m]; GRP (600mm Diameter) - ST - Depth: 1.51m - 2.5m | 6,314.15 | L131 | Z7 | CONS | ST | Installation | bef |
| RHD4CZ7L131ST1402 |  | Primary Test for GRP Pipe Line 600 mm - (RD-L-13/1)-Z7-L131-ST | 2d | 2027-05-03 | 2027-05-04 | RHD4CZ7L131ST1302 | Unskilled Labor [1.74 h]; Plumber [1.74 h]; Equipment Opreator [1.74 h]; Water Truck [1.74 h]; GRP (600mm Diameter) - ST - Depth less than 1.5 m [6.51 m]; GRP (600mm Diameter) - ST - Depth: 1.51m - 2.5m | 2,805.81 | L131 | Z7 | CONS | ST | Primary Test | bef |
| RHD4CZ7L131ST1502 |  | Backfilling and warning tape works for GRP Pipe Line 600 mm - (RD-L-13/1)-Z7-L131-ST | 2d | 2027-05-05 | 2027-05-06 | RHD4CZ7L131ST1402 | Skilled labor [1.74 h]; Unskilled Labor [3.59 h]; Equipment Opreator [3.59 h]; Excavator-Poclain [1.74 h]; Dump Truck [1.74 h]; GRP (600mm Diameter) - ST - Depth less than 1.5 m [6.51 m]; GRP (600mm Diameter) - ST - Depth: 1.51m - 2.5m | 2,805.81 | L131 | Z7 | CONS | ST | Backfilling | bef |

| ID | WBS | Activity | Duration | Start | Finish | Predecessors | Resources | Cost | RDH4-01-001-Road and Block Names-1 | RDH4-01-001-Zones-1 | RDH4-01-001-Phases-1 | RDH4-01-001-Networks-1 | RDH4-01-001-Work Method-1 | RDH4-01-001-MENEM |
| --- | --- | --- | --- | --- | --- | --- | --- | --- | --- | --- | --- | --- | --- | --- |
|  | 6022 | **RHD4-02-002-L131-(ST)-MH Works - 1200 mm diameter** |  | 2027-05-01 | 2027-05-11 |  |  |  |  |  |  |  |  |  |
| RHD4CZ7L131ST3100 |  | Excavation and PC Blinding works for MH 1200 mm - (RD-L-13/1)-Z7-L131-ST | 2d | 2027-05-01 | 2027-05-02 | RHD4CZ7L131ST3101 SS | Skilled labor [7.3 h]; Unskilled Labor [7.3 h]; Equipment Opreator [11.65 h]; Excavator-Poclain [7.3 h]; Water Truck [0.8 h]; Dump Truck [3.59 h]; MH (1200mm Diameter) - ST - depth 1.50 - 2.5m [0.5 nr] | 5,161.5 | L131 | Z7 | CONS | ST | Excavation | bef |
| RHD4CZ7L131ST3200 |  | Installation of Base for MH 1200 mm - (RD-L-13/1)-Z7-L131-ST | 2d | 2027-05-03 | 2027-05-04 | RHD4CZ7L131ST3100 | Skilled labor [7.3 h]; Unskilled Labor [7.3 h]; Equipment Opreator [2.94 h]; Boom Truck [1.42 h]; Concrete Mixer Truck [1.42 h]; MH (1200mm Diameter) - ST - depth 1.50 - 2.5m [0.5 nr] | 5,161.5 | L131 | Z7 | CONS | ST | Installing Base | bef |
| RHD4CZ7L131ST3300 |  | MH Ring and C.Slab works and Backfilling works for MH 1200 mm - (RD-L-13/1)-Z7-L131-ST | 2d | 2027-05-05 | 2027-05-06 | RHD4CZ7L131ST3200 | Skilled labor [7.3 h]; Unskilled Labor [7.3 h]; Equipment Opreator [5.12 h]; Boom Truck [2.94 h]; Concrete Mixer Truck [2.18 h]; MH (1200mm Diameter) - ST - depth 1.50 - 2.5m [0.7 nr] | 7,226.1 | L131 | Z7 | CONS | ST | Installing Rings | bef |
| RHD4CZ7L131ST3400 |  | Steel Cover for MH 1200 mm - (RD-L-13/1)-Z7-L131-ST | 2d | 2027-05-08 | 2027-05-09 | RHD4CZ7L131ST3300 | Skilled labor [7.3 h]; Unskilled Labor [14.48 h]; Equipment Opreator [1.42 h]; Boom Truck [1.42 h]; MH (1200mm Diameter) - ST - depth 1.50 - 2.5m [0.1 nr] | 1,032.3 | L131 | Z7 | CONS | ST | Steel Cover | bef |
| RHD4CZ7L131ST3500 |  | Finishing, Benching, Testing works for MH 1200 mm - (RD-L-13/1)-Z7-L131-ST | 2d | 2027-05-10 | 2027-05-11 | RHD4CZ7L131ST3400, RHD4CZ7L131ST1503 | Skilled labor [7.3 h]; Unskilled Labor [14.48 h]; Plumber [7.3 h]; Equipment Opreator [1.42 h]; Water Truck [1.42 h]; MH (1200mm Diameter) - ST - depth 1.50 - 2.5m [0.2 nr] | 2,064.6 | L131 | Z7 | CONS | ST | Benching | bef |
|  | 6780 | **RHD4-02-002-L131-(ST)-MH Works - 2000 mm diameter** |  |  |  |  |  |  |  |  |  |  |  |  |
|  | 6770 | **RHD4-02-002-L131-(ST)-GRP Pipes - 1200 mm diameter** |  |  |  |  |  |  |  |  |  |  |  |  |
|  | 6769 | **RHD4-02-002-L131-(ST)-GRP Pipes - 1100 mm diameter** |  |  |  |  |  |  |  |  |  |  |  |  |
|  | 6767 | **RHD4-02-002-L131-(ST)-GRP Pipes - 900 mm diameter** |  | 2027-02-08 | 2027-02-18 |  |  |  |  |  |  |  |  |  |
| RHD4CZ7L131ST1105 |  | Excavation works for GRP Pipe Line 900 mm - (RD-L-13/1)-Z7-L131-ST | 2d | 2027-02-08 | 2027-02-09 | RHD4ENSDZ7APPST110, RHD4CZ7L131RW3000, RHD4CZ7L03ST1108 | Skilled labor [3.92 h]; Unskilled Labor [3.92 h]; Equipment Opreator [4.68 h]; Excavator-Poclain [3.92 h]; Dump Truck [0.8 h]; GRP (900mm Diameter) - ST - Depth: 1.51m - 2.5m [10.81 m] | 8,613.58 | L131 | Z7 | CONS | ST | Excavation | bef |
| RHD4CZ7L131ST1205 |  | Bedding works for GRP Pipe Line 900 mm - (RD-L-13/1)-Z7-L131-ST | 2d | 2027-02-10 | 2027-02-11 | RHD4CZ7L131ST1105 | Skilled labor [3.92 h]; Unskilled Labor [7.84 h]; Equipment Opreator [7.84 h]; Excavator-Poclain [3.92 h]; Dump Truck [3.92 h]; GRP (900mm Diameter) - ST - Depth: 1.51m - 2.5m [3.6 m] | 2,869.2 | L131 | Z7 | CONS | ST | Bedding | bef |
| RHD4CZ7L131ST1305 |  | Installing for GRP Pipe Line 900 mm - (RD-L-13/1)-Z7-L131-ST | 2d | 2027-02-13 | 2027-02-14 | RHD4PRSHLSTAGST1006, RHD4CZ7L131ST1205, RHD4PRSHLDOSST1606, RHD4PRSHLPOST1000, RHD4PRSHLDOSST1006, RHD4PRSHLDOSST1605, RHD4PRSHLDOSST1005 | Unskilled Labor [5.23 h]; Plumber [2.61 h]; GRP (900mm Diameter) - ST - Depth: 1.51m - 2.5m [28.82 m] | 22,969.54 | L131 | Z7 | CONS | ST | Installation | bef |
| RHD4CZ7L131ST1405 |  | Primary Test for GRP Pipe Line 900 mm - (RD-L-13/1)-Z7-L131-ST | 2d | 2027-02-15 | 2027-02-16 | RHD4CZ7L131ST1305 | Unskilled Labor [1.96 h]; Plumber [1.96 h]; Equipment Opreator [1.96 h]; Water Truck [1.96 h]; GRP (900mm Diameter) - ST - Depth: 1.51m - 2.5m [14.41 m] | 11,484.77 | L131 | Z7 | CONS | ST | Primary Test | bef |
| RHD4CZ7L131ST1505 |  | Backfilling and warning tape works for GRP Pipe Line 900 mm - (RD-L-13/1)-Z7-L131-ST | 2d | 2027-02-17 | 2027-02-18 | RHD4CZ7L131ST1405 | Skilled labor [3.92 h]; Unskilled Labor [7.84 h]; Equipment Opreator [7.84 h]; Excavator-Poclain [3.92 h]; Dump Truck [3.92 h]; GRP (900mm Diameter) - ST - Depth: 1.51m - 2.5m [14.41 m] | 11,484.77 | L131 | Z7 | CONS | ST | Backfilling | bef |
|  | 6766 | **RHD4-02-002-L131-(ST)-GRP Pipes - 800 mm diameter** |  | 2027-04-20 | 2027-05-04 |  |  |  |  |  |  |  |  |  |
| RHD4CZ7L131ST1104 |  | Excavation works for GRP Pipe Line 800 mm - (RD-L-13/1)-Z7-L131-ST | 3d | 2027-04-20 | 2027-04-22 | RHD4ENSDZ7APPST110, RHD4CZ7L03ST1507 | Skilled labor [22 h]; Unskilled Labor [22 h]; Equipment Opreator [26.46 h]; Excavator-Poclain [22 h]; Dump Truck [4.36 h]; GRP (800mm Diameter) - ST - Depth less than 1.5 m [40.48 m]; GRP (800mm Diameter) - ST - Depth: 1.51m - 2.5m | 26,433.44 | L131 | Z7 | CONS | ST | Excavation | bef |
| RHD4CZ7L131ST1204 |  | Bedding works for GRP Pipe Line 800 mm - (RD-L-13/1)-Z7-L131-ST | 3d | 2027-04-24 | 2027-04-26 | RHD4CZ7L131ST1104 | Skilled labor [22 h]; Unskilled Labor [44.11 h]; Equipment Opreator [44.11 h]; Excavator-Poclain [22 h]; Dump Truck [22 h]; GRP (800mm Diameter) - ST - Depth less than 1.5 m [20.24 m]; GRP (800mm Diameter) - ST - Depth: 1.51m - 2.5m | 13,216.72 | L131 | Z7 | CONS | ST | Bedding | bef |
| RHD4CZ7L131ST1304 |  | Installing for GRP Pipe Line 800 mm - (RD-L-13/1)-Z7-L131-ST | 2d | 2027-04-27 | 2027-04-28 | RHD4PRSHLSTAGST1006, RHD4CZ7L131ST1204, RHD4CZ7L131ST1305, RHD4PRSHLDOSST1606, RHD4PRSHLPOST1000, RHD4PRSHLDOSST1006, RHD4PRSHLDOSST1605, RHD4PRSHLDOSST1005 | Unskilled Labor [29.4 h]; Plumber [14.7 h]; GRP (800mm Diameter) - ST - Depth less than 1.5 m [182.17 m]; GRP (800mm Diameter) - ST - Depth: 1.51m - 2.5m | 118,957.01 | L131 | Z7 | CONS | ST | Installation | bef |
| RHD4CZ7L131ST1404 |  | Primary Test for GRP Pipe Line 800 mm - (RD-L-13/1)-Z7-L131-ST | 2d | 2027-04-29 | 2027-05-01 | RHD4CZ7L131ST1304 | Unskilled Labor [11 h]; Plumber [11 h]; Equipment Opreator [11 h]; Water Truck [11 h]; GRP (800mm Diameter) - ST - Depth less than 1.5 m [80.96 m]; GRP (800mm Diameter) - ST - Depth: 1.51m - 2.5m | 52,866.88 | L131 | Z7 | CONS | ST | Primary Test | bef |
| RHD4CZ7L131ST1504 |  | Backfilling and warning tape works for GRP Pipe Line 800 mm - (RD-L-13/1)-Z7-L131-ST | 3d | 2027-05-02 | 2027-05-04 | RHD4CZ7L131ST1404, RHD4CZ7L131ST1505 | Skilled labor [22 h]; Unskilled Labor [44.11 h]; Equipment Opreator [44.11 h]; Excavator-Poclain [22 h]; Dump Truck [22 h]; GRP (800mm Diameter) - ST - Depth less than 1.5 m [80.96 m]; GRP (800mm Diameter) - ST - Depth: 1.51m - 2.5m | 52,866.88 | L131 | Z7 | CONS | ST | Backfilling | bef |
|  | 6765 | **RHD4-02-002-L131-(ST)-GRP Pipes - 700 mm diameter** |  | 2027-04-24 | 2027-05-09 |  |  |  |  |  |  |  |  |  |
| RHD4CZ7L131ST1103 |  | Excavation works for GRP Pipe Line 700 mm - (RD-L-13/1)-Z7-L131-ST | 2d | 2027-04-24 | 2027-04-25 | RHD4ENSDZ7APPST110, RHD4CZ7L131ST1104 | Skilled labor [4.68 h]; Unskilled Labor [4.68 h]; Equipment Opreator [5.55 h]; Excavator-Poclain [4.68 h]; Dump Truck [0.98 h]; GRP (700mm Diameter) - ST - Depth less than 1.5 m [8.54 m]; GRP (700mm Diameter) - ST - Depth: 1.51m - 2.5m | 4,731.16 | L131 | Z7 | CONS | ST | Excavation | bef |
| RHD4CZ7L131ST1203 |  | Bedding works for GRP Pipe Line 700 mm - (RD-L-13/1)-Z7-L131-ST | 2d | 2027-04-26 | 2027-04-27 | RHD4CZ7L131ST1103 | Skilled labor [4.68 h]; Unskilled Labor [9.26 h]; Equipment Opreator [9.26 h]; Excavator-Poclain [4.68 h]; Dump Truck [4.68 h]; GRP (700mm Diameter) - ST - Depth less than 1.5 m [4.27 m]; GRP (700mm Diameter) - ST - Depth: 1.51m - 2.5m | 2,365.58 | L131 | Z7 | CONS | ST | Bedding | bef |
| RHD4CZ7L131ST1303 |  | Installing for GRP Pipe Line 700 mm - (RD-L-13/1)-Z7-L131-ST | 2d | 2027-04-29 | 2027-05-01 | RHD4PRSHLSTAGST1006, RHD4CZ7L131ST1203, RHD4CZ7L131ST1304, RHD4PRSHLDOSST1606, RHD4PRSHLPOST1000, RHD4PRSHLDOSST1006, RHD4PRSHLDOSST1605, RHD4PRSHLDOSST1005 | Unskilled Labor [4.68 h]; Plumber [2.29 h]; GRP (700mm Diameter) - ST - Depth less than 1.5 m [38.43 m]; GRP (700mm Diameter) - ST - Depth: 1.51m - 2.5m | 21,290.22 | L131 | Z7 | CONS | ST | Installation | bef |
| RHD4CZ7L131ST1403 |  | Primary Test for GRP Pipe Line 700 mm - (RD-L-13/1)-Z7-L131-ST | 2d | 2027-05-02 | 2027-05-03 | RHD4CZ7L131ST1303 | Unskilled Labor [2.29 h]; Plumber [2.29 h]; Equipment Opreator [2.29 h]; Water Truck [2.29 h]; GRP (700mm Diameter) - ST - Depth less than 1.5 m [17.08 m]; GRP (700mm Diameter) - ST - Depth: 1.51m - 2.5m | 9,462.32 | L131 | Z7 | CONS | ST | Primary Test | bef |
| RHD4CZ7L131ST1503 |  | Backfilling and warning tape works for GRP Pipe Line 700 mm - (RD-L-13/1)-Z7-L131-ST | 2d | 2027-05-08 | 2027-05-09 | RHD4CZ7L131ST1403, RHD4CZ7L131ST1504, RHD4CZ7L131ST1502 | Skilled labor [4.68 h]; Unskilled Labor [9.26 h]; Equipment Opreator [9.26 h]; Excavator-Poclain [4.68 h]; Dump Truck [4.68 h]; GRP (700mm Diameter) - ST - Depth less than 1.5 m [17.08 m]; GRP (700mm Diameter) - ST - Depth: 1.51m - 2.5m | 9,462.32 | L131 | Z7 | CONS | ST | Backfilling | bef |

| ID | WBS | Activity | Duration | Start | Finish | Predecessors | Resources | Cost | RDH4-01-001-Road and Block Names-1 | RDH4-01-001-Zones-1 | RDH4-01-001-Phases-1 | RDH4-01-001-Networks-1 | RDH4-01-001-Work Method-1 | RDH4-01-001-MENEM |
| --- | --- | --- | --- | --- | --- | --- | --- | --- | --- | --- | --- | --- | --- | --- |
|  | 6777 | **RHD4-02-002-L131-(ST)-UPVC Pipes - 400 mm diameter** |  |  |  |  |  |  |  |  |  |  |  |  |
|  | 6776 | **RHD4-02-002-L131-(ST)-UPVC Pipes - 300 mm diameter** |  | 2027-04-28 | 2027-05-13 |  |  |  |  |  |  |  |  |  |
| RHD4CZ7L131ST2100 |  | Excavation works for UPVC Pipe Line 300 mm - (RD-L-13/1)-Z7-L131-ST | 2d | 2027-04-28 | 2027-04-29 | RHD4ENSDZ7APPST110, RHD4CZ7L131ST1102 | Skilled labor [9.04 h]; Unskilled Labor [9.04 h]; Equipment Opreator [10.89 h]; Excavator-Poclain [9.04 h]; Dump Truck [1.85 h]; UPVC (300mm Diameter) - ST - Depth less than 1.5 [20.73 m]; UPVC (300mm Diameter) - ST - Depth: 1.51m - 2.5m | 6,281.19 | L131 | Z7 | CONS | ST | Excavation | bef |
| RHD4CZ7L131ST2200 |  | Bedding works for UPVC Pipe Line 300 mm - (RD-L-13/1)-Z7-L131-ST | 2d | 2027-05-01 | 2027-05-02 | RHD4CZ7L131ST2100 | Skilled labor [7.62 h]; Unskilled Labor [15.14 h]; Equipment Opreator [15.14 h]; Excavator-Poclain [7.62 h]; Dump Truck [7.62 h]; UPVC (300mm Diameter) - ST - Depth less than 1.5 [10.37 m]; UPVC (300mm Diameter) - ST - Depth: 1.51m - 2.5m | 3,142.11 | L131 | Z7 | CONS | ST | Bedding | bef |
| RHD4CZ7L131ST2300 |  | Installing for UPVC Pipe Line 300 mm - (RD-L-13/1)-Z7-L131-ST | 2d | 2027-05-08 | 2027-05-09 | RHD4PRSHLDOSST1106, RHD4PRSHLSTAGST1106, RHD4CZ7L131ST2200, RHD4CZ7L131ST7300 | Unskilled Labor [18.19 h]; Plumber [9.04 h]; UPVC (300mm Diameter) - ST - Depth less than 1.5 [93.3 m]; UPVC (300mm Diameter) - ST - Depth: 1.51m - 2.5m | 28,269.9 | L131 | Z7 | CONS | ST | Installation | bef |
| RHD4CZ7L131ST2400 |  | Primary Test for UPVC Pipe Line 300 mm - (RD-L-13/1)-Z7-L131-ST | 2d | 2027-05-10 | 2027-05-11 | RHD4CZ7L131ST2300 | Unskilled Labor [4.57 h]; Plumber [4.57 h]; Equipment Opreator [4.57 h]; Water Truck [4.57 h]; UPVC (300mm Diameter) - ST - Depth less than 1.5 [41.47 m]; UPVC (300mm Diameter) - ST - Depth: 1.51m - 2.5m | 12,565.41 | L131 | Z7 | CONS | ST | Primary Test | bef |
| RHD4CZ7L131ST2500 |  | Backfilling and warning tape works for UPVC Pipe Line 300 mm - (RD-L-13/1)-Z7-L131-ST | 2d | 2027-05-12 | 2027-05-13 | RHD4CZ7L131ST2400, RHD4CZ7L131ST6100 | Skilled labor [11.33 h]; Unskilled Labor [22.54 h]; Equipment Opreator [22.54 h]; Excavator-Poclain [11.33 h]; Dump Truck [11.33 h]; UPVC (300mm Diameter) - ST - Depth less than 1.5 [41.47 m]; UPVC (300mm Diameter) - ST - Depth: 1.51m - 2.5m | 12,565.41 | L131 | Z7 | CONS | ST | Backfilling | bef |
|  | 6783 | **RHD4-02-002-L131-(ST)-HDPE Force Main Pipeline - 250 mm diameter** |  |  |  |  |  |  |  |  |  |  |  |  |
|  | 6781 | **RHD4-02-002-L131-(ST)-Discharge Chamber - 1500*1200 mm** |  |  |  |  |  |  |  |  |  |  |  |  |
|  | 6784 | **RHD4-02-002-L131-(ST)-Concrete Encasement** |  | 2027-05-08 | 2027-05-09 |  |  |  |  |  |  |  |  |  |
| RHD4CZ7L131ST6100 |  | Pipe Encasement for Storm Pipelines - (RD-L-13/1)-Z7-L131-ST | 2d | 2027-05-08 | 2027-05-09 | RHD4CZ7L131ST2300 SS, RHD4CZ7L131ST2300 FF, RHD4CZ7L131ST2200 | Skilled labor [0.98 h]; Unskilled Labor [0.98 h]; Equipment Opreator [1.09 h]; Concrete Mixer Truck [0.11 h]; Dump Truck [0.98 h]; Pipe Encasement - ST [18.92 m3] | 9,573.52 | L131 | Z7 | CONS | ST | Pipe Encasement | bef |
|  | 6785 | **RHD4-02-002-Z7-L131-Catch Basin - ST** |  | 2027-05-01 | 2027-05-12 |  |  |  |  |  |  |  |  |  |
|  | 6786 | **RHD4-02-002-L131-(ST)-Single Catch Basin Works** |  | 2027-05-01 | 2027-05-12 |  |  |  |  |  |  |  |  |  |
| RHD4CZ7L131ST7100 |  | Excavation works for Single Catch Basin - (RD-L-13/1)-Z7-L131-ST | 2d | 2027-05-01 | 2027-05-02 | RHD4ENSDZ7APPST110, RHD4CZ7L131ST2100 | Skilled labor [16.34 h]; Unskilled Labor [32.67 h]; Equipment Opreator [24.5 h]; Excavator-Poclain [16.34 h]; Dump Truck [8.17 h]; Single Catch basin - ST [3.75 nr] | 13,991.25 | L131 | Z7 | CONS | ST | Excavation | bef |
| RHD4CZ7L131ST7200 |  | PC Blinding, Installation and Pipe connection for Single Catch Basin - (RD-L-13/1)-Z7-L131-ST | 2d | 2027-05-03 | 2027-05-04 | RHD4CZ7L131ST7100 | Skilled labor [16.34 h]; Unskilled Labor [32.67 h]; Plumber [8.17 h]; Equipment Opreator [3.27 h]; Boom Truck [3.27 h]; Single Catch basin - ST [3 nr] | 11,193 | L131 | Z7 | CONS | ST | Installation & Pipe Connection | bef |
| RHD4CZ7L131ST7300 |  | Rings & C.Slab & Final Backfill for Single Catch Basin - (RD-L-13/1)-Z7-L131-ST | 2d | 2027-05-05 | 2027-05-06 | RHD4PRSHLDOSST1306, RHD4PRSHLSTAGST1306, RHD4CZ7L131ST7200 | Skilled labor [20.47 h]; Unskilled Labor [40.8 h]; Equipment Opreator [24.5 h]; Boom Truck [4.14 h]; Bobcat [20.47 h]; Single Catch basin - ST [5.25 nr] | 19,587.75 | L131 | Z7 | CONS | ST | Rings | bef |
| RHD4CZ7L131ST7400 |  | Steel Cover for Single Catch Basin - (RD-L-13/1)-Z7-L131-ST | 2d | 2027-05-08 | 2027-05-09 | RHD4PRSHLDOSST1706, RHD4CZ7L131ST7300 | Skilled labor [16.34 h]; Unskilled Labor [16.34 h]; Equipment Opreator [3.27 h]; Boom Truck [3.27 h]; Single Catch basin - ST [0.75 nr] | 2,798.25 | L131 | Z7 | CONS | ST | Steel Cover | bef |
| RHD4CZ7L131ST7500 |  | Finishing and Insulation works for Single Catch Basin - (RD-L-13/1)-Z7-L131-ST | 3d | 2027-05-10 | 2027-05-12 | RHD4CZ7L131ST7400 | Skilled labor [32.67 h]; Unskilled Labor [65.34 h]; Equipment Opreator [6.53 h]; Boom Truck [6.53 h]; Single Catch basin - ST [2.25 nr] | 8,394.75 | L131 | Z7 | CONS | ST | Insulation | bef |
|  | 6787 | **RHD4-02-002-L131-(ST)-Double Catch Basin Works** |  |  |  |  |  |  |  |  |  |  |  |  |
|  | 6810 | **RHD4-02-002-Z7-L131-Sewage Network - SW** |  | 2026-10-27 | 2027-07-06 |  |  |  |  |  |  |  |  |  |
|  | 6822 | **RHD4-02-002-L131-(SW)-MH Works - 1500 mm diameter** |  |  |  |  |  |  |  |  |  |  |  |  |
|  | 6442 | **RHD4-02-002-L131-(SW)-MH Works - 1200 mm diameter** |  | 2027-05-13 | 2027-07-06 |  |  |  |  |  |  |  |  |  |
| RHD4CZ7L131SW3100 |  | Excavation and PC Blinding works for MH 1200 mm - (RD-L-13/1)-Z7-L131-SW | 6d | 2027-05-13 | 2027-05-24 | RHD4CZ7L131SW1101 SS | Skilled labor [59.9 h]; Unskilled Labor [59.9 h]; Equipment Opreator [95.84 h]; Excavator-Poclain [59.9 h]; Water Truck [5.99 h]; Dump Truck [29.95 h]; MH (1200mm Diameter) - SW - depth 2.51 - 3.5m [1 nr]; MH (1200mm Diameter) - SW - depth 3.51 -4.5m [0.25 nr]; MH (1200mm Diameter) - SW - depth 4.51 -5.5m [1.5 nr] | 38,541 | L131 | Z7 | CONS | SW | Excavation | bef |
| RHD4CZ7L131SW3200 |  | Installation of Base for MH 1200 mm - (RD-L-13/1)-Z7-L131-SW | 11d | 2027-05-25 | 2027-06-06 | RHD4CZ7L131SW3100 | Skilled labor [119.79 h]; Unskilled Labor [119.79 h]; Equipment Opreator [47.92 h]; Boom Truck [23.96 h]; Concrete Mixer Truck [23.96 h]; MH (1200mm Diameter) - SW - depth 2.51 - 3.5m [1 nr]; MH (1200mm Diameter) - SW - depth 3.51 -4.5m [0.25 nr]; MH (1200mm Diameter) - SW - depth 4.51 -5.5m [1.5 nr] | 38,541 | L131 | Z7 | CONS | SW | Installing Base | bef |
| RHD4CZ7L131SW3300 |  | MH Ring and C.Slab works and Backfilling works for MH 1200 mm - (RD-L-13/1)-Z7-L131-SW | 11d | 2027-06-07 | 2027-06-19 | RHD4CZ7L131SW3200 | Skilled labor [119.79 h]; Unskilled Labor [119.79 h]; Equipment Opreator [83.86 h]; Boom Truck [47.92 h]; Concrete Mixer Truck [35.94 h]; MH (1200mm Diameter) - SW - depth 2.51 - 3.5m [1.4 nr]; MH (1200mm Diameter) - SW - depth 3.51 -4.5m [0.35 nr]; MH (1200mm Diameter) - SW - depth 4.51 -5.5m [2.1 nr] | 53,957.4 | L131 | Z7 | CONS | SW | Installing Rings | bef |
| RHD4CZ7L131SW3400 |  | Steel Cover for MH 1200 mm - (RD-L-13/1)-Z7-L131-SW | 4d | 2027-06-20 | 2027-06-23 | RHD4CZ7L131SW3300 | Skilled labor [40 h]; Unskilled Labor [79.83 h]; Equipment Opreator [7.95 h]; Boom Truck [7.95 h]; MH (1200mm Diameter) - SW - depth 2.51 - 3.5m [0.2 nr]; MH (1200mm Diameter) - SW - depth 3.51 -4.5m [0.05 nr]; MH (1200mm Diameter) - SW - depth 4.51 -5.5m [0.3 nr] | 7,708.2 | L131 | Z7 | CONS | SW | Steel Cover | bef |
| RHD4CZ7L131SW3500 |  | Finishing, Benching, Testing works for MH 1200 mm - (RD-L-13/1)-Z7-L131-SW | 11d | 2027-06-24 | 2027-07-06 | RHD4CZ7L131SW3400, RHD4CZ7L131SW2500 | Skilled labor [119.79 h]; Unskilled Labor [239.59 h]; Plumber [119.79 h]; Equipment Opreator [23.96 h]; Water Truck [23.96 h]; MH (1200mm Diameter) - SW - depth 2.51 - 3.5m [0.4 nr]; MH (1200mm Diameter) - SW - depth 3.51 -4.5m [0.1 nr]; MH (1200mm Diameter) - SW - depth 4.51 -5.5m [0.6 nr] | 15,416.4 | L131 | Z7 | CONS | SW | Benching | bef |

| ID | WBS | Activity | Duration | Start | Finish | Predecessors | Complete | Remaining | Planned start | Planned finish | Resources | Cost | Actual cost | RDH4-01-001-Road and Block Names-1 | RDH4-01-001-Zones-1 | RDH4-01-001-Phases-1 | RDH4-01-001-Networks-1 | RDH4-01-001-Work Method-1 | RDH4-01-001-MENEM |
| --- | --- | --- | --- | --- | --- | --- | --- | --- | --- | --- | --- | --- | --- | --- | --- | --- | --- | --- | --- |
|  | 957 | **RHD4-02-002-L131-(SW)-MH Works - 1200 mm diameter with Back drop** |  | 2027-05-25 | 2027-06-05 |  |  |  |  |  |  |  |  |  |  |  |  |  |  |
| RHD4CZ7L131SW3101 |  | Excavation and PC Blinding works for MH 1200 mm - (RD-L-13/1)-Z7-L131-SW | 2d | 2027-05-25 | 2027-05-26 | RHD4CZ7L131SW3100 |  |  |  |  | Skilled labor [10.89 h]; Unskilled Labor [10.89 h]; Equipment Opreator [17.42 h]; Excavator-Poclain [10.89 h]; Water Truck [1.09 h]; Dump Truck [5.45 h]; MH (1200mm Diameter) - SW - depth 3.51 -4.5 m with back drop [0.25 nr]; MH (1200mm Diameter) - SW - depth 4.51-5.5 m with back drop [0.25 nr] | 9,418.25 |  | L131 | Z7 | CONS | SW | Excavation | bef |
| RHD4CZ7L131SW3201 |  | Installation of Base for MH 1200 mm - (RD-L-13/1)-Z7-L131-SW | 2d | 2027-05-27 | 2027-05-29 | RHD4CZ7L131SW3101 |  |  |  |  | Skilled labor [21.78 h]; Unskilled Labor [21.78 h]; Equipment Opreator [8.71 h]; Boom Truck [4.36 h]; Concrete Mixer Truck [4.36 h]; MH (1200mm Diameter) - SW - depth 3.51 -4.5 m with back drop [0.25 nr]; MH (1200mm Diameter) - SW - depth 4.51-5.5 m with back drop [0.25 nr] | 9,418.25 |  | L131 | Z7 | CONS | SW | Installing Base | bef |
| RHD4CZ7L131SW3301 |  | MH Ring and C.Slab works and Backfilling works for MH 1200 mm - (RD-L-13/1)-Z7-L131-SW | 2d | 2027-05-30 | 2027-05-31 | RHD4CZ7L131SW3201 |  |  |  |  | Skilled labor [21.78 h]; Unskilled Labor [21.78 h]; Equipment Opreator [15.25 h]; Boom Truck [8.71 h]; Concrete Mixer Truck [6.53 h]; MH (1200mm Diameter) - SW - depth 3.51 -4.5 m with back drop [0.35 nr]; MH (1200mm Diameter) - SW - depth 4.51-5.5 m with back drop [0.35 nr] | 13,185.55 |  | L131 | Z7 | CONS | SW | Installing Rings | bef |
| RHD4CZ7L131SW3401 |  | Steel Cover for MH 1200 mm - (RD-L-13/1)-Z7-L131-SW | 2d | 2027-06-01 | 2027-06-02 | RHD4CZ7L131SW3301 |  |  |  |  | Skilled labor [7.3 h]; Unskilled Labor [14.48 h]; Equipment Opreator [1.42 h]; Boom Truck [1.42 h]; MH (1200mm Diameter) - SW - depth 3.51 -4.5 m with back drop [0.05 nr]; MH (1200mm Diameter) - SW - depth 4.51-5.5 m with back drop [0.05 nr] | 1,883.65 |  | L131 | Z7 | CONS | SW | Steel Cover | bef |
| RHD4CZ7L131SW3501 |  | Finishing, Benching, Testing works for MH 1200 mm - (RD-L-13/1)-Z7-L131-SW | 2d | 2027-06-03 | 2027-06-05 | RHD4CZ7L131SW3401 |  |  |  |  | Skilled labor [21.78 h]; Unskilled Labor [43.56 h]; Plumber [21.78 h]; Equipment Opreator [4.36 h]; Water Truck [4.36 h]; MH (1200mm Diameter) - SW - depth 3.51 -4.5 m with back drop [0.1 nr]; MH (1200mm Diameter) - SW - depth 4.51-5.5 m with back drop [0.1 nr] | 3,767.3 |  | L131 | Z7 | CONS | SW | Benching | bef |
|  | 6434 | **RHD4-02-002-L131-(SW)-GRP Pipes - 400 mm diameter** |  | 2026-10-27 | 2027-07-03 |  |  |  |  |  |  |  |  |  |  |  |  |  |  |
| RHD4CZ7L131SW1101 |  | Excavation works for GRP Pipe Line 400 mm - (RD-L-13/1)-Z7-L131-SW | 4d | 2026-10-27 A | 2026-10-29 A | RHD4CZ7L131ST7500 | 100% |  | 2026-10-27 | 2026-10-31 | Skilled labor [40.19 h]; Unskilled Labor [40.19 h]; Equipment Opreator [48.24 h]; Excavator-Poclain [40.19 h]; Dump Truck [8.06 h]; GRP (400mm Diameter) - SW - Depth: less than 2.5m; GRP (400mm Diameter) - SW - Depth: 2.51m - 3.5m [17.45 m]; GRP (400mm Diameter) - SW - Depth: 3.51m - 4.5m [55.79 m]; GRP (400mm Diameter) - SW - Depth: more than 4.5m [7.76 m] | 48,439.91 | 48,439.91 | L131 | Z7 | CONS | SW | Excavation | bef |
| RHD4CZ7L131SW1201 |  | Bedding works for GRP Pipe Line 400 mm - (RD-L-13/1)-Z7-L131-SW | 4d | 2026-10-29 A | 2027-05-22 | RHD4CZ7L131SW1101 | 43% | 4d | 2026-10-29 | 2026-11-02 | Skilled labor [40.19 h]; Unskilled Labor [80.37 h]; Equipment Opreator [80.37 h]; Excavator-Poclain [40.19 h]; Dump Truck [40.19 h]; GRP (400mm Diameter) - SW - Depth: less than 2.5m; GRP (400mm Diameter) - SW - Depth: 2.51m - 3.5m [5.82 m]; GRP (400mm Diameter) - SW - Depth: 3.51m - 4.5m [18.6 m]; GRP (400mm Diameter) - SW - Depth: more than 4.5m [2.59 m] | 16,152.7 | 6,879.55 | L131 | Z7 | CONS | SW | Bedding | bef |
| RHD4CZ7L131SW1301 |  | Installing for GRP Pipe Line 400 mm - (RD-L-13/1)-Z7-L131-SW | 4d | 2026-10-31 A | 2027-06-23 | RHD4CZ7L131SW1201, RHD4CZ7L131SW3300 | 29% | 4d | 2026-10-31 | 2026-11-03 | Unskilled Labor [80.37 h]; Plumber [40.19 h]; Equipment Opreator [40.19 h]; Boom Truck [40.19 h]; GRP (400mm Diameter) - SW - Depth: less than 2.5m; GRP (400mm Diameter) - SW - Depth: 2.51m - 3.5m [46.54 m]; GRP (400mm Diameter) - SW - Depth: 3.51m - 4.5m [248.76 m]; GRP (400mm Diameter) - SW - Depth: more than 4.5m [20.7 m] | 190,872.88 | 55,036.4 | L131 | Z7 | CONS | SW | Installation | bef |
| RHD4CZ7L131SW1401 |  | Primary Test for GRP Pipe Line 400 mm - (RD-L-13/1)-Z7-L131-SW | 4d | 2027-06-24 | 2027-06-28 | RHD4CZ7L131SW1301 |  |  |  |  | Unskilled Labor [40.19 h]; Plumber [40.19 h]; Equipment Opreator [40.19 h]; Water Truck [40.19 h]; GRP (400mm Diameter) - SW - Depth: less than 2.5m; GRP (400mm Diameter) - SW - Depth: 2.51m - 3.5m [23.27 m]; GRP (400mm Diameter) - SW - Depth: 3.51m - 4.5m [74.38 m]; GRP (400mm Diameter) - SW - Depth: more than 4.5m [10.35 m] | 64,586.44 |  | L131 | Z7 | CONS | SW | Primary Test | bef |
| RHD4CZ7L131SW1501 |  | Backfilling and warning tape works for GRP Pipe Line 400 mm - (RD-L-13/1)-Z7-L131-SW | 4d | 2027-06-29 | 2027-07-03 | RHD4CZ7L131SW1401, RHD4CZ7L131SW2500, RHD4CZ7L131IRR3202 |  |  |  |  | Skilled labor [40.19 h]; Unskilled Labor [80.37 h]; Equipment Opreator [80.37 h]; Excavator-Poclain [40.19 h]; Dump Truck [40.19 h]; GRP (400mm Diameter) - SW - Depth: less than 2.5m; GRP (400mm Diameter) - SW - Depth: 2.51m - 3.5m [23.27 m]; GRP (400mm Diameter) - SW - Depth: 3.51m - 4.5m [74.38 m]; GRP (400mm Diameter) - SW - Depth: more than 4.5m [10.35 m] | 64,586.44 |  | L131 | Z7 | CONS | SW | Backfilling | bef |
|  | 6438 | **RHD4-02-002-L131-(SW)-UPVC Pipes - 200 mm diameter** |  | 2027-05-13 | 2027-05-29 |  |  |  |  |  |  |  |  |  |  |  |  |  |  |
| RHD4CZ7L131SW2100 |  | Excavation works for UPVC Pipe Line 200 mm - (RD-L-13/1)-Z7-L131-SW | 2d | 2027-05-13 | 2027-05-19 | RHD4CZ7L131SW1101 |  |  |  |  | Skilled labor [3.81 h]; Unskilled Labor [3.81 h]; Equipment Opreator [4.57 h]; Excavator-Poclain [3.81 h]; Dump Truck [0.8 h]; UPVC (200mm Diameter) - SW - Depth: 1.51m - 2.5m [4.39 m]; UPVC (200mm Diameter) - SW - Depth: 2.51m - 3.5m [4.58 m] | 2,354.11 |  | L131 | Z7 | CONS | SW | Excavation | bef |
| RHD4CZ7L131SW2200 |  | Bedding works for UPVC Pipe Line 200 mm - (RD-L-13/1)-Z7-L131-SW | 2d | 2027-05-20 | 2027-05-22 | RHD4CZ7L131SW2100 |  |  |  |  | Skilled labor [3.81 h]; Unskilled Labor [7.62 h]; Equipment Opreator [7.62 h]; Excavator-Poclain [3.81 h]; Dump Truck [3.81 h]; UPVC (200mm Diameter) - SW - Depth: 1.51m - 2.5m [1.46 m]; UPVC (200mm Diameter) - SW - Depth: 2.51m - 3.5m [1.53 m] | 785 |  | L131 | Z7 | CONS | SW | Bedding | bef |
| RHD4CZ7L131SW2300 |  | Installing for UPVC Pipe Line 200 mm - (RD-L-13/1)-Z7-L131-SW | 2d | 2027-05-23 | 2027-05-24 | RHD4CZ7L131SW2200 |  |  |  |  | Unskilled Labor [7.62 h]; Plumber [3.81 h]; Equipment Opreator [3.81 h]; Boom Truck [3.81 h]; UPVC (200mm Diameter) - SW - Depth: 1.51m - 2.5m [11.7 m]; UPVC (200mm Diameter) - SW - Depth: 2.51m - 3.5m [12.2 m] | 6,272.1 |  | L131 | Z7 | CONS | SW | Installation | bef |
| RHD4CZ7L131SW2400 |  | Primary Test for UPVC Pipe Line 200 mm - (RD-L-13/1)-Z7-L131-SW | 2d | 2027-05-25 | 2027-05-26 | RHD4CZ7L131SW2300 |  |  |  |  | Unskilled Labor [2.72 h]; Plumber [2.72 h]; Equipment Opreator [2.72 h]; Water Truck [2.72 h]; UPVC (200mm Diameter) - SW - Depth: 1.51m - 2.5m [5.85 m]; UPVC (200mm Diameter) - SW - Depth: 2.51m - 3.5m [6.1 m] | 3,136.05 |  | L131 | Z7 | CONS | SW | Primary Test | bef |
| RHD4CZ7L131SW2500 |  | Backfilling and warning tape works for UPVC Pipe Line 200 mm - (RD-L-13/1)-Z7-L131-SW | 2d | 2027-05-27 | 2027-05-29 | RHD4CZ7L131SW2400 |  |  |  |  | Skilled labor [3.81 h]; Unskilled Labor [7.62 h]; Equipment Opreator [7.62 h]; Excavator-Poclain [3.81 h]; Dump Truck [3.81 h]; UPVC (200mm Diameter) - SW - Depth: 1.51m - 2.5m [5.85 m]; UPVC (200mm Diameter) - SW - Depth: 2.51m - 3.5m [6.1 m] | 3,136.05 |  | L131 | Z7 | CONS | SW | Backfilling | bef |
|  | 6823 | **RHD4-02-002-L131-(SW)-MH Works - 1500 mm diameter with Back drop** |  |  |  |  |  |  |  |  |  |  |  |  |  |  |  |  |  |
|  | 6815 | **RHD4-02-002-L131-(SW)-GRP Pipes - 700 mm diameter** |  |  |  |  |  |  |  |  |  |  |  |  |  |  |  |  |  |
|  | 6819 | **RHD4-02-002-L131-(SW)-Concrete Encasement** |  |  |  |  |  |  |  |  |  |  |  |  |  |  |  |  |  |
|  | 6847 | **RHD4-02-002-Z7-L131-Potable Network - PT** |  | 2027-06-06 | 2027-07-26 |  |  |  |  |  |  |  |  |  |  |  |  |  |  |
|  | 6848 | **RHD4-02-002-L131-(PT)-HDPE Pipes - 110 mm diameter** |  | 2027-06-09 | 2027-07-07 |  |  |  |  |  |  |  |  |  |  |  |  |  |  |
| RHD4CZ7L131PT1100 |  | Excavation works for HDPE Pipline 110 mm - (RD-L-13/1)-Z7-L131-PT | 2d | 2027-06-09 | 2027-06-10 | RHD4ENSDZ7APPPT130, RHD4ENMSPT2000, RHD4CZ7L131PT1101 |  |  |  |  | Skilled labor [1.42 h]; Unskilled Labor [1.42 h]; Equipment Opreator [1.6 h]; Excavator-Poclain [1.42 h]; Dump Truck [0.33 h]; HDPE (110mm Diameter) - PT - Depth: less than 1.5m [3.14 m] | 266.9 |  | L131 | Z7 | CONS | PT | Excavation | bef |
| RHD4CZ7L131PT1200 |  | Bedding works for HDPE Pipline 110 mm - (RD-L-13/1)-Z7-L131-PT | 2d | 2027-06-13 | 2027-06-14 | RHD4CZ7L131PT1100, RHD4CZ7L131PT1201 |  |  |  |  | Skilled labor [1.09 h]; Unskilled Labor [2.29 h]; Equipment Opreator [2.29 h]; Excavator-Poclain [1.09 h]; Dump Truck [1.09 h]; HDPE (110mm Diameter) - PT - Depth: less than 1.5m [1.57 m] | 133.45 |  | L131 | Z7 | CONS | PT | Bedding | bef |
| RHD4CZ7L131PT1300 |  | Installing for HDPE Pipline 110 mm - (RD-L-13/1)-Z7-L131-PT | 2d | 2027-06-19 | 2027-06-20 | RHD4PRSHLDOSPT1000, RHD4PRSHLSTAGPT1000, RHD4CZ7L131PT1200, RHD4CZ7L131PT1301 |  |  |  |  | Unskilled Labor [4.57 h]; Plumber [2.29 h]; Equipment Opreator [2.29 h]; Boom Truck [2.29 h]; HDPE (110mm Diameter) - PT - Depth: less than 1.5m [14.13 m] | 1,201.05 |  | L131 | Z7 | CONS | PT | Installation | bef |
| RHD4CZ7L131PT1400 |  | Primary Test for HDPE Pipline 110 mm - (RD-L-13/1)-Z7-L131-PT | 2d | 2027-07-01 | 2027-07-03 | RHD4CZ7L131PT1300, RHD4CZ7L131PT1401, RHD4CZ7L131PT5100 |  |  |  |  | Unskilled Labor [0.65 h]; Plumber [0.65 h]; Equipment Opreator [0.65 h]; Water Truck [0.65 h]; HDPE (110mm Diameter) - PT - Depth: less than 1.5m [6.28 m] | 533.8 |  | L131 | Z7 | CONS | PT | Primary Test | bef |
| RHD4CZ7L131PT1500 |  | Backfilling and warning tape works for HDPE Pipline 110 mm - (RD-L-13/1)-Z7-L131-PT | 2d | 2027-07-06 | 2027-07-07 | RHD4CZ7L131PT1400, RHD4CZ7L131PT1501 |  |  |  |  | Skilled labor [1.74 h]; Unskilled Labor [3.38 h]; Equipment Opreator [3.38 h]; Excavator-Poclain [1.74 h]; Dump Truck [1.74 h]; HDPE (110mm Diameter) - PT - Depth: less than 1.5m [6.28 m] | 533.8 |  | L131 | Z7 | CONS | PT | Backfilling | bef |

| ID | WBS | Activity | Duration | Start | Finish | Predecessors | Resources | Cost | RDH4-01-001-Road and Block Names-1 | RDH4-01-001-Zones-1 | RDH4-01-001-Phases-1 | RDH4-01-001-Networks-1 | RDH4-01-001-Work Method-1 | RDH4-01-001-MENEM |
| --- | --- | --- | --- | --- | --- | --- | --- | --- | --- | --- | --- | --- | --- | --- |
|  | 6849 | **RHD4-02-002-L131-(PT)-HDPE Pipes - 160 mm diameter** |  | 2027-06-06 | 2027-07-05 |  |  |  |  |  |  |  |  |  |
| RHD4CZ7L131PT1101 |  | Excavation works for HDPE Pipline 160 mm - (RD-L-13/1)-Z7-L131-PT | 3d | 2027-06-06 | 2027-06-08 | RHD4ENSDZ7APPPT130, RHD4ENMSPT2000, RHD4CZ7L131SW3501 | Skilled labor [28.21 h]; Unskilled Labor [28.21 h]; Equipment Opreator [33.87 h]; Excavator-Poclain [28.21 h]; Dump Truck [5.66 h]; HDPE (160mm Diameter) - PT - Depth: less than 1.5m [64.75 m] | 6,927.82 | L131 | Z7 | CONS | PT | Excavation | bef |
| RHD4CZ7L131PT1201 |  | Bedding works for HDPE Pipline 160 mm - (RD-L-13/1)-Z7-L131-PT | 3d | 2027-06-09 | 2027-06-12 | RHD4CZ7L131PT1101 | Skilled labor [23.52 h]; Unskilled Labor [47.05 h]; Equipment Opreator [47.05 h]; Excavator-Poclain [23.52 h]; Dump Truck [23.52 h]; HDPE (160mm Diameter) - PT - Depth: less than 1.5m [32.37 m] | 3,463.91 | L131 | Z7 | CONS | PT | Bedding | bef |
| RHD4CZ7L131PT1301 |  | Installing for HDPE Pipline 160 mm - (RD-L-13/1)-Z7-L131-PT | 5d | 2027-06-13 | 2027-06-17 | RHD4PRSHLDOSPT1000, RHD4PRSHLSTAGPT1000, RHD4CZ7L131PT1201 | Unskilled Labor [93.98 h]; Plumber [47.05 h]; Equipment Opreator [47.05 h]; Boom Truck [47.05 h]; HDPE (160mm Diameter) - PT - Depth: less than 1.5m [291.36 m] | 31,175.2 | L131 | Z7 | CONS | PT | Installation | bef |
| RHD4CZ7L131PT1401 |  | Primary Test for HDPE Pipline 160 mm - (RD-L-13/1)-Z7-L131-PT | 2d | 2027-06-29 | 2027-06-30 | RHD4CZ7L131PT1301, RHD4CZ7L131PT5100 | Unskilled Labor [14.05 h]; Plumber [14.05 h]; Equipment Opreator [14.05 h]; Water Truck [14.05 h]; HDPE (160mm Diameter) - PT - Depth: less than 1.5m [129.49 m] | 13,855.64 | L131 | Z7 | CONS | PT | Primary Test | bef |
| RHD4CZ7L131PT1501 |  | Backfilling and warning tape works for HDPE Pipline 160 mm - (RD-L-13/1)-Z7-L131-PT | 4d | 2027-07-01 | 2027-07-05 | RHD4CZ7L131PT1401 | Skilled labor [35.28 h]; Unskilled Labor [70.46 h]; Equipment Opreator [70.46 h]; Excavator-Poclain [35.28 h]; Dump Truck [35.28 h]; HDPE (160mm Diameter) - PT - Depth: less than 1.5m [129.49 m] | 13,855.64 | L131 | Z7 | CONS | PT | Backfilling | bef |
|  | 6853 | **RHD4-02-002-L131-(PT)-Gate Valves (Direct Buried)** |  | 2027-06-19 | 2027-07-10 |  |  |  |  |  |  |  |  |  |
| RHD4CZ7L131PT3100 |  | Installation for Direct Buried Gate Valves - (RD-L-13/1)-Z7-L131-PT | 2d | 2027-06-19 | 2027-06-20 | RHD4PRSHLDOSPT1200, RHD4PRSHLSTAGPT1200, RHD4CZ7L131PT1301 FF, RHD4CZ7L131PT1300 FF, RHD4CZ7L131PT1301 SS, RHD4CZ7L131PT1300 SS | Unskilled Labor [16.34 h]; Plumber [16.34 h]; Gate valves dia 100 mm - PT [0.9 nr]; Gate valves dia 150 mm - PT [1.8 nr] | 3,842.1 | L131 | Z7 | CONS | PT | Installation | bef |
| RHD4CZ7L131PT3200 |  | Stem and Service box for Direct Buried Gate Valves - (RD-L-13/1)-Z7-L131-PT | 2d | 2027-07-08 | 2027-07-10 | RHD4PRSHLDOSPT1300, RHD4PRSHLSTAGPT1300, RHD4CZ7L131PT3100, RHD4CZ7L131PT1501, RHD4CZ7L131PT1500 | Unskilled Labor [16.34 h]; Plumber [16.34 h]; Gate valves dia 100 mm - PT [0.1 nr]; Gate valves dia 150 mm - PT [0.2 nr] | 426.9 | L131 | Z7 | CONS | PT | Stem and Service box | bef |
|  | 6856 | **RHD4-02-002-L131-(PT)-Wash out Valve Chambers** |  |  |  |  |  |  |  |  |  |  |  |  |
|  | 6857 | **RHD4-02-002-L131-(PT)-Wash out Valves** |  |  |  |  |  |  |  |  |  |  |  |  |
|  | 6858 | **RHD4-02-002-L131-(PT)-Air Valve Chambers** |  | 2027-06-12 | 2027-06-20 |  |  |  |  |  |  |  |  |  |
| RHD4CZ7L131PT2102 |  | Excavation and Bedding for Air Valve Chambers for Potable Water Network - (RD-L-13/1)-Z7-L131-PT | 2d | 2027-06-12 | 2027-06-13 | RHD4ENSDZ7APPPT130, RHD4CZ7L131PT1100 | Skilled labor [5.45 h]; Unskilled Labor [5.45 h]; Equipment Opreator [1.09 h]; Excavator-Poclain [0.54 h]; Dump Truck [0.54 h]; Air Valve chambers - PT [0.25 nr] | 1,193 | L131 | Z7 | CONS | PT | Excavation and Bedding | bef |
| RHD4CZ7L131PT2202 |  | PC works for Air Valve Chambers for Potable Water Network - (RD-L-13/1)-Z7-L131-PT | 2d | 2027-06-14 | 2027-06-15 | RHD4CZ7L131PT2102 | Skilled labor [5.45 h]; Unskilled Labor [10.89 h]; Equipment Opreator [0.54 h]; Concrete Pump [0.54 h]; Air Valve chambers - PT [0.1 nr] | 477.2 | L131 | Z7 | CONS | PT | PC Works | bef |
| RHD4CZ7L131PT2302 |  | Installation for Air Valve Chambers for Potable Water Network - (RD-L-13/1)-Z7-L131-PT | 2d | 2027-06-16 | 2027-06-17 | RHD4PRSHLDOSPT1100, RHD4PRSHLDOSPT1400, RHD4PRSHLSTAGPT1100, RHD4PRSHLSTAGPT1400, RHD4CZ7L131PT2202 | Skilled labor [5.45 h]; Unskilled Labor [10.89 h]; Equipment Opreator [1.09 h]; Boom Truck [1.09 h]; Air Valve chambers - PT [0.55 nr] | 2,624.6 | L131 | Z7 | CONS | PT | Installation | bef |
| RHD4CZ7L131PT2402 |  | Backfilling works for Air Valve Chambers for Potable Water Network - (RD-L-13/1)-Z7-L131-PT | 2d | 2027-06-19 | 2027-06-20 | RHD4CZ7L131PT2302 | Skilled labor [5.45 h]; Unskilled Labor [10.89 h]; Equipment Opreator [1.09 h]; Water Truck [0.54 h]; Dump Truck [0.54 h]; Air Valve chambers - PT [0.1 nr] | 477.2 | L131 | Z7 | CONS | PT | Backfilling Works | bef |
|  | 6859 | **RHD4-02-002-L131-(PT)-Air Valves** |  | 2027-06-19 | 2027-06-22 |  |  |  |  |  |  |  |  |  |
| RHD4CZ7L131PT3103 |  | Installation for Air Valves for Potable Water Network - (RD-L-13/1)-Z7-L131-PT | 2d | 2027-06-19 | 2027-06-20 | RHD4PRSHLDOSPT1200, RHD4PRSHLSTAGPT1200, RHD4CZ7L131PT2302 | Unskilled Labor [5.45 h]; Plumber [5.45 h]; Air valve diameter 50 mm - PT [0.9 nr] | 4,427.1 | L131 | Z7 | CONS | PT | Installation | bef |
| RHD4CZ7L131PT3203 |  | Stem and Service box for Air Valves for Potable Water Network - (RD-L-13/1)-Z7-L131-PT | 2d | 2027-06-21 | 2027-06-22 | RHD4PRSHLDOSPT1300, RHD4PRSHLSTAGPT1300, RHD4CZ7L131PT3103, RHD4CZ7L131PT2402 | Unskilled Labor [5.45 h]; Plumber [5.45 h]; Air valve diameter 50 mm - PT [0.1 nr] | 491.9 | L131 | Z7 | CONS | PT | Stem and Service box | bef |
|  | 6860 | **RHD4-02-002-L131-(PT)-Fire Hydrant** |  | 2027-07-08 | 2027-07-26 |  |  |  |  |  |  |  |  |  |
| RHD4CZ7L131PT4100 |  | Excavation and Bedding and Pipe Installation for Fire Hydrant - (RD-L-13/1)-Z7-L131-PT | 5d | 2027-07-08 | 2027-07-13 | RHD4ENSDZ7APPPT130, RHD4CZ7L131PT1501, RHD4CZ7L131PT1500 | Skilled labor [49.01 h]; Unskilled Labor [49.01 h]; Plumber [49.01 h]; Equipment Opreator [24.5 h]; Excavator-Poclain [24.5 h]; 3-outlet fire hydrant (2 x 2.5 inch and 1 x 4.5 inch) in the form of a separate dry vacuum cylinder [0.9 nr] | 11,358 | L131 | Z7 | CONS | PT | Excavation | bef |
| RHD4CZ7L131PT4200 |  | Valve Installation for Fire Hydrant - (RD-L-13/1)-Z7-L131-PT | 3d | 2027-07-14 | 2027-07-17 | RHD4CZ7L131PT4100 | Unskilled Labor [32.67 h]; Plumber [32.67 h]; 3-outlet fire hydrant (2 x 2.5 inch and 1 x 4.5 inch) in the form of a separate dry vacuum cylinder [1.8 nr] | 22,716 | L131 | Z7 | CONS | PT | Valve | bef |
| RHD4CZ7L131PT4300 |  | Stem for Fire Hydrant - (RD-L-13/1)-Z7-L131-PT | 3d | 2027-07-18 | 2027-07-20 | RHD4CZ7L131PT4200 | Unskilled Labor [32.67 h]; Plumber [32.67 h]; 3-outlet fire hydrant (2 x 2.5 inch and 1 x 4.5 inch) in the form of a separate dry vacuum cylinder [2.7 nr] | 34,074 | L131 | Z7 | CONS | PT | Stem | bef |
| RHD4CZ7L131PT4400 |  | Fire Installation for Fire Hydrant - (RD-L-13/1)-Z7-L131-PT | 3d | 2027-07-21 | 2027-07-24 | RHD4PRSHLDOSPT1500, RHD4PRSHLSTAGPT1500, RHD4CZ7L131PT4300 | Unskilled Labor [32.67 h]; Plumber [32.67 h]; Equipment Opreator [32.67 h]; Boom Truck [32.67 h]; 3-outlet fire hydrant (2 x 2.5 inch and 1 x 4.5 inch) in the form of a separate dry vacuum cylinder [3.15 nr] | 39,753 | L131 | Z7 | CONS | PT | Fire | bef |
| RHD4CZ7L131PT4500 |  | Protection Barriers for Fire Hydrant - (RD-L-13/1)-Z7-L131-PT | 2d | 2027-07-25 | 2027-07-26 | RHD4CZ7L131PT4400, RHD4CZ7L131PT3200 | Unskilled Labor [19.6 h]; Plumber [19.6 h]; 3-outlet fire hydrant (2 x 2.5 inch and 1 x 4.5 inch) in the form of a separate dry vacuum cylinder [0.45 nr] | 5,679 | L131 | Z7 | CONS | PT | Protection Barriers | bef |

| ID | WBS | Activity | Duration | Start | Finish | Predecessors | Resources | Cost | RDH4-01-001-Road and Block Names-1 | RDH4-01-001-Zones-1 | RDH4-01-001-Phases-1 | RDH4-01-001-Networks-1 | RDH4-01-001-Work Method-1 | RDH4-01-001-MENEM |
| --- | --- | --- | --- | --- | --- | --- | --- | --- | --- | --- | --- | --- | --- | --- |
|  | 6861 | **RHD4-02-002-L131-(PT)-Concrete Encasement** |  | 2027-06-19 | 2027-06-28 |  |  |  |  |  |  |  |  |  |
| RHD4CZ7L131PT5100 |  | Pipe Encasement for Potable Pipelines - (RD-L-13/1)-Z7-L131-PT | 9d | 2027-06-19 | 2027-06-28 | RHD4CZ7L131PT1301 FF, RHD4CZ7L131PT1300 FF, RHD4CZ7L131PT1301 SS, RHD4CZ7L131PT1300 SS, RHD4CZ7L131PT1201, RHD4CZ7L131PT1200 | Skilled labor [273.67 h]; Unskilled Labor [273.67 h]; Equipment Opreator [301.01 h]; Concrete Mixer Truck [27.33 h]; Dump Truck [273.67 h]; Pipe Encasement - PT [125.64 m3] | 154,034.64 | L131 | Z7 | CONS | PT | Pipe Encasement | bef |
|  | 6862 | **RHD4-02-002-Z7-L131-Irrigation Network - IRR** |  | 2027-06-12 | 2027-07-31 |  |  |  |  |  |  |  |  |  |
|  | 6863 | **RHD4-02-002-L131-(IRR)-HDPE Pipes - 160 mm diameter** |  | 2027-06-12 | 2027-07-04 |  |  |  |  |  |  |  |  |  |
| RHD4CZ7L131IRR1100 |  | Excavation works for HDPE Pipline 160 mm - (RD-L-13/1)-Z7-L131-IRR | 5d | 2027-06-12 | 2027-06-16 | RHD4ENSDZ7APPIRR140, RHD4ENMSRR2000, RHD4CZ7L131PT1101, RHD4CZ7L131PT1100, RHD4CZ7L131MV3401 | Skilled labor [52.71 h]; Unskilled Labor [52.71 h]; Equipment Opreator [63.27 h]; Excavator-Poclain [52.71 h]; Dump Truck [10.56 h]; HDPE (160mm Diameter) - TSE - Depth: less than 1.5m [72.43 m]; HDPE (160mm Diameter) - TSE - Depth: more than 1.51m [0.25 m] | 8,946.27 | L131 | Z7 | CONS | IRR | Excavation | bef |
| RHD4CZ7L131IRR1200 |  | Bedding works for HDPE Pipline 160 mm - (RD-L-13/1)-Z7-L131-IRR | 4d | 2027-06-17 | 2027-06-21 | RHD4CZ7L131IRR1100 | Skilled labor [39.53 h]; Unskilled Labor [79.06 h]; Equipment Opreator [79.06 h]; Excavator-Poclain [39.53 h]; Dump Truck [39.53 h]; HDPE (160mm Diameter) - TSE - Depth: less than 1.5m [36.21 m]; HDPE (160mm Diameter) - TSE - Depth: more than 1.51m [0.08 m] | 4,466.34 | L131 | Z7 | CONS | IRR | Bedding | bef |
| RHD4CZ7L131IRR1300 |  | Installing for HDPE Pipline 160 mm - (RD-L-13/1)-Z7-L131-IRR | 5d | 2027-06-22 | 2027-06-27 | RHD4PRSHLDOSIRR1000, RHD4PRSHLSTAGIRR1000, RHD4CZ7L131IRR1200 | Unskilled Labor [105.42 h]; Plumber [52.71 h]; Equipment Opreator [52.71 h]; Boom Truck [52.71 h]; HDPE (160mm Diameter) - TSE - Depth: less than 1.5m [325.92 m]; HDPE (160mm Diameter) - TSE - Depth: more than 1.51m [0.66 m] | 40,188 | L131 | Z7 | CONS | IRR | Installation | bef |
| RHD4CZ7L131IRR1400 |  | Primary Test for HDPE Pipline 160 mm - (RD-L-13/1)-Z7-L131-IRR | 2d | 2027-06-28 | 2027-06-29 | RHD4CZ7L131IRR1300 | Unskilled Labor [15.79 h]; Plumber [15.79 h]; Equipment Opreator [15.79 h]; Water Truck [15.79 h]; HDPE (160mm Diameter) - TSE - Depth: less than 1.5m [144.85 m]; HDPE (160mm Diameter) - TSE - Depth: more than 1.51m [0.33 m] | 17,866.87 | L131 | Z7 | CONS | IRR | Primary Test | bef |
| RHD4CZ7L131IRR1500 |  | Backfilling and warning tape works for HDPE Pipline 160 mm - (RD-L-13/1)-Z7-L131-IRR | 4d | 2027-06-30 | 2027-07-04 | RHD4CZ7L131IRR1400 | Skilled labor [39.53 h]; Unskilled Labor [79.06 h]; Equipment Opreator [79.06 h]; Excavator-Poclain [39.53 h]; Dump Truck [39.53 h]; HDPE (160mm Diameter) - TSE - Depth: less than 1.5m [144.85 m]; HDPE (160mm Diameter) - TSE - Depth: more than 1.51m [0.33 m] | 17,866.87 | L131 | Z7 | CONS | IRR | Backfilling | bef |
|  | 6685 | **RHD4-02-002-L131-(IRR)-Wash out Chamber** |  | 2027-06-17 | 2027-06-26 |  |  |  |  |  |  |  |  |  |
| RHD4CZ7L131IRR2101 |  | Excavation and Bedding for Wash out Chamber for Irrigation Network - (RD-L-13/1)-Z7-L131-IRR | 2d | 2027-06-17 | 2027-06-19 | RHD4CZ7L131IRR2102 SS | Skilled labor [5.45 h]; Unskilled Labor [5.45 h]; Equipment Opreator [1.09 h]; Excavator-Poclain [0.54 h]; Dump Truck [0.54 h]; Wash out chambers - TSE [0.25 nr] | 4,686.25 | L131 | Z7 | CONS | IRR | Excavation and Bedding | bef |
| RHD4CZ7L131IRR2201 |  | PC works for Wash out Chamber for Irrigation Network - (RD-L-13/1)-Z7-L131-IRR | 2d | 2027-06-20 | 2027-06-21 | RHD4CZ7L131IRR2101 | Skilled labor [5.45 h]; Unskilled Labor [10.89 h]; Equipment Opreator [0.54 h]; Concrete Pump [0.54 h]; Wash out chambers - TSE [0.1 nr] | 1,874.5 | L131 | Z7 | CONS | IRR | PC Works | bef |
| RHD4CZ7L131IRR2301 |  | Installation for Wash out Chamber for Irrigation Network - (RD-L-13/1)-Z7-L131-IRR | 2d | 2027-06-22 | 2027-06-23 | RHD4CZ7L131IRR2201 | Skilled labor [5.45 h]; Unskilled Labor [10.89 h]; Equipment Opreator [1.09 h]; Boom Truck [1.09 h]; Wash out chambers - TSE [0.55 nr] | 10,309.75 | L131 | Z7 | CONS | IRR | Installation | bef |
| RHD4CZ7L131IRR2401 |  | Backfilling works for Wash out Chamber for Irrigation Network - (RD-L-13/1)-Z7-L131-IRR | 2d | 2027-06-24 | 2027-06-26 | RHD4CZ7L131IRR2301 | Skilled labor [5.45 h]; Unskilled Labor [10.89 h]; Equipment Opreator [1.09 h]; Water Truck [0.54 h]; Dump Truck [0.54 h]; Wash out chambers - TSE [0.1 nr] | 1,874.5 | L131 | Z7 | CONS | IRR | Backfilling Works | bef |
|  | 6864 | **RHD4-02-002-L131-(IRR)-HDPE Pipes - 180 mm diameter** |  |  |  |  |  |  |  |  |  |  |  |  |
|  | 6871 | **RHD4-02-002-L131-(IRR)-Gate Valves (Direct Buried)** |  | 2027-07-27 | 2027-07-31 |  |  |  |  |  |  |  |  |  |
| RHD4CZ7L131IRR3100 |  | Installation for Direct Buried Gate Valves - (RD-L-13/1)-Z7-L131-IRR | 2d | 2027-07-27 | 2027-07-28 | RHD4PRSHLDOSIRR1100, RHD4PRSHLSTAGIRR1100, RHD4CZ7L131IRR1300 SS, RHD4CZ7L131IRR1300 FF, RHD4CZ7L131PT4500, RHD4CZ7L131PT3203 | Unskilled Labor [21.78 h]; Plumber [21.78 h]; Gate valves dia 100 mm - TSE [3.6 nr] | 5,688 | L131 | Z7 | CONS | IRR | Installation | bef |
| RHD4CZ7L131IRR3200 |  | Stem and Service box for Direct Buried Gate Valves - (RD-L-13/1)-Z7-L131-IRR | 2d | 2027-07-29 | 2027-07-31 | RHD4PRSHLDOSIRR1300, RHD4PRSHLSTAGIRR1300, RHD4CZ7L131IRR3100, RHD4CZ7L131IRR1500 | Unskilled Labor [21.78 h]; Plumber [21.78 h]; Gate valves dia 100 mm - TSE [0.4 nr] | 632 | L131 | Z7 | CONS | IRR | Stem and Service box | bef |
|  | 6876 | **RHD4-02-002-L131-(IRR)-Air Valve Chamber** |  | 2027-06-17 | 2027-06-26 |  |  |  |  |  |  |  |  |  |
| RHD4CZ7L131IRR2102 |  | Excavation and Bedding for Valve Chamber for Irrigation Network - (RD-L-13/1)-Z7-L131-IRR | 2d | 2027-06-17 | 2027-06-19 | RHD4ENSDZ7APPIRR140, RHD4CZ7L131IRR1100 | Skilled labor [5.45 h]; Unskilled Labor [5.45 h]; Equipment Opreator [1.09 h]; Excavator-Poclain [0.54 h]; Dump Truck [0.54 h]; Air Valve chambers - TSE [0.25 nr] | 1,193 | L131 | Z7 | CONS | IRR | Excavation and Bedding | bef |
| RHD4CZ7L131IRR2202 |  | PC works for Valve Chamber for Irrigation Network - (RD-L-13/1)-Z7-L131-IRR | 2d | 2027-06-20 | 2027-06-21 | RHD4CZ7L131IRR2102 | Skilled labor [5.45 h]; Unskilled Labor [10.89 h]; Equipment Opreator [0.54 h]; Concrete Pump [0.54 h]; Air Valve chambers - TSE [0.1 nr] | 477.2 | L131 | Z7 | CONS | IRR | PC Works | bef |
| RHD4CZ7L131IRR2302 |  | Installation for Valve Chamber for Irrigation Network - (RD-L-13/1)-Z7-L131-IRR | 2d | 2027-06-22 | 2027-06-23 | RHD4PRSHLDOSIRR1200, RHD4PRSHLDOSIRR1400, RHD4PRSHLSTAGIRR1200, RHD4PRSHLSTAGIRR1400, RHD4CZ7L131IRR2202 | Skilled labor [5.45 h]; Unskilled Labor [10.89 h]; Equipment Opreator [1.09 h]; Boom Truck [1.09 h]; Air Valve chambers - TSE [0.55 nr] | 2,624.6 | L131 | Z7 | CONS | IRR | Installation | bef |
| RHD4CZ7L131IRR2402 |  | Backfilling works for Valve Chamber for Irrigation Network - (RD-L-13/1)-Z7-L131-IRR | 2d | 2027-06-24 | 2027-06-26 | RHD4CZ7L131IRR2302 | Skilled labor [5.45 h]; Unskilled Labor [10.89 h]; Equipment Opreator [1.09 h]; Water Truck [0.54 h]; Dump Truck [0.54 h]; Air Valve chambers - TSE [0.1 nr] | 477.2 | L131 | Z7 | CONS | IRR | Backfilling Works | bef |
|  | 6877 | **RHD4-02-002-L131-(IRR)-Air Valves** |  | 2027-06-24 | 2027-06-28 |  |  |  |  |  |  |  |  |  |
| RHD4CZ7L131IRR3103 |  | Installation for Air Valves for Irrigation Network - (RD-L-13/1)-Z7-L131-IRR | 2d | 2027-06-24 | 2027-06-26 | RHD4PRSHLDOSIRR1100, RHD4PRSHLSTAGIRR1100, RHD4CZ7L131IRR2302 | Unskilled Labor [5.45 h]; Plumber [5.45 h]; Air valve diameter 50 mm - TSE [0.9 nr] | 4,427.1 | L131 | Z7 | CONS | IRR | Installation | bef |
| RHD4CZ7L131IRR3203 |  | Stem and Service box for Air Valves for Irrigation Network - (RD-L-13/1)-Z7-L131-IRR | 2d | 2027-06-27 | 2027-06-28 | RHD4PRSHLDOSIRR1300, RHD4PRSHLSTAGIRR1300, RHD4CZ7L131IRR3103, RHD4CZ7L131IRR2402 | Unskilled Labor [5.45 h]; Plumber [5.45 h]; Air valve diameter 50 mm - TSE [0.1 nr] | 491.9 | L131 | Z7 | CONS | IRR | Stem and Service box | bef |

| ID | WBS | Activity | Duration | Start | Finish | Predecessors | Resources | Cost | RDH4-01-001-Road and Block Names-1 | RDH4-01-001-Zones-1 | RDH4-01-001-Phases-1 | RDH4-01-001-Networks-1 | RDH4-01-001-Work Method-1 | RDH4-01-001-MENEM |
| --- | --- | --- | --- | --- | --- | --- | --- | --- | --- | --- | --- | --- | --- | --- |
|  | 6686 | **RHD4-02-002-L131-(IRR)-Wash out Valves** |  | 2027-06-24 | 2027-06-28 |  |  |  |  |  |  |  |  |  |
| RHD4CZ7L131IRR3102 |  | Installation for Wash out Valve for Irrigation Network - (RD-L-13/1)-Z7-L131-IRR | 2d | 2027-06-24 | 2027-06-26 | RHD4CZ7L131IRR2301 | Unskilled Labor [5.45 h]; Plumber [5.45 h]; Wash out valve diameter 100 mm - TSE [0.9 nr] | 3,373.2 | L131 | Z7 | CONS | IRR | Installation | bef |
| RHD4CZ7L131IRR3202 |  | Stem and Service box for Wash out Valve for Irrigation Network - (RD-L-13/1)-Z7-L131-IRR | 2d | 2027-06-27 | 2027-06-28 | RHD4CZ7L131IRR3102, RHD4CZ7L131IRR2401, RHD4CZ7L131ST3500 | Unskilled Labor [5.45 h]; Plumber [5.45 h]; Wash out valve diameter 100 mm - TSE [0.1 nr] | 374.8 | L131 | Z7 | CONS | IRR | Stem and Service box | bef |
|  | 6896 | **RHD4-02-002-Z7-L131-Medium Voltage Network - MV** |  | 2027-04-27 | 2027-09-08 |  |  |  |  |  |  |  |  |  |
|  | 6897 | **RHD4-02-002-L131-(MV)-Medium Voltage cable trench** |  | 2027-04-27 | 2027-09-08 |  |  |  |  |  |  |  |  |  |
| RHD4CZ7L131MV1100 |  | Excavation for Medium Voltage Trench - (RD-L-13/1)-Z7-L131-MV | 5d | 2027-04-27 | 2027-05-02 | RHD4ENSDZ7APPMV150, RHD4CZ7L131ST1204 | Skilled labor [54.45 h]; Unskilled Labor [108.8 h]; Equipment Opreator [163.25 h]; Excavator-Poclain [54.45 h]; Dump Truck [108.8 h]; Excavation for Trench size 60cm wide and 80cm deep ( for 2 cables) [349.71 m3] | 3,497.07 | L131 | Z7 | CONS | MV | Excavation | AFT |
| RHD4CZ7L131MV1200 |  | Trench Backfilling for Medium Voltage Network - (RD-L-13/1)-Z7-L131-MV | 5d | 2027-09-04 | 2027-09-08 | RHD4CZ7L131MV3200, RHD4CZ7L03MV1200 | Skilled labor [54.45 h]; Unskilled Labor [54.45 h]; Equipment Opreator [108.8 h]; Dump Truck [108.8 h]; Excavation for Trench size 60cm wide and 80cm deep ( for 2 cables) [149.87 m3] | 1,498.75 | L131 | Z7 | CONS | MV | Backfilling | AFT |
|  | 6898 | **RHD4-02-002-L131-(MV)-Medium Voltage duct banks** |  |  |  |  |  |  |  |  |  |  |  |  |
|  | 6899 | **RHD4-02-002-L131-(MV)-Medium Voltage cables 3Cx 500 mm²** |  | 2027-05-03 | 2027-05-13 |  |  |  |  |  |  |  |  |  |
| RHD4CZ7L131MV3100 |  | Installation of Medium Voltage Cables 3Cx 500 mm² - (RD-L-13/1)-Z7-L131-MV | 3d | 2027-05-03 | 2027-05-05 | RHD4PRSHLDOSMV1100, RHD4ENMSMV2000, RHD4ENMSMV2010, RHD4PRSHLSTAGMV1100, RHD4CZ7L131MV1100 | Skilled labor [22.76 h]; Unskilled Labor [91.26 h]; Electrician [45.6 h]; Equipment Opreator [68.39 h]; Boom Truck [22.76 h]; Cable Laying Machine [45.6 h]; Cable 13.8 kV 3Cx 500 mm² Al/XLPE,/LLDPE / Unarmored [942.45 m] | 149,849.17 | L131 | Z7 | CONS | MV | Installation | AFT |
| RHD4CZ7L131MV3200 |  | Joints Installation of Medium Voltage Cables 3Cx 500 mm² - (RD-L-13/1)-Z7-L131-MV | 2d | 2027-05-06 | 2027-05-08 | RHD4PRSHLDOSMV1300, RHD4PRSHLSTAGMV1300, RHD4CZ7L131MV3100 | Skilled labor [10.89 h]; Unskilled Labor [43.56 h]; Electrician [21.78 h]; Equipment Opreator [10.89 h]; Boom Truck [10.89 h]; Straight joints cables for 13.8 kv 3Cx 500 mm², Al /XLPE/LLDPE [2 Unit] | 6,496 | L131 | Z7 | CONS | MV | Joints Installation | AFT |
| RHD4CZ7L131MV3300 |  | Testing of Medium Voltage Cables 3Cx 500 mm² - (RD-L-13/1)-Z7-L131-MV | 3d | 2027-05-09 | 2027-05-11 | RHD4CZ7L131MV3200 | Skilled labor [22.76 h]; Unskilled Labor [91.26 h]; Electrician [45.6 h]; Cable 13.8 kV 3Cx 500 mm² Al/XLPE,/LLDPE / Unarmored [104.72 m] | 16,649.91 | L131 | Z7 | CONS | MV | Testing | AFT |
| RHD4CZ7L131MV3400 |  | Termination of Medium Voltage Cables 3Cx 500 mm² - (RD-L-13/1)-Z7-L131-MV | 2d | 2027-05-12 | 2027-05-13 | RHD4CZ7L131MV3300 | Unskilled Labor [1.09 h]; Electrician [1.09 h]; Cable Termination for 13.8 kv 3Cx 500 mm², Al /XLPE/LLDPE [4.8 Unit] | 12,648 | L131 | Z7 | CONS | MV | Termination | AFT |
|  | 6900 | **RHD4-02-002-L131-(MV)-Medium Voltage cables 3Cx 50 mm²** |  | 2027-05-12 | 2027-05-13 |  |  |  |  |  |  |  |  |  |
| RHD4CZ7L131MV3401 |  | Termination of Medium Voltage Cables 3Cx 50 mm² - (RD-L-13/1)-Z7-L131-MV | 2d | 2027-05-12 | 2027-05-13 | RHD4CZ7L131MV3400 SS, RHD4CZ7L131MV3300 | Unskilled Labor [17.42 h]; Electrician [8.71 h]; Cable Termination for 13.8 kv 3Cx 500 mm², Al /XLPE/LLDPE [1.2 Unit] | 3,162 | L131 | Z7 | CONS | MV | Termination | AFT |
|  | 6901 | **RHD4-02-002-L131-(MV)-Normally open Point (Outdoor Type)** |  |  |  |  |  |  |  |  |  |  |  |  |
|  | 6903 | **RHD4-02-002-Z7-L131-Low Voltage Network - LV** |  | 2027-09-09 | 2027-09-30 |  |  |  |  |  |  |  |  |  |
|  | 6904 | **RHD4-02-002-L131-(LV)-Low Voltage duct banks** |  | 2027-09-09 | 2027-09-18 |  |  |  |  |  |  |  |  |  |
| RHD4CZ7L131LV2100 |  | Excavation of Duct Banks for Low Voltage Network - (RD-L-13/1)-Z7-L131-LV | 2d | 2027-09-09 | 2027-09-11 | RHD4ENSDZ7APPLV160, RHD4CZ7L131PT4500, RHD4CZ7L131IRR3200, RHD4CZ7L131MV1200, RHD4CZ7L131MV3401 | Skilled labor [8.28 h]; Unskilled Labor [8.28 h]; Equipment Opreator [16.66 h]; Excavator-Poclain [8.28 h]; Dump Truck [8.28 h]; Duct bank for LV cables UPVC (2xø110mm) [1.15 m] | 231.75 | L131 | Z7 | CONS | LV | Excavation | bef |
| RHD4CZ7L131LV2200 |  | Installation of Duct Banks for Low Voltage Network - (RD-L-13/1)-Z7-L131-LV | 2d | 2027-09-12 | 2027-09-13 | RHD4PRSHLDOSLV1000, RHD4PRSHLSTAGLV1000, RHD4CZ7L131LV2100 | Carpenter [1.2 h]; Skilled labor [12.52 h]; Unskilled Labor [12.52 h]; Steel Fixer [1.2 h]; Duct bank for LV cables UPVC (2xø110mm) [1.15 m] | 231.75 | L131 | Z7 | CONS | LV | Installing | bef |
| RHD4CZ7L131LV2300 |  | Pouring of Duct Banks for Low Voltage Network - (RD-L-13/1)-Z7-L131-LV | 2d | 2027-09-14 | 2027-09-15 | RHD4CZ7L131LV2200 | Skilled labor [8.28 h]; Unskilled Labor [8.28 h]; Equipment Opreator [3.38 h]; Concrete Mixer Truck [1.6 h]; Concrete Pump [1.6 h]; Duct bank for LV cables UPVC (2xø110mm) [7.46 m] | 1,506.4 | L131 | Z7 | CONS | LV | Pouring | bef |
| RHD4CZ7L131LV2400 |  | Backfilling of Duct Banks for Low Voltage Network - (RD-L-13/1)-Z7-L131-LV | 2d | 2027-09-16 | 2027-09-18 | RHD4CZ7L131LV2300 | Skilled labor [6.21 h]; Unskilled Labor [6.21 h]; Equipment Opreator [2.5 h]; Excavator-Poclain [2.5 h]; Duct bank for LV cables UPVC (2xø110mm) [1.72 m] | 347.63 | L131 | Z7 | CONS | LV | Backfilling | bef |
|  | 6905 | **RHD4-02-002-L131-(LV)-Low Voltage Drawpit** |  | 2027-09-16 | 2027-09-20 |  |  |  |  |  |  |  |  |  |
| RHD4CZ7L131LV5100 |  | Excavation of Drawpit size 900x900x1000mm for Low Voltage Network - (RD-L-13/1)-Z7-L131-LV | 2d | 2027-09-16 | 2027-09-18 | RHD4ENSDZ7APPLV160, RHD4CZ7L131LV2300, RHD4CZ7L131MV3401 | Skilled labor [1.85 h]; Unskilled Labor [1.85 h]; Equipment Opreator [1.42 h]; Excavator-Poclain [0.8 h]; Dump Truck [0.8 h]; Drawpit with medium duty steel cover, size900x900x1000mm, [0.3 Unit] | 1,103.1 | L131 | Z7 | CONS | LV | Excavation | AFT |
| RHD4CZ7L131LV5200 |  | Installation of Drawpit size 900x900x1000mm for Low Voltage Network - (RD-L-13/1)-Z7-L131-LV | 2d | 2027-09-19 | 2027-09-20 | RHD4PRSHLDOSLV1400, RHD4PRSHLSTAGLV1400, RHD4CZ7L131LV5100 | Skilled labor [1.85 h]; Unskilled Labor [1.85 h]; Equipment Opreator [0.8 h]; Boom Truck [0.8 h]; Drawpit with medium duty steel cover, size900x900x1000mm, [1.7 Unit] | 6,250.9 | L131 | Z7 | CONS | LV | Installation | AFT |

| ID | WBS | Activity | Duration | Start | Finish | Predecessors | Resources | Cost | RDH4-01-001-Road and Block Names-1 | RDH4-01-001-Zones-1 | RDH4-01-001-Phases-1 | RDH4-01-001-Networks-1 | RDH4-01-001-Work Method-1 | RDH4-01-001-MENEM |
| --- | --- | --- | --- | --- | --- | --- | --- | --- | --- | --- | --- | --- | --- | --- |
|  | 6906 | **RHD4-02-002-L131-(LV)-Low Voltage cables** |  | 2027-09-21 | 2027-09-30 |  |  |  |  |  |  |  |  |  |
| RHD4CZ7L131LV3100 |  | Excavation for Low Voltage Cables for Low Voltage Network - (RD-L-13/1)-Z7-L131-LV | 2d | 2027-09-21 | 2027-09-22 | RHD4ENSDZ7APPLV160, RHD4CZ7L131LV2400, RHD4CZ7L131LV5200 | Skilled labor [1.85 h]; Unskilled Labor [3.81 h]; Equipment Opreator [3.81 h]; Excavator-Poclain [1.85 h]; Boom Truck [1.85 h]; Cable, Copper 3x10mm2/ CU/XLPE/SWA/PVC [8.68 m] | 338.43 | L131 | Z7 | CONS | LV | Excavation | AFT |
| RHD4CZ7L131LV3200 |  | Cable Laying of Low Voltage Cables for Low Voltage Network - (RD-L-13/1)-Z7-L131-LV | 2d | 2027-09-25 | 2027-09-26 | RHD4PRSHLDOSLV1100, RHD4ENMSLV2000, RHD4ENMSLV2010, RHD4PRSHLSTAGLV1100, RHD4CZ7L131LV3100 | Skilled labor [1.52 h]; Unskilled Labor [6.32 h]; Electrician [3.16 h]; Equipment Opreator [4.68 h]; Boom Truck [1.52 h]; Cable Laying Machine [3.16 h]; Cable, Copper 3x10mm2/ CU/XLPE/SWA/PVC [26.03 m] | 1,015.3 | L131 | Z7 | CONS | LV | Cable Laying | AFT |
| RHD4CZ7L131LV3300 |  | Warning tape and Backfill for Low Voltage Cables for Low Voltage Network - (RD-L-13/1)-Z7-L131-LV | 2d | 2027-09-27 | 2027-09-28 | RHD4CZ7L131LV3200 | Skilled labor [1.52 h]; Unskilled Labor [6.32 h]; Electrician [3.16 h]; Equipment Opreator [1.52 h]; Boom Truck [1.52 h]; Cable, Copper 3x10mm2/ CU/XLPE/SWA/PVC [6.51 m] | 253.83 | L131 | Z7 | CONS | LV | Warning tape and Backfill | AFT |
| RHD4CZ7L131LV3400 |  | Testing of Low Voltage Cables for Low Voltage Network - (RD-L-13/1)-Z7-L131-LV | 2d | 2027-09-29 | 2027-09-30 | RHD4CZ7L131LV3300 | Skilled labor [0.98 h]; Unskilled Labor [3.81 h]; Electrician [1.85 h]; Equipment Opreator [0.98 h]; Boom Truck [0.98 h]; Cable, Copper 3x10mm2/ CU/XLPE/SWA/PVC [2.17 m] | 84.61 | L131 | Z7 | CONS | LV | Testing | AFT |
|  | 6909 | **RHD4-02-002-Z7-L131-Street Lighting Network - SL** |  | 2027-09-12 | 2027-11-16 |  |  |  |  |  |  |  |  |  |
|  | 6910 | **RHD4-02-002-L131-(SL)-Street Lighting duct banks** |  | 2027-09-12 | 2027-09-20 |  |  |  |  |  |  |  |  |  |
| RHD4CZ7L131SL2100 |  | Excavation of Duct Banks for Street Lighting Network - (RD-L-13/1)-Z7-L131-SL | 2d | 2027-09-12 | 2027-09-13 | RHD4ENSDZ7APPSL170, RHD4CZ7L131LV2100 | Skilled labor [13.18 h]; Unskilled Labor [13.18 h]; Equipment Opreator [26.25 h]; Excavator-Poclain [13.18 h]; Dump Truck [13.18 h]; Road Crossing Duct for Street Lighting cables UPVC (4x?110mm) [1.81 m] | 477.84 | L131 | Z7 | CONS | SL | Excavation | bef |
| RHD4CZ7L131SL2200 |  | Installation of Duct Banks for Street Lighting Network - (RD-L-13/1)-Z7-L131-SL | 2d | 2027-09-14 | 2027-09-15 | RHD4PRSHLDOSSL1000, RHD4PRSHLSTAGSL1000, RHD4CZ7L131SL2100, RHD4CZ7L131LV2200 | Carpenter [1.96 h]; Skilled labor [19.71 h]; Unskilled Labor [19.71 h]; Steel Fixer [1.96 h]; Road Crossing Duct for Street Lighting cables UPVC (4x?110mm) [1.81 m] | 477.84 | L131 | Z7 | CONS | SL | Installing | bef |
| RHD4CZ7L131SL2300 |  | Pouring of Duct Banks for Street Lighting Network - (RD-L-13/1)-Z7-L131-SL | 2d | 2027-09-16 | 2027-09-18 | RHD4CZ7L131SL2200, RHD4CZ7L131LV2300 | Skilled labor [13.18 h]; Unskilled Labor [13.18 h]; Equipment Opreator [5.23 h]; Concrete Mixer Truck [2.61 h]; Concrete Pump [2.61 h]; Road Crossing Duct for Street Lighting cables UPVC (4x?110mm) [11.75 m] | 3,102 | L131 | Z7 | CONS | SL | Pouring | bef |
| RHD4CZ7L131SL2400 |  | Backfilling of Duct Banks for Street Lighting Network - (RD-L-13/1)-Z7-L131-SL | 2d | 2027-09-19 | 2027-09-20 | RHD4CZ7L131SL2300, RHD4CZ7L131LV2400 | Skilled labor [9.8 h]; Unskilled Labor [9.8 h]; Equipment Opreator [3.92 h]; Excavator-Poclain [3.92 h]; Road Crossing Duct for Street Lighting cables UPVC (4x?110mm) [2.71 m] | 715.44 | L131 | Z7 | CONS | SL | Backfilling | bef |
|  | 6911 | **RHD4-02-002-L131-(SL)-Street Lighting Drawpit** |  | 2027-10-02 | 2027-10-05 |  |  |  |  |  |  |  |  |  |
| RHD4CZ7L131SL5100 |  | Excavation of Drawpit size 600x600x900mm for Street Lighting Network - (RD-L-13/1)-Z7-L131-SL | 2d | 2027-10-02 | 2027-10-03 | RHD4ENSDZ7APPSL170, RHD4CZ7L131SL2300, RHD4CZ7L131LV3400 | Skilled labor [1.85 h]; Unskilled Labor [1.85 h]; Equipment Opreator [1.42 h]; Excavator-Poclain [0.8 h]; Dump Truck [0.8 h]; Drawpit with medium duty steel cover, size600x600x900mm, [0.3 Unit] | 735.3 | L131 | Z7 | CONS | SL | Excavation | AFT |
| RHD4CZ7L131SL5200 |  | Installation of Drawpit size 600x600x900mm for Street Lighting Network - (RD-L-13/1)-Z7-L131-SL | 2d | 2027-10-04 | 2027-10-05 | RHD4PRSHLDOSSL1400, RHD4PRSHLSTAGSL1400, RHD4CZ7L131SL5100 | Skilled labor [1.85 h]; Unskilled Labor [1.85 h]; Equipment Opreator [0.8 h]; Boom Truck [0.8 h]; Drawpit with medium duty steel cover, size600x600x900mm, [1.7 Unit] | 4,166.7 | L131 | Z7 | CONS | SL | Installation | AFT |
|  | 6912 | **RHD4-02-002-L131-(SL)-Street Lighting cables** |  | 2027-10-06 | 2027-10-27 |  |  |  |  |  |  |  |  |  |
| RHD4CZ7L131SL3100 |  | Excavation for Street Lighting Cables for Street Lighting Network - (RD-L-13/1)-Z7-L131-SL | 6d | 2027-10-06 | 2027-10-12 | RHD4ENSDZ7APPSL170, RHD4CZ7L131SL5200 | Skilled labor [64.91 h]; Unskilled Labor [129.81 h]; Equipment Opreator [129.81 h]; Excavator-Poclain [64.91 h]; Boom Truck [64.91 h]; Cable, Copper 4x10mm2/ CU/XLPE/SWA/PVC + 1x10mm2 CU/PVC [298.03 m] | 14,603.24 | L131 | Z7 | CONS | SL | Excavation | AFT |
| RHD4CZ7L131SL3200 |  | Cable Laying of Street Lighting Cables for Street Lighting Network - (RD-L-13/1)-Z7-L131-SL | 5d | 2027-10-13 | 2027-10-18 | RHD4PRSHLDOSSL1100, RHD4ENMSSL2000, RHD4ENMSSL2010, RHD4PRSHLSTAGSL1100, RHD4CZ7L131SL3100 | Skilled labor [54.13 h]; Unskilled Labor [216.39 h]; Electrician [108.14 h]; Equipment Opreator [162.27 h]; Boom Truck [54.13 h]; Cable Laying Machine [108.14 h]; Cable, Copper 4x10mm2/ CU/XLPE/SWA/PVC + 1x10mm2 CU/PVC [894.08 m] | 43,809.72 | L131 | Z7 | CONS | SL | Cable Laying | AFT |
| RHD4CZ7L131SL3300 |  | Warning tape and Backfill for Street Lighting Cables for Street Lighting Network - (RD-L-13/1)-Z7-L131-SL | 5d | 2027-10-19 | 2027-10-24 | RHD4CZ7L131SL3200 | Skilled labor [54.13 h]; Unskilled Labor [216.39 h]; Electrician [108.14 h]; Equipment Opreator [54.13 h]; Boom Truck [54.13 h]; Cable, Copper 4x10mm2/ CU/XLPE/SWA/PVC + 1x10mm2 CU/PVC [223.52 m] | 10,952.43 | L131 | Z7 | CONS | SL | Warning tape and Backfill | AFT |
| RHD4CZ7L131SL3400 |  | Testing of Street Lighting Cables for Street Lighting Network - (RD-L-13/1)-Z7-L131-SL | 3d | 2027-10-25 | 2027-10-27 | RHD4CZ7L131SL3300 | Skilled labor [32.45 h]; Unskilled Labor [129.81 h]; Electrician [64.91 h]; Equipment Opreator [32.45 h]; Boom Truck [32.45 h]; Cable, Copper 4x10mm2/ CU/XLPE/SWA/PVC + 1x10mm2 CU/PVC [74.51 m] | 3,650.81 | L131 | Z7 | CONS | SL | Testing | AFT |
|  | 6913 | **RHD4-02-002-L131-(SL)-Street Lighting Poles** |  | 2027-10-28 | 2027-11-16 |  |  |  |  |  |  |  |  |  |
| RHD4CZ7L131SL1100 |  | Excavation for RC Base for Lighting Poles for Street Lighting Network - (RD-L-13/1)-Z7-L131-SL | 3d | 2027-10-28 | 2027-10-31 | RHD4ENSDZ7APPSL170, RHD4CZ7L131SL2400, RHD4CZ7L131SL3400 | Skilled labor [31.91 h]; Unskilled Labor [31.91 h]; Equipment Opreator [63.93 h]; Excavator-Poclain [31.91 h]; Dump Truck [31.91 h]; Lighting poles single arms, height of ( 10 ) meters [4.4 Unit] | 14,990.8 | L131 | Z7 | CONS | SL | Excavation | AFT |
| RHD4CZ7L131SL1200 |  | Installation for RC Base for Lighting Poles for Street Lighting Network - (RD-L-13/1)-Z7-L131-SL | 3d | 2027-11-01 | 2027-11-03 | RHD4CZ7L131SL1100 | Skilled labor [31.91 h]; Unskilled Labor [31.91 h]; Equipment Opreator [63.93 h]; Excavator-Poclain [31.91 h]; Dump Truck [31.91 h]; Lighting poles single arms, height of ( 10 ) meters [11 Unit] | 37,477 | L131 | Z7 | CONS | SL | RC Base | AFT |
| RHD4CZ7L131SL1300 |  | Backfill for RC Base for Lighting Poles for Street Lighting Network - (RD-L-13/1)-Z7-L131-SL | 3d | 2027-11-04 | 2027-11-07 | RHD4CZ7L131SL1200 | Skilled labor [31.91 h]; Unskilled Labor [31.91 h]; Equipment Opreator [63.93 h]; Excavator-Poclain [31.91 h]; Dump Truck [31.91 h]; Lighting poles single arms, height of ( 10 ) meters [2.2 Unit] | 7,495.4 | L131 | Z7 | CONS | SL | Backfill | AFT |
| RHD4CZ7L131SL1400 |  | Installation for Lighting Poles for Street Lighting Network - (RD-L-13/1)-Z7-L131-SL | 5d | 2027-11-08 | 2027-11-13 | RHD4PRSHLDOSSL1200, RHD4ENMSSL2000, RHD4ENMSSL2010, RHD4PRSHLSTAGSL1200, RHD4CZ7L131SL1300, RHD4CZ7L131SL3400 | Skilled labor [47.92 h]; Unskilled Labor [47.92 h]; Electrician [47.92 h]; Equipment Opreator [47.92 h]; Boom Truck [47.92 h]; Lighting poles single arms, height of ( 10 ) meters [26.4 Unit] | 89,944.8 | L131 | Z7 | CONS | SL | Poles Installation | AFT |
| RHD4CZ7L131SL1500 |  | Luminaire Installation for Lighting Poles for Street Lighting Network - (RD-L-13/1)-Z7-L131-SL | 3d | 2027-11-14 | 2027-11-16 | RHD4PRSHLDOSSL1300, RHD4PRSHLSTAGSL1300, RHD4CZ7L131SL1400 | Unskilled Labor [63.93 h]; Electrician [31.91 h]; Equipment Opreator [6.4 h]; Boom Truck [12.74 h]; Street Lighting( LED) Luminaire of Output ?10898 lumen [44 Unit] | 25,872 | L131 | Z7 | CONS | SL | Luminaire Installation | AFT |

| ID | WBS | Activity | Duration | Start | Finish | Predecessors | Resources | Cost | RDH4-01-001-Road and Block Names-1 | RDH4-01-001-Zones-1 | RDH4-01-001-Phases-1 | RDH4-01-001-Networks-1 | RDH4-01-001-Work Method-1 | RDH4-01-001-MENEM |
| --- | --- | --- | --- | --- | --- | --- | --- | --- | --- | --- | --- | --- | --- | --- |
|  | 6915 | **RHD4-02-002-L131-(SL)-Street Lighting Earthing System** |  |  |  |  |  |  |  |  |  |  |  |  |
|  | 6921 | **RHD4-02-002-Z7-L131-Telecommunications Network - TC** |  | 2027-09-14 | 2027-12-11 |  |  |  |  |  |  |  |  |  |
|  | 6922 | **RHD4-02-002-L131-(TC)-Telecommunications Ducts** |  | 2027-11-17 | 2027-12-11 |  |  |  |  |  |  |  |  |  |
| RHD4CZ7L131TC2100 |  | Excavation of HDPE Ducts for Telecom Network - (RD-L-13/1)-Z7-L131-TC | 8d | 2027-11-17 | 2027-11-25 | RHD4ENSDZ7APPTC190, RHD4CZ7L131LV2100, RHD4CZ7L131SL1500 | Skilled labor [82.4 h]; Unskilled Labor [82.4 h]; Equipment Opreator [164.99 h]; Excavator-Poclain [82.4 h]; Dump Truck [82.4 h]; (6*50mm) HDPE ducts -TC [110.5 m]; (6*50mm+2*32mm) HDPE ducts -TC [103.68 m]; (6*50mm+4*32mm) HDPE ducts -TC [7.8 m]; (2*32mm) HDPE ducts -TC [5.22 m] | 22,130.8 | L131 | Z7 | CONS | TC | Excavation | AFT |
| RHD4CZ7L131TC2200 |  | Installation of HDPE Ducts for Telecom Network - (RD-L-13/1)-Z7-L131-TC | 5d | 2027-11-27 | 2027-12-01 | RHD4PRSHLDOSTC1000, RHD4PRSHLSTAGTC1000, RHD4CZ7L131TC2100 | Carpenter [4.9 h]; Skilled labor [49.44 h]; Unskilled Labor [49.44 h]; Steel Fixer [4.9 h]; (6*50mm) HDPE ducts -TC [359.12 m]; (6*50mm+2*32mm) HDPE ducts -TC [336.96 m]; (6*50mm+4*32mm) HDPE ducts -TC [25.35 m]; (2*32mm) HDPE ducts -TC [16.96 m] | 71,925.1 | L131 | Z7 | CONS | TC | Installing | AFT |
| RHD4CZ7L131TC2400 |  | Backfilling of HDPE Ducts for Telecom Network - (RD-L-13/1)-Z7-L131-TC | 8d | 2027-12-02 | 2027-12-11 | RHD4CZ7L131TC2200 | Skilled labor [82.4 h]; Unskilled Labor [82.4 h]; Equipment Opreator [33 h]; Excavator-Poclain [33 h]; (6*50mm) HDPE ducts -TC [82.88 m]; (6*50mm+2*32mm) HDPE ducts -TC [77.76 m]; (6*50mm+4*32mm) HDPE ducts -TC [5.85 m]; (2*32mm) HDPE ducts -TC [3.92 m] | 16,598.1 | L131 | Z7 | CONS | TC | Backfilling | AFT |
|  | 6923 | **RHD4-02-002-L131-(TC)-Telecommunications Manholes** |  | 2027-11-27 | 2027-12-02 |  |  |  |  |  |  |  |  |  |
| RHD4CZ7L131TC5100 |  | Excavation for Manholes for Telecom Network - (RD-L-13/1)-Z7-L131-TC | 3d | 2027-11-27 | 2027-11-29 | RHD4ENSDZ7APPTC190, RHD4CZ7L131TC2100 | Skilled labor [10.89 h]; Unskilled Labor [10.89 h]; Equipment Opreator [8.71 h]; Excavator-Poclain [4.36 h]; Dump Truck [4.36 h]; Manhole Type 1 - TC [0.6 nr]; Manhole Type 2 - TC [0.3 nr] | 6,066.9 | L131 | Z7 | CONS | TC | Excavation | AFT |
| RHD4CZ7L131TC5200 |  | Installation of Manholes for Telecom Network - (RD-L-13/1)-Z7-L131-TC | 3d | 2027-11-30 | 2027-12-02 | RHD4PRSHLDOSTC1200, RHD4PRSHLSTAGTC1200, RHD4CZ7L131TC5100, RHD4CZ7L131TC2200 SS | Skilled labor [10.89 h]; Unskilled Labor [10.89 h]; Equipment Opreator [4.36 h]; Boom Truck [4.36 h]; Manhole Type 1 - TC [3.4 nr]; Manhole Type 2 - TC [1.7 nr] | 34,379.1 | L131 | Z7 | CONS | TC | Installation | AFT |
|  | 6924 | **RHD4-02-002-L131-(TC)-Telecomminications Road Crossings** |  | 2027-09-14 | 2027-10-05 |  |  |  |  |  |  |  |  |  |
| RHD4CZ7L131TC3100 |  | Excavation for Road Crossings for Telecom Network - (RD-L-13/1)-Z7-L131-TC | 4d | 2027-09-14 | 2027-09-18 | RHD4ENSDZ7APPTC190, RHD4CZ7L131SL2100 | Skilled labor [39.2 h]; Unskilled Labor [39.2 h]; Equipment Opreator [78.4 h]; Excavator-Poclain [39.2 h]; Dump Truck [39.2 h]; Road crossing ducts, (6*50mm) HDPE -TC [7.2 m] | 273.6 | L131 | Z7 | CONS | TC | Excavation | bef |
| RHD4CZ7L131TC3200 |  | Installation of Road Crossings for Telecom Network - (RD-L-13/1)-Z7-L131-TC | 5d | 2027-09-19 | 2027-09-25 | RHD4PRSHLDOSTC1100, RHD4PRSHLSTAGTC1100, RHD4CZ7L131TC3100, RHD4CZ7L131SL2200 | Carpenter [5.23 h]; Skilled labor [52.27 h]; Unskilled Labor [52.27 h]; Steel Fixer [5.23 h]; Road crossing ducts, (6*50mm) HDPE -TC [7.2 m] | 273.6 | L131 | Z7 | CONS | TC | Installing | bef |
| RHD4CZ7L131TC3300 |  | Pouring of Road Crossings for Telecom Network - (RD-L-13/1)-Z7-L131-TC | 5d | 2027-09-26 | 2027-09-30 | RHD4CZ7L131TC3200, RHD4CZ7L131SL2300 | Skilled labor [52.27 h]; Unskilled Labor [52.27 h]; Equipment Opreator [20.91 h]; Concrete Mixer Truck [10.45 h]; Concrete Pump [10.45 h]; Road crossing ducts, (6*50mm) HDPE -TC [46.8 m] | 1,778.4 | L131 | Z7 | CONS | TC | Pouring | bef |
| RHD4CZ7L131TC3400 |  | Backfilling of Road Crossings for Telecom Network - (RD-L-13/1)-Z7-L131-TC | 4d | 2027-10-02 | 2027-10-05 | RHD4CZ7L131TC3300, RHD4CZ7L131SL2400, RHD4CZ7L131LV2400 | Skilled labor [39.2 h]; Unskilled Labor [39.2 h]; Equipment Opreator [15.68 h]; Excavator-Poclain [15.68 h]; Road crossing ducts, (6*50mm) HDPE -TC [10.8 m] | 410.4 | L131 | Z7 | CONS | TC | Backfilling | bef |
|  | 6925 | **RHD4-02-002-Z7-L131-Information and Communication Technologies - ICT** |  | 2027-09-19 | 2027-12-30 |  |  |  |  |  |  |  |  |  |
|  | 6926 | **RHD4-02-002-L131-(ICT)-Information and Communication Technologies Ducts** |  | 2027-12-04 | 2027-12-30 |  |  |  |  |  |  |  |  |  |
| RHD4CZ7L131ICT2100 |  | Excavation of HDPE Ducts for ICT Network - (RD-L-13/1)-Z7-L131-ICT | 8d | 2027-12-04 | 2027-12-12 | RHD4ENSDZ7APPICT200, RHD4CZ7L131ICT3400, RHD4CZ7L131TC5200 | Skilled labor [84.62 h]; Unskilled Labor [84.62 h]; Equipment Opreator [169.24 h]; Excavator-Poclain [84.62 h]; Dump Truck [84.62 h]; (2*50mm) HDPE ducts -ICT [105.09 m]; (2*50mm+2*32mm) HDPE ducts -ICT [122.06 m]; (2*32mm) HDPE ducts -ICT [6.02 m] | 12,986.39 | L131 | Z7 | CONS | ICT | Excavation | AFT |
| RHD4CZ7L131ICT2200 |  | Installation of HDPE Ducts for ICT Network - (RD-L-13/1)-Z7-L131-ICT | 5d | 2027-12-13 | 2027-12-18 | RHD4PRSHLDOSICT1000, RHD4PRSHLSTAGICT1000, RHD4CZ7L131ICT2100 | Carpenter [5.12 h]; Skilled labor [50.75 h]; Unskilled Labor [50.75 h]; Steel Fixer [5.12 h]; (2*50mm) HDPE ducts -ICT [341.54 m]; (2*50mm+2*32mm) HDPE ducts -ICT [396.7 m]; (2*32mm) HDPE ducts -ICT [19.57 m] | 42,206.13 | L131 | Z7 | CONS | ICT | Installing | AFT |
| RHD4CZ7L131ICT2400 |  | Backfilling of HDPE Ducts for ICT Network - (RD-L-13/1)-Z7-L131-ICT | 8d | 2027-12-22 | 2027-12-30 | RHD4CZ7L131ICT2200, RHD4CZ7L131ICT5200 | Skilled labor [84.62 h]; Unskilled Labor [84.62 h]; Equipment Opreator [33.87 h]; Excavator-Poclain [33.87 h]; (2*50mm) HDPE ducts -ICT [78.82 m]; (2*50mm+2*32mm) HDPE ducts -ICT [91.55 m]; (2*32mm) HDPE ducts -ICT [4.51 m] | 9,739.79 | L131 | Z7 | CONS | ICT | Backfilling | AFT |
|  | 6927 | **RHD4-02-002-L131-(ICT)-Information and Communication Technologies Manholes** |  | 2027-12-13 | 2027-12-21 |  |  |  |  |  |  |  |  |  |
| RHD4CZ7L131ICT5100 |  | Excavation for Manholes for ICT Network - (RD-L-13/1)-Z7-L131-ICT | 4d | 2027-12-13 | 2027-12-16 | RHD4ENSDZ7APPICT200, RHD4CZ7L131ICT2100 | Skilled labor [13.6 h]; Unskilled Labor [13.6 h]; Equipment Opreator [10.89 h]; Excavator-Poclain [5.45 h]; Dump Truck [5.45 h]; Manhole Type 1 - ICT [0.6 nr]; Manhole Type 2 - ICT [0.45 nr] | 5,662.65 | L131 | Z7 | CONS | ICT | Excavation | AFT |
| RHD4CZ7L131ICT5200 |  | Installation of Manholes for ICT Network - (RD-L-13/1)-Z7-L131-ICT | 4d | 2027-12-18 | 2027-12-21 | RHD4PRSHLDOSICT1200, RHD4PRSHLSTAGICT1200, RHD4CZ7L131ICT5100 | Skilled labor [13.6 h]; Unskilled Labor [13.6 h]; Equipment Opreator [5.45 h]; Boom Truck [5.45 h]; Manhole Type 1 - ICT [3.4 nr]; Manhole Type 2 - ICT [2.55 nr] | 32,088.35 | L131 | Z7 | CONS | ICT | Installation | AFT |
|  | 6928 | **RHD4-02-002-L131-(ICT)-Information and Communication Technologies Road Crossings** |  | 2027-09-19 | 2027-10-13 |  |  |  |  |  |  |  |  |  |
| RHD4CZ7L131ICT3100 |  | Excavation for Road Crossings for ICT Network - (RD-L-13/1)-Z7-L131-ICT | 4d | 2027-09-19 | 2027-09-22 | RHD4ENSDZ7APPICT200, RHD4CZ7L131TC3100 | Skilled labor [42.47 h]; Unskilled Labor [42.47 h]; Equipment Opreator [84.94 h]; Excavator-Poclain [42.47 h]; Dump Truck [42.47 h]; Road crossing ducts, (2*50mm) HDPE -ICT [7.8 m] | 296.4 | L131 | Z7 | CONS | ICT | Excavation | bef |
| RHD4CZ7L131ICT3200 |  | Installation of Road Crossings for ICT Network - (RD-L-13/1)-Z7-L131-ICT | 6d | 2027-09-26 | 2027-10-02 | RHD4PRSHLDOSICT1100, RHD4PRSHLSTAGICT1100, RHD4CZ7L131ICT3100, RHD4CZ7L131TC3200 | Carpenter [5.66 h]; Skilled labor [56.63 h]; Unskilled Labor [56.63 h]; Steel Fixer [5.66 h]; Road crossing ducts, (2*50mm) HDPE -ICT [7.8 m] | 296.4 | L131 | Z7 | CONS | ICT | Installing | bef |
| RHD4CZ7L131ICT3300 |  | Pouring of Road Crossings for ICT Network - (RD-L-13/1)-Z7-L131-ICT | 6d | 2027-10-03 | 2027-10-09 | RHD4CZ7L131ICT3200, RHD4CZ7L131TC3300 | Skilled labor [56.63 h]; Unskilled Labor [56.63 h]; Equipment Opreator [22.65 h]; Concrete Mixer Truck [11.33 h]; Concrete Pump [11.33 h]; Road crossing ducts, (2*50mm) HDPE -ICT [50.7 m] | 1,926.6 | L131 | Z7 | CONS | ICT | Pouring | bef |
| RHD4CZ7L131ICT3400 |  | Backfilling of Road Crossings for ICT Network - (RD-L-13/1)-Z7-L131-ICT | 4d | 2027-10-10 | 2027-10-13 | RHD4CZ7L131ICT3300, RHD4CZ7L131TC3400 | Skilled labor [42.47 h]; Unskilled Labor [42.47 h]; Equipment Opreator [16.99 h]; Excavator-Poclain [16.99 h]; Road crossing ducts, (2*50mm) HDPE -ICT [11.7 m] | 444.6 | L131 | Z7 | CONS | ICT | Backfilling | bef |

| ID | WBS | Activity | Duration | Start | Finish | Predecessors | Resources | Cost | RDH4-01-001-Road and Block Names-1 | RDH4-01-001-Zones-1 | RDH4-01-001-Phases-1 | RDH4-01-001-Networks-1 | RDH4-01-001-Work Method-1 | RDH4-01-001-MENEM |
| --- | --- | --- | --- | --- | --- | --- | --- | --- | --- | --- | --- | --- | --- | --- |
|  | 6916 | **RHD4-02-002-Z7-L131-Landscape Network - LS** |  |  |  |  |  |  |  |  |  |  |  |  |
|  | 6917 | **RHD4-02-002-L131-(LS)-Landscape Lighting cables** |  |  |  |  |  |  |  |  |  |  |  |  |
|  | 6919 | **RHD4-02-002-L131-(LS)-Landscape Bollard Poles** |  |  |  |  |  |  |  |  |  |  |  |  |
|  | 6929 | **RHD4-02-002-Z7-L131-Security Network - CCTV** |  | 2028-01-01 | 2028-01-29 |  |  |  |  |  |  |  |  |  |
|  | 6930 | **RHD4-02-002-L131-(CCTV)-Civil Works** |  | 2028-01-01 | 2028-01-05 |  |  |  |  |  |  |  |  |  |
| RHD4CZ7L131CCTV2100 |  | Civil Works for Security Network - (RD-L-13/1)-Z7-L131-CCTV | 5d | 2028-01-01 | 2028-01-05 | RHD4CZ7L131ICT2400, RHD4CZ7L131TC2400 | Skilled labor [217.76 h]; Unskilled Labor [435.68 h]; Equipment Opreator [217.76 h]; Excavator-Poclain [54.45 h]; Dump Truck [54.45 h]; Civil works Digging, trenching, laying pipes Meter with supply and installation of Manholes and for power feeding sources related to all towers and poles – (from 35-meter pole to control room and from related UPS camersa distribution boards till overall 2 [150 m] | 17,400 | L131 | Z7 | CONS | CCTV | Civil Works | AFT |
|  | 4851 | **RHD4-02-002-L131-(CCTV)-CCTV Poles** |  | 2028-01-06 | 2028-01-17 |  |  |  |  |  |  |  |  |  |
| RHD4CZ7L131CCTV1100 |  | Excavation for RC Base for CCTV Poles for Security Network - (RD-L-13/1)-Z7-L131-CCTV | 2d | 2028-01-06 | 2028-01-08 | RHD4CZ7L131CCTV2100 | Skilled labor [4.32 h]; Unskilled Labor [4.32 h]; Equipment Opreator [8.64 h]; Excavator-Poclain [2.18 h]; Dump Truck [2.18 h]; 25 Meters pole for CCTV Cameras [0.1 nr] | 14,090.2 | L131 | Z7 | CONS | CCTV | Excavation | AFT |
| RHD4CZ7L131CCTV1200 |  | Installation for RC Base for CCTV Poles for Security Network - (RD-L-13/1)-Z7-L131-CCTV | 2d | 2028-01-09 | 2028-01-10 | RHD4CZ7L131CCTV1100 | Skilled labor [4.32 h]; Unskilled Labor [4.32 h]; Equipment Opreator [8.64 h]; Excavator-Poclain [2.18 h]; Dump Truck [2.18 h]; 25 Meters pole for CCTV Cameras [0.25 nr] | 35,225.5 | L131 | Z7 | CONS | CCTV | RC Base | AFT |
| RHD4CZ7L131CCTV1300 |  | Backfill for RC Base for CCTV Poles for Security Network - (RD-L-13/1)-Z7-L131-CCTV | 2d | 2028-01-11 | 2028-01-12 | RHD4CZ7L131CCTV1200 | Skilled labor [2.88 h]; Unskilled Labor [2.88 h]; Equipment Opreator [5.44 h]; Excavator-Poclain [1.42 h]; Dump Truck [1.42 h]; 25 Meters pole for CCTV Cameras [0.05 nr] | 7,045.1 | L131 | Z7 | CONS | CCTV | Backfill | AFT |
| RHD4CZ7L131CCTV1400 |  | Installation for CCTV Poles for Security Network - (RD-L-13/1)-Z7-L131-CCTV | 2d | 2028-01-13 | 2028-01-15 | RHD4CZ7L131CCTV1300 | Skilled labor [7.2 h]; Unskilled Labor [14.56 h]; Electrician [7.2 h]; Equipment Opreator [7.2 h]; Boom Truck [3.59 h]; 25 Meters pole for CCTV Cameras [0.6 nr] | 84,541.2 | L131 | Z7 | CONS | CCTV | Installation | AFT |
| RHD4CZ7L131CCTV1500 |  | Protection post Installation for CCTV Poles for Security Network - (RD-L-13/1)-Z7-L131-CCTV | 2d | 2028-01-16 | 2028-01-17 | RHD4CZ7L131CCTV1400 | Skilled labor [10.88 h]; Unskilled Labor [21.76 h]; Supply and Installation of minimum 4 Protection Post for each pole or tower with pipe ?220*6mm THK. [1 nr] | 4,903 | L131 | Z7 | CONS | CCTV | Protection post | AFT |
|  | 4852 | **RHD4-02-002-L131-(CCTV)-Camera** |  | 2028-01-18 | 2028-01-19 |  |  |  |  |  |  |  |  |  |
| RHD4CZ7L131CCTV3100 |  | Installation for Cameras for Security Network - (RD-L-13/1)-Z7-L131-CCTV | 2d | 2028-01-18 | 2028-01-19 | RHD4CZ7L131CCTV1400, RHD4CZ7L131CCTV4100 | Unskilled Labor [32.64 h]; Electrician [16.32 h]; Outdoor Camera, 5MP resolution, day/night, fixed bullet camera providing Forensic WDR. [2 nr]; Outdoor PTZ with IR, HDTV 1080 and 31x optical, 12x digital, total 372x zoom, H264/265 with Motion JPEG. [1 nr] | 44,801 | L131 | Z7 | CONS | CCTV | Installation | AFT |
|  | 4853 | **RHD4-02-002-L131-(CCTV)-Power and Infrastructure** |  | 2028-01-16 | 2028-01-19 |  |  |  |  |  |  |  |  |  |
| RHD4CZ7L131CCTV4100 |  | Installation of Power outlet, UPS and midspan for PTZ Camerafor Cameras for Security Network - (RD-L-13/1)-Z7-L131-CCTV | 2d | 2028-01-16 | 2028-01-17 | RHD4CZ7L131CCTV1400 | Skilled labor [8.64 h]; Unskilled Labor [34.88 h]; Electrician [17.44 h]; Equipment Opreator [17.44 h]; Excavator-Poclain [4.36 h]; Dump Truck [4.36 h]; Outdoor ready IP66-rated midspan for PTZ Camera (The outdoor- ready midspan should be IP66/IP67- and NEMA 4X-rated [1 nr]; 1.2KVA Industrial type UPS located at FEC remote poles [1 nr] | 9,103 | L131 | Z7 | CONS | CCTV | Power | AFT |
| RHD4CZ7L131CTV4200 |  | Short Range Wireless PoP wireless Bridgefor CCTV Poles for Security Network - (RD-C-2)-Z7-C02-CCTV | 2d | 2028-01-18 | 2028-01-19 | RHD4CZ7L131CCTV4100 | Skilled labor [10.88 h]; Unskilled Labor [21.76 h]; Electrician [10.88 h]; Equipment Opreator [21.76 h]; Excavator-Poclain [5.44 h]; Dump Truck [5.44 h]; Short Range wireless point to point wireless bridge |  | C02 | Z7 | CONS | CCTV | Wireless Pop | AFT |
|  | 4855 | **RHD4-02-002-L131-(CCTV)-CCTV Panels and Components** |  | 2028-01-20 | 2028-01-29 |  |  |  |  |  |  |  |  |  |
| RHD4CZ7L131CCTV6100 |  | Installation for CCTV Panels for Security Network - (RD-L-13/1)-Z7-L131-CCTV | 8d | 2028-01-20 | 2028-01-29 | RHD4CZ7L131CCTV3100, RHD4CZ7L131CCTV1500, RHD4CZ7L131SW1501, RHD4CZ7L131SW3500, RHD4CZ7L03IRR3202, RHD4CZ7A012IRR3202 | Skilled labor [174.24 h]; Unskilled Labor [522.72 h]; Electrician [174.24 h]; Pole mounted Filed Equipment cabinet (FEC) , with fan and ventilation, NEMEX 4X ,door, minimum size (600x600x400mm) , the cabinet/enclosurE [1 nr]; 8 Port Industrial PoE Switch 10/1000BaseT (-40 deg to +70 deg. Celsius) for remote poles and as specifiedin item 15. [1 nr]; UTP CAT6 Patch Cord , connect the industrial switch with the cameras, and radio wireless antenna [6 nr] | 21,585 | L131 | Z7 | CONS | CCTV | Equipment | AFT |
|  | 7135 | **RHD4-02-002-Z7-C013** |  | 2027-02-10 | 2028-02-05 |  |  |  |  |  |  |  |  |  |
|  | 7166 | **RHD4-02-002-Z7-C013-Crossings Sewage Network - SWCr** |  |  |  |  |  |  |  |  |  |  |  |  |
|  | 7182 | **RHD4-02-002-C013-(SWCr)-Air Valve Chambers** |  |  |  |  |  |  |  |  |  |  |  |  |
|  | 7183 | **RHD4-02-002-C013-(SWCr)-Air Valves** |  |  |  |  |  |  |  |  |  |  |  |  |
|  | 7257 | **RHD4-02-002-Z7-C013-Crossings Irrigation Network - IRRC** |  |  |  |  |  |  |  |  |  |  |  |  |
|  | 7262 | **RHD4-02-002-C013-(IRRC)-HDPE Pipes - 315 mm diameter** |  |  |  |  |  |  |  |  |  |  |  |  |
|  | 7314 | **RHD4-02-002-Z7-C013-Road Works - RD** |  | 2027-03-15 | 2028-02-05 |  |  |  |  |  |  |  |  |  |
|  | 7315 | **RHD4-02-002-C013-(RD)-Subgrade** |  | 2027-03-15 | 2027-03-28 |  |  |  |  |  |  |  |  |  |
| RHD4CZ7C013RD1100 |  | Supply, lay and compaction subgrade compacted thickness 300 mm for Roads - (RD-C-1/3)-Z7-C013-RD | 12d | 2027-03-15 | 2027-03-28 | RHD4ENSDZ7APPEW100, RHD4ENSDZ7APPRD220, RHD4CZ7C032RD1100 | Skilled labor [125.35 h]; Unskilled Labor [250.7 h]; Electrician [125.35 h]; Equipment Opreator [856 h]; Water Truck [41.38 h]; Roller compactor [62.62 h]; Grader [125.35 h]; Dump Truck [626.63 h]; Subgrade [6027.67 m3] | 114,525.73 | C013 | Z7 | CONS | RD | Subgrade | bef |

| ID | WBS | Activity | Duration | Start | Finish | Predecessors | Resources | Cost | RDH4-01-001-Road and Block Names-1 | RDH4-01-001-Zones-1 | RDH4-01-001-Phases-1 | RDH4-01-001-Networks-1 | RDH4-01-001-Work Method-1 | RDH4-01-001-MENEM |
| --- | --- | --- | --- | --- | --- | --- | --- | --- | --- | --- | --- | --- | --- | --- |
|  | 7316 | **RHD4-02-002-C013-(RD)-Aggregate Base Course** |  | 2027-03-29 | 2027-04-07 |  |  |  |  |  |  |  |  |  |
| RHD4CZ7C013RD2100 |  | Supply, lay and compaction Aggregate base course compacted thickness 300 mmfor Roads - (RD-C-1/3)-Z7-C013-RD | 9d | 2027-03-29 | 2027-04-07 | RHD4PRSHLDOSRD1000, RHD4PRSHLSTAGRD1000, RHD4CZ7C013RD1100 | Skilled labor [46.4 h]; Unskilled Labor [92.8 h]; Equipment Opreator [587.64 h]; Water Truck [30.6 h]; Roller compactor [92.8 h]; Grader [92.8 h]; Dump Truck [371.36 h]; Aggregate Base Courses [3785.98 m3] | 215,800.86 | C013 | Z7 | CONS | RD | ABC | bef |
|  | 7317 | **RHD4-02-002-C013-(RD)-Bituminous base course Two Layers, including (MC1)&(RC2)** |  | 2027-04-08 | 2027-12-12 |  |  |  |  |  |  |  |  |  |
| RHD4CZ7C013RD3100 |  | Supply, lay and Asphaltic base course including Prime Coat (MC1) for 1st Layer - (RD-C-1/3)-Z7-C013-RD | 4d | 2027-04-08 | 2027-04-12 | RHD4PRSHLDOSRD1100, RHD4ENMSASPH2000, RHD4ENMSASPH2010, RHD4PRSHLSTAGRD1100, RHD4CZ7C013RD2100 | Skilled labor [36.8 h]; Unskilled Labor [221.18 h]; Equipment Opreator [552.9 h]; Bobcat [36.8 h]; Roller compactor [36.8 h]; Asphalt Paver [36.8 h]; Rubber Compactor [73.73 h]; MC1/RC2 Sprinkler [36.8 h]; Dump Truck [331.72 h]; Bituminous base course (Grading I - Class A), including Prime coat (MC1) & tack coate (RC2) [1348.58 m3] | 644,621.24 | C013 | Z7 | CONS | RD | 150 mm | AFT |
| RHD4CZ7C013RD3200 |  | Supply, lay and Asphaltic base course including Tack Coat (RC2) for 2nd Layer - (RD-C-1/3)-Z7-C013-RD | 4d | 2027-12-08 | 2027-12-12 | RHD4PRSHLDOSRD1100, RHD4PRSHLSTAGRD1100, RHD4CZ7C013ICT5200, RHD4CZ7L131RD3200 | Skilled labor [36.8 h]; Unskilled Labor [221.18 h]; Equipment Opreator [552.9 h]; Bobcat [36.8 h]; Roller compactor [36.8 h]; Asphalt Paver [36.8 h]; Rubber Compactor [73.73 h]; MC1/RC2 Sprinkler [36.8 h]; Dump Truck [331.72 h]; Bituminous base course (Grading I - Class A), including Prime coat (MC1) & tack coate (RC2) [1348.58 m3] | 644,621.24 | C013 | Z7 | CONS | RD | 150 mm | AFT |
|  | 7319 | **RHD4-02-002-C013-(RD)-Precast Concrete Curb** |  | 2027-12-13 | 2027-12-18 |  |  |  |  |  |  |  |  |  |
| RHD4CZ7C013RD5100 |  | Supply and installation Precast Concrete Kerb for Roads - (RD-C-1/3)-Z7-C013-RD | 5d | 2027-12-13 | 2027-12-18 | RHD4PRSHLDOSRD1200, RHD4ENMSRD2000, RHD4ENMSRD2010, RHD4PRSHLSTAGRD1200, RHD4CZ7C013RD3200 | Mason [152.46 h]; Skilled labor [50.86 h]; Unskilled Labor [152.46 h]; Equipment Opreator [101.6 h]; Bobcat [50.86 h]; Concrete Mixer Truck [50.86 h]; Precast Concrete Curbstone, type K1 [2100 m] | 115,500 | C013 | Z7 | CONS | RD | Curbs | AFT |
|  | 7322 | **RHD4-02-002-C013-(RD)-Traffic Signage** |  | 2028-01-30 | 2028-02-05 |  |  |  |  |  |  |  |  |  |
| RHD4CZ7C013RD8100 |  | Installation of Traffic Signage for Road Network - (RD-C-1/3)-Z7-C013-RD | 6d | 2028-01-30 | 2028-02-05 | RHD4PRSHLDOSRD1600, RHD4PRSHLSTAGRD1600, RHD4CZ7C013RD5100, RHD4CZ7C013TC2400, RHD4CZ7C013ICT2400, RHD4CZ7L131CCTV6100, RHD4CZ7L131CCTV6100 FF | Skilled labor [130.68 h]; Unskilled Labor [65.34 h]; Electrician [1.09 h]; Equipment Opreator [13.5 h]; Boom Truck [13.07 h]; Concrete Mixer Truck [0.44 h]; Traffic signs, ground mounted, 1 Sheet Aluminium, (breakaway)Single post [1 nr] | 1,226 | C013 | Z7 | CONS | RD | Traffic Signage | AFT |
|  | 7320 | **RHD4-02-002-C013-(RD)-Precast Interlocking Block Pavers** |  |  |  |  |  |  |  |  |  |  |  |  |
|  | 7318 | **RHD4-02-002-C013-(RD)-Bituminous concrete wearing course including tack coat (RC2)** |  | 2027-12-19 | 2027-12-20 |  |  |  |  |  |  |  |  |  |
| RHD4CZ7C013RD4100 |  | Supply, lay and compaction Asphaltic wearing course including tack Coat (RC2)for Road Network - (RD-C-1/3)-Z7-C013-RD | 2d | 2027-12-19 | 2027-12-20 | RHD4CZ7C013RD5100 | Skilled labor [18.95 h]; Unskilled Labor [113.91 h]; Equipment Opreator [284.8 h]; Bobcat [18.95 h]; Roller compactor [18.95 h]; Asphalt Paver [18.95 h]; Rubber Compactor [38.01 h]; MC1/RC2 Sprinkler [18.95 h]; Dump Truck [170.87 h]; Bituminous concrete wearing course, (Grading I - Class A), including tack coat (RC2) [905.67 m3] | 491,778.81 | C013 | Z7 | CONS | RD | 50 mm | AFT |
|  | 7321 | **RHD4-02-002-C013-(RD)-Pavement Marking** |  | 2027-12-21 | 2027-12-27 |  |  |  |  |  |  |  |  |  |
| RHD4CZ7C013RD7100 |  | Pavement Markings for Road Network - (RD-C-1/3)-Z7-C013-RD | 6d | 2027-12-21 | 2027-12-27 | RHD4PRSHLDOSRD1500, RHD4PRSHLSTAGRD1500, RHD4CZ7C013RD4100 | Skilled labor [60.11 h]; Unskilled Labor [120.34 h]; Equipment Opreator [60.11 h]; Road Marking Machine [60.11 h]; Retroreflective Thermoplastic White Traffic Markings [192.04 m2]; Retroreflective Thermoplastic Yellow, Traffic Markings [169.32 m2]; Retroreflective raised pavement markers (cat eyes) [1042 nr] | 46,630.16 | C013 | Z7 | CONS | RD | Pavement Marking | AFT |
|  | 7240 | **RHD4-02-002-Z7-C013-Irrigation Network - IRR** |  | 2027-02-10 | 2027-04-17 |  |  |  |  |  |  |  |  |  |
|  | 7246 | **RHD4-02-002-C013-(IRR)-HDPE Pipes - 400 mm diameter** |  |  |  |  |  |  |  |  |  |  |  |  |
|  | 1770 | **RHD4-02-002-C013-(IRR)-Air Valves** |  | 2027-03-22 | 2027-03-25 |  |  |  |  |  |  |  |  |  |
| RHD4CZ7C013IRR3103 |  | Installation for Air Valves for Irrigation Network - (RD-C-1/3)-Z7-C013-IRR | 2d | 2027-03-22 | 2027-03-23 | RHD4CZ7C013IRR2302 | Unskilled Labor [10.89 h]; Plumber [10.89 h]; Air valve diameter 50 mm - TSE [1.8 nr] | 8,854.2 | C013 | Z7 | CONS | IRR | Installation | bef |
| RHD4CZ7C013IRR3203 |  | Stem and Service box for Air Valves for Irrigation Network - (RD-C-1/3)-Z7-C013-IRR | 2d | 2027-03-24 | 2027-03-25 | RHD4CZ7C013IRR3103, RHD4CZ7C013IRR2402 | Unskilled Labor [10.89 h]; Plumber [10.89 h]; Air valve diameter 50 mm - TSE [0.2 nr] | 983.8 | C013 | Z7 | CONS | IRR | Stem and Service box | bef |
|  | 7245 | **RHD4-02-002-C013-(IRR)-HDPE Pipes - 315 mm diameter** |  | 2027-02-10 | 2027-02-21 |  |  |  |  |  |  |  |  |  |
| RHD4CZ7C013IRR1104 |  | Excavation works for HDPE Pipline 315 mm - (RD-C-1/3)-Z7-C013-IRR | 2d | 2027-02-10 | 2027-02-11 | RHD4ENSDZ7APPIRR140, RHD4ENMSRR2000, RHD4CZ7C013RW3000 | Skilled labor [11.76 h]; Unskilled Labor [11.76 h]; Equipment Opreator [14.16 h]; Excavator-Poclain [11.76 h]; Dump Truck [2.4 h]; HDPE (315mm Diameter) - TSE - Depth: less than 1.5m [6.25 m]; HDPE (315mm Diameter) - TSE - Depth: more than 1.51m [15.03 m] | 6,716.59 | C013 | Z7 | CONS | IRR | Excavation | bef |
| RHD4CZ7C013IRR1204 |  | Bedding works for HDPE Pipline 315 mm - (RD-C-1/3)-Z7-C013-IRR | 2d | 2027-02-13 | 2027-02-14 | RHD4CZ7C013IRR1104 | Skilled labor [10.67 h]; Unskilled Labor [21.35 h]; Equipment Opreator [21.35 h]; Excavator-Poclain [10.67 h]; Dump Truck [10.67 h]; HDPE (315mm Diameter) - TSE - Depth: less than 1.5m [3.13 m]; HDPE (315mm Diameter) - TSE - Depth: more than 1.51m [5.01 m] | 2,544.17 | C013 | Z7 | CONS | IRR | Bedding | bef |
| RHD4CZ7C013IRR1304 |  | Installing for HDPE Pipline 315 mm - (RD-C-1/3)-Z7-C013-IRR | 2d | 2027-02-15 | 2027-02-16 | RHD4PRSHLDOSIRR1000, RHD4PRSHLSTAGIRR1000, RHD4CZ7C013IRR1204 | Unskilled Labor [23.63 h]; Plumber [11.76 h]; Equipment Opreator [11.76 h]; Boom Truck [11.76 h]; HDPE (315mm Diameter) - TSE - Depth: less than 1.5m [28.13 m]; HDPE (315mm Diameter) - TSE - Depth: more than 1.51m [40.08 m] | 21,269.26 | C013 | Z7 | CONS | IRR | Installation | bef |
| RHD4CZ7C013IRR1404 |  | Primary Test for HDPE Pipline 315 mm - (RD-C-1/3)-Z7-C013-IRR | 2d | 2027-02-17 | 2027-02-18 | RHD4CZ7C013IRR1304 | Unskilled Labor [5.01 h]; Plumber [5.01 h]; Equipment Opreator [5.01 h]; Water Truck [5.01 h]; HDPE (315mm Diameter) - TSE - Depth: less than 1.5m [12.5 m]; HDPE (315mm Diameter) - TSE - Depth: more than 1.51m [20.04 m] | 10,175.5 | C013 | Z7 | CONS | IRR | Primary Test | bef |
| RHD4CZ7C013IRR1504 |  | Backfilling and warning tape works for HDPE Pipline 315 mm - (RD-C-1/3)-Z7-C013-IRR | 2d | 2027-02-20 | 2027-02-21 | RHD4CZ7C013IRR1404 | Skilled labor [10.67 h]; Unskilled Labor [21.35 h]; Equipment Opreator [21.35 h]; Excavator-Poclain [10.67 h]; Dump Truck [10.67 h]; HDPE (315mm Diameter) - TSE - Depth: less than 1.5m [12.5 m]; HDPE (315mm Diameter) - TSE - Depth: more than 1.51m [20.04 m] | 10,175.5 | C013 | Z7 | CONS | IRR | Backfilling | bef |

| ID | WBS | Activity | Duration | Start | Finish | Predecessors | Resources | Cost | RDH4-01-001-Road and Block Names-1 | RDH4-01-001-Zones-1 | RDH4-01-001-Phases-1 | RDH4-01-001-Networks-1 | RDH4-01-001-Work Method-1 | RDH4-01-001-MENEM |
| --- | --- | --- | --- | --- | --- | --- | --- | --- | --- | --- | --- | --- | --- | --- |
|  | 6107 | **RHD4-02-002-C013-(IRR)-HDPE Pipes - 160 mm diameter** |  | 2027-02-13 | 2027-02-24 |  |  |  |  |  |  |  |  |  |
| RHD4CZ7C013IRR1100 |  | Excavation works for HDPE Pipline 160 mm - (RD-C-1/3)-Z7-C013-IRR | 2d | 2027-02-13 | 2027-02-14 | RHD4CZ7C013IRR1104 | Skilled labor [4 h]; Unskilled Labor [4 h]; Equipment Opreator [4.9 h]; Excavator-Poclain [4 h]; Dump Truck [0.8 h]; HDPE (160mm Diameter) - TSE - Depth: less than 1.5m [5.6 m] | 688.8 | C013 | Z7 | CONS | IRR | Excavation | bef |
| RHD4CZ7C013IRR1200 |  | Bedding works for HDPE Pipline 160 mm - (RD-C-1/3)-Z7-C013-IRR | 2d | 2027-02-15 | 2027-02-16 | RHD4CZ7C013IRR1100 | Skilled labor [3.05 h]; Unskilled Labor [6.1 h]; Equipment Opreator [6.1 h]; Excavator-Poclain [3.05 h]; Dump Truck [3.05 h]; HDPE (160mm Diameter) - TSE - Depth: less than 1.5m [2.8 m] | 344.4 | C013 | Z7 | CONS | IRR | Bedding | bef |
| RHD4CZ7C013IRR1300 |  | Installing for HDPE Pipline 160 mm - (RD-C-1/3)-Z7-C013-IRR | 2d | 2027-02-17 | 2027-02-18 | RHD4CZ7C013IRR1200 | Unskilled Labor [8.17 h]; Plumber [4 h]; Equipment Opreator [4 h]; Boom Truck [4 h]; HDPE (160mm Diameter) - TSE - Depth: less than 1.5m [25.2 m] | 3,099.6 | C013 | Z7 | CONS | IRR | Installation | bef |
| RHD4CZ7C013IRR1400 |  | Primary Test for HDPE Pipline 160 mm - (RD-C-1/3)-Z7-C013-IRR | 2d | 2027-02-20 | 2027-02-21 | RHD4CZ7C013IRR1300 | Unskilled Labor [1.2 h]; Plumber [1.2 h]; Equipment Opreator [1.2 h]; Water Truck [1.2 h]; HDPE (160mm Diameter) - TSE - Depth: less than 1.5m [11.2 m] | 1,377.6 | C013 | Z7 | CONS | IRR | Primary Test | bef |
| RHD4CZ7C013IRR1500 |  | Backfilling and warning tape works for HDPE Pipline 160 mm - (RD-C-1/3)-Z7-C013-IRR | 2d | 2027-02-23 | 2027-02-24 | RHD4CZ7C013IRR1400 | Skilled labor [3.05 h]; Unskilled Labor [6.1 h]; Equipment Opreator [6.1 h]; Excavator-Poclain [3.05 h]; Dump Truck [3.05 h]; HDPE (160mm Diameter) - TSE - Depth: less than 1.5m [11.2 m] | 1,377.6 | C013 | Z7 | CONS | IRR | Backfilling | bef |
|  | 6115 | **RHD4-02-002-C013-(IRR)-Gate Valves (Direct Buried)** |  | 2027-04-13 | 2027-04-17 |  |  |  |  |  |  |  |  |  |
| RHD4CZ7C013IRR3100 |  | Installation for Direct Buried Gate Valves - (RD-C-1/3)-Z7-C013-IRR | 2d | 2027-04-13 | 2027-04-14 | RHD4CZ7C013IRR2402, RHD4CZ7C013RD3100 | Unskilled Labor [16.34 h]; Plumber [16.34 h]; Gate valves dia 100 mm - TSE [1.8 nr]; Gate valves dia 150 mm - TSE [0.9 nr] | 4,852.8 | C013 | Z7 | CONS | IRR | Installation | bef |
| RHD4CZ7C013IRR3200 |  | Stem and Service box for Direct Buried Gate Valves - (RD-C-1/3)-Z7-C013-IRR | 2d | 2027-04-15 | 2027-04-17 | RHD4CZ7C013IRR3100, RHD4CZ7C013IRR1500 | Unskilled Labor [16.34 h]; Plumber [16.34 h]; Gate valves dia 100 mm - TSE [0.2 nr]; Gate valves dia 150 mm - TSE [0.1 nr] | 539.2 | C013 | Z7 | CONS | IRR | Stem and Service box | bef |
|  | 1769 | **RHD4-02-002-C013-(IRR)-Air Valve Chamber** |  | 2027-03-15 | 2027-03-23 |  |  |  |  |  |  |  |  |  |
| RHD4CZ7C013IRR2102 |  | Excavation and Bedding for Valve Chamber for Irrigation Network - (RD-C-1/3)-Z7-C013-IRR | 2d | 2027-03-15 | 2027-03-16 | RHD4CZ7C013IRR1501 | Skilled labor [10.89 h]; Unskilled Labor [10.89 h]; Equipment Opreator [2.18 h]; Excavator-Poclain [1.09 h]; Dump Truck [1.09 h]; Air Valve chambers - TSE [0.5 nr] | 2,386 | C013 | Z7 | CONS | IRR | Excavation and Bedding | bef |
| RHD4CZ7C013IRR2202 |  | PC works for Valve Chamber for Irrigation Network - (RD-C-1/3)-Z7-C013-IRR | 2d | 2027-03-17 | 2027-03-18 | RHD4CZ7C013IRR2102 | Skilled labor [10.89 h]; Unskilled Labor [21.78 h]; Equipment Opreator [1.09 h]; Concrete Pump [1.09 h]; Air Valve chambers - TSE [0.2 nr] | 954.4 | C013 | Z7 | CONS | IRR | PC Works | bef |
| RHD4CZ7C013IRR2302 |  | Installation for Valve Chamber for Irrigation Network - (RD-C-1/3)-Z7-C013-IRR | 2d | 2027-03-20 | 2027-03-21 | RHD4CZ7C013IRR2202 | Skilled labor [10.89 h]; Unskilled Labor [21.78 h]; Equipment Opreator [2.18 h]; Boom Truck [2.18 h]; Air Valve chambers - TSE [1.1 nr] | 5,249.2 | C013 | Z7 | CONS | IRR | Installation | bef |
| RHD4CZ7C013IRR2402 |  | Backfilling works for Valve Chamber for Irrigation Network - (RD-C-1/3)-Z7-C013-IRR | 2d | 2027-03-22 | 2027-03-23 | RHD4CZ7C013IRR2302 | Skilled labor [10.89 h]; Unskilled Labor [21.78 h]; Equipment Opreator [2.18 h]; Water Truck [1.09 h]; Dump Truck [1.09 h]; Air Valve chambers - TSE [0.2 nr] | 954.4 | C013 | Z7 | CONS | IRR | Backfilling Works | bef |
|  | 8188 | **RHD4-02-002-C013-(IRR)-HDPE Pipes - 180 mm diameter** |  | 2027-02-15 | 2027-03-14 |  |  |  |  |  |  |  |  |  |
| RHD4CZ7C013IRR1101 |  | Excavation works for HDPE Pipline 180 mm - (RD-C-1/3)-Z7-C013-IRR | 5d | 2027-02-15 | 2027-02-20 | RHD4CZ7C013IRR1100 | Skilled labor [54.45 h]; Unskilled Labor [54.45 h]; Equipment Opreator [65.34 h]; Excavator-Poclain [54.45 h]; Dump Truck [10.89 h]; HDPE (180mm Diameter) - TSE - Depth: less than 1.5m [69.92 m]; HDPE (180mm Diameter) - TSE - Depth: more than 1.51m [7.62 m] | 11,625.64 | C013 | Z7 | CONS | IRR | Excavation | bef |
| RHD4CZ7C013IRR1201 |  | Bedding works for HDPE Pipline 180 mm - (RD-C-1/3)-Z7-C013-IRR | 4d | 2027-02-21 | 2027-02-25 | RHD4CZ7C013IRR1101 | Skilled labor [41.71 h]; Unskilled Labor [83.53 h]; Equipment Opreator [83.53 h]; Excavator-Poclain [41.71 h]; Dump Truck [41.71 h]; HDPE (180mm Diameter) - TSE - Depth: less than 1.5m [34.96 m]; HDPE (180mm Diameter) - TSE - Depth: more than 1.51m [2.54 m] | 5,576.6 | C013 | Z7 | CONS | IRR | Bedding | bef |
| RHD4CZ7C013IRR1301 |  | Installing for HDPE Pipline 180 mm - (RD-C-1/3)-Z7-C013-IRR | 5d | 2027-02-27 | 2027-03-03 | RHD4CZ7C013IRR1201 | Unskilled Labor [108.9 h]; Plumber [54.45 h]; Equipment Opreator [54.45 h]; Boom Truck [54.45 h]; HDPE (180mm Diameter) - TSE - Depth: less than 1.5m [314.65 m]; HDPE (180mm Diameter) - TSE - Depth: more than 1.51m [20.31 m] | 49,716.56 | C013 | Z7 | CONS | IRR | Installation | bef |
| RHD4CZ7C013IRR1401 |  | Primary Test for HDPE Pipline 180 mm - (RD-C-1/3)-Z7-C013-IRR | 2d | 2027-03-04 | 2027-03-06 | RHD4CZ7C013IRR1301 | Unskilled Labor [17.1 h]; Plumber [17.1 h]; Equipment Opreator [17.1 h]; Water Truck [17.1 h]; HDPE (180mm Diameter) - TSE - Depth: less than 1.5m [139.85 m]; HDPE (180mm Diameter) - TSE - Depth: more than 1.51m [10.15 m] | 22,306 | C013 | Z7 | CONS | IRR | Primary Test | bef |
| RHD4CZ7C013IRR1501 |  | Backfilling and warning tape works for HDPE Pipline 180 mm - (RD-C-1/3)-Z7-C013-IRR | 4d | 2027-03-07 | 2027-03-14 | RHD4CZ7C013IRR1401 | Skilled labor [41.71 h]; Unskilled Labor [83.53 h]; Equipment Opreator [83.53 h]; Excavator-Poclain [41.71 h]; Dump Truck [41.71 h]; HDPE (180mm Diameter) - TSE - Depth: less than 1.5m [139.85 m]; HDPE (180mm Diameter) - TSE - Depth: more than 1.51m [10.15 m] | 22,306 | C013 | Z7 | CONS | IRR | Backfilling | bef |
|  | 7274 | **RHD4-02-002-Z7-C013-Medium Voltage Network - MV** |  | 2027-04-18 | 2027-05-08 |  |  |  |  |  |  |  |  |  |
|  | 7275 | **RHD4-02-002-C013-(MV)-Medium Voltage cable trench** |  | 2027-04-18 | 2027-05-05 |  |  |  |  |  |  |  |  |  |
| RHD4CZ7C013MV1100 |  | Excavation for Medium Voltage Trench - (RD-C-1/3)-Z7-C013-MV | 4d | 2027-04-18 | 2027-04-21 | RHD4ENSDZ7APPMV150, RHD4CZ7C013IRR3200 | Skilled labor [42.4 h]; Unskilled Labor [84.62 h]; Equipment Opreator [126.98 h]; Excavator-Poclain [42.4 h]; Dump Truck [84.62 h]; Excavation for Trench size 60cm wide and 80cm deep ( for 2 cables) [271.99 m3] | 2,719.85 | C013 | Z7 | CONS | MV | Excavation | AFT |
| RHD4CZ7C013MV1200 |  | Trench Backfilling for Medium Voltage Network - (RD-C-1/3)-Z7-C013-MV | 4d | 2027-05-02 | 2027-05-05 | RHD4CZ7C013MV3200 | Skilled labor [42.4 h]; Unskilled Labor [42.4 h]; Equipment Opreator [84.62 h]; Dump Truck [84.62 h]; Excavation for Trench size 60cm wide and 80cm deep ( for 2 cables) [116.56 m3] | 1,165.65 | C013 | Z7 | CONS | MV | Backfilling | AFT |

| ID | WBS | Activity | Duration | Start | Finish | Predecessors | Resources | Cost | RDH4-01-001-Road and Block Names-1 | RDH4-01-001-Zones-1 | RDH4-01-001-Phases-1 | RDH4-01-001-Networks-1 | RDH4-01-001-Work Method-1 | RDH4-01-001-MENEM |
| --- | --- | --- | --- | --- | --- | --- | --- | --- | --- | --- | --- | --- | --- | --- |
|  | 7277 | **RHD4-02-002-C013-(MV)-Medium Voltage cables 3Cx 500 mm²** |  | 2027-04-22 | 2027-05-08 |  |  |  |  |  |  |  |  |  |
| RHD4CZ7C013MV3100 |  | Installation of Medium Voltage Cables 3Cx 500 mm² - (RD-C-1/3)-Z7-C013-MV | 6d | 2027-04-22 | 2027-04-28 | RHD4PRSHLDOSMV1100, RHD4ENMSMV2000, RHD4ENMSMV2010, RHD4PRSHLSTAGMV1100, RHD4CZ7C013MV1100 | Skilled labor [56.41 h]; Unskilled Labor [225.65 h]; Electrician [112.8 h]; Equipment Opreator [169.24 h]; Boom Truck [56.41 h]; Cable Laying Machine [112.8 h]; Cable 13.8 kV 3Cx 500 mm² Al/XLPE,/LLDPE / Unarmored [699.39 m] | 111,203.01 | C013 | Z7 | CONS | MV | Installation | AFT |
| RHD4CZ7C013MV3200 |  | Joints Installation of Medium Voltage Cables 3Cx 500 mm² - (RD-C-1/3)-Z7-C013-MV | 2d | 2027-04-29 | 2027-05-01 | RHD4PRSHLDOSMV1300, RHD4PRSHLSTAGMV1300, RHD4CZ7C013MV3100 | Skilled labor [5.45 h]; Unskilled Labor [21.78 h]; Electrician [10.89 h]; Equipment Opreator [5.45 h]; Boom Truck [5.45 h]; Straight joints cables for 13.8 kv 3Cx 500 mm², Al /XLPE/LLDPE [1 Unit] | 3,248 | C013 | Z7 | CONS | MV | Joints Installation | AFT |
| RHD4CZ7C013MV3300 |  | Testing of Medium Voltage Cables 3Cx 500 mm² - (RD-C-1/3)-Z7-C013-MV | 2d | 2027-05-06 | 2027-05-08 | RHD4CZ7C013MV3200, RHD4CZ7C013MV1200 | Skilled labor [16.88 h]; Unskilled Labor [67.74 h]; Electrician [33.87 h]; Cable 13.8 kV 3Cx 500 mm² Al/XLPE,/LLDPE / Unarmored [77.71 m] | 12,355.89 | C013 | Z7 | CONS | MV | Testing | AFT |
|  | 1791 | **RHD4-02-002-C013-(MV)-Medium Voltage duct banks** |  |  |  |  |  |  |  |  |  |  |  |  |
|  | 7281 | **RHD4-02-002-Z7-C013-Low Voltage Network - LV** |  |  |  |  |  |  |  |  |  |  |  |  |
|  | 7282 | **RHD4-02-002-C013-(LV)-Low Voltage duct banks** |  |  |  |  |  |  |  |  |  |  |  |  |
|  | 7287 | **RHD4-02-002-Z7-C013-Street Lighting Network - SL** |  | 2027-05-09 | 2027-06-09 |  |  |  |  |  |  |  |  |  |
|  | 7290 | **RHD4-02-002-C013-(SL)-Street Lighting cables** |  | 2027-05-09 | 2027-05-25 |  |  |  |  |  |  |  |  |  |
| RHD4CZ7C013SL3100 |  | Excavation for Street Lighting Cables for Street Lighting Network - (RD-C-1/3)-Z7-C013-SL | 3d | 2027-05-09 | 2027-05-11 | RHD4ENSDZ7APPSL170, RHD4CZ7L131ST3100, RHD4CZ7C013MV3300 | Skilled labor [28.75 h]; Unskilled Labor [57.5 h]; Equipment Opreator [57.5 h]; Excavator-Poclain [28.75 h]; Boom Truck [28.75 h]; Cable, Copper 4x10mm2/ CU/XLPE/SWA/PVC + 1x10mm2 CU/PVC [131.99 m] | 6,467.61 | C013 | Z7 | CONS | SL | Excavation | AFT |
| RHD4CZ7C013SL3200 |  | Cable Laying of Street Lighting Cables for Street Lighting Network - (RD-C-1/3)-Z7-C013-SL | 3d | 2027-05-12 | 2027-05-19 | RHD4PRSHLDOSSL1100, RHD4ENMSSL2000, RHD4ENMSSL2010, RHD4PRSHLSTAGSL1100, RHD4CZ7C013SL3100 | Skilled labor [23.96 h]; Unskilled Labor [95.84 h]; Electrician [47.92 h]; Equipment Opreator [71.88 h]; Boom Truck [23.96 h]; Cable Laying Machine [47.92 h]; Cable, Copper 4x10mm2/ CU/XLPE/SWA/PVC + 1x10mm2 CU/PVC [395.98 m] | 19,402.84 | C013 | Z7 | CONS | SL | Cable Laying | AFT |
| RHD4CZ7C013SL3300 |  | Warning tape and Backfill for Street Lighting Cables for Street Lighting Network - (RD-C-1/3)-Z7-C013-SL | 3d | 2027-05-20 | 2027-05-23 | RHD4CZ7C013SL3200 | Skilled labor [23.96 h]; Unskilled Labor [95.84 h]; Electrician [47.92 h]; Equipment Opreator [23.96 h]; Boom Truck [23.96 h]; Cable, Copper 4x10mm2/ CU/XLPE/SWA/PVC + 1x10mm2 CU/PVC [98.99 m] | 4,850.71 | C013 | Z7 | CONS | SL | Warning tape and Backfill | AFT |
| RHD4CZ7C013SL3400 |  | Testing of Street Lighting Cables for Street Lighting Network - (RD-C-1/3)-Z7-C013-SL | 2d | 2027-05-24 | 2027-05-25 | RHD4CZ7C013SL3300 | Skilled labor [14.4 h]; Unskilled Labor [57.5 h]; Electrician [28.75 h]; Equipment Opreator [14.4 h]; Boom Truck [14.4 h]; Cable, Copper 4x10mm2/ CU/XLPE/SWA/PVC + 1x10mm2 CU/PVC [33 m] | 1,617 | C013 | Z7 | CONS | SL | Testing | AFT |
|  | 7291 | **RHD4-02-002-C013-(SL)-Street Lighting Poles** |  | 2027-05-26 | 2027-06-07 |  |  |  |  |  |  |  |  |  |
| RHD4CZ7C013SL1100 |  | Excavation for RC Base for Lighting Poles for Street Lighting Network - (RD-C-1/3)-Z7-C013-SL | 2d | 2027-05-26 | 2027-05-27 | RHD4ENSDZ7APPSL170, RHD4CZ7C013SL3400 | Skilled labor [11.65 h]; Unskilled Labor [11.65 h]; Equipment Opreator [23.2 h]; Excavator-Poclain [11.65 h]; Dump Truck [11.65 h]; Lighting polesdouble arms, height of ( 12 ) meters [1.6 Unit] | 7,315.2 | C013 | Z7 | CONS | SL | Excavation | AFT |
| RHD4CZ7C013SL1200 |  | Installation for RC Base for Lighting Poles for Street Lighting Network - (RD-C-1/3)-Z7-C013-SL | 2d | 2027-05-29 | 2027-05-30 | RHD4CZ7C013SL1100 | Skilled labor [11.65 h]; Unskilled Labor [11.65 h]; Equipment Opreator [23.2 h]; Excavator-Poclain [11.65 h]; Dump Truck [11.65 h]; Lighting polesdouble arms, height of ( 12 ) meters [4 Unit] | 18,288 | C013 | Z7 | CONS | SL | RC Base | AFT |
| RHD4CZ7C013SL1300 |  | Backfill for RC Base for Lighting Poles for Street Lighting Network - (RD-C-1/3)-Z7-C013-SL | 2d | 2027-05-31 | 2027-06-01 | RHD4CZ7C013SL1200 | Skilled labor [11.65 h]; Unskilled Labor [11.65 h]; Equipment Opreator [23.2 h]; Excavator-Poclain [11.65 h]; Dump Truck [11.65 h]; Lighting polesdouble arms, height of ( 12 ) meters [0.8 Unit] | 3,657.6 | C013 | Z7 | CONS | SL | Backfill | AFT |
| RHD4CZ7C013SL1400 |  | Installation for Lighting Poles for Street Lighting Network - (RD-C-1/3)-Z7-C013-SL | 2d | 2027-06-02 | 2027-06-03 | RHD4PRSHLDOSSL1200, RHD4ENMSSL2000, RHD4ENMSSL2010, RHD4PRSHLSTAGSL1200, RHD4CZ7C013SL1300 | Skilled labor [17.42 h]; Unskilled Labor [17.42 h]; Electrician [17.42 h]; Equipment Opreator [17.42 h]; Boom Truck [17.42 h]; Lighting polesdouble arms, height of ( 12 ) meters [9.6 Unit] | 43,891.2 | C013 | Z7 | CONS | SL | Poles Installation | AFT |
| RHD4CZ7C013SL1500 |  | Luminaire Installation for Lighting Poles for Street Lighting Network - (RD-C-1/3)-Z7-C013-SL | 3d | 2027-06-05 | 2027-06-07 | RHD4PRSHLDOSSL1300, RHD4PRSHLSTAGSL1300, RHD4CZ7C013SL1400 | Unskilled Labor [46.5 h]; Electrician [23.2 h]; Equipment Opreator [9.26 h]; Boom Truck [9.26 h]; Street Lighting( LED) Luminaire of Output ?18553 lumen [32 Unit] | 20,384 | C013 | Z7 | CONS | SL | Luminaire Installation | AFT |
|  | 7293 | **RHD4-02-002-C013-(SL)-Street Lighting Earthing System** |  | 2027-06-08 | 2027-06-09 |  |  |  |  |  |  |  |  |  |
| RHD4CZ7C013SL6100 |  | Installation of Earthing for Lighting Poles and Fedder Pillers for Street Lighting Network - (RD-C-1/3)-Z7-C013-SL | 2d | 2027-06-08 | 2027-06-09 | RHD4ENMSER2000, RHD4ENMSER2010, RHD4CZ7C013SL1500 | Skilled labor [0.8 h]; Unskilled Labor [0.8 h]; Equipment Opreator [1.42 h]; Excavator-Poclain [0.8 h]; Dump Truck [0.8 h]; Including lighting poles circuits - ER [1 Unit] | 613 | C013 | Z7 | CONS | SL | Installation | AFT |
|  | 7299 | **RHD4-02-002-Z7-C013-Telecommunications Network - TC** |  | 2027-06-10 | 2027-06-22 |  |  |  |  |  |  |  |  |  |
|  | 7300 | **RHD4-02-002-C013-(TC)-Telecommunications Ducts** |  | 2027-06-10 | 2027-06-22 |  |  |  |  |  |  |  |  |  |
| RHD4CZ7C013TC2100 |  | Excavation of HDPE Ducts for Telecom Network - (RD-C-1/3)-Z7-C013-TC | 3d | 2027-06-10 | 2027-06-13 | RHD4ENSDZ7APPTC190, RHD4CZ7C013SL6100 | Skilled labor [32 h]; Unskilled Labor [32 h]; Equipment Opreator [64 h]; Excavator-Poclain [32 h]; Dump Truck [32 h]; (6*50mm) HDPE ducts -TC [88.22 m] | 7,763.36 | C013 | Z7 | CONS | TC | Excavation | AFT |
| RHD4CZ7C013TC2200 |  | Installation of HDPE Ducts for Telecom Network - (RD-C-1/3)-Z7-C013-TC | 5d | 2027-06-14 | 2027-06-19 | RHD4PRSHLDOSTC1000, RHD4PRSHLSTAGTC1000, RHD4CZ7C013TC2100 | Carpenter [4.8 h]; Skilled labor [48 h]; Unskilled Labor [48 h]; Steel Fixer [4.8 h]; (6*50mm) HDPE ducts -TC [286.71 m] | 25,230.92 | C013 | Z7 | CONS | TC | Installing | AFT |
| RHD4CZ7C013TC2400 |  | Backfilling of HDPE Ducts for Telecom Network - (RD-C-1/3)-Z7-C013-TC | 3d | 2027-06-20 | 2027-06-22 | RHD4CZ7C013TC2200, RHD4CZ7C013TC5200 | Skilled labor [32 h]; Unskilled Labor [32 h]; Equipment Opreator [12.85 h]; Excavator-Poclain [12.85 h]; (6*50mm) HDPE ducts -TC [66.17 m] | 5,822.52 | C013 | Z7 | CONS | TC | Backfilling | AFT |

| ID | WBS | Activity | Duration | Start | Finish | Predecessors | Complete | Planned start | Planned finish | Resources | Cost | Actual cost | RDH4-01-001-Road and Block Names-1 | RDH4-01-001-Zones-1 | RDH4-01-001-Phases-1 | RDH4-01-001-Networks-1 | RDH4-01-001-Work Method-1 | RDH4-01-001-MENEM |
| --- | --- | --- | --- | --- | --- | --- | --- | --- | --- | --- | --- | --- | --- | --- | --- | --- | --- | --- |
|  | 7301 | **RHD4-02-002-C013-(TC)-Telecommunications Manholes** |  | 2027-06-14 | 2027-06-17 |  |  |  |  |  |  |  |  |  |  |  |  |  |
| RHD4CZ7C013TC5100 |  | Excavation for Manholes for Telecom Network - (RD-C-1/3)-Z7-C013-TC | 2d | 2027-06-14 | 2027-06-15 | RHD4ENSDZ7APPTC190, RHD4CZ7C013TC2100 |  |  |  | Skilled labor [4.14 h]; Unskilled Labor [4.14 h]; Equipment Opreator [3.27 h]; Excavator-Poclain [1.6 h]; Dump Truck [1.6 h]; Manhole Type 1 - TC [0.15 nr]; Manhole Type 2 - TC [0.15 nr] | 2,022.3 |  | C013 | Z7 | CONS | TC | Excavation | AFT |
| RHD4CZ7C013TC5200 |  | Installation of Manholes for Telecom Network - (RD-C-1/3)-Z7-C013-TC | 2d | 2027-06-16 | 2027-06-17 | RHD4PRSHLDOSTC1200, RHD4PRSHLSTAGTC1200, RHD4CZ7C013TC5100, RHD4CZ7C013TC2200 SS |  |  |  | Skilled labor [4.14 h]; Unskilled Labor [4.14 h]; Equipment Opreator [1.6 h]; Boom Truck [1.6 h]; Manhole Type 1 - TC [0.85 nr]; Manhole Type 2 - TC [0.85 nr] | 11,459.7 |  | C013 | Z7 | CONS | TC | Installation | AFT |
|  | 7303 | **RHD4-02-002-Z7-C013-Information and Communication Technologies - ICT** |  | 2027-06-23 | 2027-07-17 |  |  |  |  |  |  |  |  |  |  |  |  |  |
|  | 7304 | **RHD4-02-002-C013-(ICT)-Information and Communication Technologies Ducts** |  | 2027-06-23 | 2027-07-17 |  |  |  |  |  |  |  |  |  |  |  |  |  |
| RHD4CZ7C013ICT2100 |  | Excavation of HDPE Ducts for ICT Network - (RD-C-1/3)-Z7-C013-ICT | 6d | 2027-06-23 | 2027-06-29 | RHD4ENSDZ7APPICT200, RHD4CZ7C013TC2400 |  |  |  | Skilled labor [61.31 h]; Unskilled Labor [61.31 h]; Equipment Opreator [122.52 h]; Excavator-Poclain [61.31 h]; Dump Truck [61.31 h]; (2*50mm) HDPE ducts -ICT [168.75 m] | 6,412.57 |  | C013 | Z7 | CONS | ICT | Excavation | AFT |
| RHD4CZ7C013ICT2200 |  | Installation of HDPE Ducts for ICT Network - (RD-C-1/3)-Z7-C013-ICT | 9d | 2027-06-30 | 2027-07-10 | RHD4PRSHLDOSICT1000, RHD4PRSHLSTAGICT1000, RHD4CZ7C013ICT2100 |  |  |  | Carpenter [9.15 h]; Skilled labor [91.91 h]; Unskilled Labor [91.91 h]; Steel Fixer [9.15 h]; (2*50mm) HDPE ducts -ICT [548.44 m] | 20,840.85 |  | C013 | Z7 | CONS | ICT | Installing | AFT |
| RHD4CZ7C013ICT2400 |  | Backfilling of HDPE Ducts for ICT Network - (RD-C-1/3)-Z7-C013-ICT | 6d | 2027-07-11 | 2027-07-17 | RHD4CZ7C013ICT2200, RHD4CZ7C013ICT5200 |  |  |  | Skilled labor [61.31 h]; Unskilled Labor [61.31 h]; Equipment Opreator [24.5 h]; Excavator-Poclain [24.5 h]; (2*50mm) HDPE ducts -ICT [126.56 m] | 4,809.43 |  | C013 | Z7 | CONS | ICT | Backfilling | AFT |
|  | 7305 | **RHD4-02-002-C013-(ICT)-Information and Communication Technologies Manholes** |  | 2027-06-30 | 2027-07-04 |  |  |  |  |  |  |  |  |  |  |  |  |  |
| RHD4CZ7C013ICT5100 |  | Excavation for Manholes for ICT Network - (RD-C-1/3)-Z7-C013-ICT | 2d | 2027-06-30 | 2027-07-01 | RHD4ENSDZ7APPICT200, RHD4CZ7C013ICT2100, RHD4CZ7C013MV3300 |  |  |  | Skilled labor [2.72 h]; Unskilled Labor [2.72 h]; Equipment Opreator [2.18 h]; Excavator-Poclain [1.09 h]; Dump Truck [1.09 h]; Manhole Type 1 - ICT [0.3 nr] | 1,617.9 |  | C013 | Z7 | CONS | ICT | Excavation | AFT |
| RHD4CZ7C013ICT5200 |  | Installation of Manholes for ICT Network - (RD-C-1/3)-Z7-C013-ICT | 2d | 2027-07-03 | 2027-07-04 | RHD4PRSHLDOSICT1200, RHD4PRSHLSTAGICT1200, RHD4CZ7C013ICT5100 |  |  |  | Skilled labor [2.72 h]; Unskilled Labor [2.72 h]; Equipment Opreator [1.09 h]; Boom Truck [1.09 h]; Manhole Type 1 - ICT [1.7 nr] | 9,168.1 |  | C013 | Z7 | CONS | ICT | Installation | AFT |
|  | 7294 | **RHD4-02-002-Z7-C013-Landscape Network - LS** |  |  |  |  |  |  |  |  |  |  |  |  |  |  |  |  |
|  | 7295 | **RHD4-02-002-C013-(LS)-Landscape Lighting cables** |  |  |  |  |  |  |  |  |  |  |  |  |  |  |  |  |
|  | 7297 | **RHD4-02-002-C013-(LS)-Landscape Bollard Poles** |  |  |  |  |  |  |  |  |  |  |  |  |  |  |  |  |
|  | 7307 | **RHD4-02-002-Z7-C013-Security Network - CCTV** |  |  |  |  |  |  |  |  |  |  |  |  |  |  |  |  |
|  | 7308 | **RHD4-02-002-C013-(CCTV)-Civil Works** |  |  |  |  |  |  |  |  |  |  |  |  |  |  |  |  |
|  | 6568 | **RHD4-02-002-Z7-L015** |  | 2026-07-05 | 2028-05-21 |  |  |  |  |  |  |  |  |  |  |  |  |  |
|  | 6599 | **RHD4-02-002-Z7-L015-Crossings Sewage Network - SWCr** |  |  |  |  |  |  |  |  |  |  |  |  |  |  |  |  |
|  | 6609 | **RHD4-02-002-L015-(SWCr)-MH Works - 1200 mm diameter** |  |  |  |  |  |  |  |  |  |  |  |  |  |  |  |  |
|  | 6605 | **RHD4-02-002-L015-(SWCr)-UPVC Pipes - 200 mm diameter** |  |  |  |  |  |  |  |  |  |  |  |  |  |  |  |  |
|  | 6643 | **RHD4-02-002-Z7-L015-Crossings Potable Network - PTCr** |  |  |  |  |  |  |  |  |  |  |  |  |  |  |  |  |
|  | 6644 | **RHD4-02-002-L015-(PTCr)-HDPE Pipes - 110 mm diameter** |  |  |  |  |  |  |  |  |  |  |  |  |  |  |  |  |
|  | 6649 | **RHD4-02-002-L015-(PTCr)-Gate Valves (Direct Buried)** |  |  |  |  |  |  |  |  |  |  |  |  |  |  |  |  |
|  | 6690 | **RHD4-02-002-Z7-L015-Crossings Irrigation Network - IRRC** |  |  |  |  |  |  |  |  |  |  |  |  |  |  |  |  |
|  | 6691 | **RHD4-02-002-L015-(IRRC)-HDPE Pipes - 160 mm diameter** |  |  |  |  |  |  |  |  |  |  |  |  |  |  |  |  |
|  | 6699 | **RHD4-02-002-L015-(IRRC)-Gate Valves (Direct Buried)** |  |  |  |  |  |  |  |  |  |  |  |  |  |  |  |  |
|  | 6747 | **RHD4-02-002-Z7-L015-Road Works - RD** |  | 2026-07-05 | 2028-05-21 |  |  |  |  |  |  |  |  |  |  |  |  |  |
|  | 6748 | **RHD4-02-002-L015-(RD)-Subgrade** |  | 2026-07-05 | 2026-08-03 |  |  |  |  |  |  |  |  |  |  |  |  |  |
| RHD4CZ7L015RD1100 |  | Supply, lay and compaction subgrade compacted thickness 300 mm for Roads - (RD-L-15)-Z7-L015-RD(Completed) | 6d | 2026-07-05 A | 2026-08-03 A | RHD4ENSDZ7APPRD220, RHD4ENSDZ7APPEW100 SS, RHD4CZ7L015ST1505 | 100% | 2026-08-27 | 2026-09-02 | Skilled labor [53.6 h]; Unskilled Labor [107.2 h]; Electrician [53.6 h]; Equipment Opreator [365.92 h]; Water Truck [17.64 h]; Roller compactor [26.79 h]; Grader [53.6 h]; Dump Truck [267.9 h]; Subgrade [4177.89 m3] | 79,379.91 | 79,379.91 | L015 | Z7 | CONS | RD | Subgrade | bef |

| ID | WBS | Activity | Duration | Start | Finish | Predecessors | Complete | Remaining | Planned start | Planned finish | Resources | Cost | Actual cost | RDH4-01-001-Road and Block Names-1 | RDH4-01-001-Zones-1 | RDH4-01-001-Phases-1 | RDH4-01-001-Networks-1 | RDH4-01-001-Work Method-1 | RDH4-01-001-MENEM |
| --- | --- | --- | --- | --- | --- | --- | --- | --- | --- | --- | --- | --- | --- | --- | --- | --- | --- | --- | --- |
|  | 6749 | **RHD4-02-002-L015-(RD)-Aggregate Base Course** |  | 2027-02-13 | 2027-02-18 |  |  |  |  |  |  |  |  |  |  |  |  |  |  |
| RHD4CZ7L015RD2100 |  | Supply, lay and compaction Aggregate base course compacted thickness 300 mmfor Roads - (RD-L-15)-Z7-L015-RD | 6d | 2027-02-13 | 2027-02-18 | RHD4PRSHLDOSRD1000, RHD4PRSHLSTAGRD1000, RHD4CZ7L015RD1100 |  |  |  |  | Skilled labor [32.13 h]; Unskilled Labor [64.36 h]; Equipment Opreator [407.3 h]; Water Truck [21.24 h]; Roller compactor [64.36 h]; Grader [64.36 h]; Dump Truck [257.34 h]; Aggregate Base Courses [2624.13 m3] | 149,575.41 |  | L015 | Z7 | CONS | RD | ABC | bef |
|  | 6750 | **RHD4-02-002-L015-(RD)-Bituminous base course Two Layers, including (MC1)&(RC2)** |  | 2027-02-20 | 2028-04-10 |  |  |  |  |  |  |  |  |  |  |  |  |  |  |
| RHD4CZ7L015RD3100 |  | Supply, lay and Asphaltic base course including Prime Coat (MC1) for 1st Layer - (RD-L-15)-Z7-L015-RD | 2d | 2027-02-20 | 2027-02-21 | RHD4PRSHLDOSRD1100, RHD4ENMSASPH2000, RHD4ENMSASPH2010, RHD4PRSHLSTAGRD1100, RHD4CZ7L015RD2100 |  |  |  |  | Skilled labor [10.56 h]; Unskilled Labor [63.38 h]; Equipment Opreator [158.45 h]; Bobcat [10.56 h]; Roller compactor [10.56 h]; Asphalt Paver [10.56 h]; Rubber Compactor [21.13 h]; MC1/RC2 Sprinkler [10.56 h]; Dump Truck [95.07 h]; Bituminous base course (Grading I - Class A), including Prime coat (MC1) & tack coate (RC2) [386.53 m3] | 184,761.34 |  | L015 | Z7 | CONS | RD | 150 mm | AFT |
| RHD4CZ7L015RD3200 |  | Supply, lay and Asphaltic base course including Tack Coat (RC2) for 2nd Layer - (RD-L-15)-Z7-L015-RD | 2d | 2028-04-09 | 2028-04-10 | RHD4PRSHLDOSRD1100, RHD4PRSHLSTAGRD1100, RHD4CZ7L015CCTV2100 |  |  |  |  | Skilled labor [10.56 h]; Unskilled Labor [63.38 h]; Equipment Opreator [158.45 h]; Bobcat [10.56 h]; Roller compactor [10.56 h]; Asphalt Paver [10.56 h]; Rubber Compactor [21.13 h]; MC1/RC2 Sprinkler [10.56 h]; Dump Truck [95.07 h]; Bituminous base course (Grading I - Class A), including Prime coat (MC1) & tack coate (RC2) [386.53 m3] | 184,761.34 |  | L015 | Z7 | CONS | RD | 150 mm | AFT |
|  | 6752 | **RHD4-02-002-L015-(RD)-Precast Concrete Curb** |  | 2028-04-11 | 2028-04-17 |  |  |  |  |  |  |  |  |  |  |  |  |  |  |
| RHD4CZ7L015RD5100 |  | Supply and installation Precast Concrete Kerb for Roads - (RD-L-15)-Z7-L015-RD | 6d | 2028-04-11 | 2028-04-17 | RHD4PRSHLDOSRD1200, RHD4ENMSRD2000, RHD4ENMSRD2010, RHD4PRSHLSTAGRD1200, RHD4CZ7L015RD3200, RHD4CZ7L131RD5100 |  |  |  |  | Mason [194.83 h]; Skilled labor [64.91 h]; Unskilled Labor [194.83 h]; Equipment Opreator [129.81 h]; Bobcat [64.91 h]; Concrete Mixer Truck [64.91 h]; Precast Concrete Curbstone, type K1 [2072 m]; Precast Flush concrete Curbstone K3 [610.89 m] | 147,559.06 |  | L015 | Z7 | CONS | RD | Curbs | AFT |
|  | 6755 | **RHD4-02-002-L015-(RD)-Traffic Signage** |  | 2028-04-18 | 2028-04-26 |  |  |  |  |  |  |  |  |  |  |  |  |  |  |
| RHD4CZ7L015RD8100 |  | Installation of Traffic Signage for Road Network - (RD-L-15)-Z7-L015-RD | 8d | 2028-04-18 | 2028-04-26 | RHD4PRSHLDOSRD1600, RHD4PRSHLSTAGRD1600, RHD4CZ7L015RD5100, RHD4CZ7L015TC2400, RHD4CZ7L015ICT2400, RHD4CZ7L131RD8100 |  |  |  |  | Skilled labor [174.25 h]; Unskilled Labor [87.12 h]; Electrician [38.12 h]; Equipment Opreator [32.67 h]; Boom Truck [17.42 h]; Concrete Mixer Truck [15.25 h]; Traffic signs, ground mounted, 1 Sheet Aluminium, (breakaway)Single post [33 nr] | 40,458 |  | L015 | Z7 | CONS | RD | Traffic Signage | AFT |
|  | 6753 | **RHD4-02-002-L015-(RD)-Precast Interlocking Block Pavers** |  | 2028-04-27 | 2028-05-08 |  |  |  |  |  |  |  |  |  |  |  |  |  |  |
| RHD4CZ7L015RD6100 |  | Interlocking block pavers for sidewalk-footpath for Side walks and Parking areas - (RD-L-15)-Z7-L015-RD | 7d | 2028-04-27 | 2028-05-08 | RHD4PRSHLDOSRD1300, RHD4PRSHLDOSRD1400, RHD4ENMSRD2000, RHD4ENMSRD2010, RHD4PRSHLSTAGRD1300, RHD4PRSHLSTAGRD1400, RHD4CZ7L015RD8100, RHD4CZ7L131RD6100 |  |  |  |  | Skilled labor [131.88 h]; Unskilled Labor [197.88 h]; Equipment Opreator [214.32 h]; Boom Truck [66 h]; Bobcat [66 h]; Concrete Mixer Truck [66 h]; Water Truck [16.44 h]; Interlock 80 mm thick Pavers for parking including sand fill [1514 m2] | 112,036 |  | L015 | Z7 | CONS | RD | Interlocking | AFT |
|  | 6751 | **RHD4-02-002-L015-(RD)-Bituminous concrete wearing course including tack coat (RC2)** |  | 2028-05-16 | 2028-05-17 |  |  |  |  |  |  |  |  |  |  |  |  |  |  |
| RHD4CZ7L015RD4100 |  | Supply, lay and compaction Asphaltic wearing course including tack Coat (RC2)for Road Network - (RD-L-15)-Z7-L015-RD | 2d | 2028-05-16 | 2028-05-17 | RHD4CZ7L015RD5100, RHD4CZ7L015RD6100, RHD4CZ7L131RD4100, RHD4CZ7L015CCTV6100 |  |  |  |  | Skilled labor [11.65 h]; Unskilled Labor [70.02 h]; Equipment Opreator [174.9 h]; Bobcat [11.65 h]; Roller compactor [11.65 h]; Asphalt Paver [11.65 h]; Rubber Compactor [23.31 h]; MC1/RC2 Sprinkler [11.65 h]; Dump Truck [104.98 h]; Bituminous concrete wearing course, (Grading I - Class A), including tack coat (RC2) [556.25 m3] | 302,043.75 |  | L015 | Z7 | CONS | RD | 50 mm | AFT |
|  | 6754 | **RHD4-02-002-L015-(RD)-Pavement Marking** |  | 2028-05-18 | 2028-05-21 |  |  |  |  |  |  |  |  |  |  |  |  |  |  |
| RHD4CZ7L015RD7100 |  | Pavement Markings for Road Network - (RD-L-15)-Z7-L015-RD | 3d | 2028-05-18 | 2028-05-21 | RHD4PRSHLDOSRD1500, RHD4PRSHLSTAGRD1500, RHD4CZ7L015RD4100, RHD4CZ7L131RD7100 |  |  |  |  | Skilled labor [27.01 h]; Unskilled Labor [54.02 h]; Equipment Opreator [27.01 h]; Road Marking Machine [27.01 h]; Retroreflective Thermoplastic White Traffic Markings [91 m2]; Retroreflective Thermoplastic Yellow, Traffic Markings [80.23 m2]; Retroreflective raised pavement markers (cat eyes) [460 nr] | 20,948.13 |  | L015 | Z7 | CONS | RD | Pavement Marking | AFT |
|  | 6572 | **RHD4-02-002-Z7-L015-Storm Network - ST** |  | 2026-08-04 | 2027-06-12 |  |  |  |  |  |  |  |  |  |  |  |  |  |  |
|  | 6577 | **RHD4-02-002-L015-(ST)-GRP Pipes - 800 mm diameter** |  | 2026-08-15 | 2027-06-02 |  |  |  |  |  |  |  |  |  |  |  |  |  |  |
| RHD4CZ7L015ST1104 |  | Excavation works for GRP Pipe Line 800 mm - (RD-L-15)-Z7-L015-ST | 2d | 2026-08-15 A | 2026-08-16 A | RHD4ENSDZ7APPST110, RHD4CZ7L015ST1105, RHD4CZ7L131ST1504, RHD4CZ7L015MV3300 | 100% |  | 2027-01-09 | 2027-01-10 | Skilled labor [8.71 h]; Unskilled Labor [8.71 h]; Equipment Opreator [10.45 h]; Excavator-Poclain [8.71 h]; Dump Truck [1.74 h]; GRP (800mm Diameter) - ST - Depth less than 1.5 m [5.19 m]; GRP (800mm Diameter) - ST - Depth: 1.51m - 2.5m [16.1 m] | 14,691.27 | 14,691.27 | L015 | Z7 | CONS | ST | Excavation | bef |
| RHD4CZ7L015ST1204 |  | Bedding works for GRP Pipe Line 800 mm - (RD-L-15)-Z7-L015-ST | 2d | 2026-08-18 A | 2026-08-19 A | RHD4CZ7L015ST1104 | 100% |  | 2027-01-11 | 2027-01-12 | Skilled labor [8.71 h]; Unskilled Labor [17.32 h]; Equipment Opreator [17.32 h]; Excavator-Poclain [8.71 h]; Dump Truck [8.71 h]; GRP (800mm Diameter) - ST - Depth less than 1.5 m [2.6 m]; GRP (800mm Diameter) - ST - Depth: 1.51m - 2.5m [5.37 m] | 5,467.54 | 5,467.54 | L015 | Z7 | CONS | ST | Bedding | bef |
| RHD4CZ7L015ST1304 |  | Installing for GRP Pipe Line 800 mm - (RD-L-15)-Z7-L015-ST | 2d | 2026-08-20 A | 2026-08-22 A | RHD4PRSHLSTAGST1006, RHD4CZ7L015ST1204, RHD4CZ7L015ST3301, RHD4PRSHLDOSST1606, RHD4PRSHLPOST1000, RHD4PRSHLDOSST1006, RHD4PRSHLDOSST1605, RHD4PRSHLDOSST1005 | 100% |  | 2027-02-13 | 2027-02-14 | Unskilled Labor [11.54 h]; Plumber [5.77 h]; GRP (800mm Diameter) - ST - Depth less than 1.5 m [23.36 m]; GRP (800mm Diameter) - ST - Depth: 1.51m - 2.5m [42.95 m] | 45,404.98 | 45,404.98 | L015 | Z7 | CONS | ST | Installation | bef |
| RHD4CZ7L015ST1504 |  | Backfilling and warning tape works for GRP Pipe Line 800 mm - (RD-L-15)-Z7-L015-ST | 2d | 2026-09-19 A | 2027-06-02 | RHD4CZ7L015ST1404 | 50% | 2d | 2027-02-17 | 2027-02-18 | Skilled labor [8.71 h]; Unskilled Labor [17.32 h]; Equipment Opreator [17.32 h]; Excavator-Poclain [8.71 h]; Dump Truck [8.71 h]; GRP (800mm Diameter) - ST - Depth less than 1.5 m [10.38 m]; GRP (800mm Diameter) - ST - Depth: 1.51m - 2.5m [21.47 m] | 21,850.08 |  | L015 | Z7 | CONS | ST | Backfilling | bef |
| RHD4CZ7L015ST1404 |  | Primary Test for GRP Pipe Line 800 mm - (RD-L-15)-Z7-L015-ST | 2d | 2027-05-30 | 2027-05-31 | RHD4CZ7L015ST1304 |  |  |  |  | Unskilled Labor [4.36 h]; Plumber [4.36 h]; Equipment Opreator [4.36 h]; Water Truck [4.36 h]; GRP (800mm Diameter) - ST - Depth less than 1.5 m [10.38 m]; GRP (800mm Diameter) - ST - Depth: 1.51m - 2.5m [21.47 m] | 21,850.08 |  | L015 | Z7 | CONS | ST | Primary Test | bef |
|  | 5254 | **RHD4-02-002-L015-(ST)-GRP Pipes - 900 mm diameter** |  | 2026-08-16 | 2027-02-11 |  |  |  |  |  |  |  |  |  |  |  |  |  |  |
| RHD4CZ7L015ST1105 |  | Excavation works for GRP Pipe Line 900 mm - (RD-L-15)-Z7-L015-ST | 2d | 2026-08-16 A | 2026-08-30 A | RHD4ENSDZ7APPRD220, RHD4ENSDZ7APPEW100, RHD4CZ7L015RW3000, RHD4CZ7L131ST1105 SS | 100% |  | 2026-08-16 | 2026-08-17 | Skilled labor [2.18 h]; Unskilled Labor [2.18 h]; Equipment Opreator [2.61 h]; Excavator-Poclain [2.18 h]; Dump Truck [0.44 h]; GRP (900mm Diameter) - ST - Depth less than 1.5 m [4.04 m]; GRP (900mm Diameter) - ST - Depth: 1.51m - 2.5m | 3,025.96 | 3,025.96 | L015 | Z7 | CONS | ST | Excavation | bef |
| RHD4CZ7L015ST1205 |  | Bedding works for GRP Pipe Line 900 mm - (RD-L-15)-Z7-L015-ST | 2d | 2026-08-18 A | 2026-09-20 A | RHD4CZ7L015ST1105 | 100% |  | 2026-08-18 | 2026-08-19 | Skilled labor [2.18 h]; Unskilled Labor [4.36 h]; Equipment Opreator [4.36 h]; Excavator-Poclain [2.18 h]; Dump Truck [2.18 h]; GRP (900mm Diameter) - ST - Depth less than 1.5 m [2.02 m]; GRP (900mm Diameter) - ST - Depth: 1.51m - 2.5m | 1,512.98 | 1,512.98 | L015 | Z7 | CONS | ST | Bedding | bef |
| RHD4CZ7L015ST1305 |  | Installing for GRP Pipe Line 900 mm - (RD-L-15)-Z7-L015-ST | 2d | 2026-08-20 A | 2026-09-21 A | RHD4CZ7L015ST1205 | 100% |  | 2026-08-20 | 2026-08-22 | Unskilled Labor [2.94 h]; Plumber [1.42 h]; GRP (900mm Diameter) - ST - Depth less than 1.5 m [18.19 m]; GRP (900mm Diameter) - ST - Depth: 1.51m - 2.5m | 13,624.31 | 13,624.31 | L015 | Z7 | CONS | ST | Installation | bef |
| RHD4CZ7L015ST1405 |  | Primary Test for GRP Pipe Line 900 mm - (RD-L-15)-Z7-L015-ST | 2d | 2027-02-08 | 2027-02-09 | RHD4CZ7L015ST1305 |  |  |  |  | Unskilled Labor [1.09 h]; Plumber [1.09 h]; Equipment Opreator [1.09 h]; Water Truck [1.09 h]; GRP (900mm Diameter) - ST - Depth less than 1.5 m [8.08 m]; GRP (900mm Diameter) - ST - Depth: 1.51m - 2.5m | 6,051.92 |  | L015 | Z7 | CONS | ST | Primary Test | bef |
| RHD4CZ7L015ST1505 |  | Backfilling and warning tape works for GRP Pipe Line 900 mm - (RD-L-15)-Z7-L015-ST | 2d | 2027-02-10 | 2027-02-11 | RHD4CZ7L015ST1405 |  |  |  |  | Skilled labor [2.18 h]; Unskilled Labor [4.36 h]; Equipment Opreator [4.36 h]; Excavator-Poclain [2.18 h]; Dump Truck [2.18 h]; GRP (900mm Diameter) - ST - Depth less than 1.5 m [8.08 m]; GRP (900mm Diameter) - ST - Depth: 1.51m - 2.5m | 6,051.92 |  | L015 | Z7 | CONS | ST | Backfilling | bef |

| ID | WBS | Activity | Duration | Start | Finish | Predecessors | Complete | Remaining | Planned start | Planned finish | Resources | Cost | Actual cost | RDH4-01-001-Road and Block Names-1 | RDH4-01-001-Zones-1 | RDH4-01-001-Phases-1 | RDH4-01-001-Networks-1 | RDH4-01-001-Work Method-1 | RDH4-01-001-MENEM |
| --- | --- | --- | --- | --- | --- | --- | --- | --- | --- | --- | --- | --- | --- | --- | --- | --- | --- | --- | --- |
|  | 6008 | **RHD4-02-002-L015-(ST)-GRP Pipes - 600 mm diameter** |  | 2026-08-20 | 2027-05-29 |  |  |  |  |  |  |  |  |  |  |  |  |  |  |
| RHD4CZ7L015ST1102 |  | Excavation works for GRP Pipe Line 600 mm - (RD-L-15)-Z7-L015-ST | 2d | 2026-08-20 A | 2027-05-09 | RHD4CZ7L015ST1103 | 37% | 2d | 2027-01-13 | 2027-01-14 | Skilled labor [10.13 h]; Unskilled Labor [10.13 h]; Equipment Opreator [12.2 h]; Excavator-Poclain [10.13 h]; Dump Truck [2.07 h]; GRP (600mm Diameter) - ST - Depth less than 1.5 m [18.69 m]; GRP (600mm Diameter) - ST - Depth: 1.51m - 2.5m | 8,055.39 |  | L015 | Z7 | CONS | ST | Excavation | bef |
| RHD4CZ7L015ST1202 |  | Bedding works for GRP Pipe Line 600 mm - (RD-L-15)-Z7-L015-ST | 2d | 2026-08-23 A | 2027-05-11 | RHD4CZ7L015ST1102 | 37% | 2d | 2027-01-16 | 2027-01-17 | Skilled labor [10.13 h]; Unskilled Labor [20.36 h]; Equipment Opreator [20.36 h]; Excavator-Poclain [10.13 h]; Dump Truck [10.13 h]; GRP (600mm Diameter) - ST - Depth less than 1.5 m [9.34 m]; GRP (600mm Diameter) - ST - Depth: 1.51m - 2.5m | 4,025.54 |  | L015 | Z7 | CONS | ST | Bedding | bef |
| RHD4CZ7L015ST1302 |  | Installing for GRP Pipe Line 600 mm - (RD-L-15)-Z7-L015-ST | 2d | 2026-08-25 A | 2027-05-13 | RHD4CZ7L015ST1202 | 37% | 2d | 2027-01-18 | 2027-01-19 | Unskilled Labor [20.36 h]; Plumber [10.13 h]; GRP (600mm Diameter) - ST - Depth less than 1.5 m [84.1 m]; GRP (600mm Diameter) - ST - Depth: 1.51m - 2.5m | 36,247.1 |  | L015 | Z7 | CONS | ST | Installation | bef |
| RHD4CZ7L015ST1502 |  | Backfilling and warning tape works for GRP Pipe Line 600 mm - (RD-L-15)-Z7-L015-ST | 2d | 2026-09-19 A | 2027-05-29 | RHD4CZ7L015ST1402, RHD4CZ7L015ST2500 FF | 37% | 2d | 2027-01-28 | 2027-01-30 | Skilled labor [10.13 h]; Unskilled Labor [20.36 h]; Equipment Opreator [20.36 h]; Excavator-Poclain [10.13 h]; Dump Truck [10.13 h]; GRP (600mm Diameter) - ST - Depth less than 1.5 m [37.38 m]; GRP (600mm Diameter) - ST - Depth: 1.51m - 2.5m | 16,110.78 |  | L015 | Z7 | CONS | ST | Backfilling | bef |
| RHD4CZ7L015ST1402 |  | Primary Test for GRP Pipe Line 600 mm - (RD-L-15)-Z7-L015-ST | 2d | 2027-05-19 | 2027-05-20 | RHD4CZ7L015ST1302 |  |  |  |  | Unskilled Labor [10.13 h]; Plumber [10.13 h]; Equipment Opreator [10.13 h]; Water Truck [10.13 h]; GRP (600mm Diameter) - ST - Depth less than 1.5 m [37.38 m]; GRP (600mm Diameter) - ST - Depth: 1.51m - 2.5m | 16,110.78 |  | L015 | Z7 | CONS | ST | Primary Test | bef |
|  | 6590 | **RHD4-02-002-L015-(ST)-MH Works - 1500 mm diameter** |  | 2026-08-04 | 2027-06-12 |  |  |  |  |  |  |  |  |  |  |  |  |  |  |
| RHD4CZ7L015ST3101 |  | Excavation and PC Blinding works for MH 1500 mm - (RD-L-15)-Z7-L015-ST | 7d | 2026-08-04 A | 2027-05-13 | RHD4ENSDZ7APPST110, RHD4ENMSST2000, RHD4CZ7L015ST2100 | 85% | 1d | 2027-01-19 | 2027-01-26 | Skilled labor [70.79 h]; Unskilled Labor [70.79 h]; Equipment Opreator [113.26 h]; Excavator-Poclain [70.79 h]; Water Truck [7.08 h]; Dump Truck [35.39 h]; MH (1500mm Diameter) - ST - depth 1.50 - 2.5m [3.25 nr] | 47,404.5 | 40,632.43 | L015 | Z7 | CONS | ST | Excavation | bef |
| RHD4CZ7L015ST3201 |  | Installation of Base for MH 1500 mm - (RD-L-15)-Z7-L015-ST | 7d | 2026-08-29 A | 2027-05-20 | RHD4PRSHLSTAGST1606, RHD4CZ7L015ST3101 | 85% | 2d | 2027-01-27 | 2027-02-03 | Skilled labor [70.79 h]; Unskilled Labor [70.79 h]; Equipment Opreator [28.31 h]; Boom Truck [14.16 h]; Concrete Mixer Truck [14.16 h]; MH (1500mm Diameter) - ST - depth 1.50 - 2.5m [3.25 nr] | 47,404.5 | 33,860.36 | L015 | Z7 | CONS | ST | Installing Base | bef |
| RHD4CZ7L015ST3301 |  | MH Ring and C.Slab works and Backfilling works for MH 1500 mm - (RD-L-15)-Z7-L015-ST | 7d | 2027-05-22 | 2027-05-29 | RHD4PRSHLDOSST1606, RHD4CZ7L015ST3201 |  |  |  |  | Skilled labor [70.79 h]; Unskilled Labor [70.79 h]; Equipment Opreator [49.55 h]; Boom Truck [28.31 h]; Concrete Mixer Truck [21.24 h]; MH (1500mm Diameter) - ST - depth 1.50 - 2.5m [4.55 nr] | 66,366.3 |  | L015 | Z7 | CONS | ST | Installing Rings | bef |
| RHD4CZ7L015ST3401 |  | Steel Cover for MH 1500 mm - (RD-L-15)-Z7-L015-ST | 5d | 2027-05-30 | 2027-06-03 | RHD4PRSHLDOSST1706, RHD4PRSHLSTAGST1706, RHD4CZ7L015ST3301 |  |  |  |  | Skilled labor [47.16 h]; Unskilled Labor [94.4 h]; Equipment Opreator [9.47 h]; Boom Truck [9.47 h]; MH (1500mm Diameter) - ST - depth 1.50 - 2.5m [0.65 nr] | 9,480.9 |  | L015 | Z7 | CONS | ST | Steel Cover | bef |
| RHD4CZ7L015ST3501 |  | Finishing, Benching, Testing works for MH 1500 mm - (RD-L-15)-Z7-L015-ST | 7d | 2027-06-05 | 2027-06-12 | RHD4CZ7L015ST3401 |  |  |  |  | Skilled labor [70.79 h]; Unskilled Labor [141.6 h]; Plumber [70.79 h]; Equipment Opreator [14.16 h]; Water Truck [14.16 h]; MH (1500mm Diameter) - ST - depth 1.50 - 2.5m [1.3 nr] | 18,961.8 |  | L015 | Z7 | CONS | ST | Benching | bef |
|  | 6589 | **RHD4-02-002-L015-(ST)-MH Works - 1200 mm diameter** |  | 2026-08-04 | 2027-05-29 |  |  |  |  |  |  |  |  |  |  |  |  |  |  |
| RHD4CZ7L015ST3100 |  | Excavation and PC Blinding works for MH 1200 mm - (RD-L-15)-Z7-L015-ST | 2d | 2026-08-04 A | 2027-05-19 | RHD4ENSDZ7APPST110, RHD4ENMSST2000, RHD4ENMSST2010, RHD4CZ7L015ST3101 | 50% | 1d | 2027-01-27 | 2027-01-28 | Skilled labor [7.3 h]; Unskilled Labor [7.3 h]; Equipment Opreator [11.65 h]; Excavator-Poclain [7.3 h]; Water Truck [0.8 h]; Dump Truck [3.59 h]; MH (1200mm Diameter) - ST - depth 1.50 - 2.5m [0.5 nr] | 5,161.5 | 2,580.75 | L015 | Z7 | CONS | ST | Excavation | bef |
| RHD4CZ7L015ST3200 |  | Installation of Base for MH 1200 mm - (RD-L-15)-Z7-L015-ST | 2d | 2026-09-12 A | 2027-05-22 | RHD4PRSHLSTAGST1606, RHD4CZ7L015ST3100 | 50% | 2d | 2027-01-30 | 2027-01-31 | Skilled labor [7.3 h]; Unskilled Labor [7.3 h]; Equipment Opreator [2.94 h]; Boom Truck [1.42 h]; Concrete Mixer Truck [1.42 h]; MH (1200mm Diameter) - ST - depth 1.50 - 2.5m [0.5 nr] | 5,161.5 |  | L015 | Z7 | CONS | ST | Installing Base | bef |
| RHD4CZ7L015ST3300 |  | MH Ring and C.Slab works and Backfilling works for MH 1200 mm - (RD-L-15)-Z7-L015-ST | 2d | 2027-05-23 | 2027-05-24 | RHD4PRSHLDOSST1606, RHD4CZ7L015ST3200 |  |  |  |  | Skilled labor [7.3 h]; Unskilled Labor [7.3 h]; Equipment Opreator [5.12 h]; Boom Truck [2.94 h]; Concrete Mixer Truck [2.18 h]; MH (1200mm Diameter) - ST - depth 1.50 - 2.5m [0.7 nr] | 7,226.1 |  | L015 | Z7 | CONS | ST | Installing Rings | bef |
| RHD4CZ7L015ST3400 |  | Steel Cover for MH 1200 mm - (RD-L-15)-Z7-L015-ST | 2d | 2027-05-25 | 2027-05-26 | RHD4PRSHLDOSST1706, RHD4PRSHLSTAGST1706, RHD4CZ7L015ST3300 |  |  |  |  | Skilled labor [7.3 h]; Unskilled Labor [14.48 h]; Equipment Opreator [1.42 h]; Boom Truck [1.42 h]; MH (1200mm Diameter) - ST - depth 1.50 - 2.5m [0.1 nr] | 1,032.3 |  | L015 | Z7 | CONS | ST | Steel Cover | bef |
| RHD4CZ7L015ST3500 |  | Finishing, Benching, Testing works for MH 1200 mm - (RD-L-15)-Z7-L015-ST | 2d | 2027-05-27 | 2027-05-29 | RHD4CZ7L015ST3400 |  |  |  |  | Skilled labor [7.3 h]; Unskilled Labor [14.48 h]; Plumber [7.3 h]; Equipment Opreator [1.42 h]; Water Truck [1.42 h]; MH (1200mm Diameter) - ST - depth 1.50 - 2.5m [0.2 nr] | 2,064.6 |  | L015 | Z7 | CONS | ST | Benching | bef |
|  | 6576 | **RHD4-02-002-L015-(ST)-GRP Pipes - 700 mm diameter** |  | 2026-08-18 | 2027-06-05 |  |  |  |  |  |  |  |  |  |  |  |  |  |  |
| RHD4CZ7L015ST1103 |  | Excavation works for GRP Pipe Line 700 mm - (RD-L-15)-Z7-L015-ST | 2d | 2026-08-18 A | 2027-05-06 | RHD4ENSDZ7APPST110, RHD4CZ7L015ST1104 | 61% | 2d | 2027-01-11 | 2027-01-12 | Skilled labor [15.46 h]; Unskilled Labor [15.46 h]; Equipment Opreator [18.62 h]; Excavator-Poclain [15.46 h]; Dump Truck [3.05 h]; GRP (700mm Diameter) - ST - Depth less than 1.5 m [28.43 m]; GRP (700mm Diameter) - ST - Depth: 1.51m - 2.5m | 15,750.22 |  | L015 | Z7 | CONS | ST | Excavation | bef |
| RHD4CZ7L015ST1203 |  | Bedding works for GRP Pipe Line 700 mm - (RD-L-15)-Z7-L015-ST | 2d | 2026-09-15 A | 2027-05-09 | RHD4CZ7L015ST1103 | 61% | 2d | 2027-01-13 | 2027-01-14 | Skilled labor [15.46 h]; Unskilled Labor [30.93 h]; Equipment Opreator [30.93 h]; Excavator-Poclain [15.46 h]; Dump Truck [15.46 h]; GRP (700mm Diameter) - ST - Depth less than 1.5 m [14.21 m]; GRP (700mm Diameter) - ST - Depth: 1.51m - 2.5m | 7,872.34 |  | L015 | Z7 | CONS | ST | Bedding | bef |
| RHD4CZ7L015ST1303 |  | Installing for GRP Pipe Line 700 mm - (RD-L-15)-Z7-L015-ST | 2d | 2026-09-16 A | 2027-05-31 | RHD4PRSHLSTAGST1006, RHD4CZ7L015ST1203, RHD4CZ7L015ST3301, RHD4PRSHLDOSST1606, RHD4PRSHLPOST1000, RHD4PRSHLDOSST1006, RHD4PRSHLDOSST1605, RHD4PRSHLDOSST1005 | 61% | 2d | 2027-02-13 | 2027-02-14 | Unskilled Labor [15.46 h]; Plumber [7.73 h]; GRP (700mm Diameter) - ST - Depth less than 1.5 m [127.92 m]; GRP (700mm Diameter) - ST - Depth: 1.51m - 2.5m | 70,867.68 |  | L015 | Z7 | CONS | ST | Installation | bef |
| RHD4CZ7L015ST1503 |  | Backfilling and warning tape works for GRP Pipe Line 700 mm - (RD-L-15)-Z7-L015-ST | 2d | 2026-09-17 A | 2027-06-05 | RHD4CZ7L015ST1403, RHD4CZ7L015ST1504, RHD4CZ7L015ST1502 | 61% | 2d | 2027-02-20 | 2027-02-21 | Skilled labor [15.46 h]; Unskilled Labor [30.93 h]; Equipment Opreator [30.93 h]; Excavator-Poclain [15.46 h]; Dump Truck [15.46 h]; GRP (700mm Diameter) - ST - Depth less than 1.5 m [56.85 m]; GRP (700mm Diameter) - ST - Depth: 1.51m - 2.5m | 31,494.9 |  | L015 | Z7 | CONS | ST | Backfilling | bef |
| RHD4CZ7L015ST1403 |  | Primary Test for GRP Pipe Line 700 mm - (RD-L-15)-Z7-L015-ST | 2d | 2027-06-01 | 2027-06-02 | RHD4CZ7L015ST1303 |  |  |  |  | Unskilled Labor [7.73 h]; Plumber [7.73 h]; Equipment Opreator [7.73 h]; Water Truck [7.73 h]; GRP (700mm Diameter) - ST - Depth less than 1.5 m [56.85 m]; GRP (700mm Diameter) - ST - Depth: 1.51m - 2.5m | 31,494.9 |  | L015 | Z7 | CONS | ST | Primary Test | bef |

| ID | WBS | Activity | Duration | Start | Finish | Predecessors | Complete | Remaining | Planned start | Planned finish | Resources | Cost | Actual cost | RDH4-01-001-Road and Block Names-1 | RDH4-01-001-Zones-1 | RDH4-01-001-Phases-1 | RDH4-01-001-Networks-1 | RDH4-01-001-Work Method-1 | RDH4-01-001-MENEM |
| --- | --- | --- | --- | --- | --- | --- | --- | --- | --- | --- | --- | --- | --- | --- | --- | --- | --- | --- | --- |
|  | 6574 | **RHD4-02-002-L015-(ST)-GRP Pipes - 500 mm diameter** |  |  |  |  |  |  |  |  |  |  |  |  |  |  |  |  |  |
|  | 6573 | **RHD4-02-002-L015-(ST)-GRP Pipes - 400 mm diameter** |  |  |  |  |  |  |  |  |  |  |  |  |  |  |  |  |  |
|  | 6587 | **RHD4-02-002-L015-(ST)-UPVC Pipes - 300 mm diameter** |  | 2026-09-19 | 2027-05-29 |  |  |  |  |  |  |  |  |  |  |  |  |  |  |
| RHD4CZ7L015ST2100 |  | Excavation works for UPVC Pipe Line 300 mm - (RD-L-15)-Z7-L015-ST | 3d | 2026-09-19 A | 2027-05-12 | RHD4ENSDZ7APPST110, RHD4CZ7L015ST1102 | 75% | 3d | 2027-01-16 | 2027-01-18 | Skilled labor [22.98 h]; Unskilled Labor [22.98 h]; Equipment Opreator [27.55 h]; Excavator-Poclain [22.98 h]; Dump Truck [4.57 h]; UPVC (300mm Diameter) - ST - Depth less than 1.5 [48.79 m]; UPVC (300mm Diameter) - ST - Depth: 1.51m - 2.5m | 14,783.37 |  | L015 | Z7 | CONS | ST | Excavation | bef |
| RHD4CZ7L015ST2200 |  | Bedding works for UPVC Pipe Line 300 mm - (RD-L-15)-Z7-L015-ST | 2d | 2027-05-13 | 2027-05-19 | RHD4CZ7L015ST2100 |  |  |  |  | Skilled labor [20.47 h]; Unskilled Labor [41.06 h]; Equipment Opreator [41.06 h]; Excavator-Poclain [20.47 h]; Dump Truck [20.47 h]; UPVC (300mm Diameter) - ST - Depth less than 1.5 [24.4 m]; UPVC (300mm Diameter) - ST - Depth: 1.51m - 2.5m | 7,393.2 |  | L015 | Z7 | CONS | ST | Bedding | bef |
| RHD4CZ7L015ST2300 |  | Installing for UPVC Pipe Line 300 mm - (RD-L-15)-Z7-L015-ST | 3d | 2027-05-20 | 2027-05-23 | RHD4PRSHLDOSST1106, RHD4PRSHLSTAGST1106, RHD4CZ7L015ST2200 |  |  |  |  | Unskilled Labor [45.85 h]; Plumber [22.98 h]; UPVC (300mm Diameter) - ST - Depth less than 1.5 [219.58 m]; UPVC (300mm Diameter) - ST - Depth: 1.51m - 2.5m | 66,532.74 |  | L015 | Z7 | CONS | ST | Installation | bef |
| RHD4CZ7L015ST2400 |  | Primary Test for UPVC Pipe Line 300 mm - (RD-L-15)-Z7-L015-ST | 2d | 2027-05-24 | 2027-05-25 | RHD4CZ7L015ST2300 |  |  |  |  | Unskilled Labor [15.68 h]; Plumber [15.68 h]; Equipment Opreator [15.68 h]; Water Truck [15.68 h]; UPVC (300mm Diameter) - ST - Depth less than 1.5 [97.59 m]; UPVC (300mm Diameter) - ST - Depth: 1.51m - 2.5m | 29,569.77 |  | L015 | Z7 | CONS | ST | Primary Test | bef |
| RHD4CZ7L015ST2500 |  | Backfilling and warning tape works for UPVC Pipe Line 300 mm - (RD-L-15)-Z7-L015-ST | 3d | 2027-05-26 | 2027-05-29 | RHD4CZ7L015ST2400, RHD4CZ7L015ST6100 |  |  |  |  | Skilled labor [26.57 h]; Unskilled Labor [53.14 h]; Equipment Opreator [53.14 h]; Excavator-Poclain [26.57 h]; Dump Truck [26.57 h]; UPVC (300mm Diameter) - ST - Depth less than 1.5 [97.59 m]; UPVC (300mm Diameter) - ST - Depth: 1.51m - 2.5m | 29,569.77 |  | L015 | Z7 | CONS | ST | Backfilling | bef |
|  | 6595 | **RHD4-02-002-L015-(ST)-Concrete Encasement** |  | 2027-05-20 | 2027-05-22 |  |  |  |  |  |  |  |  |  |  |  |  |  |  |
| RHD4CZ7L015ST6100 |  | Pipe Encasement for Storm Pipelines - (RD-L-15)-Z7-L015-ST | 2d | 2027-05-20 | 2027-05-22 | RHD4CZ7L015ST2200 |  |  |  |  | Skilled labor [3.27 h]; Unskilled Labor [3.27 h]; Equipment Opreator [3.59 h]; Concrete Mixer Truck [0.33 h]; Dump Truck [3.27 h]; Pipe Encasement - ST [60.69 m3] | 30,709.14 |  | L015 | Z7 | CONS | ST | Pipe Encasement | bef |
|  | 6596 | **RHD4-02-002-Z7-L015-Catch Basin - ST** |  | 2026-09-19 | 2027-06-10 |  |  |  |  |  |  |  |  |  |  |  |  |  |  |
|  | 6597 | **RHD4-02-002-L015-(ST)-Single Catch Basin Works** |  | 2026-09-19 | 2027-06-10 |  |  |  |  |  |  |  |  |  |  |  |  |  |  |
| RHD4CZ7L015ST7100 |  | Excavation works for Single Catch Basin - (RD-L-15)-Z7-L015-ST | 3d | 2026-09-19 A | 2027-05-23 | RHD4ENSDZ7APPST110, RHD4CZ7L015ST3100 | 70% | 3d | 2027-01-30 | 2027-02-01 | Skilled labor [29.4 h]; Unskilled Labor [58.81 h]; Equipment Opreator [44.11 h]; Excavator-Poclain [29.4 h]; Dump Truck [14.7 h]; Single Catch basin - ST [6.75 nr] | 25,184.25 | 17,722.16 | L015 | Z7 | CONS | ST | Excavation | bef |
| RHD4CZ7L015ST7200 |  | PC Blinding, Installation and Pipe connection for Single Catch Basin - (RD-L-15)-Z7-L015-ST | 3d | 2026-10-27 A | 2027-05-26 | RHD4CZ7L015ST7100 | 37% | 3d | 2026-10-27 | 2026-10-29 | Skilled labor [29.4 h]; Unskilled Labor [58.81 h]; Plumber [14.7 h]; Equipment Opreator [5.88 h]; Boom Truck [5.88 h]; Single Catch basin - ST [5.4 nr] | 20,147.4 | 7,462.6 | L015 | Z7 | CONS | ST | Installation & Pipe Connection | bef |
| RHD4CZ7L015ST7300 |  | Rings & C.Slab & Final Backfill for Single Catch Basin - (RD-L-15)-Z7-L015-ST | 4d | 2026-10-29 A | 2027-05-31 | RHD4PRSHLDOSST1306, RHD4PRSHLSTAGST1306, RHD4CZ7L015ST7200 | 4% | 4d | 2026-10-29 | 2026-11-02 | Skilled labor [36.8 h]; Unskilled Labor [73.51 h]; Equipment Opreator [44.11 h]; Boom Truck [7.41 h]; Bobcat [36.8 h]; Single Catch basin - ST [9.45 nr] | 35,257.95 | 1,304.54 | L015 | Z7 | CONS | ST | Rings | bef |
| RHD4CZ7L015ST7400 |  | Steel Cover for Single Catch Basin - (RD-L-15)-Z7-L015-ST | 3d | 2027-06-01 | 2027-06-03 | RHD4PRSHLDOSST1706, RHD4CZ7L015ST7300 |  |  |  |  | Skilled labor [29.4 h]; Unskilled Labor [29.4 h]; Equipment Opreator [5.88 h]; Boom Truck [5.88 h]; Single Catch basin - ST [1.35 nr] | 5,036.85 |  | L015 | Z7 | CONS | ST | Steel Cover | bef |
| RHD4CZ7L015ST7500 |  | Finishing and Insulation works for Single Catch Basin - (RD-L-15)-Z7-L015-ST | 6d | 2027-06-05 | 2027-06-10 | RHD4CZ7L015ST7400 |  |  |  |  | Skilled labor [58.81 h]; Unskilled Labor [117.6 h]; Equipment Opreator [11.76 h]; Boom Truck [11.76 h]; Single Catch basin - ST [4.05 nr] | 15,110.55 |  | L015 | Z7 | CONS | ST | Insulation | bef |
|  | 6621 | **RHD4-02-002-Z7-L015-Sewage Network - SW** |  | 2026-08-09 | 2027-07-18 |  |  |  |  |  |  |  |  |  |  |  |  |  |  |
|  | 6627 | **RHD4-02-002-L015-(SW)-UPVC Pipes - 200 mm diameter** |  | 2026-08-12 | 2027-06-14 |  |  |  |  |  |  |  |  |  |  |  |  |  |  |
| RHD4CZ7L015SW2100 |  | Excavation works for UPVC Pipe Line 200 mm - (RD-L-15)-Z7-L015-SW | 4d | 2026-08-12 A | 2026-09-15 A | RHD4ENSDZ7APPSW120, RHD4CZ7L015ST7500, RHD4CZ7L015ST1503 | 100% |  | 2027-02-23 | 2027-02-27 | Skilled labor [43.34 h]; Unskilled Labor [43.34 h]; Equipment Opreator [51.95 h]; Excavator-Poclain [43.34 h]; Dump Truck [8.71 h]; UPVC (200mm Diameter) - SW - Depth: less than 1.5m [78.74 m]; UPVC (200mm Diameter) - SW - Depth: 1.51m - 2.5m [8.75 m] | 16,071.95 | 16,071.95 | L015 | Z7 | CONS | SW | Excavation | bef |
| RHD4CZ7L015SW2200 |  | Bedding works for UPVC Pipe Line 200 mm - (RD-L-15)-Z7-L015-SW | 4d | 2026-08-13 A | 2026-09-16 A | RHD4CZ7L015SW2100 | 100% |  | 2027-02-28 | 2027-03-03 | Skilled labor [41.49 h]; Unskilled Labor [82.88 h]; Equipment Opreator [82.88 h]; Excavator-Poclain [41.49 h]; Dump Truck [41.49 h]; UPVC (200mm Diameter) - SW - Depth: less than 1.5m [39.37 m]; UPVC (200mm Diameter) - SW - Depth: 1.51m - 2.5m [2.92 m] | 7,720.24 | 7,720.24 | L015 | Z7 | CONS | SW | Bedding | bef |
| RHD4CZ7L015SW2300 |  | Installing for UPVC Pipe Line 200 mm - (RD-L-15)-Z7-L015-SW | 5d | 2026-08-15 A | 2026-09-17 A | RHD4PRSHLSTAGSW1006, RHD4CZ7L015SW2200, RHD4PRSHLPOSW1000, RHD4PRSHLDOSSW1006, RHD4PRSHLDOSSW1306, RHD4PRSHLPOSW1100, RHD4PRSHLDOSSW1106, RHD4PRSHLDOSSW1004, RHD4PRSHLDOSSW1304, RHD4PRSHLDOSSW1104 | 100% |  | 2027-03-04 | 2027-03-13 | Unskilled Labor [101.28 h]; Plumber [50.64 h]; Equipment Opreator [50.64 h]; Boom Truck [50.64 h]; UPVC (200mm Diameter) - SW - Depth: less than 1.5m [354.35 m]; UPVC (200mm Diameter) - SW - Depth: 1.51m - 2.5m [23.34 m] | 68,847.78 | 68,847.78 | L015 | Z7 | CONS | SW | Installation | bef |
| RHD4CZ7L015SW2500 |  | Backfilling and warning tape works for UPVC Pipe Line 200 mm - (RD-L-15)-Z7-L015-SW | 5d | 2026-10-27 A | 2026-11-01 A | RHD4CZ7L015SW2400, RHD4CZ7L015ST1502 | 100% |  |  |  | Skilled labor [46.07 h]; Unskilled Labor [92.13 h]; Equipment Opreator [92.13 h]; Excavator-Poclain [46.07 h]; Dump Truck [46.07 h]; UPVC (200mm Diameter) - SW - Depth: less than 1.5m [157.49 m]; UPVC (200mm Diameter) - SW - Depth: 1.51m - 2.5m [11.67 m] | 30,880.59 | 30,880.59 | L015 | Z7 | CONS | SW | Backfilling | bef |
| RHD4CZ7L015SW2400 |  | Primary Test for UPVC Pipe Line 200 mm - (RD-L-15)-Z7-L015-SW | 3d | 2026-10-31 A | 2027-06-14 | RHD4CZ7L015SW2300 | 21% | 3d | 2026-10-31 | 2026-11-02 | Unskilled Labor [27.01 h]; Plumber [27.01 h]; Equipment Opreator [27.01 h]; Water Truck [27.01 h]; UPVC (200mm Diameter) - SW - Depth: less than 1.5m [157.49 m]; UPVC (200mm Diameter) - SW - Depth: 1.51m - 2.5m [11.67 m] | 30,880.59 | 6,480 | L015 | Z7 | CONS | SW | Primary Test | bef |

| ID | WBS | Activity | Duration | Start | Finish | Predecessors | Complete | Planned start | Planned finish | Resources | Cost | Actual cost | RDH4-01-001-Road and Block Names-1 | RDH4-01-001-Zones-1 | RDH4-01-001-Phases-1 | RDH4-01-001-Networks-1 | RDH4-01-001-Work Method-1 | RDH4-01-001-MENEM |
| --- | --- | --- | --- | --- | --- | --- | --- | --- | --- | --- | --- | --- | --- | --- | --- | --- | --- | --- |
|  | 6631 | **RHD4-02-002-L015-(SW)-MH Works - 1200 mm diameter** |  | 2026-08-09 | 2027-07-18 |  |  |  |  |  |  |  |  |  |  |  |  |  |
| RHD4CZ7L015SW3100 |  | Excavation and PC Blinding works for MH 1200 mm - (RD-L-15)-Z7-L015-SW | 11d | 2026-08-09 A | 2026-09-22 A | RHD4ENSDZ7APPSW120, RHD4CZ7L015SW2100 | 100% | 2027-02-28 | 2027-03-15 | Skilled labor [114.35 h]; Unskilled Labor [114.35 h]; Equipment Opreator [182.96 h]; Excavator-Poclain [114.35 h]; Water Truck [11.43 h]; Dump Truck [57.17 h]; MH (1200mm Diameter) - SW - depth 0 - 1.5m [1.5 nr]; MH (1200mm Diameter) - SW - depth 1.51 - 2.5m [4.25 nr] | 53,248 | 53,248 | L015 | Z7 | CONS | SW | Excavation | bef |
| RHD4CZ7L015SW3200 |  | Installation of Base for MH 1200 mm - (RD-L-15)-Z7-L015-SW | 12d | 2026-08-10 A | 2026-10-20 A | RHD4CZ7L015SW3100 | 100% | 2027-03-16 | 2027-03-29 | Skilled labor [125.24 h]; Unskilled Labor [125.24 h]; Equipment Opreator [50.1 h]; Boom Truck [25.05 h]; Concrete Mixer Truck [25.05 h]; MH (1200mm Diameter) - SW - depth 0 - 1.5m [1.5 nr]; MH (1200mm Diameter) - SW - depth 1.51 - 2.5m [4.25 nr] | 53,248 | 53,248 | L015 | Z7 | CONS | SW | Installing Base | bef |
| RHD4CZ7L015SW3300 |  | MH Ring and C.Slab works and Backfilling works for MH 1200 mm - (RD-L-15)-Z7-L015-SW | 12d | 2027-06-12 | 2027-06-24 | RHD4PRSHLDOSSW1306, RHD4PRSHLSTAGSW1306, RHD4CZ7L015SW3200 |  |  |  | Skilled labor [125.24 h]; Unskilled Labor [125.24 h]; Equipment Opreator [87.67 h]; Boom Truck [50.1 h]; Concrete Mixer Truck [37.6 h]; MH (1200mm Diameter) - SW - depth 0 - 1.5m [2.1 nr]; MH (1200mm Diameter) - SW - depth 1.51 - 2.5m [5.95 nr] | 74,547.2 |  | L015 | Z7 | CONS | SW | Installing Rings | bef |
| RHD4CZ7L015SW3400 |  | Steel Cover for MH 1200 mm - (RD-L-15)-Z7-L015-SW | 8d | 2027-06-26 | 2027-07-04 | RHD4PRSHLDOSSW1406, RHD4PRSHLSTAGSW1406, RHD4CZ7L015SW3300 |  |  |  | Skilled labor [83.53 h]; Unskilled Labor [166.95 h]; Equipment Opreator [16.66 h]; Boom Truck [16.66 h]; MH (1200mm Diameter) - SW - depth 0 - 1.5m [0.3 nr]; MH (1200mm Diameter) - SW - depth 1.51 - 2.5m [0.85 nr] | 10,649.6 |  | L015 | Z7 | CONS | SW | Steel Cover | bef |
| RHD4CZ7L015SW3500 |  | Finishing, Benching, Testing works for MH 1200 mm - (RD-L-15)-Z7-L015-SW | 12d | 2027-07-05 | 2027-07-18 | RHD4CZ7L015SW3400 |  |  |  | Skilled labor [125.24 h]; Unskilled Labor [250.48 h]; Plumber [125.24 h]; Equipment Opreator [25.05 h]; Water Truck [25.05 h]; MH (1200mm Diameter) - SW - depth 0 - 1.5m [0.6 nr]; MH (1200mm Diameter) - SW - depth 1.51 - 2.5m [1.7 nr] | 21,299.2 |  | L015 | Z7 | CONS | SW | Benching | bef |
|  | 6658 | **RHD4-02-002-Z7-L015-Potable Network - PT** |  | 2027-06-15 | 2027-10-07 |  |  |  |  |  |  |  |  |  |  |  |  |  |
|  | 6659 | **RHD4-02-002-L015-(PT)-HDPE Pipes - 110 mm diameter** |  | 2027-06-20 | 2027-09-05 |  |  |  |  |  |  |  |  |  |  |  |  |  |
| RHD4CZ7L015PT1100 |  | Excavation works for HDPE Pipline 110 mm - (RD-L-15)-Z7-L015-PT | 2d | 2027-06-20 | 2027-06-21 | RHD4ENSDZ7APPPT130, RHD4ENMSPT2000, RHD4CZ7L015PT1101 |  |  |  | Skilled labor [1.42 h]; Unskilled Labor [1.42 h]; Equipment Opreator [1.6 h]; Excavator-Poclain [1.42 h]; Dump Truck [0.33 h]; HDPE (110mm Diameter) - PT - Depth: less than 1.5m [3.14 m] | 266.9 |  | L015 | Z7 | CONS | PT | Excavation | bef |
| RHD4CZ7L015PT1200 |  | Bedding works for HDPE Pipline 110 mm - (RD-L-15)-Z7-L015-PT | 2d | 2027-06-23 | 2027-06-24 | RHD4CZ7L015PT1100, RHD4CZ7L015PT1201 |  |  |  | Skilled labor [1.09 h]; Unskilled Labor [2.29 h]; Equipment Opreator [2.29 h]; Excavator-Poclain [1.09 h]; Dump Truck [1.09 h]; HDPE (110mm Diameter) - PT - Depth: less than 1.5m [1.57 m] | 133.45 |  | L015 | Z7 | CONS | PT | Bedding | bef |
| RHD4CZ7L015PT1300 |  | Installing for HDPE Pipline 110 mm - (RD-L-15)-Z7-L015-PT | 2d | 2027-06-30 | 2027-07-01 | RHD4PRSHLDOSPT1000, RHD4PRSHLSTAGPT1000, RHD4CZ7L015PT1200, RHD4CZ7L015PT1301 |  |  |  | Unskilled Labor [4.57 h]; Plumber [2.29 h]; Equipment Opreator [2.29 h]; Boom Truck [2.29 h]; HDPE (110mm Diameter) - PT - Depth: less than 1.5m [14.13 m] | 1,201.05 |  | L015 | Z7 | CONS | PT | Installation | bef |
| RHD4CZ7L015PT1400 |  | Primary Test for HDPE Pipline 110 mm - (RD-L-15)-Z7-L015-PT | 2d | 2027-08-30 | 2027-08-31 | RHD4CZ7L015PT1300, RHD4CZ7L015PT1401, RHD4CZ7L015PT5100 |  |  |  | Unskilled Labor [0.65 h]; Plumber [0.65 h]; Equipment Opreator [0.65 h]; Water Truck [0.65 h]; HDPE (110mm Diameter) - PT - Depth: less than 1.5m [6.28 m] | 533.8 |  | L015 | Z7 | CONS | PT | Primary Test | bef |
| RHD4CZ7L015PT1500 |  | Backfilling and warning tape works for HDPE Pipline 110 mm - (RD-L-15)-Z7-L015-PT | 2d | 2027-09-04 | 2027-09-05 | RHD4CZ7L015PT1400, RHD4CZ7L015PT1501 |  |  |  | Skilled labor [1.74 h]; Unskilled Labor [3.38 h]; Equipment Opreator [3.38 h]; Excavator-Poclain [1.74 h]; Dump Truck [1.74 h]; HDPE (110mm Diameter) - PT - Depth: less than 1.5m [6.28 m] | 533.8 |  | L015 | Z7 | CONS | PT | Backfilling | bef |
|  | 6660 | **RHD4-02-002-L015-(PT)-HDPE Pipes - 160 mm diameter** |  | 2027-06-15 | 2027-09-02 |  |  |  |  |  |  |  |  |  |  |  |  |  |
| RHD4CZ7L015PT1101 |  | Excavation works for HDPE Pipline 160 mm - (RD-L-15)-Z7-L015-PT | 4d | 2027-06-15 | 2027-06-19 | RHD4ENSDZ7APPPT130, RHD4ENMSPT2000, RHD4CZ7L015SW2400 |  |  |  | Skilled labor [33.65 h]; Unskilled Labor [33.65 h]; Equipment Opreator [40.4 h]; Excavator-Poclain [33.65 h]; Dump Truck [6.75 h]; HDPE (160mm Diameter) - PT - Depth: less than 1.5m [77.36 m] | 8,277.41 |  | L015 | Z7 | CONS | PT | Excavation | bef |
| RHD4CZ7L015PT1201 |  | Bedding works for HDPE Pipline 160 mm - (RD-L-15)-Z7-L015-PT | 3d | 2027-06-20 | 2027-06-22 | RHD4CZ7L015PT1101 |  |  |  | Skilled labor [28.1 h]; Unskilled Labor [56.19 h]; Equipment Opreator [56.19 h]; Excavator-Poclain [28.1 h]; Dump Truck [28.1 h]; HDPE (160mm Diameter) - PT - Depth: less than 1.5m [38.68 m] | 4,138.71 |  | L015 | Z7 | CONS | PT | Bedding | bef |
| RHD4CZ7L015PT1301 |  | Installing for HDPE Pipline 160 mm - (RD-L-15)-Z7-L015-PT | 6d | 2027-06-23 | 2027-06-29 | RHD4PRSHLDOSPT1000, RHD4PRSHLSTAGPT1000, RHD4CZ7L015PT1201 |  |  |  | Unskilled Labor [112.28 h]; Plumber [56.19 h]; Equipment Opreator [56.19 h]; Boom Truck [56.19 h]; HDPE (160mm Diameter) - PT - Depth: less than 1.5m [348.12 m] | 37,248.36 |  | L015 | Z7 | CONS | PT | Installation | bef |
| RHD4CZ7L015PT1401 |  | Primary Test for HDPE Pipline 160 mm - (RD-L-15)-Z7-L015-PT | 2d | 2027-08-28 | 2027-08-29 | RHD4CZ9L02PT4500, RHD4CZ7L015PT1301, RHD4CZ7L015PT5100 |  |  |  | Unskilled Labor [16.88 h]; Plumber [16.88 h]; Equipment Opreator [16.88 h]; Water Truck [16.88 h]; HDPE (160mm Diameter) - PT - Depth: less than 1.5m [154.72 m] | 16,554.83 |  | L015 | Z7 | CONS | PT | Primary Test | bef |
| RHD4CZ7L015PT1501 |  | Backfilling and warning tape works for HDPE Pipline 160 mm - (RD-L-15)-Z7-L015-PT | 4d | 2027-08-30 | 2027-09-02 | RHD4CZ7L015PT1401 |  |  |  | Skilled labor [42.15 h]; Unskilled Labor [84.29 h]; Equipment Opreator [84.29 h]; Excavator-Poclain [42.15 h]; Dump Truck [42.15 h]; HDPE (160mm Diameter) - PT - Depth: less than 1.5m [154.72 m] | 16,554.83 |  | L015 | Z7 | CONS | PT | Backfilling | bef |
|  | 6664 | **RHD4-02-002-L015-(PT)-Gate Valves (Direct Buried)** |  | 2027-06-30 | 2027-09-07 |  |  |  |  |  |  |  |  |  |  |  |  |  |
| RHD4CZ7L015PT3100 |  | Installation for Direct Buried Gate Valves - (RD-L-15)-Z7-L015-PT | 2d | 2027-06-30 | 2027-07-01 | RHD4PRSHLDOSPT1200, RHD4PRSHLSTAGPT1200, RHD4CZ7L015PT1301 FF, RHD4CZ7L015PT1300 FF, RHD4CZ7L015PT1301 SS, RHD4CZ7L015PT1300 SS |  |  |  | Unskilled Labor [16.34 h]; Plumber [16.34 h]; Gate valves dia 100 mm - PT [0.9 nr]; Gate valves dia 150 mm - PT [1.8 nr] | 3,842.1 |  | L015 | Z7 | CONS | PT | Installation | bef |
| RHD4CZ7L015PT3200 |  | Stem and Service box for Direct Buried Gate Valves - (RD-L-15)-Z7-L015-PT | 2d | 2027-09-06 | 2027-09-07 | RHD4PRSHLDOSPT1300, RHD4PRSHLSTAGPT1300, RHD4CZ7L015PT3100, RHD4CZ7L015PT1501, RHD4CZ7L015PT1500 |  |  |  | Unskilled Labor [16.34 h]; Plumber [16.34 h]; Gate valves dia 100 mm - PT [0.1 nr]; Gate valves dia 150 mm - PT [0.2 nr] | 426.9 |  | L015 | Z7 | CONS | PT | Stem and Service box | bef |
|  | 6667 | **RHD4-02-002-L015-(PT)-Wash out Valve Chambers** |  | 2027-09-04 | 2027-09-12 |  |  |  |  |  |  |  |  |  |  |  |  |  |
| RHD4CZ7L015PT2101 |  | Excavation and Bedding for Wash out Valve Chambers for Potable Water Network - (RD-L-15)-Z7-L015-PT | 2d | 2027-09-04 | 2027-09-05 | RHD4ENSDZ7APPPT130, RHD4CZ7L015PT1501 |  |  |  | Skilled labor [5.45 h]; Unskilled Labor [5.45 h]; Equipment Opreator [1.09 h]; Excavator-Poclain [0.54 h]; Dump Truck [0.54 h]; Wash out chambers - PT [0.25 nr] | 4,686.25 |  | L015 | Z7 | CONS | PT | Excavation and Bedding | bef |
| RHD4CZ7L015PT2201 |  | PC works for Wash out Valve Chambers for Potable Water Network - (RD-L-15)-Z7-L015-PT | 2d | 2027-09-06 | 2027-09-07 | RHD4CZ7L015PT2101 |  |  |  | Skilled labor [5.45 h]; Unskilled Labor [10.89 h]; Equipment Opreator [0.54 h]; Concrete Pump [0.54 h]; Wash out chambers - PT [0.1 nr] | 1,874.5 |  | L015 | Z7 | CONS | PT | PC Works | bef |
| RHD4CZ7L015PT2301 |  | Installation for Wash out Valve Chambers for Potable Water Network - (RD-L-15)-Z7-L015-PT | 2d | 2027-09-08 | 2027-09-09 | RHD4PRSHLDOSPT1100, RHD4PRSHLDOSPT1400, RHD4PRSHLSTAGPT1100, RHD4PRSHLSTAGPT1400, RHD4CZ7L015PT2201 |  |  |  | Skilled labor [5.45 h]; Unskilled Labor [10.89 h]; Equipment Opreator [1.09 h]; Boom Truck [1.09 h]; Wash out chambers - PT [0.55 nr] | 10,309.75 |  | L015 | Z7 | CONS | PT | Installation | bef |
| RHD4CZ7L015PT2401 |  | Backfilling works for Wash out Valve Chambers for Potable Water Network - (RD-L-15)-Z7-L015-PT | 2d | 2027-09-11 | 2027-09-12 | RHD4CZ7L015PT2301 |  |  |  | Skilled labor [5.45 h]; Unskilled Labor [10.89 h]; Equipment Opreator [1.09 h]; Water Truck [0.54 h]; Dump Truck [0.54 h]; Wash out chambers - PT [0.1 nr] | 1,874.5 |  | L015 | Z7 | CONS | PT | Backfilling Works | bef |

| ID | WBS | Activity | Duration | Start | Finish | Predecessors | Resources | Cost | RDH4-01-001-Road and Block Names-1 | RDH4-01-001-Zones-1 | RDH4-01-001-Phases-1 | RDH4-01-001-Networks-1 | RDH4-01-001-Work Method-1 | RDH4-01-001-MENEM |
| --- | --- | --- | --- | --- | --- | --- | --- | --- | --- | --- | --- | --- | --- | --- |
|  | 6668 | **RHD4-02-002-L015-(PT)-Wash out Valves** |  | 2027-09-11 | 2027-09-14 |  |  |  |  |  |  |  |  |  |
| RHD4CZ7L015PT3102 |  | Installation for Wash out Valves for Potable Water Network - (RD-L-15)-Z7-L015-PT | 2d | 2027-09-11 | 2027-09-12 | RHD4PRSHLDOSPT1200, RHD4PRSHLSTAGPT1200, RHD4CZ7L015PT2301 | Unskilled Labor [5.45 h]; Plumber [5.45 h]; Wash out valve diameter 100 mm - PT [0.9 nr] | 3,373.2 | L015 | Z7 | CONS | PT | Installation | bef |
| RHD4CZ7L015PT3202 |  | Stem and Service box for Wash out Valves for Potable Water Network - (RD-L-15)-Z7-L015-PT | 2d | 2027-09-13 | 2027-09-14 | RHD4PRSHLDOSPT1300, RHD4PRSHLSTAGPT1300, RHD4CZ7L015PT3102, RHD4CZ7L015PT2401 | Unskilled Labor [5.45 h]; Plumber [5.45 h]; Wash out valve diameter 100 mm - PT [0.1 nr] | 374.8 | L015 | Z7 | CONS | PT | Stem and Service box | bef |
|  | 6671 | **RHD4-02-002-L015-(PT)-Fire Hydrant** |  | 2027-09-15 | 2027-10-07 |  |  |  |  |  |  |  |  |  |
| RHD4CZ7L015PT4100 |  | Excavation and Bedding and Pipe Installation for Fire Hydrant - (RD-L-15)-Z7-L015-PT | 5d | 2027-09-15 | 2027-09-20 | RHD4ENSDZ7APPPT130, RHD4CZ7L015PT3202, RHD4CZ7L015PT1501, RHD4CZ7L015PT1500 | Skilled labor [54.45 h]; Unskilled Labor [54.45 h]; Plumber [54.45 h]; Equipment Opreator [27.2 h]; Excavator-Poclain [27.2 h]; 3-outlet fire hydrant (2 x 2.5 inch and 1 x 4.5 inch) in the form of a separate dry vacuum cylinder [1 nr] | 12,620 | L015 | Z7 | CONS | PT | Excavation | bef |
| RHD4CZ7L015PT4200 |  | Valve Installation for Fire Hydrant - (RD-L-15)-Z7-L015-PT | 4d | 2027-09-21 | 2027-09-26 | RHD4CZ7L015PT4100 | Unskilled Labor [36.26 h]; Plumber [36.26 h]; 3-outlet fire hydrant (2 x 2.5 inch and 1 x 4.5 inch) in the form of a separate dry vacuum cylinder [2 nr] | 25,240 | L015 | Z7 | CONS | PT | Valve | bef |
| RHD4CZ7L015PT4300 |  | Stem for Fire Hydrant - (RD-L-15)-Z7-L015-PT | 4d | 2027-09-27 | 2027-09-30 | RHD4CZ7L015PT4200 | Unskilled Labor [36.26 h]; Plumber [36.26 h]; 3-outlet fire hydrant (2 x 2.5 inch and 1 x 4.5 inch) in the form of a separate dry vacuum cylinder [3 nr] | 37,860 | L015 | Z7 | CONS | PT | Stem | bef |
| RHD4CZ7L015PT4400 |  | Fire Installation for Fire Hydrant - (RD-L-15)-Z7-L015-PT | 4d | 2027-10-02 | 2027-10-05 | RHD4PRSHLDOSPT1500, RHD4PRSHLSTAGPT1500, RHD4CZ7L015PT4300 | Unskilled Labor [36.26 h]; Plumber [36.26 h]; Equipment Opreator [36.26 h]; Boom Truck [36.26 h]; 3-outlet fire hydrant (2 x 2.5 inch and 1 x 4.5 inch) in the form of a separate dry vacuum cylinder [3.5 nr] | 44,170 | L015 | Z7 | CONS | PT | Fire | bef |
| RHD4CZ7L015PT4500 |  | Protection Barriers for Fire Hydrant - (RD-L-15)-Z7-L015-PT | 2d | 2027-10-06 | 2027-10-07 | RHD4CZ7L015PT4400 | Unskilled Labor [21.78 h]; Plumber [21.78 h]; 3-outlet fire hydrant (2 x 2.5 inch and 1 x 4.5 inch) in the form of a separate dry vacuum cylinder [0.5 nr] | 6,310 | L015 | Z7 | CONS | PT | Protection Barriers | bef |
|  | 6672 | **RHD4-02-002-L015-(PT)-Concrete Encasement** |  | 2027-06-30 | 2027-07-05 |  |  |  |  |  |  |  |  |  |
| RHD4CZ7L015PT5100 |  | Pipe Encasement for Potable Pipelines - (RD-L-15)-Z7-L015-PT | 5d | 2027-06-30 | 2027-07-05 | RHD4CZ7L015PT1301 FF, RHD4CZ7L015PT1300 FF, RHD4CZ7L015PT1301 SS, RHD4CZ7L015PT1300 SS, RHD4CZ7L015PT1201, RHD4CZ7L015PT1200 | Skilled labor [53.14 h]; Unskilled Labor [53.14 h]; Equipment Opreator [58.48 h]; Concrete Mixer Truck [5.34 h]; Dump Truck [53.14 h]; Pipe Encasement - PT [24.39 m3] | 29,902.14 | L015 | Z7 | CONS | PT | Pipe Encasement | bef |
|  | 6673 | **RHD4-02-002-Z7-L015-Irrigation Network - IRR** |  | 2027-06-22 | 2027-11-16 |  |  |  |  |  |  |  |  |  |
|  | 6674 | **RHD4-02-002-L015-(IRR)-HDPE Pipes - 160 mm diameter** |  | 2027-06-22 | 2027-07-19 |  |  |  |  |  |  |  |  |  |
| RHD4CZ7L015IRR1100 |  | Excavation works for HDPE Pipline 160 mm - (RD-L-15)-Z7-L015-IRR | 6d | 2027-06-22 | 2027-06-28 | RHD4ENSDZ7APPIRR140, RHD4ENMSRR2000, RHD4CZ7L015PT1101, RHD4CZ7L015PT1100 | Skilled labor [60.55 h]; Unskilled Labor [60.55 h]; Equipment Opreator [72.64 h]; Excavator-Poclain [60.55 h]; Dump Truck [12.09 h]; HDPE (160mm Diameter) - TSE - Depth: less than 1.5m [71.78 m]; HDPE (160mm Diameter) - TSE - Depth: more than 1.51m [17.35 m] | 11,448.18 | L015 | Z7 | CONS | IRR | Excavation | bef |
| RHD4CZ7L015IRR1200 |  | Bedding works for HDPE Pipline 160 mm - (RD-L-15)-Z7-L015-IRR | 5d | 2027-06-29 | 2027-07-04 | RHD4CZ7L015IRR1100 | Skilled labor [47.48 h]; Unskilled Labor [94.96 h]; Equipment Opreator [94.96 h]; Excavator-Poclain [47.48 h]; Dump Truck [47.48 h]; HDPE (160mm Diameter) - TSE - Depth: less than 1.5m [35.89 m]; HDPE (160mm Diameter) - TSE - Depth: more than 1.51m [5.78 m] | 5,286.94 | L015 | Z7 | CONS | IRR | Bedding | bef |
| RHD4CZ7L015IRR1300 |  | Installing for HDPE Pipline 160 mm - (RD-L-15)-Z7-L015-IRR | 6d | 2027-07-05 | 2027-07-11 | RHD4PRSHLDOSIRR1000, RHD4PRSHLSTAGIRR1000, RHD4CZ7L015IRR1200 | Unskilled Labor [120.99 h]; Plumber [60.55 h]; Equipment Opreator [60.55 h]; Boom Truck [60.55 h]; HDPE (160mm Diameter) - TSE - Depth: less than 1.5m [322.99 m]; HDPE (160mm Diameter) - TSE - Depth: more than 1.51m [46.28 m] | 46,715.74 | L015 | Z7 | CONS | IRR | Installation | bef |
| RHD4CZ7L015IRR1400 |  | Primary Test for HDPE Pipline 160 mm - (RD-L-15)-Z7-L015-IRR | 2d | 2027-07-12 | 2027-07-13 | RHD4CZ7L015IRR1300 | Unskilled Labor [19.82 h]; Plumber [19.82 h]; Equipment Opreator [19.82 h]; Water Truck [19.82 h]; HDPE (160mm Diameter) - TSE - Depth: less than 1.5m [143.55 m]; HDPE (160mm Diameter) - TSE - Depth: more than 1.51m [23.14 m] | 21,150.79 | L015 | Z7 | CONS | IRR | Primary Test | bef |
| RHD4CZ7L015IRR1500 |  | Backfilling and warning tape works for HDPE Pipline 160 mm - (RD-L-15)-Z7-L015-IRR | 5d | 2027-07-14 | 2027-07-19 | RHD4CZ7L015IRR1400 | Skilled labor [47.48 h]; Unskilled Labor [94.96 h]; Equipment Opreator [94.96 h]; Excavator-Poclain [47.48 h]; Dump Truck [47.48 h]; HDPE (160mm Diameter) - TSE - Depth: less than 1.5m [143.55 m]; HDPE (160mm Diameter) - TSE - Depth: more than 1.51m [23.14 m] | 21,150.79 | L015 | Z7 | CONS | IRR | Backfilling | bef |
|  | 6680 | **RHD4-02-002-L015-(IRR)-HDPE Pipes - 450 mm diameter** |  |  |  |  |  |  |  |  |  |  |  |  |
|  | 6682 | **RHD4-02-002-L015-(IRR)-Gate Valves (Direct Buried)** |  | 2027-07-10 | 2027-07-21 |  |  |  |  |  |  |  |  |  |
| RHD4CZ7L015IRR3100 |  | Installation for Direct Buried Gate Valves - (RD-L-15)-Z7-L015-IRR | 2d | 2027-07-10 | 2027-07-11 | RHD4PRSHLDOSIRR1100, RHD4PRSHLSTAGIRR1100, RHD4CZ7L015IRR1300 SS, RHD4CZ7L015IRR1300 FF | Unskilled Labor [21.78 h]; Plumber [21.78 h]; Gate valves dia 100 mm - TSE [3.6 nr] | 5,688 | L015 | Z7 | CONS | IRR | Installation | bef |
| RHD4CZ7L015IRR3200 |  | Stem and Service box for Direct Buried Gate Valves - (RD-L-15)-Z7-L015-IRR | 2d | 2027-07-20 | 2027-07-21 | RHD4PRSHLDOSIRR1300, RHD4PRSHLSTAGIRR1300, RHD4CZ7L015IRR3100, RHD4CZ7L015IRR1500 | Unskilled Labor [21.78 h]; Plumber [21.78 h]; Gate valves dia 100 mm - TSE [0.4 nr] | 632 | L015 | Z7 | CONS | IRR | Stem and Service box | bef |
|  | 6685 | **RHD4-02-002-L015-(IRR)-Wash out Chamber** |  | 2027-07-20 | 2027-07-28 |  |  |  |  |  |  |  |  |  |
| RHD4CZ7L015IRR2101 |  | Excavation and Bedding for Wash out Chamber for Irrigation Network - (RD-L-15)-Z7-L015-IRR | 2d | 2027-07-20 | 2027-07-21 | RHD4ENSDZ7APPIRR140, RHD4CZ7L015IRR1500 | Skilled labor [5.45 h]; Unskilled Labor [5.45 h]; Equipment Opreator [1.09 h]; Excavator-Poclain [0.54 h]; Dump Truck [0.54 h]; Wash out chambers - TSE [0.25 nr] | 4,686.25 | L015 | Z7 | CONS | IRR | Excavation and Bedding | bef |
| RHD4CZ7L015IRR2201 |  | PC works for Wash out Chamber for Irrigation Network - (RD-L-15)-Z7-L015-IRR | 2d | 2027-07-22 | 2027-07-24 | RHD4CZ7L015IRR2101 | Skilled labor [5.45 h]; Unskilled Labor [10.89 h]; Equipment Opreator [0.54 h]; Concrete Pump [0.54 h]; Wash out chambers - TSE [0.1 nr] | 1,874.5 | L015 | Z7 | CONS | IRR | PC Works | bef |
| RHD4CZ7L015IRR2301 |  | Installation for Wash out Chamber for Irrigation Network - (RD-L-15)-Z7-L015-IRR | 2d | 2027-07-25 | 2027-07-26 | RHD4PRSHLDOSIRR1200, RHD4PRSHLDOSIRR1400, RHD4PRSHLSTAGIRR1200, RHD4PRSHLSTAGIRR1400, RHD4CZ7L015IRR2201 | Skilled labor [5.45 h]; Unskilled Labor [10.89 h]; Equipment Opreator [1.09 h]; Boom Truck [1.09 h]; Wash out chambers - TSE [0.55 nr] | 10,309.75 | L015 | Z7 | CONS | IRR | Installation | bef |
| RHD4CZ7L015IRR2401 |  | Backfilling works for Wash out Chamber for Irrigation Network - (RD-L-15)-Z7-L015-IRR | 2d | 2027-07-27 | 2027-07-28 | RHD4CZ7L015IRR2301 | Skilled labor [5.45 h]; Unskilled Labor [10.89 h]; Equipment Opreator [1.09 h]; Water Truck [0.54 h]; Dump Truck [0.54 h]; Wash out chambers - TSE [0.1 nr] | 1,874.5 | L015 | Z7 | CONS | IRR | Backfilling Works | bef |

| ID | WBS | Activity | Duration | Start | Finish | Predecessors | Resources | Cost | RDH4-01-001-Road and Block Names-1 | RDH4-01-001-Zones-1 | RDH4-01-001-Phases-1 | RDH4-01-001-Networks-1 | RDH4-01-001-Work Method-1 | RDH4-01-001-MENEM |
| --- | --- | --- | --- | --- | --- | --- | --- | --- | --- | --- | --- | --- | --- | --- |
|  | 6686 | **RHD4-02-002-L015-(IRR)-Wash out Valves** |  | 2027-11-13 | 2027-11-16 |  |  |  |  |  |  |  |  |  |
| RHD4CZ7L015IRR3102 |  | Installation for Wash out Valve for Irrigation Network - (RD-L-15)-Z7-L015-IRR | 2d | 2027-11-13 | 2027-11-14 | RHD4CZ4C012RD8100, RHD4PRSHLDOSIRR1100, RHD4PRSHLSTAGIRR1100, RHD4CZ7L015IRR2301, RHD4CZ7L015IRR3200 | Unskilled Labor [5.45 h]; Plumber [5.45 h]; Wash out valve diameter 100 mm - TSE [0.9 nr] | 3,373.2 | L015 | Z7 | CONS | IRR | Installation | bef |
| RHD4CZ7L015IRR3202 |  | Stem and Service box for Wash out Valve for Irrigation Network - (RD-L-15)-Z7-L015-IRR | 2d | 2027-11-15 | 2027-11-16 | RHD4PRSHLDOSIRR1300, RHD4PRSHLSTAGIRR1300, RHD4CZ7L015IRR3102, RHD4CZ7L015IRR2401 | Unskilled Labor [5.45 h]; Plumber [5.45 h]; Wash out valve diameter 100 mm - TSE [0.1 nr] | 374.8 | L015 | Z7 | CONS | IRR | Stem and Service box | bef |
|  | 6687 | **RHD4-02-002-L015-(IRR)-Air Valve Chamber** |  | 2027-07-20 | 2027-07-28 |  |  |  |  |  |  |  |  |  |
| RHD4CZ7L015IRR2102 |  | Excavation and Bedding for Valve Chamber for Irrigation Network - (RD-L-15)-Z7-L015-IRR | 2d | 2027-07-20 | 2027-07-21 | RHD4ENSDZ7APPIRR140, RHD4CZ7L015IRR1500 | Skilled labor [5.45 h]; Unskilled Labor [5.45 h]; Equipment Opreator [1.09 h]; Excavator-Poclain [0.54 h]; Dump Truck [0.54 h]; Air Valve chambers - TSE [0.25 nr] | 1,193 | L015 | Z7 | CONS | IRR | Excavation and Bedding | bef |
| RHD4CZ7L015IRR2202 |  | PC works for Valve Chamber for Irrigation Network - (RD-L-15)-Z7-L015-IRR | 2d | 2027-07-22 | 2027-07-24 | RHD4CZ7L015IRR2102 | Skilled labor [5.45 h]; Unskilled Labor [10.89 h]; Equipment Opreator [0.54 h]; Concrete Pump [0.54 h]; Air Valve chambers - TSE [0.1 nr] | 477.2 | L015 | Z7 | CONS | IRR | PC Works | bef |
| RHD4CZ7L015IRR2302 |  | Installation for Valve Chamber for Irrigation Network - (RD-L-15)-Z7-L015-IRR | 2d | 2027-07-25 | 2027-07-26 | RHD4PRSHLDOSIRR1200, RHD4PRSHLDOSIRR1400, RHD4PRSHLSTAGIRR1200, RHD4PRSHLSTAGIRR1400, RHD4CZ7L015IRR2202 | Skilled labor [5.45 h]; Unskilled Labor [10.89 h]; Equipment Opreator [1.09 h]; Boom Truck [1.09 h]; Air Valve chambers - TSE [0.55 nr] | 2,624.6 | L015 | Z7 | CONS | IRR | Installation | bef |
| RHD4CZ7L015IRR2402 |  | Backfilling works for Valve Chamber for Irrigation Network - (RD-L-15)-Z7-L015-IRR | 2d | 2027-07-27 | 2027-07-28 | RHD4CZ7L015IRR2302 | Skilled labor [5.45 h]; Unskilled Labor [10.89 h]; Equipment Opreator [1.09 h]; Water Truck [0.54 h]; Dump Truck [0.54 h]; Air Valve chambers - TSE [0.1 nr] | 477.2 | L015 | Z7 | CONS | IRR | Backfilling Works | bef |
|  | 6688 | **RHD4-02-002-L015-(IRR)-Air Valves** |  | 2027-07-27 | 2027-09-09 |  |  |  |  |  |  |  |  |  |
| RHD4CZ7L015IRR3103 |  | Installation for Air Valves for Irrigation Network - (RD-L-15)-Z7-L015-IRR | 2d | 2027-07-27 | 2027-07-28 | RHD4PRSHLDOSIRR1100, RHD4PRSHLSTAGIRR1100, RHD4CZ7L015IRR2302 | Unskilled Labor [5.45 h]; Plumber [5.45 h]; Air valve diameter 50 mm - TSE [0.9 nr] | 4,427.1 | L015 | Z7 | CONS | IRR | Installation | bef |
| RHD4CZ7L015IRR3203 |  | Stem and Service box for Air Valves for Irrigation Network - (RD-L-15)-Z7-L015-IRR | 2d | 2027-09-08 | 2027-09-09 | RHD4PRSHLDOSIRR1300, RHD4PRSHLSTAGIRR1300, RHD4CZ7L015IRR3103, RHD4CZ7L015IRR2402, RHD4CZ7L015PT3200, RHD4CZ7L015PT3200 FF | Unskilled Labor [5.45 h]; Plumber [5.45 h]; Air valve diameter 50 mm - TSE [0.1 nr] | 491.9 | L015 | Z7 | CONS | IRR | Stem and Service box | bef |
|  | 6707 | **RHD4-02-002-Z7-L015-Medium Voltage Network - MV** |  | 2027-02-23 | 2027-04-17 |  |  |  |  |  |  |  |  |  |
|  | 6708 | **RHD4-02-002-L015-(MV)-Medium Voltage cable trench** |  | 2027-02-23 | 2027-04-13 |  |  |  |  |  |  |  |  |  |
| RHD4CZ7L015MV1100 |  | Excavation for Medium Voltage Trench - (RD-L-15)-Z7-L015-MV | 14d | 2027-02-23 | 2027-03-14 | RHD4ENSDZ7APPMV150, RHD4CZ7L015RD3100 | Skilled labor [148.8 h]; Unskilled Labor [297.52 h]; Equipment Opreator [446.29 h]; Excavator-Poclain [148.8 h]; Dump Truck [297.52 h]; Excavation for Trench size 40cm wide and 80cm deep ( for 1 cables) [934.49 m3]; Excavation for Trench size 60cm wide and 80cm deep ( for 2 cables) [21.77 m3] | 9,562.59 | L015 | Z7 | CONS | MV | Excavation | AFT |
| RHD4CZ7L015MV1200 |  | Trench Backfilling for Medium Voltage Network - (RD-L-15)-Z7-L015-MV | 14d | 2027-03-29 | 2027-04-13 | RHD4CZ7L015MV3200 | Skilled labor [148.8 h]; Unskilled Labor [148.8 h]; Equipment Opreator [297.52 h]; Dump Truck [297.52 h]; Excavation for Trench size 40cm wide and 80cm deep ( for 1 cables) [400.5 m3]; Excavation for Trench size 60cm wide and 80cm deep ( for 2 cables) [9.33 m3] | 4,098.29 | L015 | Z7 | CONS | MV | Backfilling | AFT |
|  | 6709 | **RHD4-02-002-L015-(MV)-Medium Voltage duct banks** |  | 2027-02-23 | 2027-03-08 |  |  |  |  |  |  |  |  |  |
| RHD4CZ7L015MV2100 |  | Excavation of Duct Banks for Medium Voltage Network - (RD-L-15)-Z7-L015-MV | 3d | 2027-02-23 | 2027-02-25 | RHD4ENSDZ7APPMV150, RHD4CZ7L015RD3100 | Unskilled Labor [24.39 h]; Equipment Opreator [48.8 h]; Excavator-Poclain [24.39 h]; Dump Truck [24.39 h]; Duct bank for MV cables UPVC (2xø150mm) [3.36 m] | 692.49 | L015 | Z7 | CONS | MV | Excavation | bef |
| RHD4CZ7L015MV2200 |  | Installation of Duct Banks for Medium Voltage Network - (RD-L-15)-Z7-L015-MV | 4d | 2027-02-27 | 2027-03-02 | RHD4PRSHLDOSMV1000, RHD4PRSHLSTAGMV1000, RHD4CZ7L015MV2100 | Unskilled Labor [36.59 h]; Equipment Opreator [73.18 h]; Excavator-Poclain [36.59 h]; Dump Truck [36.59 h]; Duct bank for MV cables UPVC (2xø150mm) [3.36 m] | 692.49 | L015 | Z7 | CONS | MV | Installing | bef |
| RHD4CZ7L015MV2300 |  | Pouring of Duct Banks for Medium Voltage Network - (RD-L-15)-Z7-L015-MV | 3d | 2027-03-03 | 2027-03-06 | RHD4CZ7L015MV2200 | Unskilled Labor [24.39 h]; Equipment Opreator [48.8 h]; Excavator-Poclain [24.39 h]; Dump Truck [24.39 h]; Duct bank for MV cables UPVC (2xø150mm) [21.85 m] | 4,501.18 | L015 | Z7 | CONS | MV | Pouring | bef |
| RHD4CZ7L015MV2400 |  | Backfilling of Duct Banks for Medium Voltage Network - (RD-L-15)-Z7-L015-MV | 2d | 2027-03-07 | 2027-03-08 | RHD4CZ7L015MV2300 | Unskilled Labor [18.3 h]; Equipment Opreator [36.59 h]; Excavator-Poclain [18.3 h]; Dump Truck [18.3 h]; Duct bank for MV cables UPVC (2xø150mm) [5.04 m] | 1,038.73 | L015 | Z7 | CONS | MV | Backfilling | bef |
|  | 6710 | **RHD4-02-002-L015-(MV)-Medium Voltage cables 3Cx 500 mm²** |  | 2027-03-15 | 2027-04-17 |  |  |  |  |  |  |  |  |  |
| RHD4CZ7L015MV3100 |  | Installation of Medium Voltage Cables 3Cx 500 mm² - (RD-L-15)-Z7-L015-MV | 10d | 2027-03-15 | 2027-03-25 | RHD4PRSHLDOSMV1100, RHD4ENMSMV2000, RHD4ENMSMV2010, RHD4PRSHLSTAGMV1100, RHD4CZ7L015MV1100, RHD4CZ7L015MV2400 | Skilled labor [107.38 h]; Unskilled Labor [429.41 h]; Electrician [214.76 h]; Equipment Opreator [322.14 h]; Boom Truck [107.38 h]; Cable Laying Machine [214.76 h]; Cable 13.8 kV 3Cx 500 mm² Al/XLPE,/LLDPE / Unarmored [1330.92 m] | 211,615.71 | L015 | Z7 | CONS | MV | Installation | AFT |
| RHD4CZ7L015MV3200 |  | Joints Installation of Medium Voltage Cables 3Cx 500 mm² - (RD-L-15)-Z7-L015-MV | 2d | 2027-03-27 | 2027-03-28 | RHD4PRSHLDOSMV1300, RHD4PRSHLSTAGMV1300, RHD4CZ7L015MV3100 | Skilled labor [16.34 h]; Unskilled Labor [65.34 h]; Electrician [32.67 h]; Equipment Opreator [16.34 h]; Boom Truck [16.34 h]; Straight joints cables for 13.8 kv 3Cx 500 mm², Al /XLPE/LLDPE [3 Unit] | 9,744 | L015 | Z7 | CONS | MV | Joints Installation | AFT |
| RHD4CZ7L015MV3300 |  | Testing of Medium Voltage Cables 3Cx 500 mm² - (RD-L-15)-Z7-L015-MV | 3d | 2027-04-14 | 2027-04-17 | RHD4CZ7L015MV3200, RHD4CZ7L015MV1200 | Skilled labor [32.24 h]; Unskilled Labor [128.8 h]; Electrician [64.47 h]; Cable 13.8 kV 3Cx 500 mm² Al/XLPE,/LLDPE / Unarmored [147.88 m] | 23,512.86 | L015 | Z7 | CONS | MV | Testing | AFT |

| ID | WBS | Activity | Duration | Start | Finish | Predecessors | Resources | Cost | RDH4-01-001-Road and Block Names-1 | RDH4-01-001-Zones-1 | RDH4-01-001-Phases-1 | RDH4-01-001-Networks-1 | RDH4-01-001-Work Method-1 | RDH4-01-001-MENEM |
| --- | --- | --- | --- | --- | --- | --- | --- | --- | --- | --- | --- | --- | --- | --- |
|  | 6714 | **RHD4-02-002-Z7-L015-Low Voltage Network - LV** |  | 2027-09-11 | 2027-11-18 |  |  |  |  |  |  |  |  |  |
|  | 6715 | **RHD4-02-002-L015-(LV)-Low Voltage duct banks** |  |  |  |  |  |  |  |  |  |  |  |  |
|  | 4257 | **RHD4-02-002-L015-(LV)-Low Voltage Drawpit** |  | 2027-09-11 | 2027-09-14 |  |  |  |  |  |  |  |  |  |
| RHD4CZ7L015LV5100 |  | Excavation of Drawpit size 900x900x1000mm for Low Voltage Network - (RD-L-15)-Z7-L015-LV | 2d | 2027-09-11 | 2027-09-12 | RHD4CZ7L015MV2100 SS, RHD4CZ7L015MV3300, RHD4CZ7L015IRR3203 | Skilled labor [1.85 h]; Unskilled Labor [1.85 h]; Equipment Opreator [1.42 h]; Excavator-Poclain [0.8 h]; Dump Truck [0.8 h]; Drawpit with medium duty steel cover, size900x900x1000mm, [0.3 Unit] | 1,103.1 | L015 | Z7 | CONS | LV | Excavation | AFT |
| RHD4CZ7L015LV5200 |  | Installation of Drawpit size 900x900x1000mm for Low Voltage Network - (RD-L-15)-Z7-L015-LV | 2d | 2027-09-13 | 2027-09-14 | RHD4CZ7L015LV5100 | Skilled labor [1.85 h]; Unskilled Labor [1.85 h]; Equipment Opreator [0.8 h]; Boom Truck [0.8 h]; Drawpit with medium duty steel cover, size900x900x1000mm, [1.7 Unit] | 6,250.9 | L015 | Z7 | CONS | LV | Installation | AFT |
|  | 4258 | **RHD4-02-002-L015-(LV)-Low Voltage cables** |  | 2027-09-15 | 2027-11-18 |  |  |  |  |  |  |  |  |  |
| RHD4CZ7L015LV3100 |  | Excavation for Low Voltage Cables for Low Voltage Network - (RD-L-15)-Z7-L015-LV | 2d | 2027-09-15 | 2027-09-16 | RHD4CZ7L015LV5200 | Skilled labor [16.8 h]; Unskilled Labor [33.54 h]; Equipment Opreator [33.54 h]; Excavator-Poclain [16.8 h]; Boom Truck [16.8 h]; Cable, Copper 4x50mm2/ CU/XLPE/PVC +1x25mm2 CU/PVC [77.03 m] | 9,474.69 | L015 | Z7 | CONS | LV | Excavation | AFT |
| RHD4CZ7L015LV3200 |  | Cable Laying of Low Voltage Cables for Low Voltage Network - (RD-L-15)-Z7-L015-LV | 2d | 2027-09-18 | 2027-09-19 | RHD4CZ7L015LV3100 | Skilled labor [13.94 h]; Unskilled Labor [56 h]; Electrician [28 h]; Equipment Opreator [41.93 h]; Boom Truck [13.94 h]; Cable Laying Machine [28 h]; Cable, Copper 4x50mm2/ CU/XLPE/PVC +1x25mm2 CU/PVC [231.1 m] | 28,425.3 | L015 | Z7 | CONS | LV | Cable Laying | AFT |
| RHD4CZ7L015LV3300 |  | Warning tape and Backfill for Low Voltage Cables for Low Voltage Network - (RD-L-15)-Z7-L015-LV | 2d | 2027-09-20 | 2027-09-21 | RHD4CZ7L015LV3200 | Skilled labor [13.94 h]; Unskilled Labor [56 h]; Electrician [28 h]; Equipment Opreator [13.94 h]; Boom Truck [13.94 h]; Cable, Copper 4x50mm2/ CU/XLPE/PVC +1x25mm2 CU/PVC [57.78 m] | 7,106.94 | L015 | Z7 | CONS | LV | Warning tape and Backfill | AFT |
| RHD4CZ7L015LV3400 |  | Testing of Low Voltage Cables for Low Voltage Network - (RD-L-15)-Z7-L015-LV | 2d | 2027-11-17 | 2027-11-18 | RHD4CZ7L015LV3300, RHD4CZ7L015SW3500, RHD4CZ7L015IRR3202 | Skilled labor [8.39 h]; Unskilled Labor [33.54 h]; Electrician [16.8 h]; Equipment Opreator [8.39 h]; Boom Truck [8.39 h]; Cable, Copper 4x50mm2/ CU/XLPE/PVC +1x25mm2 CU/PVC [19.26 m] | 2,368.98 | L015 | Z7 | CONS | LV | Testing | AFT |
|  | 6720 | **RHD4-02-002-Z7-L015-Street Lighting Network - SL** |  | 2027-02-27 | 2028-01-11 |  |  |  |  |  |  |  |  |  |
|  | 6721 | **RHD4-02-002-L015-(SL)-Street Lighting duct banks** |  | 2027-02-27 | 2027-03-15 |  |  |  |  |  |  |  |  |  |
| RHD4CZ7L015SL2100 |  | Excavation of Duct Banks for Street Lighting Network - (RD-L-15)-Z7-L015-SL | 3d | 2027-02-27 | 2027-03-01 | RHD4ENSDZ7APPSL170, RHD4CZ7L015MV2100 | Skilled labor [24.8 h]; Unskilled Labor [24.8 h]; Equipment Opreator [49.55 h]; Excavator-Poclain [24.8 h]; Dump Truck [24.8 h]; Road Crossing Duct for Street Lighting cables UPVC (2x?110mm) [3.41 m] | 689.65 | L015 | Z7 | CONS | SL | Excavation | bef |
| RHD4CZ7L015SL2200 |  | Installation of Duct Banks for Street Lighting Network - (RD-L-15)-Z7-L015-SL | 4d | 2027-03-02 | 2027-03-06 | RHD4PRSHLDOSSL1000, RHD4PRSHLSTAGSL1000, RHD4CZ7L015SL2100 | Carpenter [3.7 h]; Skilled labor [37.14 h]; Unskilled Labor [37.14 h]; Steel Fixer [3.7 h]; Road Crossing Duct for Street Lighting cables UPVC (2x?110mm) [3.41 m] | 689.65 | L015 | Z7 | CONS | SL | Installing | bef |
| RHD4CZ7L015SL2300 |  | Pouring of Duct Banks for Street Lighting Network - (RD-L-15)-Z7-L015-SL | 3d | 2027-03-07 | 2027-03-13 | RHD4CZ7L015SL2200 | Skilled labor [24.8 h]; Unskilled Labor [24.8 h]; Equipment Opreator [9.91 h]; Concrete Mixer Truck [5.01 h]; Concrete Pump [5.01 h]; Road Crossing Duct for Street Lighting cables UPVC (2x?110mm) [22.19 m] | 4,482.71 | L015 | Z7 | CONS | SL | Pouring | bef |
| RHD4CZ7L015SL2400 |  | Backfilling of Duct Banks for Street Lighting Network - (RD-L-15)-Z7-L015-SL | 2d | 2027-03-14 | 2027-03-15 | RHD4CZ7L015SL2300 | Skilled labor [18.62 h]; Unskilled Labor [18.62 h]; Equipment Opreator [7.41 h]; Excavator-Poclain [7.41 h]; Road Crossing Duct for Street Lighting cables UPVC (2x?110mm) [5.12 m] | 1,034.47 | L015 | Z7 | CONS | SL | Backfilling | bef |
|  | 6722 | **RHD4-02-002-L015-(SL)-Street Lighting Drawpit** |  | 2027-11-20 | 2027-11-23 |  |  |  |  |  |  |  |  |  |
| RHD4CZ7L015SL5100 |  | Excavation of Drawpit size 600x600x900mm for Street Lighting Network - (RD-L-15)-Z7-L015-SL | 2d | 2027-11-20 | 2027-11-21 | RHD4ENSDZ7APPSL170, RHD4CZ7L015SL2300, RHD4CZ7L015LV3400 | Skilled labor [5.45 h]; Unskilled Labor [5.45 h]; Equipment Opreator [4.36 h]; Excavator-Poclain [2.18 h]; Dump Truck [2.18 h]; Drawpit with medium duty steel cover, size600x600x900mm, [0.9 Unit] | 2,205.9 | L015 | Z7 | CONS | SL | Excavation | AFT |
| RHD4CZ7L015SL5200 |  | Installation of Drawpit size 600x600x900mm for Street Lighting Network - (RD-L-15)-Z7-L015-SL | 2d | 2027-11-22 | 2027-11-23 | RHD4PRSHLDOSSL1400, RHD4PRSHLSTAGSL1400, RHD4CZ7L015SL5100 | Skilled labor [5.45 h]; Unskilled Labor [5.45 h]; Equipment Opreator [2.18 h]; Boom Truck [2.18 h]; Drawpit with medium duty steel cover, size600x600x900mm, [5.1 Unit] | 12,500.1 | L015 | Z7 | CONS | SL | Installation | AFT |
|  | 6723 | **RHD4-02-002-L015-(SL)-Street Lighting cables** |  | 2027-11-24 | 2027-12-15 |  |  |  |  |  |  |  |  |  |
| RHD4CZ7L015SL3100 |  | Excavation for Street Lighting Cables for Street Lighting Network - (RD-L-15)-Z7-L015-SL | 6d | 2027-11-24 | 2027-11-30 | RHD4ENSDZ7APPSL170, RHD4CZ7L015SL5200 | Skilled labor [62.07 h]; Unskilled Labor [124.15 h]; Equipment Opreator [124.15 h]; Excavator-Poclain [62.07 h]; Boom Truck [62.07 h]; Cable, Copper 4x10mm2/ CU/XLPE/SWA/PVC + 1x10mm2 CU/PVC [284.95 m] | 13,962.71 | L015 | Z7 | CONS | SL | Excavation | AFT |
| RHD4CZ7L015SL3200 |  | Cable Laying of Street Lighting Cables for Street Lighting Network - (RD-L-15)-Z7-L015-SL | 5d | 2027-12-01 | 2027-12-06 | RHD4PRSHLDOSSL1100, RHD4ENMSSL2000, RHD4ENMSSL2010, RHD4PRSHLSTAGSL1100, RHD4CZ7L015SL3100 | Skilled labor [51.73 h]; Unskilled Labor [206.92 h]; Electrician [103.46 h]; Equipment Opreator [155.2 h]; Boom Truck [51.73 h]; Cable Laying Machine [103.46 h]; Cable, Copper 4x10mm2/ CU/XLPE/SWA/PVC + 1x10mm2 CU/PVC [854.86 m] | 41,888.12 | L015 | Z7 | CONS | SL | Cable Laying | AFT |
| RHD4CZ7L015SL3300 |  | Warning tape and Backfill for Street Lighting Cables for Street Lighting Network - (RD-L-15)-Z7-L015-SL | 5d | 2027-12-07 | 2027-12-12 | RHD4CZ7L015SL3200 | Skilled labor [51.73 h]; Unskilled Labor [206.92 h]; Electrician [103.46 h]; Equipment Opreator [51.73 h]; Boom Truck [51.73 h]; Cable, Copper 4x10mm2/ CU/XLPE/SWA/PVC + 1x10mm2 CU/PVC [213.71 m] | 10,472.03 | L015 | Z7 | CONS | SL | Warning tape and Backfill | AFT |
| RHD4CZ7L015SL3400 |  | Testing of Street Lighting Cables for Street Lighting Network - (RD-L-15)-Z7-L015-SL | 3d | 2027-12-13 | 2027-12-15 | RHD4CZ7L015SL3300 | Skilled labor [31.04 h]; Unskilled Labor [124.15 h]; Electrician [62.07 h]; Equipment Opreator [31.04 h]; Boom Truck [31.04 h]; Cable, Copper 4x10mm2/ CU/XLPE/SWA/PVC + 1x10mm2 CU/PVC [71.24 m] | 3,490.68 | L015 | Z7 | CONS | SL | Testing | AFT |

| ID | WBS | Activity | Duration | Start | Finish | Predecessors | Resources | Cost | RDH4-01-001-Road and Block Names-1 | RDH4-01-001-Zones-1 | RDH4-01-001-Phases-1 | RDH4-01-001-Networks-1 | RDH4-01-001-Work Method-1 | RDH4-01-001-MENEM |
| --- | --- | --- | --- | --- | --- | --- | --- | --- | --- | --- | --- | --- | --- | --- |
|  | 6724 | **RHD4-02-002-L015-(SL)-Street Lighting Poles** |  | 2027-12-16 | 2028-01-11 |  |  |  |  |  |  |  |  |  |
| RHD4CZ7L015SL1100 |  | Excavation for RC Base for Lighting Poles for Street Lighting Network - (RD-L-15)-Z7-L015-SL | 4d | 2027-12-16 | 2027-12-20 | RHD4ENSDZ7APPSL170, RHD4CZ7L015SL2400, RHD4CZ7L015SL3400, RHD4CZ7L015PT4500 | Skilled labor [34.85 h]; Unskilled Labor [34.85 h]; Equipment Opreator [69.7 h]; Excavator-Poclain [34.85 h]; Dump Truck [34.85 h]; Lighting poles single arms, height of ( 10 ) meters [4.8 Unit] | 16,353.6 | L015 | Z7 | CONS | SL | Excavation | AFT |
| RHD4CZ7L015SL1200 |  | Installation for RC Base for Lighting Poles for Street Lighting Network - (RD-L-15)-Z7-L015-SL | 4d | 2027-12-21 | 2027-12-25 | RHD4CZ7L015SL1100 | Skilled labor [34.85 h]; Unskilled Labor [34.85 h]; Equipment Opreator [69.7 h]; Excavator-Poclain [34.85 h]; Dump Truck [34.85 h]; Lighting poles single arms, height of ( 10 ) meters [12 Unit] | 40,884 | L015 | Z7 | CONS | SL | RC Base | AFT |
| RHD4CZ7L015SL1300 |  | Backfill for RC Base for Lighting Poles for Street Lighting Network - (RD-L-15)-Z7-L015-SL | 4d | 2027-12-26 | 2027-12-29 | RHD4CZ7L015SL1200 | Skilled labor [34.85 h]; Unskilled Labor [34.85 h]; Equipment Opreator [69.7 h]; Excavator-Poclain [34.85 h]; Dump Truck [34.85 h]; Lighting poles single arms, height of ( 10 ) meters [2.4 Unit] | 8,176.8 | L015 | Z7 | CONS | SL | Backfill | AFT |
| RHD4CZ7L015SL1400 |  | Installation for Lighting Poles for Street Lighting Network - (RD-L-15)-Z7-L015-SL | 5d | 2027-12-30 | 2028-01-04 | RHD4PRSHLDOSSL1200, RHD4ENMSSL2000, RHD4ENMSSL2010, RHD4PRSHLSTAGSL1200, RHD4CZ7L015SL1300, RHD4CZ7L015SL3400 | Skilled labor [52.27 h]; Unskilled Labor [52.27 h]; Electrician [52.27 h]; Equipment Opreator [52.27 h]; Boom Truck [52.27 h]; Lighting poles single arms, height of ( 10 ) meters [28.8 Unit] | 98,121.6 | L015 | Z7 | CONS | SL | Poles Installation | AFT |
| RHD4CZ7L015SL1500 |  | Luminaire Installation for Lighting Poles for Street Lighting Network - (RD-L-15)-Z7-L015-SL | 4d | 2028-01-08 | 2028-01-11 | RHD4PRSHLDOSSL1300, RHD4PRSHLSTAGSL1300, RHD4CZ7L015SL1400, RHD4CZ7L015SL6100 | Unskilled Labor [69.7 h]; Electrician [34.85 h]; Equipment Opreator [6.97 h]; Boom Truck [13.94 h]; Street Lighting( LED) Luminaire of Output ?10898 lumen [48 Unit] | 28,224 | L015 | Z7 | CONS | SL | Luminaire Installation | AFT |
|  | 6726 | **RHD4-02-002-L015-(SL)-Street Lighting Earthing System** |  | 2028-01-05 | 2028-01-06 |  |  |  |  |  |  |  |  |  |
| RHD4CZ7L015SL6100 |  | Installation of Earthing for Lighting Poles and Fedder Pillers for Street Lighting Network - (RD-L-15)-Z7-L015-SL | 2d | 2028-01-05 | 2028-01-06 | RHD4ENMSER2000, RHD4ENMSER2010, RHD4CZ7L015SL1400 | Skilled labor [1.42 h]; Unskilled Labor [1.42 h]; Equipment Opreator [2.94 h]; Excavator-Poclain [1.42 h]; Dump Truck [1.42 h]; Including lighting poles circuits - ER [2 Unit] | 1,226 | L015 | Z7 | CONS | SL | Installation | AFT |
|  | 6732 | **RHD4-02-002-Z7-L015-Telecommunications Network - TC** |  | 2027-03-02 | 2028-02-21 |  |  |  |  |  |  |  |  |  |
|  | 6733 | **RHD4-02-002-L015-(TC)-Telecommunications Ducts** |  | 2028-01-12 | 2028-02-21 |  |  |  |  |  |  |  |  |  |
| RHD4CZ7L015TC2100 |  | Excavation of HDPE Ducts for Telecom Network - (RD-L-15)-Z7-L015-TC | 10d | 2028-01-12 | 2028-01-23 | RHD4ENSDZ7APPTC190, RHD4CZ7L015TC3400, RHD4CZ7L015SL1500 | Skilled labor [102.48 h]; Unskilled Labor [102.48 h]; Equipment Opreator [204.96 h]; Excavator-Poclain [102.48 h]; Dump Truck [102.48 h]; (6*50mm) HDPE ducts -TC [210.1 m]; (6*50mm+2*32mm) HDPE ducts -TC [62.56 m]; (6*50mm+4*32mm) HDPE ducts -TC [4.7 m]; (2*32mm) HDPE ducts -TC [5 m] | 26,037.14 | L015 | Z7 | CONS | TC | Excavation | AFT |
| RHD4CZ7L015TC2200 |  | Installation of HDPE Ducts for Telecom Network - (RD-L-15)-Z7-L015-TC | 15d | 2028-01-24 | 2028-02-09 | RHD4PRSHLDOSTC1000, RHD4PRSHLSTAGTC1000, RHD4CZ7L015TC2100 | Carpenter [15.36 h]; Skilled labor [153.77 h]; Unskilled Labor [153.77 h]; Steel Fixer [15.36 h]; (6*50mm) HDPE ducts -TC [682.83 m]; (6*50mm+2*32mm) HDPE ducts -TC [203.32 m]; (6*50mm+4*32mm) HDPE ducts -TC [15.28 m]; (2*32mm) HDPE ducts -TC [16.25 m] | 84,620.71 | L015 | Z7 | CONS | TC | Installing | AFT |
| RHD4CZ7L015TC2400 |  | Backfilling of HDPE Ducts for Telecom Network - (RD-L-15)-Z7-L015-TC | 10d | 2028-02-10 | 2028-02-21 | RHD4CZ7L015TC2200, RHD4CZ7L015TC5200 | Skilled labor [102.48 h]; Unskilled Labor [102.48 h]; Equipment Opreator [40.95 h]; Excavator-Poclain [40.95 h]; (6*50mm) HDPE ducts -TC [157.57 m]; (6*50mm+2*32mm) HDPE ducts -TC [46.92 m]; (6*50mm+4*32mm) HDPE ducts -TC [3.52 m]; (2*32mm) HDPE ducts -TC [3.75 m] | 19,527.85 | L015 | Z7 | CONS | TC | Backfilling | AFT |
|  | 6734 | **RHD4-02-002-L015-(TC)-Telecommunications Manholes** |  | 2028-01-24 | 2028-02-03 |  |  |  |  |  |  |  |  |  |
| RHD4CZ7L015TC5100 |  | Excavation for Manholes for Telecom Network - (RD-L-15)-Z7-L015-TC | 5d | 2028-01-24 | 2028-01-29 | RHD4ENSDZ7APPTC190, RHD4CZ7L015TC2100 | Skilled labor [15.03 h]; Unskilled Labor [15.03 h]; Equipment Opreator [12 h]; Excavator-Poclain [5.99 h]; Dump Truck [5.99 h]; Manhole Type 1 - TC [1.05 nr]; Manhole Type 2 - TC [0.3 nr] | 9,100.35 | L015 | Z7 | CONS | TC | Excavation | AFT |
| RHD4CZ7L015TC5200 |  | Installation of Manholes for Telecom Network - (RD-L-15)-Z7-L015-TC | 5d | 2028-01-30 | 2028-02-03 | RHD4PRSHLDOSTC1200, RHD4PRSHLSTAGTC1200, RHD4CZ7L015TC5100, RHD4CZ7L015TC2200 SS | Skilled labor [15.03 h]; Unskilled Labor [15.03 h]; Equipment Opreator [5.99 h]; Boom Truck [5.99 h]; Manhole Type 1 - TC [5.95 nr]; Manhole Type 2 - TC [1.7 nr] | 51,568.65 | L015 | Z7 | CONS | TC | Installation | AFT |
|  | 6735 | **RHD4-02-002-L015-(TC)-Telecomminications Road Crossings** |  | 2027-03-02 | 2027-03-14 |  |  |  |  |  |  |  |  |  |
| RHD4CZ7L015TC3100 |  | Excavation for Road Crossings for Telecom Network - (RD-L-15)-Z7-L015-TC | 2d | 2027-03-02 | 2027-03-03 | RHD4ENSDZ7APPTC190, RHD4CZ7L015SL2100 | Skilled labor [9.37 h]; Unskilled Labor [9.37 h]; Equipment Opreator [18.73 h]; Excavator-Poclain [9.37 h]; Dump Truck [9.37 h]; Road crossing ducts, (6*50mm) HDPE -TC [1.72 m] | 65.36 | L015 | Z7 | CONS | TC | Excavation | bef |
| RHD4CZ7L015TC3200 |  | Installation of Road Crossings for Telecom Network - (RD-L-15)-Z7-L015-TC | 2d | 2027-03-04 | 2027-03-06 | RHD4PRSHLDOSTC1100, RHD4PRSHLSTAGTC1100, RHD4CZ7L015TC3100 | Carpenter [1.2 h]; Skilled labor [12.52 h]; Unskilled Labor [12.52 h]; Steel Fixer [1.2 h]; Road crossing ducts, (6*50mm) HDPE -TC [1.72 m] | 65.36 | L015 | Z7 | CONS | TC | Installing | bef |
| RHD4CZ7L015TC3300 |  | Pouring of Road Crossings for Telecom Network - (RD-L-15)-Z7-L015-TC | 2d | 2027-03-07 | 2027-03-08 | RHD4CZ7L015TC3200 | Skilled labor [12.52 h]; Unskilled Labor [12.52 h]; Equipment Opreator [5.01 h]; Concrete Mixer Truck [2.5 h]; Concrete Pump [2.5 h]; Road crossing ducts, (6*50mm) HDPE -TC [11.18 m] | 424.84 | L015 | Z7 | CONS | TC | Pouring | bef |
| RHD4CZ7L015TC3400 |  | Backfilling of Road Crossings for Telecom Network - (RD-L-15)-Z7-L015-TC | 2d | 2027-03-13 | 2027-03-14 | RHD4CZ7L015TC3300 | Skilled labor [9.37 h]; Unskilled Labor [9.37 h]; Equipment Opreator [3.7 h]; Excavator-Poclain [3.7 h]; Road crossing ducts, (6*50mm) HDPE -TC [2.58 m] | 98.04 | L015 | Z7 | CONS | TC | Backfilling | bef |
|  | 6736 | **RHD4-02-002-Z7-L015-Information and Communication Technologies - ICT** |  | 2027-03-04 | 2028-04-02 |  |  |  |  |  |  |  |  |  |
|  | 6737 | **RHD4-02-002-L015-(ICT)-Information and Communication Technologies Ducts** |  | 2028-02-23 | 2028-04-02 |  |  |  |  |  |  |  |  |  |
| RHD4CZ7L015ICT2100 |  | Excavation of HDPE Ducts for ICT Network - (RD-L-15)-Z7-L015-ICT | 9d | 2028-02-23 | 2028-03-07 | RHD4ENSDZ7APPICT200, RHD4CZ7L015ICT3400, RHD4CZ7L015TC2400 | Skilled labor [94.31 h]; Unskilled Labor [94.31 h]; Equipment Opreator [188.51 h]; Excavator-Poclain [94.31 h]; Dump Truck [94.31 h]; (2*50mm) HDPE ducts -ICT [185.6 m]; (2*50mm+2*32mm) HDPE ducts -ICT [61.45 m]; (2*50mm+4*32mm) HDPE ducts -ICT [5.56 m]; (2*32mm) HDPE ducts -ICT [7.08 m] | 12,195.94 | L015 | Z7 | CONS | ICT | Excavation | AFT |
| RHD4CZ7L015ICT2200 |  | Installation of HDPE Ducts for ICT Network - (RD-L-15)-Z7-L015-ICT | 13d | 2028-03-08 | 2028-03-22 | RHD4PRSHLDOSICT1000, RHD4PRSHLSTAGICT1000, RHD4CZ7L015ICT2100 | Carpenter [14.16 h]; Skilled labor [141.36 h]; Unskilled Labor [141.36 h]; Steel Fixer [14.16 h]; (2*50mm) HDPE ducts -ICT [603.2 m]; (2*50mm+2*32mm) HDPE ducts -ICT [199.71 m]; (2*50mm+4*32mm) HDPE ducts -ICT [18.07 m]; (2*32mm) HDPE ducts -ICT [23.01 m] | 39,636.79 | L015 | Z7 | CONS | ICT | Installing | AFT |
| RHD4CZ7L015ICT2400 |  | Backfilling of HDPE Ducts for ICT Network - (RD-L-15)-Z7-L015-ICT | 9d | 2028-03-23 | 2028-04-02 | RHD4CZ7L015ICT2200, RHD4CZ7L015ICT5200 | Skilled labor [94.31 h]; Unskilled Labor [94.31 h]; Equipment Opreator [37.68 h]; Excavator-Poclain [37.68 h]; (2*50mm) HDPE ducts -ICT [139.2 m]; (2*50mm+2*32mm) HDPE ducts -ICT [46.09 m]; (2*50mm+4*32mm) HDPE ducts -ICT [4.17 m]; (2*32mm) HDPE ducts -ICT [5.31 m] | 9,146.95 | L015 | Z7 | CONS | ICT | Backfilling | AFT |

| ID | WBS | Activity | Duration | Start | Finish | Predecessors | Resources | Cost | RDH4-01-001-Road and Block Names-1 | RDH4-01-001-Zones-1 | RDH4-01-001-Phases-1 | RDH4-01-001-Networks-1 | RDH4-01-001-Work Method-1 | RDH4-01-001-MENEM |
| --- | --- | --- | --- | --- | --- | --- | --- | --- | --- | --- | --- | --- | --- | --- |
|  | 6738 | **RHD4-02-002-L015-(ICT)-Information and Communication Technologies Manholes** |  | 2028-03-08 | 2028-03-14 |  |  |  |  |  |  |  |  |  |
| RHD4CZ7L015ICT5100 |  | Excavation for Manholes for ICT Network - (RD-L-15)-Z7-L015-ICT | 3d | 2028-03-08 | 2028-03-11 | RHD4ENSDZ7APPICT200, RHD4CZ7L015ICT2100 | Skilled labor [10.89 h]; Unskilled Labor [10.89 h]; Equipment Opreator [8.71 h]; Excavator-Poclain [4.36 h]; Dump Truck [4.36 h]; Manhole Type 1 - ICT [0.6 nr]; Manhole Type 2 - ICT [0.3 nr] | 4,853.7 | L015 | Z7 | CONS | ICT | Excavation | AFT |
| RHD4CZ7L015ICT5200 |  | Installation of Manholes for ICT Network - (RD-L-15)-Z7-L015-ICT | 3d | 2028-03-12 | 2028-03-14 | RHD4PRSHLDOSICT1200, RHD4PRSHLSTAGICT1200, RHD4CZ7L015ICT5100 | Skilled labor [10.89 h]; Unskilled Labor [10.89 h]; Equipment Opreator [4.36 h]; Boom Truck [4.36 h]; Manhole Type 1 - ICT [3.4 nr]; Manhole Type 2 - ICT [1.7 nr] | 27,504.3 | L015 | Z7 | CONS | ICT | Installation | AFT |
|  | 6739 | **RHD4-02-002-L015-(ICT)-Information and Communication Technologies Road Crossings** |  | 2027-03-04 | 2027-03-16 |  |  |  |  |  |  |  |  |  |
| RHD4CZ7L015ICT3100 |  | Excavation for Road Crossings for ICT Network - (RD-L-15)-Z7-L015-ICT | 2d | 2027-03-04 | 2027-03-06 | RHD4ENSDZ7APPICT200, RHD4CZ7L015TC3100 | Skilled labor [11.11 h]; Unskilled Labor [11.11 h]; Equipment Opreator [22.22 h]; Excavator-Poclain [11.11 h]; Dump Truck [11.11 h]; Road crossing ducts, (2*50mm) HDPE -ICT [2.04 m] | 77.52 | L015 | Z7 | CONS | ICT | Excavation | bef |
| RHD4CZ7L015ICT3200 |  | Installation of Road Crossings for ICT Network - (RD-L-15)-Z7-L015-ICT | 2d | 2027-03-07 | 2027-03-08 | RHD4PRSHLDOSICT1100, RHD4PRSHLSTAGICT1100, RHD4CZ7L015ICT3100 | Carpenter [1.52 h]; Skilled labor [14.81 h]; Unskilled Labor [14.81 h]; Steel Fixer [1.52 h]; Road crossing ducts, (2*50mm) HDPE -ICT [2.04 m] | 77.52 | L015 | Z7 | CONS | ICT | Installing | bef |
| RHD4CZ7L015ICT3300 |  | Pouring of Road Crossings for ICT Network - (RD-L-15)-Z7-L015-ICT | 2d | 2027-03-13 | 2027-03-14 | RHD4CZ7L015ICT3200 | Skilled labor [14.81 h]; Unskilled Labor [14.81 h]; Equipment Opreator [5.88 h]; Concrete Mixer Truck [2.94 h]; Concrete Pump [2.94 h]; Road crossing ducts, (2*50mm) HDPE -ICT [13.26 m] | 503.88 | L015 | Z7 | CONS | ICT | Pouring | bef |
| RHD4CZ7L015ICT3400 |  | Backfilling of Road Crossings for ICT Network - (RD-L-15)-Z7-L015-ICT | 2d | 2027-03-15 | 2027-03-16 | RHD4CZ7L015ICT3300 | Skilled labor [11.11 h]; Unskilled Labor [11.11 h]; Equipment Opreator [4.47 h]; Excavator-Poclain [4.47 h]; Road crossing ducts, (2*50mm) HDPE -ICT [3.06 m] | 116.28 | L015 | Z7 | CONS | ICT | Backfilling | bef |
|  | 6727 | **RHD4-02-002-Z7-L015-Landscape Network - LS** |  |  |  |  |  |  |  |  |  |  |  |  |
|  | 6728 | **RHD4-02-002-L015-(LS)-Landscape Lighting cables** |  |  |  |  |  |  |  |  |  |  |  |  |
|  | 6729 | **RHD4-02-002-L015-(LS)-Landscape Feeder Pillars** |  |  |  |  |  |  |  |  |  |  |  |  |
|  | 6730 | **RHD4-02-002-L015-(LS)-Landscape Bollard Poles** |  |  |  |  |  |  |  |  |  |  |  |  |
|  | 6731 | **RHD4-02-002-L015-(LS)-Landscape Feeder Pillars Earthing** |  |  |  |  |  |  |  |  |  |  |  |  |
|  | 6740 | **RHD4-02-002-Z7-L015-Security Network - CCTV** |  | 2028-04-03 | 2028-05-15 |  |  |  |  |  |  |  |  |  |
|  | 499 | **RHD4-02-002-Z7-L015-(CCTV)-CCTV Poles** |  | 2028-04-09 | 2028-04-19 |  |  |  |  |  |  |  |  |  |
| RHD4CZ7L015CCTV1100 |  | Excavation for RC Base for CCTV Poles for Security Network - (RD-L-15)-Z7-L015-CCTV | 2d | 2028-04-09 | 2028-04-10 | RHD4CZ7L015CCTV2100 | Skilled labor [4.32 h]; Unskilled Labor [4.32 h]; Equipment Opreator [8.64 h]; Excavator-Poclain [2.16 h]; Dump Truck [2.16 h]; 25 Meters pole for CCTV Cameras [0.1 nr] | 14,090.2 | C081 | Z1 | CONS | CCTV | Excavation | AFT |
| RHD4CZ7L015CCTV1200 |  | Installation for RC Base for CCTV Poles for Security Network - (RD-L-15)-Z7-L015-CCTV | 2d | 2028-04-11 | 2028-04-12 | RHD4CZ7L015CCTV1100 | Skilled labor [4.32 h]; Unskilled Labor [4.32 h]; Equipment Opreator [8.64 h]; Excavator-Poclain [2.16 h]; Dump Truck [2.16 h]; 25 Meters pole for CCTV Cameras [0.25 nr] | 35,225.5 | C081 | Z1 | CONS | CCTV | RC Base | AFT |
| RHD4CZ7L015CCTV1300 |  | Backfill for RC Base for CCTV Poles for Security Network - (RD-L-15)-Z7-L015-CCTV | 2.03d | 2028-04-13 | 2028-04-16 | RHD4CZ7L015CCTV1200 | Skilled labor [2.88 h]; Unskilled Labor [2.88 h]; Equipment Opreator [5.44 h]; Excavator-Poclain [1.44 h]; Dump Truck [1.44 h]; 25 Meters pole for CCTV Cameras [0.05 nr] | 7,045.1 | C081 | Z1 | CONS | CCTV | Backfill | AFT |
| RHD4CZ7L015CCTV1400 |  | Installation for CCTV Poles for Security Network - (RD-L-15)-Z7-L015-CCTV | 2d | 2028-04-16 | 2028-04-18 | RHD4CZ7L015CCTV1300 | Skilled labor [7.2 h]; Unskilled Labor [14.56 h]; Electrician [7.2 h]; Equipment Opreator [7.2 h]; Boom Truck [3.6 h]; 25 Meters pole for CCTV Cameras [0.6 nr] | 84,541.2 | C081 | Z1 | CONS | CCTV | Installation | AFT |
| RHD4CZ7L015CCTV1500 |  | Protection post Installation for CCTV Poles for Security Network - (RD-L-15)-Z7-L015-CCTV | 2d | 2028-04-18 | 2028-04-19 | RHD4CZ7L015CCTV1400 | Skilled labor [21.76 h]; Unskilled Labor [43.52 h]; Supply and Installation of minimum 4 Protection Post for each pole or tower with pipe ?220*6mm THK. [1 nr] | 4,903 | C081 | Z1 | CONS | CCTV | Protection post | AFT |
|  | 501 | **RHD4-02-002-Z7-L015-(CCTV)-Power and Infrastructure** |  | 2028-04-18 | 2028-04-22 |  |  |  |  |  |  |  |  |  |
| RHD4CZ7L015CCTV4100 |  | Installation of Power outlet, UPS and midspan for PTZ Camerafor Cameras for Security Network - (RD-L-15)-Z7-L015-CCTV | 2.01d | 2028-04-18 | 2028-04-20 | RHD4CZ7L015CCTV1400 | Skilled labor [13.12 h]; Unskilled Labor [52.32 h]; Electrician [26.08 h]; Equipment Opreator [26.08 h]; Excavator-Poclain [6.56 h]; Dump Truck [6.56 h]; Outdoor ready IP66-rated midspan for PTZ Camera (The outdoor- ready midspan should be IP66/IP67- and NEMA 4X-rated [1 nr]; 1.2KVA Industrial type UPS located at FEC remote poles [1 nr] | 9,103 | C081 | Z1 | CONS | CCTV | Power | AFT |
| RHD4CZ7L015CCTV4200 |  | Short Range Wireless PoP wireless Bridgefor CCTV Poles for Security Network - (RD-L-15)-Z7-L015-CCTV | 2d | 2028-04-20 | 2028-04-22 | RHD4CZ7L015CCTV4100 | Skilled labor [21.76 h]; Unskilled Labor [43.52 h]; Electrician [21.76 h]; Equipment Opreator [43.52 h]; Excavator-Poclain [10.88 h]; Dump Truck [10.88 h]; Short Range wireless point to point wireless bridge [2 nr] | 29,274 | C081 | Z1 | CONS | CCTV | Wireless Pop | AFT |
|  | 6741 | **RHD4-02-002-Z7-L015-(CCTV)-Civil Works** |  | 2028-04-03 | 2028-04-08 |  |  |  |  |  |  |  |  |  |
| RHD4CZ7L015CCTV2100 |  | Civil Works for Security Network - (RD-L-15)-Z7-L015-CCTV | 5d | 2028-04-03 | 2028-04-08 | RHD4CZ7L015ICT2400, RHD4CZ7L015TC2400, RHD4CZ7L015ICT2400 FF | Skilled labor [217.76 h]; Unskilled Labor [435.68 h]; Equipment Opreator [217.76 h]; Excavator-Poclain [54.45 h]; Dump Truck [54.45 h]; Civil works Digging, trenching, laying pipes Meter with supply and installation of Manholes and for power feeding sources related to all towers and poles – (from 35-meter pole to control room and from related UPS camersa distribution boards till overall 2 [150 m] | 17,400 | L015 | Z7 | CONS | CCTV | Civil Works | AFT |

| ID | WBS | Activity | Duration | Start | Finish | Predecessors | Complete | Planned start | Planned finish | Resources | Cost | Actual cost | RDH4-01-001-Road and Block Names-1 | RDH4-01-001-Zones-1 | RDH4-01-001-Phases-1 | RDH4-01-001-Networks-1 | RDH4-01-001-Work Method-1 | RDH4-01-001-MENEM |
| --- | --- | --- | --- | --- | --- | --- | --- | --- | --- | --- | --- | --- | --- | --- | --- | --- | --- | --- |
|  | 500 | **RHD4-02-002-Z7-L015-(CCTV)-Camera** |  | 2028-04-23 | 2028-04-24 |  |  |  |  |  |  |  |  |  |  |  |  |  |
| RHD4CZ7L015CCTV3100 |  | Installation for Cameras for Security Network - (RD-L-15)-Z7-L015-CCTV | 2d | 2028-04-23 | 2028-04-24 | RHD4CZ7L015CCTV1400, RHD4CZ7L015CCTV4100, RHD4CZ7L015CCTV4200 |  |  |  | Unskilled Labor [54.4 h]; Electrician [27.2 h]; Outdoor Camera, 5MP resolution, day/night, fixed bullet camera providing Forensic WDR. [2 nr]; Outdoor PTZ with IR, HDTV 1080 and 31x optical, 12x digital, total 372x zoom, H264/265 with Motion JPEG. [1 nr] | 44,801 |  | C081 | Z1 | CONS | CCTV | Installation | AFT |
|  | 503 | **RHD4-02-002-Z7-L015-(CCTV)-CCTV Panels and Components** |  | 2028-04-25 | 2028-05-15 |  |  |  |  |  |  |  |  |  |  |  |  |  |
| RHD4CZ7L015CCTV6100 |  | Installation for CCTV Panels for Security Network - (RD-L-15)-Z7-L015-CCTV | 15d | 2028-04-25 | 2028-05-15 | RHD4CZ7L015CCTV4200, RHD4CZ7L015CCTV3100, RHD4CZ7L015CCTV1500 |  |  |  | Skilled labor [326.72 h]; Unskilled Labor [980.16 h]; Electrician [326.72 h]; Pole mounted Filed Equipment cabinet (FEC) , with fan and ventilation, NEMEX 4X ,door, minimum size (600x600x400mm) , the cabinet/enclosurE [1 nr]; 8 Port Industrial PoE Switch 10/1000BaseT (-40 deg to +70 deg. Celsius) for remote poles and as specifiedin item 15. [1 nr]; UTP CAT6 Patch Cord , connect the industrial switch with the cameras, and radio wireless antenna [6 nr] | 21,585 |  | C081 | Z1 | CONS | CCTV | Equipment | AFT |
|  | 6946 | **RHD4-02-002-Z7-A012** |  | 2026-07-18 | 2028-05-27 |  |  |  |  |  |  |  |  |  |  |  |  |  |
|  | 7021 | **RHD4-02-002-Z7-A012-Crossings Potable Network - PTCr** |  |  |  |  |  |  |  |  |  |  |  |  |  |  |  |  |
|  | 7025 | **RHD4-02-002-A012-(PTCr)-HDPE Pipes - 400 mm diameter** |  |  |  |  |  |  |  |  |  |  |  |  |  |  |  |  |
|  | 7028 | **RHD4-02-002-A012-(PTCr)-Butterfly Valve Chamber** |  |  |  |  |  |  |  |  |  |  |  |  |  |  |  |  |
|  | 7029 | **RHD4-02-002-A012-(PTCr)-Butterfly Valves** |  |  |  |  |  |  |  |  |  |  |  |  |  |  |  |  |
|  | 7034 | **RHD4-02-002-A012-(PTCr)-Fire Hydrant** |  |  |  |  |  |  |  |  |  |  |  |  |  |  |  |  |
|  | 7068 | **RHD4-02-002-Z7-A012-Crossings Irrigation Network - IRRC** |  |  |  |  |  |  |  |  |  |  |  |  |  |  |  |  |
|  | 7072 | **RHD4-02-002-A012-(IRRC)-HDPE Pipes - 250 mm diameter** |  |  |  |  |  |  |  |  |  |  |  |  |  |  |  |  |
|  | 7076 | **RHD4-02-002-A012-(IRRC)-HDPE Pipes - 500 mm diameter** |  |  |  |  |  |  |  |  |  |  |  |  |  |  |  |  |
|  | 7077 | **RHD4-02-002-A012-(IRRC)-Gate Valves (Direct Buried)** |  |  |  |  |  |  |  |  |  |  |  |  |  |  |  |  |
|  | 7078 | **RHD4-02-002-A012-(IRRC)-Butterfly Valve Chamber** |  |  |  |  |  |  |  |  |  |  |  |  |  |  |  |  |
|  | 7079 | **RHD4-02-002-A012-(IRRC)-Butterfly Valves** |  |  |  |  |  |  |  |  |  |  |  |  |  |  |  |  |
|  | 7080 | **RHD4-02-002-A012-(IRRC)-Wash out Chamber** |  |  |  |  |  |  |  |  |  |  |  |  |  |  |  |  |
|  | 7081 | **RHD4-02-002-A012-(IRRC)-Wash out Valves** |  |  |  |  |  |  |  |  |  |  |  |  |  |  |  |  |
|  | 7125 | **RHD4-02-002-Z7-A012-Road Works - RD** |  | 2026-07-18 | 2028-05-27 |  |  |  |  |  |  |  |  |  |  |  |  |  |
|  | 7126 | **RHD4-02-002-A012-(RD)-Subgrade** |  | 2026-07-18 | 2026-07-22 |  |  |  |  |  |  |  |  |  |  |  |  |  |
| RHD4CZ7A012RD1100 |  | Supply, lay and compaction subgrade compacted thickness 300 mm for Roads - (RD-A-1 /2)-Z7-A012-RD | 4d | 2026-07-18 A | 2026-07-22 A | RHD4ENSDZ7APPEW100, RHD4ENSDZ7APPRD220, RHD4CZ7A012RW3000, RHD4CZ7A012ST1506, RHD4CZ7A012ICT3400, RHD4CZ7A012TC3400, RHD4CZ7A012ST3501 | 100% | 2026-09-01 | 2026-09-05 | Skilled labor [96.6 h]; Unskilled Labor [193.19 h]; Electrician [96.6 h]; Equipment Opreator [659.63 h]; Water Truck [31.91 h]; Roller compactor [48.24 h]; Grader [96.6 h]; Dump Truck [482.88 h]; Subgrade [4644.89 m3] | 88,252.91 | 88,252.91 | A012 | Z7 | CONS | RD | Subgrade | bef |
|  | 7127 | **RHD4-02-002-A012-(RD)-Aggregate Base Course** |  | 2026-10-17 | 2026-10-27 |  |  |  |  |  |  |  |  |  |  |  |  |  |
| RHD4CZ7A012RD2100 |  | Supply, lay and compaction Aggregate base course compacted thickness 300 mmfor Roads - (RD-A-1 /2)-Z7-A012-RD | 7d | 2026-10-17 A | 2026-10-27 A | RHD4PRSHLDOSRD1000, RHD4PRSHLSTAGRD1000, RHD4CZ7A012RD1100 | 100% | 2026-10-17 | 2026-10-24 | Skilled labor [35.72 h]; Unskilled Labor [71.55 h]; Equipment Opreator [452.8 h]; Water Truck [23.63 h]; Roller compactor [71.55 h]; Grader [71.55 h]; Dump Truck [286.2 h]; Aggregate Base Courses [2917.46 m3] | 166,295.22 | 166,295.22 | A012 | Z7 | CONS | RD | ABC | bef |
|  | 7128 | **RHD4-02-002-A012-(RD)-Bituminous base course Two Layers, including (MC1)&(RC2)** |  | 2027-02-20 | 2027-10-02 |  |  |  |  |  |  |  |  |  |  |  |  |  |
| RHD4CZ7A012RD3100 |  | Supply, lay and Asphaltic base course including Prime Coat (MC1) for 1st Layer - (RD-A-1 /2)-Z7-A012-RD | 4d | 2027-02-20 | 2027-02-24 | RHD4PRSHLDOSRD1100, RHD4ENMSASPH2000, RHD4ENMSASPH2010, RHD4PRSHLSTAGRD1100, RHD4CZ7A012RD2100 |  |  |  | Skilled labor [37.9 h]; Unskilled Labor [227.28 h]; Equipment Opreator [568.04 h]; Bobcat [37.9 h]; Roller compactor [37.9 h]; Asphalt Paver [37.9 h]; Rubber Compactor [75.8 h]; MC1/RC2 Sprinkler [37.9 h]; Dump Truck [340.87 h]; Bituminous base course (Grading I - Class A), including Prime coat (MC1) & tack coate (RC2) [1385.61 m3] | 662,321.58 |  | A012 | Z7 | CONS | RD | 150 mm | AFT |
| RHD4CZ7A012RD3200 |  | Supply, lay and Asphaltic base course including Tack Coat (RC2) for 2nd Layer - (RD-A-1 /2)-Z7-A012-RD | 4d | 2027-09-28 | 2027-10-02 | RHD4PRSHLDOSRD1100, RHD4PRSHLSTAGRD1100, RHD4CZ7A012ICT5200 |  |  |  | Skilled labor [37.9 h]; Unskilled Labor [227.28 h]; Equipment Opreator [568.04 h]; Bobcat [37.9 h]; Roller compactor [37.9 h]; Asphalt Paver [37.9 h]; Rubber Compactor [75.8 h]; MC1/RC2 Sprinkler [37.9 h]; Dump Truck [340.87 h]; Bituminous base course (Grading I - Class A), including Prime coat (MC1) & tack coate (RC2) [1385.61 m3] | 662,321.58 |  | A012 | Z7 | CONS | RD | 150 mm | AFT |

| ID | WBS | Activity | Duration | Start | Finish | Predecessors | Complete | Planned start | Planned finish | Resources | Cost | Actual cost | RDH4-01-001-Road and Block Names-1 | RDH4-01-001-Zones-1 | RDH4-01-001-Phases-1 | RDH4-01-001-Networks-1 | RDH4-01-001-Work Method-1 | RDH4-01-001-MENEM |
| --- | --- | --- | --- | --- | --- | --- | --- | --- | --- | --- | --- | --- | --- | --- | --- | --- | --- | --- |
|  | 7130 | **RHD4-02-002-A012-(RD)-Precast Concrete Curb** |  | 2027-10-03 | 2027-10-12 |  |  |  |  |  |  |  |  |  |  |  |  |  |
| RHD4CZ7A012RD5100 |  | Supply and installation Precast Concrete Kerb for Roads - (RD-A-1 /2)-Z7-A012-RD | 9d | 2027-10-03 | 2027-10-12 | RHD4PRSHLDOSRD1200, RHD4ENMSRD2000, RHD4ENMSRD2010, RHD4PRSHLSTAGRD1200, RHD4CZ7A012RD3200 |  |  |  | Mason [272.37 h]; Skilled labor [90.83 h]; Unskilled Labor [272.37 h]; Equipment Opreator [181.54 h]; Bobcat [90.83 h]; Concrete Mixer Truck [90.83 h]; Precast Concrete Curbstone, type K1 [3751.79 m] | 206,348.29 |  | A012 | Z7 | CONS | RD | Curbs | AFT |
|  | 7133 | **RHD4-02-002-A012-(RD)-Traffic Signage** |  | 2028-04-27 | 2028-05-03 |  |  |  |  |  |  |  |  |  |  |  |  |  |
| RHD4CZ7A012RD8100 |  | Installation of Traffic Signage for Road Network - (RD-A-1 /2)-Z7-A012-RD | 6d | 2028-04-27 | 2028-05-03 | RHD4PRSHLDOSRD1600, RHD4PRSHLSTAGRD1600, RHD4CZ7A012RD5100, RHD4CZ7L015RD8100, RHD4CZ5A014RD8100 |  |  |  | Skilled labor [130.68 h]; Unskilled Labor [65.34 h]; Electrician [16.34 h]; Equipment Opreator [19.6 h]; Boom Truck [13.07 h]; Concrete Mixer Truck [6.53 h]; Traffic signs, ground mounted, 1 Sheet Aluminium, (breakaway)Single post [14 nr] | 17,164 |  | A012 | Z7 | CONS | RD | Traffic Signage | AFT |
|  | 7131 | **RHD4-02-002-A012-(RD)-Precast Interlocking Block Pavers** |  |  |  |  |  |  |  |  |  |  |  |  |  |  |  |  |
|  | 7129 | **RHD4-02-002-A012-(RD)-Bituminous concrete wearing course including tack coat (RC2)** |  | 2028-05-18 | 2028-05-20 |  |  |  |  |  |  |  |  |  |  |  |  |  |
| RHD4CZ7A012RD4100 |  | Supply, lay and compaction Asphaltic wearing course including tack Coat (RC2)for Road Network - (RD-A-1 /2)-Z7-A012-RD | 2d | 2028-05-18 | 2028-05-20 | RHD4CZ7A012RD5100, RHD4CZ7L015RD4100 |  |  |  | Skilled labor [14.59 h]; Unskilled Labor [87.78 h]; Equipment Opreator [219.44 h]; Bobcat [14.59 h]; Roller compactor [14.59 h]; Asphalt Paver [14.59 h]; Rubber Compactor [29.3 h]; MC1/RC2 Sprinkler [14.59 h]; Dump Truck [131.66 h]; Bituminous concrete wearing course, (Grading I - Class A), including tack coat (RC2) [697.91 m3] | 378,965.13 |  | A012 | Z7 | CONS | RD | 50 mm | AFT |
|  | 7132 | **RHD4-02-002-A012-(RD)-Pavement Marking** |  | 2028-05-21 | 2028-05-27 |  |  |  |  |  |  |  |  |  |  |  |  |  |
| RHD4CZ7A012RD7100 |  | Pavement Markings for Road Network - (RD-A-1 /2)-Z7-A012-RD | 6d | 2028-05-21 | 2028-05-27 | RHD4PRSHLDOSRD1500, RHD4PRSHLSTAGRD1500, RHD4CZ7A012RD4100, RHD4CZ7L015RD7100 FF |  |  |  | Skilled labor [56.74 h]; Unskilled Labor [113.37 h]; Equipment Opreator [56.74 h]; Road Marking Machine [56.74 h]; Retroreflective Thermoplastic White Traffic Markings [169.36 m2]; Retroreflective Thermoplastic Yellow, Traffic Markings [149.32 m2]; Rumble strip [189 m]; Retroreflective raised pavement markers (cat eyes) [814 nr] | 60,802.08 |  | A012 | Z7 | CONS | RD | Pavement Marking | AFT |
|  | 6950 | **RHD4-02-002-Z7-A012-Storm Network - ST** |  | 2026-08-04 | 2027-05-13 |  |  |  |  |  |  |  |  |  |  |  |  |  |
|  | 6967 | **RHD4-02-002-A012-(ST)-MH Works - 1200 mm diameter** |  |  |  |  |  |  |  |  |  |  |  |  |  |  |  |  |
|  | 2039 | **RHD4-02-002-A012-(ST)-GRP Pipes - 1000 mm diameter** |  | 2026-08-05 | 2027-02-09 |  |  |  |  |  |  |  |  |  |  |  |  |  |
| RHD4CZ7A012ST1106 |  | Excavation works for GRP Pipe Line 1000 mm - (RD-A-1 /2)-Z7-A012-ST | 2d | 2026-08-05 A | 2026-08-08 A | RHD4CZ7L015ST1105 | 100% | 2026-08-18 | 2026-08-19 | Skilled labor [25.05 h]; Unskilled Labor [25.05 h]; Equipment Opreator [30.06 h]; Excavator-Poclain [25.05 h]; Dump Truck [5.01 h]; GRP (1000mm Diameter) - ST - Depth: 1.51m - 2.5m [22.93 m]; GRP (1000mm Diameter) - ST - Depth: 2.51m - 3.5m [28.83 m]; GRP (1000mm Diameter) - ST - Depth: 3.51m - 4.5m [2.11 m] | 58,616.45 | 58,616.45 | A012 | Z7 | CONS | ST | Excavation | bef |
| RHD4CZ7A012ST1206 |  | Bedding works for GRP Pipe Line 1000 mm - (RD-A-1 /2)-Z7-A012-ST | 2d | 2026-08-09 A | 2026-08-11 A | RHD4CZ7A012ST1106 | 100% | 2026-08-20 | 2026-08-22 | Skilled labor [25.05 h]; Unskilled Labor [50.1 h]; Equipment Opreator [50.1 h]; Excavator-Poclain [25.05 h]; Dump Truck [25.05 h]; GRP (1000mm Diameter) - ST - Depth: 1.51m - 2.5m [7.64 m]; GRP (1000mm Diameter) - ST - Depth: 2.51m - 3.5m [9.61 m]; GRP (1000mm Diameter) - ST - Depth: 3.51m - 4.5m [0.7 m] | 19,531.18 | 19,531.18 | A012 | Z7 | CONS | ST | Bedding | bef |
| RHD4CZ7A012ST1306 |  | Installing for GRP Pipe Line 1000 mm - (RD-A-1 /2)-Z7-A012-ST | 2d | 2026-08-12 A | 2026-08-13 A | RHD4CZ7A012ST1206 | 100% | 2026-08-23 | 2026-08-24 | Unskilled Labor [30.06 h]; Plumber [15.03 h]; GRP (1000mm Diameter) - ST - Depth: 1.51m - 2.5m [61.14 m]; GRP (1000mm Diameter) - ST - Depth: 2.51m - 3.5m [76.87 m]; GRP (1000mm Diameter) - ST - Depth: 3.51m - 4.5m [5.64 m] | 156,310.72 | 156,310.72 | A012 | Z7 | CONS | ST | Installation | bef |
| RHD4CZ7A012ST1506 |  | Backfilling and warning tape works for GRP Pipe Line 1000 mm - (RD-A-1 /2)-Z7-A012-ST | 2d | 2026-08-15 A | 2026-08-17 A | RHD4CZ7A012ST1406, RHD4CZ7A012ST3501 | 100% | 2026-08-30 | 2026-08-31 | Skilled labor [25.05 h]; Unskilled Labor [50.1 h]; Equipment Opreator [50.1 h]; Excavator-Poclain [25.05 h]; Dump Truck [25.05 h]; GRP (1000mm Diameter) - ST - Depth: 1.51m - 2.5m [30.57 m]; GRP (1000mm Diameter) - ST - Depth: 2.51m - 3.5m [38.44 m]; GRP (1000mm Diameter) - ST - Depth: 3.51m - 4.5m [2.82 m] | 78,161.38 | 78,161.38 | A012 | Z7 | CONS | ST | Backfilling | bef |
| RHD4CZ7A012ST1406 |  | Primary Test for GRP Pipe Line 1000 mm - (RD-A-1 /2)-Z7-A012-ST | 2d | 2027-02-08 | 2027-02-09 | RHD4CZ7A012ST1306 |  |  |  | Unskilled Labor [13.29 h]; Plumber [13.29 h]; Equipment Opreator [13.29 h]; Water Truck [13.29 h]; GRP (1000mm Diameter) - ST - Depth: 1.51m - 2.5m [30.57 m]; GRP (1000mm Diameter) - ST - Depth: 2.51m - 3.5m [38.44 m]; GRP (1000mm Diameter) - ST - Depth: 3.51m - 4.5m [2.82 m] | 78,161.38 |  | A012 | Z7 | CONS | ST | Primary Test | bef |
|  | 5254 | **RHD4-02-002-A012-(ST)-GRP Pipes - 900 mm diameter** |  | 2026-09-05 | 2027-05-06 |  |  |  |  |  |  |  |  |  |  |  |  |  |
| RHD4CZ7A012ST1105 |  | Excavation works for GRP Pipe Line 900 mm - (RD-A-1 /2)-Z7-A012-ST | 2d | 2026-09-05 A | 2026-09-06 A | RHD4CZ7A012ST1106, RHD4CZ7L015ST1104 | 100% | 2027-01-11 | 2027-01-12 | Skilled labor [6.64 h]; Unskilled Labor [6.64 h]; Equipment Opreator [7.95 h]; Excavator-Poclain [6.64 h]; Dump Truck [1.31 h]; GRP (900mm Diameter) - ST - Depth: 1.51m - 2.5m [13.77 m]; GRP (900mm Diameter) - ST - Depth: 2.51m - 3.5m | 10,974.69 | 10,974.69 | A012 | Z7 | CONS | ST | Excavation | bef |
| RHD4CZ7A012ST1205 |  | Bedding works for GRP Pipe Line 900 mm - (RD-A-1 /2)-Z7-A012-ST | 2d | 2026-09-06 A | 2026-09-07 A | RHD4CZ7A012ST1105 | 100% | 2027-01-13 | 2027-01-14 | Skilled labor [6.64 h]; Unskilled Labor [13.29 h]; Equipment Opreator [13.29 h]; Excavator-Poclain [6.64 h]; Dump Truck [6.64 h]; GRP (900mm Diameter) - ST - Depth: 1.51m - 2.5m [4.59 m]; GRP (900mm Diameter) - ST - Depth: 2.51m - 3.5m | 3,658.23 | 3,658.23 | A012 | Z7 | CONS | ST | Bedding | bef |
| RHD4CZ7A012ST1305 |  | Installing for GRP Pipe Line 900 mm - (RD-A-1 /2)-Z7-A012-ST | 2d | 2026-09-07 A | 2026-09-08 A | RHD4CZ7A012ST1205 | 100% | 2027-01-16 | 2027-01-17 | Unskilled Labor [7.95 h]; Plumber [4 h]; GRP (900mm Diameter) - ST - Depth: 1.51m - 2.5m [36.72 m]; GRP (900mm Diameter) - ST - Depth: 2.51m - 3.5m | 29,265.84 | 29,265.84 | A012 | Z7 | CONS | ST | Installation | bef |
| RHD4CZ7A012ST1505 |  | Backfilling and warning tape works for GRP Pipe Line 900 mm - (RD-A-1 /2)-Z7-A012-ST | 2d | 2026-09-08 A | 2026-09-09 A | RHD4CZ7A012ST1405, RHD4CZ7A012ST3501 | 100% | 2027-01-20 | 2027-01-21 | Skilled labor [6.64 h]; Unskilled Labor [13.29 h]; Equipment Opreator [13.29 h]; Excavator-Poclain [6.64 h]; Dump Truck [6.64 h]; GRP (900mm Diameter) - ST - Depth: 1.51m - 2.5m [18.36 m]; GRP (900mm Diameter) - ST - Depth: 2.51m - 3.5m | 14,632.92 | 14,632.92 | A012 | Z7 | CONS | ST | Backfilling | bef |
| RHD4CZ7A012ST1405 |  | Primary Test for GRP Pipe Line 900 mm - (RD-A-1 /2)-Z7-A012-ST | 2d | 2027-05-05 | 2027-05-06 | RHD4CZ7A012ST1305 |  |  |  | Unskilled Labor [3.38 h]; Plumber [3.38 h]; Equipment Opreator [3.38 h]; Water Truck [3.38 h]; GRP (900mm Diameter) - ST - Depth: 1.51m - 2.5m [18.36 m]; GRP (900mm Diameter) - ST - Depth: 2.51m - 3.5m | 14,632.92 |  | A012 | Z7 | CONS | ST | Primary Test | bef |
|  | 6576 | **RHD4-02-002-L015-(ST)-GRP Pipes - 700 mm diameter** |  | 2026-09-05 | 2027-05-06 |  |  |  |  |  |  |  |  |  |  |  |  |  |
| RHD4CZ7A012ST1103 |  | Excavation works for GRP Pipe Line 700 mm - (RD-A-1 /2)-Z7-A012-ST | 2d | 2026-09-05 A | 2026-09-06 A | RHD4CZ7A012ST3201, RHD4CZ7A012ST1104 | 100% | 2027-01-16 | 2027-01-17 | Skilled labor [3.7 h]; Unskilled Labor [3.7 h]; Equipment Opreator [4.47 h]; Excavator-Poclain [3.7 h]; Dump Truck [0.8 h]; GRP (700mm Diameter) - ST - Depth less than 1.5 m [6.84 m]; GRP (700mm Diameter) - ST - Depth: 1.51m - 2.5m | 3,789.36 | 3,789.36 | A012 | Z7 | CONS | ST | Excavation | bef |
| RHD4CZ7A012ST1203 |  | Bedding works for GRP Pipe Line 700 mm - (RD-A-1 /2)-Z7-A012-ST | 2d | 2026-09-06 A | 2026-09-07 A | RHD4CZ7A012ST1103 | 100% | 2027-01-18 | 2027-01-19 | Skilled labor [3.7 h]; Unskilled Labor [7.41 h]; Equipment Opreator [7.41 h]; Excavator-Poclain [3.7 h]; Dump Truck [3.7 h]; GRP (700mm Diameter) - ST - Depth less than 1.5 m [3.42 m]; GRP (700mm Diameter) - ST - Depth: 1.51m - 2.5m | 1,894.68 | 1,894.68 | A012 | Z7 | CONS | ST | Bedding | bef |
| RHD4CZ7A012ST1303 |  | Installing for GRP Pipe Line 700 mm - (RD-A-1 /2)-Z7-A012-ST | 2d | 2026-09-07 A | 2026-09-08 A | RHD4CZ7A012ST1203, RHD4CZ7A012ST3301 | 100% | 2027-01-20 | 2027-01-21 | Unskilled Labor [3.7 h]; Plumber [1.85 h]; GRP (700mm Diameter) - ST - Depth less than 1.5 m [30.77 m]; GRP (700mm Diameter) - ST - Depth: 1.51m - 2.5m | 17,046.58 | 17,046.58 | A012 | Z7 | CONS | ST | Installation | bef |
| RHD4CZ7A012ST1503 |  | Backfilling and warning tape works for GRP Pipe Line 700 mm - (RD-A-1 /2)-Z7-A012-ST | 2d | 2026-09-08 A | 2026-09-09 A | RHD4CZ7A012ST1403, RHD4CZ7A012ST1504 | 100% | 2027-01-27 | 2027-01-28 | Skilled labor [3.7 h]; Unskilled Labor [7.41 h]; Equipment Opreator [7.41 h]; Excavator-Poclain [3.7 h]; Dump Truck [3.7 h]; GRP (700mm Diameter) - ST - Depth less than 1.5 m [13.68 m]; GRP (700mm Diameter) - ST - Depth: 1.51m - 2.5m | 7,578.72 | 7,578.72 | A012 | Z7 | CONS | ST | Backfilling | bef |
| RHD4CZ7A012ST1403 |  | Primary Test for GRP Pipe Line 700 mm - (RD-A-1 /2)-Z7-A012-ST | 2d | 2027-05-05 | 2027-05-06 | RHD4CZ7A012ST1303 |  |  |  | Unskilled Labor [1.85 h]; Plumber [1.85 h]; Equipment Opreator [1.85 h]; Water Truck [1.85 h]; GRP (700mm Diameter) - ST - Depth less than 1.5 m [13.68 m]; GRP (700mm Diameter) - ST - Depth: 1.51m - 2.5m | 7,578.72 |  | A012 | Z7 | CONS | ST | Primary Test | bef |

| ID | WBS | Activity | Duration | Start | Finish | Predecessors | Complete | Remaining | Planned start | Planned finish | Resources | Cost | Actual cost | RDH4-01-001-Road and Block Names-1 | RDH4-01-001-Zones-1 | RDH4-01-001-Phases-1 | RDH4-01-001-Networks-1 | RDH4-01-001-Work Method-1 | RDH4-01-001-MENEM |
| --- | --- | --- | --- | --- | --- | --- | --- | --- | --- | --- | --- | --- | --- | --- | --- | --- | --- | --- | --- |
|  | 6590 | **RHD4-02-002-L015-(ST)-MH Works - 1500 mm diameter** |  | 2027-02-08 | 2027-02-18 |  |  |  |  |  |  |  |  |  |  |  |  |  |  |
| RHD4CZ7A012ST3101 |  | Excavation and PC Blinding works for MH 1500 mm - (RD-A-1 /2)-Z7-A012-ST | 2d | 2027-02-08 | 2027-02-09 | RHD4CZ7A012ST1106 SS |  |  |  |  | Skilled labor [16.34 h]; Unskilled Labor [16.34 h]; Equipment Opreator [26.14 h]; Excavator-Poclain [16.34 h]; Water Truck [1.6 h]; Dump Truck [8.17 h]; MH (1500mm Diameter) - ST - depth 1.50 - 2.5m [0.25 nr]; MH (1500mm Diameter) - ST - depth 2.51 - 3.5m [0.5 nr] | 11,897.5 |  | A012 | Z7 | CONS | ST | Excavation | bef |
| RHD4CZ7A012ST3201 |  | Installation of Base for MH 1500 mm - (RD-A-1 /2)-Z7-A012-ST | 2d | 2027-02-10 | 2027-02-11 | RHD4CZ7A012ST3101 |  |  |  |  | Skilled labor [16.34 h]; Unskilled Labor [16.34 h]; Equipment Opreator [6.53 h]; Boom Truck [3.27 h]; Concrete Mixer Truck [3.27 h]; MH (1500mm Diameter) - ST - depth 1.50 - 2.5m [0.25 nr]; MH (1500mm Diameter) - ST - depth 2.51 - 3.5m [0.5 nr] | 11,897.5 |  | A012 | Z7 | CONS | ST | Installing Base | bef |
| RHD4CZ7A012ST3301 |  | MH Ring and C.Slab works and Backfilling works for MH 1500 mm - (RD-A-1 /2)-Z7-A012-ST | 2d | 2027-02-13 | 2027-02-14 | RHD4CZ7A012ST3201 |  |  |  |  | Skilled labor [16.34 h]; Unskilled Labor [16.34 h]; Equipment Opreator [11.43 h]; Boom Truck [6.53 h]; Concrete Mixer Truck [4.9 h]; MH (1500mm Diameter) - ST - depth 1.50 - 2.5m [0.35 nr]; MH (1500mm Diameter) - ST - depth 2.51 - 3.5m [0.7 nr] | 16,656.5 |  | A012 | Z7 | CONS | ST | Installing Rings | bef |
| RHD4CZ7A012ST3401 |  | Steel Cover for MH 1500 mm - (RD-A-1 /2)-Z7-A012-ST | 2d | 2027-02-15 | 2027-02-16 | RHD4CZ7A012ST3301 |  |  |  |  | Skilled labor [10.89 h]; Unskilled Labor [21.78 h]; Equipment Opreator [2.18 h]; Boom Truck [2.18 h]; MH (1500mm Diameter) - ST - depth 1.50 - 2.5m [0.05 nr]; MH (1500mm Diameter) - ST - depth 2.51 - 3.5m [0.1 nr] | 2,379.5 |  | A012 | Z7 | CONS | ST | Steel Cover | bef |
| RHD4CZ7A012ST3501 |  | Finishing, Benching, Testing works for MH 1500 mm - (RD-A-1 /2)-Z7-A012-ST | 2d | 2027-02-17 | 2027-02-18 | RHD4CZ7A012ST3401 |  |  |  |  | Skilled labor [16.34 h]; Unskilled Labor [32.67 h]; Plumber [16.34 h]; Equipment Opreator [3.27 h]; Water Truck [3.27 h]; MH (1500mm Diameter) - ST - depth 1.50 - 2.5m [0.1 nr]; MH (1500mm Diameter) - ST - depth 2.51 - 3.5m [0.2 nr] | 4,759 |  | A012 | Z7 | CONS | ST | Benching | bef |
|  | 6024 | **RHD4-02-002-A012-(ST)-MH Works - 2000 mm diameter** |  | 2026-08-04 | 2027-05-13 |  |  |  |  |  |  |  |  |  |  |  |  |  |  |
| RHD4CZ7A012ST3102 |  | Excavation and PC Blinding works for MH 2000 mm - (RD-A-1 /2)-Z7-A012-ST | 2d | 2026-08-04 A | 2026-08-06 A | RHD4CZ7A012ST3101, RHD4CZ7A012ST1105 | 100% |  | 2027-01-13 | 2027-01-14 | Skilled labor [16.34 h]; Unskilled Labor [16.34 h]; Equipment Opreator [26.14 h]; Excavator-Poclain [16.34 h]; Water Truck [1.6 h]; Dump Truck [8.17 h]; MH (2000mm Diameter) - ST - depth 2.51 - 3.5m [0.75 nr]; MH (2000mm Diameter) - ST - depth 3.51 -4.5m [0.25 nr] | 22,132.25 | 22,132.25 | A012 | Z7 | CONS | ST | Excavation | bef |
| RHD4CZ7A012ST3202 |  | Installation of Base for MH 2000 mm - (RD-A-1 /2)-Z7-A012-ST | 2d | 2026-09-19 A | 2027-05-06 | RHD4CZ7A012ST3102 | 75% | 2d | 2027-01-16 | 2027-01-17 | Skilled labor [21.78 h]; Unskilled Labor [21.78 h]; Equipment Opreator [8.71 h]; Boom Truck [4.36 h]; Concrete Mixer Truck [4.36 h]; MH (2000mm Diameter) - ST - depth 2.51 - 3.5m [0.75 nr]; MH (2000mm Diameter) - ST - depth 3.51 -4.5m [0.25 nr] | 22,132.25 |  | A012 | Z7 | CONS | ST | Installing Base | bef |
| RHD4CZ7A012ST3302 |  | MH Ring and C.Slab works and Backfilling works for MH 2000 mm - (RD-A-1 /2)-Z7-A012-ST | 2d | 2026-09-21 A | 2027-05-09 | RHD4CZ7A012ST3202 | 75% | 2d | 2027-01-18 | 2027-01-19 | Skilled labor [21.78 h]; Unskilled Labor [21.78 h]; Equipment Opreator [15.25 h]; Boom Truck [8.71 h]; Concrete Mixer Truck [6.53 h]; MH (2000mm Diameter) - ST - depth 2.51 - 3.5m [1.05 nr]; MH (2000mm Diameter) - ST - depth 3.51 -4.5m [0.35 nr] | 30,985.15 |  | A012 | Z7 | CONS | ST | Installing Rings | bef |
| RHD4CZ7A012ST3402 |  | Steel Cover for MH 2000 mm - (RD-A-1 /2)-Z7-A012-ST | 2d | 2027-05-10 | 2027-05-11 | RHD4CZ7A012ST3302 |  |  |  |  | Skilled labor [14.48 h]; Unskilled Labor [29.08 h]; Equipment Opreator [2.94 h]; Boom Truck [2.94 h]; MH (2000mm Diameter) - ST - depth 2.51 - 3.5m [0.15 nr]; MH (2000mm Diameter) - ST - depth 3.51 -4.5m [0.05 nr] | 4,426.45 |  | A012 | Z7 | CONS | ST | Steel Cover | bef |
| RHD4CZ7A012ST3502 |  | Finishing, Benching, Testing works for MH 2000 mm - (RD-A-1 /2)-Z7-A012-ST | 2d | 2027-05-12 | 2027-05-13 | RHD4CZ7A012ST3402, RHD4CZ7A012ST3501 |  |  |  |  | Skilled labor [16.34 h]; Unskilled Labor [32.67 h]; Plumber [16.34 h]; Equipment Opreator [3.27 h]; Water Truck [3.27 h]; MH (2000mm Diameter) - ST - depth 2.51 - 3.5m [0.3 nr]; MH (2000mm Diameter) - ST - depth 3.51 -4.5m [0.1 nr] | 8,852.9 |  | A012 | Z7 | CONS | ST | Benching | bef |
|  | 6010 | **RHD4-02-002-A012-(ST)-GRP Pipes - 800 mm diameter** |  | 2026-09-05 | 2027-05-06 |  |  |  |  |  |  |  |  |  |  |  |  |  |  |
| RHD4CZ7A012ST1104 |  | Excavation works for GRP Pipe Line 800 mm - (RD-A-1 /2)-Z7-A012-ST | 2d | 2026-09-05 A | 2026-09-06 A | RHD4CZ7A012ST1105 | 100% |  | 2027-01-13 | 2027-01-14 | Skilled labor [5.23 h]; Unskilled Labor [5.23 h]; Equipment Opreator [6.21 h]; Excavator-Poclain [5.23 h]; Dump Truck [1.09 h]; GRP (800mm Diameter) - ST - Depth: 1.51m - 2.5m [14.33 m] | 10,059.66 | 10,059.66 | A012 | Z7 | CONS | ST | Excavation | bef |
| RHD4CZ7A012ST1204 |  | Bedding works for GRP Pipe Line 800 mm - (RD-A-1 /2)-Z7-A012-ST | 2d | 2026-09-06 A | 2026-09-07 A | RHD4CZ7A012ST1104 | 100% |  | 2027-01-16 | 2027-01-17 | Skilled labor [5.23 h]; Unskilled Labor [10.45 h]; Equipment Opreator [10.45 h]; Excavator-Poclain [5.23 h]; Dump Truck [5.23 h]; GRP (800mm Diameter) - ST - Depth: 1.51m - 2.5m [4.78 m] | 3,355.56 | 3,355.56 | A012 | Z7 | CONS | ST | Bedding | bef |
| RHD4CZ7A012ST1304 |  | Installing for GRP Pipe Line 800 mm - (RD-A-1 /2)-Z7-A012-ST | 2d | 2026-09-07 A | 2026-09-08 A | RHD4CZ7A012ST1204 | 100% |  | 2027-01-18 | 2027-01-19 | Unskilled Labor [6.97 h]; Plumber [3.48 h]; GRP (800mm Diameter) - ST - Depth: 1.51m - 2.5m [38.22 m] | 26,830.44 | 26,830.44 | A012 | Z7 | CONS | ST | Installation | bef |
| RHD4CZ7A012ST1504 |  | Backfilling and warning tape works for GRP Pipe Line 800 mm - (RD-A-1 /2)-Z7-A012-ST | 2d | 2026-09-08 A | 2026-09-09 A | RHD4CZ7A012ST1404, RHD4CZ7A012ST1505, RHD4CZ7A012ST1506, RHD4CZ7A012ST3502 | 100% |  | 2027-01-25 | 2027-01-26 | Skilled labor [5.23 h]; Unskilled Labor [10.45 h]; Equipment Opreator [10.45 h]; Excavator-Poclain [5.23 h]; Dump Truck [5.23 h]; GRP (800mm Diameter) - ST - Depth: 1.51m - 2.5m [19.11 m] | 13,415.22 | 13,415.22 | A012 | Z7 | CONS | ST | Backfilling | bef |
| RHD4CZ7A012ST1404 |  | Primary Test for GRP Pipe Line 800 mm - (RD-A-1 /2)-Z7-A012-ST | 2d | 2027-05-05 | 2027-05-06 | RHD4CZ7A012ST1304 |  |  |  |  | Unskilled Labor [2.61 h]; Plumber [2.61 h]; Equipment Opreator [2.61 h]; Water Truck [2.61 h]; GRP (800mm Diameter) - ST - Depth: 1.51m - 2.5m [19.11 m] | 13,415.22 |  | A012 | Z7 | CONS | ST | Primary Test | bef |
|  | 6953 | **RHD4-02-002-A012-(ST)-GRP Pipes - 600 mm diameter** |  |  |  |  |  |  |  |  |  |  |  |  |  |  |  |  |  |
|  | 6951 | **RHD4-02-002-A012-(ST)-GRP Pipes - 400 mm diameter** |  |  |  |  |  |  |  |  |  |  |  |  |  |  |  |  |  |
|  | 6966 | **RHD4-02-002-A012-(ST)-UPVC Pipes - 400 mm diameter** |  |  |  |  |  |  |  |  |  |  |  |  |  |  |  |  |  |
|  | 6965 | **RHD4-02-002-A012-(ST)-UPVC Pipes - 300 mm diameter** |  | 2026-08-23 | 2027-05-06 |  |  |  |  |  |  |  |  |  |  |  |  |  |  |
| RHD4CZ7A012ST2100 |  | Excavation works for UPVC Pipe Line 300 mm - (RD-A-1 /2)-Z7-A012-ST | 2d | 2026-08-23 A | 2026-08-24 A | RHD4ENSDZ7APPST110, RHD4CZ7A012ST1103 | 100% |  | 2027-01-18 | 2027-01-19 | Skilled labor [12.96 h]; Unskilled Labor [12.96 h]; Equipment Opreator [15.46 h]; Excavator-Poclain [12.96 h]; Dump Truck [2.61 h]; UPVC (300mm Diameter) - ST - Depth less than 1.5 [29.29 m]; UPVC (300mm Diameter) - ST - Depth: 1.51m - 2.5m | 8,874.87 | 8,874.87 | A012 | Z7 | CONS | ST | Excavation | bef |
| RHD4CZ7A012ST2200 |  | Bedding works for UPVC Pipe Line 300 mm - (RD-A-1 /2)-Z7-A012-ST | 2d | 2026-08-25 A | 2026-08-26 A | RHD4CZ7A012ST2100 | 100% |  | 2027-01-20 | 2027-01-21 | Skilled labor [10.89 h]; Unskilled Labor [21.78 h]; Equipment Opreator [21.78 h]; Excavator-Poclain [10.89 h]; Dump Truck [10.89 h]; UPVC (300mm Diameter) - ST - Depth less than 1.5 [14.64 m]; UPVC (300mm Diameter) - ST - Depth: 1.51m - 2.5m | 4,435.92 | 4,435.92 | A012 | Z7 | CONS | ST | Bedding | bef |
| RHD4CZ7A012ST2300 |  | Installing for UPVC Pipe Line 300 mm - (RD-A-1 /2)-Z7-A012-ST | 2d | 2026-08-27 A | 2026-08-29 A | RHD4PRSHLDOSST1106, RHD4PRSHLSTAGST1106, RHD4CZ7A012ST2200 | 100% |  | 2027-01-23 | 2027-01-24 | Unskilled Labor [25.81 h]; Plumber [12.96 h]; UPVC (300mm Diameter) - ST - Depth less than 1.5 [131.79 m]; UPVC (300mm Diameter) - ST - Depth: 1.51m - 2.5m | 39,932.37 | 39,932.37 | A012 | Z7 | CONS | ST | Installation | bef |
| RHD4CZ7A012ST2500 |  | Backfilling and warning tape works for UPVC Pipe Line 300 mm - (RD-A-1 /2)-Z7-A012-ST | 2d | 2026-09-05 A | 2026-09-06 A | RHD4CZ7A012ST2400, RHD4CZ7A012ST6100 | 100% |  | 2027-01-27 | 2027-01-28 | Skilled labor [15.9 h]; Unskilled Labor [31.91 h]; Equipment Opreator [31.91 h]; Excavator-Poclain [15.9 h]; Dump Truck [15.9 h]; UPVC (300mm Diameter) - ST - Depth less than 1.5 [58.57 m]; UPVC (300mm Diameter) - ST - Depth: 1.51m - 2.5m | 17,746.71 | 17,746.71 | A012 | Z7 | CONS | ST | Backfilling | bef |
| RHD4CZ7A012ST2400 |  | Primary Test for UPVC Pipe Line 300 mm - (RD-A-1 /2)-Z7-A012-ST | 2d | 2027-05-05 | 2027-05-06 | RHD4CZ7A012ST2300 |  |  |  |  | Unskilled Labor [6.86 h]; Plumber [6.86 h]; Equipment Opreator [6.86 h]; Water Truck [6.86 h]; UPVC (300mm Diameter) - ST - Depth less than 1.5 [58.57 m]; UPVC (300mm Diameter) - ST - Depth: 1.51m - 2.5m | 17,746.71 |  | A012 | Z7 | CONS | ST | Primary Test | bef |

| ID | WBS | Activity | Duration | Start | Finish | Predecessors | Complete | Remaining | Planned start | Planned finish | Resources | Cost | Actual cost | RDH4-01-001-Road and Block Names-1 | RDH4-01-001-Zones-1 | RDH4-01-001-Phases-1 | RDH4-01-001-Networks-1 | RDH4-01-001-Work Method-1 | RDH4-01-001-MENEM |
| --- | --- | --- | --- | --- | --- | --- | --- | --- | --- | --- | --- | --- | --- | --- | --- | --- | --- | --- | --- |
|  | 6973 | **RHD4-02-002-A012-(ST)-Concrete Encasement** |  | 2026-09-07 | 2026-09-08 |  |  |  |  |  |  |  |  |  |  |  |  |  |  |
| RHD4CZ7A012ST6100 |  | Pipe Encasement for Storm Pipelines - (RD-A-1 /2)-Z7-A012-ST | 2d | 2026-09-07 A | 2026-09-08 A | RHD4CZ7A012ST2300 SS, RHD4CZ7A012ST2300 FF, RHD4CZ7A012ST2200 | 100% |  | 2027-01-23 | 2027-01-24 | Skilled labor [0.44 h]; Unskilled Labor [0.44 h]; Equipment Opreator [0.44 h]; Concrete Mixer Truck; Dump Truck [0.44 h]; Pipe Encasement - ST [7.31 m3] | 3,698.86 | 3,698.86 | A012 | Z7 | CONS | ST | Pipe Encasement | bef |
|  | 6974 | **RHD4-02-002-Z7-A012-Catch Basin - ST** |  | 2026-08-18 | 2027-05-11 |  |  |  |  |  |  |  |  |  |  |  |  |  |  |
|  | 6975 | **RHD4-02-002-A012-(ST)-Single Catch Basin Works** |  | 2026-08-18 | 2027-05-10 |  |  |  |  |  |  |  |  |  |  |  |  |  |  |
| RHD4CZ7A012ST7100 |  | Excavation works for Single Catch Basin - (RD-A-1 /2)-Z7-A012-ST | 2d | 2026-08-18 A | 2026-08-19 A | RHD4ENSDZ7APPST110, RHD4CZ7A012ST3102 | 100% |  | 2027-01-16 | 2027-01-17 | Skilled labor [13.07 h]; Unskilled Labor [26.14 h]; Equipment Opreator [19.6 h]; Excavator-Poclain [13.07 h]; Dump Truck [6.53 h]; Single Catch basin - ST [3 nr] | 11,193 | 11,193 | A012 | Z7 | CONS | ST | Excavation | bef |
| RHD4CZ7A012ST7200 |  | PC Blinding, Installation and Pipe connection for Single Catch Basin - (RD-A-1 /2)-Z7-A012-ST | 2d | 2026-09-05 A | 2026-09-06 A | RHD4CZ7A012ST7100 | 100% |  | 2027-01-18 | 2027-01-19 | Skilled labor [13.07 h]; Unskilled Labor [26.14 h]; Plumber [6.53 h]; Equipment Opreator [2.61 h]; Boom Truck [2.61 h]; Single Catch basin - ST [2.4 nr] | 8,954.4 | 8,954.4 | A012 | Z7 | CONS | ST | Installation & Pipe Connection | bef |
| RHD4CZ7A012ST7300 |  | Rings & C.Slab & Final Backfill for Single Catch Basin - (RD-A-1 /2)-Z7-A012-ST | 2d | 2026-09-07 A | 2026-09-19 A | RHD4PRSHLDOSST1306, RHD4PRSHLSTAGST1306, RHD4CZ7A012ST7200 | 100% |  | 2027-01-20 | 2027-01-21 | Skilled labor [16.34 h]; Unskilled Labor [32.67 h]; Equipment Opreator [19.6 h]; Boom Truck [3.27 h]; Bobcat [16.34 h]; Single Catch basin - ST [4.2 nr] | 15,670.2 | 15,670.2 | A012 | Z7 | CONS | ST | Rings | bef |
| RHD4CZ7A012ST7400 |  | Steel Cover for Single Catch Basin - (RD-A-1 /2)-Z7-A012-ST | 2d | 2027-05-05 | 2027-05-06 | RHD4PRSHLDOSST1706, RHD4CZ7A012ST7300 |  |  |  |  | Skilled labor [13.07 h]; Unskilled Labor [13.07 h]; Equipment Opreator [2.61 h]; Boom Truck [2.61 h]; Single Catch basin - ST [0.6 nr] | 2,238.6 |  | A012 | Z7 | CONS | ST | Steel Cover | bef |
| RHD4CZ7A012ST7500 |  | Finishing and Insulation works for Single Catch Basin - (RD-A-1 /2)-Z7-A012-ST | 3d | 2027-05-08 | 2027-05-10 | RHD4CZ7A012ST7400 |  |  |  |  | Skilled labor [26.14 h]; Unskilled Labor [52.27 h]; Equipment Opreator [5.23 h]; Boom Truck [5.23 h]; Single Catch basin - ST [1.8 nr] | 6,715.8 |  | A012 | Z7 | CONS | ST | Insulation | bef |
|  | 6976 | **RHD4-02-002-A012-(ST)-Double Catch Basin Works** |  | 2026-08-22 | 2027-05-11 |  |  |  |  |  |  |  |  |  |  |  |  |  |  |
| RHD4CZ7A012ST8100 |  | Excavation works for Double Catch Basin - (RD-A-1 /2)-Z7-A012-ST | 2d | 2026-08-22 A | 2026-08-23 A | RHD4ENSDZ7APPST110, RHD4CZ7A012ST7100 | 100% |  | 2027-01-18 | 2027-01-19 | Skilled labor [4.36 h]; Unskilled Labor [8.71 h]; Equipment Opreator [6.53 h]; Excavator-Poclain [4.36 h]; Dump Truck [2.18 h]; Double Catch basin - ST [0.5 nr] | 6,983 | 6,983 | A012 | Z7 | CONS | ST | Excavation | bef |
| RHD4CZ7A012ST8200 |  | PC Blinding, Installation and Pipe connection for Double Catch Basin - (RD-A-1 /2)-Z7-A012-ST | 2d | 2026-09-05 A | 2026-09-06 A | RHD4CZ7A012ST8100 | 100% |  | 2027-01-20 | 2027-01-21 | Skilled labor [4.36 h]; Unskilled Labor [8.71 h]; Plumber [2.18 h]; Equipment Opreator [0.87 h]; Boom Truck [0.87 h]; Double Catch basin - ST [0.4 nr] | 5,586.4 | 5,586.4 | A012 | Z7 | CONS | ST | Installation & Pipe Connection | bef |
| RHD4CZ7A012ST8300 |  | Rings & C.Slab & Final Backfillfor Double Catch Basin - (RD-A-1 /2)-Z7-A012-ST | 2d | 2026-09-07 A | 2026-09-19 A | RHD4PRSHLDOSST1306, RHD4PRSHLSTAGST1306, RHD4CZ7A012ST8200 | 100% |  | 2027-01-23 | 2027-01-24 | Skilled labor [5.45 h]; Unskilled Labor [10.89 h]; Equipment Opreator [6.53 h]; Boom Truck [1.09 h]; Bobcat [5.45 h]; Double Catch basin - ST [0.7 nr] | 9,776.2 | 9,776.2 | A012 | Z7 | CONS | ST | Rings | bef |
| RHD4CZ7A012ST8400 |  | Steel Cover for Double Catch Basin - (RD-A-1 /2)-Z7-A012-ST | 2d | 2027-05-08 | 2027-05-09 | RHD4PRSHLDOSST1706, RHD4CZ7A012ST8300, RHD4CZ7A012ST7400 |  |  |  |  | Skilled labor [4.36 h]; Unskilled Labor [4.36 h]; Equipment Opreator [0.87 h]; Boom Truck [0.87 h]; Double Catch basin - ST [0.1 nr] | 1,396.6 |  | A012 | Z7 | CONS | ST | Steel Cover | bef |
| RHD4CZ7A012ST8500 |  | Finishing and Insulation works for Double Catch Basin - (RD-A-1 /2)-Z7-A012-ST | 2d | 2027-05-10 | 2027-05-11 | RHD4CZ7A012ST8400 |  |  |  |  | Skilled labor [10.89 h]; Unskilled Labor [21.78 h]; Equipment Opreator [2.18 h]; Boom Truck [2.18 h]; Double Catch basin - ST [0.3 nr] | 4,189.8 |  | A012 | Z7 | CONS | ST | Insulation | bef |
|  | 6810 | **RHD4-02-002-Z7-A012-Sewage Network - SW** |  | 2026-08-04 | 2027-06-15 |  |  |  |  |  |  |  |  |  |  |  |  |  |  |
|  | 6433 | **RHD4-02-002-A012-(SW)-GRP Pipes - 300 mm diameter** |  | 2026-08-11 | 2027-05-20 |  |  |  |  |  |  |  |  |  |  |  |  |  |  |
| RHD4CZ7A012SW1100 |  | Excavation works for GRP Pipe Line 300 mm - (RD-A-1 /2)-Z7-A012-SW | 2d | 2026-08-11 A | 2026-10-26 A | RHD4CZ7A012ST2500 | 100% |  | 2027-01-30 | 2027-01-31 | Skilled labor [19.49 h]; Unskilled Labor [19.49 h]; Equipment Opreator [23.41 h]; Excavator-Poclain [19.49 h]; Dump Truck [3.92 h]; GRP (300mm Diameter) - SW - Depth: 4.51m - 5.5m [27.2 m]; GRP (300mm Diameter) - SW - Depth: more than 5.5m [13.16 m] | 35,265.72 | 35,265.72 | A012 | Z7 | CONS | SW | Excavation | bef |
| RHD4CZ7A012SW1200 |  | Bedding works for GRP Pipe Line 300 mm - (RD-A-1 /2)-Z7-A012-SW | 2d | 2026-10-27 A | 2027-05-09 | RHD4CZ7A012SW1100 | 31% | 2d | 2026-10-27 | 2026-10-28 | Skilled labor [19.49 h]; Unskilled Labor [39.1 h]; Equipment Opreator [39.1 h]; Excavator-Poclain [19.49 h]; Dump Truck [19.49 h]; GRP (300mm Diameter) - SW - Depth: 4.51m - 5.5m [9.07 m]; GRP (300mm Diameter) - SW - Depth: more than 5.5m [4.39 m] | 11,761.26 | 3,603.6 | A012 | Z7 | CONS | SW | Bedding | bef |
| RHD4CZ7A012SW1300 |  | Installing for GRP Pipe Line 300 mm - (RD-A-1 /2)-Z7-A012-SW | 2d | 2026-10-29 A | 2027-05-11 | RHD4CZ7A012SW1200 | 30% | 2d | 2026-10-29 | 2026-10-31 | Unskilled Labor [39.1 h]; Plumber [19.49 h]; Equipment Opreator [19.49 h]; Boom Truck [19.49 h]; GRP (300mm Diameter) - SW - Depth: 4.51m - 5.5m [72.54 m]; GRP (300mm Diameter) - SW - Depth: more than 5.5m [35.1 m] | 94,053.96 | 28,665 | A012 | Z7 | CONS | SW | Installation | bef |
| RHD4CZ7A012SW1400 |  | Primary Test for GRP Pipe Line 300 mm - (RD-A-1 /2)-Z7-A012-SW | 2d | 2027-05-12 | 2027-05-13 | RHD4CZ7A012SW1300 |  |  |  |  | Unskilled Labor [19.49 h]; Plumber [19.49 h]; Equipment Opreator [19.49 h]; Water Truck [19.49 h]; GRP (300mm Diameter) - SW - Depth: 4.51m - 5.5m [36.27 m]; GRP (300mm Diameter) - SW - Depth: more than 5.5m [17.55 m] | 47,026.98 |  | A012 | Z7 | CONS | SW | Primary Test | bef |
| RHD4CZ7A012SW1500 |  | Backfilling and warning tape works for GRP Pipe Line 300 mm - (RD-A-1 /2)-Z7-A012-SW | 2d | 2027-05-19 | 2027-05-20 | RHD4CZ7A012SW1400 |  |  |  |  | Skilled labor [19.49 h]; Unskilled Labor [39.1 h]; Equipment Opreator [39.1 h]; Excavator-Poclain [19.49 h]; Dump Truck [19.49 h]; GRP (300mm Diameter) - SW - Depth: 4.51m - 5.5m [36.27 m]; GRP (300mm Diameter) - SW - Depth: more than 5.5m [17.55 m] | 47,026.98 |  | A012 | Z7 | CONS | SW | Backfilling | bef |
|  | 6442 | **RHD4-02-002-A012-(SW)-MH Works - 1200 mm diameter** |  | 2026-08-04 | 2027-06-15 |  |  |  |  |  |  |  |  |  |  |  |  |  |  |
| RHD4CZ7A012SW3100 |  | Excavation and PC Blinding works for MH 1200 mm - (RD-A-1 /2)-Z7-A012-SW | 6d | 2026-08-04 A | 2027-05-13 | RHD4CZ7A012SW1100 | 86% | 6d | 2027-02-01 | 2027-02-07 | Skilled labor [65.34 h]; Unskilled Labor [65.34 h]; Equipment Opreator [104.55 h]; Excavator-Poclain [65.34 h]; Water Truck [6.53 h]; Dump Truck [32.67 h]; MH (1200mm Diameter) - SW - depth 4.51 -5.5m [0.5 nr]; MH (1200mm Diameter) - SW - depth 5.51-6.0 m [0.75 nr]; MH (1200mm Diameter) - SW - depth more than 6.0 m [0.5 nr] | 29,688 |  | A012 | Z7 | CONS | SW | Excavation | bef |
| RHD4CZ7A012SW3200 |  | Installation of Base for MH 1200 mm - (RD-A-1 /2)-Z7-A012-SW | 7d | 2026-09-20 A | 2027-05-26 | RHD4CZ7A012SW3100 | 29% | 7d | 2027-02-08 | 2027-02-15 | Skilled labor [76.23 h]; Unskilled Labor [76.23 h]; Equipment Opreator [30.49 h]; Boom Truck [15.25 h]; Concrete Mixer Truck [15.25 h]; MH (1200mm Diameter) - SW - depth 4.51 -5.5m [0.5 nr]; MH (1200mm Diameter) - SW - depth 5.51-6.0 m [0.75 nr]; MH (1200mm Diameter) - SW - depth more than 6.0 m [0.5 nr] | 29,688 |  | A012 | Z7 | CONS | SW | Installing Base | bef |
| RHD4CZ7A012SW3300 |  | MH Ring and C.Slab works and Backfilling works for MH 1200 mm - (RD-A-1 /2)-Z7-A012-SW | 7d | 2027-05-27 | 2027-06-03 | RHD4CZ7A012SW3200 |  |  |  |  | Skilled labor [76.23 h]; Unskilled Labor [76.23 h]; Equipment Opreator [53.36 h]; Boom Truck [30.49 h]; Concrete Mixer Truck [22.87 h]; MH (1200mm Diameter) - SW - depth 4.51 -5.5m [0.7 nr]; MH (1200mm Diameter) - SW - depth 5.51-6.0 m [1.05 nr]; MH (1200mm Diameter) - SW - depth more than 6.0 m [0.7 nr] | 41,563.2 |  | A012 | Z7 | CONS | SW | Installing Rings | bef |
| RHD4CZ7A012SW3400 |  | Steel Cover for MH 1200 mm - (RD-A-1 /2)-Z7-A012-SW | 3d | 2027-06-05 | 2027-06-07 | RHD4CZ7A012SW3300 |  |  |  |  | Skilled labor [25.37 h]; Unskilled Labor [50.86 h]; Equipment Opreator [5.12 h]; Boom Truck [5.12 h]; MH (1200mm Diameter) - SW - depth 4.51 -5.5m [0.1 nr]; MH (1200mm Diameter) - SW - depth 5.51-6.0 m [0.15 nr]; MH (1200mm Diameter) - SW - depth more than 6.0 m [0.1 nr] | 5,937.6 |  | A012 | Z7 | CONS | SW | Steel Cover | bef |
| RHD4CZ7A012SW3500 |  | Finishing, Benching, Testing works for MH 1200 mm - (RD-A-1 /2)-Z7-A012-SW | 7d | 2027-06-08 | 2027-06-15 | RHD4CZ7A012SW3400, RHD4CZ7A012ST1503 |  |  |  |  | Skilled labor [76.23 h]; Unskilled Labor [152.46 h]; Plumber [76.23 h]; Equipment Opreator [15.25 h]; Water Truck [15.25 h]; MH (1200mm Diameter) - SW - depth 4.51 -5.5m [0.2 nr]; MH (1200mm Diameter) - SW - depth 5.51-6.0 m [0.3 nr]; MH (1200mm Diameter) - SW - depth more than 6.0 m [0.2 nr] | 11,875.2 |  | A012 | Z7 | CONS | SW | Benching | bef |

| ID | WBS | Activity | Duration | Start | Finish | Predecessors | Complete | Remaining | Planned start | Planned finish | Resources | Cost | Actual cost | RDH4-01-001-Road and Block Names-1 | RDH4-01-001-Zones-1 | RDH4-01-001-Phases-1 | RDH4-01-001-Networks-1 | RDH4-01-001-Work Method-1 | RDH4-01-001-MENEM |
| --- | --- | --- | --- | --- | --- | --- | --- | --- | --- | --- | --- | --- | --- | --- | --- | --- | --- | --- | --- |
|  | 6434 | **RHD4-02-002-A012-(SW)-GRP Pipes - 400 mm diameter** |  | 2026-09-15 | 2027-06-10 |  |  |  |  |  |  |  |  |  |  |  |  |  |  |
| RHD4CZ7A012SW1101 |  | Excavation works for GRP Pipe Line 400 mm - (RD-A-1 /2)-Z7-A012-SW | 2d | 2026-09-15 A | 2027-05-20 | RHD4CZ7A012SW3100 | 18% | 2d | 2027-02-08 | 2027-02-09 | Skilled labor [16.23 h]; Unskilled Labor [16.23 h]; Equipment Opreator [19.49 h]; Excavator-Poclain [16.23 h]; Dump Truck [3.27 h]; GRP (400mm Diameter) - SW - Depth: more than 4.5m [33.56 m] | 24,096.08 | 4,308.38 | A012 | Z7 | CONS | SW | Excavation | bef |
| RHD4CZ7A012SW1201 |  | Bedding works for GRP Pipe Line 400 mm - (RD-A-1 /2)-Z7-A012-SW | 2d | 2026-10-27 A | 2027-05-23 | RHD4CZ7A012SW1101 | 21% | 2d | 2026-10-27 | 2026-10-28 | Skilled labor [16.23 h]; Unskilled Labor [32.45 h]; Equipment Opreator [32.45 h]; Excavator-Poclain [16.23 h]; Dump Truck [16.23 h]; GRP (400mm Diameter) - SW - Depth: more than 4.5m [11.19 m] | 8,034.42 | 1,687.23 | A012 | Z7 | CONS | SW | Bedding | bef |
| RHD4CZ7A012SW1301 |  | Installing for GRP Pipe Line 400 mm - (RD-A-1 /2)-Z7-A012-SW | 2d | 2026-10-28 A | 2027-06-06 | RHD4CZ7A012SW1201, RHD4CZ7A012SW3300 | 21% | 2d | 2026-10-28 | 2026-10-29 | Unskilled Labor [32.45 h]; Plumber [16.23 h]; Equipment Opreator [16.23 h]; Boom Truck [16.23 h]; GRP (400mm Diameter) - SW - Depth: more than 4.5m [89.48 m] | 64,246.64 | 13,498.22 | A012 | Z7 | CONS | SW | Installation | bef |
| RHD4CZ7A012SW1401 |  | Primary Test for GRP Pipe Line 400 mm - (RD-A-1 /2)-Z7-A012-SW | 2d | 2027-06-07 | 2027-06-08 | RHD4CZ7A012SW1301 |  |  |  |  | Unskilled Labor [16.23 h]; Plumber [16.23 h]; Equipment Opreator [16.23 h]; Water Truck [16.23 h]; GRP (400mm Diameter) - SW - Depth: more than 4.5m [44.74 m] | 32,123.32 |  | A012 | Z7 | CONS | SW | Primary Test | bef |
| RHD4CZ7A012SW1501 |  | Backfilling and warning tape works for GRP Pipe Line 400 mm - (RD-A-1 /2)-Z7-A012-SW | 2d | 2027-06-09 | 2027-06-10 | RHD4CZ7A012SW1401, RHD4CZ7A012SW1500 |  |  |  |  | Skilled labor [16.23 h]; Unskilled Labor [32.45 h]; Equipment Opreator [32.45 h]; Excavator-Poclain [16.23 h]; Dump Truck [16.23 h]; GRP (400mm Diameter) - SW - Depth: more than 4.5m [44.74 m] | 32,123.32 |  | A012 | Z7 | CONS | SW | Backfilling | bef |
|  | 6438 | **RHD4-02-002-A012-(SW)-UPVC Pipes - 200 mm diameter** |  | 2026-09-15 | 2027-05-23 |  |  |  |  |  |  |  |  |  |  |  |  |  |  |
| RHD4CZ7A012SW2100 |  | Excavation works for UPVC Pipe Line 200 mm - (RD-A-1 /2)-Z7-A012-SW | 2d | 2026-09-15 A | 2026-09-16 A | RHD4CZ7A012SW1101 | 100% |  | 2027-02-10 | 2027-02-11 | Skilled labor [4.47 h]; Unskilled Labor [4.47 h]; Equipment Opreator [5.34 h]; Excavator-Poclain [4.47 h]; Dump Truck [0.87 h]; UPVC (200mm Diameter) - SW - Depth: 4.51m - 5.5m [9.22 m] | 6,398.68 | 6,398.68 | A012 | Z7 | CONS | SW | Excavation | bef |
| RHD4CZ7A012SW2200 |  | Bedding works for UPVC Pipe Line 200 mm - (RD-A-1 /2)-Z7-A012-SW | 2d | 2026-10-27 A | 2026-10-28 A | RHD4CZ7A012SW2100 | 100% |  |  |  | Skilled labor [4.47 h]; Unskilled Labor [8.93 h]; Equipment Opreator [8.93 h]; Excavator-Poclain [4.47 h]; Dump Truck [4.47 h]; UPVC (200mm Diameter) - SW - Depth: 4.51m - 5.5m [3.07 m] | 2,130.58 | 2,130.58 | A012 | Z7 | CONS | SW | Bedding | bef |
| RHD4CZ7A012SW2300 |  | Installing for UPVC Pipe Line 200 mm - (RD-A-1 /2)-Z7-A012-SW | 2d | 2026-10-28 A | 2026-10-29 A | RHD4CZ7A012SW2200 | 100% |  |  |  | Unskilled Labor [8.93 h]; Plumber [4.47 h]; Equipment Opreator [4.47 h]; Boom Truck [4.47 h]; UPVC (200mm Diameter) - SW - Depth: 4.51m - 5.5m [24.58 m] | 17,058.52 | 17,058.52 | A012 | Z7 | CONS | SW | Installation | bef |
| RHD4CZ7A012SW2500 |  | Backfilling and warning tape works for UPVC Pipe Line 200 mm - (RD-A-1 /2)-Z7-A012-SW | 2d | 2026-10-31 A | 2026-11-01 A | RHD4CZ7A012SW2400 | 100% |  |  |  | Skilled labor [4.47 h]; Unskilled Labor [8.93 h]; Equipment Opreator [8.93 h]; Excavator-Poclain [4.47 h]; Dump Truck [4.47 h]; UPVC (200mm Diameter) - SW - Depth: 4.51m - 5.5m [12.29 m] | 8,529.26 | 8,529.26 | A012 | Z7 | CONS | SW | Backfilling | bef |
| RHD4CZ7A012SW2400 |  | Primary Test for UPVC Pipe Line 200 mm - (RD-A-1 /2)-Z7-A012-SW | 2d | 2027-05-22 | 2027-05-23 | RHD4CZ7A012SW2300 |  |  |  |  | Unskilled Labor [4.47 h]; Plumber [4.47 h]; Equipment Opreator [4.47 h]; Water Truck [4.47 h]; UPVC (200mm Diameter) - SW - Depth: 4.51m - 5.5m [12.29 m] | 8,529.26 |  | A012 | Z7 | CONS | SW | Primary Test | bef |
|  | 7036 | **RHD4-02-002-Z7-A012-Potable Network - PT** |  | 2027-05-24 | 2027-06-26 |  |  |  |  |  |  |  |  |  |  |  |  |  |  |
|  | 7040 | **RHD4-02-002-A012-(PT)-HDPE Pipes - 400 mm diameter** |  | 2027-05-24 | 2027-06-14 |  |  |  |  |  |  |  |  |  |  |  |  |  |  |
| RHD4CZ7A012PT1103 |  | Excavation works for HDPE Pipline 400 mm - (RD-A-1 /2)-Z7-A012-PT | 3d | 2027-05-24 | 2027-05-26 | RHD4ENSDZ7APPPT130, RHD4ENMSPT2000, RHD4CZ7A012SW2500 |  |  |  |  | Skilled labor [27.44 h]; Unskilled Labor [34.52 h]; Equipment Opreator [38.55 h]; Excavator-Poclain [27.44 h]; Dump Truck [11.11 h]; HDPE (400mm Diameter) - PT - Depth: less than 1.5m [50 m]; HDPE (400mm Diameter) - PT - Depth: 1.51m - 2.5m | 17,000 |  | A012 | Z7 | CONS | PT | Excavation | bef |
| RHD4CZ7A012PT1203 |  | Bedding works for HDPE Pipline 400 mm - (RD-A-1 /2)-Z7-A012-PT | 3d | 2027-05-27 | 2027-05-30 | RHD4CZ7A012PT1103 |  |  |  |  | Skilled labor [18.19 h]; Unskilled Labor [50.4 h]; Plumber [7.08 h]; Equipment Opreator [43.34 h]; Excavator-Poclain [18.19 h]; Boom Truck [7.08 h]; Dump Truck [18.19 h]; HDPE (400mm Diameter) - PT - Depth: less than 1.5m [25 m]; HDPE (400mm Diameter) - PT - Depth: 1.51m - 2.5m | 8,500 |  | A012 | Z7 | CONS | PT | Bedding | bef |
| RHD4CZ7A012PT1303 |  | Installing for HDPE Pipline 400 mm - (RD-A-1 /2)-Z7-A012-PT | 4d | 2027-05-31 | 2027-06-03 | RHD4PRSHLDOSPT1000, RHD4PRSHLSTAGPT1000, RHD4CZ7A012PT1203 |  |  |  |  | Unskilled Labor [65.56 h]; Plumber [36.26 h]; Equipment Opreator [36.26 h]; Boom Truck [29.19 h]; Water Truck [7.08 h]; HDPE (400mm Diameter) - PT - Depth: less than 1.5m [225 m]; HDPE (400mm Diameter) - PT - Depth: 1.51m - 2.5m | 76,500 |  | A012 | Z7 | CONS | PT | Installation | bef |
| RHD4CZ7A012PT1403 |  | Primary Test for HDPE Pipline 400 mm - (RD-A-1 /2)-Z7-A012-PT | 2d | 2027-06-09 | 2027-06-10 | RHD4CZ7A012PT1303, RHD4CZ7A012PT5100 |  |  |  |  | Skilled labor [7.08 h]; Unskilled Labor [27.88 h]; Plumber [13.72 h]; Equipment Opreator [27.88 h]; Excavator-Poclain [7.08 h]; Water Truck [13.72 h]; Dump Truck [7.08 h]; HDPE (400mm Diameter) - PT - Depth: less than 1.5m [100 m]; HDPE (400mm Diameter) - PT - Depth: 1.51m - 2.5m | 34,000 |  | A012 | Z7 | CONS | PT | Primary Test | bef |
| RHD4CZ7A012PT1503 |  | Backfilling and warning tape works for HDPE Pipline 400 mm - (RD-A-1 /2)-Z7-A012-PT | 3d | 2027-06-12 | 2027-06-14 | RHD4CZ7A012PT1403 |  |  |  |  | Skilled labor [23.74 h]; Unskilled Labor [47.37 h]; Equipment Opreator [47.37 h]; Excavator-Poclain [23.74 h]; Dump Truck [23.74 h]; HDPE (400mm Diameter) - PT - Depth: less than 1.5m [100 m] | 34,000 |  | A012 | Z7 | CONS | PT | Backfilling | bef |
|  | 7043 | **RHD4-02-002-A012-(PT)-Butterfly Valve Chamber** |  | 2027-06-15 | 2027-06-23 |  |  |  |  |  |  |  |  |  |  |  |  |  |  |
| RHD4CZ7A012PT2100 |  | Excavation and Bedding for Butterfly Valve Chamber for Potable Water Network - (RD-A-1 /2)-Z7-A012-PT | 2d | 2027-06-15 | 2027-06-16 | RHD4ENSDZ7APPPT130, RHD4CZ7A012PT1503 |  |  |  |  | Skilled labor [10.89 h]; Unskilled Labor [10.89 h]; Equipment Opreator [2.18 h]; Excavator-Poclain [1.09 h]; Dump Truck [1.09 h]; Valve chambers - PT [0.5 nr] | 6,242 |  | A012 | Z7 | CONS | PT | Excavation and Bedding | bef |
| RHD4CZ7A012PT2200 |  | PC works for Butterfly Valve Chamber for Potable Water Network - (RD-A-1 /2)-Z7-A012-PT | 2d | 2027-06-17 | 2027-06-19 | RHD4CZ7A012PT2100 |  |  |  |  | Skilled labor [10.89 h]; Unskilled Labor [21.78 h]; Equipment Opreator [1.09 h]; Concrete Pump [1.09 h]; Valve chambers - PT [0.2 nr] | 2,496.8 |  | A012 | Z7 | CONS | PT | PC Works | bef |
| RHD4CZ7A012PT2300 |  | Installation for Butterfly Valve Chamber for Potable Water Network - (RD-A-1 /2)-Z7-A012-PT | 2d | 2027-06-20 | 2027-06-21 | RHD4PRSHLDOSPT1100, RHD4PRSHLDOSPT1400, RHD4PRSHLSTAGPT1100, RHD4PRSHLSTAGPT1400, RHD4CZ7A012PT2200 |  |  |  |  | Skilled labor [10.89 h]; Unskilled Labor [21.78 h]; Equipment Opreator [2.18 h]; Boom Truck [2.18 h]; Valve chambers - PT [1.1 nr] | 13,732.4 |  | A012 | Z7 | CONS | PT | Installation | bef |
| RHD4CZ7A012PT2400 |  | Backfilling works for Butterfly Valve Chamber for Potable Water Network - (RD-A-1 /2)-Z7-A012-PT | 2d | 2027-06-22 | 2027-06-23 | RHD4CZ7A012PT2300 |  |  |  |  | Skilled labor [10.89 h]; Unskilled Labor [21.78 h]; Equipment Opreator [2.18 h]; Water Truck [1.09 h]; Dump Truck [1.09 h]; Valve chambers - PT [0.2 nr] | 2,496.8 |  | A012 | Z7 | CONS | PT | Backfilling Works | bef |

| ID | WBS | Activity | Duration | Start | Finish | Predecessors | Resources | Cost | RDH4-01-001-Road and Block Names-1 | RDH4-01-001-Zones-1 | RDH4-01-001-Phases-1 | RDH4-01-001-Networks-1 | RDH4-01-001-Work Method-1 | RDH4-01-001-MENEM |
| --- | --- | --- | --- | --- | --- | --- | --- | --- | --- | --- | --- | --- | --- | --- |
|  | 7044 | **RHD4-02-002-A012-(PT)-Butterfly Valves** |  | 2027-06-22 | 2027-06-26 |  |  |  |  |  |  |  |  |  |
| RHD4CZ7A012PT3101 |  | Installation for Butterfly Valves for Potable Water Network - (RD-A-1 /2)-Z7-A012-PT | 2d | 2027-06-22 | 2027-06-23 | RHD4PRSHLDOSPT1200, RHD4PRSHLSTAGPT1200, RHD4CZ7A012PT2300 | Unskilled Labor [10.89 h]; Plumber [10.89 h]; Butterfly valves dia 400 - PT [1.8 nr] | 55,157.4 | A012 | Z7 | CONS | PT | Installation | bef |
| RHD4CZ7A012PT3201 |  | Stem and Service box for Butterfly Valves for Potable Water Network - (RD-A-1 /2)-Z7-A012-PT | 2d | 2027-06-24 | 2027-06-26 | RHD4PRSHLDOSPT1300, RHD4PRSHLSTAGPT1300, RHD4CZ7A012PT3101, RHD4CZ7A012PT2400 | Unskilled Labor [10.89 h]; Plumber [10.89 h]; Butterfly valves dia 400 - PT [0.2 nr] | 6,128.6 | A012 | Z7 | CONS | PT | Stem and Service box | bef |
|  | 7049 | **RHD4-02-002-A012-(PT)-Fire Hydrant** |  | 2027-06-15 | 2027-06-26 |  |  |  |  |  |  |  |  |  |
| RHD4CZ7A012PT4100 |  | Excavation and Bedding and Pipe Installation for Fire Hydrant - (RD-A-1 /2)-Z7-A012-PT | 2d | 2027-06-15 | 2027-06-16 | RHD4ENSDZ7APPPT130, RHD4CZ7A012PT1503 | Skilled labor [21.78 h]; Unskilled Labor [21.78 h]; Plumber [21.78 h]; Equipment Opreator [10.89 h]; Excavator-Poclain [10.89 h]; 3-outlet fire hydrant (2 x 2.5 inch and 1 x 4.5 inch) in the form of a separate dry vacuum cylinder [0.4 nr] | 5,048 | A012 | Z7 | CONS | PT | Excavation | bef |
| RHD4CZ7A012PT4200 |  | Valve Installation for Fire Hydrant - (RD-A-1 /2)-Z7-A012-PT | 2d | 2027-06-17 | 2027-06-19 | RHD4CZ7A012PT4100 | Unskilled Labor [14.48 h]; Plumber [14.48 h]; 3-outlet fire hydrant (2 x 2.5 inch and 1 x 4.5 inch) in the form of a separate dry vacuum cylinder [0.8 nr] | 10,096 | A012 | Z7 | CONS | PT | Valve | bef |
| RHD4CZ7A012PT4300 |  | Stem for Fire Hydrant - (RD-A-1 /2)-Z7-A012-PT | 2d | 2027-06-20 | 2027-06-21 | RHD4CZ7A012PT4200 | Unskilled Labor [14.48 h]; Plumber [14.48 h]; 3-outlet fire hydrant (2 x 2.5 inch and 1 x 4.5 inch) in the form of a separate dry vacuum cylinder [1.2 nr] | 15,144 | A012 | Z7 | CONS | PT | Stem | bef |
| RHD4CZ7A012PT4400 |  | Fire Installation for Fire Hydrant - (RD-A-1 /2)-Z7-A012-PT | 2d | 2027-06-22 | 2027-06-23 | RHD4PRSHLDOSPT1500, RHD4PRSHLSTAGPT1500, RHD4CZ7A012PT4300 | Unskilled Labor [14.48 h]; Plumber [14.48 h]; Equipment Opreator [14.48 h]; Boom Truck [14.48 h]; 3-outlet fire hydrant (2 x 2.5 inch and 1 x 4.5 inch) in the form of a separate dry vacuum cylinder [1.4 nr] | 17,668 | A012 | Z7 | CONS | PT | Fire | bef |
| RHD4CZ7A012PT4500 |  | Protection Barriers for Fire Hydrant - (RD-A-1 /2)-Z7-A012-PT | 2d | 2027-06-24 | 2027-06-26 | RHD4CZ7A012PT4400 | Unskilled Labor [8.71 h]; Plumber [8.71 h]; 3-outlet fire hydrant (2 x 2.5 inch and 1 x 4.5 inch) in the form of a separate dry vacuum cylinder [0.2 nr] | 2,524 | A012 | Z7 | CONS | PT | Protection Barriers | bef |
|  | 7050 | **RHD4-02-002-A012-(PT)-Concrete Encasement** |  | 2027-05-31 | 2027-06-08 |  |  |  |  |  |  |  |  |  |
| RHD4CZ7A012PT5100 |  | Pipe Encasement for Potable Pipelines - (RD-A-1 /2)-Z7-A012-PT | 8d | 2027-05-31 | 2027-06-08 | RHD4CZ7A012PT1303 FF, RHD4CZ7A012PT1303 SS, RHD4CZ7A012PT1203 | Skilled labor [81.9 h]; Unskilled Labor [81.9 h]; Equipment Opreator [90.06 h]; Concrete Mixer Truck [8.17 h]; Dump Truck [81.9 h]; Pipe Encasement - PT [37.58 m3] | 46,073.08 | A012 | Z7 | CONS | PT | Pipe Encasement | bef |
|  | 7051 | **RHD4-02-002-Z7-A012-Irrigation Network - IRR** |  | 2027-05-24 | 2027-07-03 |  |  |  |  |  |  |  |  |  |
|  | 7055 | **RHD4-02-002-A012-(IRR)-HDPE Pipes - 250 mm diameter** |  | 2027-05-24 | 2027-06-03 |  |  |  |  |  |  |  |  |  |
| RHD4CZ7A012IRR1103 |  | Excavation works for HDPE Pipline 250 mm - (RD-A-1 /2)-Z7-A012-IRR | 2d | 2027-05-24 | 2027-05-25 | RHD4ENSDZ7APPIRR140, RHD4ENMSRR2000, RHD4CZ7A012SW2500 | Skilled labor [10.89 h]; Unskilled Labor [10.89 h]; Equipment Opreator [13.07 h]; Excavator-Poclain [10.89 h]; Dump Truck [2.18 h]; HDPE (250mm Diameter) - TSE - Depth: less than 1.5m [14.07 m]; HDPE (250mm Diameter) - TSE - Depth: more than 1.51m [1.4 m] | 3,409.54 | A012 | Z7 | CONS | IRR | Excavation | bef |
| RHD4CZ7A012IRR1203 |  | Bedding works for HDPE Pipline 250 mm - (RD-A-1 /2)-Z7-A012-IRR | 2d | 2027-05-26 | 2027-05-27 | RHD4CZ7A012IRR1103 | Skilled labor [8.39 h]; Unskilled Labor [16.66 h]; Equipment Opreator [16.66 h]; Excavator-Poclain [8.39 h]; Dump Truck [8.39 h]; HDPE (250mm Diameter) - TSE - Depth: less than 1.5m [7.03 m]; HDPE (250mm Diameter) - TSE - Depth: more than 1.51m [0.47 m] | 1,646.12 | A012 | Z7 | CONS | IRR | Bedding | bef |
| RHD4CZ7A012IRR1303 |  | Installing for HDPE Pipline 250 mm - (RD-A-1 /2)-Z7-A012-IRR | 2d | 2027-05-29 | 2027-05-30 | RHD4PRSHLDOSIRR1000, RHD4PRSHLSTAGIRR1000, RHD4CZ7A012IRR1203 | Unskilled Labor [21.78 h]; Plumber [10.89 h]; Equipment Opreator [10.89 h]; Boom Truck [10.89 h]; HDPE (250mm Diameter) - TSE - Depth: less than 1.5m [63.3 m]; HDPE (250mm Diameter) - TSE - Depth: more than 1.51m [3.73 m] | 14,687.25 | A012 | Z7 | CONS | IRR | Installation | bef |
| RHD4CZ7A012IRR1403 |  | Primary Test for HDPE Pipline 250 mm - (RD-A-1 /2)-Z7-A012-IRR | 2d | 2027-05-31 | 2027-06-01 | RHD4CZ7A012IRR1303 | Unskilled Labor [3.38 h]; Plumber [3.38 h]; Equipment Opreator [3.38 h]; Water Truck [3.38 h]; HDPE (250mm Diameter) - TSE - Depth: less than 1.5m [28.13 m]; HDPE (250mm Diameter) - TSE - Depth: more than 1.51m [1.87 m] | 6,581.93 | A012 | Z7 | CONS | IRR | Primary Test | bef |
| RHD4CZ7A012IRR1503 |  | Backfilling and warning tape works for HDPE Pipline 250 mm - (RD-A-1 /2)-Z7-A012-IRR | 2d | 2027-06-02 | 2027-06-03 | RHD4CZ7A012IRR1403 | Skilled labor [8.39 h]; Unskilled Labor [16.66 h]; Equipment Opreator [16.66 h]; Excavator-Poclain [8.39 h]; Dump Truck [8.39 h]; HDPE (250mm Diameter) - TSE - Depth: less than 1.5m [28.13 m]; HDPE (250mm Diameter) - TSE - Depth: more than 1.51m [1.87 m] | 6,581.93 | A012 | Z7 | CONS | IRR | Backfilling | bef |
|  | 6115 | **RHD4-02-002-A012-(IRR)-Gate Valves (Direct Buried)** |  | 2027-06-03 | 2027-06-07 |  |  |  |  |  |  |  |  |  |
| RHD4CZ7A012IRR3100 |  | Installation for Direct Buried Gate Valves - (RD-A-1 /2)-Z7-A012-IRR | 2d | 2027-06-03 | 2027-06-05 | RHD4CZ7A012IRR1304 SS, RHD4CZ7A012IRR1304 FF, RHD4CZ7A012IRR1104 | Unskilled Labor [5.45 h]; Plumber [5.45 h]; Gate valves dia 250 mm - TSE [0.9 nr] | 2,857.5 | A012 | Z7 | CONS | IRR | Installation | bef |
| RHD4CZ7A012IRR3200 |  | Stem and Service box for Direct Buried Gate Valves - (RD-A-1 /2)-Z7-A012-IRR | 2d | 2027-06-06 | 2027-06-07 | RHD4CZ7A012IRR3100 | Unskilled Labor [5.45 h]; Plumber [5.45 h]; Gate valves dia 250 mm - TSE [0.1 nr] | 317.5 | A012 | Z7 | CONS | IRR | Stem and Service box | bef |
|  | 8762 | **RHD4-02-002-A012-(IRR)-HDPE Pipes - 500 mm diameter** |  | 2027-05-26 | 2027-06-10 |  |  |  |  |  |  |  |  |  |
| RHD4CZ7A012IRR1107 |  | Excavation works for HDPE Pipline 500 mm - (RD-A-1 /2)-Z7-A012-IRR | 3d | 2027-05-26 | 2027-05-29 | RHD4CZ7A012IRR1103 | Skilled labor [29.19 h]; Unskilled Labor [29.19 h]; Equipment Opreator [34.96 h]; Excavator-Poclain [29.19 h]; Dump Truck [5.88 h]; HDPE (500mm Diameter) - TSE - Depth: less than 1.5m [15.44 m]; HDPE (500mm Diameter) - TSE - Depth: more than 1.51m [37.07 m] | 35,367.19 | A012 | Z7 | CONS | IRR | Excavation | bef |
| RHD4CZ7A012IRR1207 |  | Bedding works for HDPE Pipline 500 mm - (RD-A-1 /2)-Z7-A012-IRR | 3d | 2027-05-30 | 2027-06-01 | RHD4CZ7A012IRR1107 | Skilled labor [26.35 h]; Unskilled Labor [52.71 h]; Equipment Opreator [52.71 h]; Excavator-Poclain [26.35 h]; Dump Truck [26.35 h]; HDPE (500mm Diameter) - TSE - Depth: less than 1.5m [7.72 m]; HDPE (500mm Diameter) - TSE - Depth: more than 1.51m [12.36 m] | 13,453.72 | A012 | Z7 | CONS | IRR | Bedding | bef |
| RHD4CZ7A012IRR1307 |  | Installing for HDPE Pipline 500 mm - (RD-A-1 /2)-Z7-A012-IRR | 3d | 2027-06-02 | 2027-06-05 | RHD4CZ7A012IRR1207 | Unskilled Labor [58.26 h]; Plumber [29.19 h]; Equipment Opreator [29.19 h]; Boom Truck [29.19 h]; HDPE (500mm Diameter) - TSE - Depth: less than 1.5m [69.49 m]; HDPE (500mm Diameter) - TSE - Depth: more than 1.51m [98.86 m] | 112,609.64 | A012 | Z7 | CONS | IRR | Installation | bef |
| RHD4CZ7A012IRR1407 |  | Primary Test for HDPE Pipline 500 mm - (RD-A-1 /2)-Z7-A012-IRR | 2d | 2027-06-06 | 2027-06-07 | RHD4CZ7A012IRR1307 | Unskilled Labor [12.31 h]; Plumber [12.31 h]; Equipment Opreator [12.31 h]; Water Truck [12.31 h]; HDPE (500mm Diameter) - TSE - Depth: less than 1.5m [30.89 m]; HDPE (500mm Diameter) - TSE - Depth: more than 1.51m [49.43 m] | 53,814.49 | A012 | Z7 | CONS | IRR | Primary Test | bef |
| RHD4CZ7A012IRR1507 |  | Backfilling and warning tape works for HDPE Pipline 500 mm - (RD-A-1 /2)-Z7-A012-IRR | 3d | 2027-06-08 | 2027-06-10 | RHD4CZ7A012IRR1407, RHD4CZ7A012IRR3200 | Skilled labor [26.35 h]; Unskilled Labor [52.71 h]; Equipment Opreator [52.71 h]; Excavator-Poclain [26.35 h]; Dump Truck [26.35 h]; HDPE (500mm Diameter) - TSE - Depth: less than 1.5m [30.89 m]; HDPE (500mm Diameter) - TSE - Depth: more than 1.51m [49.43 m] | 53,814.49 | A012 | Z7 | CONS | IRR | Backfilling | bef |

| ID | WBS | Activity | Duration | Start | Finish | Predecessors | Resources | Cost | RDH4-01-001-Road and Block Names-1 | RDH4-01-001-Zones-1 | RDH4-01-001-Phases-1 | RDH4-01-001-Networks-1 | RDH4-01-001-Work Method-1 | RDH4-01-001-MENEM |
| --- | --- | --- | --- | --- | --- | --- | --- | --- | --- | --- | --- | --- | --- | --- |
|  | 6111 | **RHD4-02-002-A012-(IRR)-HDPE Pipes - 315 mm diameter** |  | 2027-05-30 | 2027-06-09 |  |  |  |  |  |  |  |  |  |
| RHD4CZ7A012IRR1104 |  | Excavation works for HDPE Pipline 315 mm - (RD-A-1 /2)-Z7-A012-IRR | 2d | 2027-05-30 | 2027-05-31 | RHD4CZ7A012IRR1107 | Skilled labor [1.2 h]; Unskilled Labor [1.2 h]; Equipment Opreator [1.52 h]; Excavator-Poclain [1.2 h]; Dump Truck [0.22 h]; HDPE (315mm Diameter) - TSE - Depth: less than 1.5m [1.6 m]; HDPE (315mm Diameter) - TSE - Depth: more than 1.51m [0.18 m] | 527.3 | A012 | Z7 | CONS | IRR | Excavation | bef |
| RHD4CZ7A012IRR1204 |  | Bedding works for HDPE Pipline 315 mm - (RD-A-1 /2)-Z7-A012-IRR | 2d | 2027-06-01 | 2027-06-02 | RHD4CZ7A012IRR1104 | Skilled labor [0.98 h]; Unskilled Labor [1.96 h]; Equipment Opreator [1.96 h]; Excavator-Poclain [0.98 h]; Dump Truck [0.98 h]; HDPE (315mm Diameter) - TSE - Depth: less than 1.5m [0.8 m]; HDPE (315mm Diameter) - TSE - Depth: more than 1.51m [0.06 m] | 253.9 | A012 | Z7 | CONS | IRR | Bedding | bef |
| RHD4CZ7A012IRR1304 |  | Installing for HDPE Pipline 315 mm - (RD-A-1 /2)-Z7-A012-IRR | 2d | 2027-06-03 | 2027-06-05 | RHD4CZ7A012IRR1204 | Unskilled Labor [2.5 h]; Plumber [1.2 h]; Equipment Opreator [1.2 h]; Boom Truck [1.2 h]; HDPE (315mm Diameter) - TSE - Depth: less than 1.5m [7.18 m]; HDPE (315mm Diameter) - TSE - Depth: more than 1.51m [0.47 m] | 2,256.49 | A012 | Z7 | CONS | IRR | Installation | bef |
| RHD4CZ7A012IRR1404 |  | Primary Test for HDPE Pipline 315 mm - (RD-A-1 /2)-Z7-A012-IRR | 2d | 2027-06-06 | 2027-06-07 | RHD4CZ7A012IRR1304 | Unskilled Labor [0.44 h]; Plumber [0.44 h]; Equipment Opreator [0.44 h]; Water Truck [0.44 h]; HDPE (315mm Diameter) - TSE - Depth: less than 1.5m [3.19 m]; HDPE (315mm Diameter) - TSE - Depth: more than 1.51m [0.23 m] | 1,009.42 | A012 | Z7 | CONS | IRR | Primary Test | bef |
| RHD4CZ7A012IRR1504 |  | Backfilling and warning tape works for HDPE Pipline 315 mm - (RD-A-1 /2)-Z7-A012-IRR | 2d | 2027-06-08 | 2027-06-09 | RHD4CZ7A012IRR1404 | Skilled labor [0.98 h]; Unskilled Labor [1.96 h]; Equipment Opreator [1.96 h]; Excavator-Poclain [0.98 h]; Dump Truck [0.98 h]; HDPE (315mm Diameter) - TSE - Depth: less than 1.5m [3.19 m]; HDPE (315mm Diameter) - TSE - Depth: more than 1.51m [0.23 m] | 1,009.42 | A012 | Z7 | CONS | IRR | Backfilling | bef |
|  | 6116 | **RHD4-02-002-A012-(IRR)-Butterfly Valve Chamber** |  | 2027-06-10 | 2027-06-19 |  |  |  |  |  |  |  |  |  |
| RHD4CZ7A012IRR2100 |  | Excavation and Bedding for Butterfly Valve Chamber for Irrigation Network - (RD-A-1 /2)-Z7-A012-IRR | 2d | 2027-06-10 | 2027-06-12 | RHD4CZ7A012IRR1504, RHD4CZ7A012IRR3100 | Skilled labor [21.78 h]; Unskilled Labor [21.78 h]; Equipment Opreator [4.36 h]; Excavator-Poclain [2.18 h]; Dump Truck [2.18 h]; Valve chambers - TSE [1 nr] | 14,643 | A012 | Z7 | CONS | IRR | Excavation and Bedding | bef |
| RHD4CZ7A012IRR2200 |  | PC works for Butterfly Valve Chamber for Irrigation Network - (RD-A-1 /2)-Z7-A012-IRR | 2d | 2027-06-13 | 2027-06-14 | RHD4CZ7A012IRR2100 | Skilled labor [21.78 h]; Unskilled Labor [43.56 h]; Equipment Opreator [2.18 h]; Concrete Pump [2.18 h]; Valve chambers - TSE [0.4 nr] | 5,857.2 | A012 | Z7 | CONS | IRR | PC Works | bef |
| RHD4CZ7A012IRR2300 |  | Installation for Butterfly Valve Chamber for Irrigation Network - (RD-A-1 /2)-Z7-A012-IRR | 2d | 2027-06-15 | 2027-06-16 | RHD4CZ7A012IRR2200 | Skilled labor [21.78 h]; Unskilled Labor [43.56 h]; Equipment Opreator [4.36 h]; Boom Truck [4.36 h]; Valve chambers - TSE [2.2 nr] | 32,214.6 | A012 | Z7 | CONS | IRR | Installation | bef |
| RHD4CZ7A012IRR2400 |  | Backfilling works for Butterfly Valve Chamber for Irrigation Network - (RD-A-1 /2)-Z7-A012-IRR | 2d | 2027-06-17 | 2027-06-19 | RHD4CZ7A012IRR2300 | Skilled labor [21.78 h]; Unskilled Labor [43.56 h]; Equipment Opreator [4.36 h]; Water Truck [2.18 h]; Dump Truck [2.18 h]; Valve chambers - TSE [0.4 nr] | 5,857.2 | A012 | Z7 | CONS | IRR | Backfilling Works | bef |
|  | 6117 | **RHD4-02-002-A012-(IRR)-Butterfly Valves** |  | 2027-06-17 | 2027-06-21 |  |  |  |  |  |  |  |  |  |
| RHD4CZ7A012IRR3101 |  | Installation for Butterfly Valves for Irrigation Network - (RD-A-1 /2)-Z7-A012-IRR | 2d | 2027-06-17 | 2027-06-19 | RHD4CZ7A012IRR2300, RHD4CZ7A012IRR2100 | Unskilled Labor [21.78 h]; Plumber [21.78 h]; Butterfly valves dia 500 - TSE [2.7 nr]; Butterfly valves dia 315 - TSE [0.9 nr] | 118,278 | A012 | Z7 | CONS | IRR | Installation | bef |
| RHD4CZ7A012IRR3201 |  | Stem and Service box for Butterfly Valves for Irrigation Network - (RD-A-1 /2)-Z7-A012-IRR | 2d | 2027-06-20 | 2027-06-21 | RHD4CZ7A012IRR3101, RHD4CZ7A012IRR2400, RHD4CZ7A012IRR1507 | Unskilled Labor [21.78 h]; Plumber [21.78 h]; Butterfly valves dia 500 - TSE [0.3 nr]; Butterfly valves dia 315 - TSE [0.1 nr] | 13,142 | A012 | Z7 | CONS | IRR | Stem and Service box | bef |
|  | 6685 | **RHD4-02-002-A012-(IRR)-Wash out Chamber** |  | 2027-06-20 | 2027-06-28 |  |  |  |  |  |  |  |  |  |
| RHD4CZ7A012IRR2101 |  | Excavation and Bedding for Wash out Chamber for Irrigation Network - (RD-A-1 /2)-Z7-A012-IRR | 2d | 2027-06-20 | 2027-06-21 | RHD4CZ7A012IRR3101 | Skilled labor [5.45 h]; Unskilled Labor [5.45 h]; Equipment Opreator [1.09 h]; Excavator-Poclain [0.54 h]; Dump Truck [0.54 h]; Wash out chambers - TSE [0.25 nr] | 4,686.25 | A012 | Z7 | CONS | IRR | Excavation and Bedding | bef |
| RHD4CZ7A012IRR2201 |  | PC works for Wash out Chamber for Irrigation Network - (RD-A-1 /2)-Z7-A012-IRR | 2d | 2027-06-22 | 2027-06-23 | RHD4CZ7A012IRR2101 | Skilled labor [5.45 h]; Unskilled Labor [10.89 h]; Equipment Opreator [0.54 h]; Concrete Pump [0.54 h]; Wash out chambers - TSE [0.1 nr] | 1,874.5 | A012 | Z7 | CONS | IRR | PC Works | bef |
| RHD4CZ7A012IRR2301 |  | Installation for Wash out Chamber for Irrigation Network - (RD-A-1 /2)-Z7-A012-IRR | 2d | 2027-06-24 | 2027-06-26 | RHD4CZ7A012IRR2201 | Skilled labor [5.45 h]; Unskilled Labor [10.89 h]; Equipment Opreator [1.09 h]; Boom Truck [1.09 h]; Wash out chambers - TSE [0.55 nr] | 10,309.75 | A012 | Z7 | CONS | IRR | Installation | bef |
| RHD4CZ7A012IRR2401 |  | Backfilling works for Wash out Chamber for Irrigation Network - (RD-A-1 /2)-Z7-A012-IRR | 2d | 2027-06-27 | 2027-06-28 | RHD4CZ7A012IRR2301 | Skilled labor [5.45 h]; Unskilled Labor [10.89 h]; Equipment Opreator [1.09 h]; Water Truck [0.54 h]; Dump Truck [0.54 h]; Wash out chambers - TSE [0.1 nr] | 1,874.5 | A012 | Z7 | CONS | IRR | Backfilling Works | bef |
|  | 6686 | **RHD4-02-002-A012-(IRR)-Wash out Valves** |  | 2027-06-27 | 2027-06-30 |  |  |  |  |  |  |  |  |  |
| RHD4CZ7A012IRR3102 |  | Installation for Wash out Valve for Irrigation Network - (RD-A-1 /2)-Z7-A012-IRR | 2d | 2027-06-27 | 2027-06-28 | RHD4CZ7A012IRR2301, RHD4CZ7A012IRR2101 | Unskilled Labor [5.45 h]; Plumber [5.45 h]; Wash out valve diameter 100 mm - TSE [0.9 nr] | 3,373.2 | A012 | Z7 | CONS | IRR | Installation | bef |
| RHD4CZ7A012IRR3202 |  | Stem and Service box for Wash out Valve for Irrigation Network - (RD-A-1 /2)-Z7-A012-IRR | 2d | 2027-06-29 | 2027-06-30 | RHD4CZ7A012IRR3102, RHD4CZ7A012IRR2401, RHD4CZ7A012IRR3201, RHD4CZ7A012SW1501 | Unskilled Labor [5.45 h]; Plumber [5.45 h]; Wash out valve diameter 100 mm - TSE [0.1 nr] | 374.8 | A012 | Z7 | CONS | IRR | Stem and Service box | bef |
|  | 1771 | **RHD4-02-002-A012-(IRR)-Concrete Encasement** |  | 2027-06-29 | 2027-07-03 |  |  |  |  |  |  |  |  |  |
| RHD4CZ7A012IRR5100 |  | Pipe Encasement for Irrigation Pipelines - (RD-A-1 /2)-Z7-A012-IRR | 4d | 2027-06-29 | 2027-07-03 | RHD4CZ7A012IRR3102 | Skilled labor [40.62 h]; Unskilled Labor [40.62 h]; Equipment Opreator [44.65 h]; Concrete Mixer Truck [4 h]; Dump Truck [40.62 h]; Pipe Encasement - TSE [18.65 m3] | 22,864.9 | A012 | Z7 | CONS | IRR | Pipe Encasement | bef |

| ID | WBS | Activity | Duration | Start | Finish | Predecessors | Complete | Remaining | Planned start | Planned finish | Resources | Cost | Actual cost | RDH4-01-001-Road and Block Names-1 | RDH4-01-001-Zones-1 | RDH4-01-001-Phases-1 | RDH4-01-001-Networks-1 | RDH4-01-001-Work Method-1 | RDH4-01-001-MENEM |
| --- | --- | --- | --- | --- | --- | --- | --- | --- | --- | --- | --- | --- | --- | --- | --- | --- | --- | --- | --- |
|  | 7085 | **RHD4-02-002-Z7-A012-Medium Voltage Network - MV** |  | 2026-08-04 | 2027-06-14 |  |  |  |  |  |  |  |  |  |  |  |  |  |  |
|  | 7088 | **RHD4-02-002-A012-(MV)-Medium Voltage cables 3Cx 500 mm²** |  | 2027-04-27 | 2027-05-26 |  |  |  |  |  |  |  |  |  |  |  |  |  |  |
| RHD4CZ7A012MV3100 |  | Installation of Medium Voltage Cables 3Cx 500 mm² - (RD-A-1 /2)-Z7-A012-MV | 9d | 2027-04-27 | 2027-05-06 | RHD4PRSHLDOSMV1100, RHD4ENMSMV2000, RHD4ENMSMV2010, RHD4PRSHLSTAGMV1100, RHD4CZ7A012MV1100 |  |  |  |  | Skilled labor [89.6 h]; Unskilled Labor [358.73 h]; Electrician [179.36 h]; Equipment Opreator [268.99 h]; Boom Truck [89.6 h]; Cable Laying Machine [179.36 h]; Cable 13.8 kV 3Cx 500 mm² Al/XLPE,/LLDPE / Unarmored [3705.22 m] | 589,129.68 |  | A012 | Z7 | CONS | MV | Installation | AFT |
| RHD4CZ7A012MV3200 |  | Joints Installation of Medium Voltage Cables 3Cx 500 mm² - (RD-A-1 /2)-Z7-A012-MV | 4d | 2027-05-08 | 2027-05-11 | RHD4PRSHLDOSMV1300, RHD4PRSHLSTAGMV1300, RHD4CZ7A012MV3100 |  |  |  |  | Skilled labor [38.12 h]; Unskilled Labor [152.46 h]; Electrician [76.23 h]; Equipment Opreator [38.12 h]; Boom Truck [38.12 h]; Straight joints cables for 13.8 kv 3Cx 500 mm², Al /XLPE/LLDPE [7 Unit] | 22,736 |  | A012 | Z7 | CONS | MV | Joints Installation | AFT |
| RHD4CZ7A012MV3300 |  | Testing of Medium Voltage Cables 3Cx 500 mm² - (RD-A-1 /2)-Z7-A012-MV | 9d | 2027-05-12 | 2027-05-26 | RHD4CZ7A012MV3200 |  |  |  |  | Skilled labor [89.6 h]; Unskilled Labor [358.73 h]; Electrician [179.36 h]; Cable 13.8 kV 3Cx 500 mm² Al/XLPE,/LLDPE / Unarmored [411.69 m] | 65,458.85 |  | A012 | Z7 | CONS | MV | Testing | AFT |
|  | 1793 | **RHD4-02-002-A012-(MV)-Medium Voltage cables 3Cx 50 mm²** |  | 2027-05-27 | 2027-05-29 |  |  |  |  |  |  |  |  |  |  |  |  |  |  |
| RHD4CZ7A012MV3401 |  | Termination of Medium Voltage Cables 3Cx 50 mm² - (RD-A-1 /2)-Z7-A012-MV | 2d | 2027-05-27 | 2027-05-29 | RHD4CZ7A012MV3300 |  |  |  |  | Unskilled Labor [58.05 h]; Electrician [29.08 h]; Cable Termination for 13.8 kv 3Cx 500 mm², Al /XLPE/LLDPE [4 Unit] | 10,540 |  | A012 | Z7 | CONS | MV | Termination | AFT |
|  | 1794 | **RHD4-02-002-A012-(MV)-Normally open Point (Outdoor Type)** |  | 2027-05-30 | 2027-06-02 |  |  |  |  |  |  |  |  |  |  |  |  |  |  |
| RHD4CZ7A012MV4100 |  | Installation for Normally open Point - (RD-A-1 /2)-Z7-A012-MV | 2d | 2027-05-30 | 2027-05-31 | RHD4CZ7A012MV3401 |  |  |  |  | Unskilled Labor [0.11 h]; Equipment Opreator [0.22 h]; Excavator-Poclain [0.11 h]; Dump Truck [0.11 h]; Normally Open Point 13.8 KV Outdoor type [0.9 Unit] | 77,219.1 |  | A012 | Z7 | CONS | MV | Installation | AFT |
| RHD4CZ7A012MV4200 |  | Termination for Normally open Point - (RD-A-1 /2)-Z7-A012-MV | 2d | 2027-06-01 | 2027-06-02 | RHD4CZ7A012MV4100 |  |  |  |  | Unskilled Labor [3.59 h]; Equipment Opreator [7.3 h]; Excavator-Poclain [3.59 h]; Dump Truck [3.59 h]; Normally Open Point 13.8 KV Outdoor type [0.1 Unit] | 8,579.9 |  | A012 | Z7 | CONS | MV | Termination | AFT |
|  | 1791 | **RHD4-02-002-A012-(MV)-Medium Voltage duct banks** |  | 2026-08-04 | 2026-08-15 |  |  |  |  |  |  |  |  |  |  |  |  |  |  |
| RHD4CZ7A012MV2100 |  | Excavation of Duct Banks for Medium Voltage Network - (RD-A-1 /2)-Z7-A012-MV | 5d | 2026-08-04 A | 2026-08-09 A | RHD4CZ7A012RD3100 | 100% |  | 2026-09-13 | 2026-09-17 | Unskilled Labor [46.5 h]; Equipment Opreator [92.89 h]; Excavator-Poclain [46.5 h]; Dump Truck [46.5 h]; Duct bank for MV cables UPVC (2xø150mm) [3.04 m]; Duct bank for MV cables UPVC (8xø150mm) [3.36 m] | 3,304.16 | 3,304.16 | A012 | Z7 | CONS | MV | Excavation | bef |
| RHD4CZ7A012MV2200 |  | Installation of Duct Banks for Medium Voltage Network - (RD-A-1 /2)-Z7-A012-MV | 7d | 2026-08-06 A | 2026-08-13 A | RHD4CZ7A012MV2100 | 100% |  | 2026-09-19 | 2026-09-27 | Unskilled Labor [69.7 h]; Equipment Opreator [139.4 h]; Excavator-Poclain [69.7 h]; Dump Truck [69.7 h]; Duct bank for MV cables UPVC (2xø150mm) [3.04 m]; Duct bank for MV cables UPVC (8xø150mm) [3.36 m] | 3,304.16 | 3,304.16 | A012 | Z7 | CONS | MV | Installing | bef |
| RHD4CZ7A012MV2300 |  | Pouring of Duct Banks for Medium Voltage Network - (RD-A-1 /2)-Z7-A012-MV | 5d | 2026-08-09 A | 2026-08-13 A | RHD4CZ7A012MV2200 | 100% |  | 2026-09-28 | 2026-10-03 | Unskilled Labor [46.5 h]; Equipment Opreator [92.89 h]; Excavator-Poclain [46.5 h]; Dump Truck [46.5 h]; Duct bank for MV cables UPVC (2xø150mm) [19.77 m]; Duct bank for MV cables UPVC (8xø150mm) [21.82 m] | 21,463.16 | 21,463.16 | A012 | Z7 | CONS | MV | Pouring | bef |
| RHD4CZ7A012MV2400 |  | Backfilling of Duct Banks for Medium Voltage Network - (RD-A-1 /2)-Z7-A012-MV | 4d | 2026-08-11 A | 2026-08-15 A | RHD4CZ7A012MV2300 | 100% |  | 2026-10-04 | 2026-10-07 | Unskilled Labor [34.85 h]; Equipment Opreator [69.7 h]; Excavator-Poclain [34.85 h]; Dump Truck [34.85 h]; Duct bank for MV cables UPVC (2xø150mm) [4.56 m]; Duct bank for MV cables UPVC (8xø150mm) [5.03 m] | 4,948.27 | 4,948.27 | A012 | Z7 | CONS | MV | Backfilling | bef |
|  | 7086 | **RHD4-02-002-A012-(MV)-Medium Voltage cable trench** |  | 2027-04-15 | 2027-06-14 |  |  |  |  |  |  |  |  |  |  |  |  |  |  |
| RHD4CZ7A012MV1100 |  | Excavation for Medium Voltage Trench - (RD-A-1 /2)-Z7-A012-MV | 10d | 2027-04-15 | 2027-04-26 | RHD4ENSDZ7APPMV150, RHD4CZ7A012RD3100, RHD4CZ7L03LV5100 |  |  |  |  | Skilled labor [98.01 h]; Unskilled Labor [196 h]; Equipment Opreator [294.04 h]; Excavator-Poclain [98.01 h]; Dump Truck [196 h]; Excavation for Trench size 40cm wide and 80cm deep ( for 1 cables) [281.56 m3]; Excavation for Trench size 60cm wide and 80cm deep ( for 2 cables) [23.85 m3]; Excavation for Trench size 180cm wide and 80cm deep (for 6 cables) [120.1 m3]; Excavation for Trench size 240cm wide and 80cm deep (for 9 cables) [204.52 m3] | 6,300.22 |  | A012 | Z7 | CONS | MV | Excavation | AFT |
| RHD4CZ7A012MV1200 |  | Trench Backfilling for Medium Voltage Network - (RD-A-1 /2)-Z7-A012-MV | 10d | 2027-06-03 | 2027-06-14 | RHD4CZ7A012MV4200 |  |  |  |  | Skilled labor [98.01 h]; Unskilled Labor [98.01 h]; Equipment Opreator [196 h]; Dump Truck [196 h]; Excavation for Trench size 40cm wide and 80cm deep ( for 1 cables) [120.67 m3]; Excavation for Trench size 60cm wide and 80cm deep ( for 2 cables) [10.22 m3]; Excavation for Trench size 180cm wide and 80cm deep (for 6 cables) [51.47 m3]; Excavation for Trench size 240cm wide and 80cm deep (for 9 cables) [87.65 m3] | 2,700.07 |  | A012 | Z7 | CONS | MV | Backfilling | AFT |
|  | 7092 | **RHD4-02-002-Z7-A012-Low Voltage Network - LV** |  | 2026-08-04 | 2027-07-03 |  |  |  |  |  |  |  |  |  |  |  |  |  |  |
|  | 7093 | **RHD4-02-002-A012-(LV)-Low Voltage duct banks** |  | 2026-08-04 | 2027-03-25 |  |  |  |  |  |  |  |  |  |  |  |  |  |  |
| RHD4CZ7A012LV2100 |  | Excavation of Duct Banks for Low Voltage Network - (RD-A-1 /2)-Z7-A012-LV | 5d | 2026-08-04 A | 2027-03-02 | RHD4ENSDZ7APPLV160, RHD4CZ7A012RW3000, RHD4CZ7A012MV2100, RHD4CZ7A012MV2400 | 50% | 5d | 2026-10-08 | 2026-10-13 | Skilled labor [53.8 h]; Unskilled Labor [53.8 h]; Equipment Opreator [107.6 h]; Excavator-Poclain [53.8 h]; Dump Truck [53.8 h]; Duct bank for LV cables UPVC (2xø110mm) [7.41 m] | 1,496.48 |  | A012 | Z7 | CONS | LV | Excavation | bef |
| RHD4CZ7A012LV2200 |  | Installation of Duct Banks for Low Voltage Network - (RD-A-1 /2)-Z7-A012-LV | 8d | 2026-08-06 A | 2027-03-15 | RHD4PRSHLDOSLV1000, RHD4PRSHLSTAGLV1000, RHD4CZ7A012LV2100 | 50% | 8d | 2026-10-14 | 2026-10-22 | Carpenter [8.06 h]; Skilled labor [80.7 h]; Unskilled Labor [80.7 h]; Steel Fixer [8.06 h]; Duct bank for LV cables UPVC (2xø110mm) [7.41 m] | 1,496.48 |  | A012 | Z7 | CONS | LV | Installing | bef |
| RHD4CZ7A012LV2300 |  | Pouring of Duct Banks for Low Voltage Network - (RD-A-1 /2)-Z7-A012-LV | 5d | 2026-08-09 A | 2027-03-21 | RHD4CZ7A012LV2200 | 50% | 5d | 2026-10-24 | 2026-10-28 | Skilled labor [53.8 h]; Unskilled Labor [53.8 h]; Equipment Opreator [21.6 h]; Concrete Mixer Truck [10.78 h]; Concrete Pump [10.78 h]; Duct bank for LV cables UPVC (2xø110mm) [48.15 m] | 9,727.1 |  | A012 | Z7 | CONS | LV | Pouring | bef |
| RHD4CZ7A012LV2400 |  | Backfilling of Duct Banks for Low Voltage Network - (RD-A-1 /2)-Z7-A012-LV | 4d | 2026-08-11 A | 2027-03-25 | RHD4CZ7A012LV2300 | 50% | 4d | 2026-10-29 | 2026-11-02 | Skilled labor [40.29 h]; Unskilled Labor [40.29 h]; Equipment Opreator [16.12 h]; Excavator-Poclain [16.12 h]; Duct bank for LV cables UPVC (2xø110mm) [11.11 m] | 2,244.71 |  | A012 | Z7 | CONS | LV | Backfilling | bef |

| ID | WBS | Activity | Duration | Start | Finish | Predecessors | Resources | Cost | RDH4-01-001-Road and Block Names-1 | RDH4-01-001-Zones-1 | RDH4-01-001-Phases-1 | RDH4-01-001-Networks-1 | RDH4-01-001-Work Method-1 | RDH4-01-001-MENEM |
| --- | --- | --- | --- | --- | --- | --- | --- | --- | --- | --- | --- | --- | --- | --- |
|  | 7094 | **RHD4-02-002-A012-(LV)-Low Voltage Drawpit** |  | 2027-06-15 | 2027-06-19 |  |  |  |  |  |  |  |  |  |
| RHD4CZ7A012LV5100 |  | Excavation of Drawpit size 900x900x1000mm for Low Voltage Network - (RD-A-1 /2)-Z7-A012-LV | 2d | 2027-06-15 | 2027-06-16 | RHD4ENSDZ7APPLV160, RHD4CZ7A012LV2300, RHD4CZ7A012MV1200 | Skilled labor [4.57 h]; Unskilled Labor [4.57 h]; Equipment Opreator [3.59 h]; Excavator-Poclain [1.85 h]; Dump Truck [1.85 h]; Drawpit with medium duty steel cover, size900x900x1000mm, [0.75 Unit] | 2,757.75 | A012 | Z7 | CONS | LV | Excavation | AFT |
| RHD4CZ7A012LV5200 |  | Installation of Drawpit size 900x900x1000mm for Low Voltage Network - (RD-A-1 /2)-Z7-A012-LV | 2d | 2027-06-17 | 2027-06-19 | RHD4PRSHLDOSLV1400, RHD4PRSHLSTAGLV1400, RHD4CZ7A012LV5100 | Skilled labor [4.57 h]; Unskilled Labor [4.57 h]; Equipment Opreator [1.85 h]; Boom Truck [1.85 h]; Drawpit with medium duty steel cover, size900x900x1000mm, [4.25 Unit] | 15,627.25 | A012 | Z7 | CONS | LV | Installation | AFT |
|  | 7095 | **RHD4-02-002-A012-(LV)-Low Voltage cables** |  | 2027-06-20 | 2027-07-03 |  |  |  |  |  |  |  |  |  |
| RHD4CZ7A012LV3100 |  | Excavation for Low Voltage Cables for Low Voltage Network - (RD-A-1 /2)-Z7-A012-LV | 4d | 2027-06-20 | 2027-06-23 | RHD4ENSDZ7APPLV160, RHD4CZ7A012LV2400, RHD4CZ7A012LV5200 | Skilled labor [35.83 h]; Unskilled Labor [71.55 h]; Equipment Opreator [71.55 h]; Excavator-Poclain [35.83 h]; Boom Truck [35.83 h]; Cable, Copper 3x10mm2/ CU/XLPE/SWA/PVC [164.33 m] | 6,408.81 | A012 | Z7 | CONS | LV | Excavation | AFT |
| RHD4CZ7A012LV3200 |  | Cable Laying of Low Voltage Cables for Low Voltage Network - (RD-A-1 /2)-Z7-A012-LV | 3d | 2027-06-24 | 2027-06-27 | RHD4PRSHLDOSLV1100, RHD4ENMSLV2000, RHD4ENMSLV2010, RHD4PRSHLSTAGLV1100, RHD4CZ7A012LV3100 | Skilled labor [29.84 h]; Unskilled Labor [119.36 h]; Electrician [59.68 h]; Equipment Opreator [89.52 h]; Boom Truck [29.84 h]; Cable Laying Machine [59.68 h]; Cable, Copper 3x10mm2/ CU/XLPE/SWA/PVC [492.99 m] | 19,226.42 | A012 | Z7 | CONS | LV | Cable Laying | AFT |
| RHD4CZ7A012LV3300 |  | Warning tape and Backfill for Low Voltage Cables for Low Voltage Network - (RD-A-1 /2)-Z7-A012-LV | 3d | 2027-06-28 | 2027-06-30 | RHD4CZ7A012LV3200 | Skilled labor [29.84 h]; Unskilled Labor [119.36 h]; Electrician [59.68 h]; Equipment Opreator [29.84 h]; Boom Truck [29.84 h]; Cable, Copper 3x10mm2/ CU/XLPE/SWA/PVC [123.25 m] | 4,806.61 | A012 | Z7 | CONS | LV | Warning tape and Backfill | AFT |
| RHD4CZ7A012LV3400 |  | Testing of Low Voltage Cables for Low Voltage Network - (RD-A-1 /2)-Z7-A012-LV | 2d | 2027-07-01 | 2027-07-03 | RHD4CZ7A012LV3300 | Skilled labor [17.86 h]; Unskilled Labor [71.55 h]; Electrician [35.83 h]; Equipment Opreator [17.86 h]; Boom Truck [17.86 h]; Cable, Copper 3x10mm2/ CU/XLPE/SWA/PVC [41.08 m] | 1,602.2 | A012 | Z7 | CONS | LV | Testing | AFT |
|  | 7098 | **RHD4-02-002-Z7-A012-Street Lighting Network - SL** |  | 2027-07-04 | 2027-07-28 |  |  |  |  |  |  |  |  |  |
|  | 7099 | **RHD4-02-002-A012-(SL)-Street Lighting duct banks** |  |  |  |  |  |  |  |  |  |  |  |  |
|  | 7100 | **RHD4-02-002-A012-(SL)-Street Lighting Drawpit** |  | 2027-07-04 | 2027-07-07 |  |  |  |  |  |  |  |  |  |
| RHD4CZ7A012SL5100 |  | Excavation of Drawpit size 600x600x900mm for Street Lighting Network - (RD-A-1 /2)-Z7-A012-SL | 2d | 2027-07-04 | 2027-07-05 | RHD4ENSDZ7APPSL170, RHD4CZ7A012LV3400 | Skilled labor [0.87 h]; Unskilled Labor [0.87 h]; Equipment Opreator [0.8 h]; Excavator-Poclain [0.33 h]; Dump Truck [0.33 h]; Drawpit with medium duty steel cover, size600x600x900mm, [0.15 Unit] | 367.65 | A012 | Z7 | CONS | SL | Excavation | AFT |
| RHD4CZ7A012SL5200 |  | Installation of Drawpit size 600x600x900mm for Street Lighting Network - (RD-A-1 /2)-Z7-A012-SL | 2d | 2027-07-06 | 2027-07-07 | RHD4PRSHLDOSSL1400, RHD4PRSHLSTAGSL1400, RHD4CZ7A012SL5100 | Skilled labor [0.87 h]; Unskilled Labor [0.87 h]; Equipment Opreator [0.33 h]; Boom Truck [0.33 h]; Drawpit with medium duty steel cover, size600x600x900mm, [0.85 Unit] | 2,083.35 | A012 | Z7 | CONS | SL | Installation | AFT |
|  | 7101 | **RHD4-02-002-A012-(SL)-Street Lighting cables** |  | 2027-07-08 | 2027-07-17 |  |  |  |  |  |  |  |  |  |
| RHD4CZ7A012SL3100 |  | Excavation for Street Lighting Cables for Street Lighting Network - (RD-A-1 /2)-Z7-A012-SL | 2d | 2027-07-08 | 2027-07-10 | RHD4ENSDZ7APPSL170, RHD4CZ7A012SL5200 | Skilled labor [19.38 h]; Unskilled Labor [38.66 h]; Equipment Opreator [38.66 h]; Excavator-Poclain [19.38 h]; Boom Truck [19.38 h]; Cable, Copper 4x16mm2/ CU/XLPE/SWA/PVC + 1x16mm2 CU/PVC [88.84 m] | 5,952.44 | A012 | Z7 | CONS | SL | Excavation | AFT |
| RHD4CZ7A012SL3200 |  | Cable Laying of Street Lighting Cables for Street Lighting Network - (RD-A-1 /2)-Z7-A012-SL | 2d | 2027-07-11 | 2027-07-12 | RHD4PRSHLDOSSL1100, RHD4ENMSSL2000, RHD4ENMSSL2010, RHD4PRSHLSTAGSL1100, RHD4CZ7A012SL3100 | Skilled labor [16.12 h]; Unskilled Labor [64.47 h]; Electrician [32.24 h]; Equipment Opreator [48.35 h]; Boom Truck [16.12 h]; Cable Laying Machine [32.24 h]; Cable, Copper 4x16mm2/ CU/XLPE/SWA/PVC + 1x16mm2 CU/PVC [266.53 m] | 17,857.33 | A012 | Z7 | CONS | SL | Cable Laying | AFT |
| RHD4CZ7A012SL3300 |  | Warning tape and Backfill for Street Lighting Cables for Street Lighting Network - (RD-A-1 /2)-Z7-A012-SL | 2d | 2027-07-13 | 2027-07-14 | RHD4CZ7A012SL3200 | Skilled labor [16.12 h]; Unskilled Labor [64.47 h]; Electrician [32.24 h]; Equipment Opreator [16.12 h]; Boom Truck [16.12 h]; Cable, Copper 4x16mm2/ CU/XLPE/SWA/PVC + 1x16mm2 CU/PVC [66.63 m] | 4,464.33 | A012 | Z7 | CONS | SL | Warning tape and Backfill | AFT |
| RHD4CZ7A012SL3400 |  | Testing of Street Lighting Cables for Street Lighting Network - (RD-A-1 /2)-Z7-A012-SL | 2d | 2027-07-15 | 2027-07-17 | RHD4CZ7A012SL3300 | Skilled labor [9.69 h]; Unskilled Labor [38.66 h]; Electrician [19.38 h]; Equipment Opreator [9.69 h]; Boom Truck [9.69 h]; Cable, Copper 4x16mm2/ CU/XLPE/SWA/PVC + 1x16mm2 CU/PVC [22.21 m] | 1,488.11 | A012 | Z7 | CONS | SL | Testing | AFT |
|  | 7102 | **RHD4-02-002-A012-(SL)-Street Lighting Poles** |  | 2027-07-18 | 2027-07-28 |  |  |  |  |  |  |  |  |  |
| RHD4CZ7A012SL1100 |  | Excavation for RC Base for Lighting Poles for Street Lighting Network - (RD-A-1 /2)-Z7-A012-SL | 2d | 2027-07-18 | 2027-07-19 | RHD4ENSDZ7APPSL170, RHD4CZ7A012SL3400 | Skilled labor [10.13 h]; Unskilled Labor [10.13 h]; Equipment Opreator [20.36 h]; Excavator-Poclain [10.13 h]; Dump Truck [10.13 h]; Lighting polesdouble arms, height of ( 12 ) meters [1.4 Unit] | 6,400.8 | A012 | Z7 | CONS | SL | Excavation | AFT |
| RHD4CZ7A012SL1200 |  | Installation for RC Base for Lighting Poles for Street Lighting Network - (RD-A-1 /2)-Z7-A012-SL | 2d | 2027-07-20 | 2027-07-21 | RHD4CZ7A012SL1100 | Skilled labor [10.13 h]; Unskilled Labor [10.13 h]; Equipment Opreator [20.36 h]; Excavator-Poclain [10.13 h]; Dump Truck [10.13 h]; Lighting polesdouble arms, height of ( 12 ) meters [3.5 Unit] | 16,002 | A012 | Z7 | CONS | SL | RC Base | AFT |
| RHD4CZ7A012SL1300 |  | Backfill for RC Base for Lighting Poles for Street Lighting Network - (RD-A-1 /2)-Z7-A012-SL | 2d | 2027-07-22 | 2027-07-24 | RHD4CZ7A012SL1200 | Skilled labor [10.13 h]; Unskilled Labor [10.13 h]; Equipment Opreator [20.36 h]; Excavator-Poclain [10.13 h]; Dump Truck [10.13 h]; Lighting polesdouble arms, height of ( 12 ) meters [0.7 Unit] | 3,200.4 | A012 | Z7 | CONS | SL | Backfill | AFT |
| RHD4CZ7A012SL1400 |  | Installation for Lighting Poles for Street Lighting Network - (RD-A-1 /2)-Z7-A012-SL | 2d | 2027-07-25 | 2027-07-26 | RHD4PRSHLDOSSL1200, RHD4ENMSSL2000, RHD4ENMSSL2010, RHD4PRSHLSTAGSL1200, RHD4CZ7A012SL1300, RHD4CZ7A012SL3400 | Skilled labor [15.25 h]; Unskilled Labor [15.25 h]; Electrician [15.25 h]; Equipment Opreator [15.25 h]; Boom Truck [15.25 h]; Lighting polesdouble arms, height of ( 12 ) meters [8.4 Unit] | 38,404.8 | A012 | Z7 | CONS | SL | Poles Installation | AFT |
| RHD4CZ7A012SL1500 |  | Luminaire Installation for Lighting Poles for Street Lighting Network - (RD-A-1 /2)-Z7-A012-SL | 2d | 2027-07-27 | 2027-07-28 | RHD4PRSHLDOSSL1300, RHD4PRSHLSTAGSL1300, RHD4CZ7A012SL1400 | Unskilled Labor [40.62 h]; Electrician [20.36 h]; Equipment Opreator [8.17 h]; Boom Truck [8.17 h]; Street Lighting( LED) Luminaire of Output ?39018 lumen [28 Unit] | 29,176 | A012 | Z7 | CONS | SL | Luminaire Installation | AFT |

| ID | WBS | Activity | Duration | Start | Finish | Predecessors | Complete | Planned start | Planned finish | Resources | Cost | Actual cost | RDH4-01-001-Road and Block Names-1 | RDH4-01-001-Zones-1 | RDH4-01-001-Phases-1 | RDH4-01-001-Networks-1 | RDH4-01-001-Work Method-1 | RDH4-01-001-MENEM |
| --- | --- | --- | --- | --- | --- | --- | --- | --- | --- | --- | --- | --- | --- | --- | --- | --- | --- | --- |
|  | 7104 | **RHD4-02-002-A012-(SL)-Street Lighting Earthing System** |  |  |  |  |  |  |  |  |  |  |  |  |  |  |  |  |
|  | 7110 | **RHD4-02-002-Z7-A012-Telecommunications Network - TC** |  | 2026-08-04 | 2027-08-14 |  |  |  |  |  |  |  |  |  |  |  |  |  |
|  | 7111 | **RHD4-02-002-A012-(TC)-Telecommunications Ducts** |  | 2027-07-29 | 2027-08-14 |  |  |  |  |  |  |  |  |  |  |  |  |  |
| RHD4CZ7A012TC2100 |  | Excavation of HDPE Ducts for Telecom Network - (RD-A-1 /2)-Z7-A012-TC | 4d | 2027-07-29 | 2027-08-02 | RHD4ENSDZ7APPTC190, RHD4CZ7A012SL1500 |  |  |  | Skilled labor [40.19 h]; Unskilled Labor [40.19 h]; Equipment Opreator [80.37 h]; Excavator-Poclain [40.19 h]; Dump Truck [40.19 h]; (6*50mm) HDPE ducts -TC [88.94 m]; (6*50mm+2*32mm) HDPE ducts -TC [16.74 m]; (2*32mm) HDPE ducts -TC [5.04 m] | 9,822.74 |  | A012 | Z7 | CONS | TC | Excavation | AFT |
| RHD4CZ7A012TC2200 |  | Installation of HDPE Ducts for Telecom Network - (RD-A-1 /2)-Z7-A012-TC | 6d | 2027-08-03 | 2027-08-09 | RHD4PRSHLDOSTC1000, RHD4PRSHLSTAGTC1000, RHD4CZ7A012TC2100 |  |  |  | Carpenter [5.99 h]; Skilled labor [60.33 h]; Unskilled Labor [60.33 h]; Steel Fixer [5.99 h]; (6*50mm) HDPE ducts -TC [289.06 m]; (6*50mm+2*32mm) HDPE ducts -TC [54.41 m]; (2*32mm) HDPE ducts -TC [16.38 m] | 31,924.45 |  | A012 | Z7 | CONS | TC | Installing | AFT |
| RHD4CZ7A012TC2400 |  | Backfilling of HDPE Ducts for Telecom Network - (RD-A-1 /2)-Z7-A012-TC | 4d | 2027-08-10 | 2027-08-14 | RHD4CZ7A012TC2200, RHD4CZ7A012TC5200 |  |  |  | Skilled labor [40.19 h]; Unskilled Labor [40.19 h]; Equipment Opreator [16.12 h]; Excavator-Poclain [16.12 h]; (6*50mm) HDPE ducts -TC [66.7 m]; (6*50mm+2*32mm) HDPE ducts -TC [12.56 m]; (2*32mm) HDPE ducts -TC [3.78 m] | 7,367.6 |  | A012 | Z7 | CONS | TC | Backfilling | AFT |
|  | 7112 | **RHD4-02-002-A012-(TC)-Telecommunications Manholes** |  | 2027-08-03 | 2027-08-09 |  |  |  |  |  |  |  |  |  |  |  |  |  |
| RHD4CZ7A012TC5100 |  | Excavation for Manholes for Telecom Network - (RD-A-1 /2)-Z7-A012-TC | 3d | 2027-08-03 | 2027-08-05 | RHD4ENSDZ7APPTC190, RHD4CZ7A012TC2100 |  |  |  | Skilled labor [10.89 h]; Unskilled Labor [10.89 h]; Equipment Opreator [8.71 h]; Excavator-Poclain [4.36 h]; Dump Truck [4.36 h]; Manhole Type 1 - TC [0.3 nr]; Manhole Type 2 - TC [0.45 nr] | 5,055.75 |  | A012 | Z7 | CONS | TC | Excavation | AFT |
| RHD4CZ7A012TC5200 |  | Installation of Manholes for Telecom Network - (RD-A-1 /2)-Z7-A012-TC | 3d | 2027-08-07 | 2027-08-09 | RHD4PRSHLDOSTC1200, RHD4PRSHLSTAGTC1200, RHD4CZ7A012TC5100, RHD4CZ7A012TC2200 SS |  |  |  | Skilled labor [10.89 h]; Unskilled Labor [10.89 h]; Equipment Opreator [4.36 h]; Boom Truck [4.36 h]; Manhole Type 1 - TC [1.7 nr]; Manhole Type 2 - TC [2.55 nr] | 28,649.25 |  | A012 | Z7 | CONS | TC | Installation | AFT |
|  | 7113 | **RHD4-02-002-A012-(TC)-Telecomminications Road Crossings** |  | 2026-08-04 | 2026-08-12 |  |  |  |  |  |  |  |  |  |  |  |  |  |
| RHD4CZ7A012TC3100 |  | Excavation for Road Crossings for Telecom Network - (RD-A-1 /2)-Z7-A012-TC | 2d | 2026-08-04 A | 2026-08-05 A | RHD4ENSDZ7APPTC190, RHD4CZ7A012ST1106 | 100% | 2026-08-20 | 2026-08-22 | Skilled labor [14.7 h]; Unskilled Labor [14.7 h]; Equipment Opreator [29.4 h]; Excavator-Poclain [14.7 h]; Dump Truck [14.7 h]; Road crossing ducts, (6*50mm) HDPE -TC [2.7 m] | 102.6 | 102.6 | A012 | Z7 | CONS | TC | Excavation | bef |
| RHD4CZ7A012TC3200 |  | Installation of Road Crossings for Telecom Network - (RD-A-1 /2)-Z7-A012-TC | 2d | 2026-08-06 A | 2026-08-08 A | RHD4PRSHLDOSTC1100, RHD4PRSHLSTAGTC1100, RHD4CZ7A012TC3100 | 100% | 2026-08-23 | 2026-08-24 | Carpenter [1.96 h]; Skilled labor [19.6 h]; Unskilled Labor [19.6 h]; Steel Fixer [1.96 h]; Road crossing ducts, (6*50mm) HDPE -TC [2.7 m] | 102.6 | 102.6 | A012 | Z7 | CONS | TC | Installing | bef |
| RHD4CZ7A012TC3300 |  | Pouring of Road Crossings for Telecom Network - (RD-A-1 /2)-Z7-A012-TC | 2d | 2026-08-09 A | 2026-08-10 A | RHD4CZ7A012TC3200 | 100% | 2026-08-25 | 2026-08-26 | Skilled labor [19.6 h]; Unskilled Labor [19.6 h]; Equipment Opreator [7.84 h]; Concrete Mixer Truck [3.92 h]; Concrete Pump [3.92 h]; Road crossing ducts, (6*50mm) HDPE -TC [17.55 m] | 666.9 | 666.9 | A012 | Z7 | CONS | TC | Pouring | bef |
| RHD4CZ7A012TC3400 |  | Backfilling of Road Crossings for Telecom Network - (RD-A-1 /2)-Z7-A012-TC | 2d | 2026-08-11 A | 2026-08-12 A | RHD4CZ7A012TC3300 | 100% | 2026-08-27 | 2026-08-29 | Skilled labor [14.7 h]; Unskilled Labor [14.7 h]; Equipment Opreator [5.88 h]; Excavator-Poclain [5.88 h]; Road crossing ducts, (6*50mm) HDPE -TC [4.05 m] | 153.9 | 153.9 | A012 | Z7 | CONS | TC | Backfilling | bef |
|  | 7114 | **RHD4-02-002-Z7-A012-Information and Communication Technologies - ICT** |  | 2026-08-04 | 2027-09-27 |  |  |  |  |  |  |  |  |  |  |  |  |  |
|  | 7115 | **RHD4-02-002-A012-(ICT)-Information and Communication Technologies Ducts** |  | 2027-08-15 | 2027-09-19 |  |  |  |  |  |  |  |  |  |  |  |  |  |
| RHD4CZ7A012ICT2100 |  | Excavation of HDPE Ducts for ICT Network - (RD-A-1 /2)-Z7-A012-ICT | 9d | 2027-08-15 | 2027-08-24 | RHD4ENSDZ7APPICT200, RHD4CZ7A012TC3100, RHD4CZ7A012TC2400 |  |  |  | Skilled labor [91.26 h]; Unskilled Labor [91.26 h]; Equipment Opreator [182.52 h]; Excavator-Poclain [91.26 h]; Dump Truck [91.26 h]; (2*50mm) HDPE ducts -ICT [215.4 m]; (2*50mm+2*32mm) HDPE ducts -ICT [31.07 m]; (2*32mm) HDPE ducts -ICT [4.98 m] | 10,591.56 |  | A012 | Z7 | CONS | ICT | Excavation | AFT |
| RHD4CZ7A012ICT2200 |  | Installation of HDPE Ducts for ICT Network - (RD-A-1 /2)-Z7-A012-ICT | 13d | 2027-08-25 | 2027-09-08 | RHD4PRSHLDOSICT1000, RHD4PRSHLSTAGICT1000, RHD4CZ7A012ICT2100 |  |  |  | Carpenter [13.72 h]; Skilled labor [136.89 h]; Unskilled Labor [136.89 h]; Steel Fixer [13.72 h]; (2*50mm) HDPE ducts -ICT [700.05 m]; (2*50mm+2*32mm) HDPE ducts -ICT [100.97 m]; (2*32mm) HDPE ducts -ICT [16.19 m] | 34,422.2 |  | A012 | Z7 | CONS | ICT | Installing | AFT |
| RHD4CZ7A012ICT2400 |  | Backfilling of HDPE Ducts for ICT Network - (RD-A-1 /2)-Z7-A012-ICT | 9d | 2027-09-09 | 2027-09-19 | RHD4CZ7A012ICT2200 |  |  |  | Skilled labor [91.26 h]; Unskilled Labor [91.26 h]; Equipment Opreator [36.48 h]; Excavator-Poclain [36.48 h]; (2*50mm) HDPE ducts -ICT [161.55 m]; (2*50mm+2*32mm) HDPE ducts -ICT [23.3 m]; (2*32mm) HDPE ducts -ICT [3.74 m] | 7,943.66 |  | A012 | Z7 | CONS | ICT | Backfilling | AFT |
|  | 7116 | **RHD4-02-002-A012-(ICT)-Information and Communication Technologies Manholes** |  | 2027-09-20 | 2027-09-27 |  |  |  |  |  |  |  |  |  |  |  |  |  |
| RHD4CZ7A012ICT5100 |  | Excavation for Manholes for ICT Network - (RD-A-1 /2)-Z7-A012-ICT | 3d | 2027-09-20 | 2027-09-22 | RHD4ENSDZ7APPICT200, RHD4CZ7A012ICT2400 |  |  |  | Skilled labor [10.89 h]; Unskilled Labor [10.89 h]; Equipment Opreator [8.71 h]; Excavator-Poclain [4.36 h]; Dump Truck [4.36 h]; Manhole Type 1 - ICT [0.3 nr]; Manhole Type 2 - ICT [0.45 nr] | 4,044.75 |  | A012 | Z7 | CONS | ICT | Excavation | AFT |
| RHD4CZ7A012ICT5200 |  | Installation of Manholes for ICT Network - (RD-A-1 /2)-Z7-A012-ICT | 3d | 2027-09-25 | 2027-09-27 | RHD4PRSHLDOSICT1200, RHD4PRSHLSTAGICT1200, RHD4CZ7A012ICT5100 |  |  |  | Skilled labor [10.89 h]; Unskilled Labor [10.89 h]; Equipment Opreator [4.36 h]; Boom Truck [4.36 h]; Manhole Type 1 - ICT [1.7 nr]; Manhole Type 2 - ICT [2.55 nr] | 22,920.25 |  | A012 | Z7 | CONS | ICT | Installation | AFT |
|  | 7117 | **RHD4-02-002-A012-(ICT)-Information and Communication Technologies Road Crossings** |  | 2026-08-04 | 2026-08-12 |  |  |  |  |  |  |  |  |  |  |  |  |  |
| RHD4CZ7A012ICT3100 |  | Excavation for Road Crossings for ICT Network - (RD-A-1 /2)-Z7-A012-ICT | 2d | 2026-08-04 A | 2026-08-05 A | RHD4ENSDZ7APPICT200, RHD4CZ7A012ST1106 | 100% | 2026-08-20 | 2026-08-22 | Skilled labor [15.46 h]; Unskilled Labor [15.46 h]; Equipment Opreator [30.82 h]; Excavator-Poclain [15.46 h]; Dump Truck [15.46 h]; Road crossing ducts, (2*50mm) HDPE -ICT [2.83 m] | 107.65 | 107.65 | A012 | Z7 | CONS | ICT | Excavation | bef |
| RHD4CZ7A012ICT3200 |  | Installation of Road Crossings for ICT Network - (RD-A-1 /2)-Z7-A012-ICT | 2d | 2026-08-06 A | 2026-08-08 A | RHD4PRSHLDOSICT1100, RHD4PRSHLSTAGICT1100, RHD4CZ7A012ICT3100, RHD4CZ7A012TC3200 SS | 100% | 2026-08-23 | 2026-08-24 | Carpenter [2.07 h]; Skilled labor [20.58 h]; Unskilled Labor [20.58 h]; Steel Fixer [2.07 h]; Road crossing ducts, (2*50mm) HDPE -ICT [2.83 m] | 107.65 | 107.65 | A012 | Z7 | CONS | ICT | Installing | bef |
| RHD4CZ7A012ICT3300 |  | Pouring of Road Crossings for ICT Network - (RD-A-1 /2)-Z7-A012-ICT | 2d | 2026-08-09 A | 2026-08-10 A | RHD4CZ7A012ICT3200 | 100% | 2026-08-25 | 2026-08-26 | Skilled labor [20.58 h]; Unskilled Labor [20.58 h]; Equipment Opreator [8.28 h]; Concrete Mixer Truck [4.14 h]; Concrete Pump [4.14 h]; Road crossing ducts, (2*50mm) HDPE -ICT [18.41 m] | 699.75 | 699.75 | A012 | Z7 | CONS | ICT | Pouring | bef |
| RHD4CZ7A012ICT3400 |  | Backfilling of Road Crossings for ICT Network - (RD-A-1 /2)-Z7-A012-ICT | 2d | 2026-08-11 A | 2026-08-12 A | RHD4CZ7A012ICT3300 | 100% | 2026-08-27 | 2026-08-29 | Skilled labor [15.46 h]; Unskilled Labor [15.46 h]; Equipment Opreator [6.21 h]; Excavator-Poclain [6.21 h]; Road crossing ducts, (2*50mm) HDPE -ICT [4.25 m] | 161.48 | 161.48 | A012 | Z7 | CONS | ICT | Backfilling | bef |

| ID | WBS | Activity | Duration | Start | Finish | Predecessors | Resources | Cost | RDH4-01-001-Road and Block Names-1 | RDH4-01-001-Zones-1 | RDH4-01-001-Phases-1 | RDH4-01-001-Networks-1 | RDH4-01-001-Work Method-1 | RDH4-01-001-MENEM |
| --- | --- | --- | --- | --- | --- | --- | --- | --- | --- | --- | --- | --- | --- | --- |
|  | 7105 | **RHD4-02-002-Z7-A012-Landscape Network - LS** |  |  |  |  |  |  |  |  |  |  |  |  |
|  | 7106 | **RHD4-02-002-A012-(LS)-Landscape Lighting cables** |  |  |  |  |  |  |  |  |  |  |  |  |
|  | 7107 | **RHD4-02-002-A012-(LS)-Landscape Feeder Pillars** |  |  |  |  |  |  |  |  |  |  |  |  |
|  | 7108 | **RHD4-02-002-A012-(LS)-Landscape Bollard Poles** |  |  |  |  |  |  |  |  |  |  |  |  |
|  | 7109 | **RHD4-02-002-A012-(LS)-Landscape Feeder Pillars Earthing** |  |  |  |  |  |  |  |  |  |  |  |  |
|  | 7118 | **RHD4-02-002-Z7-A012-Security Network - CCTV** |  |  |  |  |  |  |  |  |  |  |  |  |
|  | 7119 | **RHD4-02-002-A012-(CCTV)-Civil Works** |  |  |  |  |  |  |  |  |  |  |  |  |
|  | 6001 | **RHD4-02-002-Z7-C02** |  | 2026-01-29 | 2028-05-30 |  |  |  |  |  |  |  |  |  |
|  | 6076 | **RHD4-02-002-Z7-C02-Crossings Potable Network - PTCr** |  |  |  |  |  |  |  |  |  |  |  |  |
|  | 6078 | **RHD4-02-002-C02-(PTCr)-HDPE Pipes - 160 mm diameter** |  |  |  |  |  |  |  |  |  |  |  |  |
|  | 6082 | **RHD4-02-002-C02-(PTCr)-Gate Valves (Direct Buried)** |  |  |  |  |  |  |  |  |  |  |  |  |
|  | 6089 | **RHD4-02-002-C02-(PTCr)-Fire Hydrant** |  |  |  |  |  |  |  |  |  |  |  |  |
|  | 6123 | **RHD4-02-002-Z7-C02-Crossings Irrigation Network - IRRC** |  |  |  |  |  |  |  |  |  |  |  |  |
|  | 6128 | **RHD4-02-002-C02-(IRRC)-HDPE Pipes - 315 mm diameter** |  |  |  |  |  |  |  |  |  |  |  |  |
|  | 6133 | **RHD4-02-002-C02-(IRRC)-Butterfly Valve Chamber** |  |  |  |  |  |  |  |  |  |  |  |  |
|  | 6134 | **RHD4-02-002-C02-(IRRC)-Butterfly Valves** |  |  |  |  |  |  |  |  |  |  |  |  |
|  | 6180 | **RHD4-02-002-Z7-C02-Road Works - RD** |  | 2027-03-06 | 2028-05-30 |  |  |  |  |  |  |  |  |  |
|  | 6181 | **RHD4-02-002-C02-(RD)-Subgrade** |  | 2027-03-06 | 2027-03-18 |  |  |  |  |  |  |  |  |  |
| RHD4CZ7C02RD1100 |  | Supply, lay and compaction subgrade compacted thickness 300 mm for Roads - (RD-C-2)-Z7-C02-RD | 9d | 2027-03-06 | 2027-03-18 | RHD4ENSDZ7APPEW100, RHD4ENSDZ7APPRD220, RHD4CZ7C02ST1509, RHD4CZ7C02ICT3400, RHD4CZ7C02TC3400 | Skilled labor [87.12 h]; Unskilled Labor [174.35 h]; Electrician [87.12 h]; Equipment Opreator [595.38 h]; Water Truck [28.75 h]; Roller compactor [43.56 h]; Grader [87.12 h]; Dump Truck [435.83 h]; Subgrade [4192.34 m3] | 79,654.46 | C02 | Z7 | CONS | RD | Subgrade | bef |
|  | 6182 | **RHD4-02-002-C02-(RD)-Aggregate Base Course** |  | 2027-03-20 | 2027-03-25 |  |  |  |  |  |  |  |  |  |
| RHD4CZ7C02RD2100 |  | Supply, lay and compaction Aggregate base course compacted thickness 300 mmfor Roads - (RD-C-2)-Z7-C02-RD | 6d | 2027-03-20 | 2027-03-25 | RHD4PRSHLDOSRD1000, RHD4PRSHLSTAGRD1000, RHD4CZ7C02RD1100 | Skilled labor [32.24 h]; Unskilled Labor [64.58 h]; Equipment Opreator [408.71 h]; Water Truck [21.35 h]; Roller compactor [64.58 h]; Grader [64.58 h]; Dump Truck [258.32 h]; Aggregate Base Courses [2633.21 m3] | 150,092.97 | C02 | Z7 | CONS | RD | ABC | bef |
|  | 6183 | **RHD4-02-002-C02-(RD)-Bituminous base course Two Layers, including (MC1)&(RC2)** |  | 2027-03-27 | 2028-05-02 |  |  |  |  |  |  |  |  |  |
| RHD4CZ7C02RD3100 |  | Supply, lay and Asphaltic base course including Prime Coat (MC1) for 1st Layer - (RD-C-2)-Z7-C02-RD | 3d | 2027-03-27 | 2027-03-29 | RHD4PRSHLDOSRD1100, RHD4ENMSASPH2000, RHD4ENMSASPH2010, RHD4PRSHLSTAGRD1100, RHD4CZ7C02RD2100 | Skilled labor [25.6 h]; Unskilled Labor [153.77 h]; Equipment Opreator [384.54 h]; Bobcat [25.6 h]; Roller compactor [25.6 h]; Asphalt Paver [25.6 h]; Rubber Compactor [51.29 h]; MC1/RC2 Sprinkler [25.6 h]; Dump Truck [230.77 h]; Bituminous base course (Grading I - Class A), including Prime coat (MC1) & tack coate (RC2) [937.96 m3] | 448,344.88 | C02 | Z7 | CONS | RD | 150 mm | AFT |
| RHD4CZ7C02RD3200 |  | Supply, lay and Asphaltic base course including Tack Coat (RC2) for 2nd Layer - (RD-C-2)-Z7-C02-RD | 3d | 2028-04-30 | 2028-05-02 | RHD4PRSHLDOSRD1100, RHD4PRSHLSTAGRD1100, RHD4CZ7C02CCTV4200 | Skilled labor [25.6 h]; Unskilled Labor [153.77 h]; Equipment Opreator [384.54 h]; Bobcat [25.6 h]; Roller compactor [25.6 h]; Asphalt Paver [25.6 h]; Rubber Compactor [51.29 h]; MC1/RC2 Sprinkler [25.6 h]; Dump Truck [230.77 h]; Bituminous base course (Grading I - Class A), including Prime coat (MC1) & tack coate (RC2) [937.96 m3] | 448,344.88 | C02 | Z7 | CONS | RD | 150 mm | AFT |

| ID | WBS | Activity | Duration | Start | Finish | Predecessors | Complete | Planned start | Planned finish | Resources | Cost | Actual cost | RDH4-01-001-Road and Block Names-1 | RDH4-01-001-Zones-1 | RDH4-01-001-Phases-1 | RDH4-01-001-Networks-1 | RDH4-01-001-Work Method-1 | RDH4-01-001-MENEM |
| --- | --- | --- | --- | --- | --- | --- | --- | --- | --- | --- | --- | --- | --- | --- | --- | --- | --- | --- |
|  | 6185 | **RHD4-02-002-C02-(RD)-Precast Concrete Curb** |  | 2028-05-03 | 2028-05-13 |  |  |  |  |  |  |  |  |  |  |  |  |  |
| RHD4CZ7C02RD5100 |  | Supply and installation Precast Concrete Kerb for Roads - (RD-C-2)-Z7-C02-RD | 6d | 2028-05-03 | 2028-05-13 | RHD4PRSHLDOSRD1200, RHD4ENMSRD2000, RHD4ENMSRD2010, RHD4PRSHLSTAGRD1200, RHD4CZ7C02RD3200 |  |  |  | Mason [170.4 h]; Skilled labor [56.85 h]; Unskilled Labor [170.4 h]; Equipment Opreator [113.7 h]; Bobcat [56.85 h]; Concrete Mixer Truck [56.85 h]; Precast Concrete Curbstone, type K1 [2348 m] | 129,140 |  | C02 | Z7 | CONS | RD | Curbs | AFT |
|  | 6188 | **RHD4-02-002-C02-(RD)-Traffic Signage** |  | 2028-05-14 | 2028-05-20 |  |  |  |  |  |  |  |  |  |  |  |  |  |
| RHD4CZ7C02RD8100 |  | Installation of Traffic Signage for Road Network - (RD-C-2)-Z7-C02-RD | 6d | 2028-05-14 | 2028-05-20 | RHD4PRSHLDOSRD1600, RHD4PRSHLSTAGRD1600, RHD4CZ7C02RD5100, RHD4CZ7C02ICT2400, RHD4CZ7A012RD8100, RHD4CZ7C02PT4500, RHD4CZ7C013RD8100 |  |  |  | Skilled labor [130.68 h]; Unskilled Labor [65.34 h]; Electrician [5.45 h]; Equipment Opreator [15.25 h]; Boom Truck [13.07 h]; Concrete Mixer Truck [2.18 h]; Traffic signs, ground mounted, 1 Sheet Aluminium, (breakaway)Single post [5 nr] | 6,130 |  | C02 | Z7 | CONS | RD | Traffic Signage | AFT |
|  | 6186 | **RHD4-02-002-C02-(RD)-Precast Interlocking Block Pavers** |  |  |  |  |  |  |  |  |  |  |  |  |  |  |  |  |
|  | 6184 | **RHD4-02-002-C02-(RD)-Bituminous concrete wearing course including tack coat (RC2)** |  | 2028-05-21 | 2028-05-22 |  |  |  |  |  |  |  |  |  |  |  |  |  |
| RHD4CZ7C02RD4100 |  | Supply, lay and compaction Asphaltic wearing course including tack Coat (RC2)for Road Network - (RD-C-2)-Z7-C02-RD | 2d | 2028-05-21 | 2028-05-22 | RHD4CZ7C02RD5100, RHD4CZ7A012RD4100 |  |  |  | Skilled labor [13.18 h]; Unskilled Labor [79.28 h]; Equipment Opreator [198.1 h]; Bobcat [13.18 h]; Roller compactor [13.18 h]; Asphalt Paver [13.18 h]; Rubber Compactor [26.46 h]; MC1/RC2 Sprinkler [13.18 h]; Dump Truck [118.81 h]; Bituminous concrete wearing course, (Grading I - Class A), including tack coat (RC2) [629.91 m3] | 342,041.13 |  | C02 | Z7 | CONS | RD | 50 mm | AFT |
|  | 6187 | **RHD4-02-002-C02-(RD)-Pavement Marking** |  | 2028-05-28 | 2028-05-30 |  |  |  |  |  |  |  |  |  |  |  |  |  |
| RHD4CZ7C02RD7100 |  | Pavement Markings for Road Network - (RD-C-2)-Z7-C02-RD | 3d | 2028-05-28 | 2028-05-30 | RHD4PRSHLDOSRD1500, RHD4PRSHLSTAGRD1500, RHD4CZ7C02RD4100, RHD4CZ7A012RD7100 |  |  |  | Skilled labor [32.13 h]; Unskilled Labor [64.14 h]; Equipment Opreator [32.13 h]; Road Marking Machine [32.13 h]; Retroreflective Thermoplastic White Traffic Markings [342.89 m2]; Retroreflective Thermoplastic Yellow, Traffic Markings [302.32 m2]; Retroreflective raised pavement markers (cat eyes) [132 nr] | 24,489.51 |  | C02 | Z7 | CONS | RD | Pavement Marking | AFT |
|  | 6005 | **RHD4-02-002-Z7-C02-Storm Network - ST** |  | 2026-08-20 | 2027-10-26 |  |  |  |  |  |  |  |  |  |  |  |  |  |
|  | 6015 | **RHD4-02-002-C02-(ST)-GRP Pipes - 1300 mm diameter** |  | 2026-08-20 | 2027-02-16 |  |  |  |  |  |  |  |  |  |  |  |  |  |
| RHD4CZ7C02ST1109 |  | Excavation works for GRP Pipe Line 1300 mm - (RD-C-2)-Z7-C02-ST | 2d | 2026-08-20 A | 2026-09-20 A | RHD4ENSDZ7APPST110, RHD4CZ7A012ST1106 | 100% | 2026-08-20 | 2026-08-22 | Skilled labor [13.07 h]; Unskilled Labor [13.07 h]; Equipment Opreator [15.68 h]; Excavator-Poclain [13.07 h]; Dump Truck [2.61 h]; GRP (1300mm Diameter) - ST - Depth less than 2.5 m [18.17 m]; GRP (1300mm Diameter) - ST - Depth: 2.51m - 3.5m [13.28 m]; GRP (1300mm Diameter) - ST - Depth: 3.51m - 4.5m [4.15 m] | 64,177.95 | 64,177.95 | C02 | Z7 | CONS | ST | Excavation | bef |
| RHD4CZ7C02ST1209 |  | Bedding works for GRP Pipe Line 1300 mm - (RD-C-2)-Z7-C02-ST | 2d | 2027-02-08 | 2027-02-09 | RHD4CZ7C02ST1109 |  |  |  | Skilled labor [13.07 h]; Unskilled Labor [26.03 h]; Equipment Opreator [26.03 h]; Excavator-Poclain [13.07 h]; Dump Truck [13.07 h]; GRP (1300mm Diameter) - ST - Depth less than 2.5 m [6.06 m]; GRP (1300mm Diameter) - ST - Depth: 2.51m - 3.5m [4.43 m]; GRP (1300mm Diameter) - ST - Depth: 3.51m - 4.5m [1.38 m] | 21,397.95 |  | C02 | Z7 | CONS | ST | Bedding | bef |
| RHD4CZ7C02ST1309 |  | Installing for GRP Pipe Line 1300 mm - (RD-C-2)-Z7-C02-ST | 2d | 2027-02-10 | 2027-02-11 | RHD4PRSHLSTAGST1006, RHD4CZ7C02ST1209, RHD4PRSHLDOSST1606, RHD4PRSHLPOST1000, RHD4PRSHLDOSST1006, RHD4PRSHLDOSST1605, RHD4PRSHLDOSST1005 |  |  |  | Unskilled Labor [16.55 h]; Plumber [8.28 h]; GRP (1300mm Diameter) - ST - Depth less than 2.5 m [77.33 m]; GRP (1300mm Diameter) - ST - Depth: 2.51m - 3.5m [35.42 m]; GRP (1300mm Diameter) - ST - Depth: 3.51m - 4.5m [11.06 m] | 222,042.56 |  | C02 | Z7 | CONS | ST | Installation | bef |
| RHD4CZ7C02ST1409 |  | Primary Test for GRP Pipe Line 1300 mm - (RD-C-2)-Z7-C02-ST | 2d | 2027-02-13 | 2027-02-14 | RHD4CZ7C02ST1309 |  |  |  | Unskilled Labor [6.53 h]; Plumber [6.53 h]; Equipment Opreator [6.53 h]; Water Truck [6.53 h]; GRP (1300mm Diameter) - ST - Depth less than 2.5 m [24.23 m]; GRP (1300mm Diameter) - ST - Depth: 2.51m - 3.5m [17.71 m]; GRP (1300mm Diameter) - ST - Depth: 3.51m - 4.5m [5.53 m] | 85,575.9 |  | C02 | Z7 | CONS | ST | Primary Test | bef |
| RHD4CZ7C02ST1509 |  | Backfilling and warning tape works for GRP Pipe Line 1300 mm - (RD-C-2)-Z7-C02-ST | 2d | 2027-02-15 | 2027-02-16 | RHD4CZ7C02ST1409 |  |  |  | Skilled labor [13.07 h]; Unskilled Labor [26.03 h]; Equipment Opreator [26.03 h]; Excavator-Poclain [13.07 h]; Dump Truck [13.07 h]; GRP (1300mm Diameter) - ST - Depth less than 2.5 m [24.23 m]; GRP (1300mm Diameter) - ST - Depth: 2.51m - 3.5m [17.71 m]; GRP (1300mm Diameter) - ST - Depth: 3.51m - 4.5m [5.53 m] | 85,575.9 |  | C02 | Z7 | CONS | ST | Backfilling | bef |
|  | 6394 | **RHD4-02-002-C02-(ST)-GRP Pipes - 1400 mm diameter** |  | 2026-09-15 | 2027-08-01 |  |  |  |  |  |  |  |  |  |  |  |  |  |
| RHD4CZ7C02ST1110 |  | Excavation works for GRP Pipe Line 1400 mm - (RD-C-2)-Z7-C02-ST | 2d | 2026-09-15 A | 2026-09-20 A | RHD4CZ7C032TC2400, RHD4CZ7C02RW3000, RHD4CZ7C02ST1109 | 100% | 2026-12-28 | 2026-12-29 | Skilled labor [8.93 h]; Unskilled Labor [8.93 h]; Equipment Opreator [10.67 h]; Excavator-Poclain [8.93 h]; Dump Truck [1.74 h]; GRP (1400mm Diameter) - ST - Depth less than 4.5 m [30.77 m] | 81,602.04 | 81,602.04 | C02 | Z7 | CONS | ST | Excavation | bef |
| RHD4CZ7C02ST1210 |  | Bedding works for GRP Pipe Line 1400 mm - (RD-C-2)-Z7-C02-ST | 2d | 2027-07-24 | 2027-07-25 | RHD4CZ7C02ST1110 |  |  |  | Skilled labor [5.01 h]; Unskilled Labor [9.91 h]; Equipment Opreator [9.91 h]; Excavator-Poclain [5.01 h]; Dump Truck [5.01 h]; GRP (1400mm Diameter) - ST - Depth less than 4.5 m [10.26 m] | 27,209.52 |  | C02 | Z7 | CONS | ST | Bedding | bef |
| RHD4CZ7C02ST1310 |  | Installing for GRP Pipe Line 1400 mm - (RD-C-2)-Z7-C02-ST | 2d | 2027-07-26 | 2027-07-27 | RHD4CZ7C02ST1210 |  |  |  | Unskilled Labor [14.92 h]; Plumber [7.41 h]; GRP (1400mm Diameter) - ST - Depth less than 4.5 m [101.25 m] | 268,504.92 |  | C02 | Z7 | CONS | ST | Installation | bef |
| RHD4CZ7C02ST1410 |  | Primary Test for GRP Pipe Line 1400 mm - (RD-C-2)-Z7-C02-ST | 2d | 2027-07-28 | 2027-07-29 | RHD4CZ7C02ST1310 |  |  |  | Unskilled Labor [5.01 h]; Plumber [5.01 h]; Equipment Opreator [5.01 h]; Water Truck [5.01 h]; GRP (1400mm Diameter) - ST - Depth less than 4.5 m [41.03 m] | 108,811.56 |  | C02 | Z7 | CONS | ST | Primary Test | bef |
| RHD4CZ7C02ST1510 |  | Backfilling and warning tape works for GRP Pipe Line 1400 mm - (RD-C-2)-Z7-C02-ST | 2d | 2027-07-31 | 2027-08-01 | RHD4CZ7C02ST1410 |  |  |  | Skilled labor [11.2 h]; Unskilled Labor [22.33 h]; Equipment Opreator [22.33 h]; Excavator-Poclain [11.2 h]; Dump Truck [11.2 h]; GRP (1400mm Diameter) - ST - Depth less than 4.5 m [41.03 m] | 108,811.56 |  | C02 | Z7 | CONS | ST | Backfilling | bef |
|  | 3743 | **RHD4-02-002-C02-(ST)-GRP Pipes - 1100 mm diameter** |  | 2027-07-24 | 2027-08-03 |  |  |  |  |  |  |  |  |  |  |  |  |  |
| RHD4CZ7C02ST1107 |  | Excavation works for GRP Pipe Line 1100 mm - (RD-C-2)-Z7-C02-ST | 2d | 2027-07-24 | 2027-07-25 | RHD4CZ7C02ST1110 SS, RHD4CZ7C02ST1109 |  |  |  | Skilled labor [3.48 h]; Unskilled Labor [3.48 h]; Equipment Opreator [4.14 h]; Excavator-Poclain [3.48 h]; Dump Truck [0.65 h]; GRP (1100mm Diameter) - ST - Depth: 2.51m - 3.5m [14.42 m]; GRP (1100mm Diameter) - ST - Depth: 3.51m - 4.5m | 20,144.74 |  | C02 | Z7 | CONS | ST | Excavation | bef |
| RHD4CZ7C02ST1207 |  | Bedding works for GRP Pipe Line 1100 mm - (RD-C-2)-Z7-C02-ST | 2d | 2027-07-26 | 2027-07-27 | RHD4CZ7C02ST1107 |  |  |  | Skilled labor [3.48 h]; Unskilled Labor [6.97 h]; Equipment Opreator [6.97 h]; Excavator-Poclain [3.48 h]; Dump Truck [3.48 h]; GRP (1100mm Diameter) - ST - Depth: 2.51m - 3.5m [4.81 m]; GRP (1100mm Diameter) - ST - Depth: 3.51m - 4.5m | 6,719.57 |  | C02 | Z7 | CONS | ST | Bedding | bef |
| RHD4CZ7C02ST1307 |  | Installing for GRP Pipe Line 1100 mm - (RD-C-2)-Z7-C02-ST | 2d | 2027-07-28 | 2027-07-29 | RHD4CZ7C02ST1207 |  |  |  | Unskilled Labor [4.14 h]; Plumber [2.07 h]; GRP (1100mm Diameter) - ST - Depth: 2.51m - 3.5m [38.45 m]; GRP (1100mm Diameter) - ST - Depth: 3.51m - 4.5m | 53,714.65 |  | C02 | Z7 | CONS | ST | Installation | bef |
| RHD4CZ7C02ST1407 |  | Primary Test for GRP Pipe Line 1100 mm - (RD-C-2)-Z7-C02-ST | 2d | 2027-07-31 | 2027-08-01 | RHD4CZ7C02ST1307 |  |  |  | Unskilled Labor [2.07 h]; Plumber [2.07 h]; Equipment Opreator [2.07 h]; Water Truck [2.07 h]; GRP (1100mm Diameter) - ST - Depth: 2.51m - 3.5m [19.23 m]; GRP (1100mm Diameter) - ST - Depth: 3.51m - 4.5m | 26,864.31 |  | C02 | Z7 | CONS | ST | Primary Test | bef |
| RHD4CZ7C02ST1507 |  | Backfilling and warning tape works for GRP Pipe Line 1100 mm - (RD-C-2)-Z7-C02-ST | 2d | 2027-08-02 | 2027-08-03 | RHD4CZ7C02ST1407, RHD4CZ7C02ST1510 |  |  |  | Skilled labor [3.48 h]; Unskilled Labor [6.97 h]; Equipment Opreator [6.97 h]; Excavator-Poclain [3.48 h]; Dump Truck [3.48 h]; GRP (1100mm Diameter) - ST - Depth: 2.51m - 3.5m [19.23 m]; GRP (1100mm Diameter) - ST - Depth: 3.51m - 4.5m | 26,864.31 |  | C02 | Z7 | CONS | ST | Backfilling | bef |

| ID | WBS | Activity | Duration | Start | Finish | Predecessors | Complete | Remaining | Planned start | Planned finish | Resources | Cost | Actual cost | RDH4-01-001-Road and Block Names-1 | RDH4-01-001-Zones-1 | RDH4-01-001-Phases-1 | RDH4-01-001-Networks-1 | RDH4-01-001-Work Method-1 | RDH4-01-001-MENEM |
| --- | --- | --- | --- | --- | --- | --- | --- | --- | --- | --- | --- | --- | --- | --- | --- | --- | --- | --- | --- |
|  | 2039 | **RHD4-02-002-C02-(ST)-GRP Pipes - 1000 mm diameter** |  | 2027-07-26 | 2027-08-09 |  |  |  |  |  |  |  |  |  |  |  |  |  |  |
| RHD4CZ7C02ST1106 |  | Excavation works for GRP Pipe Line 1000 mm - (RD-C-2)-Z7-C02-ST | 3d | 2027-07-26 | 2027-07-28 | RHD4CZ7C02ST1107 |  |  |  |  | Skilled labor [31.04 h]; Unskilled Labor [31.04 h]; Equipment Opreator [37.24 h]; Excavator-Poclain [31.04 h]; Dump Truck [6.21 h]; GRP (1000mm Diameter) - ST - Depth less than 1.5 m [18.96 m]; GRP (1000mm Diameter) - ST - Depth: 1.51m - 2.5m [46.41 m]; GRP (1000mm Diameter) - ST - Depth: 2.51m - 3.5m | 59,063.64 |  | C02 | Z7 | CONS | ST | Excavation | bef |
| RHD4CZ7C02ST1206 |  | Bedding works for GRP Pipe Line 1000 mm - (RD-C-2)-Z7-C02-ST | 3d | 2027-07-29 | 2027-08-01 | RHD4CZ7C02ST1106 |  |  |  |  | Skilled labor [31.04 h]; Unskilled Labor [61.97 h]; Equipment Opreator [61.97 h]; Excavator-Poclain [31.04 h]; Dump Truck [31.04 h]; GRP (1000mm Diameter) - ST - Depth less than 1.5 m [9.48 m]; GRP (1000mm Diameter) - ST - Depth: 1.51m - 2.5m [15.47 m]; GRP (1000mm Diameter) - ST - Depth: 2.51m - 3.5m | 22,446.56 |  | C02 | Z7 | CONS | ST | Bedding | bef |
| RHD4CZ7C02ST1306 |  | Installing for GRP Pipe Line 1000 mm - (RD-C-2)-Z7-C02-ST | 2d | 2027-08-02 | 2027-08-03 | RHD4CZ7C02ST1206 |  |  |  |  | Unskilled Labor [39.31 h]; Plumber [19.6 h]; GRP (1000mm Diameter) - ST - Depth less than 1.5 m [85.31 m]; GRP (1000mm Diameter) - ST - Depth: 1.51m - 2.5m [123.77 m]; GRP (1000mm Diameter) - ST - Depth: 2.51m - 3.5m | 187,848.95 |  | C02 | Z7 | CONS | ST | Installation | bef |
| RHD4CZ7C02ST1406 |  | Primary Test for GRP Pipe Line 1000 mm - (RD-C-2)-Z7-C02-ST | 2d | 2027-08-04 | 2027-08-05 | RHD4CZ7C02ST1306 |  |  |  |  | Unskilled Labor [15.46 h]; Plumber [15.46 h]; Equipment Opreator [15.46 h]; Water Truck [15.46 h]; GRP (1000mm Diameter) - ST - Depth less than 1.5 m [37.92 m]; GRP (1000mm Diameter) - ST - Depth: 1.51m - 2.5m [61.89 m]; GRP (1000mm Diameter) - ST - Depth: 2.51m - 3.5m | 89,795.4 |  | C02 | Z7 | CONS | ST | Primary Test | bef |
| RHD4CZ7C02ST1506 |  | Backfilling and warning tape works for GRP Pipe Line 1000 mm - (RD-C-2)-Z7-C02-ST | 3d | 2027-08-07 | 2027-08-09 | RHD4CZ7C02ST1406, RHD4CZ7C02ST1507 |  |  |  |  | Skilled labor [31.04 h]; Unskilled Labor [61.97 h]; Equipment Opreator [61.97 h]; Excavator-Poclain [31.04 h]; Dump Truck [31.04 h]; GRP (1000mm Diameter) - ST - Depth less than 1.5 m [37.92 m]; GRP (1000mm Diameter) - ST - Depth: 1.51m - 2.5m [61.89 m]; GRP (1000mm Diameter) - ST - Depth: 2.51m - 3.5m | 89,795.4 |  | C02 | Z7 | CONS | ST | Backfilling | bef |
|  | 5254 | **RHD4-02-002-C02-(ST)-GRP Pipes - 900 mm diameter** |  | 2027-07-29 | 2027-08-09 |  |  |  |  |  |  |  |  |  |  |  |  |  |  |
| RHD4CZ7C02ST1105 |  | Excavation works for GRP Pipe Line 900 mm - (RD-C-2)-Z7-C02-ST | 2d | 2027-07-29 | 2027-07-31 | RHD4CZ7C02ST1106 |  |  |  |  | Skilled labor [4.8 h]; Unskilled Labor [4.8 h]; Equipment Opreator [5.66 h]; Excavator-Poclain [4.8 h]; Dump Truck [0.98 h]; GRP (900mm Diameter) - ST - Depth less than 1.5 m [8.71 m]; GRP (900mm Diameter) - ST - Depth: 1.51m - 2.5m | 6,523.79 |  | C02 | Z7 | CONS | ST | Excavation | bef |
| RHD4CZ7C02ST1205 |  | Bedding works for GRP Pipe Line 900 mm - (RD-C-2)-Z7-C02-ST | 2d | 2027-08-01 | 2027-08-02 | RHD4CZ7C02ST1105 |  |  |  |  | Skilled labor [4.8 h]; Unskilled Labor [9.47 h]; Equipment Opreator [9.47 h]; Excavator-Poclain [4.8 h]; Dump Truck [4.8 h]; GRP (900mm Diameter) - ST - Depth less than 1.5 m [4.36 m]; GRP (900mm Diameter) - ST - Depth: 1.51m - 2.5m | 3,265.64 |  | C02 | Z7 | CONS | ST | Bedding | bef |
| RHD4CZ7C02ST1305 |  | Installing for GRP Pipe Line 900 mm - (RD-C-2)-Z7-C02-ST | 2d | 2027-08-03 | 2027-08-04 | RHD4CZ7C02ST1205 |  |  |  |  | Unskilled Labor [6.32 h]; Plumber [3.16 h]; GRP (900mm Diameter) - ST - Depth less than 1.5 m [39.21 m]; GRP (900mm Diameter) - ST - Depth: 1.51m - 2.5m | 29,368.29 |  | C02 | Z7 | CONS | ST | Installation | bef |
| RHD4CZ7C02ST1405 |  | Primary Test for GRP Pipe Line 900 mm - (RD-C-2)-Z7-C02-ST | 2d | 2027-08-05 | 2027-08-07 | RHD4CZ7C02ST1305 |  |  |  |  | Unskilled Labor [2.4 h]; Plumber [2.4 h]; Equipment Opreator [2.4 h]; Water Truck [2.4 h]; GRP (900mm Diameter) - ST - Depth less than 1.5 m [17.43 m]; GRP (900mm Diameter) - ST - Depth: 1.51m - 2.5m | 13,055.07 |  | C02 | Z7 | CONS | ST | Primary Test | bef |
| RHD4CZ7C02ST1505 |  | Backfilling and warning tape works for GRP Pipe Line 900 mm - (RD-C-2)-Z7-C02-ST | 2d | 2027-08-08 | 2027-08-09 | RHD4CZ7C02ST1405 |  |  |  |  | Skilled labor [4.8 h]; Unskilled Labor [9.47 h]; Equipment Opreator [9.47 h]; Excavator-Poclain [4.8 h]; Dump Truck [4.8 h]; GRP (900mm Diameter) - ST - Depth less than 1.5 m [17.43 m]; GRP (900mm Diameter) - ST - Depth: 1.51m - 2.5m | 13,055.07 |  | C02 | Z7 | CONS | ST | Backfilling | bef |
|  | 6024 | **RHD4-02-002-C02-(ST)-MH Works - 2000 mm diameter** |  | 2026-09-12 | 2027-10-26 |  |  |  |  |  |  |  |  |  |  |  |  |  |  |
| RHD4CZ7C02ST3102 |  | Excavation and PC Blinding works for MH 2000 mm - (RD-C-2)-Z7-C02-ST | 5d | 2026-09-12 A | 2027-08-12 | RHD4ENSDZ7APPST110, RHD4ENMSST2000, RHD4CZ7C02ST2100 | 50% | 2d | 2027-01-12 | 2027-01-17 | Skilled labor [47.16 h]; Unskilled Labor [47.16 h]; Equipment Opreator [75.47 h]; Excavator-Poclain [47.16 h]; Water Truck [4.68 h]; Dump Truck [23.63 h]; MH (2000mm Diameter) - ST - depth 1.50 - 2.5m [1 nr]; MH (2000mm Diameter) - ST - depth 2.51 - 3.5m [0.75 nr]; MH (2000mm Diameter) - ST - depth 3.51 -4.5m [1 nr] | 56,294.25 | 33,776.55 | C02 | Z7 | CONS | ST | Excavation | bef |
| RHD4CZ7C02ST3202 |  | Installation of Base for MH 2000 mm - (RD-C-2)-Z7-C02-ST | 5d | 2026-09-19 A | 2027-08-18 | RHD4PRSHLSTAGST1606, RHD4CZ7C02ST3102 | 10% | 5d | 2027-01-18 | 2027-01-23 | Skilled labor [52.6 h]; Unskilled Labor [52.6 h]; Equipment Opreator [21.02 h]; Boom Truck [10.56 h]; Concrete Mixer Truck [10.56 h]; MH (2000mm Diameter) - ST - depth 1.50 - 2.5m [1 nr]; MH (2000mm Diameter) - ST - depth 2.51 - 3.5m [0.75 nr]; MH (2000mm Diameter) - ST - depth 3.51 -4.5m [1 nr] | 56,294.25 |  | C02 | Z7 | CONS | ST | Installing Base | bef |
| RHD4CZ7C02ST3302 |  | MH Ring and C.Slab works and Backfilling works for MH 2000 mm - (RD-C-2)-Z7-C02-ST | 5d | 2027-08-19 | 2027-08-24 | RHD4PRSHLDOSST1606, RHD4CZ7C02ST3202 |  |  |  |  | Skilled labor [52.6 h]; Unskilled Labor [52.6 h]; Equipment Opreator [36.8 h]; Boom Truck [21.02 h]; Concrete Mixer Truck [15.79 h]; MH (2000mm Diameter) - ST - depth 1.50 - 2.5m [1.4 nr]; MH (2000mm Diameter) - ST - depth 2.51 - 3.5m [1.05 nr]; MH (2000mm Diameter) - ST - depth 3.51 -4.5m [1.4 nr] | 78,811.95 |  | C02 | Z7 | CONS | ST | Installing Rings | bef |
| RHD4CZ7C02ST3402 |  | Steel Cover for MH 2000 mm - (RD-C-2)-Z7-C02-ST | 4d | 2027-10-17 | 2027-10-20 | RHD4PRSHLDOSST1706, RHD4PRSHLSTAGST1706, RHD4CZ7C02ST3302, RHD4CZ7C02ST1500, RHD4CZ7C02PT3202 |  |  |  |  | Skilled labor [40 h]; Unskilled Labor [79.83 h]; Equipment Opreator [7.95 h]; Boom Truck [7.95 h]; MH (2000mm Diameter) - ST - depth 1.50 - 2.5m [0.2 nr]; MH (2000mm Diameter) - ST - depth 2.51 - 3.5m [0.15 nr]; MH (2000mm Diameter) - ST - depth 3.51 -4.5m [0.2 nr] | 11,258.85 |  | C02 | Z7 | CONS | ST | Steel Cover | bef |
| RHD4CZ7C02ST3502 |  | Finishing, Benching, Testing works for MH 2000 mm - (RD-C-2)-Z7-C02-ST | 5d | 2027-10-21 | 2027-10-26 | RHD4CZ7C02ST3402 |  |  |  |  | Skilled labor [47.16 h]; Unskilled Labor [94.4 h]; Plumber [47.16 h]; Equipment Opreator [9.47 h]; Water Truck [9.47 h]; MH (2000mm Diameter) - ST - depth 1.50 - 2.5m [0.4 nr]; MH (2000mm Diameter) - ST - depth 2.51 - 3.5m [0.3 nr]; MH (2000mm Diameter) - ST - depth 3.51 -4.5m [0.4 nr] | 22,517.7 |  | C02 | Z7 | CONS | ST | Benching | bef |
|  | 6023 | **RHD4-02-002-C02-(ST)-MH Works - 1500 mm diameter** |  | 2027-08-14 | 2027-08-30 |  |  |  |  |  |  |  |  |  |  |  |  |  |  |
| RHD4CZ7C02ST3101 |  | Excavation and PC Blinding works for MH 1500 mm - (RD-C-2)-Z7-C02-ST | 2d | 2027-08-14 | 2027-08-15 | RHD4ENSDZ7APPST110, RHD4ENMSST2000, RHD4CZ7C02ST3102 |  |  |  |  | Skilled labor [5.45 h]; Unskilled Labor [5.45 h]; Equipment Opreator [8.71 h]; Excavator-Poclain [5.45 h]; Water Truck [0.54 h]; Dump Truck [2.72 h]; MH (1500mm Diameter) - ST - depth 1.50 - 2.5m [0.25 nr] | 3,646.5 |  | C02 | Z7 | CONS | ST | Excavation | bef |
| RHD4CZ7C02ST3201 |  | Installation of Base for MH 1500 mm - (RD-C-2)-Z7-C02-ST | 2d | 2027-08-16 | 2027-08-17 | RHD4PRSHLSTAGST1606, RHD4CZ7C02ST3101 |  |  |  |  | Skilled labor [5.45 h]; Unskilled Labor [5.45 h]; Equipment Opreator [2.18 h]; Boom Truck [1.09 h]; Concrete Mixer Truck [1.09 h]; MH (1500mm Diameter) - ST - depth 1.50 - 2.5m [0.25 nr] | 3,646.5 |  | C02 | Z7 | CONS | ST | Installing Base | bef |
| RHD4CZ7C02ST3301 |  | MH Ring and C.Slab works and Backfilling works for MH 1500 mm - (RD-C-2)-Z7-C02-ST | 2d | 2027-08-18 | 2027-08-19 | RHD4PRSHLDOSST1606, RHD4CZ7C02ST3201 |  |  |  |  | Skilled labor [5.45 h]; Unskilled Labor [5.45 h]; Equipment Opreator [3.81 h]; Boom Truck [2.18 h]; Concrete Mixer Truck [1.6 h]; MH (1500mm Diameter) - ST - depth 1.50 - 2.5m [0.35 nr] | 5,105.1 |  | C02 | Z7 | CONS | ST | Installing Rings | bef |
| RHD4CZ7C02ST3401 |  | Steel Cover for MH 1500 mm - (RD-C-2)-Z7-C02-ST | 2d | 2027-08-21 | 2027-08-22 | RHD4PRSHLDOSST1706, RHD4PRSHLSTAGST1706, RHD4CZ7C02ST3301, RHD4CZ7C02ST1500 |  |  |  |  | Skilled labor [3.59 h]; Unskilled Labor [7.3 h]; Equipment Opreator [0.8 h]; Boom Truck [0.8 h]; MH (1500mm Diameter) - ST - depth 1.50 - 2.5m [0.05 nr] | 729.3 |  | C02 | Z7 | CONS | ST | Steel Cover | bef |
| RHD4CZ7C02ST3501 |  | Finishing, Benching, Testing works for MH 1500 mm - (RD-C-2)-Z7-C02-ST | 2d | 2027-08-29 | 2027-08-30 | RHD4CZ7C02ST3401, RHD4CZ7C02ST2500 |  |  |  |  | Skilled labor [5.45 h]; Unskilled Labor [10.89 h]; Plumber [5.45 h]; Equipment Opreator [1.09 h]; Water Truck [1.09 h]; MH (1500mm Diameter) - ST - depth 1.50 - 2.5m [0.1 nr] | 1,458.6 |  | C02 | Z7 | CONS | ST | Benching | bef |

| ID | WBS | Activity | Duration | Start | Finish | Predecessors | Resources | Cost | RDH4-01-001-Road and Block Names-1 | RDH4-01-001-Zones-1 | RDH4-01-001-Phases-1 | RDH4-01-001-Networks-1 | RDH4-01-001-Work Method-1 | RDH4-01-001-MENEM |
| --- | --- | --- | --- | --- | --- | --- | --- | --- | --- | --- | --- | --- | --- | --- |
|  | 6022 | **RHD4-02-002-C02-(ST)-MH Works - 1200 mm diameter** |  | 2027-08-16 | 2027-09-01 |  |  |  |  |  |  |  |  |  |
| RHD4CZ7C02ST3100 |  | Excavation and PC Blinding works for MH 1200 mm - (RD-C-2)-Z7-C02-ST | 2d | 2027-08-16 | 2027-08-17 | RHD4ENSDZ7APPST110, RHD4ENMSST2000, RHD4ENMSST2010, RHD4CZ7C02ST3101, RHD4CZ2L102PT3202 | Skilled labor [15.25 h]; Unskilled Labor [15.25 h]; Equipment Opreator [24.39 h]; Excavator-Poclain [15.25 h]; Water Truck [1.52 h]; Dump Truck [7.62 h]; MH (1200mm Diameter) - ST - depth less than 1.5 [0.5 nr]; MH (1200mm Diameter) - ST - depth 1.50 - 2.5m [0.75 nr] | 12,125.25 | C02 | Z7 | CONS | ST | Excavation | bef |
| RHD4CZ7C02ST3200 |  | Installation of Base for MH 1200 mm - (RD-C-2)-Z7-C02-ST | 2d | 2027-08-18 | 2027-08-19 | RHD4PRSHLSTAGST1606, RHD4CZ7C02ST3100 | Skilled labor [16.34 h]; Unskilled Labor [16.34 h]; Equipment Opreator [6.53 h]; Boom Truck [3.27 h]; Concrete Mixer Truck [3.27 h]; MH (1200mm Diameter) - ST - depth less than 1.5 [0.5 nr]; MH (1200mm Diameter) - ST - depth 1.50 - 2.5m [0.75 nr] | 12,125.25 | C02 | Z7 | CONS | ST | Installing Base | bef |
| RHD4CZ7C02ST3300 |  | MH Ring and C.Slab works and Backfilling works for MH 1200 mm - (RD-C-2)-Z7-C02-ST | 2d | 2027-08-21 | 2027-08-22 | RHD4PRSHLDOSST1606, RHD4CZ7C02ST3200, RHD4CZ2L011RD7100, RHD4CZ5L016PT3202, RHD4CZ5L016IRR3201 | Skilled labor [16.34 h]; Unskilled Labor [16.34 h]; Equipment Opreator [11.43 h]; Boom Truck [6.53 h]; Concrete Mixer Truck [4.9 h]; MH (1200mm Diameter) - ST - depth less than 1.5 [0.7 nr]; MH (1200mm Diameter) - ST - depth 1.50 - 2.5m [1.05 nr] | 16,975.35 | C02 | Z7 | CONS | ST | Installing Rings | bef |
| RHD4CZ7C02ST3400 |  | Steel Cover for MH 1200 mm - (RD-C-2)-Z7-C02-ST | 2d | 2027-08-29 | 2027-08-30 | RHD4PRSHLDOSST1706, RHD4PRSHLSTAGST1706, RHD4CZ7C02ST3300, RHD4CZ7C02ST2500, RHD4CZ7C02ST1500 | Skilled labor [18.19 h]; Unskilled Labor [36.26 h]; Equipment Opreator [3.59 h]; Boom Truck [3.59 h]; MH (1200mm Diameter) - ST - depth less than 1.5 [0.1 nr]; MH (1200mm Diameter) - ST - depth 1.50 - 2.5m [0.15 nr] | 2,425.05 | C02 | Z7 | CONS | ST | Steel Cover | bef |
| RHD4CZ7C02ST3500 |  | Finishing, Benching, Testing works for MH 1200 mm - (RD-C-2)-Z7-C02-ST | 2d | 2027-08-31 | 2027-09-01 | RHD4CZ7C02ST3400 | Skilled labor [15.25 h]; Unskilled Labor [30.49 h]; Plumber [15.25 h]; Equipment Opreator [3.05 h]; Water Truck [3.05 h]; MH (1200mm Diameter) - ST - depth less than 1.5 [0.2 nr]; MH (1200mm Diameter) - ST - depth 1.50 - 2.5m [0.3 nr] | 4,850.1 | C02 | Z7 | CONS | ST | Benching | bef |
|  | 6014 | **RHD4-02-002-C02-(ST)-GRP Pipes - 1200 mm diameter** |  | 2027-02-08 | 2027-08-11 |  |  |  |  |  |  |  |  |  |
| RHD4CZ7C02ST1108 |  | Excavation works for GRP Pipe Line 1200 mm - (RD-C-2)-Z7-C02-ST | 2d | 2027-02-08 | 2027-02-09 | RHD4ENSDZ7APPST110, RHD4CZ7C02ST1109 | Skilled labor [3.48 h]; Unskilled Labor [3.48 h]; Equipment Opreator [4.14 h]; Excavator-Poclain [3.48 h]; Dump Truck [0.65 h]; GRP (1200mm Diameter) - ST - Depth: 3.51m - 4.5m [7.13 m] | 12,056.83 | C02 | Z7 | CONS | ST | Excavation | bef |
| RHD4CZ7C02ST1208 |  | Bedding works for GRP Pipe Line 1200 mm - (RD-C-2)-Z7-C02-ST | 2d | 2027-02-10 | 2027-02-11 | RHD4CZ7C02ST1108 | Skilled labor [3.48 h]; Unskilled Labor [6.86 h]; Equipment Opreator [6.86 h]; Excavator-Poclain [3.48 h]; Dump Truck [3.48 h]; GRP (1200mm Diameter) - ST - Depth: 3.51m - 4.5m [2.38 m] | 4,024.58 | C02 | Z7 | CONS | ST | Bedding | bef |
| RHD4CZ7C02ST1308 |  | Installing for GRP Pipe Line 1200 mm - (RD-C-2)-Z7-C02-ST | 2d | 2027-02-13 | 2027-02-14 | RHD4PRSHLSTAGST1006, RHD4CZ7C02ST1208, RHD4CZ7C02ST1309, RHD4PRSHLDOSST1606, RHD4PRSHLPOST1000, RHD4PRSHLDOSST1006, RHD4PRSHLDOSST1605, RHD4PRSHLDOSST1005 | Unskilled Labor [4.14 h]; Plumber [2.07 h]; GRP (1200mm Diameter) - ST - Depth: 3.51m - 4.5m [19 m] | 32,129 | C02 | Z7 | CONS | ST | Installation | bef |
| RHD4CZ7C02ST1408 |  | Primary Test for GRP Pipe Line 1200 mm - (RD-C-2)-Z7-C02-ST | 2d | 2027-02-15 | 2027-02-16 | RHD4CZ7C02ST1308, RHD4CZ7C02ST1409 | Unskilled Labor [2.07 h]; Plumber [2.07 h]; Equipment Opreator [2.07 h]; Water Truck [2.07 h]; GRP (1200mm Diameter) - ST - Depth: 3.51m - 4.5m [9.5 m] | 16,064.5 | C02 | Z7 | CONS | ST | Primary Test | bef |
| RHD4CZ7C02ST1508 |  | Backfilling and warning tape works for GRP Pipe Line 1200 mm - (RD-C-2)-Z7-C02-ST | 2d | 2027-08-10 | 2027-08-11 | RHD4CZ7C02ST1408, RHD4CZ7C02ST1509, RHD4CZ7C02ST1506, RHD4CZ7C02ST1505, RHD4CZ7C02ST4600 | Skilled labor [3.48 h]; Unskilled Labor [6.86 h]; Equipment Opreator [6.86 h]; Excavator-Poclain [3.48 h]; Dump Truck [3.48 h]; GRP (1200mm Diameter) - ST - Depth: 3.51m - 4.5m [9.5 m] | 16,064.5 | C02 | Z7 | CONS | ST | Backfilling | bef |
|  | 6010 | **RHD4-02-002-C02-(ST)-GRP Pipes - 800 mm diameter** |  |  |  |  |  |  |  |  |  |  |  |  |
|  | 6008 | **RHD4-02-002-C02-(ST)-GRP Pipes - 600 mm diameter** |  |  |  |  |  |  |  |  |  |  |  |  |
|  | 6007 | **RHD4-02-002-C02-(ST)-GRP Pipes - 500 mm diameter** |  | 2027-08-01 | 2027-08-11 |  |  |  |  |  |  |  |  |  |
| RHD4CZ7C02ST1101 |  | Excavation works for GRP Pipe Line 500 mm - (RD-C-2)-Z7-C02-ST | 2d | 2027-08-01 | 2027-08-02 | RHD4ENSDZ7APPST110, RHD4CZ7C02ST1105, RHD4CZ9L05PT2402, RHD4CZ2L011SL1500, RHD4CZ9L05PT3203 | Skilled labor [8.28 h]; Unskilled Labor [8.28 h]; Equipment Opreator [9.91 h]; Excavator-Poclain [8.28 h]; Dump Truck [1.6 h]; GRP (500mm Diameter) - ST - Depth less than 1.5 m [17.06 m]; GRP (500mm Diameter) - ST - Depth: 1.51m - 2.5m | 6,056.3 | C02 | Z7 | CONS | ST | Excavation | bef |
| RHD4CZ7C02ST1201 |  | Bedding works for GRP Pipe Line 500 mm - (RD-C-2)-Z7-C02-ST | 2d | 2027-08-03 | 2027-08-04 | RHD4CZ7C02ST1101 | Skilled labor [7.51 h]; Unskilled Labor [15.03 h]; Equipment Opreator [15.03 h]; Excavator-Poclain [7.51 h]; Dump Truck [7.51 h]; GRP (500mm Diameter) - ST - Depth less than 1.5 m [8.53 m]; GRP (500mm Diameter) - ST - Depth: 1.51m - 2.5m | 3,028.15 | C02 | Z7 | CONS | ST | Bedding | bef |
| RHD4CZ7C02ST1301 |  | Installing for GRP Pipe Line 500 mm - (RD-C-2)-Z7-C02-ST | 2d | 2027-08-05 | 2027-08-07 | RHD4PRSHLSTAGST1006, RHD4CZ7C02ST1201, RHD4PRSHLDOSST1606, RHD4PRSHLPOST1000, RHD4PRSHLDOSST1006, RHD4PRSHLDOSST1605, RHD4PRSHLDOSST1005 | Unskilled Labor [22.11 h]; Plumber [11 h]; GRP (500mm Diameter) - ST - Depth less than 1.5 m [76.77 m]; GRP (500mm Diameter) - ST - Depth: 1.51m - 2.5m | 27,253.35 | C02 | Z7 | CONS | ST | Installation | bef |
| RHD4CZ7C02ST1401 |  | Primary Test for GRP Pipe Line 500 mm - (RD-C-2)-Z7-C02-ST | 2d | 2027-08-08 | 2027-08-09 | RHD4CZ7C02ST1301 | Unskilled Labor [6.1 h]; Plumber [6.1 h]; Equipment Opreator [6.1 h]; Water Truck [6.1 h]; GRP (500mm Diameter) - ST - Depth less than 1.5 m [34.12 m]; GRP (500mm Diameter) - ST - Depth: 1.51m - 2.5m | 12,112.6 | C02 | Z7 | CONS | ST | Primary Test | bef |
| RHD4CZ7C02ST1501 |  | Backfilling and warning tape works for GRP Pipe Line 500 mm - (RD-C-2)-Z7-C02-ST | 2d | 2027-08-10 | 2027-08-11 | RHD4CZ7C02ST1401 | Skilled labor [9.26 h]; Unskilled Labor [18.62 h]; Equipment Opreator [18.62 h]; Excavator-Poclain [9.26 h]; Dump Truck [9.26 h]; GRP (500mm Diameter) - ST - Depth less than 1.5 m [34.12 m]; GRP (500mm Diameter) - ST - Depth: 1.51m - 2.5m | 12,112.6 | C02 | Z7 | CONS | ST | Backfilling | bef |
|  | 6006 | **RHD4-02-002-C02-(ST)-GRP Pipes - 400 mm diameter** |  | 2027-08-03 | 2027-08-14 |  |  |  |  |  |  |  |  |  |
| RHD4CZ7C02ST1100 |  | Excavation works for GRP Pipe Line 400 mm - (RD-C-2)-Z7-C02-ST | 2d | 2027-08-03 | 2027-08-04 | RHD4ENSDZ7APPST110, RHD4CZ7C02ST1101, RHD4CZ9L05SW3500, RHD4CZ9L05PT3200 | Skilled labor [5.55 h]; Unskilled Labor [5.55 h]; Equipment Opreator [6.64 h]; Excavator-Poclain [5.55 h]; Dump Truck [1.09 h]; GRP (400mm Diameter) - ST - Depth less than 1.5 m [12.64 m] | 3,665.31 | C02 | Z7 | CONS | ST | Excavation | bef |
| RHD4CZ7C02ST1200 |  | Bedding works for GRP Pipe Line 400 mm - (RD-C-2)-Z7-C02-ST | 2d | 2027-08-05 | 2027-08-07 | RHD4CZ7C02ST1100, RHD4CZ4L014PT3100, RHD4CZ4A013ICT3400 | Skilled labor [4.57 h]; Unskilled Labor [9.15 h]; Equipment Opreator [9.15 h]; Excavator-Poclain [4.57 h]; Dump Truck [4.57 h]; GRP (400mm Diameter) - ST - Depth less than 1.5 m [6.32 m] | 1,832.65 | C02 | Z7 | CONS | ST | Bedding | bef |
| RHD4CZ7C02ST1300 |  | Installing for GRP Pipe Line 400 mm - (RD-C-2)-Z7-C02-ST | 2d | 2027-08-08 | 2027-08-09 | RHD4PRSHLSTAGST1006, RHD4CZ7C02ST1200, RHD4CZ7C02ST1301, RHD4PRSHLDOSST1606, RHD4PRSHLPOST1000, RHD4PRSHLDOSST1006, RHD4PRSHLDOSST1605, RHD4PRSHLDOSST1005 | Unskilled Labor [18.4 h]; Plumber [9.15 h]; GRP (400mm Diameter) - ST - Depth less than 1.5 m [56.87 m] | 16,492.3 | C02 | Z7 | CONS | ST | Installation | bef |
| RHD4CZ7C02ST1400 |  | Primary Test for GRP Pipe Line 400 mm - (RD-C-2)-Z7-C02-ST | 2d | 2027-08-10 | 2027-08-11 | RHD4CZ7C02ST1300, RHD4CZ7C02ST1401 | Unskilled Labor [2.72 h]; Plumber [2.72 h]; Equipment Opreator [2.72 h]; Water Truck [2.72 h]; GRP (400mm Diameter) - ST - Depth less than 1.5 m [25.28 m] | 7,330.62 | C02 | Z7 | CONS | ST | Primary Test | bef |
| RHD4CZ7C02ST1500 |  | Backfilling and warning tape works for GRP Pipe Line 400 mm - (RD-C-2)-Z7-C02-ST | 2d | 2027-08-12 | 2027-08-14 | RHD4CZ7C02ST1400, RHD4CZ7C02ST1501 | Skilled labor [6.86 h]; Unskilled Labor [13.72 h]; Equipment Opreator [13.72 h]; Excavator-Poclain [6.86 h]; Dump Truck [6.86 h]; GRP (400mm Diameter) - ST - Depth less than 1.5 m [25.28 m] | 7,330.62 | C02 | Z7 | CONS | ST | Backfilling | bef |

| ID | WBS | Activity | Duration | Start | Finish | Predecessors | Complete | Remaining | Planned start | Planned finish | Resources | Cost | Actual cost | RDH4-01-001-Road and Block Names-1 | RDH4-01-001-Zones-1 | RDH4-01-001-Phases-1 | RDH4-01-001-Networks-1 | RDH4-01-001-Work Method-1 | RDH4-01-001-MENEM |
| --- | --- | --- | --- | --- | --- | --- | --- | --- | --- | --- | --- | --- | --- | --- | --- | --- | --- | --- | --- |
|  | 6021 | **RHD4-02-002-C02-(ST)-UPVC Pipes - 400 mm diameter** |  |  |  |  |  |  |  |  |  |  |  |  |  |  |  |  |  |
|  | 6020 | **RHD4-02-002-C02-(ST)-UPVC Pipes - 300 mm diameter** |  | 2026-08-25 | 2027-08-28 |  |  |  |  |  |  |  |  |  |  |  |  |  |  |
| RHD4CZ7C02ST2100 |  | Excavation works for UPVC Pipe Line 300 mm - (RD-C-2)-Z7-C02-ST | 2d | 2026-08-25 A | 2027-08-10 | RHD4ENSDZ7APPST110, RHD4CZ7C02ST1100 | 5% | 5d | 2027-01-10 | 2027-01-11 | Skilled labor [46.5 h]; Unskilled Labor [46.5 h]; Equipment Opreator [55.76 h]; Excavator-Poclain [46.5 h]; Dump Truck [9.26 h]; UPVC (300mm Diameter) - ST - Depth less than 1.5 [98.08 m]; UPVC (300mm Diameter) - ST - Depth: 1.51m - 2.5m [13.89 m] | 34,524.18 |  | C02 | Z7 | CONS | ST | Excavation | bef |
| RHD4CZ7C02ST2200 |  | Bedding works for UPVC Pipe Line 300 mm - (RD-C-2)-Z7-C02-ST | 2d | 2026-08-29 A | 2027-08-15 | RHD4CZ7C02ST2100 | 6% | 4d | 2027-01-12 | 2027-01-13 | Skilled labor [41.06 h]; Unskilled Labor [82.11 h]; Equipment Opreator [82.11 h]; Excavator-Poclain [41.06 h]; Dump Truck [41.06 h]; UPVC (300mm Diameter) - ST - Depth less than 1.5 [49.04 m]; UPVC (300mm Diameter) - ST - Depth: 1.51m - 2.5m [4.63 m] | 16,461.1 |  | C02 | Z7 | CONS | ST | Bedding | bef |
| RHD4CZ7C02ST2300 |  | Installing for UPVC Pipe Line 300 mm - (RD-C-2)-Z7-C02-ST | 2d | 2026-09-02 A | 2027-08-21 | RHD4PRSHLDOSST1106, RHD4PRSHLSTAGST1106, RHD4CZ7C02ST2200 | 4% | 5d | 2027-01-14 | 2027-01-16 | Unskilled Labor [92.89 h]; Plumber [46.5 h]; UPVC (300mm Diameter) - ST - Depth less than 1.5 [441.38 m]; UPVC (300mm Diameter) - ST - Depth: 1.51m - 2.5m [37.04 m] | 146,553.98 |  | C02 | Z7 | CONS | ST | Installation | bef |
| RHD4CZ7C02ST2500 |  | Backfilling and warning tape works for UPVC Pipe Line 300 mm - (RD-C-2)-Z7-C02-ST | 2d | 2026-09-19 A | 2027-08-28 | RHD4CZ7C02ST2400, RHD4CZ7C02ST6100 | 4% | 3d | 2027-01-19 | 2027-01-20 | Skilled labor [54.56 h]; Unskilled Labor [109.12 h]; Equipment Opreator [109.12 h]; Excavator-Poclain [54.56 h]; Dump Truck [54.56 h]; UPVC (300mm Diameter) - ST - Depth less than 1.5 [196.17 m]; UPVC (300mm Diameter) - ST - Depth: 1.51m - 2.5m [18.52 m] | 65,847.43 |  | C02 | Z7 | CONS | ST | Backfilling | bef |
| RHD4CZ7C02ST2400 |  | Primary Test for UPVC Pipe Line 300 mm - (RD-C-2)-Z7-C02-ST | 3d | 2027-08-22 | 2027-08-24 | RHD4CZ7C02ST2300 |  |  |  |  | Unskilled Labor [30.28 h]; Plumber [30.28 h]; Equipment Opreator [30.28 h]; Water Truck [30.28 h]; UPVC (300mm Diameter) - ST - Depth less than 1.5 [196.17 m]; UPVC (300mm Diameter) - ST - Depth: 1.51m - 2.5m [18.52 m] | 65,847.43 |  | C02 | Z7 | CONS | ST | Primary Test | bef |
|  | 6028 | **RHD4-02-002-C02-(ST)-Concrete Encasement** |  | 2027-08-19 | 2027-08-21 |  |  |  |  |  |  |  |  |  |  |  |  |  |  |
| RHD4CZ7C02ST6100 |  | Pipe Encasement for Storm Pipelines - (RD-C-2)-Z7-C02-ST | 2d | 2027-08-19 | 2027-08-21 | RHD4CZ7C02ST2300 SS, RHD4CZ7C02ST2300 FF, RHD4CZ7C02ST2200 |  |  |  |  | Skilled labor [13.72 h]; Unskilled Labor [13.72 h]; Equipment Opreator [15.03 h]; Concrete Mixer Truck [1.42 h]; Dump Truck [13.72 h]; Pipe Encasement - ST [251.69 m3] | 127,355.14 |  | C02 | Z7 | CONS | ST | Pipe Encasement | bef |
|  | 6029 | **RHD4-02-002-Z7-C02-Catch Basin - ST** |  | 2026-09-19 | 2027-11-03 |  |  |  |  |  |  |  |  |  |  |  |  |  |  |
|  | 6030 | **RHD4-02-002-C02-(ST)-Single Catch Basin Works** |  | 2026-09-19 | 2027-11-01 |  |  |  |  |  |  |  |  |  |  |  |  |  |  |
| RHD4CZ7C02ST7100 |  | Excavation works for Single Catch Basin - (RD-C-2)-Z7-C02-ST | 5d | 2026-09-19 A | 2027-08-28 | RHD4ENSDZ7APPST110, RHD4CZ2L102LV3400, RHD4CZ7C02ST3300, RHD4CZ7C02ST3301 | 5% | 5d | 2027-01-27 | 2027-02-01 | Skilled labor [44.65 h]; Unskilled Labor [89.3 h]; Equipment Opreator [66.98 h]; Excavator-Poclain [44.65 h]; Dump Truck [22.33 h]; Single Catch basin - ST [10.25 nr] | 38,242.75 |  | C02 | Z7 | CONS | ST | Excavation | bef |
| RHD4CZ7C02ST7200 |  | PC Blinding, Installation and Pipe connection for Single Catch Basin - (RD-C-2)-Z7-C02-ST | 5d | 2026-09-21 A | 2027-09-02 | RHD4CZ7C02ST7100 | 5% | 5d | 2027-02-02 | 2027-02-07 | Skilled labor [44.65 h]; Unskilled Labor [89.3 h]; Plumber [22.33 h]; Equipment Opreator [8.93 h]; Boom Truck [8.93 h]; Single Catch basin - ST [8.2 nr] | 30,594.2 |  | C02 | Z7 | CONS | ST | Installation & Pipe Connection | bef |
| RHD4CZ7C02ST7300 |  | Rings & C.Slab & Final Backfill for Single Catch Basin - (RD-C-2)-Z7-C02-ST | 6d | 2026-09-22 A | 2027-09-09 | RHD4PRSHLDOSST1306, RHD4PRSHLSTAGST1306, RHD4CZ7C02ST7200 | 5% | 6d | 2027-02-08 | 2027-02-14 | Skilled labor [55.87 h]; Unskilled Labor [111.63 h]; Equipment Opreator [66.98 h]; Boom Truck [11.11 h]; Bobcat [55.87 h]; Single Catch basin - ST [14.35 nr] | 53,539.85 |  | C02 | Z7 | CONS | ST | Rings | bef |
| RHD4CZ7C02ST7400 |  | Steel Cover for Single Catch Basin - (RD-C-2)-Z7-C02-ST | 5d | 2027-10-17 | 2027-10-21 | RHD4PRSHLDOSST1706, RHD4CZ7C02ST7300, RHD4CZ7C02PT3202 |  |  |  |  | Skilled labor [44.65 h]; Unskilled Labor [44.65 h]; Equipment Opreator [8.93 h]; Boom Truck [8.93 h]; Single Catch basin - ST [2.05 nr] | 7,648.55 |  | C02 | Z7 | CONS | ST | Steel Cover | bef |
| RHD4CZ7C02ST7500 |  | Finishing and Insulation works for Single Catch Basin - (RD-C-2)-Z7-C02-ST | 9d | 2027-10-23 | 2027-11-01 | RHD4CZ7C02ST7400 |  |  |  |  | Skilled labor [89.3 h]; Unskilled Labor [178.6 h]; Equipment Opreator [17.86 h]; Boom Truck [17.86 h]; Single Catch basin - ST [6.15 nr] | 22,945.65 |  | C02 | Z7 | CONS | ST | Insulation | bef |
|  | 6031 | **RHD4-02-002-C02-(ST)-Double Catch Basin Works** |  | 2027-08-23 | 2027-11-03 |  |  |  |  |  |  |  |  |  |  |  |  |  |  |
| RHD4CZ7C02ST8100 |  | Excavation works for Double Catch Basin - (RD-C-2)-Z7-C02-ST | 2d | 2027-08-23 | 2027-08-24 | RHD4ENSDZ7APPST110, RHD4CZ7C02ST7100 SS, RHD4CZ7C02ST3300, RHD4CZ7C02ST3301 |  |  |  |  | Skilled labor [6.53 h]; Unskilled Labor [13.07 h]; Equipment Opreator [9.8 h]; Excavator-Poclain [6.53 h]; Dump Truck [3.27 h]; Double Catch basin - ST [0.75 nr] | 10,474.5 |  | C02 | Z7 | CONS | ST | Excavation | bef |
| RHD4CZ7C02ST8200 |  | PC Blinding, Installation and Pipe connection for Double Catch Basin - (RD-C-2)-Z7-C02-ST | 2d | 2027-09-04 | 2027-09-05 | RHD4CZ7C02ST8100, RHD4CZ7C02ST7200 |  |  |  |  | Skilled labor [6.53 h]; Unskilled Labor [13.07 h]; Plumber [3.27 h]; Equipment Opreator [1.31 h]; Boom Truck [1.31 h]; Double Catch basin - ST [0.6 nr] | 8,379.6 |  | C02 | Z7 | CONS | ST | Installation & Pipe Connection | bef |
| RHD4CZ7C02ST8300 |  | Rings & C.Slab & Final Backfillfor Double Catch Basin - (RD-C-2)-Z7-C02-ST | 2d | 2027-09-11 | 2027-09-12 | RHD4PRSHLDOSST1306, RHD4PRSHLSTAGST1306, RHD4CZ7C02ST8200, RHD4CZ7C02ST7300 |  |  |  |  | Skilled labor [8.17 h]; Unskilled Labor [16.34 h]; Equipment Opreator [9.8 h]; Boom Truck [1.6 h]; Bobcat [8.17 h]; Double Catch basin - ST [1.05 nr] | 14,664.3 |  | C02 | Z7 | CONS | ST | Rings | bef |
| RHD4CZ7C02ST8400 |  | Steel Cover for Double Catch Basin - (RD-C-2)-Z7-C02-ST | 2d | 2027-10-23 | 2027-10-24 | RHD4PRSHLDOSST1706, RHD4CZ7C02ST8300, RHD4CZ7C02ST7400 |  |  |  |  | Skilled labor [6.53 h]; Unskilled Labor [6.53 h]; Equipment Opreator [1.31 h]; Boom Truck [1.31 h]; Double Catch basin - ST [0.15 nr] | 2,094.9 |  | C02 | Z7 | CONS | ST | Steel Cover | bef |
| RHD4CZ7C02ST8500 |  | Finishing and Insulation works for Double Catch Basin - (RD-C-2)-Z7-C02-ST | 2d | 2027-11-02 | 2027-11-03 | RHD4CZ7C02ST8400, RHD4CZ7C02ST7500 |  |  |  |  | Skilled labor [16.34 h]; Unskilled Labor [32.67 h]; Equipment Opreator [3.27 h]; Boom Truck [3.27 h]; Double Catch basin - ST [0.45 nr] | 6,284.7 |  | C02 | Z7 | CONS | ST | Insulation | bef |
|  | 3973 | **RHD4-02-002-Z7-C02-Sewage Network - SW** |  | 2026-09-15 | 2027-09-11 |  |  |  |  |  |  |  |  |  |  |  |  |  |  |
|  | 3785 | **RHD4-02-002-C02-(SW)-GRP Pipes - 300 mm diameter** |  | 2026-09-15 | 2027-09-07 |  |  |  |  |  |  |  |  |  |  |  |  |  |  |
| RHD4CZ7C02SW1100 |  | Excavation works for GRP Pipe Line 300 mm - (RD-C-2)-Z7-C02-SW | 2d | 2026-09-15 A | 2027-08-29 | RHD4CZ7C02ST2500 | 42% | 1d | 2027-01-21 | 2027-01-23 | Skilled labor [12.74 h]; Unskilled Labor [12.74 h]; Equipment Opreator [15.25 h]; Excavator-Poclain [12.74 h]; Dump Truck [2.5 h]; GRP (300mm Diameter) - SW - Depth: 2.51m - 3.5m [12.76 m]; GRP (300mm Diameter) - SW - Depth: 3.51m - 4.5m [13.45 m] | 12,374.93 | 5,206.08 | C02 | Z7 | CONS | SW | Excavation | bef |
| RHD4CZ7C02SW1200 |  | Bedding works for GRP Pipe Line 300 mm - (RD-C-2)-Z7-C02-SW | 2d | 2027-08-30 | 2027-08-31 | RHD4CZ7C02SW1100 |  |  |  |  | Skilled labor [12.74 h]; Unskilled Labor [25.37 h]; Equipment Opreator [25.37 h]; Excavator-Poclain [12.74 h]; Dump Truck [12.74 h]; GRP (300mm Diameter) - SW - Depth: 2.51m - 3.5m [4.25 m]; GRP (300mm Diameter) - SW - Depth: 3.51m - 4.5m [4.48 m] | 4,121.84 |  | C02 | Z7 | CONS | SW | Bedding | bef |
| RHD4CZ7C02SW1300 |  | Installing for GRP Pipe Line 300 mm - (RD-C-2)-Z7-C02-SW | 2d | 2027-09-01 | 2027-09-02 | RHD4CZ7C02SW1200 |  |  |  |  | Unskilled Labor [25.37 h]; Plumber [12.74 h]; Equipment Opreator [12.74 h]; Boom Truck [12.74 h]; GRP (300mm Diameter) - SW - Depth: 2.51m - 3.5m [34.02 m]; GRP (300mm Diameter) - SW - Depth: 3.51m - 4.5m [35.88 m] | 33,004.2 |  | C02 | Z7 | CONS | SW | Installation | bef |
| RHD4CZ7C02SW1400 |  | Primary Test for GRP Pipe Line 300 mm - (RD-C-2)-Z7-C02-SW | 2d | 2027-09-04 | 2027-09-05 | RHD4CZ7C02SW1300 |  |  |  |  | Unskilled Labor [12.74 h]; Plumber [12.74 h]; Equipment Opreator [12.74 h]; Water Truck [12.74 h]; GRP (300mm Diameter) - SW - Depth: 2.51m - 3.5m [17.01 m]; GRP (300mm Diameter) - SW - Depth: 3.51m - 4.5m [17.94 m] | 16,502.1 |  | C02 | Z7 | CONS | SW | Primary Test | bef |
| RHD4CZ7C02SW1500 |  | Backfilling and warning tape works for GRP Pipe Line 300 mm - (RD-C-2)-Z7-C02-SW | 2d | 2027-09-06 | 2027-09-07 | RHD4CZ7C02SW1400 |  |  |  |  | Skilled labor [12.74 h]; Unskilled Labor [25.37 h]; Equipment Opreator [25.37 h]; Excavator-Poclain [12.74 h]; Dump Truck [12.74 h]; GRP (300mm Diameter) - SW - Depth: 2.51m - 3.5m [17.01 m]; GRP (300mm Diameter) - SW - Depth: 3.51m - 4.5m [17.94 m] | 16,502.1 |  | C02 | Z7 | CONS | SW | Backfilling | bef |

| ID | WBS | Activity | Duration | Start | Finish | Predecessors | Complete | Remaining | Planned start | Planned finish | Resources | Cost | Actual cost | RDH4-01-001-Road and Block Names-1 | RDH4-01-001-Zones-1 | RDH4-01-001-Phases-1 | RDH4-01-001-Networks-1 | RDH4-01-001-Work Method-1 | RDH4-01-001-MENEM |
| --- | --- | --- | --- | --- | --- | --- | --- | --- | --- | --- | --- | --- | --- | --- | --- | --- | --- | --- | --- |
|  | 3794 | **RHD4-02-002-C02-(SW)-MH Works - 1200 mm diameter** |  | 2026-09-20 | 2027-09-11 |  |  |  |  |  |  |  |  |  |  |  |  |  |  |
| RHD4CZ7C02SW3100 |  | Excavation and PC Blinding works for MH 1200 mm - (RD-C-2)-Z7-C02-SW | 2d | 2026-09-20 A | 2026-10-20 A | RHD4CZ7C02SW1100 | 100% |  | 2027-01-24 | 2027-01-25 | Skilled labor [16.34 h]; Unskilled Labor [16.34 h]; Equipment Opreator [26.14 h]; Excavator-Poclain [16.34 h]; Water Truck [1.6 h]; Dump Truck [8.17 h]; MH (1200mm Diameter) - SW - depth 3.51 -4.5m [0.75 nr] | 9,990 | 9,990 | C02 | Z7 | CONS | SW | Excavation | bef |
| RHD4CZ7C02SW3200 |  | Installation of Base for MH 1200 mm - (RD-C-2)-Z7-C02-SW | 3d | 2027-08-30 | 2027-09-01 | RHD4CZ7C02SW3100 |  |  |  |  | Skilled labor [32.67 h]; Unskilled Labor [32.67 h]; Equipment Opreator [13.07 h]; Boom Truck [6.53 h]; Concrete Mixer Truck [6.53 h]; MH (1200mm Diameter) - SW - depth 3.51 -4.5m [0.75 nr] | 9,990 |  | C02 | Z7 | CONS | SW | Installing Base | bef |
| RHD4CZ7C02SW3300 |  | MH Ring and C.Slab works and Backfilling works for MH 1200 mm - (RD-C-2)-Z7-C02-SW | 3d | 2027-09-02 | 2027-09-05 | RHD4CZ7C02SW3200 |  |  |  |  | Skilled labor [32.67 h]; Unskilled Labor [32.67 h]; Equipment Opreator [22.87 h]; Boom Truck [13.07 h]; Concrete Mixer Truck [9.8 h]; MH (1200mm Diameter) - SW - depth 3.51 -4.5m [1.05 nr] | 13,986 |  | C02 | Z7 | CONS | SW | Installing Rings | bef |
| RHD4CZ7C02SW3400 |  | Steel Cover for MH 1200 mm - (RD-C-2)-Z7-C02-SW | 2d | 2027-09-06 | 2027-09-07 | RHD4CZ7C02SW3300 |  |  |  |  | Skilled labor [10.89 h]; Unskilled Labor [21.78 h]; Equipment Opreator [2.18 h]; Boom Truck [2.18 h]; MH (1200mm Diameter) - SW - depth 3.51 -4.5m [0.15 nr] | 1,998 |  | C02 | Z7 | CONS | SW | Steel Cover | bef |
| RHD4CZ7C02SW3500 |  | Finishing, Benching, Testing works for MH 1200 mm - (RD-C-2)-Z7-C02-SW | 3d | 2027-09-08 | 2027-09-11 | RHD4CZ7C02SW3400, RHD4CZ7C02ST1508 |  |  |  |  | Skilled labor [32.67 h]; Unskilled Labor [65.34 h]; Plumber [32.67 h]; Equipment Opreator [6.53 h]; Water Truck [6.53 h]; MH (1200mm Diameter) - SW - depth 3.51 -4.5m [0.3 nr] | 3,996 |  | C02 | Z7 | CONS | SW | Benching | bef |
|  | 4299 | **RHD4-02-002-Z7-C02-Concrete Box Culvert - ST** |  | 2026-01-29 | 2026-12-01 |  |  |  |  |  |  |  |  |  |  |  |  |  |  |
|  | 4300 | **RHD4-02-002-C02-(ST)-Concrete Box Culvert** |  | 2026-01-29 | 2026-12-01 |  |  |  |  |  |  |  |  |  |  |  |  |  |  |
| RHD4CZ7C02ST4100 |  | Excavation works for Box Culvert - (RD-C-2)-Z7-C02-ST(Completed) | 46d | 2026-01-29 A | 2026-07-07 A | RHD4ENMARAPPTU100 | 100% |  | 2026-01-29 | 2026-03-26 | Skilled labor [171.2 h]; Unskilled Labor [171.2 h]; Equipment Opreator [513.7 h]; Excavator-Poclain [171.2 h]; Water Truck [171.2 h]; Dump Truck [171.2 h]; Excavation for culverts (all types of soil) including backfilling - ST [2566.98 m3] | 46,205.64 | 46,205.64 | C02 | Z7 | CONS | ST | Excavation | bef |
| RHD4CZ7C02ST4200 |  | PC works for Box Culvert - (RD-C-2)-Z7-C02-ST(Completed) | 43d | 2026-01-29 A | 2026-06-18 A | RHD4CZ7C02ST4100 SS | 100% |  | 2026-01-29 | 2026-03-23 | Skilled labor [2.72 h]; Unskilled Labor [2.72 h]; Equipment Opreator [2.72 h]; Concrete Mixer Truck [1.42 h]; Concrete Pump [1.42 h]; 100 mm thickness lean concrete under the base - ST [997.98 m2] | 38,921.22 | 38,921.22 | C02 | Z7 | CONS | ST | PC | bef |
| RHD4CZ7C02ST4400 |  | Raft works for Box Culvert - (RD-C-2)-Z7-C02-ST(Completed) | 21d | 2026-01-29 A | 2026-07-16 A | RHD4CZ7C02ST4200 SS | 100% |  | 2026-01-29 | 2026-02-23 | Carpenter [18.84 h]; Skilled labor [22.76 h]; Steel Fixer [3.92 h]; Equipment Opreator [38.44 h]; Boom Truck [0.8 h]; Concrete Mixer Truck [18.84 h]; Concrete Pump [18.84 h]; Supply and cast in place reinforced concrete for Box culverts - ST [372.62 m3]; Supply, placing, and fixing of high tensile reinforcement steel for Box culverts - ST [77.79 Ton] | 647,946.72 | 647,946.72 | C02 | Z7 | CONS | ST | Raft Works | bef |
| RHD4CZ7C02ST4500 |  | Wall and slab works for Box Culvert - (RD-C-2)-Z7-C02-ST | 6d | 2026-08-04 A | 2026-09-30 A | RHD4CZ7C02ST4400, RHD4CZ7C02ST4200, RHD4ENMARAPPTU100, RHD4CZ7C02ST4100 | 100% |  | 2026-03-28 | 2026-04-02 | Carpenter [50.75 h]; Skilled labor [61.31 h]; Steel Fixer [10.56 h]; Equipment Opreator [103.57 h]; Boom Truck [2.07 h]; Concrete Mixer Truck [50.75 h]; Concrete Pump [50.75 h]; Supply and cast in place reinforced concrete for Box culverts - ST [465.78 m3]; Supply, placing, and fixing of high tensile reinforcement steel for Box culverts - ST [116.69 Ton] | 880,278.56 | 880,278.56 | C02 | Z7 | CONS | ST | Wall and slab Works | bef |
| RHD4CZ7C02ST4600 |  | Insulation and Testing for Box Culvert - (RD-C-2)-Z7-C02-ST | 5d | 2026-10-03 A | 2026-10-07 A | RHD4CZ7C02ST4700, RHD4CZ7C02ST5400 | 100% |  |  |  | Skilled labor [50.75 h]; Unskilled Labor [101.5 h]; Equipment Opreator [50.75 h]; Water Truck [50.75 h]; Supply and cast in place reinforced concrete for Box culverts - ST [93.16 m3] | 91,669.44 | 91,669.44 | C02 | Z7 | CONS | ST | Insulation and Testing | bef |
| RHD4CZ7C02ST4700 |  | Backfilling works for Box Culvert - (RD-C-2)-Z7-C02-ST | 19d | 2026-11-10 | 2026-12-01 | RHD4CZ7C02ST4500, RHD4CZ7C02ST5300 |  |  |  |  | Skilled labor [199.73 h]; Unskilled Labor [399.35 h]; Equipment Opreator [319.52 h]; Boom Truck [99.86 h]; Water Truck [19.93 h]; Dump Truck [199.73 h]; Excavation for culverts (all types of soil) including backfilling - ST [1100.13 m3] | 19,802.34 |  | C02 | Z7 | CONS | ST | Backfilling | bef |
|  | 4301 | **RHD4-02-002-C02-(ST)-Concrete Chambers** |  | 2026-10-01 | 2026-11-11 |  |  |  |  |  |  |  |  |  |  |  |  |  |  |
| RHD4CZ7C02ST5100 |  | Excavation and Bedding for Concrete Chambers - for Box Culvert - (RD-C-2)-Z7-C02-ST | 2d | 2026-10-01 A | 2026-11-04 | RHD4CZ7C02ST4500 | 50% | 2d | 2026-10-01 | 2026-10-03 | Skilled labor [21.78 h]; Unskilled Labor [21.78 h]; Equipment Opreator [4.36 h]; Excavator-Poclain [2.18 h]; Dump Truck [2.18 h]; Concrete chambers - ST - Size 1.8 x 2.0 m, depth 4.51-5.5 m [0.3 nr] | 11,612.4 | 5,806.2 | C02 | Z7 | CONS | ST | Excavation & Bedding | bef |
| RHD4CZ7C02ST5200 |  | PC works for Concrete Chambers - for Box Culvert - (RD-C-2)-Z7-C02-ST | 2d | 2026-10-04 A | 2026-11-07 | RHD4CZ7C02ST5100 | 50% | 2d | 2026-10-04 | 2026-10-05 | Skilled labor [21.78 h]; Unskilled Labor [21.78 h]; Equipment Opreator [4.36 h]; Excavator-Poclain [2.18 h]; Dump Truck [2.18 h]; Concrete chambers - ST - Size 1.8 x 2.0 m, depth 4.51-5.5 m [0.2 nr] | 7,741.6 | 3,870.8 | C02 | Z7 | CONS | ST | PC Works | bef |
| RHD4CZ7C02ST5300 |  | Installation for Concrete Chambers - for Box Culvert - (RD-C-2)-Z7-C02-ST | 2d | 2026-10-06 A | 2026-11-09 | RHD4CZ7C02ST5200 | 50% | 2d | 2026-10-06 | 2026-10-07 | Skilled labor [21.78 h]; Unskilled Labor [21.78 h]; Equipment Opreator [4.36 h]; Excavator-Poclain [2.18 h]; Dump Truck [2.18 h]; Concrete chambers - ST - Size 1.8 x 2.0 m, depth 4.51-5.5 m [1.1 nr] | 42,578.8 | 21,289.4 | C02 | Z7 | CONS | ST | Installation | bef |
| RHD4CZ7C02ST5400 |  | Backfilling works for Concrete Chambers - for Box Culvert - (RD-C-2)-Z7-C02-ST | 2d | 2026-11-10 | 2026-11-11 | RHD4CZ7C02ST5300 |  |  |  |  | Skilled labor [21.78 h]; Unskilled Labor [21.78 h]; Equipment Opreator [4.36 h]; Excavator-Poclain [2.18 h]; Dump Truck [2.18 h]; Concrete chambers - ST - Size 1.8 x 2.0 m, depth 4.51-5.5 m [0.4 nr] | 15,483.2 |  | C02 | Z7 | CONS | ST | Backfilling Works | bef |
|  | 6091 | **RHD4-02-002-Z7-C02-Potable Network - PT** |  | 2027-09-08 | 2027-10-23 |  |  |  |  |  |  |  |  |  |  |  |  |  |  |
|  | 6093 | **RHD4-02-002-C02-(PT)-HDPE Pipes - 160 mm diameter** |  | 2027-09-08 | 2027-10-04 |  |  |  |  |  |  |  |  |  |  |  |  |  |  |
| RHD4CZ7C02PT1101 |  | Excavation works for HDPE Pipline 160 mm - (RD-C-2)-Z7-C02-PT | 4d | 2027-09-08 | 2027-09-12 | RHD4ENSDZ7APPPT130, RHD4ENMSPT2000, RHD4CZ7C02SW1100, RHD4CZ7C02SW1500 |  |  |  |  | Skilled labor [39.75 h]; Unskilled Labor [39.75 h]; Equipment Opreator [47.59 h]; Excavator-Poclain [39.75 h]; Dump Truck [7.95 h]; HDPE (160mm Diameter) - PT - Depth: less than 1.5m [83.23 m]; HDPE (160mm Diameter) - PT - Depth: 1.51m - 2.5m [5.09 m] | 9,628.39 |  | C02 | Z7 | CONS | PT | Excavation | bef |
| RHD4CZ7C02PT1201 |  | Bedding works for HDPE Pipline 160 mm - (RD-C-2)-Z7-C02-PT | 4d | 2027-09-13 | 2027-09-16 | RHD4CZ7C02PT1101 |  |  |  |  | Skilled labor [34.74 h]; Unskilled Labor [69.48 h]; Equipment Opreator [69.48 h]; Excavator-Poclain [34.74 h]; Dump Truck [34.74 h]; HDPE (160mm Diameter) - PT - Depth: less than 1.5m [41.62 m]; HDPE (160mm Diameter) - PT - Depth: 1.51m - 2.5m [1.7 m] | 4,694.74 |  | C02 | Z7 | CONS | PT | Bedding | bef |
| RHD4CZ7C02PT1301 |  | Installing for HDPE Pipline 160 mm - (RD-C-2)-Z7-C02-PT | 6d | 2027-09-18 | 2027-09-25 | RHD4PRSHLDOSPT1000, RHD4PRSHLSTAGPT1000, RHD4CZ7C02PT1201, RHD4CZ6C062IRR3203 FF, RHD4CZ6RA01CCTV1500 FF, RHD4CZ9L02IRR3203 |  |  |  |  | Unskilled Labor [119.25 h]; Plumber [59.68 h]; Equipment Opreator [59.68 h]; Boom Truck [59.68 h]; HDPE (160mm Diameter) - PT - Depth: less than 1.5m [374.55 m]; HDPE (160mm Diameter) - PT - Depth: 1.51m - 2.5m [13.58 m] | 42,005.21 |  | C02 | Z7 | CONS | PT | Installation | bef |
| RHD4CZ7C02PT1401 |  | Primary Test for HDPE Pipline 160 mm - (RD-C-2)-Z7-C02-PT | 3d | 2027-09-26 | 2027-09-28 | RHD4CZ7C02PT1301, RHD4CZ8C014IRR3200 |  |  |  |  | Unskilled Labor [24.72 h]; Plumber [24.72 h]; Equipment Opreator [24.72 h]; Water Truck [24.72 h]; HDPE (160mm Diameter) - PT - Depth: less than 1.5m [166.47 m]; HDPE (160mm Diameter) - PT - Depth: 1.51m - 2.5m [6.79 m] | 18,776.47 |  | C02 | Z7 | CONS | PT | Primary Test | bef |
| RHD4CZ7C02PT1501 |  | Backfilling and warning tape works for HDPE Pipline 160 mm - (RD-C-2)-Z7-C02-PT | 5d | 2027-09-29 | 2027-10-04 | RHD4CZ7C02PT1401, RHD4CZ8C014IRR3202, RHD4CZ8C014IRR1501, RHD4CZ4C031CCTV6100, RHD4CZ5C061TC2400, RHD4CZ3L122IRR3202, RHD4CZ9C071PT3200, RHD4CZ7L131PT3203 |  |  |  |  | Skilled labor [47.16 h]; Unskilled Labor [94.31 h]; Equipment Opreator [94.31 h]; Excavator-Poclain [47.16 h]; Dump Truck [47.16 h]; HDPE (160mm Diameter) - PT - Depth: less than 1.5m [166.47 m]; HDPE (160mm Diameter) - PT - Depth: 1.51m - 2.5m [6.79 m] | 18,776.47 |  | C02 | Z7 | CONS | PT | Backfilling | bef |

| ID | WBS | Activity | Duration | Start | Finish | Predecessors | Resources | Cost | RDH4-01-001-Road and Block Names-1 | RDH4-01-001-Zones-1 | RDH4-01-001-Phases-1 | RDH4-01-001-Networks-1 | RDH4-01-001-Work Method-1 | RDH4-01-001-MENEM |
| --- | --- | --- | --- | --- | --- | --- | --- | --- | --- | --- | --- | --- | --- | --- |
|  | 4969 | **RHD4-02-002-C02-(PT)-Fire Hydrant** |  | 2027-10-05 | 2027-10-17 |  |  |  |  |  |  |  |  |  |
| RHD4CZ7C02PT4100 |  | Excavation and Bedding and Pipe Installation for Fire Hydrant - (RD-C-2)-Z7-C02-PT | 3d | 2027-10-05 | 2027-10-07 | RHD4CZ7C02PT1501 | Skilled labor [27.2 h]; Unskilled Labor [27.2 h]; Plumber [27.2 h]; Equipment Opreator [13.6 h]; Excavator-Poclain [13.6 h]; 3-outlet fire hydrant (2 x 2.5 inch and 1 x 4.5 inch) in the form of a separate dry vacuum cylinder [0.5 nr] | 6,310 | C02 | Z7 | CONS | PT | Excavation | bef |
| RHD4CZ7C02PT4200 |  | Valve Installation for Fire Hydrant - (RD-C-2)-Z7-C02-PT | 2d | 2027-10-09 | 2027-10-10 | RHD4CZ7C02PT4100 | Unskilled Labor [18.19 h]; Plumber [18.19 h]; 3-outlet fire hydrant (2 x 2.5 inch and 1 x 4.5 inch) in the form of a separate dry vacuum cylinder [1 nr] | 12,620 | C02 | Z7 | CONS | PT | Valve | bef |
| RHD4CZ7C02PT4300 |  | Stem for Fire Hydrant - (RD-C-2)-Z7-C02-PT | 2d | 2027-10-11 | 2027-10-12 | RHD4CZ7C02PT4200 | Unskilled Labor [18.19 h]; Plumber [18.19 h]; 3-outlet fire hydrant (2 x 2.5 inch and 1 x 4.5 inch) in the form of a separate dry vacuum cylinder [1.5 nr] | 18,930 | C02 | Z7 | CONS | PT | Stem | bef |
| RHD4CZ7C02PT4400 |  | Fire Installation for Fire Hydrant - (RD-C-2)-Z7-C02-PT | 2d | 2027-10-13 | 2027-10-14 | RHD4CZ7C02PT4300 | Unskilled Labor [18.19 h]; Plumber [18.19 h]; Equipment Opreator [18.19 h]; Boom Truck [18.19 h]; 3-outlet fire hydrant (2 x 2.5 inch and 1 x 4.5 inch) in the form of a separate dry vacuum cylinder [1.75 nr] | 22,085 | C02 | Z7 | CONS | PT | Fire | bef |
| RHD4CZ7C02PT4500 |  | Protection Barriers for Fire Hydrant - (RD-C-2)-Z7-C02-PT | 2d | 2027-10-16 | 2027-10-17 | RHD4CZ7C02PT4400 | Unskilled Labor [10.89 h]; Plumber [10.89 h]; 3-outlet fire hydrant (2 x 2.5 inch and 1 x 4.5 inch) in the form of a separate dry vacuum cylinder [0.25 nr] | 3,155 | C02 | Z7 | CONS | PT | Protection Barriers | bef |
|  | 6100 | **RHD4-02-002-C02-(PT)-Wash out Valve Chambers** |  | 2027-10-05 | 2027-10-13 |  |  |  |  |  |  |  |  |  |
| RHD4CZ7C02PT2101 |  | Excavation and Bedding for Wash out Valve Chambers for Potable Water Network - (RD-C-2)-Z7-C02-PT | 2d | 2027-10-05 | 2027-10-06 | RHD4ENSDZ7APPPT130, RHD4CZ7C02PT1501 | Skilled labor [5.45 h]; Unskilled Labor [5.45 h]; Equipment Opreator [1.09 h]; Excavator-Poclain [0.54 h]; Dump Truck [0.54 h]; Wash out chambers - PT [0.25 nr] | 4,686.25 | C02 | Z7 | CONS | PT | Excavation and Bedding | bef |
| RHD4CZ7C02PT2201 |  | PC works for Wash out Valve Chambers for Potable Water Network - (RD-C-2)-Z7-C02-PT | 2d | 2027-10-07 | 2027-10-09 | RHD4CZ7C02PT2101 | Skilled labor [5.45 h]; Unskilled Labor [10.89 h]; Equipment Opreator [0.54 h]; Concrete Pump [0.54 h]; Wash out chambers - PT [0.1 nr] | 1,874.5 | C02 | Z7 | CONS | PT | PC Works | bef |
| RHD4CZ7C02PT2301 |  | Installation for Wash out Valve Chambers for Potable Water Network - (RD-C-2)-Z7-C02-PT | 2d | 2027-10-10 | 2027-10-11 | RHD4PRSHLDOSPT1100, RHD4PRSHLDOSPT1400, RHD4PRSHLSTAGPT1100, RHD4PRSHLSTAGPT1400, RHD4CZ7C02PT2201 | Skilled labor [5.45 h]; Unskilled Labor [10.89 h]; Equipment Opreator [1.09 h]; Boom Truck [1.09 h]; Wash out chambers - PT [0.55 nr] | 10,309.75 | C02 | Z7 | CONS | PT | Installation | bef |
| RHD4CZ7C02PT2401 |  | Backfilling works for Wash out Valve Chambers for Potable Water Network - (RD-C-2)-Z7-C02-PT | 2d | 2027-10-12 | 2027-10-13 | RHD4CZ7C02PT2301 | Skilled labor [5.45 h]; Unskilled Labor [10.89 h]; Equipment Opreator [1.09 h]; Water Truck [0.54 h]; Dump Truck [0.54 h]; Wash out chambers - PT [0.1 nr] | 1,874.5 | C02 | Z7 | CONS | PT | Backfilling Works | bef |
|  | 6101 | **RHD4-02-002-C02-(PT)-Wash out Valves** |  | 2027-10-12 | 2027-10-16 |  |  |  |  |  |  |  |  |  |
| RHD4CZ7C02PT3102 |  | Installation for Wash out Valves for Potable Water Network - (RD-C-2)-Z7-C02-PT | 2d | 2027-10-12 | 2027-10-13 | RHD4PRSHLDOSPT1200, RHD4PRSHLSTAGPT1200, RHD4CZ7C02PT2301 | Unskilled Labor [5.45 h]; Plumber [5.45 h]; Wash out valve diameter 100 mm - PT [0.9 nr] | 3,373.2 | C02 | Z7 | CONS | PT | Installation | bef |
| RHD4CZ7C02PT3202 |  | Stem and Service box for Wash out Valves for Potable Water Network - (RD-C-2)-Z7-C02-PT | 2d | 2027-10-14 | 2027-10-16 | RHD4PRSHLDOSPT1300, RHD4PRSHLSTAGPT1300, RHD4CZ7C02PT3102, RHD4CZ7C02PT2401 | Unskilled Labor [5.45 h]; Plumber [5.45 h]; Wash out valve diameter 100 mm - PT [0.1 nr] | 374.8 | C02 | Z7 | CONS | PT | Stem and Service box | bef |
|  | 6102 | **RHD4-02-002-C02-(PT)-Air Valve Chambers** |  | 2027-10-05 | 2027-10-13 |  |  |  |  |  |  |  |  |  |
| RHD4CZ7C02PT2102 |  | Excavation and Bedding for Air Valve Chambers for Potable Water Network - (RD-C-2)-Z7-C02-PT | 2d | 2027-10-05 | 2027-10-06 | RHD4ENSDZ7APPPT130, RHD4CZ7C02PT1501, RHD4CZ7L015ST3501, RHD4CZ3C011LV4300 | Skilled labor [5.45 h]; Unskilled Labor [5.45 h]; Equipment Opreator [1.09 h]; Excavator-Poclain [0.54 h]; Dump Truck [0.54 h]; Air Valve chambers - PT [0.25 nr] | 1,193 | C02 | Z7 | CONS | PT | Excavation and Bedding | bef |
| RHD4CZ7C02PT2202 |  | PC works for Air Valve Chambers for Potable Water Network - (RD-C-2)-Z7-C02-PT | 2d | 2027-10-07 | 2027-10-09 | RHD4CZ7C02PT2102 | Skilled labor [5.45 h]; Unskilled Labor [10.89 h]; Equipment Opreator [0.54 h]; Concrete Pump [0.54 h]; Air Valve chambers - PT [0.1 nr] | 477.2 | C02 | Z7 | CONS | PT | PC Works | bef |
| RHD4CZ7C02PT2302 |  | Installation for Air Valve Chambers for Potable Water Network - (RD-C-2)-Z7-C02-PT | 2d | 2027-10-10 | 2027-10-11 | RHD4PRSHLDOSPT1100, RHD4PRSHLDOSPT1400, RHD4PRSHLSTAGPT1100, RHD4PRSHLSTAGPT1400, RHD4CZ7C02PT2202, RHD4CZ9L02IRR3200 | Skilled labor [5.45 h]; Unskilled Labor [10.89 h]; Equipment Opreator [1.09 h]; Boom Truck [1.09 h]; Air Valve chambers - PT [0.55 nr] | 2,624.6 | C02 | Z7 | CONS | PT | Installation | bef |
| RHD4CZ7C02PT2402 |  | Backfilling works for Air Valve Chambers for Potable Water Network - (RD-C-2)-Z7-C02-PT | 2d | 2027-10-12 | 2027-10-13 | RHD4CZ7C02PT2302, RHD4CZ7A012IRR1503, RHD4CZ7C032IRR3202 | Skilled labor [5.45 h]; Unskilled Labor [10.89 h]; Equipment Opreator [1.09 h]; Water Truck [0.54 h]; Dump Truck [0.54 h]; Air Valve chambers - PT [0.1 nr] | 477.2 | C02 | Z7 | CONS | PT | Backfilling Works | bef |
|  | 6103 | **RHD4-02-002-C02-(PT)-Air Valves** |  | 2027-10-12 | 2027-10-16 |  |  |  |  |  |  |  |  |  |
| RHD4CZ7C02PT3103 |  | Installation for Air Valves for Potable Water Network - (RD-C-2)-Z7-C02-PT | 2d | 2027-10-12 | 2027-10-13 | RHD4PRSHLDOSPT1200, RHD4PRSHLSTAGPT1200, RHD4CZ7C02PT2302 | Unskilled Labor [5.45 h]; Plumber [5.45 h]; Air valve diameter 50 mm - PT [0.9 nr] | 4,427.1 | C02 | Z7 | CONS | PT | Installation | bef |
| RHD4CZ7C02PT3203 |  | Stem and Service box for Air Valves for Potable Water Network - (RD-C-2)-Z7-C02-PT | 2d | 2027-10-14 | 2027-10-16 | RHD4PRSHLDOSPT1300, RHD4PRSHLSTAGPT1300, RHD4CZ7C02PT3103, RHD4CZ7C02PT2402, RHD4CZ9C071IRR1500 FF, RHD4CZ9C071IRR1507, RHD4CZ9L06IRR1500, RHD4CZ7A012SW3500, RHD4CZ9C071IRR3201, RHD4CZ4C031RD8100, RHD4CZ7L131SW3500 | Unskilled Labor [5.45 h]; Plumber [5.45 h]; Air valve diameter 50 mm - PT [0.1 nr] | 491.9 | C02 | Z7 | CONS | PT | Stem and Service box | bef |
|  | 6105 | **RHD4-02-002-C02-(PT)-Concrete Encasement** |  |  |  |  |  |  |  |  |  |  |  |  |
|  | 6097 | **RHD4-02-002-C02-(PT)-Gate Valves (Direct Buried)** |  | 2027-10-17 | 2027-10-23 |  |  |  |  |  |  |  |  |  |
| RHD4CZ7C02PT3100 |  | Installation for Direct Buried Gate Valves - (RD-C-2)-Z7-C02-PT | 3d | 2027-10-17 | 2027-10-19 | RHD4PRSHLDOSPT1200, RHD4PRSHLSTAGPT1200, RHD4CZ7C02PT3203, RHD4CZ4C031RD7100 | Unskilled Labor [27.2 h]; Plumber [27.2 h]; Gate valves dia 150 mm - PT [4.5 nr] | 7,110 | C02 | Z7 | CONS | PT | Installation | bef |
| RHD4CZ7C02PT3200 |  | Stem and Service box for Direct Buried Gate Valves - (RD-C-2)-Z7-C02-PT | 3d | 2027-10-20 | 2027-10-23 | RHD4PRSHLDOSPT1300, RHD4PRSHLSTAGPT1300, RHD4CZ7C02PT3100, RHD4CZ7C02PT1501, RHD4CZ2C082RD8100, RHD4CZ4RA02RD7100, RHD4CZ7C032IRR3203, RHD4CZ4L01SL5200, RHD4CZ7C013ICT2400, RHD4CZ8A011LV5200 | Unskilled Labor [27.2 h]; Plumber [27.2 h]; Gate valves dia 150 mm - PT [0.5 nr] | 790 | C02 | Z7 | CONS | PT | Stem and Service box | bef |

| ID | WBS | Activity | Duration | Start | Finish | Predecessors | Resources | Cost | RDH4-01-001-Road and Block Names-1 | RDH4-01-001-Zones-1 | RDH4-01-001-Phases-1 | RDH4-01-001-Networks-1 | RDH4-01-001-Work Method-1 | RDH4-01-001-MENEM |
| --- | --- | --- | --- | --- | --- | --- | --- | --- | --- | --- | --- | --- | --- | --- |
|  | 6106 | **RHD4-02-002-Z7-C02-Irrigation Network - IRR** |  | 2027-10-24 | 2027-11-15 |  |  |  |  |  |  |  |  |  |
|  | 6107 | **RHD4-02-002-C02-(IRR)-HDPE Pipes - 160 mm diameter** |  | 2027-10-30 | 2027-11-09 |  |  |  |  |  |  |  |  |  |
| RHD4CZ7C02IRR1100 |  | Excavation works for HDPE Pipline 160 mm - (RD-C-2)-Z7-C02-IRR | 2d | 2027-10-30 | 2027-10-31 | RHD4ENSDZ7APPIRR140, RHD4ENMSRR2000, RHD4CZ7C02IRR1104 | Skilled labor [4 h]; Unskilled Labor [4 h]; Equipment Opreator [4.9 h]; Excavator-Poclain [4 h]; Dump Truck [0.8 h]; HDPE (160mm Diameter) - TSE - Depth: less than 1.5m [5.6 m] | 688.8 | C02 | Z7 | CONS | IRR | Excavation | bef |
| RHD4CZ7C02IRR1200 |  | Bedding works for HDPE Pipline 160 mm - (RD-C-2)-Z7-C02-IRR | 2d | 2027-11-01 | 2027-11-02 | RHD4CZ7C02IRR1100 | Skilled labor [3.05 h]; Unskilled Labor [6.1 h]; Equipment Opreator [6.1 h]; Excavator-Poclain [3.05 h]; Dump Truck [3.05 h]; HDPE (160mm Diameter) - TSE - Depth: less than 1.5m [2.8 m] | 344.4 | C02 | Z7 | CONS | IRR | Bedding | bef |
| RHD4CZ7C02IRR1300 |  | Installing for HDPE Pipline 160 mm - (RD-C-2)-Z7-C02-IRR | 2d | 2027-11-03 | 2027-11-04 | RHD4PRSHLDOSIRR1000, RHD4PRSHLSTAGIRR1000, RHD4CZ7C02IRR1200 | Unskilled Labor [8.17 h]; Plumber [4 h]; Equipment Opreator [4 h]; Boom Truck [4 h]; HDPE (160mm Diameter) - TSE - Depth: less than 1.5m [25.2 m] | 3,099.6 | C02 | Z7 | CONS | IRR | Installation | bef |
| RHD4CZ7C02IRR1400 |  | Primary Test for HDPE Pipline 160 mm - (RD-C-2)-Z7-C02-IRR | 2d | 2027-11-06 | 2027-11-07 | RHD4CZ7C02IRR1300 | Unskilled Labor [1.2 h]; Plumber [1.2 h]; Equipment Opreator [1.2 h]; Water Truck [1.2 h]; HDPE (160mm Diameter) - TSE - Depth: less than 1.5m [11.2 m] | 1,377.6 | C02 | Z7 | CONS | IRR | Primary Test | bef |
| RHD4CZ7C02IRR1500 |  | Backfilling and warning tape works for HDPE Pipline 160 mm - (RD-C-2)-Z7-C02-IRR | 2d | 2027-11-08 | 2027-11-09 | RHD4CZ7C02IRR1400 | Skilled labor [3.05 h]; Unskilled Labor [6.1 h]; Equipment Opreator [6.1 h]; Excavator-Poclain [3.05 h]; Dump Truck [3.05 h]; HDPE (160mm Diameter) - TSE - Depth: less than 1.5m [11.2 m] | 1,377.6 | C02 | Z7 | CONS | IRR | Backfilling | bef |
|  | 6111 | **RHD4-02-002-C02-(IRR)-HDPE Pipes - 315 mm diameter** |  | 2027-10-24 | 2027-11-15 |  |  |  |  |  |  |  |  |  |
| RHD4CZ7C02IRR1104 |  | Excavation works for HDPE Pipline 315 mm - (RD-C-2)-Z7-C02-IRR | 5d | 2027-10-24 | 2027-10-28 | RHD4ENSDZ7APPIRR140, RHD4ENMSRR2000, RHD4CZ7C02PT1101, RHD4CZ7C02PT3200 | Skilled labor [52.16 h]; Unskilled Labor [52.16 h]; Equipment Opreator [62.62 h]; Excavator-Poclain [52.16 h]; Dump Truck [10.45 h]; HDPE (315mm Diameter) - TSE - Depth: less than 1.5m [58.98 m]; HDPE (315mm Diameter) - TSE - Depth: more than 1.51m [19.37 m] | 23,575.51 | C02 | Z7 | CONS | IRR | Excavation | bef |
| RHD4CZ7C02IRR1204 |  | Bedding works for HDPE Pipline 315 mm - (RD-C-2)-Z7-C02-IRR | 4d | 2027-10-30 | 2027-11-02 | RHD4CZ7C02IRR1104 | Skilled labor [41.49 h]; Unskilled Labor [82.98 h]; Equipment Opreator [82.98 h]; Excavator-Poclain [41.49 h]; Dump Truck [41.49 h]; HDPE (315mm Diameter) - TSE - Depth: less than 1.5m [29.49 m]; HDPE (315mm Diameter) - TSE - Depth: more than 1.51m [6.46 m] | 10,739.63 | C02 | Z7 | CONS | IRR | Bedding | bef |
| RHD4CZ7C02IRR1304 |  | Installing for HDPE Pipline 315 mm - (RD-C-2)-Z7-C02-IRR | 5d | 2027-11-03 | 2027-11-08 | RHD4PRSHLDOSIRR1000, RHD4PRSHLSTAGIRR1000, RHD4CZ7C02IRR1204 | Unskilled Labor [104.44 h]; Plumber [52.16 h]; Equipment Opreator [52.16 h]; Boom Truck [52.16 h]; HDPE (315mm Diameter) - TSE - Depth: less than 1.5m [265.4 m]; HDPE (315mm Diameter) - TSE - Depth: more than 1.51m [51.66 m] | 94,551.7 | C02 | Z7 | CONS | IRR | Installation | bef |
| RHD4CZ7C02IRR1404 |  | Primary Test for HDPE Pipline 315 mm - (RD-C-2)-Z7-C02-IRR | 2d | 2027-11-09 | 2027-11-10 | RHD4CZ7C02IRR1304 | Unskilled Labor [17.53 h]; Plumber [17.53 h]; Equipment Opreator [17.53 h]; Water Truck [17.53 h]; HDPE (315mm Diameter) - TSE - Depth: less than 1.5m [117.95 m]; HDPE (315mm Diameter) - TSE - Depth: more than 1.51m [25.83 m] | 42,955.27 | C02 | Z7 | CONS | IRR | Primary Test | bef |
| RHD4CZ7C02IRR1504 |  | Backfilling and warning tape works for HDPE Pipline 315 mm - (RD-C-2)-Z7-C02-IRR | 4d | 2027-11-11 | 2027-11-15 | RHD4CZ7C02IRR1404 | Skilled labor [41.49 h]; Unskilled Labor [82.98 h]; Equipment Opreator [82.98 h]; Excavator-Poclain [41.49 h]; Dump Truck [41.49 h]; HDPE (315mm Diameter) - TSE - Depth: less than 1.5m [117.95 m]; HDPE (315mm Diameter) - TSE - Depth: more than 1.51m [25.83 m] | 42,955.27 | C02 | Z7 | CONS | IRR | Backfilling | bef |
|  | 6112 | **RHD4-02-002-C02-(IRR)-HDPE Pipes - 400 mm diameter** |  |  |  |  |  |  |  |  |  |  |  |  |
|  | 6113 | **RHD4-02-002-C02-(IRR)-HDPE Pipes - 450 mm diameter** |  |  |  |  |  |  |  |  |  |  |  |  |
|  | 6115 | **RHD4-02-002-C02-(IRR)-Gate Valves (Direct Buried)** |  | 2027-11-07 | 2027-11-11 |  |  |  |  |  |  |  |  |  |
| RHD4CZ7C02IRR3100 |  | Installation for Direct Buried Gate Valves - (RD-C-2)-Z7-C02-IRR | 2d | 2027-11-07 | 2027-11-08 | RHD4PRSHLDOSIRR1100, RHD4PRSHLSTAGIRR1100, RHD4CZ7C02IRR1304 SS, RHD4CZ7C02IRR1304 FF, RHD4CZ7C02IRR1300 SS, RHD4CZ7C02IRR1300 FF | Unskilled Labor [10.89 h]; Plumber [10.89 h]; Gate valves dia 100 mm - TSE [1.8 nr] | 2,844 | C02 | Z7 | CONS | IRR | Installation | bef |
| RHD4CZ7C02IRR3200 |  | Stem and Service box for Direct Buried Gate Valves - (RD-C-2)-Z7-C02-IRR | 2d | 2027-11-10 | 2027-11-11 | RHD4PRSHLDOSIRR1300, RHD4PRSHLSTAGIRR1300, RHD4CZ7C02IRR3100, RHD4CZ7C02IRR1500 | Unskilled Labor [10.89 h]; Plumber [10.89 h]; Gate valves dia 100 mm - TSE [0.2 nr] | 316 | C02 | Z7 | CONS | IRR | Stem and Service box | bef |
|  | 6116 | **RHD4-02-002-C02-(IRR)-Butterfly Valve Chamber** |  | 2027-11-01 | 2027-11-10 |  |  |  |  |  |  |  |  |  |
| RHD4CZ7C02IRR2100 |  | Excavation and Bedding for Butterfly Valve Chamber for Irrigation Network - (RD-C-2)-Z7-C02-IRR | 2d | 2027-11-01 | 2027-11-02 | RHD4ENSDZ7APPIRR140, RHD4CZ7C02IRR1100 | Skilled labor [16.34 h]; Unskilled Labor [16.34 h]; Equipment Opreator [3.27 h]; Excavator-Poclain [1.6 h]; Dump Truck [1.6 h]; Valve chambers - TSE [0.75 nr] | 10,982.25 | C02 | Z7 | CONS | IRR | Excavation and Bedding | bef |
| RHD4CZ7C02IRR2200 |  | PC works for Butterfly Valve Chamber for Irrigation Network - (RD-C-2)-Z7-C02-IRR | 2d | 2027-11-03 | 2027-11-04 | RHD4CZ7C02IRR2100 | Skilled labor [16.34 h]; Unskilled Labor [32.67 h]; Equipment Opreator [1.6 h]; Concrete Pump [1.6 h]; Valve chambers - TSE [0.3 nr] | 4,392.9 | C02 | Z7 | CONS | IRR | PC Works | bef |
| RHD4CZ7C02IRR2300 |  | Installation for Butterfly Valve Chamber for Irrigation Network - (RD-C-2)-Z7-C02-IRR | 2d | 2027-11-06 | 2027-11-07 | RHD4PRSHLDOSIRR1200, RHD4PRSHLDOSIRR1400, RHD4PRSHLSTAGIRR1200, RHD4PRSHLSTAGIRR1400, RHD4CZ7C02IRR2200 | Skilled labor [16.34 h]; Unskilled Labor [32.67 h]; Equipment Opreator [3.27 h]; Boom Truck [3.27 h]; Valve chambers - TSE [1.65 nr] | 24,160.95 | C02 | Z7 | CONS | IRR | Installation | bef |
| RHD4CZ7C02IRR2400 |  | Backfilling works for Butterfly Valve Chamber for Irrigation Network - (RD-C-2)-Z7-C02-IRR | 3d | 2027-11-08 | 2027-11-10 | RHD4CZ7C02IRR2300 | Skilled labor [16.34 h]; Unskilled Labor [32.67 h]; Equipment Opreator [3.27 h]; Water Truck [1.6 h]; Dump Truck [1.6 h]; Valve chambers - TSE [0.3 nr] | 4,392.9 | C02 | Z7 | CONS | IRR | Backfilling Works | bef |
|  | 6117 | **RHD4-02-002-C02-(IRR)-Butterfly Valves** |  | 2027-11-08 | 2027-11-11 |  |  |  |  |  |  |  |  |  |
| RHD4CZ7C02IRR3101 |  | Installation for Butterfly Valves for Irrigation Network - (RD-C-2)-Z7-C02-IRR | 2d | 2027-11-08 | 2027-11-09 | RHD4PRSHLDOSIRR1100, RHD4PRSHLSTAGIRR1100, RHD4CZ7C02IRR2300 | Unskilled Labor [16.34 h]; Plumber [16.34 h]; Butterfly valves dia 315 - TSE [2.7 nr] | 33,766.2 | C02 | Z7 | CONS | IRR | Installation | bef |
| RHD4CZ7C02IRR3201 |  | Stem and Service box for Butterfly Valves for Irrigation Network - (RD-C-2)-Z7-C02-IRR | 2d | 2027-11-10 | 2027-11-11 | RHD4PRSHLDOSIRR1300, RHD4PRSHLSTAGIRR1300, RHD4CZ7C02IRR3101, RHD4CZ7C02IRR2400 SS | Unskilled Labor [16.34 h]; Plumber [16.34 h]; Butterfly valves dia 315 - TSE [0.3 nr] | 3,751.8 | C02 | Z7 | CONS | IRR | Stem and Service box | bef |

| ID | WBS | Activity | Duration | Start | Finish | Predecessors | Resources | Cost | RDH4-01-001-Road and Block Names-1 | RDH4-01-001-Zones-1 | RDH4-01-001-Phases-1 | RDH4-01-001-Networks-1 | RDH4-01-001-Work Method-1 | RDH4-01-001-MENEM |
| --- | --- | --- | --- | --- | --- | --- | --- | --- | --- | --- | --- | --- | --- | --- |
|  | 6686 | **RHD4-02-002-C02-(IRR)-Wash out Valves** |  | 2027-11-08 | 2027-11-11 |  |  |  |  |  |  |  |  |  |
| RHD4CZ7C02IRR3102 |  | Installation for Wash out Valve for Irrigation Network - (RD-C-2)-Z7-C02-IRR | 2d | 2027-11-08 | 2027-11-09 | RHD4CZ7C02IRR2301 | Unskilled Labor [5.45 h]; Plumber [5.45 h]; Wash out valve diameter 100 mm - TSE [0.9 nr] | 3,373.2 | C02 | Z7 | CONS | IRR | Installation | bef |
| RHD4CZ7C02IRR3202 |  | Stem and Service box for Wash out Valve for Irrigation Network - (RD-C-2)-Z7-C02-IRR | 2d | 2027-11-10 | 2027-11-11 | RHD4CZ7C02IRR3102, RHD4CZ7C02IRR2401, RHD4CZ7C02SW3500 | Unskilled Labor [5.45 h]; Plumber [5.45 h]; Wash out valve diameter 100 mm - TSE [0.1 nr] | 374.8 | C02 | Z7 | CONS | IRR | Stem and Service box | bef |
|  | 6685 | **RHD4-02-002-C02-(IRR)-Wash out Chamber** |  | 2027-11-01 | 2027-11-09 |  |  |  |  |  |  |  |  |  |
| RHD4CZ7C02IRR2101 |  | Excavation and Bedding for Wash out Chamber for Irrigation Network - (RD-C-2)-Z7-C02-IRR | 2d | 2027-11-01 | 2027-11-02 | RHD4CZ7C02IRR1100 | Skilled labor [5.45 h]; Unskilled Labor [5.45 h]; Equipment Opreator [1.09 h]; Excavator-Poclain [0.54 h]; Dump Truck [0.54 h]; Wash out chambers - TSE [0.25 nr] | 4,686.25 | C02 | Z7 | CONS | IRR | Excavation and Bedding | bef |
| RHD4CZ7C02IRR2201 |  | PC works for Wash out Chamber for Irrigation Network - (RD-C-2)-Z7-C02-IRR | 2d | 2027-11-03 | 2027-11-04 | RHD4CZ7C02IRR2101 | Skilled labor [5.45 h]; Unskilled Labor [10.89 h]; Equipment Opreator [0.54 h]; Concrete Pump [0.54 h]; Wash out chambers - TSE [0.1 nr] | 1,874.5 | C02 | Z7 | CONS | IRR | PC Works | bef |
| RHD4CZ7C02IRR2301 |  | Installation for Wash out Chamber for Irrigation Network - (RD-C-2)-Z7-C02-IRR | 2d | 2027-11-06 | 2027-11-07 | RHD4CZ7C02IRR2201 | Skilled labor [5.45 h]; Unskilled Labor [10.89 h]; Equipment Opreator [1.09 h]; Boom Truck [1.09 h]; Wash out chambers - TSE [0.55 nr] | 10,309.75 | C02 | Z7 | CONS | IRR | Installation | bef |
| RHD4CZ7C02IRR2401 |  | Backfilling works for Wash out Chamber for Irrigation Network - (RD-C-2)-Z7-C02-IRR | 2d | 2027-11-08 | 2027-11-09 | RHD4CZ7C02IRR2301 | Skilled labor [5.45 h]; Unskilled Labor [10.89 h]; Equipment Opreator [1.09 h]; Water Truck [0.54 h]; Dump Truck [0.54 h]; Wash out chambers - TSE [0.1 nr] | 1,874.5 | C02 | Z7 | CONS | IRR | Backfilling Works | bef |
|  | 6140 | **RHD4-02-002-Z7-C02-Medium Voltage Network - MV** |  | 2027-07-14 | 2027-09-07 |  |  |  |  |  |  |  |  |  |
|  | 6141 | **RHD4-02-002-C02-(MV)-Medium Voltage cable trench** |  | 2027-07-14 | 2027-08-31 |  |  |  |  |  |  |  |  |  |
| RHD4CZ7C02MV1100 |  | Excavation for Medium Voltage Trench - (RD-C-2)-Z7-C02-MV | 11d | 2027-07-14 | 2027-07-26 | RHD4ENSDZ7APPMV150, RHD4CZ7C02RD3100, RHD4CZ8A011MV1100 | Skilled labor [114.89 h]; Unskilled Labor [229.9 h]; Equipment Opreator [344.8 h]; Excavator-Poclain [114.89 h]; Dump Truck [229.9 h]; Excavation for Trench size 40cm wide and 80cm deep ( for 1 cables) [93.97 m3]; Excavation for Trench size 60cm wide and 80cm deep ( for 2 cables) [221.03 m3]; Excavation for Trench size 180cm wide and 80cm deep (for 6 cables) [374.11 m3]; Excavation for Trench size 360cm wide and 80cm deep (for 12 cables) [49.74 m3] | 7,388.4 | C02 | Z7 | CONS | MV | Excavation | AFT |
| RHD4CZ7C02MV1200 |  | Trench Backfilling for Medium Voltage Network - (RD-C-2)-Z7-C02-MV | 11d | 2027-08-19 | 2027-08-31 | RHD4CZ7C02MV3200 | Skilled labor [114.89 h]; Unskilled Labor [114.89 h]; Equipment Opreator [229.9 h]; Dump Truck [229.9 h]; Excavation for Trench size 40cm wide and 80cm deep ( for 1 cables) [40.27 m3]; Excavation for Trench size 60cm wide and 80cm deep ( for 2 cables) [94.73 m3]; Excavation for Trench size 180cm wide and 80cm deep (for 6 cables) [160.33 m3]; Excavation for Trench size 360cm wide and 80cm deep (for 12 cables) [21.32 m3] | 3,166.46 | C02 | Z7 | CONS | MV | Backfilling | AFT |
|  | 6142 | **RHD4-02-002-C02-(MV)-Medium Voltage duct banks** |  | 2027-07-27 | 2027-08-05 |  |  |  |  |  |  |  |  |  |
| RHD4CZ7C02MV2100 |  | Excavation of Duct Banks for Medium Voltage Network - (RD-C-2)-Z7-C02-MV | 2d | 2027-07-27 | 2027-07-28 | RHD4ENSDZ7APPMV150, RHD4CZ7C02MV1100 | Unskilled Labor [20.69 h]; Equipment Opreator [41.38 h]; Excavator-Poclain [20.69 h]; Dump Truck [20.69 h]; Duct bank for MV cables UPVC (8xø150mm) [2.85 m] | 2,269.94 | C02 | Z7 | CONS | MV | Excavation | bef |
| RHD4CZ7C02MV2200 |  | Installation of Duct Banks for Medium Voltage Network - (RD-C-2)-Z7-C02-MV | 3d | 2027-07-29 | 2027-08-01 | RHD4PRSHLDOSMV1000, RHD4PRSHLSTAGMV1000, RHD4CZ7C02MV2100 | Unskilled Labor [31.04 h]; Equipment Opreator [62.07 h]; Excavator-Poclain [31.04 h]; Dump Truck [31.04 h]; Duct bank for MV cables UPVC (8xø150mm) [2.85 m] | 2,269.94 | C02 | Z7 | CONS | MV | Installing | bef |
| RHD4CZ7C02MV2300 |  | Pouring of Duct Banks for Medium Voltage Network - (RD-C-2)-Z7-C02-MV | 2d | 2027-08-02 | 2027-08-03 | RHD4CZ7C02MV2200 | Unskilled Labor [20.69 h]; Equipment Opreator [41.38 h]; Excavator-Poclain [20.69 h]; Dump Truck [20.69 h]; Duct bank for MV cables UPVC (8xø150mm) [18.51 m] | 14,754.58 | C02 | Z7 | CONS | MV | Pouring | bef |
| RHD4CZ7C02MV2400 |  | Backfilling of Duct Banks for Medium Voltage Network - (RD-C-2)-Z7-C02-MV | 2d | 2027-08-04 | 2027-08-05 | RHD4CZ7C02MV2300 | Unskilled Labor [15.46 h]; Equipment Opreator [31.04 h]; Excavator-Poclain [15.46 h]; Dump Truck [15.46 h]; Duct bank for MV cables UPVC (8xø150mm) [4.27 m] | 3,404.9 | C02 | Z7 | CONS | MV | Backfilling | bef |
|  | 6143 | **RHD4-02-002-C02-(MV)-Medium Voltage cables 3Cx 500 mm²** |  | 2027-07-27 | 2027-09-07 |  |  |  |  |  |  |  |  |  |
| RHD4CZ7C02MV3100 |  | Installation of Medium Voltage Cables 3Cx 500 mm² - (RD-C-2)-Z7-C02-MV | 15d | 2027-07-27 | 2027-08-12 | RHD4PRSHLDOSMV1100, RHD4ENMSMV2000, RHD4ENMSMV2010, RHD4PRSHLSTAGMV1100, RHD4CZ7C02MV1100 | Skilled labor [158.02 h]; Unskilled Labor [632 h]; Electrician [316 h]; Equipment Opreator [474.06 h]; Boom Truck [158.02 h]; Cable Laying Machine [316 h]; Cable 13.8 kV 3Cx 500 mm² Al/XLPE,/LLDPE / Unarmored [6528.82 m] | 1,038,082.75 | C02 | Z7 | CONS | MV | Installation | AFT |
| RHD4CZ7C02MV3200 |  | Joints Installation of Medium Voltage Cables 3Cx 500 mm² - (RD-C-2)-Z7-C02-MV | 5d | 2027-08-14 | 2027-08-18 | RHD4PRSHLDOSMV1300, RHD4PRSHLSTAGMV1300, RHD4CZ7C02MV3100, RHD4CZ7C02MV2400 | Skilled labor [54.45 h]; Unskilled Labor [217.81 h]; Electrician [108.9 h]; Equipment Opreator [54.45 h]; Boom Truck [54.45 h]; Straight joints cables for 13.8 kv 3Cx 500 mm², Al /XLPE/LLDPE [10 Unit] | 32,480 | C02 | Z7 | CONS | MV | Joints Installation | AFT |
| RHD4CZ7C02MV3300 |  | Testing of Medium Voltage Cables 3Cx 500 mm² - (RD-C-2)-Z7-C02-MV | 15d | 2027-08-19 | 2027-09-05 | RHD4CZ7C02MV3200 | Skilled labor [158.02 h]; Unskilled Labor [632 h]; Electrician [316 h]; Cable 13.8 kV 3Cx 500 mm² Al/XLPE,/LLDPE / Unarmored [725.42 m] | 115,342.53 | C02 | Z7 | CONS | MV | Testing | AFT |
| RHD4CZ7C02MV3400 |  | Termination of Medium Voltage Cables 3Cx 500 mm² - (RD-C-2)-Z7-C02-MV | 2d | 2027-09-06 | 2027-09-07 | RHD4CZ7C02MV3300 | Unskilled Labor [4.14 h]; Electrician [4.14 h]; Cable Termination for 13.8 kv 3Cx 500 mm², Al /XLPE/LLDPE [19.2 Unit] | 50,592 | C02 | Z7 | CONS | MV | Termination | AFT |
|  | 6145 | **RHD4-02-002-C02-(MV)-Normally open Point (Outdoor Type)** |  |  |  |  |  |  |  |  |  |  |  |  |
|  | 6144 | **RHD4-02-002-C02-(MV)-Medium Voltage cables 3Cx 50 mm²** |  | 2027-09-06 | 2027-09-07 |  |  |  |  |  |  |  |  |  |
| RHD4CZ7C02MV3401 |  | Termination of Medium Voltage Cables 3Cx 50 mm² - (RD-C-2)-Z7-C02-MV | 2d | 2027-09-06 | 2027-09-07 | RHD4CZ7C02MV3400 SS, RHD4CZ7C02MV3300 | Unskilled Labor [69.7 h]; Electrician [34.85 h]; Cable Termination for 13.8 kv 3Cx 500 mm², Al /XLPE/LLDPE [4.8 Unit] | 12,648 | C02 | Z7 | CONS | MV | Termination | AFT |

| ID | WBS | Activity | Duration | Start | Finish | Predecessors | Resources | Cost | RDH4-01-001-Road and Block Names-1 | RDH4-01-001-Zones-1 | RDH4-01-001-Phases-1 | RDH4-01-001-Networks-1 | RDH4-01-001-Work Method-1 | RDH4-01-001-MENEM |
| --- | --- | --- | --- | --- | --- | --- | --- | --- | --- | --- | --- | --- | --- | --- |
|  | 1795 | **RHD4-02-002-C02-(MV)-Unit Substations** |  |  |  |  |  |  |  |  |  |  |  |  |
|  | 6147 | **RHD4-02-002-Z7-C02-Low Voltage Network - LV** |  | 2027-07-29 | 2027-10-04 |  |  |  |  |  |  |  |  |  |
|  | 6148 | **RHD4-02-002-C02-(LV)-Low Voltage duct banks** |  | 2027-07-29 | 2027-08-17 |  |  |  |  |  |  |  |  |  |
| RHD4CZ7C02LV2100 |  | Excavation of Duct Banks for Low Voltage Network - (RD-C-2)-Z7-C02-LV | 4d | 2027-07-29 | 2027-08-02 | RHD4ENSDZ7APPLV160, RHD4CZ7C02RW3000, RHD4CZ7C02MV2100 | Skilled labor [42.4 h]; Unskilled Labor [42.4 h]; Equipment Opreator [84.73 h]; Excavator-Poclain [42.4 h]; Dump Truck [42.4 h]; Duct bank for LV cables UPVC (2xø110mm) [5.84 m] | 1,179.4 | C02 | Z7 | CONS | LV | Excavation | bef |
| RHD4CZ7C02LV2200 |  | Installation of Duct Banks for Low Voltage Network - (RD-C-2)-Z7-C02-LV | 6d | 2027-08-03 | 2027-08-09 | RHD4PRSHLDOSLV1000, RHD4PRSHLSTAGLV1000, RHD4CZ7C02LV2100 | Carpenter [6.32 h]; Skilled labor [63.6 h]; Unskilled Labor [63.6 h]; Steel Fixer [6.32 h]; Duct bank for LV cables UPVC (2xø110mm) [5.84 m] | 1,179.4 | C02 | Z7 | CONS | LV | Installing | bef |
| RHD4CZ7C02LV2300 |  | Pouring of Duct Banks for Low Voltage Network - (RD-C-2)-Z7-C02-LV | 4d | 2027-08-10 | 2027-08-14 | RHD4CZ7C02LV2200 | Skilled labor [42.4 h]; Unskilled Labor [42.4 h]; Equipment Opreator [16.99 h]; Concrete Mixer Truck [8.49 h]; Concrete Pump [8.49 h]; Duct bank for LV cables UPVC (2xø110mm) [37.95 m] | 7,666.08 | C02 | Z7 | CONS | LV | Pouring | bef |
| RHD4CZ7C02LV2400 |  | Backfilling of Duct Banks for Low Voltage Network - (RD-C-2)-Z7-C02-LV | 3d | 2027-08-15 | 2027-08-17 | RHD4CZ7C02LV2300 | Skilled labor [31.8 h]; Unskilled Labor [31.8 h]; Equipment Opreator [12.74 h]; Excavator-Poclain [12.74 h]; Duct bank for LV cables UPVC (2xø110mm) [8.76 m] | 1,769.1 | C02 | Z7 | CONS | LV | Backfilling | bef |
|  | 6149 | **RHD4-02-002-C02-(LV)-Low Voltage Drawpit** |  | 2027-09-08 | 2027-09-12 |  |  |  |  |  |  |  |  |  |
| RHD4CZ7C02LV5100 |  | Excavation of Drawpit size 900x900x1000mm for Low Voltage Network - (RD-C-2)-Z7-C02-LV | 2d | 2027-09-08 | 2027-09-09 | RHD4ENSDZ7APPLV160, RHD4CZ7C02MV3401, RHD4CZ7C02LV2400, RHD4CZ7C02MV1200 | Skilled labor [10.02 h]; Unskilled Labor [10.02 h]; Equipment Opreator [7.95 h]; Excavator-Poclain [4 h]; Dump Truck [4 h]; Drawpit with medium duty steel cover, size900x900x1000mm, [1.65 Unit] | 6,067.05 | C02 | Z7 | CONS | LV | Excavation | AFT |
| RHD4CZ7C02LV5200 |  | Installation of Drawpit size 900x900x1000mm for Low Voltage Network - (RD-C-2)-Z7-C02-LV | 2d | 2027-09-11 | 2027-09-12 | RHD4PRSHLDOSLV1400, RHD4PRSHLSTAGLV1400, RHD4CZ7C02LV5100 | Skilled labor [10.02 h]; Unskilled Labor [10.02 h]; Equipment Opreator [4 h]; Boom Truck [4 h]; Drawpit with medium duty steel cover, size900x900x1000mm, [9.35 Unit] | 34,379.95 | C02 | Z7 | CONS | LV | Installation | AFT |
|  | 6150 | **RHD4-02-002-C02-(LV)-Low Voltage cables** |  | 2027-09-13 | 2027-10-04 |  |  |  |  |  |  |  |  |  |
| RHD4CZ7C02LV3100 |  | Excavation for Low Voltage Cables for Low Voltage Network - (RD-C-2)-Z7-C02-LV | 5d | 2027-09-13 | 2027-09-18 | RHD4ENSDZ7APPLV160, RHD4CZ7C02LV5200 | Skilled labor [53.47 h]; Unskilled Labor [106.94 h]; Equipment Opreator [106.94 h]; Excavator-Poclain [53.47 h]; Boom Truck [53.47 h]; Cable, Copper 4x185mm2/ CU/XLPE/PVC [45.37 m]; Cable, Copper 4x70mm2/ CU/XLPE/PVC [19.86 m]; Cable, Copper 4x50mm2/ CU/XLPE/PVC +1x25mm2 CU/PVC [49.52 m]; Cable, Copper 3x10mm2/ CU/XLPE/SWA/PVC [130.74 m] | 32,059.36 | C02 | Z7 | CONS | LV | Excavation | AFT |
| RHD4CZ7C02LV3200 |  | Cable Laying of Low Voltage Cables for Low Voltage Network - (RD-C-2)-Z7-C02-LV | 5d | 2027-09-19 | 2027-09-25 | RHD4PRSHLDOSLV1100, RHD4ENMSLV2000, RHD4ENMSLV2010, RHD4PRSHLSTAGLV1100, RHD4CZ7C02LV3100 | Skilled labor [44.54 h]; Unskilled Labor [178.27 h]; Electrician [89.08 h]; Equipment Opreator [133.6 h]; Boom Truck [44.54 h]; Cable Laying Machine [89.08 h]; Cable, Copper 4x185mm2/ CU/XLPE/PVC [101 m]; Cable, Copper 4x70mm2/ CU/XLPE/PVC [59.58 m]; Cable, Copper 4x50mm2/ CU/XLPE/PVC +1x25mm2 CU/PVC [111 m]; Cable, Copper 3x10mm2/ CU/XLPE/SWA/PVC [392.23 m] | 78,005.16 | C02 | Z7 | CONS | LV | Cable Laying | AFT |
| RHD4CZ7C02LV3300 |  | Warning tape and Backfill for Low Voltage Cables for Low Voltage Network - (RD-C-2)-Z7-C02-LV | 5d | 2027-09-26 | 2027-09-30 | RHD4CZ7C02LV3200 | Skilled labor [44.54 h]; Unskilled Labor [178.27 h]; Electrician [89.08 h]; Equipment Opreator [44.54 h]; Boom Truck [44.54 h]; Cable, Copper 4x185mm2/ CU/XLPE/PVC [34.02 m]; Cable, Copper 4x70mm2/ CU/XLPE/PVC [14.9 m]; Cable, Copper 4x50mm2/ CU/XLPE/PVC +1x25mm2 CU/PVC [37.14 m]; Cable, Copper 3x10mm2/ CU/XLPE/SWA/PVC [98.06 m] | 24,042.47 | C02 | Z7 | CONS | LV | Warning tape and Backfill | AFT |
| RHD4CZ7C02LV3400 |  | Testing of Low Voltage Cables for Low Voltage Network - (RD-C-2)-Z7-C02-LV | 3d | 2027-10-02 | 2027-10-04 | RHD4CZ7C02LV3300 | Skilled labor [26.68 h]; Unskilled Labor [106.94 h]; Electrician [53.47 h]; Equipment Opreator [26.68 h]; Boom Truck [26.68 h]; Cable, Copper 4x185mm2/ CU/XLPE/PVC [11.34 m]; Cable, Copper 4x70mm2/ CU/XLPE/PVC [4.97 m]; Cable, Copper 4x50mm2/ CU/XLPE/PVC +1x25mm2 CU/PVC [12.38 m]; Cable, Copper 3x10mm2/ CU/XLPE/SWA/PVC [32.69 m] | 8,014.72 | C02 | Z7 | CONS | LV | Testing | AFT |
|  | 6153 | **RHD4-02-002-Z7-C02-Street Lighting Network - SL** |  | 2027-08-03 | 2028-01-11 |  |  |  |  |  |  |  |  |  |
|  | 6154 | **RHD4-02-002-C02-(SL)-Street Lighting duct banks** |  | 2027-08-03 | 2027-09-05 |  |  |  |  |  |  |  |  |  |
| RHD4CZ7C02SL2100 |  | Excavation of Duct Banks for Street Lighting Network - (RD-C-2)-Z7-C02-SL | 7d | 2027-08-03 | 2027-08-10 | RHD4ENSDZ7APPSL170, RHD4CZ7C02LV2100, RHD4CZ7C02LV2100 FF | Skilled labor [70.02 h]; Unskilled Labor [70.02 h]; Equipment Opreator [140.16 h]; Excavator-Poclain [70.02 h]; Dump Truck [70.02 h]; Road Crossing Duct for Street Lighting cables UPVC (2x?110mm) [3.94 m]; Road Crossing Duct for Street Lighting cables UPVC (4x?110mm) [4.6 m]; Road Crossing Duct for Street Lighting cables UPVC (6x?110mm) [1.1 m] | 2,436.47 | C02 | Z7 | CONS | SL | Excavation | bef |
| RHD4CZ7C02SL2200 |  | Installation of Duct Banks for Street Lighting Network - (RD-C-2)-Z7-C02-SL | 10d | 2027-08-11 | 2027-08-22 | RHD4PRSHLDOSSL1000, RHD4PRSHLSTAGSL1000, RHD4CZ7C02SL2100, RHD4CZ7C02LV2200 | Carpenter [10.56 h]; Skilled labor [105.09 h]; Unskilled Labor [105.09 h]; Steel Fixer [10.56 h]; Road Crossing Duct for Street Lighting cables UPVC (2x?110mm) [3.94 m]; Road Crossing Duct for Street Lighting cables UPVC (4x?110mm) [4.6 m]; Road Crossing Duct for Street Lighting cables UPVC (6x?110mm) [1.1 m] | 2,436.47 | C02 | Z7 | CONS | SL | Installing | bef |
| RHD4CZ7C02SL2300 |  | Pouring of Duct Banks for Street Lighting Network - (RD-C-2)-Z7-C02-SL | 7d | 2027-08-23 | 2027-08-30 | RHD4CZ7C02SL2200, RHD4CZ7C02LV2300 | Skilled labor [70.02 h]; Unskilled Labor [70.02 h]; Equipment Opreator [28 h]; Concrete Mixer Truck [14.05 h]; Concrete Pump [14.05 h]; Road Crossing Duct for Street Lighting cables UPVC (2x?110mm) [25.63 m]; Road Crossing Duct for Street Lighting cables UPVC (4x?110mm) [29.93 m]; Road Crossing Duct for Street Lighting cables UPVC (6x?110mm) [7.17 m] | 15,852.6 | C02 | Z7 | CONS | SL | Pouring | bef |
| RHD4CZ7C02SL2400 |  | Backfilling of Duct Banks for Street Lighting Network - (RD-C-2)-Z7-C02-SL | 5d | 2027-08-31 | 2027-09-05 | RHD4CZ7C02SL2300 | Skilled labor [52.6 h]; Unskilled Labor [52.6 h]; Equipment Opreator [21.02 h]; Excavator-Poclain [21.02 h]; Road Crossing Duct for Street Lighting cables UPVC (2x?110mm) [5.91 m]; Road Crossing Duct for Street Lighting cables UPVC (4x?110mm) [6.91 m]; Road Crossing Duct for Street Lighting cables UPVC (6x?110mm) [1.66 m] | 3,660.38 | C02 | Z7 | CONS | SL | Backfilling | bef |
|  | 6155 | **RHD4-02-002-C02-(SL)-Street Lighting Drawpit** |  | 2027-11-13 | 2027-11-17 |  |  |  |  |  |  |  |  |  |
| RHD4CZ7C02SL5100 |  | Excavation of Drawpit size 600x600x900mm for Street Lighting Network - (RD-C-2)-Z7-C02-SL | 2d | 2027-11-13 | 2027-11-14 | RHD4ENSDZ7APPSL170, RHD4CZ7C02SL2300, RHD4CZ7C02LV3400, RHD4CZ7C02IRR3201 | Skilled labor [10.89 h]; Unskilled Labor [10.89 h]; Equipment Opreator [8.71 h]; Excavator-Poclain [4.36 h]; Dump Truck [4.36 h]; Drawpit with medium duty steel cover, size600x600x900mm, [1.8 Unit] | 4,411.8 | C02 | Z7 | CONS | SL | Excavation | AFT |
| RHD4CZ7C02SL5200 |  | Installation of Drawpit size 600x600x900mm for Street Lighting Network - (RD-C-2)-Z7-C02-SL | 2d | 2027-11-16 | 2027-11-17 | RHD4PRSHLDOSSL1400, RHD4PRSHLSTAGSL1400, RHD4CZ7C02SL5100, RHD4CZ7C02IRR3200, RHD4CZ7C02IRR1504 | Skilled labor [10.89 h]; Unskilled Labor [10.89 h]; Equipment Opreator [4.36 h]; Boom Truck [4.36 h]; Drawpit with medium duty steel cover, size600x600x900mm, [10.2 Unit] | 25,000.2 | C02 | Z7 | CONS | SL | Installation | AFT |

| ID | WBS | Activity | Duration | Start | Finish | Predecessors | Resources | Cost | RDH4-01-001-Road and Block Names-1 | RDH4-01-001-Zones-1 | RDH4-01-001-Phases-1 | RDH4-01-001-Networks-1 | RDH4-01-001-Work Method-1 | RDH4-01-001-MENEM |
| --- | --- | --- | --- | --- | --- | --- | --- | --- | --- | --- | --- | --- | --- | --- |
|  | 6156 | **RHD4-02-002-C02-(SL)-Street Lighting cables** |  | 2027-11-18 | 2027-12-18 |  |  |  |  |  |  |  |  |  |
| RHD4CZ7C02SL3100 |  | Excavation for Street Lighting Cables for Street Lighting Network - (RD-C-2)-Z7-C02-SL | 8d | 2027-11-18 | 2027-11-27 | RHD4ENSDZ7APPSL170, RHD4CZ7C02SL5200 | Skilled labor [79.39 h]; Unskilled Labor [158.78 h]; Equipment Opreator [158.78 h]; Excavator-Poclain [79.39 h]; Boom Truck [79.39 h]; Cable, Copper 4x16mm2/ CU/XLPE/SWA/PVC + 1x16mm2 CU/PVC [41 m]; Cable, Copper 4x10mm2/ CU/XLPE/SWA/PVC + 1x10mm2 CU/PVC [323.61 m] | 18,604.09 | C02 | Z7 | CONS | SL | Excavation | AFT |
| RHD4CZ7C02SL3200 |  | Cable Laying of Street Lighting Cables for Street Lighting Network - (RD-C-2)-Z7-C02-SL | 7d | 2027-11-28 | 2027-12-05 | RHD4PRSHLDOSSL1100, RHD4ENMSSL2000, RHD4ENMSSL2010, RHD4PRSHLSTAGSL1100, RHD4CZ7C02SL3100 | Skilled labor [66.21 h]; Unskilled Labor [264.74 h]; Electrician [132.32 h]; Equipment Opreator [198.53 h]; Boom Truck [66.21 h]; Cable Laying Machine [132.32 h]; Cable, Copper 4x16mm2/ CU/XLPE/SWA/PVC + 1x16mm2 CU/PVC [122.99 m]; Cable, Copper 4x10mm2/ CU/XLPE/SWA/PVC + 1x10mm2 CU/PVC [970.84 m] | 55,811.42 | C02 | Z7 | CONS | SL | Cable Laying | AFT |
| RHD4CZ7C02SL3300 |  | Warning tape and Backfill for Street Lighting Cables for Street Lighting Network - (RD-C-2)-Z7-C02-SL | 7d | 2027-12-06 | 2027-12-13 | RHD4CZ7C02SL3200 | Skilled labor [66.21 h]; Unskilled Labor [264.74 h]; Electrician [132.32 h]; Equipment Opreator [66.21 h]; Boom Truck [66.21 h]; Cable, Copper 4x16mm2/ CU/XLPE/SWA/PVC + 1x16mm2 CU/PVC [30.75 m]; Cable, Copper 4x10mm2/ CU/XLPE/SWA/PVC + 1x10mm2 CU/PVC [242.71 m] | 13,952.85 | C02 | Z7 | CONS | SL | Warning tape and Backfill | AFT |
| RHD4CZ7C02SL3400 |  | Testing of Street Lighting Cables for Street Lighting Network - (RD-C-2)-Z7-C02-SL | 4d | 2027-12-14 | 2027-12-18 | RHD4CZ7C02SL3300 | Skilled labor [39.75 h]; Unskilled Labor [158.78 h]; Electrician [79.39 h]; Equipment Opreator [39.75 h]; Boom Truck [39.75 h]; Cable, Copper 4x16mm2/ CU/XLPE/SWA/PVC + 1x16mm2 CU/PVC [10.25 m]; Cable, Copper 4x10mm2/ CU/XLPE/SWA/PVC + 1x10mm2 CU/PVC [80.9 m] | 4,650.78 | C02 | Z7 | CONS | SL | Testing | AFT |
|  | 6157 | **RHD4-02-002-C02-(SL)-Street Lighting Poles** |  | 2027-12-19 | 2028-01-02 |  |  |  |  |  |  |  |  |  |
| RHD4CZ7C02SL1100 |  | Excavation for RC Base for Lighting Poles for Street Lighting Network - (RD-C-2)-Z7-C02-SL | 2d | 2027-12-19 | 2027-12-20 | RHD4ENSDZ7APPSL170, RHD4CZ7C02SL3400 | Skilled labor [16.66 h]; Unskilled Labor [16.66 h]; Equipment Opreator [33.43 h]; Excavator-Poclain [16.66 h]; Dump Truck [16.66 h]; Lighting polesdouble arms, height of ( 12 ) meters [2.3 Unit] | 10,515.6 | C02 | Z7 | CONS | SL | Excavation | AFT |
| RHD4CZ7C02SL1200 |  | Installation for RC Base for Lighting Poles for Street Lighting Network - (RD-C-2)-Z7-C02-SL | 2d | 2027-12-21 | 2027-12-22 | RHD4CZ7C02SL1100 | Skilled labor [16.66 h]; Unskilled Labor [16.66 h]; Equipment Opreator [33.43 h]; Excavator-Poclain [16.66 h]; Dump Truck [16.66 h]; Lighting polesdouble arms, height of ( 12 ) meters [5.75 Unit] | 26,289 | C02 | Z7 | CONS | SL | RC Base | AFT |
| RHD4CZ7C02SL1300 |  | Backfill for RC Base for Lighting Poles for Street Lighting Network - (RD-C-2)-Z7-C02-SL | 2d | 2027-12-23 | 2027-12-25 | RHD4CZ7C02SL1200 | Skilled labor [16.66 h]; Unskilled Labor [16.66 h]; Equipment Opreator [33.43 h]; Excavator-Poclain [16.66 h]; Dump Truck [16.66 h]; Lighting polesdouble arms, height of ( 12 ) meters [1.15 Unit] | 5,257.8 | C02 | Z7 | CONS | SL | Backfill | AFT |
| RHD4CZ7C02SL1400 |  | Installation for Lighting Poles for Street Lighting Network - (RD-C-2)-Z7-C02-SL | 3d | 2027-12-26 | 2027-12-28 | RHD4PRSHLDOSSL1200, RHD4ENMSSL2000, RHD4ENMSSL2010, RHD4PRSHLSTAGSL1200, RHD4CZ7C02SL1300 | Skilled labor [25.05 h]; Unskilled Labor [25.05 h]; Electrician [25.05 h]; Equipment Opreator [25.05 h]; Boom Truck [25.05 h]; Lighting polesdouble arms, height of ( 12 ) meters [13.8 Unit] | 63,093.6 | C02 | Z7 | CONS | SL | Poles Installation | AFT |
| RHD4CZ7C02SL1500 |  | Luminaire Installation for Lighting Poles for Street Lighting Network - (RD-C-2)-Z7-C02-SL | 4d | 2027-12-29 | 2028-01-02 | RHD4PRSHLDOSSL1300, RHD4PRSHLSTAGSL1300, RHD4CZ7C02SL1400 | Unskilled Labor [66.76 h]; Electrician [33.43 h]; Equipment Opreator [13.4 h]; Boom Truck [13.4 h]; Street Lighting( LED) Luminaire of Output ?18553 lumen [46 Unit] | 29,302 | C02 | Z7 | CONS | SL | Luminaire Installation | AFT |
|  | 6158 | **RHD4-02-002-C02-(SL)-Street Lighting Feeder Pillars** |  | 2028-01-03 | 2028-01-09 |  |  |  |  |  |  |  |  |  |
| RHD4CZ7C02SL4100 |  | Leveling for Distribution Pillars for Street Lighting Network - (RD-C-2)-Z7-C02-SL | 2d | 2028-01-03 | 2028-01-04 | RHD4CZ7C02SL3300, RHD4CZ7C02SL1500, RHD4CZ7A012ICT5200 | Skilled labor [10.89 h]; Unskilled Labor [21.78 h]; Equipment Opreator [4.36 h]; Excavator-Poclain [2.18 h]; Boom Truck [2.18 h]; 0.6/1 KV Steet Lighting Feeder Pillar [0.15 Unit] | 3,438.15 | C02 | Z7 | CONS | SL | Leveling | AFT |
| RHD4CZ7C02SL4200 |  | Lean Concrete for Distribution Pillars for Street Lighting Network - (RD-C-2)-Z7-C02-SL | 2d | 2028-01-05 | 2028-01-06 | RHD4CZ7C02SL4100 | Skilled labor [10.89 h]; Unskilled Labor [21.78 h]; Equipment Opreator [4.36 h]; Concrete Mixer Truck [2.18 h]; Concrete Pump [2.18 h]; 0.6/1 KV Steet Lighting Feeder Pillar [0.25 Unit] | 5,730.25 | C02 | Z7 | CONS | SL | Lean Concrete | AFT |
| RHD4CZ7C02SL4300 |  | Installation of Distribution Pillars for Street Lighting Network - (RD-C-2)-Z7-C02-SL | 2d | 2028-01-08 | 2028-01-09 | RHD4CZ7C02SL4200, RHD4CZ7C02SL1400, RHD4CZ7A012RD5100 | Skilled labor [10.89 h]; Unskilled Labor [43.56 h]; Electrician [21.78 h]; Equipment Opreator [10.89 h]; Boom Truck [10.89 h]; 0.6/1 KV Steet Lighting Feeder Pillar [0.6 Unit] | 13,752.6 | C02 | Z7 | CONS | SL | Installation | AFT |
|  | 6159 | **RHD4-02-002-C02-(SL)-Street Lighting Earthing System** |  | 2028-01-10 | 2028-01-11 |  |  |  |  |  |  |  |  |  |
| RHD4CZ7C02SL6100 |  | Installation of Earthing for Lighting Poles and Fedder Pillers for Street Lighting Network - (RD-C-2)-Z7-C02-SL | 2d | 2028-01-10 | 2028-01-11 | RHD4ENMSER2000, RHD4ENMSER2010, RHD4CZ7C02SL4300 | Skilled labor [2.94 h]; Unskilled Labor [2.94 h]; Equipment Opreator [5.77 h]; Excavator-Poclain [2.94 h]; Dump Truck [2.94 h]; Street Lighting Feeder pillars - ER [1 Unit]; Including lighting poles circuits - ER [3 Unit] | 2,967 | C02 | Z7 | CONS | SL | Installation | AFT |
|  | 6165 | **RHD4-02-002-Z7-C02-Telecommunications Network - TC** |  | 2027-02-08 | 2028-02-17 |  |  |  |  |  |  |  |  |  |
|  | 6166 | **RHD4-02-002-C02-(TC)-Telecommunications Ducts** |  | 2028-01-12 | 2028-02-08 |  |  |  |  |  |  |  |  |  |
| RHD4CZ7C02TC2100 |  | Excavation of HDPE Ducts for Telecom Network - (RD-C-2)-Z7-C02-TC | 7d | 2028-01-12 | 2028-01-19 | RHD4ENSDZ7APPTC190, RHD4CZ7C02TC3400, RHD4CZ7C02SL6100 | Skilled labor [71.01 h]; Unskilled Labor [71.01 h]; Equipment Opreator [142.01 h]; Excavator-Poclain [71.01 h]; Dump Truck [71.01 h]; (6*50mm) HDPE ducts -TC [195.6 m] | 17,212.8 | C02 | Z7 | CONS | TC | Excavation | AFT |
| RHD4CZ7C02TC2200 |  | Installation of HDPE Ducts for Telecom Network - (RD-C-2)-Z7-C02-TC | 10d | 2028-01-20 | 2028-01-31 | RHD4PRSHLDOSTC1000, RHD4PRSHLSTAGTC1000, RHD4CZ7C02TC2100 | Carpenter [10.67 h]; Skilled labor [106.51 h]; Unskilled Labor [106.51 h]; Steel Fixer [10.67 h]; (6*50mm) HDPE ducts -TC [635.7 m] | 55,941.6 | C02 | Z7 | CONS | TC | Installing | AFT |
| RHD4CZ7C02TC2400 |  | Backfilling of HDPE Ducts for Telecom Network - (RD-C-2)-Z7-C02-TC | 7d | 2028-02-01 | 2028-02-08 | RHD4CZ7C02TC2200 | Skilled labor [71.01 h]; Unskilled Labor [71.01 h]; Equipment Opreator [28.42 h]; Excavator-Poclain [28.42 h]; (6*50mm) HDPE ducts -TC [146.7 m] | 12,909.6 | C02 | Z7 | CONS | TC | Backfilling | AFT |
|  | 6167 | **RHD4-02-002-C02-(TC)-Telecommunications Manholes** |  | 2028-02-09 | 2028-02-17 |  |  |  |  |  |  |  |  |  |
| RHD4CZ7C02TC5100 |  | Excavation for Manholes for Telecom Network - (RD-C-2)-Z7-C02-TC | 4d | 2028-02-09 | 2028-02-13 | RHD4ENSDZ7APPTC190, RHD4CZ7C02TC2100, RHD4CZ7C02TC2400 | Skilled labor [19.06 h]; Unskilled Labor [19.06 h]; Equipment Opreator [15.25 h]; Excavator-Poclain [7.62 h]; Dump Truck [7.62 h]; Manhole Type 1 - TC [0.3 nr]; Manhole Type 2 - TC [0.9 nr] | 8,089.2 | C02 | Z7 | CONS | TC | Excavation | AFT |
| RHD4CZ7C02TC5200 |  | Installation of Manholes for Telecom Network - (RD-C-2)-Z7-C02-TC | 4d | 2028-02-14 | 2028-02-17 | RHD4PRSHLDOSTC1200, RHD4PRSHLSTAGTC1200, RHD4CZ7C02TC5100 | Skilled labor [19.06 h]; Unskilled Labor [19.06 h]; Equipment Opreator [7.62 h]; Boom Truck [7.62 h]; Manhole Type 1 - TC [1.7 nr]; Manhole Type 2 - TC [5.1 nr] | 45,838.8 | C02 | Z7 | CONS | TC | Installation | AFT |

| ID | WBS | Activity | Duration | Start | Finish | Predecessors | Resources | Cost | RDH4-01-001-Road and Block Names-1 | RDH4-01-001-Zones-1 | RDH4-01-001-Phases-1 | RDH4-01-001-Networks-1 | RDH4-01-001-Work Method-1 | RDH4-01-001-MENEM |
| --- | --- | --- | --- | --- | --- | --- | --- | --- | --- | --- | --- | --- | --- | --- |
|  | 6168 | **RHD4-02-002-C02-(TC)-Telecomminications Road Crossings** |  | 2027-02-08 | 2027-02-24 |  |  |  |  |  |  |  |  |  |
| RHD4CZ7C02TC3100 |  | Excavation for Road Crossings for Telecom Network - (RD-C-2)-Z7-C02-TC | 3d | 2027-02-08 | 2027-02-10 | RHD4ENSDZ7APPTC190, RHD4CZ7C02ST1109 | Skilled labor [28.1 h]; Unskilled Labor [28.1 h]; Equipment Opreator [56.19 h]; Excavator-Poclain [28.1 h]; Dump Truck [28.1 h]; Road crossing ducts, (6*50mm) HDPE -TC [5.16 m] | 196.08 | C02 | Z7 | CONS | TC | Excavation | bef |
| RHD4CZ7C02TC3200 |  | Installation of Road Crossings for Telecom Network - (RD-C-2)-Z7-C02-TC | 4d | 2027-02-11 | 2027-02-15 | RHD4PRSHLDOSTC1100, RHD4PRSHLSTAGTC1100, RHD4CZ7C02TC3100 | Carpenter [3.7 h]; Skilled labor [37.46 h]; Unskilled Labor [37.46 h]; Steel Fixer [3.7 h]; Road crossing ducts, (6*50mm) HDPE -TC [5.16 m] | 196.08 | C02 | Z7 | CONS | TC | Installing | bef |
| RHD4CZ7C02TC3300 |  | Pouring of Road Crossings for Telecom Network - (RD-C-2)-Z7-C02-TC | 4d | 2027-02-16 | 2027-02-20 | RHD4CZ7C02TC3200 | Skilled labor [37.46 h]; Unskilled Labor [37.46 h]; Equipment Opreator [15.03 h]; Concrete Mixer Truck [7.51 h]; Concrete Pump [7.51 h]; Road crossing ducts, (6*50mm) HDPE -TC [33.54 m] | 1,274.52 | C02 | Z7 | CONS | TC | Pouring | bef |
| RHD4CZ7C02TC3400 |  | Backfilling of Road Crossings for Telecom Network - (RD-C-2)-Z7-C02-TC | 3d | 2027-02-21 | 2027-02-24 | RHD4CZ7C02TC3300 | Skilled labor [28.1 h]; Unskilled Labor [28.1 h]; Equipment Opreator [11.2 h]; Excavator-Poclain [11.2 h]; Road crossing ducts, (6*50mm) HDPE -TC [7.74 m] | 294.12 | C02 | Z7 | CONS | TC | Backfilling | bef |
|  | 6169 | **RHD4-02-002-Z7-C02-Information and Communication Technologies - ICT** |  | 2027-02-08 | 2028-03-21 |  |  |  |  |  |  |  |  |  |
|  | 6170 | **RHD4-02-002-C02-(ICT)-Information and Communication Technologies Ducts** |  | 2028-02-19 | 2028-03-21 |  |  |  |  |  |  |  |  |  |
| RHD4CZ7C02ICT2100 |  | Excavation of HDPE Ducts for ICT Network - (RD-C-2)-Z7-C02-ICT | 7d | 2028-02-19 | 2028-03-01 | RHD4ENSDZ7APPICT200, RHD4CZ7C02ICT3400, RHD4CZ7C02TC5200 | Skilled labor [67.3 h]; Unskilled Labor [67.3 h]; Equipment Opreator [134.6 h]; Excavator-Poclain [67.3 h]; Dump Truck [67.3 h]; (2*50mm) HDPE ducts -ICT [178.34 m]; (2*50mm+2*32mm) HDPE ducts -ICT [6.36 m]; (2*32mm) HDPE ducts -ICT [0.7 m] | 7,258.64 | C02 | Z7 | CONS | ICT | Excavation | AFT |
| RHD4CZ7C02ICT2200 |  | Installation of HDPE Ducts for ICT Network - (RD-C-2)-Z7-C02-ICT | 10d | 2028-03-02 | 2028-03-13 | RHD4PRSHLDOSICT1000, RHD4PRSHLSTAGICT1000, RHD4CZ7C02ICT2100 | Carpenter [10.13 h]; Skilled labor [100.95 h]; Unskilled Labor [100.95 h]; Steel Fixer [10.13 h]; (2*50mm) HDPE ducts -ICT [579.61 m]; (2*50mm+2*32mm) HDPE ducts -ICT [20.67 m]; (2*32mm) HDPE ducts -ICT [2.27 m] | 23,590.58 | C02 | Z7 | CONS | ICT | Installing | AFT |
| RHD4CZ7C02ICT2400 |  | Backfilling of HDPE Ducts for ICT Network - (RD-C-2)-Z7-C02-ICT | 7d | 2028-03-14 | 2028-03-21 | RHD4CZ7C02ICT2200, RHD4CZ7C02ICT5200 | Skilled labor [67.3 h]; Unskilled Labor [67.3 h]; Equipment Opreator [26.9 h]; Excavator-Poclain [26.9 h]; (2*50mm) HDPE ducts -ICT [133.75 m]; (2*50mm+2*32mm) HDPE ducts -ICT [4.77 m]; (2*32mm) HDPE ducts -ICT [0.53 m] | 5,443.98 | C02 | Z7 | CONS | ICT | Backfilling | AFT |
|  | 6171 | **RHD4-02-002-C02-(ICT)-Information and Communication Technologies Manholes** |  | 2028-03-02 | 2028-03-11 |  |  |  |  |  |  |  |  |  |
| RHD4CZ7C02ICT5100 |  | Excavation for Manholes for ICT Network - (RD-C-2)-Z7-C02-ICT | 4d | 2028-03-02 | 2028-03-06 | RHD4ENSDZ7APPICT200, RHD4CZ7C02ICT2100 | Skilled labor [16.34 h]; Unskilled Labor [16.34 h]; Equipment Opreator [13.07 h]; Excavator-Poclain [6.53 h]; Dump Truck [6.53 h]; Manhole Type 1 - ICT [0.6 nr]; Manhole Type 2 - ICT [0.6 nr] | 6,471.6 | C02 | Z7 | CONS | ICT | Excavation | AFT |
| RHD4CZ7C02ICT5200 |  | Installation of Manholes for ICT Network - (RD-C-2)-Z7-C02-ICT | 4d | 2028-03-07 | 2028-03-11 | RHD4PRSHLDOSICT1200, RHD4PRSHLSTAGICT1200, RHD4CZ7C02ICT5100 | Skilled labor [16.34 h]; Unskilled Labor [16.34 h]; Equipment Opreator [6.53 h]; Boom Truck [6.53 h]; Manhole Type 1 - ICT [3.4 nr]; Manhole Type 2 - ICT [3.4 nr] | 36,672.4 | C02 | Z7 | CONS | ICT | Installation | AFT |
|  | 6172 | **RHD4-02-002-C02-(ICT)-Information and Communication Technologies Road Crossings** |  | 2027-02-08 | 2027-03-04 |  |  |  |  |  |  |  |  |  |
| RHD4CZ7C02ICT3100 |  | Excavation for Road Crossings for ICT Network - (RD-C-2)-Z7-C02-ICT | 3d | 2027-02-08 | 2027-02-10 | RHD4ENSDZ7APPICT200, RHD4CZ7C02ST1109 | Skilled labor [28.31 h]; Unskilled Labor [28.31 h]; Equipment Opreator [56.52 h]; Excavator-Poclain [28.31 h]; Dump Truck [28.31 h]; Road crossing ducts, (2*50mm) HDPE -ICT [5.19 m] | 197.22 | C02 | Z7 | CONS | ICT | Excavation | bef |
| RHD4CZ7C02ICT3200 |  | Installation of Road Crossings for ICT Network - (RD-C-2)-Z7-C02-ICT | 4d | 2027-02-20 | 2027-02-24 | RHD4PRSHLDOSICT1100, RHD4PRSHLSTAGICT1100, RHD4CZ7C02ICT3100 | Carpenter [3.81 h]; Skilled labor [37.68 h]; Unskilled Labor [37.68 h]; Steel Fixer [3.81 h]; Road crossing ducts, (2*50mm) HDPE -ICT [5.19 m] | 197.22 | C02 | Z7 | CONS | ICT | Installing | bef |
| RHD4CZ7C02ICT3300 |  | Pouring of Road Crossings for ICT Network - (RD-C-2)-Z7-C02-ICT | 4d | 2027-02-25 | 2027-03-01 | RHD4CZ7C02ICT3200 | Skilled labor [37.68 h]; Unskilled Labor [37.68 h]; Equipment Opreator [15.03 h]; Concrete Mixer Truck [7.51 h]; Concrete Pump [7.51 h]; Road crossing ducts, (2*50mm) HDPE -ICT [33.73 m] | 1,281.93 | C02 | Z7 | CONS | ICT | Pouring | bef |
| RHD4CZ7C02ICT3400 |  | Backfilling of Road Crossings for ICT Network - (RD-C-2)-Z7-C02-ICT | 3d | 2027-03-02 | 2027-03-04 | RHD4CZ7C02ICT3300 | Skilled labor [28.31 h]; Unskilled Labor [28.31 h]; Equipment Opreator [11.33 h]; Excavator-Poclain [11.33 h]; Road crossing ducts, (2*50mm) HDPE -ICT [7.79 m] | 295.83 | C02 | Z7 | CONS | ICT | Backfilling | bef |
|  | 6160 | **RHD4-02-002-Z7-C02-Landscape Network - LS** |  |  |  |  |  |  |  |  |  |  |  |  |
|  | 6161 | **RHD4-02-002-C02-(LS)-Landscape Lighting cables** |  |  |  |  |  |  |  |  |  |  |  |  |
|  | 6163 | **RHD4-02-002-C02-(LS)-Landscape Bollard Poles** |  |  |  |  |  |  |  |  |  |  |  |  |
|  | 6173 | **RHD4-02-002-Z7-C02-Security Network - CCTV** |  | 2028-03-22 | 2028-04-29 |  |  |  |  |  |  |  |  |  |
|  | 6174 | **RHD4-02-002-C02-(CCTV)-Civil Works** |  | 2028-03-22 | 2028-04-01 |  |  |  |  |  |  |  |  |  |
| RHD4CZ7C02CCTV2100 |  | Civil Works for Security Network - (RD-C-2)-Z7-C02-CCTV | 9d | 2028-03-22 | 2028-04-01 | RHD4CZ7C02ICT2400 | Skilled labor [363.04 h]; Unskilled Labor [725.92 h]; Equipment Opreator [363.04 h]; Excavator-Poclain [90.72 h]; Dump Truck [90.72 h]; Civil works Digging, trenching, laying pipes Meter with supply and installation of Manholes and for power feeding sources related to all towers and poles – (from 35-meter pole to control room and from related UPS camersa distribution boards till overall 2 [250 m] | 29,000 | C02 | Z7 | CONS | CCTV | Civil Works | AFT |

| ID | WBS | Activity | Duration | Start | Finish | Predecessors | Resources | Cost | RDH4-01-001-Road and Block Names-1 | RDH4-01-001-Zones-1 | RDH4-01-001-Phases-1 | RDH4-01-001-Networks-1 | RDH4-01-001-Work Method-1 | RDH4-01-001-MENEM |
| --- | --- | --- | --- | --- | --- | --- | --- | --- | --- | --- | --- | --- | --- | --- |
|  | 6175 | **RHD4-02-002-C02-(CCTV)-CCTV Poles** |  | 2028-04-02 | 2028-04-10 |  |  |  |  |  |  |  |  |  |
| RHD4CZ7C02CCTV1100 |  | Excavation for RC Base for CCTV Poles for Security Network - (RD-C-2)-Z7-C02-CCTV | 2d | 2028-04-02 | 2028-04-03 | RHD4ENSDZ7APPCCTV210, RHD4CZ7C02CCTV2100 | Skilled labor [21.76 h]; Unskilled Labor [21.76 h]; Equipment Opreator [43.52 h]; Excavator-Poclain [10.89 h]; Dump Truck [10.89 h]; 25 Meters pole for CCTV Cameras [0.1 nr]; 7 Meters pole for ANPR CCTV CameraS [0.2 nr]; 4.5-meter Hinged Type Arm, fixed on 7 meter for installing LANPR cameras [0.4 nr] | 19,889.2 | C02 | Z7 | CONS | CCTV | Excavation | AFT |
| RHD4CZ7C02CCTV1200 |  | Installation for RC Base for CCTV Poles for Security Network - (RD-C-2)-Z7-C02-CCTV | 2d | 2028-04-04 | 2028-04-05 | RHD4CZ7C02CCTV1100 | Skilled labor [21.76 h]; Unskilled Labor [21.76 h]; Equipment Opreator [43.52 h]; Excavator-Poclain [10.89 h]; Dump Truck [10.89 h]; 25 Meters pole for CCTV Cameras [0.25 nr]; 7 Meters pole for ANPR CCTV CameraS [0.5 nr]; 4.5-meter Hinged Type Arm, fixed on 7 meter for installing LANPR cameras [1 nr] | 49,723 | C02 | Z7 | CONS | CCTV | RC Base | AFT |
| RHD4CZ7C02CCTV1300 |  | Backfill for RC Base for CCTV Poles for Security Network - (RD-C-2)-Z7-C02-CCTV | 2d | 2028-04-06 | 2028-04-08 | RHD4CZ7C02CCTV1200 | Skilled labor [13.76 h]; Unskilled Labor [13.76 h]; Equipment Opreator [27.2 h]; Excavator-Poclain [6.86 h]; Dump Truck [6.86 h]; 25 Meters pole for CCTV Cameras [0.05 nr]; 7 Meters pole for ANPR CCTV CameraS [0.1 nr]; 4.5-meter Hinged Type Arm, fixed on 7 meter for installing LANPR cameras [0.2 nr] | 9,944.6 | C02 | Z7 | CONS | CCTV | Backfill | AFT |
| RHD4CZ7C02CCTV1400 |  | Installation for CCTV Poles for Security Network - (RD-C-2)-Z7-C02-CCTV | 2d | 2028-04-09 | 2028-04-10 | RHD4PRSHLDOSCCTV1000, RHD4PRSHLSTACCTV1000, RHD4CZ7C02CCTV1300 | Skilled labor [36.32 h]; Unskilled Labor [72.48 h]; Electrician [36.32 h]; Equipment Opreator [36.32 h]; Boom Truck [18.19 h]; 25 Meters pole for CCTV Cameras [0.6 nr]; 7 Meters pole for ANPR CCTV CameraS [1.2 nr]; 4.5-meter Hinged Type Arm, fixed on 7 meter for installing LANPR cameras [2.4 nr] | 119,335.2 | C02 | Z7 | CONS | CCTV | Installation | AFT |
|  | 6176 | **RHD4-02-002-C02-(CCTV)-Camera** |  | 2028-04-11 | 2028-04-12 |  |  |  |  |  |  |  |  |  |
| RHD4CZ7C02CCTV3100 |  | Installation for Cameras for Security Network - (RD-C-2)-Z7-C02-CCTV | 2d | 2028-04-11 | 2028-04-12 | RHD4PRSHLDOSCCTV1100, RHD4PRSHLSTACCTV1100, RHD4CZ7C02CCTV1400 | Unskilled Labor [98.08 h]; Electrician [48.96 h]; Fixed outdoor Camera for LPR, IP66/67 and IK10-rated 10 MP/ 4K, day/night, IR luminator [4 nr]; Outdoor Camera, 5MP resolution, day/night, fixed bullet camera providing Forensic WDR. [4 nr]; Outdoor PTZ with IR, HDTV 1080 and 31x optical, 12x digital, total 372x zoom, H264/265 with Motion JPEG. [1 nr] | 163,303 | C02 | Z7 | CONS | CCTV | Installation | AFT |
|  | 6177 | **RHD4-02-002-C02-(CCTV)-Power and Infrastructure** |  | 2028-04-25 | 2028-04-29 |  |  |  |  |  |  |  |  |  |
| RHD4CZ7C02CCTV4100 |  | Installation of Power outlet, UPS and midspan for PTZ Camerafor Cameras for Security Network - (RD-C-2)-Z7-C02-CCTV | 2d | 2028-04-25 | 2028-04-26 | RHD4PRSHLDOSCCTV1300, RHD4PRSHLSTACCTV1300, RHD4CZ7C02CCTV1400, RHD4CZ7C02CCTV6100 | Skilled labor [8.64 h]; Unskilled Labor [34.88 h]; Electrician [17.44 h]; Equipment Opreator [17.44 h]; Excavator-Poclain [4.36 h]; Dump Truck [4.36 h]; Outdoor ready IP66-rated midspan for PTZ Camera (The outdoor- ready midspan should be IP66/IP67- and NEMA 4X-rated [1 nr]; 1.2KVA Industrial type UPS located at FEC remote poles [1 nr] | 9,103 | C02 | Z7 | CONS | CCTV | Power | AFT |
| RHD4CZ7C02CCTV4200 |  | Short Range Wireless PoP wireless Bridgefor CCTV Poles for Security Network - (RD-C-2)-Z7-C02-CCTV | 2d | 2028-04-27 | 2028-04-29 | RHD4CZ7C02CCTV4100, RHD4CZ7C02CCTV4100 FF | Skilled labor [10.88 h]; Unskilled Labor [21.76 h]; Electrician [10.88 h]; Equipment Opreator [21.76 h]; Excavator-Poclain [5.45 h]; Dump Truck [5.45 h]; Short Range wireless point to point wireless bridge [2 nr] | 29,274 | C02 | Z7 | CONS | CCTV | Wireless Pop | AFT |
|  | 6179 | **RHD4-02-002-C02-(CCTV)-CCTV Panels and Components** |  | 2028-04-13 | 2028-04-24 |  |  |  |  |  |  |  |  |  |
| RHD4CZ7C02CCTV6100 |  | Installation for CCTV Panels for Security Network - (RD-C-2)-Z7-C02-CCTV | 10d | 2028-04-13 | 2028-04-24 | RHD4PRSHLDOSCCTV1200, RHD4PRSHLSTACCTV1200, RHD4PRLOLSTACCTV1001, RHD4CZ7C02CCTV3100 | Skilled labor [217.76 h]; Unskilled Labor [653.44 h]; Electrician [217.76 h]; Pole mounted Filed Equipment cabinet (FEC) , with fan and ventilation, NEMEX 4X ,door, minimum size (600x600x400mm) , the cabinet/enclosurE [1 nr]; 8 Port Industrial PoE Switch 10/1000BaseT (-40 deg to +70 deg. Celsius) for remote poles and as specifiedin item 15. [1 nr]; 8 Port Industrial PoE Switch 10/1000BaseT with 2X1G SFP UP-LINK(- 40 deg to +70 deg. Celsius) for remote poles and as specifiedin item 15 [3 nr]; UTP CAT6 Patch Cord , connect the industrial switch with the cameras, and radio wireless antenna [6 nr] | 72,285 | C02 | Z7 | CONS | CCTV | Equipment | AFT |
|  | 5623 | **RHD4-02-002-Z7-RA03** |  | 2027-02-08 | 2028-04-02 |  |  |  |  |  |  |  |  |  |
|  | 5802 | **RHD4-02-002-Z7-RA03-Road Works - RD** |  | 2027-03-06 | 2028-04-02 |  |  |  |  |  |  |  |  |  |
|  | 5803 | **RHD4-02-002-RA03-(RD)-Subgrade** |  | 2027-03-06 | 2027-03-15 |  |  |  |  |  |  |  |  |  |
| RHD4CZ7RA03RD1100 |  | Supply, lay and compaction subgrade compacted thickness 300 mm for Roads - (ROUND-03)-Z7-RA03-RD | 6d | 2027-03-06 | 2027-03-15 | RHD4ENSDZ7APPEW100, RHD4ENSDZ7APPRD220, RHD4CZ7C02RD1100 SS, RHD4CZ7RA03TC3400 | Skilled labor [62.29 h]; Unskilled Labor [124.69 h]; Electrician [62.29 h]; Equipment Opreator [425.7 h]; Water Truck [20.58 h]; Roller compactor [31.15 h]; Grader [62.29 h]; Dump Truck [311.68 h]; Subgrade [2998.12 m3] | 56,964.28 | RA03 | Z7 | CONS | RD | Subgrade | bef |
|  | 5804 | **RHD4-02-002-RA03-(RD)-Aggregate Base Course** |  | 2027-03-16 | 2027-03-21 |  |  |  |  |  |  |  |  |  |
| RHD4CZ7RA03RD2100 |  | Supply, lay and compaction Aggregate base course compacted thickness 300 mmfor Roads - (ROUND-03)-Z7-RA03-RD | 5d | 2027-03-16 | 2027-03-21 | RHD4PRSHLDOSRD1000, RHD4PRSHLSTAGRD1000, RHD4CZ7RA03RD1100 | Skilled labor [23.09 h]; Unskilled Labor [46.18 h]; Equipment Opreator [292.3 h]; Water Truck [15.25 h]; Roller compactor [46.18 h]; Grader [46.18 h]; Dump Truck [184.7 h]; Aggregate Base Courses [1883.12 m3] | 107,337.84 | RA03 | Z7 | CONS | RD | ABC | bef |
|  | 5805 | **RHD4-02-002-RA03-(RD)-Bituminous base course Two Layers, including (MC1)&(RC2)** |  | 2027-03-22 | 2028-02-01 |  |  |  |  |  |  |  |  |  |
| RHD4CZ7RA03RD3100 |  | Supply, lay and Asphaltic base course including Prime Coat (MC1) for 1st Layer - (ROUND-03)-Z7-RA03-RD | 3d | 2027-03-22 | 2027-03-24 | RHD4PRSHLDOSRD1100, RHD4ENMSASPH2000, RHD4ENMSASPH2010, RHD4PRSHLSTAGRD1100, RHD4CZ7RA03RD2100 | Skilled labor [24.39 h]; Unskilled Labor [146.69 h]; Equipment Opreator [366.68 h]; Bobcat [24.39 h]; Roller compactor [24.39 h]; Asphalt Paver [24.39 h]; Rubber Compactor [48.9 h]; MC1/RC2 Sprinkler [24.39 h]; Dump Truck [220 h]; Bituminous base course (Grading I - Class A), including Prime coat (MC1) & tack coate (RC2) [894.37 m3] | 427,508.86 | RA03 | Z7 | CONS | RD | 150 mm | AFT |
| RHD4CZ7RA03RD3200 |  | Supply, lay and Asphaltic base course including Tack Coat (RC2) for 2nd Layer - (ROUND-03)-Z7-RA03-RD | 3d | 2028-01-30 | 2028-02-01 | RHD4PRSHLDOSRD1100, RHD4PRSHLSTAGRD1100, RHD4CZ7RA03CCTV6100 | Skilled labor [24.39 h]; Unskilled Labor [146.69 h]; Equipment Opreator [366.68 h]; Bobcat [24.39 h]; Roller compactor [24.39 h]; Asphalt Paver [24.39 h]; Rubber Compactor [48.9 h]; MC1/RC2 Sprinkler [24.39 h]; Dump Truck [220 h]; Bituminous base course (Grading I - Class A), including Prime coat (MC1) & tack coate (RC2) [894.37 m3] | 427,508.86 | RA03 | Z7 | CONS | RD | 150 mm | AFT |
|  | 5807 | **RHD4-02-002-RA03-(RD)-Precast Concrete Curb** |  | 2028-02-02 | 2028-02-07 |  |  |  |  |  |  |  |  |  |
| RHD4CZ7RA03RD5100 |  | Supply and installation Precast Concrete Kerb for Roads - (ROUND-03)-Z7-RA03-RD | 5d | 2028-02-02 | 2028-02-07 | RHD4PRSHLDOSRD1200, RHD4ENMSRD2000, RHD4ENMSRD2010, RHD4PRSHLSTAGRD1200, RHD4CZ7RA03RD3200 | Mason [142.99 h]; Skilled labor [47.7 h]; Unskilled Labor [142.99 h]; Equipment Opreator [95.4 h]; Bobcat [47.7 h]; Concrete Mixer Truck [47.7 h]; Precast Concrete Curbstone, type K1 [1970 m] | 108,350 | RA03 | Z7 | CONS | RD | Curbs | AFT |
|  | 5810 | **RHD4-02-002-RA03-(RD)-Traffic Signage** |  | 2028-02-08 | 2028-02-19 |  |  |  |  |  |  |  |  |  |
| RHD4CZ7RA03RD8100 |  | Installation of Traffic Signage for Road Network - (ROUND-03)-Z7-RA03-RD | 10d | 2028-02-08 | 2028-02-19 | RHD4PRSHLDOSRD1600, RHD4PRSHLSTAGRD1600, RHD4CZ7RA03RD5100 | Skilled labor [217.81 h]; Unskilled Labor [108.9 h]; Electrician [54.45 h]; Equipment Opreator [43.56 h]; Boom Truck [21.78 h]; Concrete Mixer Truck [21.78 h]; Traffic signs, ground mounted, 1 Sheet Aluminium, (breakaway)Single post [15 nr]; Traffic signs, ground mounted, 2 Sheets Aluminium, (breakaway)Single post [12 nr]; Traffic signs, ground mounted, 1 Sheets Aluminium, (breakaway)Double post [4 nr] | 47,814 | RA03 | Z7 | CONS | RD | Traffic Signage | AFT |

| ID | WBS | Activity | Duration | Start | Finish | Predecessors | Resources | Cost | RDH4-01-001-Road and Block Names-1 | RDH4-01-001-Zones-1 | RDH4-01-001-Phases-1 | RDH4-01-001-Networks-1 | RDH4-01-001-Work Method-1 | RDH4-01-001-MENEM |
| --- | --- | --- | --- | --- | --- | --- | --- | --- | --- | --- | --- | --- | --- | --- |
|  | 5808 | **RHD4-02-002-RA03-(RD)-Precast Interlocking Block Pavers** |  |  |  |  |  |  |  |  |  |  |  |  |
|  | 5806 | **RHD4-02-002-RA03-(RD)-Bituminous concrete wearing course including tack coat (RC2)** |  | 2028-02-20 | 2028-02-21 |  |  |  |  |  |  |  |  |  |
| RHD4CZ7RA03RD4100 |  | Supply, lay and compaction Asphaltic wearing course including tack Coat (RC2)for Road Network - (ROUND-03)-Z7-RA03-RD | 2d | 2028-02-20 | 2028-02-21 | RHD4CZ7RA03RD5100, RHD4CZ7RA03RD8100 | Skilled labor [9.47 h]; Unskilled Labor [56.63 h]; Equipment Opreator [141.68 h]; Bobcat [9.47 h]; Roller compactor [9.47 h]; Asphalt Paver [9.47 h]; Rubber Compactor [18.84 h]; MC1/RC2 Sprinkler [9.47 h]; Dump Truck [85.05 h]; Bituminous concrete wearing course, (Grading I - Class A), including tack coat (RC2) [450.48 m3] | 244,610.64 | RA03 | Z7 | CONS | RD | 50 mm | AFT |
|  | 5811 | **RHD4-02-002-RA03-(RD)-Speed Table and Wheel Stopper** |  | 2028-02-23 | 2028-03-11 |  |  |  |  |  |  |  |  |  |
| RHD4CZ7RA03RD9100 |  | Installation for Speed Bump for Road Network - (ROUND-03)-Z7-RA03-RD | 12d | 2028-02-23 | 2028-03-11 | RHD4CZ7RA03RD4100 | Mason [373.1 h]; Skilled labor [124.37 h]; Unskilled Labor [248.74 h]; Equipment Opreator [24.8 h]; Boom Truck [24.8 h]; SPEED TABLE [799.38 m2] | 98,323.74 | RA03 | Z7 | CONS | RD | Speed Bump | AFT |
|  | 5809 | **RHD4-02-002-RA03-(RD)-Pavement Marking** |  | 2028-03-28 | 2028-04-02 |  |  |  |  |  |  |  |  |  |
| RHD4CZ7RA03RD7100 |  | Pavement Markings for Road Network - (ROUND-03)-Z7-RA03-RD | 5d | 2028-03-28 | 2028-04-02 | RHD4PRSHLDOSRD1500, RHD4PRSHLSTAGRD1500, RHD4CZ7RA03RD9100, RHD4CZ5A014RD7100 | Skilled labor [44.43 h]; Unskilled Labor [88.87 h]; Equipment Opreator [44.43 h]; Road Marking Machine [44.43 h]; Retroreflective Thermoplastic White Traffic Markings [360.59 m2]; Retroreflective Thermoplastic Yellow, Traffic Markings [385.95 m2]; Retroreflective raised pavement markers (cat eyes) [316 nr] | 33,886.74 | RA03 | Z7 | CONS | RD | Pavement Marking | AFT |
|  | 5627 | **RHD4-02-002-Z7-RA03-Storm Network - ST** |  |  |  |  |  |  |  |  |  |  |  |  |
|  | 5646 | **RHD4-02-002-RA03-(ST)-MH Works - 2000 mm diameter** |  |  |  |  |  |  |  |  |  |  |  |  |
|  | 5645 | **RHD4-02-002-RA03-(ST)-MH Works - 1500 mm diameter** |  |  |  |  |  |  |  |  |  |  |  |  |
|  | 5644 | **RHD4-02-002-RA03-(ST)-MH Works - 1200 mm diameter** |  |  |  |  |  |  |  |  |  |  |  |  |
|  | 5635 | **RHD4-02-002-RA03-(ST)-GRP Pipes - 1100 mm diameter** |  |  |  |  |  |  |  |  |  |  |  |  |
|  | 5633 | **RHD4-02-002-RA03-(ST)-GRP Pipes - 900 mm diameter** |  |  |  |  |  |  |  |  |  |  |  |  |
|  | 5632 | **RHD4-02-002-RA03-(ST)-GRP Pipes - 800 mm diameter** |  |  |  |  |  |  |  |  |  |  |  |  |
|  | 5629 | **RHD4-02-002-RA03-(ST)-GRP Pipes - 500 mm diameter** |  |  |  |  |  |  |  |  |  |  |  |  |
|  | 5643 | **RHD4-02-002-RA03-(ST)-UPVC Pipes - 400 mm diameter** |  |  |  |  |  |  |  |  |  |  |  |  |
|  | 5642 | **RHD4-02-002-RA03-(ST)-UPVC Pipes - 300 mm diameter** |  |  |  |  |  |  |  |  |  |  |  |  |
|  | 5650 | **RHD4-02-002-RA03-(ST)-Concrete Encasement** |  |  |  |  |  |  |  |  |  |  |  |  |
|  | 5651 | **RHD4-02-002-Z7-RA03-Catch Basin - ST** |  |  |  |  |  |  |  |  |  |  |  |  |
|  | 5652 | **RHD4-02-002-RA03-(ST)-Single Catch Basin Works** |  |  |  |  |  |  |  |  |  |  |  |  |
|  | 5653 | **RHD4-02-002-RA03-(ST)-Double Catch Basin Works** |  |  |  |  |  |  |  |  |  |  |  |  |
|  | 5762 | **RHD4-02-002-Z7-RA03-Medium Voltage Network - MV** |  | 2027-03-25 | 2027-04-26 |  |  |  |  |  |  |  |  |  |
|  | 5765 | **RHD4-02-002-RA03-(MV)-Medium Voltage cables 3Cx 500 mm²** |  |  |  |  |  |  |  |  |  |  |  |  |
|  | 1979 | **RHD4-02-002-RA03-(MV)-Medium Voltage cable trench** |  |  |  |  |  |  |  |  |  |  |  |  |
|  | 5766 | **RHD4-02-002-RA03-(MV)-Medium Voltage cables 3Cx 50 mm²** |  | 2027-03-25 | 2027-03-29 |  |  |  |  |  |  |  |  |  |
| RHD4CZ7RA03MV3101 |  | Installation of Medium Voltage Cables 3Cx 50 mm² - (ROUND-03)-Z7-RA03-MV | 2d | 2027-03-25 | 2027-03-27 | RHD4PRSHLDOSMV1200, RHD4ENMSMV2000, RHD4ENMSMV2010, RHD4PRSHLSTAGMV1200, RHD4CZ7RA03RD3100 | Unskilled Labor [1.74 h]; Electrician [0.87 h]; Equipment Opreator [1.31 h]; Boom Truck [0.44 h]; Cable Laying Machine [0.87 h]; Single Core Copper Cable 13.8 kV 3Cx 50 mm² Cu/XLPE/PVC / Unarmored [3.6 m] | 403.2 | RA03 | Z7 | CONS | MV | Installation | AFT |
| RHD4CZ7RA03MV3301 |  | Testing of Medium Voltage Cables 3Cx 50 mm² - (ROUND-03)-Z7-RA03-MV | 2d | 2027-03-28 | 2027-03-29 | RHD4CZ7RA03MV3101 | Unskilled Labor [0.33 h]; Electrician [0.22 h]; Single Core Copper Cable 13.8 kV 3Cx 50 mm² Cu/XLPE/PVC / Unarmored [0.4 m] | 44.8 | RA03 | Z7 | CONS | MV | Testing | AFT |

| ID | WBS | Activity | Duration | Start | Finish | Predecessors | Resources | Cost | RDH4-01-001-Road and Block Names-1 | RDH4-01-001-Zones-1 | RDH4-01-001-Phases-1 | RDH4-01-001-Networks-1 | RDH4-01-001-Work Method-1 | RDH4-01-001-MENEM |
| --- | --- | --- | --- | --- | --- | --- | --- | --- | --- | --- | --- | --- | --- | --- |
|  | 5768 | **RHD4-02-002-RA03-(MV)-Unit Substations** |  | 2027-03-30 | 2027-04-26 |  |  |  |  |  |  |  |  |  |
| RHD4CZ7RA03MV5100 |  | Excavation for Unit Substations for Medium Voltage Network - (ROUND-03)-Z7-RA03-MV | 2d | 2027-03-30 | 2027-03-31 | RHD4ENSDZ7APPMV150, RHD4CZ7RA03MV3301 | Skilled labor [21.78 h]; Unskilled Labor [21.78 h]; Equipment Opreator [43.56 h]; Excavator-Poclain [21.78 h]; Dump Truck [21.78 h]; Unit Substation 13.8/0.4 K V, 500kVA ,Including concrete foundations and fencing, According to the specifications and standards of SEC [0.1 Unit]; Ring Main Unit RMU, 13.8KV, According to the specifications and standards of SEC [0.1 Unit] | 12,257 | RA03 | Z7 | CONS | MV | Excavation | AFT |
| RHD4CZ7RA03MV5200 |  | Concrete Base Placement for Unit Substations for Medium Voltage Network - (ROUND-03)-Z7-RA03-MV | 2d | 2027-04-01 | 2027-04-03 | RHD4CZ7RA03MV5100 | Skilled labor [21.78 h]; Unskilled Labor [21.78 h]; Equipment Opreator [21.78 h]; Boom Truck [21.78 h]; Unit Substation 13.8/0.4 K V, 500kVA ,Including concrete foundations and fencing, According to the specifications and standards of SEC [0.15 Unit]; Ring Main Unit RMU, 13.8KV, According to the specifications and standards of SEC [0.15 Unit] | 18,385.5 | RA03 | Z7 | CONS | MV | Concrete Base Placement | AFT |
| RHD4CZ7RA03MV5300 |  | Installation for Fences and doors for Medium Voltage Network - (ROUND-03)-Z7-RA03-MV | 5d | 2027-04-04 | 2027-04-08 | RHD4CZ7RA03MV5200 | Skilled labor [54.45 h]; Unskilled Labor [54.45 h]; Equipment Opreator [65.34 h]; Excavator-Poclain [10.89 h]; Boom Truck [54.45 h]; Unit Substation 13.8/0.4 K V, 500kVA ,Including concrete foundations and fencing, According to the specifications and standards of SEC [0.1 Unit]; Ring Main Unit RMU, 13.8KV, According to the specifications and standards of SEC [0.1 Unit] | 12,257 | RA03 | Z7 | CONS | MV | Fence Installation | AFT |
| RHD4CZ7RA03MV5400 |  | Installation for Unit Substations for Medium Voltage Network - (ROUND-03)-Z7-RA03-MV | 4d | 2027-04-22 | 2027-04-26 | RHD4PRLOLSTAGMV1601, RHD4PRLOLSTAGMV1602, RHD4CZ7RA03MV5300 | Skilled labor [43.56 h]; Unskilled Labor [87.12 h]; Electrician [87.12 h]; Unit Substation 13.8/0.4 K V, 500kVA ,Including concrete foundations and fencing, According to the specifications and standards of SEC [0.65 Unit]; Ring Main Unit RMU, 13.8KV, According to the specifications and standards of SEC [0.65 Unit] | 79,670.5 | RA03 | Z7 | CONS | MV | Substation Installation | AFT |
|  | 5769 | **RHD4-02-002-Z7-RA03-Low Voltage Network - LV** |  | 2027-11-22 | 2027-12-07 |  |  |  |  |  |  |  |  |  |
|  | 5770 | **RHD4-02-002-RA03-(LV)-Low Voltage duct banks** |  |  |  |  |  |  |  |  |  |  |  |  |
|  | 5771 | **RHD4-02-002-RA03-(LV)-Low Voltage Drawpit** |  |  |  |  |  |  |  |  |  |  |  |  |
|  | 5772 | **RHD4-02-002-RA03-(LV)-Low Voltage cables** |  | 2027-11-22 | 2027-11-30 |  |  |  |  |  |  |  |  |  |
| RHD4CZ7RA03LV3100 |  | Excavation for Low Voltage Cables for Low Voltage Network - (ROUND-03)-Z7-RA03-LV | 2d | 2027-11-22 | 2027-11-23 | RHD4ENSDZ7APPLV160, RHD4CZ7RA03MV5400, RHD4CZ7L015SL5100 | Skilled labor [0.44 h]; Unskilled Labor [0.87 h]; Equipment Opreator [0.87 h]; Excavator-Poclain [0.44 h]; Boom Truck [0.44 h]; Cable, Copper 4x70mm2/ CU/XLPE/PVC [2.09 m] | 352.47 | RA03 | Z7 | CONS | LV | Excavation | AFT |
| RHD4CZ7RA03LV3200 |  | Cable Laying of Low Voltage Cables for Low Voltage Network - (ROUND-03)-Z7-RA03-LV | 2d | 2027-11-24 | 2027-11-25 | RHD4PRSHLDOSLV1100, RHD4ENMSLV2000, RHD4ENMSLV2010, RHD4PRSHLSTAGLV1100, RHD4CZ7RA03LV3100 | Skilled labor [0.33 h]; Unskilled Labor [1.52 h]; Electrician [0.8 h]; Equipment Opreator [1.09 h]; Boom Truck [0.33 h]; Cable Laying Machine [0.8 h]; Cable, Copper 4x70mm2/ CU/XLPE/PVC [6.26 m] | 1,057.4 | RA03 | Z7 | CONS | LV | Cable Laying | AFT |
| RHD4CZ7RA03LV3300 |  | Warning tape and Backfill for Low Voltage Cables for Low Voltage Network - (ROUND-03)-Z7-RA03-LV | 2d | 2027-11-27 | 2027-11-28 | RHD4CZ7RA03LV3200 | Skilled labor [0.33 h]; Unskilled Labor [1.52 h]; Electrician [0.8 h]; Equipment Opreator [0.33 h]; Boom Truck [0.33 h]; Cable, Copper 4x70mm2/ CU/XLPE/PVC [1.56 m] | 264.35 | RA03 | Z7 | CONS | LV | Warning tape and Backfill | AFT |
| RHD4CZ7RA03LV3400 |  | Testing of Low Voltage Cables for Low Voltage Network - (ROUND-03)-Z7-RA03-LV | 2d | 2027-11-29 | 2027-11-30 | RHD4CZ7RA03LV3300 | Skilled labor [0.22 h]; Unskilled Labor [0.87 h]; Electrician [0.44 h]; Equipment Opreator [0.22 h]; Boom Truck [0.22 h]; Cable, Copper 4x70mm2/ CU/XLPE/PVC [0.52 m] | 88.12 | RA03 | Z7 | CONS | LV | Testing | AFT |
|  | 5773 | **RHD4-02-002-RA03-(LV)-Low Voltage Distribution Pillars** |  | 2027-12-01 | 2027-12-07 |  |  |  |  |  |  |  |  |  |
| RHD4CZ7RA03LV4100 |  | Leveling for Distribution Pillars for Low Voltage Network - (ROUND-03)-Z7-RA03-LV | 2d | 2027-12-01 | 2027-12-02 | RHD4CZ7RA03LV3400 | Skilled labor [21.78 h]; Unskilled Labor [43.56 h]; Equipment Opreator [8.71 h]; Excavator-Poclain [4.36 h]; Boom Truck [4.36 h]; 0.6/1 KV Low Voltage Distribution Pillars with main breaker MCCB type and 5 Outgoing feeders MCCB type [0.15 Unit]; 0.6/1 KV Low Voltage Distribution Panels for Industrial UPS - Cameras [0.15 Unit]; Supply and installation of KWH meter mounting frame including concrete block wall for installation of KWH meter according to the standards and specifications of SEC [0.3 Unit] | 5,993.7 | RA03 | Z7 | CONS | LV | Leveling | AFT |
| RHD4CZ7RA03LV4200 |  | Lean Concrete for Distribution Pillars for Low Voltage Network - (ROUND-03)-Z7-RA03-LV | 2d | 2027-12-04 | 2027-12-05 | RHD4CZ7RA03LV4100 | Skilled labor [14.48 h]; Unskilled Labor [29.08 h]; Equipment Opreator [5.77 h]; Concrete Mixer Truck [2.94 h]; Concrete Pump [2.94 h]; 0.6/1 KV Low Voltage Distribution Pillars with main breaker MCCB type and 5 Outgoing feeders MCCB type [0.25 Unit]; 0.6/1 KV Low Voltage Distribution Panels for Industrial UPS - Cameras [0.25 Unit]; Supply and installation of KWH meter mounting frame including concrete block wall for installation of KWH meter according to the standards and specifications of SEC [0.5 Unit] | 9,989.5 | RA03 | Z7 | CONS | LV | Lean Concrete | AFT |
| RHD4CZ7RA03LV4300 |  | Installation of Distribution Pillars for Low Voltage Network - (ROUND-03)-Z7-RA03-LV | 2d | 2027-12-06 | 2027-12-07 | RHD4PRSHLDOSLV1200, RHD4PRSHLDOSLV1300, RHD4PRSHLSTAGLV1200, RHD4PRSHLSTAGLV1300, RHD4CZ7RA03LV4200 | Skilled labor [21.78 h]; Unskilled Labor [87.12 h]; Electrician [43.56 h]; Equipment Opreator [21.78 h]; Boom Truck [21.78 h]; 0.6/1 KV Low Voltage Distribution Pillars with main breaker MCCB type and 5 Outgoing feeders MCCB type [0.6 Unit]; 0.6/1 KV Low Voltage Distribution Panels for Industrial UPS - Cameras [0.6 Unit]; Supply and installation of KWH meter mounting frame including concrete block wall for installation of KWH meter according to the standards and specifications of SEC [1.2 Unit] | 23,974.8 | RA03 | Z7 | CONS | LV | Installation | AFT |
|  | 5774 | **RHD4-02-002-RA03-(LV)-Low Voltage Distribution Pillars Earthing** |  |  |  |  |  |  |  |  |  |  |  |  |
|  | 5775 | **RHD4-02-002-Z7-RA03-Street Lighting Network - SL** |  | 2027-09-06 | 2027-10-30 |  |  |  |  |  |  |  |  |  |
|  | 5776 | **RHD4-02-002-RA03-(SL)-Street Lighting duct banks** |  | 2027-09-06 | 2027-09-25 |  |  |  |  |  |  |  |  |  |
| RHD4CZ7RA03SL2100 |  | Excavation of Duct Banks for Street Lighting Network - (ROUND-03)-Z7-RA03-SL | 4d | 2027-09-06 | 2027-09-09 | RHD4ENSDZ7APPSL170, RHD4CZ7RA03RA3000, RHD4CZ7C02SL2400 | Skilled labor [36.05 h]; Unskilled Labor [36.05 h]; Equipment Opreator [72.09 h]; Excavator-Poclain [36.05 h]; Dump Truck [36.05 h]; Road Crossing Duct for Street Lighting cables UPVC (2x?110mm) [3.29 m]; Road Crossing Duct for Street Lighting cables UPVC (4x?110mm) [1.68 m] | 1,106.58 | RA03 | Z7 | CONS | SL | Excavation | bef |
| RHD4CZ7RA03SL2200 |  | Installation of Duct Banks for Street Lighting Network - (ROUND-03)-Z7-RA03-SL | 5d | 2027-09-11 | 2027-09-15 | RHD4PRSHLDOSSL1000, RHD4PRSHLSTAGSL1000, RHD4CZ7RA03SL2100 | Carpenter [5.45 h]; Skilled labor [54.02 h]; Unskilled Labor [54.02 h]; Steel Fixer [5.45 h]; Road Crossing Duct for Street Lighting cables UPVC (2x?110mm) [3.29 m]; Road Crossing Duct for Street Lighting cables UPVC (4x?110mm) [1.68 m] | 1,106.58 | RA03 | Z7 | CONS | SL | Installing | bef |
| RHD4CZ7RA03SL2300 |  | Pouring of Duct Banks for Street Lighting Network - (ROUND-03)-Z7-RA03-SL | 4d | 2027-09-16 | 2027-09-20 | RHD4CZ7RA03SL2200 | Skilled labor [36.05 h]; Unskilled Labor [36.05 h]; Equipment Opreator [14.4 h]; Concrete Mixer Truck [7.2 h]; Concrete Pump [7.2 h]; Road Crossing Duct for Street Lighting cables UPVC (2x?110mm) [21.38 m]; Road Crossing Duct for Street Lighting cables UPVC (4x?110mm) [10.89 m] | 7,192.75 | RA03 | Z7 | CONS | SL | Pouring | bef |
| RHD4CZ7RA03SL2400 |  | Backfilling of Duct Banks for Street Lighting Network - (ROUND-03)-Z7-RA03-SL | 3d | 2027-09-21 | 2027-09-25 | RHD4CZ7RA03SL2300 | Skilled labor [27.01 h]; Unskilled Labor [27.01 h]; Equipment Opreator [10.78 h]; Excavator-Poclain [10.78 h]; Road Crossing Duct for Street Lighting cables UPVC (2x?110mm) [4.93 m]; Road Crossing Duct for Street Lighting cables UPVC (4x?110mm) [2.51 m] | 1,659.87 | RA03 | Z7 | CONS | SL | Backfilling | bef |

| ID | WBS | Activity | Duration | Start | Finish | Predecessors | Resources | Cost | RDH4-01-001-Road and Block Names-1 | RDH4-01-001-Zones-1 | RDH4-01-001-Phases-1 | RDH4-01-001-Networks-1 | RDH4-01-001-Work Method-1 | RDH4-01-001-MENEM |
| --- | --- | --- | --- | --- | --- | --- | --- | --- | --- | --- | --- | --- | --- | --- |
|  | 5777 | **RHD4-02-002-RA03-(SL)-Street Lighting Drawpit** |  | 2027-09-26 | 2027-09-29 |  |  |  |  |  |  |  |  |  |
| RHD4CZ7RA03SL5100 |  | Excavation of Drawpit size 600x600x900mm for Street Lighting Network - (ROUND-03)-Z7-RA03-SL | 2d | 2027-09-26 | 2027-09-27 | RHD4ENSDZ7APPSL170, RHD4CZ7RA03SL2400 | Skilled labor [3.59 h]; Unskilled Labor [3.59 h]; Equipment Opreator [2.94 h]; Excavator-Poclain [1.42 h]; Dump Truck [1.42 h]; Drawpit with medium duty steel cover, size600x600x900mm, [0.6 Unit] | 1,470.6 | RA03 | Z7 | CONS | SL | Excavation | AFT |
| RHD4CZ7RA03SL5200 |  | Installation of Drawpit size 600x600x900mm for Street Lighting Network - (ROUND-03)-Z7-RA03-SL | 2d | 2027-09-28 | 2027-09-29 | RHD4PRSHLDOSSL1400, RHD4PRSHLSTAGSL1400, RHD4CZ7RA03SL5100 | Skilled labor [3.59 h]; Unskilled Labor [3.59 h]; Equipment Opreator [1.42 h]; Boom Truck [1.42 h]; Drawpit with medium duty steel cover, size600x600x900mm, [3.4 Unit] | 8,333.4 | RA03 | Z7 | CONS | SL | Installation | AFT |
|  | 5778 | **RHD4-02-002-RA03-(SL)-Street Lighting cables** |  | 2027-09-30 | 2027-10-09 |  |  |  |  |  |  |  |  |  |
| RHD4CZ7RA03SL3100 |  | Excavation for Street Lighting Cables for Street Lighting Network - (ROUND-03)-Z7-RA03-SL | 2d | 2027-09-30 | 2027-10-02 | RHD4ENSDZ7APPSL170, RHD4CZ7RA03SL5200 | Skilled labor [18.95 h]; Unskilled Labor [37.9 h]; Equipment Opreator [37.9 h]; Excavator-Poclain [18.95 h]; Boom Truck [18.95 h]; Cable, Copper 4x16mm2/ CU/XLPE/SWA/PVC + 1x16mm2 CU/PVC [14.15 m]; Cable, Copper 4x10mm2/ CU/XLPE/SWA/PVC + 1x10mm2 CU/PVC [72.91 m] | 4,520.4 | RA03 | Z7 | CONS | SL | Excavation | AFT |
| RHD4CZ7RA03SL3200 |  | Cable Laying of Street Lighting Cables for Street Lighting Network - (ROUND-03)-Z7-RA03-SL | 2d | 2027-10-03 | 2027-10-04 | RHD4PRSHLDOSSL1100, RHD4ENMSSL2000, RHD4ENMSSL2010, RHD4PRSHLSTAGSL1100, RHD4CZ7RA03SL3100 | Skilled labor [15.79 h]; Unskilled Labor [63.2 h]; Electrician [31.58 h]; Equipment Opreator [47.37 h]; Boom Truck [15.79 h]; Cable Laying Machine [31.58 h]; Cable, Copper 4x16mm2/ CU/XLPE/SWA/PVC + 1x16mm2 CU/PVC [42.45 m]; Cable, Copper 4x10mm2/ CU/XLPE/SWA/PVC + 1x10mm2 CU/PVC [218.72 m] | 13,561.19 | RA03 | Z7 | CONS | SL | Cable Laying | AFT |
| RHD4CZ7RA03SL3300 |  | Warning tape and Backfill for Street Lighting Cables for Street Lighting Network - (ROUND-03)-Z7-RA03-SL | 2d | 2027-10-05 | 2027-10-06 | RHD4CZ7RA03SL3200 | Skilled labor [15.79 h]; Unskilled Labor [63.2 h]; Electrician [31.58 h]; Equipment Opreator [15.79 h]; Boom Truck [15.79 h]; Cable, Copper 4x16mm2/ CU/XLPE/SWA/PVC + 1x16mm2 CU/PVC [10.61 m]; Cable, Copper 4x10mm2/ CU/XLPE/SWA/PVC + 1x10mm2 CU/PVC [54.68 m] | 3,390.13 | RA03 | Z7 | CONS | SL | Warning tape and Backfill | AFT |
| RHD4CZ7RA03SL3400 |  | Testing of Street Lighting Cables for Street Lighting Network - (ROUND-03)-Z7-RA03-SL | 2d | 2027-10-07 | 2027-10-09 | RHD4CZ7RA03SL3300 | Skilled labor [9.47 h]; Unskilled Labor [37.9 h]; Electrician [18.95 h]; Equipment Opreator [9.47 h]; Boom Truck [9.47 h]; Cable, Copper 4x16mm2/ CU/XLPE/SWA/PVC + 1x16mm2 CU/PVC [3.54 m]; Cable, Copper 4x10mm2/ CU/XLPE/SWA/PVC + 1x10mm2 CU/PVC [18.23 m] | 1,130.27 | RA03 | Z7 | CONS | SL | Testing | AFT |
|  | 5779 | **RHD4-02-002-RA03-(SL)-Street Lighting Poles** |  | 2027-10-10 | 2027-10-20 |  |  |  |  |  |  |  |  |  |
| RHD4CZ7RA03SL1100 |  | Excavation for RC Base for Lighting Poles for Street Lighting Network - (ROUND-03)-Z7-RA03-SL | 2d | 2027-10-10 | 2027-10-11 | RHD4ENSDZ7APPSL170, RHD4CZ7RA03SL3400 | Skilled labor [7.95 h]; Unskilled Labor [7.95 h]; Equipment Opreator [16 h]; Excavator-Poclain [7.95 h]; Dump Truck [7.95 h]; Lighting poles single arms, height of ( 10 ) meters [1.1 Unit] | 3,747.7 | RA03 | Z7 | CONS | SL | Excavation | AFT |
| RHD4CZ7RA03SL1200 |  | Installation for RC Base for Lighting Poles for Street Lighting Network - (ROUND-03)-Z7-RA03-SL | 2d | 2027-10-12 | 2027-10-13 | RHD4CZ7RA03SL1100 | Skilled labor [7.95 h]; Unskilled Labor [7.95 h]; Equipment Opreator [16 h]; Excavator-Poclain [7.95 h]; Dump Truck [7.95 h]; Lighting poles single arms, height of ( 10 ) meters [2.75 Unit] | 9,369.25 | RA03 | Z7 | CONS | SL | RC Base | AFT |
| RHD4CZ7RA03SL1300 |  | Backfill for RC Base for Lighting Poles for Street Lighting Network - (ROUND-03)-Z7-RA03-SL | 2d | 2027-10-14 | 2027-10-16 | RHD4CZ7RA03SL1200 | Skilled labor [7.95 h]; Unskilled Labor [7.95 h]; Equipment Opreator [16 h]; Excavator-Poclain [7.95 h]; Dump Truck [7.95 h]; Lighting poles single arms, height of ( 10 ) meters [0.55 Unit] | 1,873.85 | RA03 | Z7 | CONS | SL | Backfill | AFT |
| RHD4CZ7RA03SL1400 |  | Installation for Lighting Poles for Street Lighting Network - (ROUND-03)-Z7-RA03-SL | 2d | 2027-10-17 | 2027-10-18 | RHD4PRSHLDOSSL1200, RHD4ENMSSL2000, RHD4ENMSSL2010, RHD4PRSHLSTAGSL1200, RHD4CZ7RA03SL1300 | Skilled labor [12 h]; Unskilled Labor [12 h]; Electrician [12 h]; Equipment Opreator [12 h]; Boom Truck [12 h]; Lighting poles single arms, height of ( 10 ) meters [6.6 Unit] | 22,486.2 | RA03 | Z7 | CONS | SL | Poles Installation | AFT |
| RHD4CZ7RA03SL1500 |  | Luminaire Installation for Lighting Poles for Street Lighting Network - (ROUND-03)-Z7-RA03-SL | 2d | 2027-10-19 | 2027-10-20 | RHD4PRSHLDOSSL1300, RHD4PRSHLSTAGSL1300, RHD4CZ7RA03SL1400 | Unskilled Labor [16 h]; Electrician [7.95 h]; Equipment Opreator [1.6 h]; Boom Truck [3.16 h]; Street Lighting( LED) Luminaire of Output ?10898 lumen [11 Unit] | 6,468 | RA03 | Z7 | CONS | SL | Luminaire Installation | AFT |
|  | 5780 | **RHD4-02-002-RA03-(SL)-Street Lighting Feeder Pillars** |  | 2027-10-21 | 2027-10-27 |  |  |  |  |  |  |  |  |  |
| RHD4CZ7RA03SL4100 |  | Leveling for Distribution Pillars for Street Lighting Network - (ROUND-03)-Z7-RA03-SL | 2d | 2027-10-21 | 2027-10-23 | RHD4CZ7RA03SL1500 | Skilled labor [10.89 h]; Unskilled Labor [21.78 h]; Equipment Opreator [4.36 h]; Excavator-Poclain [2.18 h]; Boom Truck [2.18 h]; 0.6/1 KV Steet Lighting Feeder Pillar [0.15 Unit] | 3,438.15 | RA03 | Z7 | CONS | SL | Leveling | AFT |
| RHD4CZ7RA03SL4200 |  | Lean Concrete for Distribution Pillars for Street Lighting Network - (ROUND-03)-Z7-RA03-SL | 2d | 2027-10-24 | 2027-10-25 | RHD4CZ7RA03SL4100 | Skilled labor [10.89 h]; Unskilled Labor [21.78 h]; Equipment Opreator [4.36 h]; Concrete Mixer Truck [2.18 h]; Concrete Pump [2.18 h]; 0.6/1 KV Steet Lighting Feeder Pillar [0.25 Unit] | 5,730.25 | RA03 | Z7 | CONS | SL | Lean Concrete | AFT |
| RHD4CZ7RA03SL4300 |  | Installation of Distribution Pillars for Street Lighting Network - (ROUND-03)-Z7-RA03-SL | 2d | 2027-10-26 | 2027-10-27 | RHD4CZ7RA03SL4200 | Skilled labor [10.89 h]; Unskilled Labor [43.56 h]; Electrician [21.78 h]; Equipment Opreator [10.89 h]; Boom Truck [10.89 h]; 0.6/1 KV Steet Lighting Feeder Pillar [0.6 Unit] | 13,752.6 | RA03 | Z7 | CONS | SL | Installation | AFT |
|  | 5781 | **RHD4-02-002-RA03-(SL)-Street Lighting Earthing System** |  | 2027-10-28 | 2027-10-30 |  |  |  |  |  |  |  |  |  |
| RHD4CZ7RA03SL6100 |  | Installation of Earthing for Lighting Poles and Fedder Pillers for Street Lighting Network - (ROUND-03)-Z7-RA03-SL | 2d | 2027-10-28 | 2027-10-30 | RHD4ENMSER2000, RHD4ENMSER2010, RHD4CZ7RA03SL4300 | Skilled labor [0.8 h]; Unskilled Labor [0.8 h]; Equipment Opreator [1.42 h]; Excavator-Poclain [0.8 h]; Dump Truck [0.8 h]; Street Lighting Feeder pillars - ER [1 Unit] | 1,128 | RA03 | Z7 | CONS | SL | Installation | AFT |
|  | 489 | **RHD4-02-002-Z7-RA03-Telecommunications Network - TC** |  | 2027-02-08 | 2027-11-16 |  |  |  |  |  |  |  |  |  |
|  | 490 | **RHD4-02-002-C081-(TC)-Telecommunications Ducts** |  | 2027-10-31 | 2027-11-16 |  |  |  |  |  |  |  |  |  |
| RHD4CZ7RA03TC2100 |  | Excavation of HDPE Ducts for Telecom Network - (ROUND-03)-Z7-RA03-TC | 3d | 2027-10-31 | 2027-11-02 | RHD4CZ7RA03SL6100 | Skilled labor [100 h]; Unskilled Labor [100 h]; Equipment Opreator [199.92 h]; Excavator-Poclain [100 h]; Dump Truck [100 h]; (6*50mm) HDPE ducts -TC [110.02 m] | 9,681.76 | C081 | Z1 | CONS | TC | Excavation | AFT |
| RHD4CZ7RA03TC2200 |  | Installation of HDPE Ducts for Telecom Network - (ROUND-03)-Z7-RA03-TC | 5d | 2027-11-03 | 2027-11-09 | RHD4CZ7RA03TC2100 | Carpenter [15.04 h]; Skilled labor [150 h]; Unskilled Labor [150 h]; Steel Fixer [15.04 h]; (6*50mm) HDPE ducts -TC [357.57 m] | 31,466.16 | C081 | Z1 | CONS | TC | Installing | AFT |
| RHD4CZ7RA03TC2400 |  | Backfilling of HDPE Ducts for Telecom Network - (ROUND-03)-Z7-RA03-TC | 3d | 2027-11-13 | 2027-11-16 | RHD4CZ7RA03TC2200, RHD4CZ7RA03TC5200 | Skilled labor [100 h]; Unskilled Labor [100 h]; Equipment Opreator [40 h]; Excavator-Poclain [40 h]; (6*50mm) HDPE ducts -TC [82.52 m] | 7,261.76 | C081 | Z1 | CONS | TC | Backfilling | AFT |

| ID | WBS | Activity | Duration | Start | Finish | Predecessors | Resources | Cost | RDH4-01-001-Road and Block Names-1 | RDH4-01-001-Zones-1 | RDH4-01-001-Phases-1 | RDH4-01-001-Networks-1 | RDH4-01-001-Work Method-1 | RDH4-01-001-MENEM |
| --- | --- | --- | --- | --- | --- | --- | --- | --- | --- | --- | --- | --- | --- | --- |
|  | 491 | **RHD4-02-002-C081-(TC)-Telecommunications Manholes** |  | 2027-11-03 | 2027-11-11 |  |  |  |  |  |  |  |  |  |
| RHD4CZ7RA03TC5100 |  | Excavation for Manholes for Telecom Network - (ROUND-03)-Z7-RA03-TC | 4d | 2027-11-03 | 2027-11-07 | RHD4CZ7RA03TC2100, RHD4CZ7RA03TC2100 FF | Skilled labor [13.6 h]; Unskilled Labor [13.6 h]; Equipment Opreator [10.88 h]; Excavator-Poclain [5.44 h]; Dump Truck [5.44 h]; Manhole Type 1 - TC [0.45 nr]; Manhole Type 2 - TC [0.3 nr] | 5,055.75 | C081 | Z1 | CONS | TC | Excavation | AFT |
| RHD4CZ7RA03TC5200 |  | Installation of Manholes for Telecom Network - (ROUND-03)-Z7-RA03-TC | 4d | 2027-11-08 | 2027-11-11 | RHD4CZ7RA03TC5100, RHD4CZ7RA03TC2200 SS | Skilled labor [13.6 h]; Unskilled Labor [13.6 h]; Equipment Opreator [5.44 h]; Boom Truck [5.44 h]; Manhole Type 1 - TC [2.55 nr]; Manhole Type 2 - TC [1.7 nr] | 28,649.25 | C081 | Z1 | CONS | TC | Installation | AFT |
|  | 5411 | **RHD4-02-002-C081-(TC)-Telecomminications Road Crossings** |  | 2027-02-08 | 2027-02-16 |  |  |  |  |  |  |  |  |  |
| RHD4CZ7RA03TC3100 |  | Excavation for Road Crossings for Telecom Network - (ROUND-03)-Z7-RA03-TC | 2d | 2027-02-08 | 2027-02-09 | RHD4PRSHLDOSTC1200 | Skilled labor [9.36 h]; Unskilled Labor [9.36 h]; Equipment Opreator [18.72 h]; Excavator-Poclain [9.36 h]; Dump Truck [9.36 h]; Road crossing ducts, (6*50mm) HDPE -TC [1.72 m] | 65.36 | C062 | Z6 | CONS | TC | Excavation | bef |
| RHD4CZ7RA03TC3200 |  | Installation of Road Crossings for Telecom Network - (ROUND-03)-Z7-RA03-TC | 2.01d | 2027-02-10 | 2027-02-13 | RHD4CZ7RA03TC3100 | Carpenter [1.2 h]; Skilled labor [12.56 h]; Unskilled Labor [12.56 h]; Steel Fixer [1.2 h]; Road crossing ducts, (6*50mm) HDPE -TC [1.72 m] | 65.36 | C062 | Z6 | CONS | TC | Installing | bef |
| RHD4CZ7RA03TC3300 |  | Pouring of Road Crossings for Telecom Network - (ROUND-03)-Z7-RA03-TC | 2.01d | 2027-02-13 | 2027-02-15 | RHD4CZ7RA03TC3200 | Skilled labor [12.56 h]; Unskilled Labor [12.56 h]; Equipment Opreator [5.04 h]; Concrete Mixer Truck [2.48 h]; Concrete Pump [2.48 h]; Road crossing ducts, (6*50mm) HDPE -TC [11.18 m] | 424.84 | C062 | Z6 | CONS | TC | Pouring | bef |
| RHD4CZ7RA03TC3400 |  | Backfilling of Road Crossings for Telecom Network - (ROUND-03)-Z7-RA03-TC | 2d | 2027-02-15 | 2027-02-16 | RHD4CZ7RA03TC3300 | Skilled labor [9.36 h]; Unskilled Labor [9.36 h]; Equipment Opreator [3.68 h]; Excavator-Poclain [3.68 h]; Road crossing ducts, (6*50mm) HDPE -TC [2.58 m] | 98.04 | C062 | Z6 | CONS | TC | Backfilling | bef |
|  | 5791 | **RHD4-02-002-Z7-RA03-Information and Communication Technologies - ICT** |  | 2027-10-31 | 2027-11-14 |  |  |  |  |  |  |  |  |  |
|  | 5792 | **RHD4-02-002-RA03-(ICT)-Information and Communication Technologies Ducts** |  | 2027-10-31 | 2027-11-14 |  |  |  |  |  |  |  |  |  |
| RHD4CZ7RA03ICT2100 |  | Excavation of HDPE Ducts for ICT Network - (ROUND-03)-Z7-RA03-ICT | 4d | 2027-10-31 | 2027-11-03 | RHD4ENSDZ7APPICT200, RHD4CZ7RA03SL6100 | Skilled labor [33.11 h]; Unskilled Labor [33.11 h]; Equipment Opreator [66.1 h]; Excavator-Poclain [33.11 h]; Dump Truck [33.11 h]; (2*50mm) HDPE ducts -ICT [82.9 m]; (2*50mm+2*32mm) HDPE ducts -ICT [7.04 m]; (2*32mm) HDPE ducts -ICT [1.17 m] | 3,696.86 | RA03 | Z7 | CONS | ICT | Excavation | AFT |
| RHD4CZ7RA03ICT2200 |  | Installation of HDPE Ducts for ICT Network - (ROUND-03)-Z7-RA03-ICT | 5d | 2027-11-04 | 2027-11-09 | RHD4PRSHLDOSICT1000, RHD4PRSHLSTAGICT1000, RHD4CZ7RA03ICT2100 | Carpenter [5.01 h]; Skilled labor [49.66 h]; Unskilled Labor [49.66 h]; Steel Fixer [5.01 h]; (2*50mm) HDPE ducts -ICT [269.43 m]; (2*50mm+2*32mm) HDPE ducts -ICT [22.88 m]; (2*32mm) HDPE ducts -ICT [3.8 m] | 12,014.71 | RA03 | Z7 | CONS | ICT | Installing | AFT |
| RHD4CZ7RA03ICT2400 |  | Backfilling of HDPE Ducts for ICT Network - (ROUND-03)-Z7-RA03-ICT | 4d | 2027-11-10 | 2027-11-14 | RHD4CZ7RA03ICT2200 | Skilled labor [33.11 h]; Unskilled Labor [33.11 h]; Equipment Opreator [13.18 h]; Excavator-Poclain [13.18 h]; (2*50mm) HDPE ducts -ICT [62.17 m]; (2*50mm+2*32mm) HDPE ducts -ICT [5.28 m]; (2*32mm) HDPE ducts -ICT [0.88 m] | 2,772.64 | RA03 | Z7 | CONS | ICT | Backfilling | AFT |
|  | 5782 | **RHD4-02-002-Z7-RA03-Landscape Network - LS** |  |  |  |  |  |  |  |  |  |  |  |  |
|  | 5783 | **RHD4-02-002-RA03-(LS)-Landscape Lighting cables** |  |  |  |  |  |  |  |  |  |  |  |  |
|  | 5785 | **RHD4-02-002-RA03-(LS)-Landscape Bollard Poles** |  |  |  |  |  |  |  |  |  |  |  |  |
|  | 5795 | **RHD4-02-002-Z7-RA03-Security Network - CCTV** |  | 2027-11-16 | 2028-01-29 |  |  |  |  |  |  |  |  |  |
|  | 5796 | **RHD4-02-002-RA03-(CCTV)-Civil Works** |  | 2027-11-16 | 2027-11-27 |  |  |  |  |  |  |  |  |  |
| RHD4CZ7RA03CCTV2100 |  | Civil Works for Security Network - (ROUND-03)-Z7-RA03-CCTV | 10d | 2027-11-16 | 2027-11-27 | RHD4CZ7RA03ICT2400, RHD4CZ7RA03TC2400 | Skilled labor [435.68 h]; Unskilled Labor [871.2 h]; Equipment Opreator [435.68 h]; Excavator-Poclain [108.9 h]; Dump Truck [108.9 h]; Civil works Digging, trenching, laying pipes Meter with supply and installation of Manholes and for power feeding sources related to all towers and poles – (from 35-meter pole to control room and from related UPS camersa distribution boards till overall 2 [300 m] | 34,800 | RA03 | Z7 | CONS | CCTV | Civil Works | AFT |
|  | 5797 | **RHD4-02-002-RA03-(CCTV)-CCTV Poles** |  | 2028-01-06 | 2028-01-17 |  |  |  |  |  |  |  |  |  |
| RHD4CZ7RA03CCTV1100 |  | Excavation for RC Base for CCTV Poles for Security Network - (ROUND-03)-Z7-RA03-CCTV | 2d | 2028-01-06 | 2028-01-08 | RHD4ENSDZ7APPCCTV210, RHD4CZ7RA03CCTV2100, RHD4CZ7L131CCTV2100 | Skilled labor [4.32 h]; Unskilled Labor [4.32 h]; Equipment Opreator [8.64 h]; Excavator-Poclain [2.18 h]; Dump Truck [2.18 h]; 25 Meters pole for CCTV Cameras [0.1 nr] | 14,090.2 | RA03 | Z7 | CONS | CCTV | Excavation | AFT |
| RHD4CZ7RA03CCTV1200 |  | Installation for RC Base for CCTV Poles for Security Network - (ROUND-03)-Z7-RA03-CCTV | 2d | 2028-01-09 | 2028-01-10 | RHD4CZ7RA03CCTV1100 | Skilled labor [4.32 h]; Unskilled Labor [4.32 h]; Equipment Opreator [8.64 h]; Excavator-Poclain [2.18 h]; Dump Truck [2.18 h]; 25 Meters pole for CCTV Cameras [0.25 nr] | 35,225.5 | RA03 | Z7 | CONS | CCTV | RC Base | AFT |
| RHD4CZ7RA03CCTV1300 |  | Backfill for RC Base for CCTV Poles for Security Network - (ROUND-03)-Z7-RA03-CCTV | 2d | 2028-01-11 | 2028-01-12 | RHD4CZ7RA03CCTV1200 | Skilled labor [2.88 h]; Unskilled Labor [2.88 h]; Equipment Opreator [5.44 h]; Excavator-Poclain [1.42 h]; Dump Truck [1.42 h]; 25 Meters pole for CCTV Cameras [0.05 nr] | 7,045.1 | RA03 | Z7 | CONS | CCTV | Backfill | AFT |
| RHD4CZ7RA03CCTV1400 |  | Installation for CCTV Poles for Security Network - (ROUND-03)-Z7-RA03-CCTV | 2d | 2028-01-13 | 2028-01-15 | RHD4PRSHLDOSCCTV1000, RHD4PRSHLSTACCTV1000, RHD4CZ7RA03CCTV1300 | Skilled labor [7.2 h]; Unskilled Labor [14.56 h]; Electrician [7.2 h]; Equipment Opreator [7.2 h]; Boom Truck [3.59 h]; 25 Meters pole for CCTV Cameras [0.6 nr] | 84,541.2 | RA03 | Z7 | CONS | CCTV | Installation | AFT |
| RHD4CZ7RA03CCTV1500 |  | Protection post Installation for CCTV Poles for Security Network - (ROUND-03)-Z7-RA03-CCTV | 2d | 2028-01-16 | 2028-01-17 | RHD4CZ7RA03CCTV1400 | Skilled labor [10.88 h]; Unskilled Labor [21.76 h]; Supply and Installation of minimum 4 Protection Post for each pole or tower with pipe ?220*6mm THK. [1 nr] | 4,903 | RA03 | Z7 | CONS | CCTV | Protection post | AFT |

| ID | WBS | Activity | Duration | Start | Finish | Predecessors | Resources | Cost | RDH4-01-001-Road and Block Names-1 | RDH4-01-001-Zones-1 | RDH4-01-001-Phases-1 | RDH4-01-001-Networks-1 | RDH4-01-001-Work Method-1 | RDH4-01-001-MENEM |
| --- | --- | --- | --- | --- | --- | --- | --- | --- | --- | --- | --- | --- | --- | --- |
|  | 5798 | **RHD4-02-002-RA03-(CCTV)-Camera** |  | 2028-01-18 | 2028-01-19 |  |  |  |  |  |  |  |  |  |
| RHD4CZ7RA03CCTV3100 |  | Installation for Cameras for Security Network - (ROUND-03)-Z7-RA03-CCTV | 2d | 2028-01-18 | 2028-01-19 | RHD4PRSHLDOSCCTV1100, RHD4PRSHLSTACCTV1100, RHD4CZ7RA03CCTV1400, RHD4CZ7RA03CCTV4100 | Unskilled Labor [54.4 h]; Electrician [27.2 h]; Outdoor Camera, 5MP resolution, day/night, fixed bullet camera providing Forensic WDR. [4 nr]; Outdoor PTZ with IR, HDTV 1080 and 31x optical, 12x digital, total 372x zoom, H264/265 with Motion JPEG. [1 nr] | 61,727 | RA03 | Z7 | CONS | CCTV | Installation | AFT |
|  | 5799 | **RHD4-02-002-RA03-(CCTV)-Power and Infrastructure** |  | 2028-01-16 | 2028-01-19 |  |  |  |  |  |  |  |  |  |
| RHD4CZ7RA03CCTV4100 |  | Installation of Power outlet, UPS and midspan for PTZ Camerafor Cameras for Security Network - (ROUND-03)-Z7-RA03-CCTV | 2d | 2028-01-16 | 2028-01-17 | RHD4PRSHLDOSCCTV1300, RHD4PRSHLSTACCTV1300, RHD4CZ7RA03CCTV1400 | Skilled labor [8.64 h]; Unskilled Labor [34.88 h]; Electrician [17.44 h]; Equipment Opreator [17.44 h]; Excavator-Poclain [4.36 h]; Dump Truck [4.36 h]; Outdoor ready IP66-rated midspan for PTZ Camera (The outdoor- ready midspan should be IP66/IP67- and NEMA 4X-rated [1 nr]; 1.2KVA Industrial type UPS located at FEC remote poles [1 nr] | 9,103 | RA03 | Z7 | CONS | CCTV | Power | AFT |
| RHD4CZ7RA03CCTV4200 |  | Short Range Wireless PoP wireless Bridgefor CCTV Poles for Security Network - (ROUND-03)-Z7-RA03-CCTV | 2d | 2028-01-18 | 2028-01-19 | RHD4CZ7RA03CCTV4100 | Skilled labor [10.88 h]; Unskilled Labor [21.76 h]; Electrician [10.88 h]; Equipment Opreator [21.76 h]; Excavator-Poclain [5.45 h]; Dump Truck [5.45 h]; Short Range wireless point to point wireless bridge [2 nr] | 29,274 | RA03 | Z7 | CONS | CCTV | Wireless Pop | AFT |
|  | 5801 | **RHD4-02-002-RA03-(CCTV)-CCTV Panels and Components** |  | 2028-01-20 | 2028-01-29 |  |  |  |  |  |  |  |  |  |
| RHD4CZ7RA03CCTV6100 |  | Installation for CCTV Panels for Security Network - (ROUND-03)-Z7-RA03-CCTV | 8d | 2028-01-20 | 2028-01-29 | RHD4PRSHLDOSCCTV1200, RHD4PRSHLSTACCTV1200, RHD4PRLOLSTACCTV1001, RHD4CZ7RA03CCTV4200, RHD4CZ7RA03CCTV3100 | Skilled labor [174.24 h]; Unskilled Labor [522.72 h]; Electrician [174.24 h]; Pole mounted Filed Equipment cabinet (FEC) , with fan and ventilation, NEMEX 4X ,door, minimum size (600x600x400mm) , the cabinet/enclosurE [1 nr]; 8 Port Industrial PoE Switch 10/1000BaseT (-40 deg to +70 deg. Celsius) for remote poles and as specifiedin item 15. [1 nr]; UTP CAT6 Patch Cord , connect the industrial switch with the cameras, and radio wireless antenna [6 nr] | 21,585 | RA03 | Z7 | CONS | CCTV | Equipment | AFT |
|  | 5812 | **RHD4-02-002-Z7-RA05** |  | 2027-02-13 | 2027-12-15 |  |  |  |  |  |  |  |  |  |
|  | 5991 | **RHD4-02-002-Z7-RA05-Road Works - RD** |  | 2027-03-06 | 2027-12-15 |  |  |  |  |  |  |  |  |  |
|  | 5992 | **RHD4-02-002-RA05-(RD)-Subgrade** |  | 2027-03-06 | 2027-03-14 |  |  |  |  |  |  |  |  |  |
| RHD4CZ7RA05RD1100 |  | Supply, lay and compaction subgrade compacted thickness 300 mm for Roads - (ROUND-05)-Z7-RA05-RD | 5d | 2027-03-06 | 2027-03-14 | RHD4ENSDZ7APPEW100, RHD4ENSDZ7APPRD220, RHD4CZ7RA03RD1100 SS | Skilled labor [51.84 h]; Unskilled Labor [103.79 h]; Electrician [51.84 h]; Equipment Opreator [354.4 h]; Water Truck [17.1 h]; Roller compactor [25.92 h]; Grader [51.84 h]; Dump Truck [259.41 h]; Subgrade [2495.29 m3] | 47,410.51 | RA05 | Z7 | CONS | RD | Subgrade | bef |
|  | 5993 | **RHD4-02-002-RA05-(RD)-Aggregate Base Course** |  | 2027-03-15 | 2027-03-18 |  |  |  |  |  |  |  |  |  |
| RHD4CZ7RA05RD2100 |  | Supply, lay and compaction Aggregate base course compacted thickness 300 mmfor Roads - (ROUND-05)-Z7-RA05-RD | 4d | 2027-03-15 | 2027-03-18 | RHD4PRSHLDOSRD1000, RHD4PRSHLSTAGRD1000, RHD4CZ7RA05RD1100 | Skilled labor [19.2 h]; Unskilled Labor [38.44 h]; Equipment Opreator [243.29 h]; Water Truck [12.63 h]; Roller compactor [38.44 h]; Grader [38.44 h]; Dump Truck [153.77 h]; Aggregate Base Courses [1567.29 m3] | 89,335.53 | RA05 | Z7 | CONS | RD | ABC | bef |
|  | 5994 | **RHD4-02-002-RA05-(RD)-Bituminous base course Two Layers, including (MC1)&(RC2)** |  | 2027-03-20 | 2027-11-25 |  |  |  |  |  |  |  |  |  |
| RHD4CZ7RA05RD3100 |  | Supply, lay and Asphaltic base course including Prime Coat (MC1) for 1st Layer - (ROUND-05)-Z7-RA05-RD | 2d | 2027-03-20 | 2027-03-21 | RHD4PRSHLDOSRD1100, RHD4ENMSASPH2000, RHD4ENMSASPH2010, RHD4PRSHLSTAGRD1100, RHD4CZ7RA05RD2100 | Skilled labor [15.25 h]; Unskilled Labor [91.59 h]; Equipment Opreator [228.92 h]; Bobcat [15.25 h]; Roller compactor [15.25 h]; Asphalt Paver [15.25 h]; Rubber Compactor [30.49 h]; MC1/RC2 Sprinkler [15.25 h]; Dump Truck [137.33 h]; Bituminous base course (Grading I - Class A), including Prime coat (MC1) & tack coate (RC2) [558.28 m3] | 266,857.84 | RA05 | Z7 | CONS | RD | 150 mm | AFT |
| RHD4CZ7RA05RD3200 |  | Supply, lay and Asphaltic base course including Tack Coat (RC2) for 2nd Layer - (ROUND-05)-Z7-RA05-RD | 2d | 2027-11-24 | 2027-11-25 | RHD4PRSHLDOSRD1100, RHD4PRSHLSTAGRD1100, RHD4CZ7RA05ICT2400, RHD4CZ7L015SL5200 | Skilled labor [15.25 h]; Unskilled Labor [91.59 h]; Equipment Opreator [228.92 h]; Bobcat [15.25 h]; Roller compactor [15.25 h]; Asphalt Paver [15.25 h]; Rubber Compactor [30.49 h]; MC1/RC2 Sprinkler [15.25 h]; Dump Truck [137.33 h]; Bituminous base course (Grading I - Class A), including Prime coat (MC1) & tack coate (RC2) [558.28 m3] | 266,857.84 | RA05 | Z7 | CONS | RD | 150 mm | AFT |
|  | 5996 | **RHD4-02-002-RA05-(RD)-Precast Concrete Curb** |  | 2027-11-27 | 2027-11-30 |  |  |  |  |  |  |  |  |  |
| RHD4CZ7RA05RD5100 |  | Supply and installation Precast Concrete Kerb for Roads - (ROUND-05)-Z7-RA05-RD | 4d | 2027-11-27 | 2027-11-30 | RHD4PRSHLDOSRD1200, RHD4ENMSRD2000, RHD4ENMSRD2010, RHD4PRSHLSTAGRD1200, RHD4CZ7RA05RD3200 | Mason [101.39 h]; Skilled labor [33.76 h]; Unskilled Labor [101.39 h]; Equipment Opreator [67.52 h]; Bobcat [33.76 h]; Concrete Mixer Truck [33.76 h]; Precast Concrete Curbstone, type K1 [1396 m] | 76,780 | RA05 | Z7 | CONS | RD | Curbs | AFT |
|  | 5999 | **RHD4-02-002-RA05-(RD)-Traffic Signage** |  | 2027-12-01 | 2027-12-11 |  |  |  |  |  |  |  |  |  |
| RHD4CZ7RA05RD8100 |  | Installation of Traffic Signage for Road Network - (ROUND-05)-Z7-RA05-RD | 9d | 2027-12-01 | 2027-12-11 | RHD4PRSHLDOSRD1600, RHD4PRSHLSTAGRD1600, RHD4CZ7RA05RD5100, RHD4CZ7RA05ICT2400, RHD4CZ7C02IRR3202 | Skilled labor [196 h]; Unskilled Labor [98.01 h]; Electrician [42.47 h]; Equipment Opreator [36.59 h]; Boom Truck [19.6 h]; Concrete Mixer Truck [16.99 h]; Traffic signs, ground mounted, 1 Sheet Aluminium, (breakaway)Single post [10 nr]; Traffic signs, ground mounted, 2 Sheets Aluminium, (breakaway)Single post [10 nr]; Traffic signs, ground mounted, 1 Sheets Aluminium, (breakaway)Double post [3 nr] | 36,167 | RA05 | Z7 | CONS | RD | Traffic Signage | AFT |
|  | 5997 | **RHD4-02-002-RA05-(RD)-Precast Interlocking Block Pavers** |  |  |  |  |  |  |  |  |  |  |  |  |
|  | 5995 | **RHD4-02-002-RA05-(RD)-Bituminous concrete wearing course including tack coat (RC2)** |  | 2027-12-01 | 2027-12-02 |  |  |  |  |  |  |  |  |  |
| RHD4CZ7RA05RD4100 |  | Supply, lay and compaction Asphaltic wearing course including tack Coat (RC2)for Road Network - (ROUND-05)-Z7-RA05-RD | 2d | 2027-12-01 | 2027-12-02 | RHD4CZ7RA05RD5100 | Skilled labor [7.84 h]; Unskilled Labor [47.16 h]; Equipment Opreator [117.94 h]; Bobcat [7.84 h]; Roller compactor [7.84 h]; Asphalt Paver [7.84 h]; Rubber Compactor [15.68 h]; MC1/RC2 Sprinkler [7.84 h]; Dump Truck [70.79 h]; Bituminous concrete wearing course, (Grading I - Class A), including tack coat (RC2) [374.92 m3] | 203,581.56 | RA05 | Z7 | CONS | RD | 50 mm | AFT |
|  | 6000 | **RHD4-02-002-RA05-(RD)-Speed Table and Wheel Stopper** |  | 2027-12-04 | 2027-12-12 |  |  |  |  |  |  |  |  |  |
| RHD4CZ7RA05RD9100 |  | Installation for Speed Bump for Road Network - (ROUND-05)-Z7-RA05-RD | 8d | 2027-12-04 | 2027-12-12 | RHD4CZ7RA05RD4100 | Mason [244.92 h]; Skilled labor [81.68 h]; Unskilled Labor [163.36 h]; Equipment Opreator [16.34 h]; Boom Truck [16.34 h]; SPEED TABLE [524.83 m2] | 64,554.09 | RA05 | Z7 | CONS | RD | Speed Bump | AFT |

| ID | WBS | Activity | Duration | Start | Finish | Predecessors | Resources | Cost | RDH4-01-001-Road and Block Names-1 | RDH4-01-001-Zones-1 | RDH4-01-001-Phases-1 | RDH4-01-001-Networks-1 | RDH4-01-001-Work Method-1 | RDH4-01-001-MENEM |
| --- | --- | --- | --- | --- | --- | --- | --- | --- | --- | --- | --- | --- | --- | --- |
|  | 5998 | **RHD4-02-002-RA05-(RD)-Pavement Marking** |  | 2027-12-13 | 2027-12-15 |  |  |  |  |  |  |  |  |  |
| RHD4CZ7RA05RD7100 |  | Pavement Markings for Road Network - (ROUND-05)-Z7-RA05-RD | 3d | 2027-12-13 | 2027-12-15 | RHD4PRSHLDOSRD1500, RHD4PRSHLSTAGRD1500, RHD4CZ7RA05RD9100 | Skilled labor [24.72 h]; Unskilled Labor [49.44 h]; Equipment Opreator [24.72 h]; Road Marking Machine [24.72 h]; Retroreflective Thermoplastic White Traffic Markings [261.22 m2]; Retroreflective Thermoplastic Yellow, Traffic Markings [230.32 m2]; Retroreflective raised pavement markers (cat eyes) [107 nr] | 18,875.74 | RA05 | Z7 | CONS | RD | Pavement Marking | AFT |
|  | 1789 | **RHD4-02-002-Z7-RA05-Medium Voltage Network - MV** |  |  |  |  |  |  |  |  |  |  |  |  |
|  | 1790 | **RHD4-02-002-RA05-(MV)-Medium Voltage cable trench** |  |  |  |  |  |  |  |  |  |  |  |  |
|  | 1792 | **RHD4-02-002-RA05-(MV)-Medium Voltage cables 3Cx 500 mm²** |  |  |  |  |  |  |  |  |  |  |  |  |
|  | 5964 | **RHD4-02-002-Z7-RA05-Street Lighting Network - SL** |  | 2027-02-13 | 2027-04-18 |  |  |  |  |  |  |  |  |  |
|  | 5965 | **RHD4-02-002-RA05-(SL)-Street Lighting duct banks** |  | 2027-02-13 | 2027-02-21 |  |  |  |  |  |  |  |  |  |
| RHD4CZ7RA05SL2100 |  | Excavation of Duct Banks for Street Lighting Network - (ROUND-05)-Z7-RA05-SL | 2d | 2027-02-13 | 2027-02-14 | RHD4ENSDZ7APPSL170, RHD4CZ7RA05RA3000, RHD4CZ7C013IRR1104 | Skilled labor [12 h]; Unskilled Labor [12 h]; Equipment Opreator [23.85 h]; Excavator-Poclain [12 h]; Dump Truck [12 h]; Road Crossing Duct for Street Lighting cables UPVC (2x?110mm) [1.64 m] | 332.01 | RA05 | Z7 | CONS | SL | Excavation | bef |
| RHD4CZ7RA05SL2200 |  | Installation of Duct Banks for Street Lighting Network - (ROUND-05)-Z7-RA05-SL | 2d | 2027-02-15 | 2027-02-16 | RHD4PRSHLDOSSL1000, RHD4PRSHLSTAGSL1000, RHD4CZ7RA05SL2100 | Carpenter [1.74 h]; Skilled labor [17.86 h]; Unskilled Labor [17.86 h]; Steel Fixer [1.74 h]; Road Crossing Duct for Street Lighting cables UPVC (2x?110mm) [1.64 m] | 332.01 | RA05 | Z7 | CONS | SL | Installing | bef |
| RHD4CZ7RA05SL2300 |  | Pouring of Duct Banks for Street Lighting Network - (ROUND-05)-Z7-RA05-SL | 2d | 2027-02-17 | 2027-02-18 | RHD4CZ7RA05SL2200 | Skilled labor [12 h]; Unskilled Labor [12 h]; Equipment Opreator [4.8 h]; Concrete Mixer Truck [2.4 h]; Concrete Pump [2.4 h]; Road Crossing Duct for Street Lighting cables UPVC (2x?110mm) [10.68 m] | 2,158.07 | RA05 | Z7 | CONS | SL | Pouring | bef |
| RHD4CZ7RA05SL2400 |  | Backfilling of Duct Banks for Street Lighting Network - (ROUND-05)-Z7-RA05-SL | 2d | 2027-02-20 | 2027-02-21 | RHD4CZ7RA05SL2300 | Skilled labor [8.93 h]; Unskilled Labor [8.93 h]; Equipment Opreator [3.59 h]; Excavator-Poclain [3.59 h]; Road Crossing Duct for Street Lighting cables UPVC (2x?110mm) [2.47 m] | 498.02 | RA05 | Z7 | CONS | SL | Backfilling | bef |
|  | 5966 | **RHD4-02-002-RA05-(SL)-Street Lighting Drawpit** |  | 2027-03-22 | 2027-03-25 |  |  |  |  |  |  |  |  |  |
| RHD4CZ7RA05SL5100 |  | Excavation of Drawpit size 600x600x900mm for Street Lighting Network - (ROUND-05)-Z7-RA05-SL | 2d | 2027-03-22 | 2027-03-23 | RHD4ENSDZ7APPSL170, RHD4CZ7RA05SL2300, RHD4CZ7RA05RD3100 | Skilled labor [0.87 h]; Unskilled Labor [0.87 h]; Equipment Opreator [0.8 h]; Excavator-Poclain [0.33 h]; Dump Truck [0.33 h]; Drawpit with medium duty steel cover, size600x600x900mm, [0.15 Unit] | 367.65 | RA05 | Z7 | CONS | SL | Excavation | AFT |
| RHD4CZ7RA05SL5200 |  | Installation of Drawpit size 600x600x900mm for Street Lighting Network - (ROUND-05)-Z7-RA05-SL | 2d | 2027-03-24 | 2027-03-25 | RHD4PRSHLDOSSL1400, RHD4PRSHLSTAGSL1400, RHD4CZ7RA05SL5100 | Skilled labor [0.87 h]; Unskilled Labor [0.87 h]; Equipment Opreator [0.33 h]; Boom Truck [0.33 h]; Drawpit with medium duty steel cover, size600x600x900mm, [0.85 Unit] | 2,083.35 | RA05 | Z7 | CONS | SL | Installation | AFT |
|  | 5967 | **RHD4-02-002-RA05-(SL)-Street Lighting cables** |  | 2027-03-27 | 2027-04-04 |  |  |  |  |  |  |  |  |  |
| RHD4CZ7RA05SL3100 |  | Excavation for Street Lighting Cables for Street Lighting Network - (ROUND-05)-Z7-RA05-SL | 2d | 2027-03-27 | 2027-03-28 | RHD4ENSDZ7APPSL170, RHD4CZ7RA05SL5200 | Skilled labor [10.67 h]; Unskilled Labor [21.45 h]; Equipment Opreator [21.45 h]; Excavator-Poclain [10.67 h]; Boom Truck [10.67 h]; Cable, Copper 4x10mm2/ CU/XLPE/SWA/PVC + 1x10mm2 CU/PVC [49.14 m] | 2,407.82 | RA05 | Z7 | CONS | SL | Excavation | AFT |
| RHD4CZ7RA05SL3200 |  | Cable Laying of Street Lighting Cables for Street Lighting Network - (ROUND-05)-Z7-RA05-SL | 2d | 2027-03-29 | 2027-03-30 | RHD4PRSHLDOSSL1100, RHD4ENMSSL2000, RHD4ENMSSL2010, RHD4PRSHLSTAGSL1100, RHD4CZ7RA05SL3100 | Skilled labor [8.93 h]; Unskilled Labor [35.72 h]; Electrician [17.86 h]; Equipment Opreator [26.79 h]; Boom Truck [8.93 h]; Cable Laying Machine [17.86 h]; Cable, Copper 4x10mm2/ CU/XLPE/SWA/PVC + 1x10mm2 CU/PVC [147.42 m] | 7,223.45 | RA05 | Z7 | CONS | SL | Cable Laying | AFT |
| RHD4CZ7RA05SL3300 |  | Warning tape and Backfill for Street Lighting Cables for Street Lighting Network - (ROUND-05)-Z7-RA05-SL | 2d | 2027-03-31 | 2027-04-01 | RHD4CZ7RA05SL3200 | Skilled labor [8.93 h]; Unskilled Labor [35.72 h]; Electrician [17.86 h]; Equipment Opreator [8.93 h]; Boom Truck [8.93 h]; Cable, Copper 4x10mm2/ CU/XLPE/SWA/PVC + 1x10mm2 CU/PVC [36.85 m] | 1,805.86 | RA05 | Z7 | CONS | SL | Warning tape and Backfill | AFT |
| RHD4CZ7RA05SL3400 |  | Testing of Street Lighting Cables for Street Lighting Network - (ROUND-05)-Z7-RA05-SL | 2d | 2027-04-03 | 2027-04-04 | RHD4CZ7RA05SL3300 | Skilled labor [5.34 h]; Unskilled Labor [21.45 h]; Electrician [10.67 h]; Equipment Opreator [5.34 h]; Boom Truck [5.34 h]; Cable, Copper 4x10mm2/ CU/XLPE/SWA/PVC + 1x10mm2 CU/PVC [12.28 m] | 601.95 | RA05 | Z7 | CONS | SL | Testing | AFT |
|  | 5968 | **RHD4-02-002-RA05-(SL)-Street Lighting Poles** |  | 2027-04-05 | 2027-04-18 |  |  |  |  |  |  |  |  |  |
| RHD4CZ7RA05SL1100 |  | Excavation for RC Base for Lighting Poles for Street Lighting Network - (ROUND-05)-Z7-RA05-SL | 2d | 2027-04-05 | 2027-04-06 | RHD4ENSDZ7APPSL170, RHD4CZ7RA05SL2400, RHD4CZ7RA05SL3400 | Skilled labor [7.95 h]; Unskilled Labor [7.95 h]; Equipment Opreator [16 h]; Excavator-Poclain [7.95 h]; Dump Truck [7.95 h]; Lighting poles single arms, height of ( 10 ) meters [1.1 Unit] | 3,747.7 | RA05 | Z7 | CONS | SL | Excavation | AFT |
| RHD4CZ7RA05SL1200 |  | Installation for RC Base for Lighting Poles for Street Lighting Network - (ROUND-05)-Z7-RA05-SL | 2d | 2027-04-07 | 2027-04-08 | RHD4CZ7RA05SL1100 | Skilled labor [7.95 h]; Unskilled Labor [7.95 h]; Equipment Opreator [16 h]; Excavator-Poclain [7.95 h]; Dump Truck [7.95 h]; Lighting poles single arms, height of ( 10 ) meters [2.75 Unit] | 9,369.25 | RA05 | Z7 | CONS | SL | RC Base | AFT |
| RHD4CZ7RA05SL1300 |  | Backfill for RC Base for Lighting Poles for Street Lighting Network - (ROUND-05)-Z7-RA05-SL | 2d | 2027-04-10 | 2027-04-11 | RHD4CZ7RA05SL1200 | Skilled labor [7.95 h]; Unskilled Labor [7.95 h]; Equipment Opreator [16 h]; Excavator-Poclain [7.95 h]; Dump Truck [7.95 h]; Lighting poles single arms, height of ( 10 ) meters [0.55 Unit] | 1,873.85 | RA05 | Z7 | CONS | SL | Backfill | AFT |
| RHD4CZ7RA05SL1400 |  | Installation for Lighting Poles for Street Lighting Network - (ROUND-05)-Z7-RA05-SL | 2d | 2027-04-12 | 2027-04-13 | RHD4PRSHLDOSSL1200, RHD4ENMSSL2000, RHD4ENMSSL2010, RHD4PRSHLSTAGSL1200, RHD4CZ7RA05SL1300, RHD4CZ7RA05SL3400 | Skilled labor [12 h]; Unskilled Labor [12 h]; Electrician [12 h]; Equipment Opreator [12 h]; Boom Truck [12 h]; Lighting poles single arms, height of ( 10 ) meters [6.6 Unit] | 22,486.2 | RA05 | Z7 | CONS | SL | Poles Installation | AFT |
| RHD4CZ7RA05SL1500 |  | Luminaire Installation for Lighting Poles for Street Lighting Network - (ROUND-05)-Z7-RA05-SL | 2d | 2027-04-17 | 2027-04-18 | RHD4PRSHLDOSSL1300, RHD4PRSHLSTAGSL1300, RHD4CZ7RA05SL1400, RHD4CZ7RA05SL6100 | Unskilled Labor [16 h]; Electrician [7.95 h]; Equipment Opreator [1.6 h]; Boom Truck [3.16 h]; Street Lighting( LED) Luminaire of Output ?10898 lumen [11 Unit] | 6,468 | RA05 | Z7 | CONS | SL | Luminaire Installation | AFT |

| ID | WBS | Activity | Duration | Start | Finish | Predecessors | Resources | Cost | RDH4-01-001-Road and Block Names-1 | RDH4-01-001-Zones-1 | RDH4-01-001-Phases-1 | RDH4-01-001-Networks-1 | RDH4-01-001-Work Method-1 | RDH4-01-001-MENEM |
| --- | --- | --- | --- | --- | --- | --- | --- | --- | --- | --- | --- | --- | --- | --- |
|  | 5970 | **RHD4-02-002-RA05-(SL)-Street Lighting Earthing System** |  | 2027-04-14 | 2027-04-15 |  |  |  |  |  |  |  |  |  |
| RHD4CZ7RA05SL6100 |  | Installation of Earthing for Lighting Poles and Fedder Pillers for Street Lighting Network - (ROUND-05)-Z7-RA05-SL | 2d | 2027-04-14 | 2027-04-15 | RHD4ENMSER2000, RHD4ENMSER2010, RHD4CZ7RA05SL1400 | Skilled labor [0.8 h]; Unskilled Labor [0.8 h]; Equipment Opreator [1.42 h]; Excavator-Poclain [0.8 h]; Dump Truck [0.8 h]; Including lighting poles circuits - ER [1 Unit] | 613 | RA05 | Z7 | CONS | SL | Installation | AFT |
|  | 489 | **RHD4-02-002-Z1-C081-Telecommunications Network - TC** |  | 2027-04-17 | 2027-05-04 |  |  |  |  |  |  |  |  |  |
|  | 490 | **RHD4-02-002-C081-(TC)-Telecommunications Ducts** |  | 2027-04-17 | 2027-05-04 |  |  |  |  |  |  |  |  |  |
| RHD4CZ7RA05TC2100 |  | Excavation of HDPE Ducts for Telecom Network - (RD-C-8 /1)-Z1-C081-TC | 5d | 2027-04-17 | 2027-04-22 | RHD4CZ7RA05SL6100 | Skilled labor [100 h]; Unskilled Labor [100 h]; Equipment Opreator [199.92 h]; Excavator-Poclain [100 h]; Dump Truck [100 h]; (6*50mm) HDPE ducts -TC [41.96 m] | 3,692.48 | C081 | Z1 | CONS | TC | Excavation | AFT |
| RHD4CZ7RA05TC2200 |  | Installation of HDPE Ducts for Telecom Network - (RD-C-8 /1)-Z1-C081-TC | 5d | 2027-04-22 | 2027-04-28 | RHD4CZ7RA05TC2100 | Carpenter [15.04 h]; Skilled labor [150 h]; Unskilled Labor [150 h]; Steel Fixer [15.04 h]; (6*50mm) HDPE ducts -TC [136.37 m] | 12,000.56 | C081 | Z1 | CONS | TC | Installing | AFT |
| RHD4CZ7RA05TC2400 |  | Backfilling of HDPE Ducts for Telecom Network - (RD-C-8 /1)-Z1-C081-TC | 5d | 2027-04-28 | 2027-05-04 | RHD4CZ7RA05TC2200 | Skilled labor [100 h]; Unskilled Labor [100 h]; Equipment Opreator [40 h]; Excavator-Poclain [40 h]; (6*50mm) HDPE ducts -TC [31.47 m] | 2,769.36 | C081 | Z1 | CONS | TC | Backfilling | AFT |
|  | 5980 | **RHD4-02-002-Z7-RA05-Information and Communication Technologies - ICT** |  | 2027-04-19 | 2027-05-09 |  |  |  |  |  |  |  |  |  |
|  | 5981 | **RHD4-02-002-RA05-(ICT)-Information and Communication Technologies Ducts** |  | 2027-04-19 | 2027-05-09 |  |  |  |  |  |  |  |  |  |
| RHD4CZ7RA05ICT2100 |  | Excavation of HDPE Ducts for ICT Network - (ROUND-05)-Z7-RA05-ICT | 5d | 2027-04-19 | 2027-04-24 | RHD4ENSDZ7APPICT200, RHD4CZ7RA05SL2100, RHD4CZ7RA05SL1500 | Skilled labor [49.33 h]; Unskilled Labor [49.33 h]; Equipment Opreator [98.78 h]; Excavator-Poclain [49.33 h]; Dump Truck [49.33 h]; (2*50mm) HDPE ducts -ICT [136.03 m] | 5,169.14 | RA05 | Z7 | CONS | ICT | Excavation | AFT |
| RHD4CZ7RA05ICT2200 |  | Installation of HDPE Ducts for ICT Network - (ROUND-05)-Z7-RA05-ICT | 7d | 2027-04-25 | 2027-05-02 | RHD4PRSHLDOSICT1000, RHD4PRSHLSTAGICT1000, RHD4CZ7RA05ICT2100 | Carpenter [7.41 h]; Skilled labor [74.05 h]; Unskilled Labor [74.05 h]; Steel Fixer [7.41 h]; (2*50mm) HDPE ducts -ICT [442.1 m] | 16,799.8 | RA05 | Z7 | CONS | ICT | Installing | AFT |
| RHD4CZ7RA05ICT2400 |  | Backfilling of HDPE Ducts for ICT Network - (ROUND-05)-Z7-RA05-ICT | 5d | 2027-05-04 | 2027-05-09 | RHD4CZ7RA05ICT2200, RHD4CZ7RA05TC2400 | Skilled labor [49.33 h]; Unskilled Labor [49.33 h]; Equipment Opreator [19.71 h]; Excavator-Poclain [19.71 h]; (2*50mm) HDPE ducts -ICT [102.02 m] | 3,876.86 | RA05 | Z7 | CONS | ICT | Backfilling | AFT |
|  | 5971 | **RHD4-02-002-Z7-RA05-Landscape Network - LS** |  |  |  |  |  |  |  |  |  |  |  |  |
|  | 5972 | **RHD4-02-002-RA05-(LS)-Landscape Lighting cables** |  |  |  |  |  |  |  |  |  |  |  |  |
|  | 5973 | **RHD4-02-002-RA05-(LS)-Landscape Feeder Pillars** |  |  |  |  |  |  |  |  |  |  |  |  |
|  | 5974 | **RHD4-02-002-RA05-(LS)-Landscape Bollard Poles** |  |  |  |  |  |  |  |  |  |  |  |  |
|  | 5975 | **RHD4-02-002-RA05-(LS)-Landscape Feeder Pillars Earthing** |  |  |  |  |  |  |  |  |  |  |  |  |
|  | 5984 | **RHD4-02-002-Z7-RA05-Security Network - CCTV** |  |  |  |  |  |  |  |  |  |  |  |  |
|  | 5985 | **RHD4-02-002-RA05-(CCTV)-Civil Works** |  |  |  |  |  |  |  |  |  |  |  |  |
|  | 703 | **RHD4-02-002-Z2** |  | 2026-08-04 | 2028-03-28 |  |  |  |  |  |  |  |  |  |
|  | 893 | **RHD4-02-002-Z2-L102** |  | 2026-08-04 | 2028-03-23 |  |  |  |  |  |  |  |  |  |
|  | 924 | **RHD4-02-002-Z2-L102-Crossings Sewage Network - SWCr** |  |  |  |  |  |  |  |  |  |  |  |  |
|  | 934 | **RHD4-02-002-L102-(SWCr)-MH Works - 1200 mm diameter** |  |  |  |  |  |  |  |  |  |  |  |  |
|  | 935 | **RHD4-02-002-L102-(SWCr)-MH Works - 1200 mm diameter with Back drop** |  |  |  |  |  |  |  |  |  |  |  |  |
|  | 930 | **RHD4-02-002-L102-(SWCr)-UPVC Pipes - 200 mm diameter** |  |  |  |  |  |  |  |  |  |  |  |  |
|  | 968 | **RHD4-02-002-Z2-L102-Crossings Potable Network - PTCr** |  |  |  |  |  |  |  |  |  |  |  |  |
|  | 970 | **RHD4-02-002-L102-(PTCr)-HDPE Pipes - 160 mm diameter** |  |  |  |  |  |  |  |  |  |  |  |  |
|  | 969 | **RHD4-02-002-L102-(PTCr)-HDPE Pipes - 110 mm diameter** |  |  |  |  |  |  |  |  |  |  |  |  |
|  | 974 | **RHD4-02-002-L102-(PTCr)-Gate Valves (Direct Buried)** |  |  |  |  |  |  |  |  |  |  |  |  |
|  | 1015 | **RHD4-02-002-Z2-L102-Crossings Irrigation Network - IRRC** |  |  |  |  |  |  |  |  |  |  |  |  |
|  | 1016 | **RHD4-02-002-L102-(IRRC)-HDPE Pipes - 160 mm diameter** |  |  |  |  |  |  |  |  |  |  |  |  |
|  | 1024 | **RHD4-02-002-L102-(IRRC)-Gate Valves (Direct Buried)** |  |  |  |  |  |  |  |  |  |  |  |  |
|  | 1072 | **RHD4-02-002-Z2-L102-Road Works - RD** |  | 2027-01-12 | 2028-03-23 |  |  |  |  |  |  |  |  |  |
|  | 1073 | **RHD4-02-002-L102-(RD)-Subgrade** |  | 2027-01-12 | 2027-01-25 |  |  |  |  |  |  |  |  |  |
| RHD4CZ2L102RD1100 |  | Supply, lay and compaction subgrade compacted thickness 300 mm for Roads - (RD-L-10/2)-Z2-L102-RD | 12d | 2027-01-12 | 2027-01-25 | RHD4ENSDZ2APPEW100, RHD4ENSDZ2APPRD220, RHD4CZ2L102ST1506 | Skilled labor [126 h]; Unskilled Labor [252.11 h]; Electrician [126 h]; Equipment Opreator [860.88 h]; Water Truck [41.6 h]; Roller compactor [63.06 h]; Grader [126 h]; Dump Truck [630.22 h]; Subgrade [6062.24 m3] | 115,182.56 | L102 | Z2 | CONS | RD | Subgrade | bef |

| ID | WBS | Activity | Duration | Start | Finish | Predecessors | Resources | Cost | RDH4-01-001-Road and Block Names-1 | RDH4-01-001-Zones-1 | RDH4-01-001-Phases-1 | RDH4-01-001-Networks-1 | RDH4-01-001-Work Method-1 | RDH4-01-001-MENEM |
| --- | --- | --- | --- | --- | --- | --- | --- | --- | --- | --- | --- | --- | --- | --- |
|  | 1074 | **RHD4-02-002-L102-(RD)-Aggregate Base Course** |  | 2027-01-26 | 2027-02-04 |  |  |  |  |  |  |  |  |  |
| RHD4CZ2L102RD2100 |  | Supply, lay and compaction Aggregate base course compacted thickness 300 mmfor Roads - (RD-L-10/2)-Z2-L102-RD | 9d | 2027-01-26 | 2027-02-04 | RHD4PRSHLDOSRD1000, RHD4PRSHLSTAGRD1000, RHD4CZ2L102RD1100 | Skilled labor [46.72 h]; Unskilled Labor [93.33 h]; Equipment Opreator [591.02 h]; Water Truck [30.82 h]; Roller compactor [93.33 h]; Grader [93.33 h]; Dump Truck [373.43 h]; Aggregate Base Courses [3807.69 m3] | 217,038.33 | L102 | Z2 | CONS | RD | ABC | bef |
|  | 1075 | **RHD4-02-002-L102-(RD)-Bituminous base course Two Layers, including (MC1)&(RC2)** |  | 2027-03-25 | 2028-02-10 |  |  |  |  |  |  |  |  |  |
| RHD4CZ2L102RD3100 |  | Supply, lay and Asphaltic base course including Prime Coat (MC1) for 1st Layer - (RD-L-10/2)-Z2-L102-RD | 2d | 2027-03-25 | 2027-03-27 | RHD4PRSHLDOSRD1100, RHD4ENMSASPH2000, RHD4ENMSASPH2010, RHD4PRSHLSTAGRD1100, RHD4CZ2L102RD2100, RHD4CZ7C032RD3100, RHD4CZ8L04RD3100 | Skilled labor [14.16 h]; Unskilled Labor [84.73 h]; Equipment Opreator [211.71 h]; Bobcat [14.16 h]; Roller compactor [14.16 h]; Asphalt Paver [14.16 h]; Rubber Compactor [28.21 h]; MC1/RC2 Sprinkler [14.16 h]; Dump Truck [127.09 h]; Bituminous base course (Grading I - Class A), including Prime coat (MC1) & tack coate (RC2) [516.46 m3] | 246,867.88 | L102 | Z2 | CONS | RD | 150 mm | AFT |
| RHD4CZ2L102RD3200 |  | Supply, lay and Asphaltic base course including Tack Coat (RC2) for 2nd Layer - (RD-L-10/2)-Z2-L102-RD | 2d | 2028-02-09 | 2028-02-10 | RHD4PRSHLDOSRD1100, RHD4PRSHLSTAGRD1100, RHD4CZ2L102RD3100, RHD4CZ2L102CCTV6100 | Skilled labor [14.16 h]; Unskilled Labor [84.73 h]; Equipment Opreator [211.71 h]; Bobcat [14.16 h]; Roller compactor [14.16 h]; Asphalt Paver [14.16 h]; Rubber Compactor [28.21 h]; MC1/RC2 Sprinkler [14.16 h]; Dump Truck [127.09 h]; Bituminous base course (Grading I - Class A), including Prime coat (MC1) & tack coate (RC2) [516.46 m3] | 246,867.88 | L102 | Z2 | CONS | RD | 150 mm | AFT |
|  | 1077 | **RHD4-02-002-L102-(RD)-Precast Concrete Curb** |  | 2028-02-12 | 2028-02-20 |  |  |  |  |  |  |  |  |  |
| RHD4CZ2L102RD5100 |  | Supply and installation Precast Concrete Kerb for Roads - (RD-L-10/2)-Z2-L102-RD | 8d | 2028-02-12 | 2028-02-20 | RHD4PRSHLDOSRD1200, RHD4ENMSRD2000, RHD4ENMSRD2010, RHD4PRSHLSTAGRD1200, RHD4CZ2L102RD3200 | Mason [258.1 h]; Skilled labor [86.03 h]; Unskilled Labor [258.1 h]; Equipment Opreator [172.07 h]; Bobcat [86.03 h]; Concrete Mixer Truck [86.03 h]; Precast Concrete Curbstone, type K1 [1678.88 m]; Precast Flush concrete Curbstone K3 [1876.32 m] | 195,536.37 | L102 | Z2 | CONS | RD | Curbs | AFT |
|  | 1080 | **RHD4-02-002-L102-(RD)-Traffic Signage** |  | 2028-02-21 | 2028-03-02 |  |  |  |  |  |  |  |  |  |
| RHD4CZ2L102RD8100 |  | Installation of Traffic Signage for Road Network - (RD-L-10/2)-Z2-L102-RD | 6d | 2028-02-21 | 2028-03-02 | RHD4PRSHLDOSRD1600, RHD4PRSHLSTAGRD1600, RHD4CZ2L102RD5100, RHD4CZ2L102TC2400, RHD4CZ2L102ICT2400 | Skilled labor [130.68 h]; Unskilled Labor [65.34 h]; Electrician [10.89 h]; Equipment Opreator [17.42 h]; Boom Truck [13.07 h]; Concrete Mixer Truck [4.36 h]; Traffic signs, ground mounted, 1 Sheet Aluminium, (breakaway)Single post [9 nr]; Traffic signs, ground mounted, 1 Sheets Aluminium, (breakaway)Double post [1 nr] | 12,873 | L102 | Z2 | CONS | RD | Traffic Signage | AFT |
|  | 1078 | **RHD4-02-002-L102-(RD)-Precast Interlocking Block Pavers** |  | 2028-03-04 | 2028-03-15 |  |  |  |  |  |  |  |  |  |
| RHD4CZ2L102RD6100 |  | Interlocking block pavers for sidewalk-footpath for Side walks and Parking areas - (RD-L-10/2)-Z2-L102-RD | 11d | 2028-03-04 | 2028-03-15 | RHD4PRSHLDOSRD1300, RHD4PRSHLDOSRD1400, RHD4ENMSRD2000, RHD4ENMSRD2010, RHD4PRSHLSTAGRD1300, RHD4PRSHLSTAGRD1400, RHD4CZ2L102RD8100 | Skilled labor [220.31 h]; Unskilled Labor [330.4 h]; Equipment Opreator [357.97 h]; Boom Truck [110.1 h]; Bobcat [110.1 h]; Concrete Mixer Truck [110.1 h]; Water Truck [27.55 h]; Interlock 80 mm thick Pavers for parking including sand fill [3540 m2] | 261,960 | L102 | Z2 | CONS | RD | Interlocking | AFT |
|  | 1076 | **RHD4-02-002-L102-(RD)-Bituminous concrete wearing course including tack coat (RC2)** |  | 2028-03-16 | 2028-03-18 |  |  |  |  |  |  |  |  |  |
| RHD4CZ2L102RD4100 |  | Supply, lay and compaction Asphaltic wearing course including tack Coat (RC2)for Road Network - (RD-L-10/2)-Z2-L102-RD | 2d | 2028-03-16 | 2028-03-18 | RHD4CZ2L102RD5100, RHD4CZ2L102RD6100 | Skilled labor [15.57 h]; Unskilled Labor [93.55 h]; Equipment Opreator [233.71 h]; Bobcat [15.57 h]; Roller compactor [15.57 h]; Asphalt Paver [15.57 h]; Rubber Compactor [31.15 h]; MC1/RC2 Sprinkler [15.57 h]; Dump Truck [140.27 h]; Bituminous concrete wearing course, (Grading I - Class A), including tack coat (RC2) [743.24 m3] | 403,579.32 | L102 | Z2 | CONS | RD | 50 mm | AFT |
|  | 1079 | **RHD4-02-002-L102-(RD)-Pavement Marking** |  | 2028-03-19 | 2028-03-23 |  |  |  |  |  |  |  |  |  |
| RHD4CZ2L102RD7100 |  | Pavement Markings for Road Network - (RD-L-10/2)-Z2-L102-RD | 5d | 2028-03-19 | 2028-03-23 | RHD4PRSHLDOSRD1500, RHD4PRSHLSTAGRD1500, RHD4CZ2L102RD4100 | Skilled labor [50.4 h]; Unskilled Labor [100.84 h]; Equipment Opreator [50.4 h]; Road Marking Machine [50.4 h]; Retroreflective Thermoplastic White Traffic Markings [303.64 m2]; Retroreflective Thermoplastic Yellow, Traffic Markings [309.68 m2]; Retroreflective raised pavement markers (cat eyes) [580 nr] | 38,732.92 | L102 | Z2 | CONS | RD | Pavement Marking | AFT |
|  | 897 | **RHD4-02-002-Z2-L102-Storm Network - ST** |  | 2026-09-03 | 2027-05-23 |  |  |  |  |  |  |  |  |  |
|  | 916 | **RHD4-02-002-L102-(ST)-MH Works - 2000 mm diameter** |  | 2026-12-31 | 2027-01-13 |  |  |  |  |  |  |  |  |  |
| RHD4CZ2L102ST3102 |  | Excavation and PC Blinding works for MH 2000 mm - (RD-L-10/2)-Z2-L102-ST | 2d | 2026-12-31 | 2027-01-02 | RHD4ENSDZ2APPST110, RHD4ENMSST2000, RHD4PRSHLDOSST1001 | Skilled labor [19.93 h]; Unskilled Labor [19.93 h]; Equipment Opreator [31.91 h]; Excavator-Poclain [19.93 h]; Water Truck [1.96 h]; Dump Truck [10.02 h]; MH (2000mm Diameter) - ST - depth 2.51 - 3.5m [1 nr]; MH (2000mm Diameter) - ST - depth 3.51 -4.5m [0.25 nr] | 27,594 | L102 | Z2 | CONS | ST | Excavation | bef |
| RHD4CZ2L102ST3202 |  | Installation of Base for MH 2000 mm - (RD-L-10/2)-Z2-L102-ST | 3d | 2027-01-03 | 2027-01-05 | RHD4PRSHLSTAGST1601, RHD4CZ2L102ST3102 | Skilled labor [27.2 h]; Unskilled Labor [27.2 h]; Equipment Opreator [10.89 h]; Boom Truck [5.45 h]; Concrete Mixer Truck [5.45 h]; MH (2000mm Diameter) - ST - depth 2.51 - 3.5m [1 nr]; MH (2000mm Diameter) - ST - depth 3.51 -4.5m [0.25 nr] | 27,594 | L102 | Z2 | CONS | ST | Installing Base | bef |
| RHD4CZ2L102ST3302 |  | MH Ring and C.Slab works and Backfilling works for MH 2000 mm - (RD-L-10/2)-Z2-L102-ST | 3d | 2027-01-06 | 2027-01-09 | RHD4PRSHLDOSST1601, RHD4CZ2L102ST3202 | Skilled labor [27.2 h]; Unskilled Labor [27.2 h]; Equipment Opreator [19.06 h]; Boom Truck [10.89 h]; Concrete Mixer Truck [8.17 h]; MH (2000mm Diameter) - ST - depth 2.51 - 3.5m [1.4 nr]; MH (2000mm Diameter) - ST - depth 3.51 -4.5m [0.35 nr] | 38,631.6 | L102 | Z2 | CONS | ST | Installing Rings | bef |
| RHD4CZ2L102ST3402 |  | Steel Cover for MH 2000 mm - (RD-L-10/2)-Z2-L102-ST | 2d | 2027-01-10 | 2027-01-11 | RHD4PRSHLDOSST1701, RHD4PRSHLSTAGST1701, RHD4CZ2L102ST3302 | Skilled labor [18.19 h]; Unskilled Labor [36.26 h]; Equipment Opreator [3.59 h]; Boom Truck [3.59 h]; MH (2000mm Diameter) - ST - depth 2.51 - 3.5m [0.2 nr]; MH (2000mm Diameter) - ST - depth 3.51 -4.5m [0.05 nr] | 5,518.8 | L102 | Z2 | CONS | ST | Steel Cover | bef |
| RHD4CZ2L102ST3502 |  | Finishing, Benching, Testing works for MH 2000 mm - (RD-L-10/2)-Z2-L102-ST | 2d | 2027-01-12 | 2027-01-13 | RHD4CZ2L102ST3402 | Skilled labor [19.93 h]; Unskilled Labor [40 h]; Plumber [19.93 h]; Equipment Opreator [4 h]; Water Truck [4 h]; MH (2000mm Diameter) - ST - depth 2.51 - 3.5m [0.4 nr]; MH (2000mm Diameter) - ST - depth 3.51 -4.5m [0.1 nr] | 11,037.6 | L102 | Z2 | CONS | ST | Benching | bef |
|  | 915 | **RHD4-02-002-L102-(ST)-MH Works - 1500 mm diameter** |  | 2027-01-03 | 2027-05-20 |  |  |  |  |  |  |  |  |  |
| RHD4CZ2L102ST3101 |  | Excavation and PC Blinding works for MH 1500 mm - (RD-L-10/2)-Z2-L102-ST | 4d | 2027-01-03 | 2027-01-06 | RHD4ENSDZ2APPST110, RHD4ENMSST2000, RHD4CZ2L102ST3102 | Skilled labor [38.12 h]; Unskilled Labor [38.12 h]; Equipment Opreator [60.99 h]; Excavator-Poclain [38.12 h]; Water Truck [3.81 h]; Dump Truck [19.06 h]; MH (1500mm Diameter) - ST - depth 1.50 - 2.5m [0.5 nr]; MH (1500mm Diameter) - ST - depth 2.51 - 3.5m [1.25 nr] | 27,920.5 | L102 | Z2 | CONS | ST | Excavation | bef |
| RHD4CZ2L102ST3201 |  | Installation of Base for MH 1500 mm - (RD-L-10/2)-Z2-L102-ST | 4d | 2027-01-07 | 2027-01-11 | RHD4PRSHLSTAGST1601, RHD4CZ2L102ST3101, RHD4CZ2L102ST3202 | Skilled labor [38.12 h]; Unskilled Labor [38.12 h]; Equipment Opreator [15.25 h]; Boom Truck [7.62 h]; Concrete Mixer Truck [7.62 h]; MH (1500mm Diameter) - ST - depth 1.50 - 2.5m [0.5 nr]; MH (1500mm Diameter) - ST - depth 2.51 - 3.5m [1.25 nr] | 27,920.5 | L102 | Z2 | CONS | ST | Installing Base | bef |
| RHD4CZ2L102ST3301 |  | MH Ring and C.Slab works and Backfilling works for MH 1500 mm - (RD-L-10/2)-Z2-L102-ST | 4d | 2027-01-12 | 2027-01-16 | RHD4PRSHLDOSST1601, RHD4CZ2L102ST3201, RHD4CZ2L102ST3302 | Skilled labor [38.12 h]; Unskilled Labor [38.12 h]; Equipment Opreator [26.68 h]; Boom Truck [15.25 h]; Concrete Mixer Truck [11.43 h]; MH (1500mm Diameter) - ST - depth 1.50 - 2.5m [0.7 nr]; MH (1500mm Diameter) - ST - depth 2.51 - 3.5m [1.75 nr] | 39,088.7 | L102 | Z2 | CONS | ST | Installing Rings | bef |
| RHD4CZ2L102ST3401 |  | Steel Cover for MH 1500 mm - (RD-L-10/2)-Z2-L102-ST | 3d | 2027-02-07 | 2027-02-09 | RHD4PRSHLDOSST1701, RHD4PRSHLSTAGST1701, RHD4CZ2L102ST3301, RHD4CZ2L102ST1500, RHD4CZ2L102ST3402 | Skilled labor [25.37 h]; Unskilled Labor [50.86 h]; Equipment Opreator [5.12 h]; Boom Truck [5.12 h]; MH (1500mm Diameter) - ST - depth 1.50 - 2.5m [0.1 nr]; MH (1500mm Diameter) - ST - depth 2.51 - 3.5m [0.25 nr] | 5,584.1 | L102 | Z2 | CONS | ST | Steel Cover | bef |
| RHD4CZ2L102ST3501 |  | Finishing, Benching, Testing works for MH 1500 mm - (RD-L-10/2)-Z2-L102-ST | 4d | 2027-05-12 | 2027-05-20 | RHD4CZ2L102ST3401, RHD4CZ2L102ST2500, RHD4CZ2L102ST3502 | Skilled labor [38.12 h]; Unskilled Labor [76.23 h]; Plumber [38.12 h]; Equipment Opreator [7.62 h]; Water Truck [7.62 h]; MH (1500mm Diameter) - ST - depth 1.50 - 2.5m [0.2 nr]; MH (1500mm Diameter) - ST - depth 2.51 - 3.5m [0.5 nr] | 11,168.2 | L102 | Z2 | CONS | ST | Benching | bef |

| ID | WBS | Activity | Duration | Start | Finish | Predecessors | Complete | Planned start | Planned finish | Resources | Cost | Actual cost | RDH4-01-001-Road and Block Names-1 | RDH4-01-001-Zones-1 | RDH4-01-001-Phases-1 | RDH4-01-001-Networks-1 | RDH4-01-001-Work Method-1 | RDH4-01-001-MENEM |
| --- | --- | --- | --- | --- | --- | --- | --- | --- | --- | --- | --- | --- | --- | --- | --- | --- | --- | --- |
|  | 914 | **RHD4-02-002-L102-(ST)-MH Works - 1200 mm diameter** |  | 2027-01-07 | 2027-05-23 |  |  |  |  |  |  |  |  |  |  |  |  |  |
| RHD4CZ2L102ST3100 |  | Excavation and PC Blinding works for MH 1200 mm - (RD-L-10/2)-Z2-L102-ST | 2d | 2027-01-07 | 2027-01-09 | RHD4ENSDZ2APPST110, RHD4ENMSST2000, RHD4ENMSST2010, RHD4CZ2L102ST3101 |  |  |  | Skilled labor [3.59 h]; Unskilled Labor [3.59 h]; Equipment Opreator [5.77 h]; Excavator-Poclain [3.59 h]; Water Truck [0.33 h]; Dump Truck [1.85 h]; MH (1200mm Diameter) - ST - depth 1.50 - 2.5m [0.25 nr] | 2,580.75 |  | L102 | Z2 | CONS | ST | Excavation | bef |
| RHD4CZ2L102ST3200 |  | Installation of Base for MH 1200 mm - (RD-L-10/2)-Z2-L102-ST | 2d | 2027-01-12 | 2027-01-13 | RHD4PRSHLSTAGST1601, RHD4CZ2L102ST3100, RHD4CZ2L102ST3201 |  |  |  | Skilled labor [3.59 h]; Unskilled Labor [3.59 h]; Equipment Opreator [1.42 h]; Boom Truck [0.8 h]; Concrete Mixer Truck [0.8 h]; MH (1200mm Diameter) - ST - depth 1.50 - 2.5m [0.25 nr] | 2,580.75 |  | L102 | Z2 | CONS | ST | Installing Base | bef |
| RHD4CZ2L102ST3300 |  | MH Ring and C.Slab works and Backfilling works for MH 1200 mm - (RD-L-10/2)-Z2-L102-ST | 2d | 2027-01-17 | 2027-01-18 | RHD4PRSHLDOSST1601, RHD4CZ2L102ST3200, RHD4CZ2L102ST3301 |  |  |  | Skilled labor [3.59 h]; Unskilled Labor [3.59 h]; Equipment Opreator [2.5 h]; Boom Truck [1.42 h]; Concrete Mixer Truck [1.09 h]; MH (1200mm Diameter) - ST - depth 1.50 - 2.5m [0.35 nr] | 3,613.05 |  | L102 | Z2 | CONS | ST | Installing Rings | bef |
| RHD4CZ2L102ST3400 |  | Steel Cover for MH 1200 mm - (RD-L-10/2)-Z2-L102-ST | 2d | 2027-05-12 | 2027-05-13 | RHD4PRSHLDOSST1701, RHD4PRSHLSTAGST1701, RHD4CZ2L102ST3300, RHD4CZ2L102ST2500, RHD4CZ2L102ST1500, RHD4CZ2L102ST3401 |  |  |  | Skilled labor [3.59 h]; Unskilled Labor [7.3 h]; Equipment Opreator [0.8 h]; Boom Truck [0.8 h]; MH (1200mm Diameter) - ST - depth 1.50 - 2.5m [0.05 nr] | 516.15 |  | L102 | Z2 | CONS | ST | Steel Cover | bef |
| RHD4CZ2L102ST3500 |  | Finishing, Benching, Testing works for MH 1200 mm - (RD-L-10/2)-Z2-L102-ST | 2d | 2027-05-22 | 2027-05-23 | RHD4CZ2L102ST3400, RHD4CZ2L102ST3501 |  |  |  | Skilled labor [3.59 h]; Unskilled Labor [7.3 h]; Plumber [3.59 h]; Equipment Opreator [0.8 h]; Water Truck [0.8 h]; MH (1200mm Diameter) - ST - depth 1.50 - 2.5m [0.1 nr] | 1,032.3 |  | L102 | Z2 | CONS | ST | Benching | bef |
|  | 906 | **RHD4-02-002-L102-(ST)-GRP Pipes - 1200 mm diameter** |  |  |  |  |  |  |  |  |  |  |  |  |  |  |  |  |
|  | 905 | **RHD4-02-002-L102-(ST)-GRP Pipes - 1100 mm diameter** |  |  |  |  |  |  |  |  |  |  |  |  |  |  |  |  |
|  | 904 | **RHD4-02-002-L102-(ST)-GRP Pipes - 1000 mm diameter** |  | 2026-12-31 | 2027-01-11 |  |  |  |  |  |  |  |  |  |  |  |  |  |
| RHD4CZ2L102ST1106 |  | Excavation works for GRP Pipe Line 1000 mm - (RD-L-10/2)-Z2-L102-ST | 2d | 2026-12-31 | 2027-01-02 | RHD4ENSDZ2APPST110, RHD4PRSHLDOSST1301 |  |  |  | Skilled labor [20.26 h]; Unskilled Labor [20.26 h]; Equipment Opreator [24.29 h]; Excavator-Poclain [20.26 h]; Dump Truck [4 h]; GRP (1000mm Diameter) - ST - Depth: 1.51m - 2.5m [36.25 m]; GRP (1000mm Diameter) - ST - Depth: 2.51m - 3.5m [11.27 m]; GRP (1000mm Diameter) - ST - Depth: 3.51m - 4.5m [1.62 m] | 49,001.58 |  | L102 | Z2 | CONS | ST | Excavation | bef |
| RHD4CZ2L102ST1206 |  | Bedding works for GRP Pipe Line 1000 mm - (RD-L-10/2)-Z2-L102-ST | 2d | 2027-01-03 | 2027-01-04 | RHD4CZ2L102ST1106 |  |  |  | Skilled labor [20.26 h]; Unskilled Labor [40.4 h]; Equipment Opreator [40.4 h]; Excavator-Poclain [20.26 h]; Dump Truck [20.26 h]; GRP (1000mm Diameter) - ST - Depth: 1.51m - 2.5m [12.08 m]; GRP (1000mm Diameter) - ST - Depth: 2.51m - 3.5m [3.76 m]; GRP (1000mm Diameter) - ST - Depth: 3.51m - 4.5m [0.54 m] | 16,334.82 |  | L102 | Z2 | CONS | ST | Bedding | bef |
| RHD4CZ2L102ST1306 |  | Installing for GRP Pipe Line 1000 mm - (RD-L-10/2)-Z2-L102-ST | 2d | 2027-01-05 | 2027-01-06 | RHD4PRSHLSTAGST1001 FF, RHD4CZ2L102ST1206, RHD4PRSHLPOST1000, RHD4PRSHLDOSST1001 |  |  |  | Unskilled Labor [25.37 h]; Plumber [12.74 h]; GRP (1000mm Diameter) - ST - Depth: 1.51m - 2.5m [96.67 m]; GRP (1000mm Diameter) - ST - Depth: 2.51m - 3.5m [30.05 m]; GRP (1000mm Diameter) - ST - Depth: 3.51m - 4.5m [4.33 m] | 130,683.67 |  | L102 | Z2 | CONS | ST | Installation | bef |
| RHD4CZ2L102ST1406 |  | Primary Test for GRP Pipe Line 1000 mm - (RD-L-10/2)-Z2-L102-ST | 2d | 2027-01-07 | 2027-01-09 | RHD4CZ2L102ST1306 |  |  |  | Unskilled Labor [10.67 h]; Plumber [10.67 h]; Equipment Opreator [10.67 h]; Water Truck [10.67 h]; GRP (1000mm Diameter) - ST - Depth: 1.51m - 2.5m [48.34 m]; GRP (1000mm Diameter) - ST - Depth: 2.51m - 3.5m [15.02 m]; GRP (1000mm Diameter) - ST - Depth: 3.51m - 4.5m [2.17 m] | 65,347.27 |  | L102 | Z2 | CONS | ST | Primary Test | bef |
| RHD4CZ2L102ST1506 |  | Backfilling and warning tape works for GRP Pipe Line 1000 mm - (RD-L-10/2)-Z2-L102-ST | 2d | 2027-01-10 | 2027-01-11 | RHD4CZ2L102ST1406 |  |  |  | Skilled labor [20.26 h]; Unskilled Labor [40.4 h]; Equipment Opreator [40.4 h]; Excavator-Poclain [20.26 h]; Dump Truck [20.26 h]; GRP (1000mm Diameter) - ST - Depth: 1.51m - 2.5m [48.34 m]; GRP (1000mm Diameter) - ST - Depth: 2.51m - 3.5m [15.02 m]; GRP (1000mm Diameter) - ST - Depth: 3.51m - 4.5m [2.17 m] | 65,347.27 |  | L102 | Z2 | CONS | ST | Backfilling | bef |
|  | 903 | **RHD4-02-002-L102-(ST)-GRP Pipes - 900 mm diameter** |  | 2026-09-03 | 2027-01-20 |  |  |  |  |  |  |  |  |  |  |  |  |  |
| RHD4CZ2L102ST1105 |  | Excavation works for GRP Pipe Line 900 mm - (RD-L-10/2)-Z2-L102-ST | 2d | 2026-09-03 A | 2026-09-16 A | RHD4ENSDZ2APPST110, RHD4CZ2L102ST1106, RHD4CZ2L102ST1506 | 100% | 2026-09-03 | 2026-09-05 | Skilled labor [14.92 h]; Unskilled Labor [14.92 h]; Equipment Opreator [17.86 h]; Excavator-Poclain [14.92 h]; Dump Truck [2.94 h]; GRP (900mm Diameter) - ST - Depth: 1.51m - 2.5m [30.77 m]; GRP (900mm Diameter) - ST - Depth: 2.51m - 3.5m | 24,523.69 | 24,523.69 | L102 | Z2 | CONS | ST | Excavation | bef |
| RHD4CZ2L102ST1205 |  | Bedding works for GRP Pipe Line 900 mm - (RD-L-10/2)-Z2-L102-ST | 2d | 2027-01-12 | 2027-01-13 | RHD4CZ2L102ST1105 |  |  |  | Skilled labor [14.92 h]; Unskilled Labor [29.73 h]; Equipment Opreator [29.73 h]; Excavator-Poclain [14.92 h]; Dump Truck [14.92 h]; GRP (900mm Diameter) - ST - Depth: 1.51m - 2.5m [10.26 m]; GRP (900mm Diameter) - ST - Depth: 2.51m - 3.5m | 8,177.22 |  | L102 | Z2 | CONS | ST | Bedding | bef |
| RHD4CZ2L102ST1305 |  | Installing for GRP Pipe Line 900 mm - (RD-L-10/2)-Z2-L102-ST | 2d | 2027-01-14 | 2027-01-16 | RHD4PRSHLSTAGST1001, RHD4CZ2L102ST1205, RHD4CZ2L102ST1306, RHD4PRSHLPOST1000, RHD4PRSHLDOSST1001 |  |  |  | Unskilled Labor [17.86 h]; Plumber [8.93 h]; GRP (900mm Diameter) - ST - Depth: 1.51m - 2.5m [82.04 m]; GRP (900mm Diameter) - ST - Depth: 2.51m - 3.5m | 65,385.88 |  | L102 | Z2 | CONS | ST | Installation | bef |
| RHD4CZ2L102ST1405 |  | Primary Test for GRP Pipe Line 900 mm - (RD-L-10/2)-Z2-L102-ST | 2d | 2027-01-17 | 2027-01-18 | RHD4CZ2L102ST1305, RHD4CZ2L102ST1406 |  |  |  | Unskilled Labor [7.41 h]; Plumber [7.41 h]; Equipment Opreator [7.41 h]; Water Truck [7.41 h]; GRP (900mm Diameter) - ST - Depth: 1.51m - 2.5m [41.02 m]; GRP (900mm Diameter) - ST - Depth: 2.51m - 3.5m | 32,692.94 |  | L102 | Z2 | CONS | ST | Primary Test | bef |
| RHD4CZ2L102ST1505 |  | Backfilling and warning tape works for GRP Pipe Line 900 mm - (RD-L-10/2)-Z2-L102-ST | 2d | 2027-01-19 | 2027-01-20 | RHD4CZ2L102ST1405, RHD4CZ2L102ST1506 |  |  |  | Skilled labor [14.92 h]; Unskilled Labor [29.73 h]; Equipment Opreator [29.73 h]; Excavator-Poclain [14.92 h]; Dump Truck [14.92 h]; GRP (900mm Diameter) - ST - Depth: 1.51m - 2.5m [41.02 m]; GRP (900mm Diameter) - ST - Depth: 2.51m - 3.5m | 32,692.94 |  | L102 | Z2 | CONS | ST | Backfilling | bef |
|  | 902 | **RHD4-02-002-L102-(ST)-GRP Pipes - 800 mm diameter** |  | 2027-01-21 | 2027-02-01 |  |  |  |  |  |  |  |  |  |  |  |  |  |
| RHD4CZ2L102ST1104 |  | Excavation works for GRP Pipe Line 800 mm - (RD-L-10/2)-Z2-L102-ST | 2d | 2027-01-21 | 2027-01-23 | RHD4ENSDZ2APPST110, RHD4CZ2L102ST1105, RHD4CZ2L102ST1505 |  |  |  | Skilled labor [5.55 h]; Unskilled Labor [5.55 h]; Equipment Opreator [6.64 h]; Excavator-Poclain [5.55 h]; Dump Truck [1.09 h]; GRP (800mm Diameter) - ST - Depth: 1.51m - 2.5m [14.04 m]; GRP (800mm Diameter) - ST - Depth: 2.51m - 3.5m | 9,856.08 |  | L102 | Z2 | CONS | ST | Excavation | bef |
| RHD4CZ2L102ST1204 |  | Bedding works for GRP Pipe Line 800 mm - (RD-L-10/2)-Z2-L102-ST | 2d | 2027-01-24 | 2027-01-25 | RHD4CZ2L102ST1104 |  |  |  | Skilled labor [5.55 h]; Unskilled Labor [11.11 h]; Equipment Opreator [11.11 h]; Excavator-Poclain [5.55 h]; Dump Truck [5.55 h]; GRP (800mm Diameter) - ST - Depth: 1.51m - 2.5m [4.68 m]; GRP (800mm Diameter) - ST - Depth: 2.51m - 3.5m | 3,285.36 |  | L102 | Z2 | CONS | ST | Bedding | bef |
| RHD4CZ2L102ST1304 |  | Installing for GRP Pipe Line 800 mm - (RD-L-10/2)-Z2-L102-ST | 2d | 2027-01-26 | 2027-01-27 | RHD4PRSHLSTAGST1001, RHD4CZ2L102ST1204, RHD4CZ2L102ST1305, RHD4PRSHLPOST1000, RHD4PRSHLDOSST1001 |  |  |  | Unskilled Labor [7.2 h]; Plumber [3.59 h]; GRP (800mm Diameter) - ST - Depth: 1.51m - 2.5m [37.44 m]; GRP (800mm Diameter) - ST - Depth: 2.51m - 3.5m | 26,282.88 |  | L102 | Z2 | CONS | ST | Installation | bef |
| RHD4CZ2L102ST1404 |  | Primary Test for GRP Pipe Line 800 mm - (RD-L-10/2)-Z2-L102-ST | 2d | 2027-01-28 | 2027-01-30 | RHD4CZ2L102ST1304, RHD4CZ2L102ST1405 |  |  |  | Unskilled Labor [2.72 h]; Plumber [2.72 h]; Equipment Opreator [2.72 h]; Water Truck [2.72 h]; GRP (800mm Diameter) - ST - Depth: 1.51m - 2.5m [18.72 m]; GRP (800mm Diameter) - ST - Depth: 2.51m - 3.5m | 13,141.44 |  | L102 | Z2 | CONS | ST | Primary Test | bef |
| RHD4CZ2L102ST1504 |  | Backfilling and warning tape works for GRP Pipe Line 800 mm - (RD-L-10/2)-Z2-L102-ST | 2d | 2027-01-31 | 2027-02-01 | RHD4CZ2L102ST1404, RHD4CZ2L102ST1505 |  |  |  | Skilled labor [5.55 h]; Unskilled Labor [11.11 h]; Equipment Opreator [11.11 h]; Excavator-Poclain [5.55 h]; Dump Truck [5.55 h]; GRP (800mm Diameter) - ST - Depth: 1.51m - 2.5m [18.72 m]; GRP (800mm Diameter) - ST - Depth: 2.51m - 3.5m | 13,141.44 |  | L102 | Z2 | CONS | ST | Backfilling | bef |

| ID | WBS | Activity | Duration | Start | Finish | Predecessors | Complete | Planned start | Planned finish | Resources | Cost | Actual cost | RDH4-01-001-Road and Block Names-1 | RDH4-01-001-Zones-1 | RDH4-01-001-Phases-1 | RDH4-01-001-Networks-1 | RDH4-01-001-Work Method-1 | RDH4-01-001-MENEM |
| --- | --- | --- | --- | --- | --- | --- | --- | --- | --- | --- | --- | --- | --- | --- | --- | --- | --- | --- |
|  | 901 | **RHD4-02-002-L102-(ST)-GRP Pipes - 700 mm diameter** |  | 2026-09-15 | 2027-02-03 |  |  |  |  |  |  |  |  |  |  |  |  |  |
| RHD4CZ2L102ST1103 |  | Excavation works for GRP Pipe Line 700 mm - (RD-L-10/2)-Z2-L102-ST | 2d | 2026-09-15 A | 2026-09-19 A | RHD4ENSDZ2APPST110, RHD4CZ2L102ST1104 | 100% | 2026-09-17 | 2026-09-19 | Skilled labor [7.41 h]; Unskilled Labor [7.41 h]; Equipment Opreator [8.93 h]; Excavator-Poclain [7.41 h]; Dump Truck [1.52 h]; GRP (700mm Diameter) - ST - Depth: 1.51m - 2.5m [20.5 m] | 12,238.5 | 12,238.5 | L102 | Z2 | CONS | ST | Excavation | bef |
| RHD4CZ2L102ST1203 |  | Bedding works for GRP Pipe Line 700 mm - (RD-L-10/2)-Z2-L102-ST | 2d | 2027-01-24 | 2027-01-25 | RHD4CZ2L102ST1103 |  |  |  | Skilled labor [7.41 h]; Unskilled Labor [14.92 h]; Equipment Opreator [14.92 h]; Excavator-Poclain [7.41 h]; Dump Truck [7.41 h]; GRP (700mm Diameter) - ST - Depth: 1.51m - 2.5m [6.83 m] | 4,078.7 |  | L102 | Z2 | CONS | ST | Bedding | bef |
| RHD4CZ2L102ST1303 |  | Installing for GRP Pipe Line 700 mm - (RD-L-10/2)-Z2-L102-ST | 2d | 2027-01-28 | 2027-01-30 | RHD4PRSHLSTAGST1001, RHD4CZ2L102ST1203, RHD4CZ2L102ST1304, RHD4PRSHLPOST1000, RHD4PRSHLDOSST1001 |  |  |  | Unskilled Labor [7.41 h]; Plumber [3.7 h]; GRP (700mm Diameter) - ST - Depth: 1.51m - 2.5m [54.66 m] | 32,629.63 |  | L102 | Z2 | CONS | ST | Installation | bef |
| RHD4CZ2L102ST1403 |  | Primary Test for GRP Pipe Line 700 mm - (RD-L-10/2)-Z2-L102-ST | 2d | 2027-01-31 | 2027-02-01 | RHD4CZ2L102ST1303, RHD4CZ2L102ST1404 |  |  |  | Unskilled Labor [3.7 h]; Plumber [3.7 h]; Equipment Opreator [3.7 h]; Water Truck [3.7 h]; GRP (700mm Diameter) - ST - Depth: 1.51m - 2.5m [27.33 m] | 16,314.82 |  | L102 | Z2 | CONS | ST | Primary Test | bef |
| RHD4CZ2L102ST1503 |  | Backfilling and warning tape works for GRP Pipe Line 700 mm - (RD-L-10/2)-Z2-L102-ST | 2d | 2027-02-02 | 2027-02-03 | RHD4CZ2L102ST1403, RHD4CZ2L102ST1504 |  |  |  | Skilled labor [7.41 h]; Unskilled Labor [14.92 h]; Equipment Opreator [14.92 h]; Excavator-Poclain [7.41 h]; Dump Truck [7.41 h]; GRP (700mm Diameter) - ST - Depth: 1.51m - 2.5m [27.33 m] | 16,314.82 |  | L102 | Z2 | CONS | ST | Backfilling | bef |
|  | 900 | **RHD4-02-002-L102-(ST)-GRP Pipes - 600 mm diameter** |  | 2027-01-24 | 2027-02-06 |  |  |  |  |  |  |  |  |  |  |  |  |  |
| RHD4CZ2L102ST1102 |  | Excavation works for GRP Pipe Line 600 mm - (RD-L-10/2)-Z2-L102-ST | 2d | 2027-01-24 | 2027-01-25 | RHD4ENSDZ2APPST110, RHD4CZ2L102ST1103 |  |  |  | Skilled labor [3.7 h]; Unskilled Labor [3.7 h]; Equipment Opreator [4.47 h]; Excavator-Poclain [3.7 h]; Dump Truck [0.8 h]; GRP (600mm Diameter) - ST - Depth less than 1.5 m [6.82 m]; GRP (600mm Diameter) - ST - Depth: 1.51m - 2.5m | 2,939.42 |  | L102 | Z2 | CONS | ST | Excavation | bef |
| RHD4CZ2L102ST1202 |  | Bedding works for GRP Pipe Line 600 mm - (RD-L-10/2)-Z2-L102-ST | 2d | 2027-01-26 | 2027-01-27 | RHD4CZ2L102ST1102 |  |  |  | Skilled labor [3.7 h]; Unskilled Labor [7.41 h]; Equipment Opreator [7.41 h]; Excavator-Poclain [3.7 h]; Dump Truck [3.7 h]; GRP (600mm Diameter) - ST - Depth less than 1.5 m [3.41 m]; GRP (600mm Diameter) - ST - Depth: 1.51m - 2.5m | 1,469.71 |  | L102 | Z2 | CONS | ST | Bedding | bef |
| RHD4CZ2L102ST1302 |  | Installing for GRP Pipe Line 600 mm - (RD-L-10/2)-Z2-L102-ST | 2d | 2027-01-31 | 2027-02-01 | RHD4PRSHLSTAGST1001, RHD4CZ2L102ST1202, RHD4CZ2L102ST1303, RHD4PRSHLPOST1000, RHD4PRSHLDOSST1001 |  |  |  | Unskilled Labor [7.41 h]; Plumber [3.7 h]; GRP (600mm Diameter) - ST - Depth less than 1.5 m [30.68 m]; GRP (600mm Diameter) - ST - Depth: 1.51m - 2.5m | 13,223.08 |  | L102 | Z2 | CONS | ST | Installation | bef |
| RHD4CZ2L102ST1402 |  | Primary Test for GRP Pipe Line 600 mm - (RD-L-10/2)-Z2-L102-ST | 2d | 2027-02-02 | 2027-02-03 | RHD4CZ2L102ST1302, RHD4CZ2L102ST1403 |  |  |  | Unskilled Labor [3.7 h]; Plumber [3.7 h]; Equipment Opreator [3.7 h]; Water Truck [3.7 h]; GRP (600mm Diameter) - ST - Depth less than 1.5 m [13.63 m]; GRP (600mm Diameter) - ST - Depth: 1.51m - 2.5m | 5,874.53 |  | L102 | Z2 | CONS | ST | Primary Test | bef |
| RHD4CZ2L102ST1502 |  | Backfilling and warning tape works for GRP Pipe Line 600 mm - (RD-L-10/2)-Z2-L102-ST | 2d | 2027-02-04 | 2027-02-06 | RHD4CZ2L102ST1402, RHD4CZ2L102ST1503 |  |  |  | Skilled labor [3.7 h]; Unskilled Labor [7.41 h]; Equipment Opreator [7.41 h]; Excavator-Poclain [3.7 h]; Dump Truck [3.7 h]; GRP (600mm Diameter) - ST - Depth less than 1.5 m [13.63 m]; GRP (600mm Diameter) - ST - Depth: 1.51m - 2.5m | 5,874.53 |  | L102 | Z2 | CONS | ST | Backfilling | bef |
|  | 899 | **RHD4-02-002-L102-(ST)-GRP Pipes - 500 mm diameter** |  |  |  |  |  |  |  |  |  |  |  |  |  |  |  |  |
|  | 898 | **RHD4-02-002-L102-(ST)-GRP Pipes - 400 mm diameter** |  | 2027-01-26 | 2027-02-06 |  |  |  |  |  |  |  |  |  |  |  |  |  |
| RHD4CZ2L102ST1100 |  | Excavation works for GRP Pipe Line 400 mm - (RD-L-10/2)-Z2-L102-ST | 2d | 2027-01-26 | 2027-01-27 | RHD4ENSDZ2APPST110, RHD4CZ2L102ST1102 |  |  |  | Skilled labor [0.44 h]; Unskilled Labor [0.44 h]; Equipment Opreator [0.54 h]; Excavator-Poclain [0.44 h]; Dump Truck [0.11 h]; GRP (400mm Diameter) - ST - Depth less than 1.5 m [1.12 m] | 323.93 |  | L102 | Z2 | CONS | ST | Excavation | bef |
| RHD4CZ2L102ST1200 |  | Bedding works for GRP Pipe Line 400 mm - (RD-L-10/2)-Z2-L102-ST | 2d | 2027-01-28 | 2027-01-30 | RHD4CZ2L102ST1100 |  |  |  | Skilled labor [0.44 h]; Unskilled Labor [0.8 h]; Equipment Opreator [0.8 h]; Excavator-Poclain [0.44 h]; Dump Truck [0.44 h]; GRP (400mm Diameter) - ST - Depth less than 1.5 m [0.56 m] | 161.97 |  | L102 | Z2 | CONS | ST | Bedding | bef |
| RHD4CZ2L102ST1300 |  | Installing for GRP Pipe Line 400 mm - (RD-L-10/2)-Z2-L102-ST | 2d | 2027-01-31 | 2027-02-01 | RHD4PRSHLSTAGST1001 FF, RHD4CZ2L102ST1200, RHD4PRSHLPOST1000, RHD4PRSHLDOSST1001 |  |  |  | Unskilled Labor [1.6 h]; Plumber [0.8 h]; GRP (400mm Diameter) - ST - Depth less than 1.5 m [5.03 m] | 1,457.68 |  | L102 | Z2 | CONS | ST | Installation | bef |
| RHD4CZ2L102ST1400 |  | Primary Test for GRP Pipe Line 400 mm - (RD-L-10/2)-Z2-L102-ST | 2d | 2027-02-02 | 2027-02-03 | RHD4CZ2L102ST1300 |  |  |  | Unskilled Labor [0.22 h]; Plumber [0.22 h]; Equipment Opreator [0.22 h]; Water Truck [0.22 h]; GRP (400mm Diameter) - ST - Depth less than 1.5 m [2.23 m] | 647.86 |  | L102 | Z2 | CONS | ST | Primary Test | bef |
| RHD4CZ2L102ST1500 |  | Backfilling and warning tape works for GRP Pipe Line 400 mm - (RD-L-10/2)-Z2-L102-ST | 2d | 2027-02-04 | 2027-02-06 | RHD4CZ2L102ST1400 |  |  |  | Skilled labor [0.65 h]; Unskilled Labor [1.2 h]; Equipment Opreator [1.2 h]; Excavator-Poclain [0.65 h]; Dump Truck [0.65 h]; GRP (400mm Diameter) - ST - Depth less than 1.5 m [2.23 m] | 647.86 |  | L102 | Z2 | CONS | ST | Backfilling | bef |
|  | 913 | **RHD4-02-002-L102-(ST)-UPVC Pipes - 400 mm diameter** |  |  |  |  |  |  |  |  |  |  |  |  |  |  |  |  |
|  | 912 | **RHD4-02-002-L102-(ST)-UPVC Pipes - 300 mm diameter** |  | 2027-02-07 | 2027-05-11 |  |  |  |  |  |  |  |  |  |  |  |  |  |
| RHD4CZ2L102ST2100 |  | Excavation works for UPVC Pipe Line 300 mm - (RD-L-10/2)-Z2-L102-ST | 3d | 2027-02-07 | 2027-02-09 | RHD4ENSDZ2APPST110, RHD4CZ2L102ST3300, RHD4CZ2L102ST3301, RHD4CZ2L102ST1500 |  |  |  | Skilled labor [28.1 h]; Unskilled Labor [28.1 h]; Equipment Opreator [33.76 h]; Excavator-Poclain [28.1 h]; Dump Truck [5.66 h]; UPVC (300mm Diameter) - ST - Depth less than 1.5 [60.81 m]; UPVC (300mm Diameter) - ST - Depth: 1.51m - 2.5m | 18,425.43 |  | L102 | Z2 | CONS | ST | Excavation | bef |
| RHD4CZ2L102ST2200 |  | Bedding works for UPVC Pipe Line 300 mm - (RD-L-10/2)-Z2-L102-ST | 3d | 2027-04-28 | 2027-05-01 | RHD4CZ2L102ST2100, RHD4CZ4L01MV3300 |  |  |  | Skilled labor [24.8 h]; Unskilled Labor [49.66 h]; Equipment Opreator [49.66 h]; Excavator-Poclain [24.8 h]; Dump Truck [24.8 h]; UPVC (300mm Diameter) - ST - Depth less than 1.5 [30.4 m]; UPVC (300mm Diameter) - ST - Depth: 1.51m - 2.5m | 9,211.2 |  | L102 | Z2 | CONS | ST | Bedding | bef |
| RHD4CZ2L102ST2300 |  | Installing for UPVC Pipe Line 300 mm - (RD-L-10/2)-Z2-L102-ST | 3d | 2027-05-02 | 2027-05-04 | RHD4PRSHLDOSST1101, RHD4PRSHLSTAGST1101, RHD4CZ2L102ST2200 |  |  |  | Unskilled Labor [56.3 h]; Plumber [28.1 h]; UPVC (300mm Diameter) - ST - Depth less than 1.5 [273.64 m]; UPVC (300mm Diameter) - ST - Depth: 1.51m - 2.5m | 82,912.92 |  | L102 | Z2 | CONS | ST | Installation | bef |
| RHD4CZ2L102ST2400 |  | Primary Test for UPVC Pipe Line 300 mm - (RD-L-10/2)-Z2-L102-ST | 2d | 2027-05-05 | 2027-05-06 | RHD4CZ2L102ST2300, RHD4CTUN1Z5STG21320, RHD4CZ6C052PT3200, RHD4CZ7C032SL2400 |  |  |  | Unskilled Labor [18.19 h]; Plumber [18.19 h]; Equipment Opreator [18.19 h]; Water Truck [18.19 h]; UPVC (300mm Diameter) - ST - Depth less than 1.5 [121.62 m]; UPVC (300mm Diameter) - ST - Depth: 1.51m - 2.5m | 36,850.86 |  | L102 | Z2 | CONS | ST | Primary Test | bef |
| RHD4CZ2L102ST2500 |  | Backfilling and warning tape works for UPVC Pipe Line 300 mm - (RD-L-10/2)-Z2-L102-ST | 4d | 2027-05-08 | 2027-05-11 | RHD4CZ2L102ST2400, RHD4CZ2L102ST6100 |  |  |  | Skilled labor [33.11 h]; Unskilled Labor [66.21 h]; Equipment Opreator [66.21 h]; Excavator-Poclain [33.11 h]; Dump Truck [33.11 h]; UPVC (300mm Diameter) - ST - Depth less than 1.5 [121.62 m]; UPVC (300mm Diameter) - ST - Depth: 1.51m - 2.5m | 36,850.86 |  | L102 | Z2 | CONS | ST | Backfilling | bef |

| ID | WBS | Activity | Duration | Start | Finish | Predecessors | Complete | Remaining | Planned start | Planned finish | Resources | Cost | Actual cost | RDH4-01-001-Road and Block Names-1 | RDH4-01-001-Zones-1 | RDH4-01-001-Phases-1 | RDH4-01-001-Networks-1 | RDH4-01-001-Work Method-1 | RDH4-01-001-MENEM |
| --- | --- | --- | --- | --- | --- | --- | --- | --- | --- | --- | --- | --- | --- | --- | --- | --- | --- | --- | --- |
|  | 920 | **RHD4-02-002-L102-(ST)-Concrete Encasement** |  | 2027-05-03 | 2027-05-04 |  |  |  |  |  |  |  |  |  |  |  |  |  |  |
| RHD4CZ2L102ST6100 |  | Pipe Encasement for Storm Pipelines - (RD-L-10/2)-Z2-L102-ST | 2d | 2027-05-03 | 2027-05-04 | RHD4CZ2L102ST2300 SS, RHD4CZ2L102ST2300 FF, RHD4CZ2L102ST2200 |  |  |  |  | Skilled labor [2.61 h]; Unskilled Labor [2.61 h]; Equipment Opreator [2.83 h]; Concrete Mixer Truck [0.22 h]; Dump Truck [2.61 h]; Pipe Encasement - ST [47.78 m3] | 24,176.68 |  | L102 | Z2 | CONS | ST | Pipe Encasement | bef |
|  | 921 | **RHD4-02-002-Z2-L102-Catch Basin - ST** |  | 2026-10-27 | 2027-01-30 |  |  |  |  |  |  |  |  |  |  |  |  |  |  |
|  | 922 | **RHD4-02-002-L102-(ST)-Single Catch Basin Works** |  | 2026-10-27 | 2027-01-21 |  |  |  |  |  |  |  |  |  |  |  |  |  |  |
| RHD4CZ2L102ST7100 |  | Excavation works for Single Catch Basin - (RD-L-10/2)-Z2-L102-ST | 3d | 2026-10-27 A | 2027-01-04 | RHD4ENSDZ2APPST110, RHD4CZ2L102ST3102 | 65% | 1.04d | 2026-10-27 | 2026-10-29 | Skilled labor [28.31 h]; Unskilled Labor [56.63 h]; Equipment Opreator [42.47 h]; Excavator-Poclain [28.31 h]; Dump Truck [14.16 h]; Single Catch basin - ST [6.5 nr] | 24,251.5 | 15,864.52 | L102 | Z2 | CONS | ST | Excavation | bef |
| RHD4CZ2L102ST7200 |  | PC Blinding, Installation and Pipe connection for Single Catch Basin - (RD-L-10/2)-Z2-L102-ST | 3d | 2027-01-04 | 2027-01-06 | RHD4CZ2L102ST7100 |  |  |  |  | Skilled labor [28.31 h]; Unskilled Labor [56.63 h]; Plumber [14.16 h]; Equipment Opreator [5.66 h]; Boom Truck [5.66 h]; Single Catch basin - ST [5.2 nr] | 19,401.2 |  | L102 | Z2 | CONS | ST | Installation & Pipe Connection | bef |
| RHD4CZ2L102ST7300 |  | Rings & C.Slab & Final Backfill for Single Catch Basin - (RD-L-10/2)-Z2-L102-ST | 4d | 2027-01-07 | 2027-01-11 | RHD4PRSHLDOSST1301, RHD4PRSHLSTAGST1301, RHD4CZ2L102ST7200 |  |  |  |  | Skilled labor [35.39 h]; Unskilled Labor [70.79 h]; Equipment Opreator [42.47 h]; Boom Truck [7.08 h]; Bobcat [35.39 h]; Single Catch basin - ST [9.1 nr] | 33,952.1 |  | L102 | Z2 | CONS | ST | Rings | bef |
| RHD4CZ2L102ST7400 |  | Steel Cover for Single Catch Basin - (RD-L-10/2)-Z2-L102-ST | 3d | 2027-01-12 | 2027-01-14 | RHD4PRSHLDOSST1701, RHD4CZ2L102ST7300 |  |  |  |  | Skilled labor [28.31 h]; Unskilled Labor [28.31 h]; Equipment Opreator [5.66 h]; Boom Truck [5.66 h]; Single Catch basin - ST [1.3 nr] | 4,850.3 |  | L102 | Z2 | CONS | ST | Steel Cover | bef |
| RHD4CZ2L102ST7500 |  | Finishing and Insulation works for Single Catch Basin - (RD-L-10/2)-Z2-L102-ST | 6d | 2027-01-16 | 2027-01-21 | RHD4CZ2L102ST7400 |  |  |  |  | Skilled labor [56.63 h]; Unskilled Labor [113.26 h]; Equipment Opreator [11.33 h]; Boom Truck [11.33 h]; Single Catch basin - ST [3.9 nr] | 14,550.9 |  | L102 | Z2 | CONS | ST | Insulation | bef |
|  | 923 | **RHD4-02-002-L102-(ST)-Double Catch Basin Works** |  | 2027-01-19 | 2027-01-30 |  |  |  |  |  |  |  |  |  |  |  |  |  |  |
| RHD4CZ2L102ST8100 |  | Excavation works for Double Catch Basin - (RD-L-10/2)-Z2-L102-ST | 2d | 2027-01-19 | 2027-01-20 | RHD4ENSDZ2APPST110, RHD4CZ2L102ST3300, RHD4CZ2L102ST3301, RHD4CZ2L102ST7100 |  |  |  |  | Skilled labor [2.18 h]; Unskilled Labor [4.36 h]; Equipment Opreator [3.27 h]; Excavator-Poclain [2.18 h]; Dump Truck [1.09 h]; Double Catch basin - ST [0.25 nr] | 3,491.5 |  | L102 | Z2 | CONS | ST | Excavation | bef |
| RHD4CZ2L102ST8200 |  | PC Blinding, Installation and Pipe connection for Double Catch Basin - (RD-L-10/2)-Z2-L102-ST | 2d | 2027-01-21 | 2027-01-23 | RHD4CZ2L102ST8100, RHD4CZ2L102ST7200 |  |  |  |  | Skilled labor [2.18 h]; Unskilled Labor [4.36 h]; Plumber [1.09 h]; Equipment Opreator [0.44 h]; Boom Truck [0.44 h]; Double Catch basin - ST [0.2 nr] | 2,793.2 |  | L102 | Z2 | CONS | ST | Installation & Pipe Connection | bef |
| RHD4CZ2L102ST8300 |  | Rings & C.Slab & Final Backfillfor Double Catch Basin - (RD-L-10/2)-Z2-L102-ST | 2d | 2027-01-24 | 2027-01-25 | RHD4PRSHLDOSST1301, RHD4PRSHLSTAGST1301, RHD4CZ2L102ST8200, RHD4CZ2L102ST7300 |  |  |  |  | Skilled labor [2.72 h]; Unskilled Labor [5.45 h]; Equipment Opreator [3.27 h]; Boom Truck [0.54 h]; Bobcat [2.72 h]; Double Catch basin - ST [0.35 nr] | 4,888.1 |  | L102 | Z2 | CONS | ST | Rings | bef |
| RHD4CZ2L102ST8400 |  | Steel Cover for Double Catch Basin - (RD-L-10/2)-Z2-L102-ST | 2d | 2027-01-26 | 2027-01-27 | RHD4PRSHLDOSST1701, RHD4CZ2L102ST8300, RHD4CZ2L102ST7400 |  |  |  |  | Skilled labor [2.18 h]; Unskilled Labor [2.18 h]; Equipment Opreator [0.44 h]; Boom Truck [0.44 h]; Double Catch basin - ST [0.05 nr] | 698.3 |  | L102 | Z2 | CONS | ST | Steel Cover | bef |
| RHD4CZ2L102ST8500 |  | Finishing and Insulation works for Double Catch Basin - (RD-L-10/2)-Z2-L102-ST | 2d | 2027-01-28 | 2027-01-30 | RHD4CZ2L102ST8400, RHD4CZ2L102ST7500 |  |  |  |  | Skilled labor [5.45 h]; Unskilled Labor [10.89 h]; Equipment Opreator [1.09 h]; Boom Truck [1.09 h]; Double Catch basin - ST [0.15 nr] | 2,094.9 |  | L102 | Z2 | CONS | ST | Insulation | bef |
|  | 894 | **RHD4-02-002-Z2-L102-Concrete Box Culvert - ST** |  | 2026-08-04 | 2027-08-30 |  |  |  |  |  |  |  |  |  |  |  |  |  |  |
|  | 895 | **RHD4-02-002-L102-(ST)-Concrete Box Culvert** |  | 2026-08-04 | 2027-08-30 |  |  |  |  |  |  |  |  |  |  |  |  |  |  |
| RHD4CZ2L102ST4100 |  | Excavation works for Box Culvert - (RD-L-10/2)-Z2-L102-ST | 4d | 2026-08-04 A | 2027-07-31 | RHD4ENSDZ2APPST110, RHD4ENMSBC2000, RHD4ENMSBC2010, RHD4CZ2L102PT1501 | 30% | 4d | 2027-01-07 | 2027-01-11 | Skilled labor [33.76 h]; Unskilled Labor [33.76 h]; Equipment Opreator [101.39 h]; Excavator-Poclain [33.76 h]; Water Truck [33.76 h]; Dump Truck [33.76 h]; Excavation for culverts (all types of soil) including backfilling - ST [1845.9 m3] | 33,226.2 |  | L102 | Z2 | CONS | ST | Excavation | bef |
| RHD4CZ2L102ST4200 |  | PC works for Box Culvert - (RD-L-10/2)-Z2-L102-ST | 2d | 2026-08-06 A | 2027-08-02 | RHD4CZ2L102ST4100 | 47% | 2d | 2027-01-12 | 2027-01-13 | Skilled labor [7.95 h]; Unskilled Labor [7.95 h]; Equipment Opreator [7.95 h]; Concrete Mixer Truck [4 h]; Concrete Pump [4 h]; 100 mm thickness lean concrete under the base - ST [1205.96 m2] | 47,032.44 | 22,210.5 | L102 | Z2 | CONS | ST | PC | bef |
| RHD4CZ2L102ST4400 |  | Raft works for Box Culvert - (RD-L-10/2)-Z2-L102-ST | 7d | 2026-08-09 A | 2027-08-10 | RHD4PRSHLDOSST1501, RHD4PRSHLSTAGST1501 SS, RHD4CZ2L102ST4200 | 38% | 7d | 2027-01-14 | 2027-01-21 | Carpenter [59.35 h]; Skilled labor [72 h]; Steel Fixer [12.63 h]; Equipment Opreator [121.32 h]; Boom Truck [2.5 h]; Concrete Mixer Truck [59.35 h]; Concrete Pump [59.35 h]; Supply and cast in place reinforced concrete for Box culverts - ST [436.27 m3]; Supply, placing, and fixing of high tensile reinforcement steel for Box culverts - ST [92.49 Ton] | 763,724.32 | 286,259.2 | L102 | Z2 | CONS | ST | Raft Works | bef |
| RHD4CZ2L102ST4500 |  | Wall and slab works for Box Culvert - (RD-L-10/2)-Z2-L102-ST | 7d | 2026-08-11 A | 2027-08-18 | RHD4PRSHLDOSST1501, RHD4PRSHLSTAGST1501, RHD4CZ2L102ST4400 | 54% | 7d | 2027-01-23 | 2027-01-30 | Carpenter [59.35 h]; Skilled labor [72 h]; Steel Fixer [12.63 h]; Equipment Opreator [121.32 h]; Boom Truck [2.5 h]; Concrete Mixer Truck [59.35 h]; Concrete Pump [59.35 h]; Supply and cast in place reinforced concrete for Box culverts - ST [545.34 m3]; Supply, placing, and fixing of high tensile reinforcement steel for Box culverts - ST [138.73 Ton] | 1,038,264.55 | 560,233.6 | L102 | Z2 | CONS | ST | Wall and slab Works | bef |
| RHD4CZ2L102ST4700 |  | Backfilling works for Box Culvert - (RD-L-10/2)-Z2-L102-ST | 4d | 2027-08-19 | 2027-08-23 | RHD4CZ2L102ST4500, RHD4CZ2L102ST5300 |  |  |  |  | Skilled labor [33.76 h]; Unskilled Labor [67.52 h]; Equipment Opreator [54.02 h]; Boom Truck [16.88 h]; Water Truck [3.38 h]; Dump Truck [33.76 h]; Excavation for culverts (all types of soil) including backfilling - ST [791.1 m3] | 14,239.8 |  | L102 | Z2 | CONS | ST | Backfilling | bef |
| RHD4CZ2L102ST4600 |  | Insulation and Testing for Box Culvert - (RD-L-10/2)-Z2-L102-ST | 6d | 2027-08-24 | 2027-08-30 | RHD4CZ2L102ST4700, RHD4CZ2L102ST5400, RHD4CZ2L102ST5400 FF |  |  |  |  | Skilled labor [59.35 h]; Unskilled Labor [118.81 h]; Equipment Opreator [59.35 h]; Water Truck [59.35 h]; Supply and cast in place reinforced concrete for Box culverts - ST [109.07 m3] | 107,321.93 |  | L102 | Z2 | CONS | ST | Insulation and Testing | bef |
|  | 896 | **RHD4-02-002-L102-(ST)-Concrete Chambers** |  | 2027-08-01 | 2027-08-09 |  |  |  |  |  |  |  |  |  |  |  |  |  |  |
| RHD4CZ2L102ST5100 |  | Excavation and Bedding for Concrete Chambers - for Box Culvert - (RD-L-10/2)-Z2-L102-ST | 2d | 2027-08-01 | 2027-08-02 | RHD4ENSDZ2APPST110, RHD4CZ2L102ST4100 |  |  |  |  | Skilled labor [10.89 h]; Unskilled Labor [10.89 h]; Equipment Opreator [2.18 h]; Excavator-Poclain [1.09 h]; Dump Truck [1.09 h]; Concrete chambers - ST - Size 1.8 x 2.0 m, depth 4.51-5.5 m [0.15 nr] | 5,806.2 |  | L102 | Z2 | CONS | ST | Excavation & Bedding | bef |
| RHD4CZ2L102ST5200 |  | PC works for Concrete Chambers - for Box Culvert - (RD-L-10/2)-Z2-L102-ST | 2d | 2027-08-03 | 2027-08-04 | RHD4CZ2L102ST5100 |  |  |  |  | Skilled labor [10.89 h]; Unskilled Labor [10.89 h]; Equipment Opreator [2.18 h]; Excavator-Poclain [1.09 h]; Dump Truck [1.09 h]; Concrete chambers - ST - Size 1.8 x 2.0 m, depth 4.51-5.5 m [0.1 nr] | 3,870.8 |  | L102 | Z2 | CONS | ST | PC Works | bef |
| RHD4CZ2L102ST5300 |  | Installation for Concrete Chambers - for Box Culvert - (RD-L-10/2)-Z2-L102-ST | 2d | 2027-08-05 | 2027-08-07 | RHD4CZ2L102ST5200 |  |  |  |  | Skilled labor [10.89 h]; Unskilled Labor [10.89 h]; Equipment Opreator [2.18 h]; Excavator-Poclain [1.09 h]; Dump Truck [1.09 h]; Concrete chambers - ST - Size 1.8 x 2.0 m, depth 4.51-5.5 m [0.55 nr] | 21,289.4 |  | L102 | Z2 | CONS | ST | Installation | bef |
| RHD4CZ2L102ST5400 |  | Backfilling works for Concrete Chambers - for Box Culvert - (RD-L-10/2)-Z2-L102-ST | 2d | 2027-08-08 | 2027-08-09 | RHD4CZ2L102ST5300 |  |  |  |  | Skilled labor [10.89 h]; Unskilled Labor [10.89 h]; Equipment Opreator [2.18 h]; Excavator-Poclain [1.09 h]; Dump Truck [1.09 h]; Concrete chambers - ST - Size 1.8 x 2.0 m, depth 4.51-5.5 m [0.2 nr] | 7,741.6 |  | L102 | Z2 | CONS | ST | Backfilling Works | bef |

| ID | WBS | Activity | Duration | Start | Finish | Predecessors | Complete | Remaining | Planned start | Planned finish | Resources | Cost | Actual cost | RDH4-01-001-Road and Block Names-1 | RDH4-01-001-Zones-1 | RDH4-01-001-Phases-1 | RDH4-01-001-Networks-1 | RDH4-01-001-Work Method-1 | RDH4-01-001-MENEM |
| --- | --- | --- | --- | --- | --- | --- | --- | --- | --- | --- | --- | --- | --- | --- | --- | --- | --- | --- | --- |
|  | 946 | **RHD4-02-002-Z2-L102-Sewage Network - SW** |  | 2026-10-20 | 2027-06-26 |  |  |  |  |  |  |  |  |  |  |  |  |  |  |
|  | 956 | **RHD4-02-002-L102-(SW)-MH Works - 1200 mm diameter** |  | 2026-10-20 | 2027-06-26 |  |  |  |  |  |  |  |  |  |  |  |  |  |  |
| RHD4CZ2L102SW3100 |  | Excavation and PC Blinding works for MH 1200 mm - (RD-L-10/2)-Z2-L102-SW | 7d | 2026-10-20 A | 2027-05-19 | RHD4ENSDZ2APPSW120, RHD4CZ2L102ST2500 | 42% | 3d | 2026-10-20 | 2026-10-27 | Skilled labor [74.4 h]; Unskilled Labor [74.4 h]; Equipment Opreator [119.03 h]; Excavator-Poclain [74.4 h]; Water Truck [7.41 h]; Dump Truck [37.24 h]; MH (1200mm Diameter) - SW - depth 0 - 1.5m [1 nr]; MH (1200mm Diameter) - SW - depth 1.51 - 2.5m [2.5 nr]; MH (1200mm Diameter) - SW - depth 2.51 - 3.5m [0.25 nr] | 35,237 | 14,846.5 | L102 | Z2 | CONS | SW | Excavation | bef |
| RHD4CZ2L102SW3200 |  | Installation of Base for MH 1200 mm - (RD-L-10/2)-Z2-L102-SW | 8d | 2027-05-24 | 2027-06-01 | RHD4CZ2L102SW3100, RHD4CZ2L102ST3500 |  |  |  |  | Skilled labor [87.12 h]; Unskilled Labor [87.12 h]; Equipment Opreator [34.85 h]; Boom Truck [17.42 h]; Concrete Mixer Truck [17.42 h]; MH (1200mm Diameter) - SW - depth 0 - 1.5m [1 nr]; MH (1200mm Diameter) - SW - depth 1.51 - 2.5m [2.5 nr]; MH (1200mm Diameter) - SW - depth 2.51 - 3.5m [0.25 nr] | 35,237 |  | L102 | Z2 | CONS | SW | Installing Base | bef |
| RHD4CZ2L102SW3300 |  | MH Ring and C.Slab works and Backfilling works for MH 1200 mm - (RD-L-10/2)-Z2-L102-SW | 8d | 2027-06-02 | 2027-06-10 | RHD4PRSHLDOSSW1301, RHD4PRSHLSTAGSW1301, RHD4CZ2L102SW3200, RHD4CZ5L07IRR3200, RHD4CZ9C071ST1500 |  |  |  |  | Skilled labor [87.12 h]; Unskilled Labor [87.12 h]; Equipment Opreator [60.99 h]; Boom Truck [34.85 h]; Concrete Mixer Truck [26.14 h]; MH (1200mm Diameter) - SW - depth 0 - 1.5m [1.4 nr]; MH (1200mm Diameter) - SW - depth 1.51 - 2.5m [3.5 nr]; MH (1200mm Diameter) - SW - depth 2.51 - 3.5m [0.35 nr] | 49,331.8 |  | L102 | Z2 | CONS | SW | Installing Rings | bef |
| RHD4CZ2L102SW3400 |  | Steel Cover for MH 1200 mm - (RD-L-10/2)-Z2-L102-SW | 5d | 2027-06-12 | 2027-06-16 | RHD4PRSHLDOSSW1401, RHD4PRSHLSTAGSW1401, RHD4CZ2L102SW3300 |  |  |  |  | Skilled labor [54.45 h]; Unskilled Labor [108.9 h]; Equipment Opreator [10.89 h]; Boom Truck [10.89 h]; MH (1200mm Diameter) - SW - depth 0 - 1.5m [0.2 nr]; MH (1200mm Diameter) - SW - depth 1.51 - 2.5m [0.5 nr]; MH (1200mm Diameter) - SW - depth 2.51 - 3.5m [0.05 nr] | 7,047.4 |  | L102 | Z2 | CONS | SW | Steel Cover | bef |
| RHD4CZ2L102SW3500 |  | Finishing, Benching, Testing works for MH 1200 mm - (RD-L-10/2)-Z2-L102-SW | 8d | 2027-06-17 | 2027-06-26 | RHD4CZ2L102SW3400 |  |  |  |  | Skilled labor [87.12 h]; Unskilled Labor [174.25 h]; Plumber [87.12 h]; Equipment Opreator [17.42 h]; Water Truck [17.42 h]; MH (1200mm Diameter) - SW - depth 0 - 1.5m [0.4 nr]; MH (1200mm Diameter) - SW - depth 1.51 - 2.5m [1 nr]; MH (1200mm Diameter) - SW - depth 2.51 - 3.5m [0.1 nr] | 14,094.8 |  | L102 | Z2 | CONS | SW | Benching | bef |
|  | 957 | **RHD4-02-002-L102-(SW)-MH Works - 1200 mm diameter with Back drop** |  |  |  |  |  |  |  |  |  |  |  |  |  |  |  |  |  |
|  | 952 | **RHD4-02-002-L102-(SW)-UPVC Pipes - 200 mm diameter** |  | 2026-10-27 | 2027-06-23 |  |  |  |  |  |  |  |  |  |  |  |  |  |  |
| RHD4CZ2L102SW2100 |  | Excavation works for UPVC Pipe Line 200 mm - (RD-L-10/2)-Z2-L102-SW | 5d | 2026-10-27 A | 2027-05-22 | RHD4ENSDZ2APPSW120, RHD4CZ2L102SW3100 | 58% | 2d | 2026-10-27 | 2026-11-01 | Skilled labor [50.53 h]; Unskilled Labor [50.53 h]; Equipment Opreator [60.55 h]; Excavator-Poclain [50.53 h]; Dump Truck [10.13 h]; UPVC (200mm Diameter) - SW - Depth: less than 1.5m [91.63 m]; UPVC (200mm Diameter) - SW - Depth: 1.51m - 2.5m [16.08 m] | 19,982.76 | 11,520 | L102 | Z2 | CONS | SW | Excavation | bef |
| RHD4CZ2L102SW2200 |  | Bedding works for UPVC Pipe Line 200 mm - (RD-L-10/2)-Z2-L102-SW | 5d | 2026-10-29 A | 2027-05-24 | RHD4CZ2L102SW2100 | 54% | 2d | 2026-10-28 | 2026-11-02 | Skilled labor [47.05 h]; Unskilled Labor [93.98 h]; Equipment Opreator [93.98 h]; Excavator-Poclain [47.05 h]; Dump Truck [47.05 h]; UPVC (200mm Diameter) - SW - Depth: less than 1.5m [45.81 m]; UPVC (200mm Diameter) - SW - Depth: 1.51m - 2.5m [5.36 m] | 9,408.92 | 5,040 | L102 | Z2 | CONS | SW | Bedding | bef |
| RHD4CZ2L102SW2300 |  | Installing for UPVC Pipe Line 200 mm - (RD-L-10/2)-Z2-L102-SW | 6d | 2026-10-31 A | 2027-06-13 | RHD4PRSHLDOSSW1001, RHD4PRSHLSTAGSW1001, RHD4CZ2L102SW2200, RHD4CZ2L102SW3300 | 55% | 2d | 2026-10-31 | 2026-11-05 | Unskilled Labor [128.94 h]; Plumber [64.47 h]; Equipment Opreator [64.47 h]; Boom Truck [64.47 h]; UPVC (200mm Diameter) - SW - Depth: less than 1.5m [412.33 m]; UPVC (200mm Diameter) - SW - Depth: 1.51m - 2.5m [42.87 m] | 83,522.19 | 46,260 | L102 | Z2 | CONS | SW | Installation | bef |
| RHD4CZ2L102SW2400 |  | Primary Test for UPVC Pipe Line 200 mm - (RD-L-10/2)-Z2-L102-SW | 3d | 2027-06-14 | 2027-06-16 | RHD4CZ2L102SW2300 |  |  |  |  | Unskilled Labor [30.17 h]; Plumber [30.17 h]; Equipment Opreator [30.17 h]; Water Truck [30.17 h]; UPVC (200mm Diameter) - SW - Depth: less than 1.5m [183.26 m]; UPVC (200mm Diameter) - SW - Depth: 1.51m - 2.5m [21.44 m] | 37,639.28 |  | L102 | Z2 | CONS | SW | Primary Test | bef |
| RHD4CZ2L102SW2500 |  | Backfilling and warning tape works for UPVC Pipe Line 200 mm - (RD-L-10/2)-Z2-L102-SW | 6d | 2027-06-17 | 2027-06-23 | RHD4CZ2L102SW2400 |  |  |  |  | Skilled labor [55.76 h]; Unskilled Labor [111.41 h]; Equipment Opreator [111.41 h]; Excavator-Poclain [55.76 h]; Dump Truck [55.76 h]; UPVC (200mm Diameter) - SW - Depth: less than 1.5m [183.26 m]; UPVC (200mm Diameter) - SW - Depth: 1.51m - 2.5m [21.44 m] | 37,639.28 |  | L102 | Z2 | CONS | SW | Backfilling | bef |
|  | 955 | **RHD4-02-002-L102-(SW)-Concrete Encasement** |  |  |  |  |  |  |  |  |  |  |  |  |  |  |  |  |  |
|  | 983 | **RHD4-02-002-Z2-L102-Potable Network - PT** |  | 2027-06-24 | 2027-08-26 |  |  |  |  |  |  |  |  |  |  |  |  |  |  |
|  | 985 | **RHD4-02-002-L102-(PT)-HDPE Pipes - 160 mm diameter** |  | 2027-06-24 | 2027-07-26 |  |  |  |  |  |  |  |  |  |  |  |  |  |  |
| RHD4CZ2L102PT1101 |  | Excavation works for HDPE Pipline 160 mm - (RD-L-10/2)-Z2-L102-PT | 5d | 2027-06-24 | 2027-06-29 | RHD4ENSDZ2APPPT130, RHD4ENMSPT2000, RHD4CZ2L102SW2500, RHD4CZ7RA05ICT2400, RHD4CZ8A011ST7300 |  |  |  |  | Skilled labor [44.87 h]; Unskilled Labor [44.87 h]; Equipment Opreator [53.8 h]; Excavator-Poclain [44.87 h]; Dump Truck [8.93 h]; HDPE (160mm Diameter) - PT - Depth: less than 1.5m [103 m] | 11,021 |  | L102 | Z2 | CONS | PT | Excavation | bef |
| RHD4CZ2L102PT1201 |  | Bedding works for HDPE Pipline 160 mm - (RD-L-10/2)-Z2-L102-PT | 4d | 2027-06-30 | 2027-07-04 | RHD4CZ2L102PT1101 |  |  |  |  | Skilled labor [37.35 h]; Unskilled Labor [74.82 h]; Equipment Opreator [74.82 h]; Excavator-Poclain [37.35 h]; Dump Truck [37.35 h]; HDPE (160mm Diameter) - PT - Depth: less than 1.5m [51.5 m] | 5,510.5 |  | L102 | Z2 | CONS | PT | Bedding | bef |
| RHD4CZ2L102PT1301 |  | Installing for HDPE Pipline 160 mm - (RD-L-10/2)-Z2-L102-PT | 7d | 2027-07-05 | 2027-07-12 | RHD4PRSHLDOSPT1000, RHD4PRSHLSTAGPT1000, RHD4CZ2L102PT1201 |  |  |  |  | Unskilled Labor [149.52 h]; Plumber [74.82 h]; Equipment Opreator [74.82 h]; Boom Truck [74.82 h]; HDPE (160mm Diameter) - PT - Depth: less than 1.5m [463.5 m] | 49,594.5 |  | L102 | Z2 | CONS | PT | Installation | bef |
| RHD4CZ2L102PT1401 |  | Primary Test for HDPE Pipline 160 mm - (RD-L-10/2)-Z2-L102-PT | 3d | 2027-07-17 | 2027-07-19 | RHD4CZ2L102PT1301, RHD4CZ2L102PT3100, RHD4CZ2C082PT2401, RHD4CZ5L016IRR1504 |  |  |  |  | Unskilled Labor [22.4 h]; Plumber [22.4 h]; Equipment Opreator [22.4 h]; Water Truck [22.4 h]; HDPE (160mm Diameter) - PT - Depth: less than 1.5m [206 m] | 22,042 |  | L102 | Z2 | CONS | PT | Primary Test | bef |
| RHD4CZ2L102PT1501 |  | Backfilling and warning tape works for HDPE Pipline 160 mm - (RD-L-10/2)-Z2-L102-PT | 6d | 2027-07-20 | 2027-07-26 | RHD4CZ2L102PT1401 |  |  |  |  | Skilled labor [56.09 h]; Unskilled Labor [112.17 h]; Equipment Opreator [112.17 h]; Excavator-Poclain [56.09 h]; Dump Truck [56.09 h]; HDPE (160mm Diameter) - PT - Depth: less than 1.5m [206 m] | 22,042 |  | L102 | Z2 | CONS | PT | Backfilling | bef |
|  | 984 | **RHD4-02-002-L102-(PT)-HDPE Pipes - 110 mm diameter** |  | 2027-06-30 | 2027-07-28 |  |  |  |  |  |  |  |  |  |  |  |  |  |  |
| RHD4CZ2L102PT1100 |  | Excavation works for HDPE Pipline 110 mm - (RD-L-10/2)-Z2-L102-PT | 2d | 2027-06-30 | 2027-07-01 | RHD4ENSDZ2APPPT130, RHD4ENMSPT2000, RHD4CZ2L102PT1101 |  |  |  |  | Skilled labor [6.97 h]; Unskilled Labor [6.97 h]; Equipment Opreator [8.39 h]; Excavator-Poclain [6.97 h]; Dump Truck [1.42 h]; HDPE (110mm Diameter) - PT - Depth: less than 1.5m [16 m] | 1,360 |  | L102 | Z2 | CONS | PT | Excavation | bef |
| RHD4CZ2L102PT1200 |  | Bedding works for HDPE Pipline 110 mm - (RD-L-10/2)-Z2-L102-PT | 2d | 2027-07-05 | 2027-07-06 | RHD4CZ2L102PT1100, RHD4CZ2L102PT1201 |  |  |  |  | Skilled labor [5.77 h]; Unskilled Labor [11.65 h]; Equipment Opreator [11.65 h]; Excavator-Poclain [5.77 h]; Dump Truck [5.77 h]; HDPE (110mm Diameter) - PT - Depth: less than 1.5m [8 m] | 680 |  | L102 | Z2 | CONS | PT | Bedding | bef |
| RHD4CZ2L102PT1300 |  | Installing for HDPE Pipline 110 mm - (RD-L-10/2)-Z2-L102-PT | 2d | 2027-07-13 | 2027-07-14 | RHD4PRSHLDOSPT1000, RHD4PRSHLSTAGPT1000, RHD4CZ2L102PT1200, RHD4CZ2L102PT1301 |  |  |  |  | Unskilled Labor [23.2 h]; Plumber [11.65 h]; Equipment Opreator [11.65 h]; Boom Truck [11.65 h]; HDPE (110mm Diameter) - PT - Depth: less than 1.5m [72 m] | 6,120 |  | L102 | Z2 | CONS | PT | Installation | bef |
| RHD4CZ2L102PT1400 |  | Primary Test for HDPE Pipline 110 mm - (RD-L-10/2)-Z2-L102-PT | 2d | 2027-07-20 | 2027-07-21 | RHD4CZ2L102PT1300, RHD4CZ2L102PT1401 |  |  |  |  | Unskilled Labor [3.48 h]; Plumber [3.48 h]; Equipment Opreator [3.48 h]; Water Truck [3.48 h]; HDPE (110mm Diameter) - PT - Depth: less than 1.5m [32 m] | 2,720 |  | L102 | Z2 | CONS | PT | Primary Test | bef |
| RHD4CZ2L102PT1500 |  | Backfilling and warning tape works for HDPE Pipline 110 mm - (RD-L-10/2)-Z2-L102-PT | 2d | 2027-07-27 | 2027-07-28 | RHD4CZ2L102PT1400, RHD4CZ2L102PT1501 |  |  |  |  | Skilled labor [8.71 h]; Unskilled Labor [17.42 h]; Equipment Opreator [17.42 h]; Excavator-Poclain [8.71 h]; Dump Truck [8.71 h]; HDPE (110mm Diameter) - PT - Depth: less than 1.5m [32 m] | 2,720 |  | L102 | Z2 | CONS | PT | Backfilling | bef |

| ID | WBS | Activity | Duration | Start | Finish | Predecessors | Resources | Cost | RDH4-01-001-Road and Block Names-1 | RDH4-01-001-Zones-1 | RDH4-01-001-Phases-1 | RDH4-01-001-Networks-1 | RDH4-01-001-Work Method-1 | RDH4-01-001-MENEM |
| --- | --- | --- | --- | --- | --- | --- | --- | --- | --- | --- | --- | --- | --- | --- |
|  | 989 | **RHD4-02-002-L102-(PT)-Gate Valves (Direct Buried)** |  | 2027-07-13 | 2027-08-01 |  |  |  |  |  |  |  |  |  |
| RHD4CZ2L102PT3100 |  | Installation for Direct Buried Gate Valves - (RD-L-10/2)-Z2-L102-PT | 3d | 2027-07-13 | 2027-07-15 | RHD4PRSHLDOSPT1200, RHD4PRSHLSTAGPT1200, RHD4CZ2L102PT1301 FF, RHD4CZ2L102PT1300 FF, RHD4CZ2L102PT1301 SS, RHD4CZ2L102PT1300 SS | Unskilled Labor [32.67 h]; Plumber [32.67 h]; Gate valves dia 100 mm - PT [4.5 nr]; Gate valves dia 150 mm - PT [0.9 nr] | 6,412.5 | L102 | Z2 | CONS | PT | Installation | bef |
| RHD4CZ2L102PT3200 |  | Stem and Service box for Direct Buried Gate Valves - (RD-L-10/2)-Z2-L102-PT | 3d | 2027-07-29 | 2027-08-01 | RHD4PRSHLDOSPT1300, RHD4PRSHLSTAGPT1300, RHD4CZ2L102PT3100, RHD4CZ2L102PT1501, RHD4CZ2L102PT1500 | Unskilled Labor [32.67 h]; Plumber [32.67 h]; Gate valves dia 100 mm - PT [0.5 nr]; Gate valves dia 150 mm - PT [0.1 nr] | 712.5 | L102 | Z2 | CONS | PT | Stem and Service box | bef |
|  | 992 | **RHD4-02-002-L102-(PT)-Wash out Valve Chambers** |  | 2027-07-27 | 2027-08-04 |  |  |  |  |  |  |  |  |  |
| RHD4CZ2L102PT2101 |  | Excavation and Bedding for Wash out Valve Chambers for Potable Water Network - (RD-L-10/2)-Z2-L102-PT | 2d | 2027-07-27 | 2027-07-28 | RHD4ENSDZ2APPPT130, RHD4CZ2L102PT1501 | Skilled labor [5.45 h]; Unskilled Labor [5.45 h]; Equipment Opreator [1.09 h]; Excavator-Poclain [0.54 h]; Dump Truck [0.54 h]; Wash out chambers - PT [0.25 nr] | 4,686.25 | L102 | Z2 | CONS | PT | Excavation and Bedding | bef |
| RHD4CZ2L102PT2201 |  | PC works for Wash out Valve Chambers for Potable Water Network - (RD-L-10/2)-Z2-L102-PT | 2d | 2027-07-29 | 2027-07-31 | RHD4CZ2L102PT2101 | Skilled labor [5.45 h]; Unskilled Labor [10.89 h]; Equipment Opreator [0.54 h]; Concrete Pump [0.54 h]; Wash out chambers - PT [0.1 nr] | 1,874.5 | L102 | Z2 | CONS | PT | PC Works | bef |
| RHD4CZ2L102PT2301 |  | Installation for Wash out Valve Chambers for Potable Water Network - (RD-L-10/2)-Z2-L102-PT | 2d | 2027-08-01 | 2027-08-02 | RHD4PRSHLDOSPT1100, RHD4PRSHLDOSPT1400, RHD4PRSHLSTAGPT1100, RHD4PRSHLSTAGPT1400, RHD4CZ2L102PT2201 | Skilled labor [5.45 h]; Unskilled Labor [10.89 h]; Equipment Opreator [1.09 h]; Boom Truck [1.09 h]; Wash out chambers - PT [0.55 nr] | 10,309.75 | L102 | Z2 | CONS | PT | Installation | bef |
| RHD4CZ2L102PT2401 |  | Backfilling works for Wash out Valve Chambers for Potable Water Network - (RD-L-10/2)-Z2-L102-PT | 2d | 2027-08-03 | 2027-08-04 | RHD4CZ2L102PT2301, RHD4CZ2L102PT3200 | Skilled labor [5.45 h]; Unskilled Labor [10.89 h]; Equipment Opreator [1.09 h]; Water Truck [0.54 h]; Dump Truck [0.54 h]; Wash out chambers - PT [0.1 nr] | 1,874.5 | L102 | Z2 | CONS | PT | Backfilling Works | bef |
|  | 993 | **RHD4-02-002-L102-(PT)-Wash out Valves** |  | 2027-08-01 | 2027-08-07 |  |  |  |  |  |  |  |  |  |
| RHD4CZ2L102PT3102 |  | Installation for Wash out Valves for Potable Water Network - (RD-L-10/2)-Z2-L102-PT | 2d | 2027-08-01 | 2027-08-02 | RHD4PRSHLDOSPT1200, RHD4PRSHLSTAGPT1200, RHD4CZ2L102PT2301 SS | Unskilled Labor [5.45 h]; Plumber [5.45 h]; Wash out valve diameter 100 mm - PT [0.9 nr] | 3,373.2 | L102 | Z2 | CONS | PT | Installation | bef |
| RHD4CZ2L102PT3202 |  | Stem and Service box for Wash out Valves for Potable Water Network - (RD-L-10/2)-Z2-L102-PT | 2d | 2027-08-05 | 2027-08-07 | RHD4PRSHLDOSPT1300, RHD4PRSHLSTAGPT1300, RHD4CZ2L102PT3102, RHD4CZ2L102PT2401 | Unskilled Labor [5.45 h]; Plumber [5.45 h]; Wash out valve diameter 100 mm - PT [0.1 nr] | 374.8 | L102 | Z2 | CONS | PT | Stem and Service box | bef |
|  | 994 | **RHD4-02-002-L102-(PT)-Air Valve Chambers** |  | 2027-07-29 | 2027-08-07 |  |  |  |  |  |  |  |  |  |
| RHD4CZ2L102PT2102 |  | Excavation and Bedding for Air Valve Chambers for Potable Water Network - (RD-L-10/2)-Z2-L102-PT | 2d | 2027-07-29 | 2027-07-31 | RHD4ENSDZ2APPPT130, RHD4CZ2L102PT1501, RHD4CZ2L102PT1500 | Skilled labor [5.45 h]; Unskilled Labor [5.45 h]; Equipment Opreator [1.09 h]; Excavator-Poclain [0.54 h]; Dump Truck [0.54 h]; Air Valve chambers - PT [0.25 nr] | 1,193 | L102 | Z2 | CONS | PT | Excavation and Bedding | bef |
| RHD4CZ2L102PT2202 |  | PC works for Air Valve Chambers for Potable Water Network - (RD-L-10/2)-Z2-L102-PT | 2d | 2027-08-01 | 2027-08-02 | RHD4CZ2L102PT2102 | Skilled labor [5.45 h]; Unskilled Labor [10.89 h]; Equipment Opreator [0.54 h]; Concrete Pump [0.54 h]; Air Valve chambers - PT [0.1 nr] | 477.2 | L102 | Z2 | CONS | PT | PC Works | bef |
| RHD4CZ2L102PT2302 |  | Installation for Air Valve Chambers for Potable Water Network - (RD-L-10/2)-Z2-L102-PT | 2d | 2027-08-03 | 2027-08-04 | RHD4PRSHLDOSPT1100, RHD4PRSHLDOSPT1400, RHD4PRSHLSTAGPT1100, RHD4PRSHLSTAGPT1400, RHD4CZ2L102PT2202 | Skilled labor [5.45 h]; Unskilled Labor [10.89 h]; Equipment Opreator [1.09 h]; Boom Truck [1.09 h]; Air Valve chambers - PT [0.55 nr] | 2,624.6 | L102 | Z2 | CONS | PT | Installation | bef |
| RHD4CZ2L102PT2402 |  | Backfilling works for Air Valve Chambers for Potable Water Network - (RD-L-10/2)-Z2-L102-PT | 2d | 2027-08-05 | 2027-08-07 | RHD4CZ2L102PT2302 | Skilled labor [5.45 h]; Unskilled Labor [10.89 h]; Equipment Opreator [1.09 h]; Water Truck [0.54 h]; Dump Truck [0.54 h]; Air Valve chambers - PT [0.1 nr] | 477.2 | L102 | Z2 | CONS | PT | Backfilling Works | bef |
|  | 995 | **RHD4-02-002-L102-(PT)-Air Valves** |  | 2027-08-05 | 2027-08-09 |  |  |  |  |  |  |  |  |  |
| RHD4CZ2L102PT3103 |  | Installation for Air Valves for Potable Water Network - (RD-L-10/2)-Z2-L102-PT | 2d | 2027-08-05 | 2027-08-07 | RHD4PRSHLDOSPT1200, RHD4PRSHLSTAGPT1200, RHD4CZ2L102PT2302 | Unskilled Labor [5.45 h]; Plumber [5.45 h]; Air valve diameter 50 mm - PT [0.9 nr] | 4,427.1 | L102 | Z2 | CONS | PT | Installation | bef |
| RHD4CZ2L102PT3203 |  | Stem and Service box for Air Valves for Potable Water Network - (RD-L-10/2)-Z2-L102-PT | 2d | 2027-08-08 | 2027-08-09 | RHD4PRSHLDOSPT1300, RHD4PRSHLSTAGPT1300, RHD4CZ2L102PT3103, RHD4CZ2L102PT2402 | Unskilled Labor [5.45 h]; Plumber [5.45 h]; Air valve diameter 50 mm - PT [0.1 nr] | 491.9 | L102 | Z2 | CONS | PT | Stem and Service box | bef |
|  | 996 | **RHD4-02-002-L102-(PT)-Fire Hydrant** |  | 2027-07-29 | 2027-08-26 |  |  |  |  |  |  |  |  |  |
| RHD4CZ2L102PT4100 |  | Excavation and Bedding and Pipe Installation for Fire Hydrant - (RD-L-10/2)-Z2-L102-PT | 7d | 2027-07-29 | 2027-08-05 | RHD4ENSDZ2APPPT130, RHD4CZ2L102PT1501, RHD4CZ2L102PT1500 | Skilled labor [70.79 h]; Unskilled Labor [70.79 h]; Plumber [70.79 h]; Equipment Opreator [35.39 h]; Excavator-Poclain [35.39 h]; 3-outlet fire hydrant (2 x 2.5 inch and 1 x 4.5 inch) in the form of a separate dry vacuum cylinder [1.3 nr] | 16,406 | L102 | Z2 | CONS | PT | Excavation | bef |
| RHD4CZ2L102PT4200 |  | Valve Installation for Fire Hydrant - (RD-L-10/2)-Z2-L102-PT | 5d | 2027-08-07 | 2027-08-11 | RHD4CZ2L102PT4100 | Unskilled Labor [47.16 h]; Plumber [47.16 h]; 3-outlet fire hydrant (2 x 2.5 inch and 1 x 4.5 inch) in the form of a separate dry vacuum cylinder [2.6 nr] | 32,812 | L102 | Z2 | CONS | PT | Valve | bef |
| RHD4CZ2L102PT4300 |  | Stem for Fire Hydrant - (RD-L-10/2)-Z2-L102-PT | 5d | 2027-08-12 | 2027-08-17 | RHD4CZ2L102PT4200 | Unskilled Labor [47.16 h]; Plumber [47.16 h]; 3-outlet fire hydrant (2 x 2.5 inch and 1 x 4.5 inch) in the form of a separate dry vacuum cylinder [3.9 nr] | 49,218 | L102 | Z2 | CONS | PT | Stem | bef |
| RHD4CZ2L102PT4400 |  | Fire Installation for Fire Hydrant - (RD-L-10/2)-Z2-L102-PT | 5d | 2027-08-18 | 2027-08-23 | RHD4PRSHLDOSPT1500, RHD4PRSHLSTAGPT1500, RHD4CZ2L102PT4300 | Unskilled Labor [47.16 h]; Plumber [47.16 h]; Equipment Opreator [47.16 h]; Boom Truck [47.16 h]; 3-outlet fire hydrant (2 x 2.5 inch and 1 x 4.5 inch) in the form of a separate dry vacuum cylinder [4.55 nr] | 57,421 | L102 | Z2 | CONS | PT | Fire | bef |
| RHD4CZ2L102PT4500 |  | Protection Barriers for Fire Hydrant - (RD-L-10/2)-Z2-L102-PT | 3d | 2027-08-24 | 2027-08-26 | RHD4CZ2L102PT4400 | Unskilled Labor [28.31 h]; Plumber [28.31 h]; 3-outlet fire hydrant (2 x 2.5 inch and 1 x 4.5 inch) in the form of a separate dry vacuum cylinder [0.65 nr] | 8,203 | L102 | Z2 | CONS | PT | Protection Barriers | bef |

| ID | WBS | Activity | Duration | Start | Finish | Predecessors | Resources | Cost | RDH4-01-001-Road and Block Names-1 | RDH4-01-001-Zones-1 | RDH4-01-001-Phases-1 | RDH4-01-001-Networks-1 | RDH4-01-001-Work Method-1 | RDH4-01-001-MENEM |
| --- | --- | --- | --- | --- | --- | --- | --- | --- | --- | --- | --- | --- | --- | --- |
|  | 997 | **RHD4-02-002-L102-(PT)-Concrete Encasement** |  |  |  |  |  |  |  |  |  |  |  |  |
|  | 998 | **RHD4-02-002-Z2-L102-Irrigation Network - IRR** |  | 2027-07-20 | 2027-09-02 |  |  |  |  |  |  |  |  |  |
|  | 1005 | **RHD4-02-002-L102-(IRR)-HDPE Pipes - 450 mm diameter** |  |  |  |  |  |  |  |  |  |  |  |  |
|  | 1004 | **RHD4-02-002-L102-(IRR)-HDPE Pipes - 400 mm diameter** |  |  |  |  |  |  |  |  |  |  |  |  |
|  | 1003 | **RHD4-02-002-L102-(IRR)-HDPE Pipes - 315 mm diameter** |  | 2027-07-20 | 2027-08-29 |  |  |  |  |  |  |  |  |  |
| RHD4CZ2L102IRR1104 |  | Excavation works for HDPE Pipline 315 mm - (RD-L-10/2)-Z2-L102-IRR | 7d | 2027-07-20 | 2027-07-27 | RHD4ENSDZ2APPIRR140, RHD4ENMSRR2000, RHD4CZ2L102PT1401, RHD4CZ2L102PT1101, RHD4CZ2L102PT1100, RHD4CZ9L05PT5100 | Skilled labor [74.16 h]; Unskilled Labor [74.16 h]; Equipment Opreator [88.97 h]; Excavator-Poclain [74.16 h]; Dump Truck [14.81 h]; HDPE (315mm Diameter) - TSE - Depth: less than 1.5m [102.14 m] | 29,925.85 | L102 | Z2 | CONS | IRR | Excavation | bef |
| RHD4CZ2L102IRR1204 |  | Bedding works for HDPE Pipline 315 mm - (RD-L-10/2)-Z2-L102-IRR | 6d | 2027-07-28 | 2027-08-03 | RHD4CZ2L102IRR1104, RHD4CZ4A013PT4500 | Skilled labor [55.65 h]; Unskilled Labor [111.2 h]; Equipment Opreator [111.2 h]; Excavator-Poclain [55.65 h]; Dump Truck [55.65 h]; HDPE (315mm Diameter) - TSE - Depth: less than 1.5m [51.07 m] | 14,962.92 | L102 | Z2 | CONS | IRR | Bedding | bef |
| RHD4CZ2L102IRR1304 |  | Installing for HDPE Pipline 315 mm - (RD-L-10/2)-Z2-L102-IRR | 7d | 2027-08-04 | 2027-08-11 | RHD4PRSHLDOSIRR1000, RHD4PRSHLSTAGIRR1000, RHD4CZ2L102IRR1204, RHD4CZ4L09IRR3200, RHD4CZ5L016IRR3203 | Unskilled Labor [148.33 h]; Plumber [74.16 h]; Equipment Opreator [74.16 h]; Boom Truck [74.16 h]; HDPE (315mm Diameter) - TSE - Depth: less than 1.5m [459.61 m] | 134,666.32 | L102 | Z2 | CONS | IRR | Installation | bef |
| RHD4CZ2L102IRR1404 |  | Primary Test for HDPE Pipline 315 mm - (RD-L-10/2)-Z2-L102-IRR | 3d | 2027-08-19 | 2027-08-22 | RHD4CZ2L102IRR1304, RHD4CZ2L102IRR3100 | Unskilled Labor [22.22 h]; Plumber [22.22 h]; Equipment Opreator [22.22 h]; Water Truck [22.22 h]; HDPE (315mm Diameter) - TSE - Depth: less than 1.5m [204.27 m] | 59,851.7 | L102 | Z2 | CONS | IRR | Primary Test | bef |
| RHD4CZ2L102IRR1504 |  | Backfilling and warning tape works for HDPE Pipline 315 mm - (RD-L-10/2)-Z2-L102-IRR | 6d | 2027-08-23 | 2027-08-29 | RHD4CZ2L102IRR1404, RHD4CZ7L131SW1201 FF | Skilled labor [55.65 h]; Unskilled Labor [111.2 h]; Equipment Opreator [111.2 h]; Excavator-Poclain [55.65 h]; Dump Truck [55.65 h]; HDPE (315mm Diameter) - TSE - Depth: less than 1.5m [204.27 m] | 59,851.7 | L102 | Z2 | CONS | IRR | Backfilling | bef |
|  | 1001 | **RHD4-02-002-L102-(IRR)-HDPE Pipes - 200 mm diameter** |  |  |  |  |  |  |  |  |  |  |  |  |
|  | 6863 | **RHD4-02-002-L102-(IRR)-HDPE Pipes - 160 mm diameter** |  | 2027-07-20 | 2027-07-31 |  |  |  |  |  |  |  |  |  |
| RHD4CZ2L102IRR1100 |  | Excavation works for HDPE Pipline 160 mm - (RD-L-10/2)-Z2-L102-IRR | 2d | 2027-07-20 | 2027-07-21 | RHD4CZ2L102IRR1104 SS | Skilled labor [14.27 h]; Unskilled Labor [14.27 h]; Equipment Opreator [17.1 h]; Excavator-Poclain [14.27 h]; Dump Truck [2.83 h]; HDPE (160mm Diameter) - TSE - Depth: less than 1.5m [19.6 m] | 2,410.8 | L102 | Z2 | CONS | IRR | Excavation | bef |
| RHD4CZ2L102IRR1200 |  | Bedding works for HDPE Pipline 160 mm - (RD-L-10/2)-Z2-L102-IRR | 2d | 2027-07-22 | 2027-07-24 | RHD4CZ2L102IRR1100 | Skilled labor [10.67 h]; Unskilled Labor [21.35 h]; Equipment Opreator [21.35 h]; Excavator-Poclain [10.67 h]; Dump Truck [10.67 h]; HDPE (160mm Diameter) - TSE - Depth: less than 1.5m [9.8 m] | 1,205.4 | L102 | Z2 | CONS | IRR | Bedding | bef |
| RHD4CZ2L102IRR1300 |  | Installing for HDPE Pipline 160 mm - (RD-L-10/2)-Z2-L102-IRR | 2d | 2027-07-25 | 2027-07-26 | RHD4CZ2L102IRR1200 | Unskilled Labor [28.42 h]; Plumber [14.27 h]; Equipment Opreator [14.27 h]; Boom Truck [14.27 h]; HDPE (160mm Diameter) - TSE - Depth: less than 1.5m [88.2 m] | 10,848.6 | L102 | Z2 | CONS | IRR | Installation | bef |
| RHD4CZ2L102IRR1400 |  | Primary Test for HDPE Pipline 160 mm - (RD-L-10/2)-Z2-L102-IRR | 2d | 2027-07-27 | 2027-07-28 | RHD4CZ2L102IRR1300 | Unskilled Labor [4.25 h]; Plumber [4.25 h]; Equipment Opreator [4.25 h]; Water Truck [4.25 h]; HDPE (160mm Diameter) - TSE - Depth: less than 1.5m [39.2 m] | 4,821.6 | L102 | Z2 | CONS | IRR | Primary Test | bef |
| RHD4CZ2L102IRR1500 |  | Backfilling and warning tape works for HDPE Pipline 160 mm - (RD-L-10/2)-Z2-L102-IRR | 2d | 2027-07-29 | 2027-07-31 | RHD4CZ2L102IRR1400, RHD4CZ2L102ST1502 | Skilled labor [10.67 h]; Unskilled Labor [21.35 h]; Equipment Opreator [21.35 h]; Excavator-Poclain [10.67 h]; Dump Truck [10.67 h]; HDPE (160mm Diameter) - TSE - Depth: less than 1.5m [39.2 m] | 4,821.6 | L102 | Z2 | CONS | IRR | Backfilling | bef |
|  | 1007 | **RHD4-02-002-L102-(IRR)-Gate Valves (Direct Buried)** |  | 2027-08-15 | 2027-09-02 |  |  |  |  |  |  |  |  |  |
| RHD4CZ2L102IRR3100 |  | Installation for Direct Buried Gate Valves - (RD-L-10/2)-Z2-L102-IRR | 4d | 2027-08-15 | 2027-08-18 | RHD4CZ7C02ST1500, RHD4PRSHLDOSIRR1100, RHD4PRSHLSTAGIRR1100, RHD4CZ2L102IRR1304 SS, RHD4CZ2L102IRR1304 FF, RHD4CZ9L05ST3500 | Unskilled Labor [38.12 h]; Plumber [38.12 h]; Gate valves dia 100 mm - TSE [6.3 nr] | 9,954 | L102 | Z2 | CONS | IRR | Installation | bef |
| RHD4CZ2L102IRR3200 |  | Stem and Service box for Direct Buried Gate Valves - (RD-L-10/2)-Z2-L102-IRR | 4d | 2027-08-30 | 2027-09-02 | RHD4PRSHLDOSIRR1300, RHD4PRSHLSTAGIRR1300, RHD4CZ2L102IRR3100, RHD4CZ2L102IRR1504, RHD4CZ4L014IRR1503 | Unskilled Labor [38.12 h]; Plumber [38.12 h]; Gate valves dia 100 mm - TSE [0.7 nr] | 1,106 | L102 | Z2 | CONS | IRR | Stem and Service box | bef |
|  | 1032 | **RHD4-02-002-Z2-L102-Medium Voltage Network - MV** |  | 2027-06-30 | 2027-09-14 |  |  |  |  |  |  |  |  |  |
|  | 1033 | **RHD4-02-002-L102-(MV)-Medium Voltage cable trench** |  | 2027-06-30 | 2027-09-01 |  |  |  |  |  |  |  |  |  |
| RHD4CZ2L102MV1100 |  | Excavation for Medium Voltage Trench - (RD-L-10/2)-Z2-L102-MV | 21d | 2027-06-30 | 2027-07-24 | RHD4ENSDZ2APPMV150, RHD4CZ2L102RD3100, RHD4CZ2L102PT1101 | Skilled labor [228.48 h]; Unskilled Labor [456.96 h]; Equipment Opreator [685.44 h]; Excavator-Poclain [228.48 h]; Dump Truck [456.96 h]; Excavation for Trench size 60cm wide and 80cm deep ( for 2 cables) [1468.55 m3] | 14,685.46 | L102 | Z2 | CONS | MV | Excavation | AFT |
| RHD4CZ2L102MV1200 |  | Trench Backfilling for Medium Voltage Network - (RD-L-10/2)-Z2-L102-MV | 21d | 2027-08-09 | 2027-09-01 | RHD4CZ2L102MV3200, RHD4CZ2L102MV1100 | Skilled labor [228.48 h]; Unskilled Labor [228.48 h]; Equipment Opreator [456.96 h]; Dump Truck [456.96 h]; Excavation for Trench size 60cm wide and 80cm deep ( for 2 cables) [629.38 m3] | 6,293.77 | L102 | Z2 | CONS | MV | Backfilling | AFT |

| ID | WBS | Activity | Duration | Start | Finish | Predecessors | Resources | Cost | RDH4-01-001-Road and Block Names-1 | RDH4-01-001-Zones-1 | RDH4-01-001-Phases-1 | RDH4-01-001-Networks-1 | RDH4-01-001-Work Method-1 | RDH4-01-001-MENEM |
| --- | --- | --- | --- | --- | --- | --- | --- | --- | --- | --- | --- | --- | --- | --- |
|  | 1034 | **RHD4-02-002-L102-(MV)-Medium Voltage duct banks** |  |  |  |  |  |  |  |  |  |  |  |  |
|  | 1035 | **RHD4-02-002-L102-(MV)-Medium Voltage cables 3Cx 500 mm²** |  | 2027-07-25 | 2027-09-14 |  |  |  |  |  |  |  |  |  |
| RHD4CZ2L102MV3100 |  | Installation of Medium Voltage Cables 3Cx 500 mm² - (RD-L-10/2)-Z2-L102-MV | 9d | 2027-07-25 | 2027-08-03 | RHD4PRSHLDOSMV1100, RHD4ENMSMV2000, RHD4ENMSMV2010, RHD4PRSHLSTAGMV1100, RHD4CZ2L102MV1100 | Skilled labor [97.69 h]; Unskilled Labor [390.64 h]; Electrician [195.37 h]; Equipment Opreator [292.95 h]; Boom Truck [97.69 h]; Cable Laying Machine [195.37 h]; Cable 13.8 kV 3Cx 500 mm² Al/XLPE,/LLDPE / Unarmored [4035.46 m] | 641,638.36 | L102 | Z2 | CONS | MV | Installation | AFT |
| RHD4CZ2L102MV3200 |  | Joints Installation of Medium Voltage Cables 3Cx 500 mm² - (RD-L-10/2)-Z2-L102-MV | 4d | 2027-08-04 | 2027-08-08 | RHD4PRSHLDOSMV1300, RHD4PRSHLSTAGMV1300, RHD4CZ2L102MV3100 | Skilled labor [43.56 h]; Unskilled Labor [174.25 h]; Electrician [87.12 h]; Equipment Opreator [43.56 h]; Boom Truck [43.56 h]; Straight joints cables for 13.8 kv 3Cx 500 mm², Al /XLPE/LLDPE [8 Unit] | 25,984 | L102 | Z2 | CONS | MV | Joints Installation | AFT |
| RHD4CZ2L102MV3300 |  | Testing of Medium Voltage Cables 3Cx 500 mm² - (RD-L-10/2)-Z2-L102-MV | 9d | 2027-09-02 | 2027-09-12 | RHD4CZ2L102MV3200, RHD4CZ2L102MV1200, RHD4CZ2L102MV4200 | Skilled labor [97.69 h]; Unskilled Labor [390.64 h]; Electrician [195.37 h]; Cable 13.8 kV 3Cx 500 mm² Al/XLPE,/LLDPE / Unarmored [448.38 m] | 71,293.15 | L102 | Z2 | CONS | MV | Testing | AFT |
| RHD4CZ2L102MV3400 |  | Termination of Medium Voltage Cables 3Cx 500 mm² - (RD-L-10/2)-Z2-L102-MV | 2d | 2027-09-13 | 2027-09-14 | RHD4CZ2L102MV3300, RHD4CZ2L102MV1200 | Unskilled Labor [4.14 h]; Electrician [4.14 h]; Cable Termination for 13.8 kv 3Cx 500 mm², Al /XLPE/LLDPE [19.2 Unit] | 50,592 | L102 | Z2 | CONS | MV | Termination | AFT |
|  | 1036 | **RHD4-02-002-L102-(MV)-Medium Voltage cables 3Cx 50 mm²** |  | 2027-09-02 | 2027-09-04 |  |  |  |  |  |  |  |  |  |
| RHD4CZ2L102MV3401 |  | Termination of Medium Voltage Cables 3Cx 50 mm² - (RD-L-10/2)-Z2-L102-MV | 2d | 2027-09-02 | 2027-09-04 | RHD4CZ2L102MV1200, RHD4CZ2L102MV1100 | Unskilled Labor [69.7 h]; Electrician [34.85 h]; Cable Termination for 13.8 kv 3Cx 500 mm², Al /XLPE/LLDPE [4.8 Unit] | 12,648 | L102 | Z2 | CONS | MV | Termination | AFT |
|  | 1037 | **RHD4-02-002-L102-(MV)-Normally open Point (Outdoor Type)** |  | 2027-08-02 | 2027-08-05 |  |  |  |  |  |  |  |  |  |
| RHD4CZ2L102MV4100 |  | Installation for Normally open Point - (RD-L-10/2)-Z2-L102-MV | 2d | 2027-08-02 | 2027-08-03 | RHD4PRSHLDOSMV1400, RHD4PRSHLSTAGMV1400, RHD4CZ2L102MV3100 FF, RHD4CZ2L102MV1100 | Unskilled Labor [0.11 h]; Equipment Opreator [0.22 h]; Excavator-Poclain [0.11 h]; Dump Truck [0.11 h]; Normally Open Point 13.8 KV Outdoor type [0.9 Unit] | 77,219.1 | L102 | Z2 | CONS | MV | Installation | AFT |
| RHD4CZ2L102MV4200 |  | Termination for Normally open Point - (RD-L-10/2)-Z2-L102-MV | 2d | 2027-08-04 | 2027-08-05 | RHD4CZ2L102MV4100 | Unskilled Labor [3.59 h]; Equipment Opreator [7.3 h]; Excavator-Poclain [3.59 h]; Dump Truck [3.59 h]; Normally Open Point 13.8 KV Outdoor type [0.1 Unit] | 8,579.9 | L102 | Z2 | CONS | MV | Termination | AFT |
|  | 5390 | **RHD4-02-002-Z2-L102-Low Voltage Network - LV** |  | 2027-07-28 | 2027-08-15 |  |  |  |  |  |  |  |  |  |
|  | 5393 | **RHD4-02-002-L102-(LV)-Low Voltage cables** |  | 2027-07-28 | 2027-08-15 |  |  |  |  |  |  |  |  |  |
| RHD4CZ2L102LV3100 |  | Excavation for Low Voltage Cables for Low Voltage Network - (RD-L-10/2)-Z2-L102-LV | 5d | 2027-07-28 | 2027-08-02 | RHD4CZ2L102IRR1104 | Skilled labor [50.1 h]; Unskilled Labor [100.19 h]; Equipment Opreator [100.19 h]; Excavator-Poclain [50.1 h]; Boom Truck [50.1 h]; Cable, Copper 4x50mm2/ CU/XLPE/PVC +1x25mm2 CU/PVC [195.57 m]; Cable, Copper 3x10mm2/ CU/XLPE/SWA/PVC [34.35 m] | 25,394.76 | L102 | Z2 | CONS | LV | Excavation | AFT |
| RHD4CZ2L102LV3200 |  | Cable Laying of Low Voltage Cables for Low Voltage Network - (RD-L-10/2)-Z2-L102-LV | 4d | 2027-08-03 | 2027-08-07 | RHD4CZ2L102LV3100 | Skilled labor [41.71 h]; Unskilled Labor [166.95 h]; Electrician [83.42 h]; Equipment Opreator [125.24 h]; Boom Truck [41.71 h]; Cable Laying Machine [83.42 h]; Cable, Copper 4x50mm2/ CU/XLPE/PVC +1x25mm2 CU/PVC [390 m]; Cable, Copper 3x10mm2/ CU/XLPE/SWA/PVC [103.06 m] | 51,989.34 | L102 | Z2 | CONS | LV | Cable Laying | AFT |
| RHD4CZ2L102LV3300 |  | Warning tape and Backfill for Low Voltage Cables for Low Voltage Network - (RD-L-10/2)-Z2-L102-LV | 4d | 2027-08-08 | 2027-08-11 | RHD4CZ2L102LV3200 | Skilled labor [41.71 h]; Unskilled Labor [166.95 h]; Electrician [83.42 h]; Equipment Opreator [41.71 h]; Boom Truck [41.71 h]; Cable, Copper 4x50mm2/ CU/XLPE/PVC +1x25mm2 CU/PVC [146.68 m]; Cable, Copper 3x10mm2/ CU/XLPE/SWA/PVC [25.76 m] | 19,046.28 | L102 | Z2 | CONS | LV | Warning tape and Backfill | AFT |
| RHD4CZ2L102LV3400 |  | Testing of Low Voltage Cables for Low Voltage Network - (RD-L-10/2)-Z2-L102 | 3d | 2027-08-12 | 2027-08-15 | RHD4CZ2L102LV3300, RHD4CZ2L102IRR1500, RHD4CZ1C081LV3400 | Skilled labor [25.05 h]; Unskilled Labor [100.19 h]; Electrician [50.1 h]; Equipment Opreator [25.05 h]; Boom Truck [25.05 h]; Cable, Copper 4x50mm2/ CU/XLPE/PVC +1x25mm2 CU/PVC [48.89 m]; Cable, Copper 3x10mm2/ CU/XLPE/SWA/PVC [8.59 m] | 6,348.48 | L102 | Z2 | CONS | LV | Testing | AFT |
|  | 1045 | **RHD4-02-002-Z2-L102-Street Lighting Network - SL** |  | 2027-08-10 | 2027-11-09 |  |  |  |  |  |  |  |  |  |
|  | 1046 | **RHD4-02-002-L102-(SL)-Street Lighting duct banks** |  | 2027-08-10 | 2027-08-29 |  |  |  |  |  |  |  |  |  |
| RHD4CZ2L102SL2100 |  | Excavation of Duct Banks for Street Lighting Network - (RD-L-10/2)-Z2-L102-SL | 4d | 2027-08-10 | 2027-08-14 | RHD4ENSDZ2APPSL170, RHD4CZ2L102PT3203 | Skilled labor [38.55 h]; Unskilled Labor [38.55 h]; Equipment Opreator [77.1 h]; Excavator-Poclain [38.55 h]; Dump Truck [38.55 h]; Road Crossing Duct for Street Lighting cables UPVC (2x?110mm) [3.48 m]; Road Crossing Duct for Street Lighting cables UPVC (4x?110mm) [1.83 m] | 1,185.82 | L102 | Z2 | CONS | SL | Excavation | bef |
| RHD4CZ2L102SL2200 |  | Installation of Duct Banks for Street Lighting Network - (RD-L-10/2)-Z2-L102-SL | 6d | 2027-08-15 | 2027-08-21 | RHD4PRSHLDOSSL1000, RHD4PRSHLSTAGSL1000, RHD4CZ2L102SL2100 | Carpenter [5.77 h]; Skilled labor [57.83 h]; Unskilled Labor [57.83 h]; Steel Fixer [5.77 h]; Road Crossing Duct for Street Lighting cables UPVC (2x?110mm) [3.48 m]; Road Crossing Duct for Street Lighting cables UPVC (4x?110mm) [1.83 m] | 1,185.82 | L102 | Z2 | CONS | SL | Installing | bef |
| RHD4CZ2L102SL2300 |  | Pouring of Duct Banks for Street Lighting Network - (RD-L-10/2)-Z2-L102-SL | 4d | 2027-08-22 | 2027-08-25 | RHD4CZ2L102SL2200 | Skilled labor [38.55 h]; Unskilled Labor [38.55 h]; Equipment Opreator [15.46 h]; Concrete Mixer Truck [7.73 h]; Concrete Pump [7.73 h]; Road Crossing Duct for Street Lighting cables UPVC (2x?110mm) [22.61 m]; Road Crossing Duct for Street Lighting cables UPVC (4x?110mm) [11.92 m] | 7,714.4 | L102 | Z2 | CONS | SL | Pouring | bef |
| RHD4CZ2L102SL2400 |  | Backfilling of Duct Banks for Street Lighting Network - (RD-L-10/2)-Z2-L102-SL | 3d | 2027-08-26 | 2027-08-29 | RHD4CZ2L102SL2300 | Skilled labor [28.97 h]; Unskilled Labor [28.97 h]; Equipment Opreator [11.54 h]; Excavator-Poclain [11.54 h]; Road Crossing Duct for Street Lighting cables UPVC (2x?110mm) [5.22 m]; Road Crossing Duct for Street Lighting cables UPVC (4x?110mm) [2.75 m] | 1,780.04 | L102 | Z2 | CONS | SL | Backfilling | bef |
|  | 1047 | **RHD4-02-002-L102-(SL)-Street Lighting Drawpit** |  | 2027-08-26 | 2027-08-30 |  |  |  |  |  |  |  |  |  |
| RHD4CZ2L102SL5100 |  | Excavation of Drawpit size 600x600x900mm for Street Lighting Network - (RD-L-10/2)-Z2-L102-SL | 2d | 2027-08-26 | 2027-08-28 | RHD4ENSDZ2APPSL170, RHD4CZ2L102SL2300, RHD4CZ2L102MV4200, RHD4CZ2L102LV3100 | Skilled labor [3.59 h]; Unskilled Labor [3.59 h]; Equipment Opreator [2.94 h]; Excavator-Poclain [1.42 h]; Dump Truck [1.42 h]; Drawpit with medium duty steel cover, size600x600x900mm, [0.6 Unit] | 1,470.6 | L102 | Z2 | CONS | SL | Excavation | AFT |
| RHD4CZ2L102SL5200 |  | Installation of Drawpit size 600x600x900mm for Street Lighting Network - (RD-L-10/2)-Z2-L102-SL | 2d | 2027-08-29 | 2027-08-30 | RHD4PRSHLDOSSL1400, RHD4PRSHLSTAGSL1400, RHD4CZ2L102SL5100 | Skilled labor [3.59 h]; Unskilled Labor [3.59 h]; Equipment Opreator [1.42 h]; Boom Truck [1.42 h]; Drawpit with medium duty steel cover, size600x600x900mm, [3.4 Unit] | 8,333.4 | L102 | Z2 | CONS | SL | Installation | AFT |

| ID | WBS | Activity | Duration | Start | Finish | Predecessors | Resources | Cost | RDH4-01-001-Road and Block Names-1 | RDH4-01-001-Zones-1 | RDH4-01-001-Phases-1 | RDH4-01-001-Networks-1 | RDH4-01-001-Work Method-1 | RDH4-01-001-MENEM |
| --- | --- | --- | --- | --- | --- | --- | --- | --- | --- | --- | --- | --- | --- | --- |
|  | 1048 | **RHD4-02-002-L102-(SL)-Street Lighting cables** |  | 2027-09-20 | 2027-10-25 |  |  |  |  |  |  |  |  |  |
| RHD4CZ2L102SL3100 |  | Excavation for Street Lighting Cables for Street Lighting Network - (RD-L-10/2)-Z2-L102-SL | 9d | 2027-09-20 | 2027-09-30 | RHD4ENSDZ2APPSL170, RHD4CZ2L102SL1300, RHD4CZ2L102MV3401, RHD4CZ2L102MV3400 | Skilled labor [97.36 h]; Unskilled Labor [194.72 h]; Equipment Opreator [194.72 h]; Excavator-Poclain [97.36 h]; Boom Truck [97.36 h]; Cable, Copper 4x10mm2/ CU/XLPE/SWA/PVC + 1x10mm2 CU/PVC [447.08 m] | 21,906.89 | L102 | Z2 | CONS | SL | Excavation | AFT |
| RHD4CZ2L102SL3200 |  | Cable Laying of Street Lighting Cables for Street Lighting Network - (RD-L-10/2)-Z2-L102-SL | 8d | 2027-10-02 | 2027-10-10 | RHD4PRSHLDOSSL1100, RHD4ENMSSL2000, RHD4ENMSSL2010, RHD4PRSHLSTAGSL1100, RHD4CZ2L102SL3100 | Skilled labor [81.13 h]; Unskilled Labor [324.64 h]; Electrician [162.27 h]; Equipment Opreator [243.4 h]; Boom Truck [81.13 h]; Cable Laying Machine [162.27 h]; Cable, Copper 4x10mm2/ CU/XLPE/SWA/PVC + 1x10mm2 CU/PVC [1341.24 m] | 65,720.68 | L102 | Z2 | CONS | SL | Cable Laying | AFT |
| RHD4CZ2L102SL3300 |  | Warning tape and Backfill for Street Lighting Cables for Street Lighting Network - (RD-L-10/2)-Z2-L102-SL | 8d | 2027-10-11 | 2027-10-19 | RHD4CZ2L102SL3200 | Skilled labor [81.13 h]; Unskilled Labor [324.64 h]; Electrician [162.27 h]; Equipment Opreator [81.13 h]; Boom Truck [81.13 h]; Cable, Copper 4x10mm2/ CU/XLPE/SWA/PVC + 1x10mm2 CU/PVC [335.31 m] | 16,430.17 | L102 | Z2 | CONS | SL | Warning tape and Backfill | AFT |
| RHD4CZ2L102SL3400 |  | Testing of Street Lighting Cables for Street Lighting Network - (RD-L-10/2)-Z2-L102-SL | 5d | 2027-10-20 | 2027-10-25 | RHD4CZ2L102SL3300 | Skilled labor [48.68 h]; Unskilled Labor [194.72 h]; Electrician [97.36 h]; Equipment Opreator [48.68 h]; Boom Truck [48.68 h]; Cable, Copper 4x10mm2/ CU/XLPE/SWA/PVC + 1x10mm2 CU/PVC [111.77 m] | 5,476.72 | L102 | Z2 | CONS | SL | Testing | AFT |
|  | 1049 | **RHD4-02-002-L102-(SL)-Street Lighting Poles** |  | 2027-09-02 | 2027-11-09 |  |  |  |  |  |  |  |  |  |
| RHD4CZ2L102SL1100 |  | Excavation for RC Base for Lighting Poles for Street Lighting Network - (RD-L-10/2)-Z2-L102-SL | 5d | 2027-09-02 | 2027-09-07 | RHD4ENSDZ2APPSL170, RHD4CZ2L102SL2400, RHD4CZ2L102MV1200, RHD4CZ2L102SL5200 | Skilled labor [51.51 h]; Unskilled Labor [51.51 h]; Equipment Opreator [103.13 h]; Excavator-Poclain [51.51 h]; Dump Truck [51.51 h]; Lighting poles single arms, height of ( 10 ) meters [7.1 Unit] | 24,189.7 | L102 | Z2 | CONS | SL | Excavation | AFT |
| RHD4CZ2L102SL1200 |  | Installation for RC Base for Lighting Poles for Street Lighting Network - (RD-L-10/2)-Z2-L102-SL | 5d | 2027-09-08 | 2027-09-13 | RHD4CZ2L102SL1100 | Skilled labor [51.51 h]; Unskilled Labor [51.51 h]; Equipment Opreator [103.13 h]; Excavator-Poclain [51.51 h]; Dump Truck [51.51 h]; Lighting poles single arms, height of ( 10 ) meters [17.75 Unit] | 60,474.25 | L102 | Z2 | CONS | SL | RC Base | AFT |
| RHD4CZ2L102SL1300 |  | Backfill for RC Base for Lighting Poles for Street Lighting Network - (RD-L-10/2)-Z2-L102-SL | 5d | 2027-09-14 | 2027-09-19 | RHD4CZ2L102SL1200 | Skilled labor [51.51 h]; Unskilled Labor [51.51 h]; Equipment Opreator [103.13 h]; Excavator-Poclain [51.51 h]; Dump Truck [51.51 h]; Lighting poles single arms, height of ( 10 ) meters [3.55 Unit] | 12,094.85 | L102 | Z2 | CONS | SL | Backfill | AFT |
| RHD4CZ2L102SL1400 |  | Installation for Lighting Poles for Street Lighting Network - (RD-L-10/2)-Z2-L102-SL | 8d | 2027-10-26 | 2027-11-03 | RHD4PRSHLDOSSL1200, RHD4ENMSSL2000, RHD4ENMSSL2010, RHD4PRSHLSTAGSL1200, RHD4CZ2L102SL1300, RHD4CZ2L102SL3400 | Skilled labor [77.32 h]; Unskilled Labor [77.32 h]; Electrician [77.32 h]; Equipment Opreator [77.32 h]; Boom Truck [77.32 h]; Lighting poles single arms, height of ( 10 ) meters [42.6 Unit] | 145,138.2 | L102 | Z2 | CONS | SL | Poles Installation | AFT |
| RHD4CZ2L102SL1500 |  | Luminaire Installation for Lighting Poles for Street Lighting Network - (RD-L-10/2)-Z2-L102-SL | 5d | 2027-11-04 | 2027-11-09 | RHD4PRSHLDOSSL1300, RHD4PRSHLSTAGSL1300, RHD4CZ2L102SL1400 | Unskilled Labor [103.13 h]; Electrician [51.51 h]; Equipment Opreator [10.35 h]; Boom Truck [20.58 h]; Street Lighting( LED) Luminaire of Output ?10898 lumen [71 Unit] | 41,748 | L102 | Z2 | CONS | SL | Luminaire Installation | AFT |
|  | 1051 | **RHD4-02-002-L102-(SL)-Street Lighting Earthing System** |  | 2027-11-04 | 2027-11-06 |  |  |  |  |  |  |  |  |  |
| RHD4CZ2L102SL6100 |  | Installation of Earthing for Lighting Poles and Fedder Pillers for Street Lighting Network - (RD-L-10/2)-Z2-L102-SL | 2d | 2027-11-04 | 2027-11-06 | RHD4ENMSER2000, RHD4ENMSER2010, RHD4CZ2L102SL1400, RHD4CZ2L102SL3300 | Skilled labor [2.94 h]; Unskilled Labor [2.94 h]; Equipment Opreator [5.77 h]; Excavator-Poclain [2.94 h]; Dump Truck [2.94 h]; Including lighting poles circuits - ER [4 Unit] | 2,452 | L102 | Z2 | CONS | SL | Installation | AFT |
|  | 1057 | **RHD4-02-002-Z2-L102-Telecommunications Network - TC** |  | 2027-11-07 | 2027-12-25 |  |  |  |  |  |  |  |  |  |
|  | 1058 | **RHD4-02-002-L102-(TC)-Telecommunications Ducts** |  | 2027-11-07 | 2027-12-25 |  |  |  |  |  |  |  |  |  |
| RHD4CZ2L102TC2100 |  | Excavation of HDPE Ducts for Telecom Network - (RD-L-10/2)-Z2-L102-TC | 15d | 2027-11-07 | 2027-11-23 | RHD4ENSDZ2APPTC190, RHD4CZ2L102SL2400, RHD4CZ2L102SL2300, RHD4CZ2L102SL2200, RHD4CZ2L102SL2100, RHD4CZ2L102SL3300, RHD4CZ2L102SL6100 | Skilled labor [161.18 h]; Unskilled Labor [161.18 h]; Equipment Opreator [322.25 h]; Excavator-Poclain [161.18 h]; Dump Truck [161.18 h]; (6*50mm) HDPE ducts -TC [375.9 m]; (6*50mm+2*32mm) HDPE ducts -TC [61.56 m]; (2*32mm) HDPE ducts -TC [6.42 m] | 40,007.52 | L102 | Z2 | CONS | TC | Excavation | AFT |
| RHD4CZ2L102TC2200 |  | Installation of HDPE Ducts for Telecom Network - (RD-L-10/2)-Z2-L102-TC | 9d | 2027-11-24 | 2027-12-04 | RHD4PRSHLDOSTC1000, RHD4PRSHLSTAGTC1000, RHD4CZ2L102TC2100 | Carpenter [9.69 h]; Skilled labor [96.71 h]; Unskilled Labor [96.71 h]; Steel Fixer [9.69 h]; (6*50mm) HDPE ducts -TC [1221.67 m]; (6*50mm+2*32mm) HDPE ducts -TC [200.07 m]; (2*32mm) HDPE ducts -TC [20.86 m] | 130,024.44 | L102 | Z2 | CONS | TC | Installing | AFT |
| RHD4CZ2L102TC2400 |  | Backfilling of HDPE Ducts for Telecom Network - (RD-L-10/2)-Z2-L102-TC | 15d | 2027-12-08 | 2027-12-25 | RHD4CZ2L102TC2200, RHD4CZ2L102TC5200 | Skilled labor [161.18 h]; Unskilled Labor [161.18 h]; Equipment Opreator [64.47 h]; Excavator-Poclain [64.47 h]; (6*50mm) HDPE ducts -TC [281.93 m]; (6*50mm+2*32mm) HDPE ducts -TC [46.17 m]; (2*32mm) HDPE ducts -TC [4.82 m] | 30,005.64 | L102 | Z2 | CONS | TC | Backfilling | AFT |
|  | 1059 | **RHD4-02-002-L102-(TC)-Telecommunications Manholes** |  | 2027-11-24 | 2027-12-07 |  |  |  |  |  |  |  |  |  |
| RHD4CZ2L102TC5100 |  | Excavation for Manholes for Telecom Network - (RD-L-10/2)-Z2-L102-TC | 6d | 2027-11-24 | 2027-11-30 | RHD4ENSDZ2APPTC190, RHD4CZ2L102TC2100, RHD4CZ2L102SL6100 | Skilled labor [15.03 h]; Unskilled Labor [15.03 h]; Equipment Opreator [12 h]; Excavator-Poclain [5.99 h]; Dump Truck [5.99 h]; Manhole Type 1 - TC [1.65 nr] | 11,122.65 | L102 | Z2 | CONS | TC | Excavation | AFT |
| RHD4CZ2L102TC5200 |  | Installation of Manholes for Telecom Network - (RD-L-10/2)-Z2-L102-TC | 6d | 2027-12-01 | 2027-12-07 | RHD4PRSHLDOSTC1200, RHD4PRSHLSTAGTC1200, RHD4CZ2L102TC5100, RHD4CZ2L102TC2200 SS | Skilled labor [15.03 h]; Unskilled Labor [15.03 h]; Equipment Opreator [5.99 h]; Boom Truck [5.99 h]; Manhole Type 1 - TC [9.35 nr] | 63,028.35 | L102 | Z2 | CONS | TC | Installation | AFT |
|  | 1061 | **RHD4-02-002-Z2-L102-Information and Communication Technologies - ICT** |  | 2027-11-07 | 2027-12-25 |  |  |  |  |  |  |  |  |  |
|  | 1062 | **RHD4-02-002-L102-(ICT)-Information and Communication Technologies Ducts** |  | 2027-11-07 | 2027-12-25 |  |  |  |  |  |  |  |  |  |
| RHD4CZ2L102ICT2100 |  | Excavation of HDPE Ducts for ICT Network - (RD-L-10/2)-Z2-L102-ICT | 15d | 2027-11-07 | 2027-11-23 | RHD4ENSDZ2APPICT200, RHD4CZ2L102SL2100, RHD4CZ2L102SL2200, RHD4CZ2L102SL2300, RHD4CZ2L102SL2400, RHD4CZ2L102SL3300, RHD4CZ2L102SL6100 | Skilled labor [154.97 h]; Unskilled Labor [154.97 h]; Equipment Opreator [309.94 h]; Excavator-Poclain [154.97 h]; Dump Truck [154.97 h]; (2*50mm) HDPE ducts -ICT [359.58 m]; (2*50mm+2*32mm) HDPE ducts -ICT [59.9 m]; (2*32mm) HDPE ducts -ICT [7.4 m] | 18,228.44 | L102 | Z2 | CONS | ICT | Excavation | AFT |
| RHD4CZ2L102ICT2200 |  | Installation of HDPE Ducts for ICT Network - (RD-L-10/2)-Z2-L102-ICT | 9d | 2027-11-24 | 2027-12-04 | RHD4PRSHLDOSICT1000, RHD4PRSHLSTAGICT1000, RHD4CZ2L102ICT2100 | Carpenter [9.26 h]; Skilled labor [93 h]; Unskilled Labor [93 h]; Steel Fixer [9.26 h]; (2*50mm) HDPE ducts -ICT [1168.63 m]; (2*50mm+2*32mm) HDPE ducts -ICT [194.68 m]; (2*32mm) HDPE ducts -ICT [24.05 m] | 59,242.43 | L102 | Z2 | CONS | ICT | Installing | AFT |
| RHD4CZ2L102ICT2400 |  | Backfilling of HDPE Ducts for ICT Network - (RD-L-10/2)-Z2-L102-ICT | 15d | 2027-12-08 | 2027-12-25 | RHD4CZ2L102ICT2200, RHD4CZ2L102ICT5200 | Skilled labor [154.97 h]; Unskilled Labor [154.97 h]; Equipment Opreator [61.97 h]; Excavator-Poclain [61.97 h]; (2*50mm) HDPE ducts -ICT [269.69 m]; (2*50mm+2*32mm) HDPE ducts -ICT [44.92 m]; (2*32mm) HDPE ducts -ICT [5.55 m] | 13,671.33 | L102 | Z2 | CONS | ICT | Backfilling | AFT |

| ID | WBS | Activity | Duration | Start | Finish | Predecessors | Resources | Cost | RDH4-01-001-Road and Block Names-1 | RDH4-01-001-Zones-1 | RDH4-01-001-Phases-1 | RDH4-01-001-Networks-1 | RDH4-01-001-Work Method-1 | RDH4-01-001-MENEM |
| --- | --- | --- | --- | --- | --- | --- | --- | --- | --- | --- | --- | --- | --- | --- |
|  | 1063 | **RHD4-02-002-L102-(ICT)-Information and Communication Technologies Manholes** |  | 2027-11-24 | 2027-12-07 |  |  |  |  |  |  |  |  |  |
| RHD4CZ2L102ICT5100 |  | Excavation for Manholes for ICT Network - (RD-L-10/2)-Z2-L102-ICT | 6d | 2027-11-24 | 2027-11-30 | RHD4ENSDZ2APPICT200, RHD4CZ2L102ICT2100, RHD4CZ2L102SL6100 | Skilled labor [15.03 h]; Unskilled Labor [15.03 h]; Equipment Opreator [12 h]; Excavator-Poclain [5.99 h]; Dump Truck [5.99 h]; Manhole Type 1 - ICT [1.65 nr] | 8,898.45 | L102 | Z2 | CONS | ICT | Excavation | AFT |
| RHD4CZ2L102ICT5200 |  | Installation of Manholes for ICT Network - (RD-L-10/2)-Z2-L102-ICT | 6d | 2027-12-01 | 2027-12-07 | RHD4PRSHLDOSICT1200, RHD4PRSHLSTAGICT1200, RHD4CZ2L102ICT5100 | Skilled labor [15.03 h]; Unskilled Labor [15.03 h]; Equipment Opreator [5.99 h]; Boom Truck [5.99 h]; Manhole Type 1 - ICT [9.35 nr] | 50,424.55 | L102 | Z2 | CONS | ICT | Installation | AFT |
|  | 1052 | **RHD4-02-002-Z2-L102-Landscape Network - LS** |  |  |  |  |  |  |  |  |  |  |  |  |
|  | 1053 | **RHD4-02-002-L102-(LS)-Landscape Lighting cables** |  |  |  |  |  |  |  |  |  |  |  |  |
|  | 1054 | **RHD4-02-002-L102-(LS)-Landscape Feeder Pillars** |  |  |  |  |  |  |  |  |  |  |  |  |
|  | 1055 | **RHD4-02-002-L102-(LS)-Landscape Bollard Poles** |  |  |  |  |  |  |  |  |  |  |  |  |
|  | 1056 | **RHD4-02-002-L102-(LS)-Landscape Feeder Pillars Earthing** |  |  |  |  |  |  |  |  |  |  |  |  |
|  | 1065 | **RHD4-02-002-Z2-L102-Security Network - CCTV** |  | 2027-12-26 | 2028-02-08 |  |  |  |  |  |  |  |  |  |
|  | 1066 | **RHD4-02-002-L102-(CCTV)-Civil Works** |  | 2027-12-26 | 2028-01-05 |  |  |  |  |  |  |  |  |  |
| RHD4CZ2L102CCTV2100 |  | Civil Works for Security Network - (RD-L-10/2)-Z2-L102-CCTV | 10d | 2027-12-26 | 2028-01-05 | RHD4CZ2L102ICT2400, RHD4CZ2L102TC2400 | Skilled labor [435.68 h]; Unskilled Labor [871.2 h]; Equipment Opreator [435.68 h]; Excavator-Poclain [108.9 h]; Dump Truck [108.9 h]; Civil works Digging, trenching, laying pipes Meter with supply and installation of Manholes and for power feeding sources related to all towers and poles – (from 35-meter pole to control room and from related UPS camersa distribution boards till overall 2 [300 m] | 34,800 | L102 | Z2 | CONS | CCTV | Civil Works | AFT |
|  | 1067 | **RHD4-02-002-L102-(CCTV)-CCTV Poles** |  | 2028-01-06 | 2028-01-17 |  |  |  |  |  |  |  |  |  |
| RHD4CZ2L102CCTV1100 |  | Excavation for RC Base for CCTV Poles for Security Network - (RD-L-10/2)-Z2-L102-CCTV | 2d | 2028-01-06 | 2028-01-08 | RHD4ENSDZ2APPCCTV210, RHD4CZ2L102CCTV2100, RHD4CZ2L102CCTV2100 FF | Skilled labor [4.32 h]; Unskilled Labor [4.32 h]; Equipment Opreator [8.64 h]; Excavator-Poclain [2.18 h]; Dump Truck [2.18 h]; 25 Meters pole for CCTV Cameras [0.1 nr] | 14,090.2 | L102 | Z2 | CONS | CCTV | Excavation | AFT |
| RHD4CZ2L102CCTV1200 |  | Installation for RC Base for CCTV Poles for Security Network - (RD-L-10/2)-Z2-L102-CCTV | 2d | 2028-01-09 | 2028-01-10 | RHD4CZ2L102CCTV1100 | Skilled labor [4.32 h]; Unskilled Labor [4.32 h]; Equipment Opreator [8.64 h]; Excavator-Poclain [2.18 h]; Dump Truck [2.18 h]; 25 Meters pole for CCTV Cameras [0.25 nr] | 35,225.5 | L102 | Z2 | CONS | CCTV | RC Base | AFT |
| RHD4CZ2L102CCTV1300 |  | Backfill for RC Base for CCTV Poles for Security Network - (RD-L-10/2)-Z2-L102-CCTV | 2d | 2028-01-11 | 2028-01-12 | RHD4CZ2L102CCTV1200 | Skilled labor [2.88 h]; Unskilled Labor [2.88 h]; Equipment Opreator [5.44 h]; Excavator-Poclain [1.42 h]; Dump Truck [1.42 h]; 25 Meters pole for CCTV Cameras [0.05 nr] | 7,045.1 | L102 | Z2 | CONS | CCTV | Backfill | AFT |
| RHD4CZ2L102CCTV1400 |  | Installation for CCTV Poles for Security Network - (RD-L-10/2)-Z2-L102-CCTV | 2d | 2028-01-13 | 2028-01-15 | RHD4PRSHLDOSCCTV1000, RHD4PRSHLSTACCTV1000, RHD4CZ2L102CCTV1300 | Skilled labor [7.2 h]; Unskilled Labor [14.56 h]; Electrician [7.2 h]; Equipment Opreator [7.2 h]; Boom Truck [3.59 h]; 25 Meters pole for CCTV Cameras [0.6 nr] | 84,541.2 | L102 | Z2 | CONS | CCTV | Installation | AFT |
| RHD4CZ2L102CCTV1500 |  | Protection post Installation for CCTV Poles for Security Network - (RD-L-10/2)-Z2-L102-CCTV | 2d | 2028-01-16 | 2028-01-17 | RHD4CZ2L102CCTV1400 | Skilled labor [21.76 h]; Unskilled Labor [43.52 h]; Supply and Installation of minimum 4 Protection Post for each pole or tower with pipe ?220*6mm THK. [1 nr] | 4,903 | L102 | Z2 | CONS | CCTV | Protection post | AFT |
|  | 1068 | **RHD4-02-002-L102-(CCTV)-Camera** |  | 2028-01-20 | 2028-01-22 |  |  |  |  |  |  |  |  |  |
| RHD4CZ2L102CCTV3100 |  | Installation for Cameras for Security Network - (RD-L-10/2)-Z2-L102-CCTV | 2d | 2028-01-20 | 2028-01-22 | RHD4PRSHLDOSCCTV1100, RHD4PRSHLSTACCTV1100, RHD4CZ2L102CCTV1400, RHD4CZ2L102CCTV4100, RHD4CZ2L102CCTV4200, RHD4CZ2L102CCTV1500 | Unskilled Labor [32.64 h]; Electrician [16.32 h]; Outdoor Camera, 5MP resolution, day/night, fixed bullet camera providing Forensic WDR. [2 nr]; Outdoor PTZ with IR, HDTV 1080 and 31x optical, 12x digital, total 372x zoom, H264/265 with Motion JPEG. [2 nr] | 72,676 | L102 | Z2 | CONS | CCTV | Installation | AFT |
|  | 1069 | **RHD4-02-002-L102-(CCTV)-Power and Infrastructure** |  | 2028-01-16 | 2028-01-19 |  |  |  |  |  |  |  |  |  |
| RHD4CZ2L102CCTV4100 |  | Installation of Power outlet, UPS and midspan for PTZ Camerafor Cameras for Security Network - (RD-L-10/2)-Z2-L102-CCTV | 2d | 2028-01-16 | 2028-01-17 | RHD4PRSHLDOSCCTV1300, RHD4PRSHLSTACCTV1300, RHD4CZ2L102CCTV1400 | Skilled labor [13.12 h]; Unskilled Labor [52.32 h]; Electrician [26.08 h]; Equipment Opreator [26.08 h]; Excavator-Poclain [6.53 h]; Dump Truck [6.53 h]; Outdoor ready IP66-rated midspan for PTZ Camera (The outdoor- ready midspan should be IP66/IP67- and NEMA 4X-rated [2 nr]; 1.2KVA Industrial type UPS located at FEC remote poles [2 nr] | 18,206 | L102 | Z2 | CONS | CCTV | Power | AFT |
| RHD4CZ2L102CCTV4200 |  | Short Range Wireless PoP wireless Bridgefor CCTV Poles for Security Network - (RD-L-10/2)-Z2-L102-CCTV | 2d | 2028-01-18 | 2028-01-19 | RHD4CZ2L102CCTV4100 | Skilled labor [21.76 h]; Unskilled Labor [43.52 h]; Electrician [21.76 h]; Equipment Opreator [43.52 h]; Excavator-Poclain [10.89 h]; Dump Truck [10.89 h]; Short Range wireless point to point wireless bridge [4 nr] | 58,548 | L102 | Z2 | CONS | CCTV | Wireless Pop | AFT |
|  | 1071 | **RHD4-02-002-L102-(CCTV)-CCTV Panels and Components** |  | 2028-01-23 | 2028-02-08 |  |  |  |  |  |  |  |  |  |
| RHD4CZ2L102CCTV6100 |  | Installation for CCTV Panels for Security Network - (RD-L-10/2)-Z2-L102-CCTV | 15d | 2028-01-23 | 2028-02-08 | RHD4PRSHLDOSCCTV1200, RHD4PRSHLSTACCTV1200, RHD4PRLOLSTACCTV1001, RHD4CZ2L102CCTV4200, RHD4CZ2L102CCTV3100 | Skilled labor [326.72 h]; Unskilled Labor [980.16 h]; Electrician [326.72 h]; Pole mounted Filed Equipment cabinet (FEC) , with fan and ventilation, NEMEX 4X ,door, minimum size (600x600x400mm) , the cabinet/enclosurE [2 nr]; 8 Port Industrial PoE Switch 10/1000BaseT (-40 deg to +70 deg. Celsius) for remote poles and as specifiedin item 15. [1 nr]; UTP CAT6 Patch Cord , connect the industrial switch with the cameras, and radio wireless antenna [12 nr] | 32,584 | L102 | Z2 | CONS | CCTV | Equipment | AFT |

| ID | WBS | Activity | Duration | Start | Finish | Predecessors | Resources | Cost | RDH4-01-001-Road and Block Names-1 | RDH4-01-001-Zones-1 | RDH4-01-001-Phases-1 | RDH4-01-001-Networks-1 | RDH4-01-001-Work Method-1 | RDH4-01-001-MENEM |
| --- | --- | --- | --- | --- | --- | --- | --- | --- | --- | --- | --- | --- | --- | --- |
|  | 1082 | **RHD4-02-002-Z2-L011** |  | 2027-01-03 | 2027-07-12 |  |  |  |  |  |  |  |  |  |
|  | 1261 | **RHD4-02-002-Z2-L011-Road Works - RD** |  | 2027-02-28 | 2027-07-12 |  |  |  |  |  |  |  |  |  |
|  | 1262 | **RHD4-02-002-L011-(RD)-Subgrade** |  | 2027-02-28 | 2027-03-01 |  |  |  |  |  |  |  |  |  |
| RHD4CZ2L011RD1100 |  | Supply, lay and compaction subgrade compacted thickness 300 mm for Roads - (RD-L-11)-Z2-L011-RD | 2d | 2027-02-28 | 2027-03-01 | RHD4ENSDZ2APPEW100, RHD4ENSDZ2APPRD220, RHD4CZ2L011ST3500, RHD4CZ2L011ST1500, RHD4CZ2L011ST2500, RHD4CZ2L011ST7500, RHD4CZ2L011ICT3400, RHD4CZ2L011TC3400 | Skilled labor [18.73 h]; Unskilled Labor [37.35 h]; Electrician [18.73 h]; Equipment Opreator [127.63 h]; Water Truck [6.21 h]; Roller compactor [9.37 h]; Grader [18.73 h]; Dump Truck [93.44 h]; Subgrade [898.81 m3] | 17,077.39 | L011 | Z2 | CONS | RD | Subgrade | bef |
|  | 1263 | **RHD4-02-002-L011-(RD)-Aggregate Base Course** |  | 2027-03-02 | 2027-03-03 |  |  |  |  |  |  |  |  |  |
| RHD4CZ2L011RD2100 |  | Supply, lay and compaction Aggregate base course compacted thickness 300 mmfor Roads - (RD-L-11)-Z2-L011-RD | 2d | 2027-03-02 | 2027-03-03 | RHD4PRSHLDOSRD1000, RHD4PRSHLSTAGRD1000, RHD4CZ2L011RD1100 | Skilled labor [6.97 h]; Unskilled Labor [13.83 h]; Equipment Opreator [87.67 h]; Water Truck [4.57 h]; Roller compactor [13.83 h]; Grader [13.83 h]; Dump Truck [55.32 h]; Aggregate Base Courses [564.54 m3] | 32,178.78 | L011 | Z2 | CONS | RD | ABC | bef |
|  | 1264 | **RHD4-02-002-L011-(RD)-Bituminous base course Two Layers, including (MC1)&(RC2)** |  | 2027-04-06 | 2027-07-01 |  |  |  |  |  |  |  |  |  |
| RHD4CZ2L011RD3100 |  | Supply, lay and Asphaltic base course including Prime Coat (MC1) for 1st Layer - (RD-L-11)-Z2-L011-RD | 2d | 2027-04-06 | 2027-04-07 | RHD4PRSHLDOSRD1100, RHD4ENMSASPH2000, RHD4ENMSASPH2010, RHD4PRSHLSTAGRD1100, RHD4CZ2L011RD2100, RHD4CZ2L102RD3100 SS, RHD4CZ9L02RD3100, RHD4CZ3L122RD3100 | Skilled labor [2.61 h]; Unskilled Labor [15.36 h]; Equipment Opreator [38.44 h]; Bobcat [2.61 h]; Roller compactor [2.61 h]; Asphalt Paver [2.61 h]; Rubber Compactor [5.12 h]; MC1/RC2 Sprinkler [2.61 h]; Dump Truck [23.09 h]; Bituminous base course (Grading I - Class A), including Prime coat (MC1) & tack coate (RC2) [93.84 m3] | 44,855.52 | L011 | Z2 | CONS | RD | 150 mm | AFT |
| RHD4CZ2L011RD3200 |  | Supply, lay and Asphaltic base course including Tack Coat (RC2) for 2nd Layer - (RD-L-11)-Z2-L011-RD | 2d | 2027-06-30 | 2027-07-01 | RHD4PRSHLDOSRD1100, RHD4PRSHLSTAGRD1100, RHD4CZ2L011RD3100, RHD4CZ2L011TC2400, RHD4CZ2L011ICT2400 | Skilled labor [2.61 h]; Unskilled Labor [15.36 h]; Equipment Opreator [38.44 h]; Bobcat [2.61 h]; Roller compactor [2.61 h]; Asphalt Paver [2.61 h]; Rubber Compactor [5.12 h]; MC1/RC2 Sprinkler [2.61 h]; Dump Truck [23.09 h]; Bituminous base course (Grading I - Class A), including Prime coat (MC1) & tack coate (RC2) [93.84 m3] | 44,855.52 | L011 | Z2 | CONS | RD | 150 mm | AFT |
|  | 1266 | **RHD4-02-002-L011-(RD)-Precast Concrete Curb** |  | 2027-07-03 | 2027-07-05 |  |  |  |  |  |  |  |  |  |
| RHD4CZ2L011RD5100 |  | Supply and installation Precast Concrete Kerb for Roads - (RD-L-11)-Z2-L011-RD | 3d | 2027-07-03 | 2027-07-05 | RHD4PRSHLDOSRD1200, RHD4ENMSRD2000, RHD4ENMSRD2010, RHD4PRSHLSTAGRD1200, RHD4CZ2L011RD3200 | Mason [82 h]; Skilled labor [27.33 h]; Unskilled Labor [82 h]; Equipment Opreator [54.67 h]; Bobcat [27.33 h]; Concrete Mixer Truck [27.33 h]; Precast Concrete Curbstone, type K1 [1129.68 m] | 62,132.62 | L011 | Z2 | CONS | RD | Curbs | AFT |
|  | 1269 | **RHD4-02-002-L011-(RD)-Traffic Signage** |  | 2027-07-06 | 2027-07-12 |  |  |  |  |  |  |  |  |  |
| RHD4CZ2L011RD8100 |  | Installation of Traffic Signage for Road Network - (RD-L-11)-Z2-L011-RD | 6d | 2027-07-06 | 2027-07-12 | RHD4PRSHLDOSRD1600, RHD4PRSHLSTAGRD1600, RHD4CZ2L011ICT2400, RHD4CZ2L011TC2400, RHD4CZ2L011RD5100, RHD4CZ2L011LV4300 | Skilled labor [130.68 h]; Unskilled Labor [65.34 h]; Electrician [15.25 h]; Equipment Opreator [19.2 h]; Boom Truck [13.07 h]; Concrete Mixer Truck [6.1 h]; Traffic signs, ground mounted, 1 Sheet Aluminium, (breakaway)Single post [13 nr] | 15,938 | L011 | Z2 | CONS | RD | Traffic Signage | AFT |
|  | 1267 | **RHD4-02-002-L011-(RD)-Precast Interlocking Block Pavers** |  |  |  |  |  |  |  |  |  |  |  |  |
|  | 1265 | **RHD4-02-002-L011-(RD)-Bituminous concrete wearing course including tack coat (RC2)** |  | 2027-07-06 | 2027-07-07 |  |  |  |  |  |  |  |  |  |
| RHD4CZ2L011RD4100 |  | Supply, lay and compaction Asphaltic wearing course including tack Coat (RC2)for Road Network - (RD-L-11)-Z2-L011-RD | 2d | 2027-07-06 | 2027-07-07 | RHD4CZ2L011RD5100 | Skilled labor [2.83 h]; Unskilled Labor [16.99 h]; Equipment Opreator [42.47 h]; Bobcat [2.83 h]; Roller compactor [2.83 h]; Asphalt Paver [2.83 h]; Rubber Compactor [5.66 h]; MC1/RC2 Sprinkler [2.83 h]; Dump Truck [25.48 h]; Bituminous concrete wearing course, (Grading I - Class A), including tack coat (RC2) [135.05 m3] | 73,332.15 | L011 | Z2 | CONS | RD | 50 mm | AFT |
|  | 1268 | **RHD4-02-002-L011-(RD)-Pavement Marking** |  | 2027-07-08 | 2027-07-10 |  |  |  |  |  |  |  |  |  |
| RHD4CZ2L011RD7100 |  | Pavement Markings for Road Network - (RD-L-11)-Z2-L011-RD | 2d | 2027-07-08 | 2027-07-10 | RHD4PRSHLDOSRD1500, RHD4PRSHLSTAGRD1500, RHD4CZ2L011RD4100 | Skilled labor [18.95 h]; Unskilled Labor [37.79 h]; Equipment Opreator [18.95 h]; Road Marking Machine [18.95 h]; Retroreflective Thermoplastic White Traffic Markings [238.18 m2]; Retroreflective Thermoplastic Yellow, Traffic Markings [86.36 m2]; Retroreflective raised pavement markers (cat eyes) [138 nr] | 14,752.74 | L011 | Z2 | CONS | RD | Pavement Marking | AFT |
|  | 1086 | **RHD4-02-002-Z2-L011-Storm Network - ST** |  | 2027-01-03 | 2027-01-25 |  |  |  |  |  |  |  |  |  |
|  | 1103 | **RHD4-02-002-L011-(ST)-MH Works - 1200 mm diameter** |  | 2027-01-03 | 2027-01-25 |  |  |  |  |  |  |  |  |  |
| RHD4CZ2L011ST3100 |  | Excavation and PC Blinding works for MH 1200 mm - (RD-L-11)-Z2-L011-ST | 2d | 2027-01-03 | 2027-01-04 | RHD4ENSDZ2APPST110, RHD4ENMSST2000, RHD4ENMSST2010, RHD4CZ2C082ST1106, RHD4PRSHLDOSST1001 | Skilled labor [7.3 h]; Unskilled Labor [7.3 h]; Equipment Opreator [11.65 h]; Excavator-Poclain [7.3 h]; Water Truck [0.8 h]; Dump Truck [3.59 h]; MH (1200mm Diameter) - ST - depth 1.50 - 2.5m [0.5 nr] | 5,161.5 | L011 | Z2 | CONS | ST | Excavation | bef |
| RHD4CZ2L011ST3200 |  | Installation of Base for MH 1200 mm - (RD-L-11)-Z2-L011-ST | 2d | 2027-01-05 | 2027-01-06 | RHD4PRSHLSTAGST1601, RHD4CZ2L011ST3100 | Skilled labor [7.3 h]; Unskilled Labor [7.3 h]; Equipment Opreator [2.94 h]; Boom Truck [1.42 h]; Concrete Mixer Truck [1.42 h]; MH (1200mm Diameter) - ST - depth 1.50 - 2.5m [0.5 nr] | 5,161.5 | L011 | Z2 | CONS | ST | Installing Base | bef |
| RHD4CZ2L011ST3300 |  | MH Ring and C.Slab works and Backfilling works for MH 1200 mm - (RD-L-11)-Z2-L011-ST | 2d | 2027-01-07 | 2027-01-09 | RHD4PRSHLDOSST1601, RHD4CZ2L011ST3200 | Skilled labor [7.3 h]; Unskilled Labor [7.3 h]; Equipment Opreator [5.12 h]; Boom Truck [2.94 h]; Concrete Mixer Truck [2.18 h]; MH (1200mm Diameter) - ST - depth 1.50 - 2.5m [0.7 nr] | 7,226.1 | L011 | Z2 | CONS | ST | Installing Rings | bef |
| RHD4CZ2L011ST3400 |  | Steel Cover for MH 1200 mm - (RD-L-11)-Z2-L011-ST | 2d | 2027-01-21 | 2027-01-23 | RHD4PRSHLDOSST1701, RHD4PRSHLSTAGST1701, RHD4CZ2L011ST2500, RHD4CZ2L011ST1500, RHD4CZ2L011ST3300 | Skilled labor [7.3 h]; Unskilled Labor [14.48 h]; Equipment Opreator [1.42 h]; Boom Truck [1.42 h]; MH (1200mm Diameter) - ST - depth 1.50 - 2.5m [0.1 nr] | 1,032.3 | L011 | Z2 | CONS | ST | Steel Cover | bef |
| RHD4CZ2L011ST3500 |  | Finishing, Benching, Testing works for MH 1200 mm - (RD-L-11)-Z2-L011-ST | 2d | 2027-01-24 | 2027-01-25 | RHD4CZ2L011ST3400 | Skilled labor [7.3 h]; Unskilled Labor [14.48 h]; Plumber [7.3 h]; Equipment Opreator [1.42 h]; Water Truck [1.42 h]; MH (1200mm Diameter) - ST - depth 1.50 - 2.5m [0.2 nr] | 2,064.6 | L011 | Z2 | CONS | ST | Benching | bef |

| ID | WBS | Activity | Duration | Start | Finish | Predecessors | Resources | Cost | RDH4-01-001-Road and Block Names-1 | RDH4-01-001-Zones-1 | RDH4-01-001-Phases-1 | RDH4-01-001-Networks-1 | RDH4-01-001-Work Method-1 | RDH4-01-001-MENEM |
| --- | --- | --- | --- | --- | --- | --- | --- | --- | --- | --- | --- | --- | --- | --- |
|  | 1087 | **RHD4-02-002-L011-(ST)-GRP Pipes - 400 mm diameter** |  | 2027-01-07 | 2027-01-18 |  |  |  |  |  |  |  |  |  |
| RHD4CZ2L011ST1100 |  | Excavation works for GRP Pipe Line 400 mm - (RD-L-11)-Z2-L011-ST | 2d | 2027-01-07 | 2027-01-09 | RHD4ENSDZ2APPST110, RHD4CZ2L011ST3300 SS | Skilled labor [5.77 h]; Unskilled Labor [5.77 h]; Equipment Opreator [6.86 h]; Excavator-Poclain [5.77 h]; Dump Truck [1.2 h]; GRP (400mm Diameter) - ST - Depth: 1.51m - 2.5 m |  | L011 | Z2 | CONS | ST | Excavation | bef |
| RHD4CZ2L011ST1200 |  | Bedding works for GRP Pipe Line 400 mm - (RD-L-11)-Z2-L011-ST | 2d | 2027-01-10 | 2027-01-11 | RHD4CZ2L011ST1100 | Skilled labor [5.77 h]; Unskilled Labor [11.54 h]; Equipment Opreator [11.54 h]; Excavator-Poclain [5.77 h]; Dump Truck [5.77 h]; GRP (400mm Diameter) - ST - Depth: 1.51m - 2.5 m |  | L011 | Z2 | CONS | ST | Bedding | bef |
| RHD4CZ2L011ST1300 |  | Installing for GRP Pipe Line 400 mm - (RD-L-11)-Z2-L011-ST | 2d | 2027-01-12 | 2027-01-13 | RHD4PRSHLSTAGST1001, RHD4CZ2L011ST1200, RHD4PRSHLPOST1000, RHD4PRSHLDOSST1001 | Unskilled Labor [11.54 h]; Plumber [5.77 h]; GRP (400mm Diameter) - ST - Depth: 1.51m - 2.5 m |  | L011 | Z2 | CONS | ST | Installation | bef |
| RHD4CZ2L011ST1400 |  | Primary Test for GRP Pipe Line 400 mm - (RD-L-11)-Z2-L011-ST | 2d | 2027-01-14 | 2027-01-16 | RHD4CZ2L011ST1300 | Unskilled Labor [5.77 h]; Plumber [5.77 h]; Equipment Opreator [5.77 h]; Water Truck [5.77 h]; GRP (400mm Diameter) - ST - Depth: 1.51m - 2.5 m |  | L011 | Z2 | CONS | ST | Primary Test | bef |
| RHD4CZ2L011ST1500 |  | Backfilling and warning tape works for GRP Pipe Line 400 mm - (RD-L-11)-Z2-L011-ST | 2d | 2027-01-17 | 2027-01-18 | RHD4CZ2L011ST1400 | Skilled labor [5.77 h]; Unskilled Labor [11.54 h]; Equipment Opreator [11.54 h]; Excavator-Poclain [5.77 h]; Dump Truck [5.77 h]; GRP (400mm Diameter) - ST - Depth: 1.51m - 2.5 m |  | L011 | Z2 | CONS | ST | Backfilling | bef |
|  | 1101 | **RHD4-02-002-L011-(ST)-UPVC Pipes - 300 mm diameter** |  | 2027-01-10 | 2027-01-20 |  |  |  |  |  |  |  |  |  |
| RHD4CZ2L011ST2100 |  | Excavation works for UPVC Pipe Line 300 mm - (RD-L-11)-Z2-L011-ST | 2d | 2027-01-10 | 2027-01-11 | RHD4ENSDZ2APPST110, RHD4CZ2L011ST1100 | Skilled labor [3.38 h]; Unskilled Labor [3.38 h]; Equipment Opreator [4.14 h]; Excavator-Poclain [3.38 h]; Dump Truck [0.65 h]; UPVC (300mm Diameter) - ST - Depth less than 1.5 [7.64 m]; UPVC (300mm Diameter) - ST - Depth: 1.51m - 2.5m | 2,314.92 | L011 | Z2 | CONS | ST | Excavation | bef |
| RHD4CZ2L011ST2200 |  | Bedding works for UPVC Pipe Line 300 mm - (RD-L-11)-Z2-L011-ST | 2d | 2027-01-12 | 2027-01-13 | RHD4CZ2L011ST2100 | Skilled labor [2.94 h]; Unskilled Labor [5.88 h]; Equipment Opreator [5.88 h]; Excavator-Poclain [2.94 h]; Dump Truck [2.94 h]; UPVC (300mm Diameter) - ST - Depth less than 1.5 [3.82 m]; UPVC (300mm Diameter) - ST - Depth: 1.51m - 2.5m | 1,157.46 | L011 | Z2 | CONS | ST | Bedding | bef |
| RHD4CZ2L011ST2300 |  | Installing for UPVC Pipe Line 300 mm - (RD-L-11)-Z2-L011-ST | 2d | 2027-01-14 | 2027-01-16 | RHD4PRSHLDOSST1101, RHD4PRSHLSTAGST1101, RHD4CZ2L011ST2200 | Unskilled Labor [6.86 h]; Plumber [3.38 h]; UPVC (300mm Diameter) - ST - Depth less than 1.5 [34.39 m]; UPVC (300mm Diameter) - ST - Depth: 1.51m - 2.5m | 10,420.17 | L011 | Z2 | CONS | ST | Installation | bef |
| RHD4CZ2L011ST2400 |  | Primary Test for UPVC Pipe Line 300 mm - (RD-L-11)-Z2-L011-ST | 2d | 2027-01-17 | 2027-01-18 | RHD4CZ2L011ST2300 | Unskilled Labor [1.96 h]; Plumber [1.96 h]; Equipment Opreator [1.96 h]; Water Truck [1.96 h]; UPVC (300mm Diameter) - ST - Depth less than 1.5 [15.29 m]; UPVC (300mm Diameter) - ST - Depth: 1.51m - 2.5m | 4,632.87 | L011 | Z2 | CONS | ST | Primary Test | bef |
| RHD4CZ2L011ST2500 |  | Backfilling and warning tape works for UPVC Pipe Line 300 mm - (RD-L-11)-Z2-L011-ST | 2d | 2027-01-19 | 2027-01-20 | RHD4CZ2L011ST2400 | Skilled labor [4.14 h]; Unskilled Labor [8.28 h]; Equipment Opreator [8.28 h]; Excavator-Poclain [4.14 h]; Dump Truck [4.14 h]; UPVC (300mm Diameter) - ST - Depth less than 1.5 [15.29 m]; UPVC (300mm Diameter) - ST - Depth: 1.51m - 2.5m | 4,632.87 | L011 | Z2 | CONS | ST | Backfilling | bef |
|  | 1109 | **RHD4-02-002-L011-(ST)-Concrete Encasement** |  |  |  |  |  |  |  |  |  |  |  |  |
|  | 1110 | **RHD4-02-002-Z2-L011-Catch Basin - ST** |  | 2027-01-10 | 2027-01-20 |  |  |  |  |  |  |  |  |  |
|  | 1111 | **RHD4-02-002-L011-(ST)-Single Catch Basin Works** |  | 2027-01-10 | 2027-01-20 |  |  |  |  |  |  |  |  |  |
| RHD4CZ2L011ST7100 |  | Excavation works for Single Catch Basin - (RD-L-11)-Z2-L011-ST | 2d | 2027-01-10 | 2027-01-11 | RHD4ENSDZ2APPST110, RHD4CZ2L011ST3300, RHD4CZ2L011ST3300 SS | Skilled labor [4.36 h]; Unskilled Labor [8.71 h]; Equipment Opreator [6.53 h]; Excavator-Poclain [4.36 h]; Dump Truck [2.18 h]; Single Catch basin - ST [1 nr] | 3,731 | L011 | Z2 | CONS | ST | Excavation | bef |
| RHD4CZ2L011ST7200 |  | PC Blinding, Installation and Pipe connection for Single Catch Basin - (RD-L-11)-Z2-L011-ST | 2d | 2027-01-12 | 2027-01-13 | RHD4CZ2L011ST7100 | Skilled labor [4.36 h]; Unskilled Labor [8.71 h]; Plumber [2.18 h]; Equipment Opreator [0.87 h]; Boom Truck [0.87 h]; Single Catch basin - ST [0.8 nr] | 2,984.8 | L011 | Z2 | CONS | ST | Installation & Pipe Connection | bef |
| RHD4CZ2L011ST7300 |  | Rings & C.Slab & Final Backfill for Single Catch Basin - (RD-L-11)-Z2-L011-ST | 2d | 2027-01-14 | 2027-01-16 | RHD4PRSHLDOSST1301, RHD4PRSHLSTAGST1301, RHD4CZ2L011ST7200 | Skilled labor [5.45 h]; Unskilled Labor [10.89 h]; Equipment Opreator [6.53 h]; Boom Truck [1.09 h]; Bobcat [5.45 h]; Single Catch basin - ST [1.4 nr] | 5,223.4 | L011 | Z2 | CONS | ST | Rings | bef |
| RHD4CZ2L011ST7400 |  | Steel Cover for Single Catch Basin - (RD-L-11)-Z2-L011-ST | 2d | 2027-01-17 | 2027-01-18 | RHD4PRSHLDOSST1701, RHD4CZ2L011ST7300 | Skilled labor [4.36 h]; Unskilled Labor [4.36 h]; Equipment Opreator [0.87 h]; Boom Truck [0.87 h]; Single Catch basin - ST [0.2 nr] | 746.2 | L011 | Z2 | CONS | ST | Steel Cover | bef |
| RHD4CZ2L011ST7500 |  | Finishing and Insulation works for Single Catch Basin - (RD-L-11)-Z2-L011-ST | 2d | 2027-01-19 | 2027-01-20 | RHD4CZ2L011ST7400 | Skilled labor [8.71 h]; Unskilled Labor [17.42 h]; Equipment Opreator [1.74 h]; Boom Truck [1.74 h]; Single Catch basin - ST [0.6 nr] | 2,238.6 | L011 | Z2 | CONS | ST | Insulation | bef |
|  | 1172 | **RHD4-02-002-Z2-L011-Potable Network - PT** |  | 2027-01-26 | 2027-03-13 |  |  |  |  |  |  |  |  |  |
|  | 1175 | **RHD4-02-002-L011-(PT)-HDPE Pipes - 200 mm diameter** |  |  |  |  |  |  |  |  |  |  |  |  |
|  | 1174 | **RHD4-02-002-L011-(PT)-HDPE Pipes - 160 mm diameter** |  | 2027-01-26 | 2027-02-06 |  |  |  |  |  |  |  |  |  |
| RHD4CZ2L011PT1101 |  | Excavation works for HDPE Pipline 160 mm - (RD-L-11)-Z2-L011-PT | 2d | 2027-01-26 | 2027-01-27 | RHD4ENSDZ2APPPT130, RHD4ENMSPT2000, RHD4CZ2L011ST2500, RHD4CZ2L011ST3500 | Skilled labor [8.71 h]; Unskilled Labor [8.71 h]; Equipment Opreator [10.35 h]; Excavator-Poclain [8.71 h]; Dump Truck [1.74 h]; HDPE (160mm Diameter) - PT - Depth: less than 1.5m [19.88 m] | 2,127.59 | L011 | Z2 | CONS | PT | Excavation | bef |
| RHD4CZ2L011PT1201 |  | Bedding works for HDPE Pipline 160 mm - (RD-L-11)-Z2-L011-PT | 2d | 2027-01-28 | 2027-01-30 | RHD4CZ2L011PT1101 | Skilled labor [7.2 h]; Unskilled Labor [14.48 h]; Equipment Opreator [14.48 h]; Excavator-Poclain [7.2 h]; Dump Truck [7.2 h]; HDPE (160mm Diameter) - PT - Depth: less than 1.5m [9.94 m] | 1,063.79 | L011 | Z2 | CONS | PT | Bedding | bef |
| RHD4CZ2L011PT1301 |  | Installing for HDPE Pipline 160 mm - (RD-L-11)-Z2-L011-PT | 2d | 2027-01-31 | 2027-02-01 | RHD4PRSHLDOSPT1000, RHD4CZ3L122ST1507, RHD4PRSHLSTAGPT1000, RHD4CZ2L011PT1201 | Unskilled Labor [28.86 h]; Plumber [14.48 h]; Equipment Opreator [14.48 h]; Boom Truck [14.48 h]; HDPE (160mm Diameter) - PT - Depth: less than 1.5m [89.48 m] | 9,574.15 | L011 | Z2 | CONS | PT | Installation | bef |
| RHD4CZ2L011PT1401 |  | Primary Test for HDPE Pipline 160 mm - (RD-L-11)-Z2-L011-PT | 2d | 2027-02-02 | 2027-02-03 | RHD4CZ2L011PT1301 | Unskilled Labor [4.36 h]; Plumber [4.36 h]; Equipment Opreator [4.36 h]; Water Truck [4.36 h]; HDPE (160mm Diameter) - PT - Depth: less than 1.5m [39.77 m] | 4,255.18 | L011 | Z2 | CONS | PT | Primary Test | bef |
| RHD4CZ2L011PT1501 |  | Backfilling and warning tape works for HDPE Pipline 160 mm - (RD-L-11)-Z2-L011-PT | 2d | 2027-02-04 | 2027-02-06 | RHD4CZ2L011PT1401 | Skilled labor [10.78 h]; Unskilled Labor [21.67 h]; Equipment Opreator [21.67 h]; Excavator-Poclain [10.78 h]; Dump Truck [10.78 h]; HDPE (160mm Diameter) - PT - Depth: less than 1.5m [39.77 m] | 4,255.18 | L011 | Z2 | CONS | PT | Backfilling | bef |

| ID | WBS | Activity | Duration | Start | Finish | Predecessors | Resources | Cost | RDH4-01-001-Road and Block Names-1 | RDH4-01-001-Zones-1 | RDH4-01-001-Phases-1 | RDH4-01-001-Networks-1 | RDH4-01-001-Work Method-1 | RDH4-01-001-MENEM |
| --- | --- | --- | --- | --- | --- | --- | --- | --- | --- | --- | --- | --- | --- | --- |
|  | 1178 | **RHD4-02-002-L011-(PT)-Gate Valves (Direct Buried)** |  | 2027-02-07 | 2027-02-10 |  |  |  |  |  |  |  |  |  |
| RHD4CZ2L011PT3100 |  | Installation for Direct Buried Gate Valves - (RD-L-11)-Z2-L011-PT | 2d | 2027-02-07 | 2027-02-08 | RHD4PRSHLDOSPT1200, RHD4PRSHLSTAGPT1200, RHD4CZ2L011PT1301 SS, RHD4CZ2L011PT1301, RHD4CZ2L011PT1501 | Unskilled Labor [10.89 h]; Plumber [10.89 h]; Gate valves dia 150 mm - PT [1.8 nr] | 2,844 | L011 | Z2 | CONS | PT | Installation | bef |
| RHD4CZ2L011PT3200 |  | Stem and Service box for Direct Buried Gate Valves - (RD-L-11)-Z2-L011-PT | 2d | 2027-02-09 | 2027-02-10 | RHD4PRSHLDOSPT1300, RHD4PRSHLSTAGPT1300, RHD4CZ2L011PT3100, RHD4CZ2L011PT1501, RHD4CZ2L011PT1401 | Unskilled Labor [10.89 h]; Plumber [10.89 h]; Gate valves dia 150 mm - PT [0.2 nr] | 316 | L011 | Z2 | CONS | PT | Stem and Service box | bef |
|  | 1183 | **RHD4-02-002-L011-(PT)-Air Valve Chambers** |  | 2027-02-11 | 2027-02-20 |  |  |  |  |  |  |  |  |  |
| RHD4CZ2L011PT2102 |  | Excavation and Bedding for Air Valve Chambers for Potable Water Network - (RD-L-11)-Z2-L011-PT | 2d | 2027-02-11 | 2027-02-13 | RHD4ENSDZ2APPPT130, RHD4CZ2L011PT1101, RHD4CZ2L011PT3200 | Skilled labor [5.45 h]; Unskilled Labor [5.45 h]; Equipment Opreator [1.09 h]; Excavator-Poclain [0.54 h]; Dump Truck [0.54 h]; Air Valve chambers - PT [0.25 nr] | 1,193 | L011 | Z2 | CONS | PT | Excavation and Bedding | bef |
| RHD4CZ2L011PT2202 |  | PC works for Air Valve Chambers for Potable Water Network - (RD-L-11)-Z2-L011-PT | 2d | 2027-02-14 | 2027-02-15 | RHD4CZ2L011PT2102 | Skilled labor [5.45 h]; Unskilled Labor [10.89 h]; Equipment Opreator [0.54 h]; Concrete Pump [0.54 h]; Air Valve chambers - PT [0.1 nr] | 477.2 | L011 | Z2 | CONS | PT | PC Works | bef |
| RHD4CZ2L011PT2302 |  | Installation for Air Valve Chambers for Potable Water Network - (RD-L-11)-Z2-L011-PT | 2d | 2027-02-16 | 2027-02-17 | RHD4PRSHLDOSPT1100, RHD4PRSHLDOSPT1400, RHD4PRSHLSTAGPT1100, RHD4PRSHLSTAGPT1400, RHD4CZ2L011PT2202, RHD4CZ2L011PT3200 | Skilled labor [5.45 h]; Unskilled Labor [10.89 h]; Equipment Opreator [1.09 h]; Boom Truck [1.09 h]; Air Valve chambers - PT [0.55 nr] | 2,624.6 | L011 | Z2 | CONS | PT | Installation | bef |
| RHD4CZ2L011PT2402 |  | Backfilling works for Air Valve Chambers for Potable Water Network - (RD-L-11)-Z2-L011-PT | 2d | 2027-02-18 | 2027-02-20 | RHD4CZ2L011PT2302 | Skilled labor [5.45 h]; Unskilled Labor [10.89 h]; Equipment Opreator [1.09 h]; Water Truck [0.54 h]; Dump Truck [0.54 h]; Air Valve chambers - PT [0.1 nr] | 477.2 | L011 | Z2 | CONS | PT | Backfilling Works | bef |
|  | 1184 | **RHD4-02-002-L011-(PT)-Air Valves** |  | 2027-02-21 | 2027-02-25 |  |  |  |  |  |  |  |  |  |
| RHD4CZ2L011PT3103 |  | Installation for Air Valves for Potable Water Network - (RD-L-11)-Z2-L011-PT | 2d | 2027-02-21 | 2027-02-23 | RHD4PRSHLDOSPT1200, RHD4PRSHLSTAGPT1200, RHD4CZ2L011PT2302, RHD4CZ2L011PT2402 | Unskilled Labor [5.45 h]; Plumber [5.45 h]; Air valve diameter 50 mm - PT [0.9 nr] | 4,427.1 | L011 | Z2 | CONS | PT | Installation | bef |
| RHD4CZ2L011PT3203 |  | Stem and Service box for Air Valves for Potable Water Network - (RD-L-11)-Z2-L011-PT | 2d | 2027-02-24 | 2027-02-25 | RHD4PRSHLDOSPT1300, RHD4PRSHLSTAGPT1300, RHD4CZ2L011PT3103, RHD4CZ2L011PT2402 | Unskilled Labor [5.45 h]; Plumber [5.45 h]; Air valve diameter 50 mm - PT [0.1 nr] | 491.9 | L011 | Z2 | CONS | PT | Stem and Service box | bef |
|  | 1185 | **RHD4-02-002-L011-(PT)-Fire Hydrant** |  | 2027-02-27 | 2027-03-13 |  |  |  |  |  |  |  |  |  |
| RHD4CZ2L011PT4100 |  | Excavation and Bedding and Pipe Installation for Fire Hydrant - (RD-L-11)-Z2-L011-PT | 2d | 2027-02-27 | 2027-02-28 | RHD4ENSDZ2APPPT130, RHD4CZ2L011PT1401, RHD4CZ2L011PT3203 | Skilled labor [10.89 h]; Unskilled Labor [10.89 h]; Plumber [10.89 h]; Equipment Opreator [5.45 h]; Excavator-Poclain [5.45 h]; 3-outlet fire hydrant (2 x 2.5 inch and 1 x 4.5 inch) in the form of a separate dry vacuum cylinder [0.2 nr] | 2,524 | L011 | Z2 | CONS | PT | Excavation | bef |
| RHD4CZ2L011PT4200 |  | Valve Installation for Fire Hydrant - (RD-L-11)-Z2-L011-PT | 2d | 2027-03-01 | 2027-03-02 | RHD4CZ2L011PT4100 | Unskilled Labor [7.3 h]; Plumber [7.3 h]; 3-outlet fire hydrant (2 x 2.5 inch and 1 x 4.5 inch) in the form of a separate dry vacuum cylinder [0.4 nr] | 5,048 | L011 | Z2 | CONS | PT | Valve | bef |
| RHD4CZ2L011PT4300 |  | Stem for Fire Hydrant - (RD-L-11)-Z2-L011-PT | 2d | 2027-03-03 | 2027-03-04 | RHD4CZ2L011PT4200 | Unskilled Labor [7.3 h]; Plumber [7.3 h]; 3-outlet fire hydrant (2 x 2.5 inch and 1 x 4.5 inch) in the form of a separate dry vacuum cylinder [0.6 nr] | 7,572 | L011 | Z2 | CONS | PT | Stem | bef |
| RHD4CZ2L011PT4400 |  | Fire Installation for Fire Hydrant - (RD-L-11)-Z2-L011-PT | 2d | 2027-03-06 | 2027-03-07 | RHD4PRSHLDOSPT1500, RHD4PRSHLSTAGPT1500, RHD4CZ2L011PT4300 | Unskilled Labor [7.3 h]; Plumber [7.3 h]; Equipment Opreator [7.3 h]; Boom Truck [7.3 h]; 3-outlet fire hydrant (2 x 2.5 inch and 1 x 4.5 inch) in the form of a separate dry vacuum cylinder [0.7 nr] | 8,834 | L011 | Z2 | CONS | PT | Fire | bef |
| RHD4CZ2L011PT4500 |  | Protection Barriers for Fire Hydrant - (RD-L-11)-Z2-L011-PT | 2d | 2027-03-08 | 2027-03-13 | RHD4CZ2L011PT4400 | Unskilled Labor [4.36 h]; Plumber [4.36 h]; 3-outlet fire hydrant (2 x 2.5 inch and 1 x 4.5 inch) in the form of a separate dry vacuum cylinder [0.1 nr] | 1,262 | L011 | Z2 | CONS | PT | Protection Barriers | bef |
|  | 1186 | **RHD4-02-002-L011-(PT)-Concrete Encasement** |  |  |  |  |  |  |  |  |  |  |  |  |
|  | 1221 | **RHD4-02-002-Z2-L011-Medium Voltage Network - MV** |  | 2027-02-21 | 2027-05-12 |  |  |  |  |  |  |  |  |  |
|  | 1222 | **RHD4-02-002-L011-(MV)-Medium Voltage cable trench** |  | 2027-04-08 | 2027-04-25 |  |  |  |  |  |  |  |  |  |
| RHD4CZ2L011MV1100 |  | Excavation for Medium Voltage Trench - (RD-L-11)-Z2-L011-MV | 4d | 2027-04-08 | 2027-04-12 | RHD4ENSDZ2APPMV150, RHD4CZ2L011RD3100, RHD4CZ2L011PT4500 | Skilled labor [33.11 h]; Unskilled Labor [66.21 h]; Equipment Opreator [99.32 h]; Excavator-Poclain [33.11 h]; Dump Truck [66.21 h]; Excavation for Trench size 60cm wide and 80cm deep ( for 2 cables) [212.74 m3] | 2,127.39 | L011 | Z2 | CONS | MV | Excavation | AFT |
| RHD4CZ2L011MV1200 |  | Trench Backfilling for Medium Voltage Network - (RD-L-11)-Z2-L011-MV | 4d | 2027-04-21 | 2027-04-25 | RHD4CZ2L011MV3200 | Skilled labor [33.11 h]; Unskilled Labor [33.11 h]; Equipment Opreator [66.21 h]; Dump Truck [66.21 h]; Excavation for Trench size 60cm wide and 80cm deep ( for 2 cables) [91.17 m3] | 911.74 | L011 | Z2 | CONS | MV | Backfilling | AFT |
|  | 1223 | **RHD4-02-002-L011-(MV)-Medium Voltage duct banks** |  | 2027-02-21 | 2027-03-02 |  |  |  |  |  |  |  |  |  |
| RHD4CZ2L011MV2100 |  | Excavation of Duct Banks for Medium Voltage Network - (RD-L-11)-Z2-L011-MV | 2d | 2027-02-21 | 2027-02-23 | RHD4ENSDZ2APPMV150, RHD4CZ2L011PT2402 | Unskilled Labor [13.07 h]; Equipment Opreator [26.25 h]; Excavator-Poclain [13.07 h]; Dump Truck [13.07 h]; Duct bank for MV cables UPVC (4xø150mm) [1.8 m] | 716.4 | L011 | Z2 | CONS | MV | Excavation | bef |
| RHD4CZ2L011MV2200 |  | Installation of Duct Banks for Medium Voltage Network - (RD-L-11)-Z2-L011-MV | 2d | 2027-02-24 | 2027-02-25 | RHD4PRSHLDOSMV1000, RHD4PRSHLSTAGMV1000, RHD4CZ2L011MV2100 | Unskilled Labor [19.6 h]; Equipment Opreator [39.31 h]; Excavator-Poclain [19.6 h]; Dump Truck [19.6 h]; Duct bank for MV cables UPVC (4xø150mm) [1.8 m] | 716.4 | L011 | Z2 | CONS | MV | Installing | bef |
| RHD4CZ2L011MV2300 |  | Pouring of Duct Banks for Medium Voltage Network - (RD-L-11)-Z2-L011-MV | 2d | 2027-02-27 | 2027-02-28 | RHD4CZ2L011MV2200 | Unskilled Labor [13.07 h]; Equipment Opreator [26.25 h]; Excavator-Poclain [13.07 h]; Dump Truck [13.07 h]; Duct bank for MV cables UPVC (4xø150mm) [11.73 m] | 4,668.24 | L011 | Z2 | CONS | MV | Pouring | bef |
| RHD4CZ2L011MV2400 |  | Backfilling of Duct Banks for Medium Voltage Network - (RD-L-11)-Z2-L011-MV | 2d | 2027-03-01 | 2027-03-02 | RHD4CZ2L011MV2300 | Unskilled Labor [9.8 h]; Equipment Opreator [19.6 h]; Excavator-Poclain [9.8 h]; Dump Truck [9.8 h]; Duct bank for MV cables UPVC (4xø150mm) [2.71 m] | 1,077.29 | L011 | Z2 | CONS | MV | Backfilling | bef |

| ID | WBS | Activity | Duration | Start | Finish | Predecessors | Resources | Cost | RDH4-01-001-Road and Block Names-1 | RDH4-01-001-Zones-1 | RDH4-01-001-Phases-1 | RDH4-01-001-Networks-1 | RDH4-01-001-Work Method-1 | RDH4-01-001-MENEM |
| --- | --- | --- | --- | --- | --- | --- | --- | --- | --- | --- | --- | --- | --- | --- |
|  | 1224 | **RHD4-02-002-L011-(MV)-Medium Voltage cables 3Cx 500 mm²** |  | 2027-04-13 | 2027-04-27 |  |  |  |  |  |  |  |  |  |
| RHD4CZ2L011MV3100 |  | Installation of Medium Voltage Cables 3Cx 500 mm² - (RD-L-11)-Z2-L011-MV | 5d | 2027-04-13 | 2027-04-18 | RHD4PRSHLDOSMV1100, RHD4ENMSMV2000, RHD4ENMSMV2010, RHD4PRSHLSTAGMV1100, RHD4CZ2L011MV1100, RHD4CZ2L011MV2400 | Skilled labor [48.46 h]; Unskilled Labor [193.96 h]; Electrician [97.03 h]; Equipment Opreator [145.5 h]; Boom Truck [48.46 h]; Cable Laying Machine [97.03 h]; Cable 13.8 kV 3Cx 500 mm² Al/XLPE,/LLDPE / Unarmored [601.12 m] | 95,578.78 | L011 | Z2 | CONS | MV | Installation | AFT |
| RHD4CZ2L011MV3200 |  | Joints Installation of Medium Voltage Cables 3Cx 500 mm² - (RD-L-11)-Z2-L011-MV | 2d | 2027-04-19 | 2027-04-20 | RHD4PRSHLDOSMV1300, RHD4PRSHLSTAGMV1300, RHD4CZ2L011MV3100 | Skilled labor [5.45 h]; Unskilled Labor [21.78 h]; Electrician [10.89 h]; Equipment Opreator [5.45 h]; Boom Truck [5.45 h]; Straight joints cables for 13.8 kv 3Cx 500 mm², Al /XLPE/LLDPE [1 Unit] | 3,248 | L011 | Z2 | CONS | MV | Joints Installation | AFT |
| RHD4CZ2L011MV3300 |  | Testing of Medium Voltage Cables 3Cx 500 mm² - (RD-L-11)-Z2-L011-MV | 2d | 2027-04-26 | 2027-04-27 | RHD4CZ2L011MV3200, RHD4CZ2L011MV1200, RHD4CZ2L011MV3100 | Skilled labor [14.59 h]; Unskilled Labor [58.15 h]; Electrician [29.08 h]; Cable 13.8 kV 3Cx 500 mm² Al/XLPE,/LLDPE / Unarmored [66.79 m] | 10,619.86 | L011 | Z2 | CONS | MV | Testing | AFT |
|  | 4254 | **RHD4-02-002-L011-(MV)-Unit Substations** |  | 2027-04-28 | 2027-05-12 |  |  |  |  |  |  |  |  |  |
| RHD4CZ2L011MV5100 |  | Excavation for Unit Substations for Medium Voltage Network - (RD-L-11)-Z2-L011-MV | 2d | 2027-04-28 | 2027-04-29 | RHD4CZ2L011MV3300 | Skilled labor [21.78 h]; Unskilled Labor [21.78 h]; Equipment Opreator [43.56 h]; Excavator-Poclain [21.78 h]; Dump Truck [21.78 h]; Unit Substation 13.8/0.4 K V, 500kVA ,Including concrete foundations and fencing, According to the specifications and standards of SEC [0.1 Unit]; Ring Main Unit RMU, 13.8KV, According to the specifications and standards of SEC [0.1 Unit] | 12,257 | L011 | Z2 | CONS | MV | Excavation | AFT |
| RHD4CZ2L011MV5200 |  | Concrete Base Placement for Unit Substations for Medium Voltage Network - (RD-L-11)-Z2-L011-MV | 2d | 2027-05-01 | 2027-05-02 | RHD4CZ2L011MV5100 | Skilled labor [21.78 h]; Unskilled Labor [21.78 h]; Equipment Opreator [21.78 h]; Boom Truck [21.78 h]; Unit Substation 13.8/0.4 K V, 500kVA ,Including concrete foundations and fencing, According to the specifications and standards of SEC [0.15 Unit]; Ring Main Unit RMU, 13.8KV, According to the specifications and standards of SEC [0.15 Unit] | 18,385.5 | L011 | Z2 | CONS | MV | Concrete Base Placement | AFT |
| RHD4CZ2L011MV5300 |  | Installation for Fences and doors for Medium Voltage Network - (RD-L-11)-Z2-L011-MV | 5d | 2027-05-03 | 2027-05-08 | RHD4CZ2L011MV5200 | Skilled labor [54.45 h]; Unskilled Labor [54.45 h]; Equipment Opreator [65.34 h]; Excavator-Poclain [10.89 h]; Boom Truck [54.45 h]; Unit Substation 13.8/0.4 K V, 500kVA ,Including concrete foundations and fencing, According to the specifications and standards of SEC [0.1 Unit]; Ring Main Unit RMU, 13.8KV, According to the specifications and standards of SEC [0.1 Unit] | 12,257 | L011 | Z2 | CONS | MV | Fence Installation | AFT |
| RHD4CZ2L011MV5400 |  | Installation for Unit Substations for Medium Voltage Network - (RD-L-11)-Z2-L011-MV | 4d | 2027-05-09 | 2027-05-12 | RHD4CZ2L011MV5300 | Skilled labor [43.56 h]; Unskilled Labor [87.12 h]; Electrician [87.12 h]; Unit Substation 13.8/0.4 K V, 500kVA ,Including concrete foundations and fencing, According to the specifications and standards of SEC [0.65 Unit]; Ring Main Unit RMU, 13.8KV, According to the specifications and standards of SEC [0.65 Unit] | 79,670.5 | L011 | Z2 | CONS | MV | Substation Installation | AFT |
|  | 1228 | **RHD4-02-002-Z2-L011-Low Voltage Network - LV** |  | 2027-05-13 | 2027-06-26 |  |  |  |  |  |  |  |  |  |
|  | 1229 | **RHD4-02-002-L011-(LV)-Low Voltage duct banks** |  | 2027-05-13 | 2027-06-05 |  |  |  |  |  |  |  |  |  |
| RHD4CZ2L011LV2100 |  | Excavation of Duct Banks for Low Voltage Network - (RD-L-11)-Z2-L011-LV | 4d | 2027-05-13 | 2027-05-22 | RHD4ENSDZ2APPLV160, RHD4CZ2L011PT2402, RHD4CZ2L011MV5400 | Skilled labor [33.76 h]; Unskilled Labor [33.76 h]; Equipment Opreator [67.52 h]; Excavator-Poclain [33.76 h]; Dump Truck [33.76 h]; Duct bank for LV cables UPVC (4xø110mm) [4.65 m] | 1,390.35 | L011 | Z2 | CONS | LV | Excavation | bef |
| RHD4CZ2L011LV2200 |  | Installation of Duct Banks for Low Voltage Network - (RD-L-11)-Z2-L011-LV | 5d | 2027-05-23 | 2027-05-27 | RHD4PRSHLDOSLV1000, RHD4PRSHLSTAGLV1000, RHD4CZ2L011LV2100 | Carpenter [5.12 h]; Skilled labor [50.64 h]; Unskilled Labor [50.64 h]; Steel Fixer [5.12 h]; Duct bank for LV cables UPVC (4xø110mm) [4.65 m] | 1,390.35 | L011 | Z2 | CONS | LV | Installing | bef |
| RHD4CZ2L011LV2300 |  | Pouring of Duct Banks for Low Voltage Network - (RD-L-11)-Z2-L011-LV | 4d | 2027-05-29 | 2027-06-01 | RHD4CZ2L011LV2200 | Skilled labor [33.76 h]; Unskilled Labor [33.76 h]; Equipment Opreator [13.5 h]; Concrete Mixer Truck [6.75 h]; Concrete Pump [6.75 h]; Duct bank for LV cables UPVC (4xø110mm) [30.24 m] | 9,041.76 | L011 | Z2 | CONS | LV | Pouring | bef |
| RHD4CZ2L011LV2400 |  | Backfilling of Duct Banks for Low Voltage Network - (RD-L-11)-Z2-L011-LV | 3d | 2027-06-02 | 2027-06-05 | RHD4CZ2L011LV2300 | Skilled labor [25.37 h]; Unskilled Labor [25.37 h]; Equipment Opreator [10.13 h]; Excavator-Poclain [10.13 h]; Duct bank for LV cables UPVC (4xø110mm) [6.98 m] | 2,087.02 | L011 | Z2 | CONS | LV | Backfilling | bef |
|  | 1230 | **RHD4-02-002-L011-(LV)-Low Voltage Drawpit** |  | 2027-06-02 | 2027-06-06 |  |  |  |  |  |  |  |  |  |
| RHD4CZ2L011LV5100 |  | Excavation of Drawpit size 900x900x1000mm for Low Voltage Network - (RD-L-11)-Z2-L011-LV | 2d | 2027-06-02 | 2027-06-03 | RHD4ENSDZ2APPLV160, RHD4CZ2L011LV2300, RHD4CZ2L011MV5400 | Skilled labor [3.59 h]; Unskilled Labor [3.59 h]; Equipment Opreator [2.94 h]; Excavator-Poclain [1.42 h]; Dump Truck [1.42 h]; Drawpit with medium duty steel cover, size900x900x1000mm, [0.6 Unit] | 2,206.2 | L011 | Z2 | CONS | LV | Excavation | AFT |
| RHD4CZ2L011LV5200 |  | Installation of Drawpit size 900x900x1000mm for Low Voltage Network - (RD-L-11)-Z2-L011-LV | 2d | 2027-06-05 | 2027-06-06 | RHD4PRSHLDOSLV1400, RHD4PRSHLSTAGLV1400, RHD4CZ2L011LV5100 | Skilled labor [3.59 h]; Unskilled Labor [3.59 h]; Equipment Opreator [1.42 h]; Boom Truck [1.42 h]; Drawpit with medium duty steel cover, size900x900x1000mm, [3.4 Unit] | 12,501.8 | L011 | Z2 | CONS | LV | Installation | AFT |
|  | 1231 | **RHD4-02-002-L011-(LV)-Low Voltage cables** |  | 2027-05-13 | 2027-06-13 |  |  |  |  |  |  |  |  |  |
| RHD4CZ2L011LV3100 |  | Excavation for Low Voltage Cables for Low Voltage Network - (RD-L-11)-Z2-L011-LV | 3d | 2027-05-13 | 2027-05-20 | RHD4ENSDZ2APPLV160, RHD4CZ2L011MV1200, RHD4CZ2L011MV5400 | Skilled labor [22.54 h]; Unskilled Labor [45.09 h]; Equipment Opreator [45.09 h]; Excavator-Poclain [22.54 h]; Boom Truck [22.54 h]; Cable, Copper 4x185mm2/ CU/XLPE/PVC [30.7 m]; Cable, Copper 4x70mm2/ CU/XLPE/PVC [28.93 m]; Cable, Copper 4x50mm2/ CU/XLPE/PVC +1x25mm2 CU/PVC [19.04 m]; Cable, Copper 3x10mm2/ CU/XLPE/SWA/PVC [24.8 m] | 20,048.25 | L011 | Z2 | CONS | LV | Excavation | AFT |
| RHD4CZ2L011LV3200 |  | Cable Laying of Low Voltage Cables for Low Voltage Network - (RD-L-11)-Z2-L011-LV | 2d | 2027-06-07 | 2027-06-08 | RHD4PRSHLDOSLV1100, RHD4ENMSLV2000, RHD4ENMSLV2010, RHD4PRSHLSTAGLV1100, RHD4CZ2L011LV3100, RHD4CZ2L011LV5200 | Skilled labor [18.73 h]; Unskilled Labor [75.14 h]; Electrician [37.6 h]; Equipment Opreator [56.3 h]; Boom Truck [18.73 h]; Cable Laying Machine [37.6 h]; Cable, Copper 4x185mm2/ CU/XLPE/PVC [92.1 m]; Cable, Copper 4x70mm2/ CU/XLPE/PVC [86.79 m]; Cable, Copper 4x50mm2/ CU/XLPE/PVC +1x25mm2 CU/PVC [57.13 m]; Cable, Copper 3x10mm2/ CU/XLPE/SWA/PVC [74.39 m] | 60,145.57 | L011 | Z2 | CONS | LV | Cable Laying | AFT |
| RHD4CZ2L011LV3300 |  | Warning tape and Backfill for Low Voltage Cables for Low Voltage Network - (RD-L-11)-Z2-L011-LV | 2d | 2027-06-09 | 2027-06-10 | RHD4CZ2L011LV3200 | Skilled labor [18.73 h]; Unskilled Labor [75.14 h]; Electrician [37.6 h]; Equipment Opreator [18.73 h]; Boom Truck [18.73 h]; Cable, Copper 4x185mm2/ CU/XLPE/PVC [23.02 m]; Cable, Copper 4x70mm2/ CU/XLPE/PVC [21.7 m]; Cable, Copper 4x50mm2/ CU/XLPE/PVC +1x25mm2 CU/PVC [14.28 m]; Cable, Copper 3x10mm2/ CU/XLPE/SWA/PVC [18.6 m] | 15,034.86 | L011 | Z2 | CONS | LV | Warning tape and Backfill | AFT |
| RHD4CZ2L011LV3400 |  | Testing of Low Voltage Cables for Low Voltage Network - (RD-L-11)-Z2-L011-LV | 2d | 2027-06-12 | 2027-06-13 | RHD4CZ2L011LV3300 | Skilled labor [11.2 h]; Unskilled Labor [45.09 h]; Electrician [22.54 h]; Equipment Opreator [11.2 h]; Boom Truck [11.2 h]; Cable, Copper 4x185mm2/ CU/XLPE/PVC [7.67 m]; Cable, Copper 4x70mm2/ CU/XLPE/PVC [7.23 m]; Cable, Copper 4x50mm2/ CU/XLPE/PVC +1x25mm2 CU/PVC [4.76 m]; Cable, Copper 3x10mm2/ CU/XLPE/SWA/PVC [6.2 m] | 5,010.13 | L011 | Z2 | CONS | LV | Testing | AFT |
|  | 4259 | **RHD4-02-002-L011-(LV)-Low Voltage Distribution Pillars** |  | 2027-06-14 | 2027-06-26 |  |  |  |  |  |  |  |  |  |
| RHD4CZ2L011LV4100 |  | Leveling for Distribution Pillars for Low Voltage Network - (RD-L-11)-Z2-L011-LV | 4d | 2027-06-14 | 2027-06-17 | RHD4CZ2L011LV3400 | Skilled labor [38.12 h]; Unskilled Labor [76.23 h]; Equipment Opreator [15.25 h]; Excavator-Poclain [7.62 h]; Boom Truck [7.62 h]; 0.6/1 KV Low Voltage Distribution Pillars with main breaker MCCB type and 5 Outgoing feeders MCCB type [0.45 Unit]; 0.6/1 KV Low Voltage Distribution Panels for Industrial UPS - Cameras [0.15 Unit]; Supply and installation of KWH meter mounting frame including concrete block wall for installation of KWH meter according to the standards and specifications of SEC [0.45 Unit] | 11,463.45 | L011 | Z2 | CONS | LV | Leveling | AFT |
| RHD4CZ2L011LV4200 |  | Lean Concrete for Distribution Pillars for Low Voltage Network - (RD-L-11)-Z2-L011-LV | 3d | 2027-06-19 | 2027-06-21 | RHD4CZ2L011LV4100 | Skilled labor [25.37 h]; Unskilled Labor [50.86 h]; Equipment Opreator [10.13 h]; Concrete Mixer Truck [5.12 h]; Concrete Pump [5.12 h]; 0.6/1 KV Low Voltage Distribution Pillars with main breaker MCCB type and 5 Outgoing feeders MCCB type [0.75 Unit]; 0.6/1 KV Low Voltage Distribution Panels for Industrial UPS - Cameras [0.25 Unit]; Supply and installation of KWH meter mounting frame including concrete block wall for installation of KWH meter according to the standards and specifications of SEC [0.75 Unit] | 19,105.75 | L011 | Z2 | CONS | LV | Lean Concrete | AFT |
| RHD4CZ2L011LV4300 |  | Installation of Distribution Pillars for Low Voltage Network - (RD-L-11)-Z2-L011-LV | 4d | 2027-06-22 | 2027-06-26 | RHD4CZ2L011LV4200, RHD4CZ2L011SL5200 | Skilled labor [38.12 h]; Unskilled Labor [152.46 h]; Electrician [76.23 h]; Equipment Opreator [38.12 h]; Boom Truck [38.12 h]; 0.6/1 KV Low Voltage Distribution Pillars with main breaker MCCB type and 5 Outgoing feeders MCCB type [1.8 Unit]; 0.6/1 KV Low Voltage Distribution Panels for Industrial UPS - Cameras [0.6 Unit]; Supply and installation of KWH meter mounting frame including concrete block wall for installation of KWH meter according to the standards and specifications of SEC [1.8 Unit] | 45,853.8 | L011 | Z2 | CONS | LV | Installation | AFT |

| ID | WBS | Activity | Duration | Start | Finish | Predecessors | Resources | Cost | RDH4-01-001-Road and Block Names-1 | RDH4-01-001-Zones-1 | RDH4-01-001-Phases-1 | RDH4-01-001-Networks-1 | RDH4-01-001-Work Method-1 | RDH4-01-001-MENEM |
| --- | --- | --- | --- | --- | --- | --- | --- | --- | --- | --- | --- | --- | --- | --- |
|  | 1234 | **RHD4-02-002-Z2-L011-Street Lighting Network - SL** |  | 2027-05-13 | 2027-06-20 |  |  |  |  |  |  |  |  |  |
|  | 1235 | **RHD4-02-002-L011-(SL)-Street Lighting duct banks** |  |  |  |  |  |  |  |  |  |  |  |  |
|  | 1236 | **RHD4-02-002-L011-(SL)-Street Lighting Drawpit** |  | 2027-05-13 | 2027-05-22 |  |  |  |  |  |  |  |  |  |
| RHD4CZ2L011SL5100 |  | Excavation of Drawpit size 600x600x900mm for Street Lighting Network - (RD-L-11)-Z2-L011-SL | 2d | 2027-05-13 | 2027-05-19 | RHD4ENSDZ2APPSL170, RHD4CZ2L011MV5400 | Skilled labor [1.85 h]; Unskilled Labor [1.85 h]; Equipment Opreator [1.42 h]; Excavator-Poclain [0.8 h]; Dump Truck [0.8 h]; Drawpit with medium duty steel cover, size600x600x900mm, [0.3 Unit] | 735.3 | L011 | Z2 | CONS | SL | Excavation | AFT |
| RHD4CZ2L011SL5200 |  | Installation of Drawpit size 600x600x900mm for Street Lighting Network - (RD-L-11)-Z2-L011-SL | 2d | 2027-05-20 | 2027-05-22 | RHD4PRSHLDOSSL1400, RHD4PRSHLSTAGSL1400, RHD4CZ2L011SL5100 | Skilled labor [1.85 h]; Unskilled Labor [1.85 h]; Equipment Opreator [0.8 h]; Boom Truck [0.8 h]; Drawpit with medium duty steel cover, size600x600x900mm, [1.7 Unit] | 4,166.7 | L011 | Z2 | CONS | SL | Installation | AFT |
|  | 1237 | **RHD4-02-002-L011-(SL)-Street Lighting cables** |  | 2027-05-25 | 2027-06-15 |  |  |  |  |  |  |  |  |  |
| RHD4CZ2L011SL3100 |  | Excavation for Street Lighting Cables for Street Lighting Network - (RD-L-11)-Z2-L011-SL | 4d | 2027-05-25 | 2027-05-29 | RHD4ENSDZ2APPSL170, RHD4CZ2L011SL1300, RHD4CZ2L011MV3300 | Skilled labor [38.66 h]; Unskilled Labor [77.32 h]; Equipment Opreator [77.32 h]; Excavator-Poclain [38.66 h]; Boom Truck [38.66 h]; Cable, Copper 4x10mm2/ CU/XLPE/SWA/PVC + 1x10mm2 CU/PVC [177.46 m] | 8,695.73 | L011 | Z2 | CONS | SL | Excavation | AFT |
| RHD4CZ2L011SL3200 |  | Cable Laying of Street Lighting Cables for Street Lighting Network - (RD-L-11)-Z2-L011-SL | 3d | 2027-05-30 | 2027-06-01 | RHD4PRSHLDOSSL1100, RHD4ENMSSL2000, RHD4ENMSSL2010, RHD4PRSHLSTAGSL1100, RHD4CZ2L011SL3100 | Skilled labor [32.24 h]; Unskilled Labor [128.8 h]; Electrician [64.47 h]; Equipment Opreator [96.6 h]; Boom Truck [32.24 h]; Cable Laying Machine [64.47 h]; Cable, Copper 4x10mm2/ CU/XLPE/SWA/PVC + 1x10mm2 CU/PVC [532.39 m] | 26,087.18 | L011 | Z2 | CONS | SL | Cable Laying | AFT |
| RHD4CZ2L011SL3300 |  | Warning tape and Backfill for Street Lighting Cables for Street Lighting Network - (RD-L-11)-Z2-L011-SL | 3d | 2027-06-02 | 2027-06-05 | RHD4CZ2L011SL3200 | Skilled labor [32.24 h]; Unskilled Labor [128.8 h]; Electrician [64.47 h]; Equipment Opreator [32.24 h]; Boom Truck [32.24 h]; Cable, Copper 4x10mm2/ CU/XLPE/SWA/PVC + 1x10mm2 CU/PVC [133.1 m] | 6,521.9 | L011 | Z2 | CONS | SL | Warning tape and Backfill | AFT |
| RHD4CZ2L011SL3400 |  | Testing of Street Lighting Cables for Street Lighting Network - (RD-L-11)-Z2-L011-SL | 2d | 2027-06-14 | 2027-06-15 | RHD4CZ2L011SL3300, RHD4CZ2L011LV3400 | Skilled labor [19.28 h]; Unskilled Labor [77.32 h]; Electrician [38.66 h]; Equipment Opreator [19.28 h]; Boom Truck [19.28 h]; Cable, Copper 4x10mm2/ CU/XLPE/SWA/PVC + 1x10mm2 CU/PVC [44.37 m] | 2,173.93 | L011 | Z2 | CONS | SL | Testing | AFT |
|  | 1238 | **RHD4-02-002-L011-(SL)-Street Lighting Poles** |  | 2027-05-13 | 2027-06-20 |  |  |  |  |  |  |  |  |  |
| RHD4CZ2L011SL1100 |  | Excavation for RC Base for Lighting Poles for Street Lighting Network - (RD-L-11)-Z2-L011-SL | 2d | 2027-05-13 | 2027-05-19 | RHD4ENSDZ2APPSL170, RHD4CZ2L011MV5400 | Skilled labor [10.13 h]; Unskilled Labor [10.13 h]; Equipment Opreator [20.36 h]; Excavator-Poclain [10.13 h]; Dump Truck [10.13 h]; Lighting poles single arms, height of ( 10 ) meters [1.4 Unit] | 4,769.8 | L011 | Z2 | CONS | SL | Excavation | AFT |
| RHD4CZ2L011SL1200 |  | Installation for RC Base for Lighting Poles for Street Lighting Network - (RD-L-11)-Z2-L011-SL | 2d | 2027-05-20 | 2027-05-22 | RHD4CZ2L011SL1100 | Skilled labor [10.13 h]; Unskilled Labor [10.13 h]; Equipment Opreator [20.36 h]; Excavator-Poclain [10.13 h]; Dump Truck [10.13 h]; Lighting poles single arms, height of ( 10 ) meters [3.5 Unit] | 11,924.5 | L011 | Z2 | CONS | SL | RC Base | AFT |
| RHD4CZ2L011SL1300 |  | Backfill for RC Base for Lighting Poles for Street Lighting Network - (RD-L-11)-Z2-L011-SL | 2d | 2027-05-23 | 2027-05-24 | RHD4CZ2L011SL1200 | Skilled labor [10.13 h]; Unskilled Labor [10.13 h]; Equipment Opreator [20.36 h]; Excavator-Poclain [10.13 h]; Dump Truck [10.13 h]; Lighting poles single arms, height of ( 10 ) meters [0.7 Unit] | 2,384.9 | L011 | Z2 | CONS | SL | Backfill | AFT |
| RHD4CZ2L011SL1400 |  | Installation for Lighting Poles for Street Lighting Network - (RD-L-11)-Z2-L011-SL | 2d | 2027-06-16 | 2027-06-17 | RHD4PRSHLDOSSL1200, RHD4ENMSSL2000, RHD4ENMSSL2010, RHD4PRSHLSTAGSL1200, RHD4CZ2L011SL1300, RHD4CZ2L011SL3400 | Skilled labor [15.25 h]; Unskilled Labor [15.25 h]; Electrician [15.25 h]; Equipment Opreator [15.25 h]; Boom Truck [15.25 h]; Lighting poles single arms, height of ( 10 ) meters [8.4 Unit] | 28,618.8 | L011 | Z2 | CONS | SL | Poles Installation | AFT |
| RHD4CZ2L011SL1500 |  | Luminaire Installation for Lighting Poles for Street Lighting Network - (RD-L-11)-Z2-L011-SL | 2d | 2027-06-19 | 2027-06-20 | RHD4PRSHLDOSSL1300, RHD4PRSHLSTAGSL1300, RHD4CZ2L011SL1400 | Unskilled Labor [20.36 h]; Electrician [10.13 h]; Equipment Opreator [2.07 h]; Boom Truck [4 h]; Street Lighting( LED) Luminaire of Output ?10898 lumen [14 Unit] | 8,232 | L011 | Z2 | CONS | SL | Luminaire Installation | AFT |
|  | 1246 | **RHD4-02-002-Z2-L011-Telecommunications Network - TC** |  | 2027-01-21 | 2027-06-24 |  |  |  |  |  |  |  |  |  |
|  | 1247 | **RHD4-02-002-L011-(TC)-Telecommunications Ducts** |  | 2027-06-16 | 2027-06-24 |  |  |  |  |  |  |  |  |  |
| RHD4CZ2L011TC2100 |  | Excavation of HDPE Ducts for Telecom Network - (RD-L-11)-Z2-L011-TC | 2d | 2027-06-16 | 2027-06-17 | RHD4ENSDZ2APPTC190, RHD4CZ2L011TC3400, RHD4CZ2L011LV3300, RHD4CZ2L011SL3400 | Skilled labor [19.2 h]; Unskilled Labor [19.2 h]; Equipment Opreator [38.33 h]; Excavator-Poclain [19.2 h]; Dump Truck [19.2 h]; (6*50mm) HDPE ducts -TC [52.85 m] | 4,650.62 | L011 | Z2 | CONS | TC | Excavation | AFT |
| RHD4CZ2L011TC2200 |  | Installation of HDPE Ducts for Telecom Network - (RD-L-11)-Z2-L011-TC | 3d | 2027-06-19 | 2027-06-21 | RHD4PRSHLDOSTC1000, RHD4PRSHLSTAGTC1000, RHD4CZ2L011TC2100 | Carpenter [2.83 h]; Skilled labor [28.75 h]; Unskilled Labor [28.75 h]; Steel Fixer [2.83 h]; (6*50mm) HDPE ducts -TC [171.76 m] | 15,114.53 | L011 | Z2 | CONS | TC | Installing | AFT |
| RHD4CZ2L011TC2400 |  | Backfilling of HDPE Ducts for Telecom Network - (RD-L-11)-Z2-L011-TC | 2d | 2027-06-23 | 2027-06-24 | RHD4CZ2L011TC2200, RHD4CZ2L011TC5200 | Skilled labor [19.2 h]; Unskilled Labor [19.2 h]; Equipment Opreator [7.62 h]; Excavator-Poclain [7.62 h]; (6*50mm) HDPE ducts -TC [39.64 m] | 3,487.97 | L011 | Z2 | CONS | TC | Backfilling | AFT |
|  | 1248 | **RHD4-02-002-L011-(TC)-Telecommunications Manholes** |  | 2027-06-19 | 2027-06-22 |  |  |  |  |  |  |  |  |  |
| RHD4CZ2L011TC5100 |  | Excavation for Manholes for Telecom Network - (RD-L-11)-Z2-L011-TC | 2d | 2027-06-19 | 2027-06-20 | RHD4ENSDZ2APPTC190, RHD4CZ2L011TC2100 | Skilled labor [8.17 h]; Unskilled Labor [8.17 h]; Equipment Opreator [6.53 h]; Excavator-Poclain [3.27 h]; Dump Truck [3.27 h]; Manhole Type 1 - TC [0.3 nr]; Manhole Type 2 - TC [0.3 nr] | 4,044.6 | L011 | Z2 | CONS | TC | Excavation | AFT |
| RHD4CZ2L011TC5200 |  | Installation of Manholes for Telecom Network - (RD-L-11)-Z2-L011-TC | 2d | 2027-06-21 | 2027-06-22 | RHD4PRSHLDOSTC1200, RHD4PRSHLSTAGTC1200, RHD4CZ2L011TC5100, RHD4CZ2L011TC2200 SS | Skilled labor [8.17 h]; Unskilled Labor [8.17 h]; Equipment Opreator [3.27 h]; Boom Truck [3.27 h]; Manhole Type 1 - TC [1.7 nr]; Manhole Type 2 - TC [1.7 nr] | 22,919.4 | L011 | Z2 | CONS | TC | Installation | AFT |

| ID | WBS | Activity | Duration | Start | Finish | Predecessors | Resources | Cost | RDH4-01-001-Road and Block Names-1 | RDH4-01-001-Zones-1 | RDH4-01-001-Phases-1 | RDH4-01-001-Networks-1 | RDH4-01-001-Work Method-1 | RDH4-01-001-MENEM |
| --- | --- | --- | --- | --- | --- | --- | --- | --- | --- | --- | --- | --- | --- | --- |
|  | 1249 | **RHD4-02-002-L011-(TC)-Telecomminications Road Crossings** |  | 2027-01-21 | 2027-02-04 |  |  |  |  |  |  |  |  |  |
| RHD4CZ2L011TC3100 |  | Excavation for Road Crossings for Telecom Network - (RD-L-11)-Z2-L011-TC | 2d | 2027-01-21 | 2027-01-23 | RHD4ENSDZ2APPTC190, RHD4CZ2L011ST2500 | Skilled labor [9.37 h]; Unskilled Labor [9.37 h]; Equipment Opreator [18.73 h]; Excavator-Poclain [9.37 h]; Dump Truck [9.37 h]; Road crossing ducts, (6*50mm) HDPE -TC [1.72 m] | 65.36 | L011 | Z2 | CONS | TC | Excavation | bef |
| RHD4CZ2L011TC3200 |  | Installation of Road Crossings for Telecom Network - (RD-L-11)-Z2-L011-TC | 2d | 2027-01-30 | 2027-01-31 | RHD4PRSHLDOSTC1100, RHD4PRSHLSTAGTC1100, RHD4CZ2L011TC3100 | Carpenter [1.2 h]; Skilled labor [12.52 h]; Unskilled Labor [12.52 h]; Steel Fixer [1.2 h]; Road crossing ducts, (6*50mm) HDPE -TC [1.72 m] | 65.36 | L011 | Z2 | CONS | TC | Installing | bef |
| RHD4CZ2L011TC3300 |  | Pouring of Road Crossings for Telecom Network - (RD-L-11)-Z2-L011-TC | 2d | 2027-02-01 | 2027-02-02 | RHD4CZ2L011TC3200 | Skilled labor [12.52 h]; Unskilled Labor [12.52 h]; Equipment Opreator [5.01 h]; Concrete Mixer Truck [2.5 h]; Concrete Pump [2.5 h]; Road crossing ducts, (6*50mm) HDPE -TC [11.18 m] | 424.84 | L011 | Z2 | CONS | TC | Pouring | bef |
| RHD4CZ2L011TC3400 |  | Backfilling of Road Crossings for Telecom Network - (RD-L-11)-Z2-L011-TC | 2d | 2027-02-03 | 2027-02-04 | RHD4CZ2L011TC3300 | Skilled labor [9.37 h]; Unskilled Labor [9.37 h]; Equipment Opreator [3.7 h]; Excavator-Poclain [3.7 h]; Road crossing ducts, (6*50mm) HDPE -TC [2.58 m] | 98.04 | L011 | Z2 | CONS | TC | Backfilling | bef |
|  | 1250 | **RHD4-02-002-Z2-L011-Information and Communication Technologies - ICT** |  | 2027-01-21 | 2027-06-29 |  |  |  |  |  |  |  |  |  |
|  | 1251 | **RHD4-02-002-L011-(ICT)-Information and Communication Technologies Ducts** |  | 2027-06-19 | 2027-06-29 |  |  |  |  |  |  |  |  |  |
| RHD4CZ2L011ICT2100 |  | Excavation of HDPE Ducts for ICT Network - (RD-L-11)-Z2-L011-ICT | 3d | 2027-06-19 | 2027-06-21 | RHD4ENSDZ2APPICT200, RHD4CZ2L011ICT3400, RHD4CZ2L011LV3300, RHD4CZ2L011TC2100 | Skilled labor [22.33 h]; Unskilled Labor [22.33 h]; Equipment Opreator [44.65 h]; Excavator-Poclain [22.33 h]; Dump Truck [22.33 h]; (2*50mm) HDPE ducts -ICT [61.45 m] | 2,335.18 | L011 | Z2 | CONS | ICT | Excavation | AFT |
| RHD4CZ2L011ICT2200 |  | Installation of HDPE Ducts for ICT Network - (RD-L-11)-Z2-L011-ICT | 4d | 2027-06-22 | 2027-06-26 | RHD4PRSHLDOSICT1000, RHD4PRSHLSTAGICT1000, RHD4CZ2L011ICT2100 | Carpenter [3.38 h]; Skilled labor [33.43 h]; Unskilled Labor [33.43 h]; Steel Fixer [3.38 h]; (2*50mm) HDPE ducts -ICT [199.72 m] | 7,589.32 | L011 | Z2 | CONS | ICT | Installing | AFT |
| RHD4CZ2L011ICT2400 |  | Backfilling of HDPE Ducts for ICT Network - (RD-L-11)-Z2-L011-ICT | 3d | 2027-06-27 | 2027-06-29 | RHD4CZ2L011ICT2200, RHD4CZ2L011ICT5200 | Skilled labor [22.33 h]; Unskilled Labor [22.33 h]; Equipment Opreator [8.93 h]; Excavator-Poclain [8.93 h]; (2*50mm) HDPE ducts -ICT [46.09 m] | 1,751.38 | L011 | Z2 | CONS | ICT | Backfilling | AFT |
|  | 1252 | **RHD4-02-002-L011-(ICT)-Information and Communication Technologies Manholes** |  | 2027-06-22 | 2027-06-26 |  |  |  |  |  |  |  |  |  |
| RHD4CZ2L011ICT5100 |  | Excavation for Manholes for ICT Network - (RD-L-11)-Z2-L011-ICT | 2d | 2027-06-22 | 2027-06-23 | RHD4ENSDZ2APPICT200, RHD4CZ2L011ICT2100 | Skilled labor [8.17 h]; Unskilled Labor [8.17 h]; Equipment Opreator [6.53 h]; Excavator-Poclain [3.27 h]; Dump Truck [3.27 h]; Manhole Type 1 - ICT [0.3 nr]; Manhole Type 2 - ICT [0.3 nr] | 3,235.8 | L011 | Z2 | CONS | ICT | Excavation | AFT |
| RHD4CZ2L011ICT5200 |  | Installation of Manholes for ICT Network - (RD-L-11)-Z2-L011-ICT | 2d | 2027-06-24 | 2027-06-26 | RHD4PRSHLDOSICT1200, RHD4PRSHLSTAGICT1200, RHD4CZ2L011ICT5100, RHD4CZ2L011ICT2200 SS | Skilled labor [8.17 h]; Unskilled Labor [8.17 h]; Equipment Opreator [3.27 h]; Boom Truck [3.27 h]; Manhole Type 1 - ICT [1.7 nr]; Manhole Type 2 - ICT [1.7 nr] | 18,336.2 | L011 | Z2 | CONS | ICT | Installation | AFT |
|  | 1253 | **RHD4-02-002-L011-(ICT)-Information and Communication Technologies Road Crossings** |  | 2027-01-21 | 2027-02-27 |  |  |  |  |  |  |  |  |  |
| RHD4CZ2L011ICT3100 |  | Excavation for Road Crossings for ICT Network - (RD-L-11)-Z2-L011-ICT | 2d | 2027-01-21 | 2027-01-23 | RHD4ENSDZ2APPICT200, RHD4CZ2L011ST2500 | Skilled labor [9.47 h]; Unskilled Labor [9.47 h]; Equipment Opreator [18.95 h]; Excavator-Poclain [9.47 h]; Dump Truck [9.47 h]; Road crossing ducts, (2*50mm) HDPE -ICT [1.74 m] | 66.27 | L011 | Z2 | CONS | ICT | Excavation | bef |
| RHD4CZ2L011ICT3200 |  | Installation of Road Crossings for ICT Network - (RD-L-11)-Z2-L011-ICT | 2d | 2027-02-20 | 2027-02-21 | RHD4PRSHLDOSICT1100, RHD4PRSHLSTAGICT1100, RHD4CZ2L011ICT3100 | Carpenter [1.31 h]; Skilled labor [12.63 h]; Unskilled Labor [12.63 h]; Steel Fixer [1.31 h]; Road crossing ducts, (2*50mm) HDPE -ICT [1.74 m] | 66.27 | L011 | Z2 | CONS | ICT | Installing | bef |
| RHD4CZ2L011ICT3300 |  | Pouring of Road Crossings for ICT Network - (RD-L-11)-Z2-L011-ICT | 2d | 2027-02-23 | 2027-02-24 | RHD4CZ2L011ICT3200 | Skilled labor [12.63 h]; Unskilled Labor [12.63 h]; Equipment Opreator [5.12 h]; Concrete Mixer Truck [2.5 h]; Concrete Pump [2.5 h]; Road crossing ducts, (2*50mm) HDPE -ICT [11.34 m] | 430.77 | L011 | Z2 | CONS | ICT | Pouring | bef |
| RHD4CZ2L011ICT3400 |  | Backfilling of Road Crossings for ICT Network - (RD-L-11)-Z2-L011-ICT | 2d | 2027-02-25 | 2027-02-27 | RHD4CZ2L011ICT3300 | Skilled labor [9.47 h]; Unskilled Labor [9.47 h]; Equipment Opreator [3.81 h]; Excavator-Poclain [3.81 h]; Road crossing ducts, (2*50mm) HDPE -ICT [2.62 m] | 99.41 | L011 | Z2 | CONS | ICT | Backfilling | bef |
|  | 1241 | **RHD4-02-002-Z2-L011-Landscape Network - LS** |  |  |  |  |  |  |  |  |  |  |  |  |
|  | 1242 | **RHD4-02-002-L011-(LS)-Landscape Lighting cables** |  |  |  |  |  |  |  |  |  |  |  |  |
|  | 1243 | **RHD4-02-002-L011-(LS)-Landscape Feeder Pillars** |  |  |  |  |  |  |  |  |  |  |  |  |
|  | 1244 | **RHD4-02-002-L011-(LS)-Landscape Bollard Poles** |  |  |  |  |  |  |  |  |  |  |  |  |
|  | 1245 | **RHD4-02-002-L011-(LS)-Landscape Feeder Pillars Earthing** |  |  |  |  |  |  |  |  |  |  |  |  |
|  | 1254 | **RHD4-02-002-Z2-L011-Security Network - CCTV** |  |  |  |  |  |  |  |  |  |  |  |  |
|  | 1255 | **RHD4-02-002-L011-(CCTV)-Civil Works** |  |  |  |  |  |  |  |  |  |  |  |  |
|  | 1256 | **RHD4-02-002-L011-(CCTV)-CCTV Poles** |  |  |  |  |  |  |  |  |  |  |  |  |
|  | 1257 | **RHD4-02-002-L011-(CCTV)-Camera** |  |  |  |  |  |  |  |  |  |  |  |  |
|  | 1258 | **RHD4-02-002-L011-(CCTV)-Power and Infrastructure** |  |  |  |  |  |  |  |  |  |  |  |  |
|  | 1260 | **RHD4-02-002-L011-(CCTV)-CCTV Panels and Components** |  |  |  |  |  |  |  |  |  |  |  |  |
|  | 704 | **RHD4-02-002-Z2-C082** |  | 2026-12-31 | 2028-03-28 |  |  |  |  |  |  |  |  |  |
|  | 567 | **RHD4-02-002-Z2-C082-Sewage Network - SW** |  | 2027-03-04 | 2027-03-25 |  |  |  |  |  |  |  |  |  |
|  | 577 | **RHD4-02-002-C082-(SW)-MH Works - 1200 mm diameter** |  | 2027-03-04 | 2027-03-18 |  |  |  |  |  |  |  |  |  |
| RHD4CZ2C082SW3100 |  | Excavation and PC Blinding works for MH 1200 mm - (RD-C-8 /2)-Z2-C082-SW | 2d | 2027-03-04 | 2027-03-06 | RHD4CZ2C082ST2300, RHD4CZ2C082ST2500 | Skilled labor [10.89 h]; Unskilled Labor [10.89 h]; Equipment Opreator [17.42 h]; Excavator-Poclain [10.89 h]; Water Truck [1.09 h]; Dump Truck [5.45 h]; MH (1200mm Diameter) - SW - depth 1.51 - 2.5m [0.25 nr]; MH (1200mm Diameter) - SW - depth 2.51 - 3.5m [0.25 nr] | 5,304.5 | C082 | Z2 | CONS | SW | Excavation | bef |
| RHD4CZ2C082SW3200 |  | Installation of Base for MH 1200 mm - (RD-C-8 /2)-Z2-C082-SW | 2d | 2027-03-07 | 2027-03-08 | RHD4CZ2C082SW3100 | Skilled labor [16.34 h]; Unskilled Labor [16.34 h]; Equipment Opreator [6.53 h]; Boom Truck [3.27 h]; Concrete Mixer Truck [3.27 h]; MH (1200mm Diameter) - SW - depth 1.51 - 2.5m [0.25 nr]; MH (1200mm Diameter) - SW - depth 2.51 - 3.5m [0.25 nr] | 5,304.5 | C082 | Z2 | CONS | SW | Installing Base | bef |
| RHD4CZ2C082SW3300 |  | MH Ring and C.Slab works and Backfilling works for MH 1200 mm - (RD-C-8 /2)-Z2-C082-SW | 2d | 2027-03-13 | 2027-03-14 | RHD4CZ2C082SW3200 | Skilled labor [16.34 h]; Unskilled Labor [16.34 h]; Equipment Opreator [11.43 h]; Boom Truck [6.53 h]; Concrete Mixer Truck [4.9 h]; MH (1200mm Diameter) - SW - depth 1.51 - 2.5m [0.35 nr]; MH (1200mm Diameter) - SW - depth 2.51 - 3.5m [0.35 nr] | 7,426.3 | C082 | Z2 | CONS | SW | Installing Rings | bef |
| RHD4CZ2C082SW3400 |  | Steel Cover for MH 1200 mm - (RD-C-8 /2)-Z2-C082-SW | 2d | 2027-03-15 | 2027-03-16 | RHD4CZ2C082SW3300 | Skilled labor [7.3 h]; Unskilled Labor [14.48 h]; Equipment Opreator [1.42 h]; Boom Truck [1.42 h]; MH (1200mm Diameter) - SW - depth 1.51 - 2.5m [0.05 nr]; MH (1200mm Diameter) - SW - depth 2.51 - 3.5m [0.05 nr] | 1,060.9 | C082 | Z2 | CONS | SW | Steel Cover | bef |
| RHD4CZ2C082SW3500 |  | Finishing, Benching, Testing works for MH 1200 mm - (RD-C-8 /2)-Z2-C082-SW | 2d | 2027-03-17 | 2027-03-18 | RHD4CZ2C082SW3400, RHD4CZ2C082ST3502 | Skilled labor [16.34 h]; Unskilled Labor [32.67 h]; Plumber [16.34 h]; Equipment Opreator [3.27 h]; Water Truck [3.27 h]; MH (1200mm Diameter) - SW - depth 1.51 - 2.5m [0.1 nr]; MH (1200mm Diameter) - SW - depth 2.51 - 3.5m [0.1 nr] | 2,121.8 | C082 | Z2 | CONS | SW | Benching | bef |

| ID | WBS | Activity | Duration | Start | Finish | Predecessors | Resources | Cost | RDH4-01-001-Road and Block Names-1 | RDH4-01-001-Zones-1 | RDH4-01-001-Phases-1 | RDH4-01-001-Networks-1 | RDH4-01-001-Work Method-1 | RDH4-01-001-MENEM |
| --- | --- | --- | --- | --- | --- | --- | --- | --- | --- | --- | --- | --- | --- | --- |
|  | 573 | **RHD4-02-002-C082-(SW)-UPVC Pipes - 200 mm diameter** |  | 2027-03-15 | 2027-03-25 |  |  |  |  |  |  |  |  |  |
| RHD4CZ2C082SW2100 |  | Excavation works for UPVC Pipe Line 200 mm - (RD-C-8 /2)-Z2-C082-SW | 2d | 2027-03-15 | 2027-03-16 | RHD4CZ2C082SW3100, RHD4CZ2C082SW3100 FF, RHD4CZ2C082SW3300 | Skilled labor [7.73 h]; Unskilled Labor [7.73 h]; Equipment Opreator [9.37 h]; Excavator-Poclain [7.73 h]; Dump Truck [1.52 h]; UPVC (200mm Diameter) - SW - Depth: 1.51m - 2.5m [13.28 m]; UPVC (200mm Diameter) - SW - Depth: 2.51m - 3.5m [6.12 m] | 4,754.48 | C082 | Z2 | CONS | SW | Excavation | bef |
| RHD4CZ2C082SW2200 |  | Bedding works for UPVC Pipe Line 200 mm - (RD-C-8 /2)-Z2-C082-SW | 2d | 2027-03-17 | 2027-03-18 | RHD4CZ2C082SW2100 | Skilled labor [7.73 h]; Unskilled Labor [15.57 h]; Equipment Opreator [15.57 h]; Excavator-Poclain [7.73 h]; Dump Truck [7.73 h]; UPVC (200mm Diameter) - SW - Depth: 1.51m - 2.5m [4.43 m]; UPVC (200mm Diameter) - SW - Depth: 2.51m - 3.5m [2.04 m] | 1,585.55 | C082 | Z2 | CONS | SW | Bedding | bef |
| RHD4CZ2C082SW2300 |  | Installing for UPVC Pipe Line 200 mm - (RD-C-8 /2)-Z2-C082-SW | 2d | 2027-03-20 | 2027-03-21 | RHD4CZ2C082SW2200 | Unskilled Labor [15.57 h]; Plumber [7.73 h]; Equipment Opreator [7.73 h]; Boom Truck [7.73 h]; UPVC (200mm Diameter) - SW - Depth: 1.51m - 2.5m [35.42 m]; UPVC (200mm Diameter) - SW - Depth: 2.51m - 3.5m [16.32 m] | 12,680.06 | C082 | Z2 | CONS | SW | Installation | bef |
| RHD4CZ2C082SW2400 |  | Primary Test for UPVC Pipe Line 200 mm - (RD-C-8 /2)-Z2-C082-SW | 2d | 2027-03-22 | 2027-03-23 | RHD4CZ2C082SW2300 | Unskilled Labor [5.45 h]; Plumber [5.45 h]; Equipment Opreator [5.45 h]; Water Truck [5.45 h]; UPVC (200mm Diameter) - SW - Depth: 1.51m - 2.5m [17.71 m]; UPVC (200mm Diameter) - SW - Depth: 2.51m - 3.5m [8.16 m] | 6,340.03 | C082 | Z2 | CONS | SW | Primary Test | bef |
| RHD4CZ2C082SW2500 |  | Backfilling and warning tape works for UPVC Pipe Line 200 mm - (RD-C-8 /2)-Z2-C082-SW | 2d | 2027-03-24 | 2027-03-25 | RHD4CZ2C082SW2400 | Skilled labor [7.73 h]; Unskilled Labor [15.57 h]; Equipment Opreator [15.57 h]; Excavator-Poclain [7.73 h]; Dump Truck [7.73 h]; UPVC (200mm Diameter) - SW - Depth: 1.51m - 2.5m [17.71 m]; UPVC (200mm Diameter) - SW - Depth: 2.51m - 3.5m [8.16 m] | 6,340.03 | C082 | Z2 | CONS | SW | Backfilling | bef |
|  | 779 | **RHD4-02-002-Z2-C082-Crossings Potable Network - PTCr** |  |  |  |  |  |  |  |  |  |  |  |  |
|  | 782 | **RHD4-02-002-C082-(PTCr)-HDPE Pipes - 200 mm diameter** |  |  |  |  |  |  |  |  |  |  |  |  |
|  | 785 | **RHD4-02-002-C082-(PTCr)-Gate Valves (Direct Buried)** |  |  |  |  |  |  |  |  |  |  |  |  |
|  | 788 | **RHD4-02-002-C082-(PTCr)-Wash out Valve Chambers** |  |  |  |  |  |  |  |  |  |  |  |  |
|  | 789 | **RHD4-02-002-C082-(PTCr)-Wash out Valves** |  |  |  |  |  |  |  |  |  |  |  |  |
|  | 792 | **RHD4-02-002-C082-(PTCr)-Fire Hydrant** |  |  |  |  |  |  |  |  |  |  |  |  |
|  | 826 | **RHD4-02-002-Z2-C082-Crossings Irrigation Network - IRRC** |  |  |  |  |  |  |  |  |  |  |  |  |
|  | 831 | **RHD4-02-002-C082-(IRRC)-HDPE Pipes - 315 mm diameter** |  |  |  |  |  |  |  |  |  |  |  |  |
|  | 827 | **RHD4-02-002-C082-(IRRC)-HDPE Pipes - 160 mm diameter** |  |  |  |  |  |  |  |  |  |  |  |  |
|  | 835 | **RHD4-02-002-C082-(IRRC)-Gate Valves (Direct Buried)** |  |  |  |  |  |  |  |  |  |  |  |  |
|  | 883 | **RHD4-02-002-Z2-C082-Road Works - RD** |  | 2027-01-17 | 2028-03-28 |  |  |  |  |  |  |  |  |  |
|  | 884 | **RHD4-02-002-C082-(RD)-Subgrade** |  | 2027-01-17 | 2027-01-27 |  |  |  |  |  |  |  |  |  |
| RHD4CZ2C082RD1100 |  | Supply, lay and compaction subgrade compacted thickness 300 mm for Roads - (RD-C-8 /2)-Z2-C082-RD | 10d | 2027-01-17 | 2027-01-27 | RHD4ENSDZ2APPEW100, RHD4ENSDZ2APPRD220, RHD4CZ2C082ST1506, RHD4CZ2C082ST3302, RHD4CZ2C082ST7300 | Skilled labor [98.56 h]; Unskilled Labor [197.12 h]; Electrician [98.56 h]; Equipment Opreator [673.02 h]; Water Truck [32.56 h]; Roller compactor [49.22 h]; Grader [98.56 h]; Dump Truck [492.68 h]; Subgrade [4739.17 m3] | 90,044.23 | C082 | Z2 | CONS | RD | Subgrade | bef |
|  | 885 | **RHD4-02-002-C082-(RD)-Aggregate Base Course** |  | 2027-01-28 | 2027-02-04 |  |  |  |  |  |  |  |  |  |
| RHD4CZ2C082RD2100 |  | Supply, lay and compaction Aggregate base course compacted thickness 300 mmfor Roads - (RD-C-8 /2)-Z2-C082-RD | 7d | 2027-01-28 | 2027-02-04 | RHD4PRSHLDOSRD1000, RHD4PRSHLSTAGRD1000, RHD4CZ2C082RD1100 | Skilled labor [36.48 h]; Unskilled Labor [72.97 h]; Equipment Opreator [462.08 h]; Water Truck [24.07 h]; Roller compactor [72.97 h]; Grader [72.97 h]; Dump Truck [292 h]; Aggregate Base Courses [2976.67 m3] | 169,670.19 | C082 | Z2 | CONS | RD | ABC | bef |
|  | 886 | **RHD4-02-002-C082-(RD)-Bituminous base course Two Layers, including (MC1)&(RC2)** |  | 2027-02-06 | 2027-07-15 |  |  |  |  |  |  |  |  |  |
| RHD4CZ2C082RD3100 |  | Supply, lay and Asphaltic base course including Prime Coat (MC1) for 1st Layer - (RD-C-8 /2)-Z2-C082-RD | 3d | 2027-02-06 | 2027-02-08 | RHD4PRSHLDOSRD1100, RHD4ENMSASPH2000, RHD4ENMSASPH2010, RHD4PRSHLSTAGRD1100, RHD4CZ2C082RD2100 | Skilled labor [28.97 h]; Unskilled Labor [173.92 h]; Equipment Opreator [434.74 h]; Bobcat [28.97 h]; Roller compactor [28.97 h]; Asphalt Paver [28.97 h]; Rubber Compactor [57.94 h]; MC1/RC2 Sprinkler [28.97 h]; Dump Truck [260.8 h]; Bituminous base course (Grading I - Class A), including Prime coat (MC1) & tack coate (RC2) [1060.3 m3] | 506,823.4 | C082 | Z2 | CONS | RD | 150 mm | AFT |
| RHD4CZ2C082RD3200 |  | Supply, lay and Asphaltic base course including Tack Coat (RC2) for 2nd Layer - (RD-C-8 /2)-Z2-C082-RD | 3d | 2027-07-13 | 2027-07-15 | RHD4PRSHLDOSRD1100, RHD4PRSHLSTAGRD1100, RHD4CZ2C082RD3100, RHD4CZ2C082CCTV6100 | Skilled labor [28.97 h]; Unskilled Labor [173.92 h]; Equipment Opreator [434.74 h]; Bobcat [28.97 h]; Roller compactor [28.97 h]; Asphalt Paver [28.97 h]; Rubber Compactor [57.94 h]; MC1/RC2 Sprinkler [28.97 h]; Dump Truck [260.8 h]; Bituminous base course (Grading I - Class A), including Prime coat (MC1) & tack coate (RC2) [1060.3 m3] | 506,823.4 | C082 | Z2 | CONS | RD | 150 mm | AFT |

| ID | WBS | Activity | Duration | Start | Finish | Predecessors | Resources | Cost | RDH4-01-001-Road and Block Names-1 | RDH4-01-001-Zones-1 | RDH4-01-001-Phases-1 | RDH4-01-001-Networks-1 | RDH4-01-001-Work Method-1 | RDH4-01-001-MENEM |
| --- | --- | --- | --- | --- | --- | --- | --- | --- | --- | --- | --- | --- | --- | --- |
|  | 888 | **RHD4-02-002-C082-(RD)-Precast Concrete Curb** |  | 2027-07-17 | 2027-07-22 |  |  |  |  |  |  |  |  |  |
| RHD4CZ2C082RD5100 |  | Supply and installation Precast Concrete Kerb for Roads - (RD-C-8 /2)-Z2-C082-RD | 6d | 2027-07-17 | 2027-07-22 | RHD4PRSHLDOSRD1200, RHD4ENMSRD2000, RHD4ENMSRD2010, RHD4PRSHLSTAGRD1200, RHD4CZ2C082RD3200 | Mason [164 h]; Skilled labor [54.67 h]; Unskilled Labor [164 h]; Equipment Opreator [109.34 h]; Bobcat [54.67 h]; Concrete Mixer Truck [54.67 h]; Precast Concrete Curbstone, type K1 [2259.37 m] | 124,265.24 | C082 | Z2 | CONS | RD | Curbs | AFT |
|  | 891 | **RHD4-02-002-C082-(RD)-Traffic Signage** |  | 2027-07-24 | 2027-07-29 |  |  |  |  |  |  |  |  |  |
| RHD4CZ2C082RD8100 |  | Installation of Traffic Signage for Road Network - (RD-C-8 /2)-Z2-C082-RD | 6d | 2027-07-24 | 2027-07-29 | RHD4PRSHLDOSRD1600, RHD4PRSHLSTAGRD1600, RHD4CZ2C082RD5100, RHD4CZ2C082TC2400, RHD4CZ2C082ICT2400, RHD4CZ2C082TC5200, RHD4CZ2L011RD8100 | Skilled labor [130.68 h]; Unskilled Labor [65.34 h]; Electrician [13.07 h]; Equipment Opreator [18.3 h]; Boom Truck [13.07 h]; Concrete Mixer Truck [5.23 h]; Traffic signs, ground mounted, 1 Sheet Aluminium, (breakaway)Single post [11 nr] | 13,486 | C082 | Z2 | CONS | RD | Traffic Signage | AFT |
|  | 889 | **RHD4-02-002-C082-(RD)-Precast Interlocking Block Pavers** |  |  |  |  |  |  |  |  |  |  |  |  |
|  | 887 | **RHD4-02-002-C082-(RD)-Bituminous concrete wearing course including tack coat (RC2)** |  | 2028-03-19 | 2028-03-20 |  |  |  |  |  |  |  |  |  |
| RHD4CZ2C082RD4100 |  | Supply, lay and compaction Asphaltic wearing course including tack Coat (RC2)for Road Network - (RD-C-8 /2)-Z2-C082-RD | 2d | 2028-03-19 | 2028-03-20 | RHD4CZ2C082RD5100, RHD4CZ2L102RD4100 | Skilled labor [14.92 h]; Unskilled Labor [89.6 h]; Equipment Opreator [223.91 h]; Bobcat [14.92 h]; Roller compactor [14.92 h]; Asphalt Paver [14.92 h]; Rubber Compactor [29.84 h]; MC1/RC2 Sprinkler [14.92 h]; Dump Truck [134.4 h]; Bituminous concrete wearing course, (Grading I - Class A), including tack coat (RC2) [712.07 m3] | 386,654.01 | C082 | Z2 | CONS | RD | 50 mm | AFT |
|  | 890 | **RHD4-02-002-C082-(RD)-Pavement Marking** |  | 2028-03-21 | 2028-03-28 |  |  |  |  |  |  |  |  |  |
| RHD4CZ2C082RD7100 |  | Pavement Markings for Road Network - (RD-C-8 /2)-Z2-C082-RD | 7d | 2028-03-21 | 2028-03-28 | RHD4PRSHLDOSRD1500, RHD4PRSHLSTAGRD1500, RHD4CZ2C082RD4100 | Skilled labor [71.2 h]; Unskilled Labor [142.45 h]; Equipment Opreator [71.2 h]; Road Marking Machine [71.2 h]; Retroreflective Thermoplastic White Traffic Markings [349.33 m2]; Retroreflective Thermoplastic Yellow, Traffic Markings [304.94 m2]; Retroreflective raised pavement markers (cat eyes) [1019 nr]; Ceramic raised pavement markers [3 nr] | 55,003.37 | C082 | Z2 | CONS | RD | Pavement Marking | AFT |
|  | 708 | **RHD4-02-002-Z2-C082-Storm Network - ST** |  | 2026-12-31 | 2027-03-18 |  |  |  |  |  |  |  |  |  |
|  | 6213 | **RHD4-02-002-C082-(ST)-MH Works - 2000 mm diameter** |  | 2027-01-10 | 2027-01-20 |  |  |  |  |  |  |  |  |  |
| RHD4CZ2C082ST3102 |  | Excavation and PC Blinding works for MH 2000 mm - (RD-C-8 /2)-Z2-C082-ST | 2d | 2027-01-10 | 2027-01-11 | RHD4CZ2C082ST3101 | Skilled labor [7.3 h]; Unskilled Labor [7.3 h]; Equipment Opreator [11.65 h]; Excavator-Poclain [7.3 h]; Water Truck [0.8 h]; Dump Truck [3.59 h]; MH (2000mm Diameter) - ST - depth 2.51 - 3.5m [0.5 nr] | 10,923.5 | C082 | Z2 | CONS | ST | Excavation | bef |
| RHD4CZ2C082ST3202 |  | Installation of Base for MH 2000 mm - (RD-C-8 /2)-Z2-C082-ST | 2d | 2027-01-12 | 2027-01-13 | RHD4CZ2C082ST3102 | Skilled labor [10.89 h]; Unskilled Labor [10.89 h]; Equipment Opreator [4.36 h]; Boom Truck [2.18 h]; Concrete Mixer Truck [2.18 h]; MH (2000mm Diameter) - ST - depth 2.51 - 3.5m [0.5 nr] | 10,923.5 | C082 | Z2 | CONS | ST | Installing Base | bef |
| RHD4CZ2C082ST3302 |  | MH Ring and C.Slab works and Backfilling works for MH 2000 mm - (RD-C-8 /2)-Z2-C082-ST | 2d | 2027-01-14 | 2027-01-16 | RHD4CZ2C082ST3202 | Skilled labor [10.89 h]; Unskilled Labor [10.89 h]; Equipment Opreator [7.62 h]; Boom Truck [4.36 h]; Concrete Mixer Truck [3.27 h]; MH (2000mm Diameter) - ST - depth 2.51 - 3.5m [0.7 nr] | 15,292.9 | C082 | Z2 | CONS | ST | Installing Rings | bef |
| RHD4CZ2C082ST3402 |  | Steel Cover for MH 2000 mm - (RD-C-8 /2)-Z2-C082-ST | 2d | 2027-01-17 | 2027-01-18 | RHD4CZ2C082ST3302 | Skilled labor [7.3 h]; Unskilled Labor [14.48 h]; Equipment Opreator [1.42 h]; Boom Truck [1.42 h]; MH (2000mm Diameter) - ST - depth 2.51 - 3.5m [0.1 nr] | 2,184.7 | C082 | Z2 | CONS | ST | Steel Cover | bef |
| RHD4CZ2C082ST3502 |  | Finishing, Benching, Testing works for MH 2000 mm - (RD-C-8 /2)-Z2-C082-ST | 2d | 2027-01-19 | 2027-01-20 | RHD4CZ2C082ST3402 | Skilled labor [7.3 h]; Unskilled Labor [14.48 h]; Plumber [7.3 h]; Equipment Opreator [1.42 h]; Water Truck [1.42 h]; MH (2000mm Diameter) - ST - depth 2.51 - 3.5m [0.2 nr] | 4,369.4 | C082 | Z2 | CONS | ST | Benching | bef |
|  | 525 | **RHD4-02-002-C082-(ST)-GRP Pipes - 1000 mm diameter** |  | 2026-12-31 | 2027-01-11 |  |  |  |  |  |  |  |  |  |
| RHD4CZ2C082ST1106 |  | Excavation works for GRP Pipe Line 1000 mm - (RD-C-8 /2)-Z2-C082-ST | 2d | 2026-12-31 | 2027-01-02 | RHD4PRSHLDOSST1301 | Skilled labor [9.15 h]; Unskilled Labor [9.15 h]; Equipment Opreator [11 h]; Excavator-Poclain [9.15 h]; Dump Truck [1.85 h]; GRP (1000mm Diameter) - ST - Depth: 1.51m - 2.5m [13.92 m]; GRP (1000mm Diameter) - ST - Depth: 2.51m - 3.5m [5.08 m] | 18,867.04 | C082 | Z2 | CONS | ST | Excavation | bef |
| RHD4CZ2C082ST1206 |  | Bedding works for GRP Pipe Line 1000 mm - (RD-C-8 /2)-Z2-C082-ST | 2d | 2027-01-03 | 2027-01-04 | RHD4CZ2C082ST1106 | Skilled labor [9.15 h]; Unskilled Labor [18.4 h]; Equipment Opreator [18.4 h]; Excavator-Poclain [9.15 h]; Dump Truck [9.15 h]; GRP (1000mm Diameter) - ST - Depth: 1.51m - 2.5m [4.64 m]; GRP (1000mm Diameter) - ST - Depth: 2.51m - 3.5m [1.69 m] | 6,285 | C082 | Z2 | CONS | ST | Bedding | bef |
| RHD4CZ2C082ST1306 |  | Installing for GRP Pipe Line 1000 mm - (RD-C-8 /2)-Z2-C082-ST | 2d | 2027-01-05 | 2027-01-06 | RHD4CZ2C082ST1206 | Unskilled Labor [11 h]; Plumber [5.55 h]; GRP (1000mm Diameter) - ST - Depth: 1.51m - 2.5m [37.11 m]; GRP (1000mm Diameter) - ST - Depth: 2.51m - 3.5m [13.55 m] | 50,306.96 | C082 | Z2 | CONS | ST | Installation | bef |
| RHD4CZ2C082ST1406 |  | Primary Test for GRP Pipe Line 1000 mm - (RD-C-8 /2)-Z2-C082-ST | 2d | 2027-01-07 | 2027-01-09 | RHD4CZ2C082ST1306 | Unskilled Labor [4.57 h]; Plumber [4.57 h]; Equipment Opreator [4.57 h]; Water Truck [4.57 h]; GRP (1000mm Diameter) - ST - Depth: 1.51m - 2.5m [18.56 m]; GRP (1000mm Diameter) - ST - Depth: 2.51m - 3.5m [6.77 m] | 25,152.04 | C082 | Z2 | CONS | ST | Primary Test | bef |
| RHD4CZ2C082ST1506 |  | Backfilling and warning tape works for GRP Pipe Line 1000 mm - (RD-C-8 /2)-Z2-C082-ST | 2d | 2027-01-10 | 2027-01-11 | RHD4CZ2C082ST1406 | Skilled labor [9.15 h]; Unskilled Labor [18.4 h]; Equipment Opreator [18.4 h]; Excavator-Poclain [9.15 h]; Dump Truck [9.15 h]; GRP (1000mm Diameter) - ST - Depth: 1.51m - 2.5m [18.56 m]; GRP (1000mm Diameter) - ST - Depth: 2.51m - 3.5m [6.77 m] | 25,152.04 | C082 | Z2 | CONS | ST | Backfilling | bef |
|  | 725 | **RHD4-02-002-C082-(ST)-MH Works - 1200 mm diameter** |  | 2027-01-03 | 2027-03-16 |  |  |  |  |  |  |  |  |  |
| RHD4CZ2C082ST3100 |  | Excavation and PC Blinding works for MH 1200 mm - (RD-C-8 /2)-Z2-C082-ST | 4d | 2027-01-03 | 2027-01-06 | RHD4ENSDZ2APPST110, RHD4ENMSST2000, RHD4ENMSST2010, RHD4CZ2C082ST1106 | Skilled labor [36.26 h]; Unskilled Labor [36.26 h]; Equipment Opreator [58.05 h]; Excavator-Poclain [36.26 h]; Water Truck [3.59 h]; Dump Truck [18.19 h]; MH (1200mm Diameter) - ST - depth 1.50 - 2.5m [1.5 nr]; MH (1200mm Diameter) - ST - depth 2.51 - 3.5m [1 nr] | 27,361.5 | C082 | Z2 | CONS | ST | Excavation | bef |
| RHD4CZ2C082ST3200 |  | Installation of Base for MH 1200 mm - (RD-C-8 /2)-Z2-C082-ST | 4d | 2027-01-07 | 2027-01-11 | RHD4PRSHLSTAGST1601, RHD4CZ2C082ST3100 | Skilled labor [43.56 h]; Unskilled Labor [43.56 h]; Equipment Opreator [17.42 h]; Boom Truck [8.71 h]; Concrete Mixer Truck [8.71 h]; MH (1200mm Diameter) - ST - depth 1.50 - 2.5m [1.5 nr]; MH (1200mm Diameter) - ST - depth 2.51 - 3.5m [1 nr] | 27,361.5 | C082 | Z2 | CONS | ST | Installing Base | bef |
| RHD4CZ2C082ST3300 |  | MH Ring and C.Slab works and Backfilling works for MH 1200 mm - (RD-C-8 /2)-Z2-C082-ST | 4d | 2027-01-12 | 2027-01-16 | RHD4PRSHLDOSST1601, RHD4CZ2C082ST3200 | Skilled labor [43.56 h]; Unskilled Labor [43.56 h]; Equipment Opreator [30.49 h]; Boom Truck [17.42 h]; Concrete Mixer Truck [13.07 h]; MH (1200mm Diameter) - ST - depth 1.50 - 2.5m [2.1 nr]; MH (1200mm Diameter) - ST - depth 2.51 - 3.5m [1.4 nr] | 38,306.1 | C082 | Z2 | CONS | ST | Installing Rings | bef |
| RHD4CZ2C082ST3400 |  | Steel Cover for MH 1200 mm - (RD-C-8 /2)-Z2-C082-ST | 4d | 2027-03-04 | 2027-03-08 | RHD4PRSHLDOSST1701, RHD4PRSHLSTAGST1701, RHD4CZ2C082ST3300, RHD4CZ2C082ST2500, RHD4CZ2C082ST1500 | Skilled labor [36.26 h]; Unskilled Labor [72.64 h]; Equipment Opreator [7.3 h]; Boom Truck [7.3 h]; MH (1200mm Diameter) - ST - depth 1.50 - 2.5m [0.3 nr]; MH (1200mm Diameter) - ST - depth 2.51 - 3.5m [0.2 nr] | 5,472.3 | C082 | Z2 | CONS | ST | Steel Cover | bef |
| RHD4CZ2C082ST3500 |  | Finishing, Benching, Testing works for MH 1200 mm - (RD-C-8 /2)-Z2-C082-ST | 4d | 2027-03-13 | 2027-03-16 | RHD4CZ2C082ST3400 | Skilled labor [36.26 h]; Unskilled Labor [72.64 h]; Plumber [36.26 h]; Equipment Opreator [7.3 h]; Water Truck [7.3 h]; MH (1200mm Diameter) - ST - depth 1.50 - 2.5m [0.6 nr]; MH (1200mm Diameter) - ST - depth 2.51 - 3.5m [0.4 nr] | 10,944.6 | C082 | Z2 | CONS | ST | Benching | bef |

| ID | WBS | Activity | Duration | Start | Finish | Predecessors | Resources | Cost | RDH4-01-001-Road and Block Names-1 | RDH4-01-001-Zones-1 | RDH4-01-001-Phases-1 | RDH4-01-001-Networks-1 | RDH4-01-001-Work Method-1 | RDH4-01-001-MENEM |
| --- | --- | --- | --- | --- | --- | --- | --- | --- | --- | --- | --- | --- | --- | --- |
|  | 726 | **RHD4-02-002-C082-(ST)-MH Works - 1500 mm diameter** |  | 2027-01-07 | 2027-03-18 |  |  |  |  |  |  |  |  |  |
| RHD4CZ2C082ST3101 |  | Excavation and PC Blinding works for MH 1500 mm - (RD-C-8 /2)-Z2-C082-ST | 2d | 2027-01-07 | 2027-01-09 | RHD4ENSDZ2APPST110, RHD4ENMSST2000, RHD4CZ2C082ST3100 | Skilled labor [10.89 h]; Unskilled Labor [10.89 h]; Equipment Opreator [17.42 h]; Excavator-Poclain [10.89 h]; Water Truck [1.09 h]; Dump Truck [5.45 h]; MH (1500mm Diameter) - ST - depth 2.51 - 3.5m [0.5 nr] | 8,251 | C082 | Z2 | CONS | ST | Excavation | bef |
| RHD4CZ2C082ST3201 |  | Installation of Base for MH 1500 mm - (RD-C-8 /2)-Z2-C082-ST | 2d | 2027-01-12 | 2027-01-13 | RHD4PRSHLSTAGST1601, RHD4CZ2C082ST3101, RHD4CZ2C082ST3200 | Skilled labor [10.89 h]; Unskilled Labor [10.89 h]; Equipment Opreator [4.36 h]; Boom Truck [2.18 h]; Concrete Mixer Truck [2.18 h]; MH (1500mm Diameter) - ST - depth 2.51 - 3.5m [0.5 nr] | 8,251 | C082 | Z2 | CONS | ST | Installing Base | bef |
| RHD4CZ2C082ST3301 |  | MH Ring and C.Slab works and Backfilling works for MH 1500 mm - (RD-C-8 /2)-Z2-C082-ST | 2d | 2027-01-17 | 2027-01-18 | RHD4PRSHLDOSST1601, RHD4CZ2C082ST3201, RHD4CZ2C082ST3300 | Skilled labor [10.89 h]; Unskilled Labor [10.89 h]; Equipment Opreator [7.62 h]; Boom Truck [4.36 h]; Concrete Mixer Truck [3.27 h]; MH (1500mm Diameter) - ST - depth 2.51 - 3.5m [0.7 nr] | 11,551.4 | C082 | Z2 | CONS | ST | Installing Rings | bef |
| RHD4CZ2C082ST3401 |  | Steel Cover for MH 1500 mm - (RD-C-8 /2)-Z2-C082-ST | 2d | 2027-03-13 | 2027-03-14 | RHD4PRSHLDOSST1701, RHD4PRSHLSTAGST1701, RHD4CZ2C082ST3301, RHD4CZ2C082ST1500, RHD4CZ2C082ST3400 | Skilled labor [7.3 h]; Unskilled Labor [14.48 h]; Equipment Opreator [1.42 h]; Boom Truck [1.42 h]; MH (1500mm Diameter) - ST - depth 2.51 - 3.5m [0.1 nr] | 1,650.2 | C082 | Z2 | CONS | ST | Steel Cover | bef |
| RHD4CZ2C082ST3501 |  | Finishing, Benching, Testing works for MH 1500 mm - (RD-C-8 /2)-Z2-C082-ST | 2d | 2027-03-17 | 2027-03-18 | RHD4CZ2C082ST3401, RHD4CZ2C082ST2500, RHD4CZ2C082ST3500 | Skilled labor [10.89 h]; Unskilled Labor [21.78 h]; Plumber [10.89 h]; Equipment Opreator [2.18 h]; Water Truck [2.18 h]; MH (1500mm Diameter) - ST - depth 2.51 - 3.5m [0.2 nr] | 3,300.4 | C082 | Z2 | CONS | ST | Benching | bef |
|  | 712 | **RHD4-02-002-C082-(ST)-GRP Pipes - 700 mm diameter** |  | 2027-01-03 | 2027-01-13 |  |  |  |  |  |  |  |  |  |
| RHD4CZ2C082ST1103 |  | Excavation works for GRP Pipe Line 700 mm - (RD-C-8 /2)-Z2-C082-ST | 2d | 2027-01-03 | 2027-01-04 | RHD4ENSDZ2APPST110, RHD4CZ2C082ST1106 | Skilled labor [6.21 h]; Unskilled Labor [6.21 h]; Equipment Opreator [7.41 h]; Excavator-Poclain [6.21 h]; Dump Truck [1.2 h]; GRP (700mm Diameter) - ST - Depth: 1.51m - 2.5m [17.06 m] | 10,184.82 | C082 | Z2 | CONS | ST | Excavation | bef |
| RHD4CZ2C082ST1203 |  | Bedding works for GRP Pipe Line 700 mm - (RD-C-8 /2)-Z2-C082-ST | 2d | 2027-01-05 | 2027-01-06 | RHD4CZ2C082ST1103 | Skilled labor [6.21 h]; Unskilled Labor [12.41 h]; Equipment Opreator [12.41 h]; Excavator-Poclain [6.21 h]; Dump Truck [6.21 h]; GRP (700mm Diameter) - ST - Depth: 1.51m - 2.5m [5.69 m] | 3,396.93 | C082 | Z2 | CONS | ST | Bedding | bef |
| RHD4CZ2C082ST1303 |  | Installing for GRP Pipe Line 700 mm - (RD-C-8 /2)-Z2-C082-ST | 2d | 2027-01-07 | 2027-01-09 | RHD4PRSHLSTAGST1001, RHD4CZ2C082ST1203, RHD4PRSHLPOST1000, RHD4PRSHLDOSST1001 | Unskilled Labor [6.21 h]; Plumber [3.05 h]; GRP (700mm Diameter) - ST - Depth: 1.51m - 2.5m [45.49 m] | 27,157.53 | C082 | Z2 | CONS | ST | Installation | bef |
| RHD4CZ2C082ST1403 |  | Primary Test for GRP Pipe Line 700 mm - (RD-C-8 /2)-Z2-C082-ST | 2d | 2027-01-10 | 2027-01-11 | RHD4CZ2C082ST1303 | Unskilled Labor [3.05 h]; Plumber [3.05 h]; Equipment Opreator [3.05 h]; Water Truck [3.05 h]; GRP (700mm Diameter) - ST - Depth: 1.51m - 2.5m [22.75 m] | 13,581.75 | C082 | Z2 | CONS | ST | Primary Test | bef |
| RHD4CZ2C082ST1503 |  | Backfilling and warning tape works for GRP Pipe Line 700 mm - (RD-C-8 /2)-Z2-C082-ST | 2d | 2027-01-12 | 2027-01-13 | RHD4CZ2C082ST1403 | Skilled labor [6.21 h]; Unskilled Labor [12.41 h]; Equipment Opreator [12.41 h]; Excavator-Poclain [6.21 h]; Dump Truck [6.21 h]; GRP (700mm Diameter) - ST - Depth: 1.51m - 2.5m [22.75 m] | 13,581.75 | C082 | Z2 | CONS | ST | Backfilling | bef |
|  | 711 | **RHD4-02-002-C082-(ST)-GRP Pipes - 600 mm diameter** |  | 2027-01-14 | 2027-01-25 |  |  |  |  |  |  |  |  |  |
| RHD4CZ2C082ST1102 |  | Excavation works for GRP Pipe Line 600 mm - (RD-C-8 /2)-Z2-C082-ST | 2d | 2027-01-14 | 2027-01-16 | RHD4ENSDZ2APPST110, RHD4CZ2C082ST1103, RHD4CZ2C082ST1503 | Skilled labor [10.56 h]; Unskilled Labor [10.56 h]; Equipment Opreator [12.63 h]; Excavator-Poclain [10.56 h]; Dump Truck [2.07 h]; GRP (600mm Diameter) - ST - Depth less than 1.5 m [7.33 m]; GRP (600mm Diameter) - ST - Depth: 1.51m - 2.5m [18.07 m] | 11,561.78 | C082 | Z2 | CONS | ST | Excavation | bef |
| RHD4CZ2C082ST1202 |  | Bedding works for GRP Pipe Line 600 mm - (RD-C-8 /2)-Z2-C082-ST | 2d | 2027-01-17 | 2027-01-18 | RHD4CZ2C082ST1102 | Skilled labor [10.56 h]; Unskilled Labor [21.13 h]; Equipment Opreator [21.13 h]; Excavator-Poclain [10.56 h]; Dump Truck [10.56 h]; GRP (600mm Diameter) - ST - Depth less than 1.5 m [3.66 m]; GRP (600mm Diameter) - ST - Depth: 1.51m - 2.5m [6.02 m] | 4,376.76 | C082 | Z2 | CONS | ST | Bedding | bef |
| RHD4CZ2C082ST1302 |  | Installing for GRP Pipe Line 600 mm - (RD-C-8 /2)-Z2-C082-ST | 2d | 2027-01-19 | 2027-01-20 | RHD4PRSHLSTAGST1001, RHD4CZ2C082ST1202, RHD4CZ2C082ST1303, RHD4PRSHLPOST1000, RHD4PRSHLDOSST1001 | Unskilled Labor [21.13 h]; Plumber [10.56 h]; GRP (600mm Diameter) - ST - Depth less than 1.5 m [32.98 m]; GRP (600mm Diameter) - ST - Depth: 1.51m - 2.5m [48.19 m] | 36,622.73 | C082 | Z2 | CONS | ST | Installation | bef |
| RHD4CZ2C082ST1402 |  | Primary Test for GRP Pipe Line 600 mm - (RD-C-8 /2)-Z2-C082-ST | 2d | 2027-01-21 | 2027-01-23 | RHD4CZ2C082ST1302 | Unskilled Labor [10.56 h]; Plumber [10.56 h]; Equipment Opreator [10.56 h]; Water Truck [10.56 h]; GRP (600mm Diameter) - ST - Depth less than 1.5 m [14.66 m]; GRP (600mm Diameter) - ST - Depth: 1.51m - 2.5m [24.1 m] | 17,524.96 | C082 | Z2 | CONS | ST | Primary Test | bef |
| RHD4CZ2C082ST1502 |  | Backfilling and warning tape works for GRP Pipe Line 600 mm - (RD-C-8 /2)-Z2-C082-ST | 2d | 2027-01-24 | 2027-01-25 | RHD4CZ2C082ST1402, RHD4CZ2C082ST1503 | Skilled labor [10.56 h]; Unskilled Labor [21.13 h]; Equipment Opreator [21.13 h]; Excavator-Poclain [10.56 h]; Dump Truck [10.56 h]; GRP (600mm Diameter) - ST - Depth less than 1.5 m [14.66 m]; GRP (600mm Diameter) - ST - Depth: 1.51m - 2.5m [24.1 m] | 17,524.96 | C082 | Z2 | CONS | ST | Backfilling | bef |
|  | 710 | **RHD4-02-002-C082-(ST)-GRP Pipes - 500 mm diameter** |  | 2027-01-26 | 2027-02-06 |  |  |  |  |  |  |  |  |  |
| RHD4CZ2C082ST1101 |  | Excavation works for GRP Pipe Line 500 mm - (RD-C-8 /2)-Z2-C082-ST | 2d | 2027-01-26 | 2027-01-27 | RHD4ENSDZ2APPST110, RHD4CZ2C082ST1102, RHD4CZ2C082ST1502 | Skilled labor [16.12 h]; Unskilled Labor [16.12 h]; Equipment Opreator [19.38 h]; Excavator-Poclain [16.12 h]; Dump Truck [3.27 h]; GRP (500mm Diameter) - ST - Depth less than 1.5 m [6.15 m]; GRP (500mm Diameter) - ST - Depth: 1.51m - 2.5m [31.26 m]; GRP (500mm Diameter) - ST - Depth: 2.51m - 3.5m | 14,530.95 | C082 | Z2 | CONS | ST | Excavation | bef |
| RHD4CZ2C082ST1201 |  | Bedding works for GRP Pipe Line 500 mm - (RD-C-8 /2)-Z2-C082-ST | 2d | 2027-01-28 | 2027-01-30 | RHD4CZ2C082ST1101, RHD4CZ2C082ST1202 | Skilled labor [16.12 h]; Unskilled Labor [32.24 h]; Equipment Opreator [32.24 h]; Excavator-Poclain [16.12 h]; Dump Truck [16.12 h]; GRP (500mm Diameter) - ST - Depth less than 1.5 m [3.08 m]; GRP (500mm Diameter) - ST - Depth: 1.51m - 2.5m [10.42 m]; GRP (500mm Diameter) - ST - Depth: 2.51m - 3.5m | 5,209.3 | C082 | Z2 | CONS | ST | Bedding | bef |
| RHD4CZ2C082ST1301 |  | Installing for GRP Pipe Line 500 mm - (RD-C-8 /2)-Z2-C082-ST | 2d | 2027-01-31 | 2027-02-01 | RHD4PRSHLSTAGST1001, RHD4CZ2C082ST1201, RHD4CZ2C082ST1302, RHD4PRSHLPOST1000, RHD4PRSHLDOSST1001 | Unskilled Labor [32.24 h]; Plumber [16.12 h]; GRP (500mm Diameter) - ST - Depth less than 1.5 m [27.69 m]; GRP (500mm Diameter) - ST - Depth: 1.51m - 2.5m [83.36 m]; GRP (500mm Diameter) - ST - Depth: 2.51m - 3.5m | 42,757.15 | C082 | Z2 | CONS | ST | Installation | bef |
| RHD4CZ2C082ST1401 |  | Primary Test for GRP Pipe Line 500 mm - (RD-C-8 /2)-Z2-C082-ST | 2d | 2027-02-02 | 2027-02-03 | RHD4CZ2C082ST1301 | Unskilled Labor [16.12 h]; Plumber [16.12 h]; Equipment Opreator [16.12 h]; Water Truck [16.12 h]; GRP (500mm Diameter) - ST - Depth less than 1.5 m [12.31 m]; GRP (500mm Diameter) - ST - Depth: 1.51m - 2.5m [41.68 m]; GRP (500mm Diameter) - ST - Depth: 2.51m - 3.5m | 20,833.65 | C082 | Z2 | CONS | ST | Primary Test | bef |
| RHD4CZ2C082ST1501 |  | Backfilling and warning tape works for GRP Pipe Line 500 mm - (RD-C-8 /2)-Z2-C082-ST | 2d | 2027-02-04 | 2027-02-06 | RHD4CZ2C082ST1401, RHD4CZ2C082ST1502 | Skilled labor [16.12 h]; Unskilled Labor [32.24 h]; Equipment Opreator [32.24 h]; Excavator-Poclain [16.12 h]; Dump Truck [16.12 h]; GRP (500mm Diameter) - ST - Depth less than 1.5 m [12.31 m]; GRP (500mm Diameter) - ST - Depth: 1.51m - 2.5m [41.68 m]; GRP (500mm Diameter) - ST - Depth: 2.51m - 3.5m | 20,833.65 | C082 | Z2 | CONS | ST | Backfilling | bef |

| ID | WBS | Activity | Duration | Start | Finish | Predecessors | Resources | Cost | RDH4-01-001-Road and Block Names-1 | RDH4-01-001-Zones-1 | RDH4-01-001-Phases-1 | RDH4-01-001-Networks-1 | RDH4-01-001-Work Method-1 | RDH4-01-001-MENEM |
| --- | --- | --- | --- | --- | --- | --- | --- | --- | --- | --- | --- | --- | --- | --- |
|  | 709 | **RHD4-02-002-C082-(ST)-GRP Pipes - 400 mm diameter** |  | 2027-02-07 | 2027-02-17 |  |  |  |  |  |  |  |  |  |
| RHD4CZ2C082ST1100 |  | Excavation works for GRP Pipe Line 400 mm - (RD-C-8 /2)-Z2-C082-ST | 2d | 2027-02-07 | 2027-02-08 | RHD4ENSDZ2APPST110, RHD4CZ2C082ST1101, RHD4CZ2C082ST1501 | Skilled labor [12.09 h]; Unskilled Labor [12.09 h]; Equipment Opreator [14.48 h]; Excavator-Poclain [12.09 h]; Dump Truck [2.4 h]; GRP (400mm Diameter) - ST - Depth less than 1.5 m [22.71 m]; GRP (400mm Diameter) - ST - Depth: 1.51m - 2.5 m | 6,585.9 | C082 | Z2 | CONS | ST | Excavation | bef |
| RHD4CZ2C082ST1200 |  | Bedding works for GRP Pipe Line 400 mm - (RD-C-8 /2)-Z2-C082-ST | 2d | 2027-02-09 | 2027-02-10 | RHD4CZ2C082ST1100, RHD4CZ2C082ST1201 | Skilled labor [11.87 h]; Unskilled Labor [23.85 h]; Equipment Opreator [23.85 h]; Excavator-Poclain [11.87 h]; Dump Truck [11.87 h]; GRP (400mm Diameter) - ST - Depth less than 1.5 m [11.36 m]; GRP (400mm Diameter) - ST - Depth: 1.51m - 2.5 m | 3,294.4 | C082 | Z2 | CONS | ST | Bedding | bef |
| RHD4CZ2C082ST1300 |  | Installing for GRP Pipe Line 400 mm - (RD-C-8 /2)-Z2-C082-ST | 2d | 2027-02-11 | 2027-02-13 | RHD4PRSHLSTAGST1001, RHD4CZ2C082ST1200, RHD4CZ2C082ST1301, RHD4PRSHLPOST1000, RHD4PRSHLDOSST1001 | Unskilled Labor [25.7 h]; Plumber [12.85 h]; GRP (400mm Diameter) - ST - Depth less than 1.5 m [102.2 m]; GRP (400mm Diameter) - ST - Depth: 1.51m - 2.5 m | 29,638 | C082 | Z2 | CONS | ST | Installation | bef |
| RHD4CZ2C082ST1400 |  | Primary Test for GRP Pipe Line 400 mm - (RD-C-8 /2)-Z2-C082-ST | 2d | 2027-02-14 | 2027-02-15 | RHD4CZ2C082ST1300 | Unskilled Labor [11.54 h]; Plumber [11.54 h]; Equipment Opreator [11.54 h]; Water Truck [11.54 h]; GRP (400mm Diameter) - ST - Depth less than 1.5 m [45.42 m]; GRP (400mm Diameter) - ST - Depth: 1.51m - 2.5 m | 13,171.8 | C082 | Z2 | CONS | ST | Primary Test | bef |
| RHD4CZ2C082ST1500 |  | Backfilling and warning tape works for GRP Pipe Line 400 mm - (RD-C-8 /2)-Z2-C082-ST | 2d | 2027-02-16 | 2027-02-17 | RHD4PRSHLSTAGMV1000, RHD4CZ2C082ST1400, RHD4CZ2C082ST1501 | Skilled labor [12.41 h]; Unskilled Labor [24.72 h]; Equipment Opreator [24.72 h]; Excavator-Poclain [12.41 h]; Dump Truck [12.41 h]; GRP (400mm Diameter) - ST - Depth less than 1.5 m [45.42 m]; GRP (400mm Diameter) - ST - Depth: 1.51m - 2.5 m | 13,171.8 | C082 | Z2 | CONS | ST | Backfilling | bef |
|  | 724 | **RHD4-02-002-C082-(ST)-UPVC Pipes - 400 mm diameter** |  |  |  |  |  |  |  |  |  |  |  |  |
|  | 723 | **RHD4-02-002-C082-(ST)-UPVC Pipes - 300 mm diameter** |  | 2027-02-18 | 2027-03-03 |  |  |  |  |  |  |  |  |  |
| RHD4CZ2C082ST2100 |  | Excavation works for UPVC Pipe Line 300 mm - (RD-C-8 /2)-Z2-C082-ST | 2d | 2027-02-18 | 2027-02-20 | RHD4ENSDZ2APPST110, RHD4CZ2C082ST1100, RHD4CZ2C082ST1500 | Skilled labor [20.36 h]; Unskilled Labor [20.36 h]; Equipment Opreator [24.5 h]; Excavator-Poclain [20.36 h]; Dump Truck [4 h]; UPVC (300mm Diameter) - ST - Depth less than 1.5 [44.79 m]; UPVC (300mm Diameter) - ST - Depth: 1.51m - 2.5m | 13,571.37 | C082 | Z2 | CONS | ST | Excavation | bef |
| RHD4CZ2C082ST2200 |  | Bedding works for UPVC Pipe Line 300 mm - (RD-C-8 /2)-Z2-C082-ST | 2d | 2027-02-21 | 2027-02-23 | RHD4CZ2C082ST2100 | Skilled labor [17.75 h]; Unskilled Labor [35.39 h]; Equipment Opreator [35.39 h]; Excavator-Poclain [17.75 h]; Dump Truck [17.75 h]; UPVC (300mm Diameter) - ST - Depth less than 1.5 [22.39 m]; UPVC (300mm Diameter) - ST - Depth: 1.51m - 2.5m | 6,784.17 | C082 | Z2 | CONS | ST | Bedding | bef |
| RHD4CZ2C082ST2300 |  | Installing for UPVC Pipe Line 300 mm - (RD-C-8 /2)-Z2-C082-ST | 2d | 2027-02-24 | 2027-02-25 | RHD4PRSHLDOSST1101, RHD4PRSHLSTAGST1101, RHD4CZ2C082ST2200 | Unskilled Labor [40.73 h]; Plumber [20.36 h]; UPVC (300mm Diameter) - ST - Depth less than 1.5 [201.54 m]; UPVC (300mm Diameter) - ST - Depth: 1.51m - 2.5m | 61,066.62 | C082 | Z2 | CONS | ST | Installation | bef |
| RHD4CZ2C082ST2400 |  | Primary Test for UPVC Pipe Line 300 mm - (RD-C-8 /2)-Z2-C082-ST | 2d | 2027-02-27 | 2027-02-28 | RHD4CZ2C082ST2300 | Unskilled Labor [12.31 h]; Plumber [12.31 h]; Equipment Opreator [12.31 h]; Water Truck [12.31 h]; UPVC (300mm Diameter) - ST - Depth less than 1.5 [89.57 m]; UPVC (300mm Diameter) - ST - Depth: 1.51m - 2.5m | 27,139.71 | C082 | Z2 | CONS | ST | Primary Test | bef |
| RHD4CZ2C082ST2500 |  | Backfilling and warning tape works for UPVC Pipe Line 300 mm - (RD-C-8 /2)-Z2-C082-ST | 3d | 2027-03-01 | 2027-03-03 | RHD4CZ2C082ST2400, RHD4CZ2C082ST6100 | Skilled labor [24.39 h]; Unskilled Labor [48.8 h]; Equipment Opreator [48.8 h]; Excavator-Poclain [24.39 h]; Dump Truck [24.39 h]; UPVC (300mm Diameter) - ST - Depth less than 1.5 [89.57 m]; UPVC (300mm Diameter) - ST - Depth: 1.51m - 2.5m | 27,139.71 | C082 | Z2 | CONS | ST | Backfilling | bef |
|  | 731 | **RHD4-02-002-C082-(ST)-Concrete Encasement** |  | 2027-02-24 | 2027-02-25 |  |  |  |  |  |  |  |  |  |
| RHD4CZ2C082ST6100 |  | Pipe Encasement for Storm Pipelines - (RD-C-8 /2)-Z2-C082-ST | 2d | 2027-02-24 | 2027-02-25 | RHD4CZ2C082ST2300 SS, RHD4CZ2C082ST2300 FF, RHD4CZ2C082ST2200, RHD4CZ2C082RD3100 | Skilled labor [2.61 h]; Unskilled Labor [2.61 h]; Equipment Opreator [2.83 h]; Concrete Mixer Truck [0.22 h]; Dump Truck [2.61 h]; Pipe Encasement - ST [47.11 m3] | 23,837.66 | C082 | Z2 | CONS | ST | Pipe Encasement | bef |
|  | 732 | **RHD4-02-002-Z2-C082-Catch Basin - ST** |  | 2027-01-03 | 2027-01-30 |  |  |  |  |  |  |  |  |  |
|  | 733 | **RHD4-02-002-C082-(ST)-Single Catch Basin Works** |  | 2027-01-03 | 2027-01-21 |  |  |  |  |  |  |  |  |  |
| RHD4CZ2C082ST7100 |  | Excavation works for Single Catch Basin - (RD-C-8 /2)-Z2-C082-ST | 3d | 2027-01-03 | 2027-01-05 | RHD4ENSDZ2APPST110, RHD4CZ2C082ST1106 | Skilled labor [23.96 h]; Unskilled Labor [47.92 h]; Equipment Opreator [35.94 h]; Excavator-Poclain [23.96 h]; Dump Truck [12 h]; Single Catch basin - ST [5.5 nr] | 20,520.5 | C082 | Z2 | CONS | ST | Excavation | bef |
| RHD4CZ2C082ST7200 |  | PC Blinding, Installation and Pipe connection for Single Catch Basin - (RD-C-8 /2)-Z2-C082-ST | 3d | 2027-01-06 | 2027-01-09 | RHD4CZ2C082ST7100 | Skilled labor [23.96 h]; Unskilled Labor [47.92 h]; Plumber [12 h]; Equipment Opreator [4.8 h]; Boom Truck [4.8 h]; Single Catch basin - ST [4.4 nr] | 16,416.4 | C082 | Z2 | CONS | ST | Installation & Pipe Connection | bef |
| RHD4CZ2C082ST7300 |  | Rings & C.Slab & Final Backfill for Single Catch Basin - (RD-C-8 /2)-Z2-C082-ST | 3d | 2027-01-10 | 2027-01-12 | RHD4PRSHLDOSST1301, RHD4PRSHLSTAGST1301, RHD4CZ2C082ST7200 | Skilled labor [29.95 h]; Unskilled Labor [59.9 h]; Equipment Opreator [35.94 h]; Boom Truck [5.99 h]; Bobcat [29.95 h]; Single Catch basin - ST [7.7 nr] | 28,728.7 | C082 | Z2 | CONS | ST | Rings | bef |
| RHD4CZ2C082ST7400 |  | Steel Cover for Single Catch Basin - (RD-C-8 /2)-Z2-C082-ST | 3d | 2027-01-13 | 2027-01-16 | RHD4PRSHLDOSST1701, RHD4CZ2C082ST7300 | Skilled labor [23.96 h]; Unskilled Labor [23.96 h]; Equipment Opreator [4.8 h]; Boom Truck [4.8 h]; Single Catch basin - ST [1.1 nr] | 4,104.1 | C082 | Z2 | CONS | ST | Steel Cover | bef |
| RHD4CZ2C082ST7500 |  | Finishing and Insulation works for Single Catch Basin - (RD-C-8 /2)-Z2-C082-ST | 5d | 2027-01-17 | 2027-01-21 | RHD4CZ2C082ST7400 | Skilled labor [47.92 h]; Unskilled Labor [95.84 h]; Equipment Opreator [9.6 h]; Boom Truck [9.6 h]; Single Catch basin - ST [3.3 nr] | 12,312.3 | C082 | Z2 | CONS | ST | Insulation | bef |
|  | 734 | **RHD4-02-002-C082-(ST)-Double Catch Basin Works** |  | 2027-01-19 | 2027-01-30 |  |  |  |  |  |  |  |  |  |
| RHD4CZ2C082ST8100 |  | Excavation works for Double Catch Basin - (RD-C-8 /2)-Z2-C082-ST | 2d | 2027-01-19 | 2027-01-20 | RHD4ENSDZ2APPST110, RHD4CZ2C082ST3300, RHD4CZ2C082ST3301, RHD4CZ2C082ST7100 | Skilled labor [4.36 h]; Unskilled Labor [8.71 h]; Equipment Opreator [6.53 h]; Excavator-Poclain [4.36 h]; Dump Truck [2.18 h]; Double Catch basin - ST [0.5 nr] | 6,983 | C082 | Z2 | CONS | ST | Excavation | bef |
| RHD4CZ2C082ST8200 |  | PC Blinding, Installation and Pipe connection for Double Catch Basin - (RD-C-8 /2)-Z2-C082-ST | 2d | 2027-01-21 | 2027-01-23 | RHD4CZ2C082ST8100, RHD4CZ2C082ST7200 | Skilled labor [4.36 h]; Unskilled Labor [8.71 h]; Plumber [2.18 h]; Equipment Opreator [0.87 h]; Boom Truck [0.87 h]; Double Catch basin - ST [0.4 nr] | 5,586.4 | C082 | Z2 | CONS | ST | Installation & Pipe Connection | bef |
| RHD4CZ2C082ST8300 |  | Rings & C.Slab & Final Backfillfor Double Catch Basin - (RD-C-8 /2)-Z2-C082-ST | 2d | 2027-01-24 | 2027-01-25 | RHD4PRSHLDOSST1301, RHD4PRSHLSTAGST1301, RHD4CZ2C082ST8200, RHD4CZ2C082ST7300 | Skilled labor [5.45 h]; Unskilled Labor [10.89 h]; Equipment Opreator [6.53 h]; Boom Truck [1.09 h]; Bobcat [5.45 h]; Double Catch basin - ST [0.7 nr] | 9,776.2 | C082 | Z2 | CONS | ST | Rings | bef |
| RHD4CZ2C082ST8400 |  | Steel Cover for Double Catch Basin - (RD-C-8 /2)-Z2-C082-ST | 2d | 2027-01-26 | 2027-01-27 | RHD4PRSHLDOSST1701, RHD4CZ2C082ST8300, RHD4CZ2C082ST7400 | Skilled labor [4.36 h]; Unskilled Labor [4.36 h]; Equipment Opreator [0.87 h]; Boom Truck [0.87 h]; Double Catch basin - ST [0.1 nr] | 1,396.6 | C082 | Z2 | CONS | ST | Steel Cover | bef |
| RHD4CZ2C082ST8500 |  | Finishing and Insulation works for Double Catch Basin - (RD-C-8 /2)-Z2-C082-ST | 2d | 2027-01-28 | 2027-01-30 | RHD4CZ2C082ST8400, RHD4CZ2C082ST7500 | Skilled labor [10.89 h]; Unskilled Labor [21.78 h]; Equipment Opreator [2.18 h]; Boom Truck [2.18 h]; Double Catch basin - ST [0.3 nr] | 4,189.8 | C082 | Z2 | CONS | ST | Insulation | bef |

| ID | WBS | Activity | Duration | Start | Finish | Predecessors | Resources | Cost | RDH4-01-001-Road and Block Names-1 | RDH4-01-001-Zones-1 | RDH4-01-001-Phases-1 | RDH4-01-001-Networks-1 | RDH4-01-001-Work Method-1 | RDH4-01-001-MENEM |
| --- | --- | --- | --- | --- | --- | --- | --- | --- | --- | --- | --- | --- | --- | --- |
|  | 705 | **RHD4-02-002-Z2-C082-Concrete Box Culvert - ST** |  | 2027-07-21 | 2027-11-21 |  |  |  |  |  |  |  |  |  |
|  | 706 | **RHD4-02-002-C082-(ST)-Concrete Box Culvert** |  | 2027-07-21 | 2027-11-21 |  |  |  |  |  |  |  |  |  |
| RHD4CZ2C082ST4100 |  | Excavation works for Box Culvert - (RD-C-8 /2)-Z2-C082-ST | 21d | 2027-07-21 | 2027-08-14 | RHD4ENSDZ2APPST110, RHD4ENMSBC2010, RHD4CZ1CH1ST1200 | Skilled labor [235.34 h]; Unskilled Labor [235.34 h]; Equipment Opreator [705.91 h]; Excavator-Poclain [235.34 h]; Water Truck [235.34 h]; Dump Truck [235.34 h]; Excavation for culverts (all types of soil) including backfilling - ST [6805.87 m3] | 122,505.64 | C082 | Z2 | CONS | ST | Excavation | bef |
| RHD4CZ2C082ST4200 |  | PC works for Box Culvert - (RD-C-8 /2)-Z2-C082-ST | 7d | 2027-08-15 | 2027-08-22 | RHD4CZ2C082ST4100 | Skilled labor [73.4 h]; Unskilled Labor [73.4 h]; Equipment Opreator [73.4 h]; Concrete Mixer Truck [36.7 h]; Concrete Pump [36.7 h]; 100 mm thickness lean concrete under the base - ST [3034.99 m2] | 118,364.61 | C082 | Z2 | CONS | ST | PC | bef |
| RHD4CZ2C082ST4400 |  | Raft works for Box Culvert - (RD-C-8 /2)-Z2-C082-ST | 19d | 2027-08-23 | 2027-09-13 | RHD4PRSHLDOSST1501, RHD4PRSHLSTAGST1501, RHD4CZ2C082ST4200 | Carpenter [164 h]; Skilled labor [198.75 h]; Steel Fixer [34.74 h]; Equipment Opreator [334.88 h]; Boom Truck [6.97 h]; Concrete Mixer Truck [164 h]; Concrete Pump [164 h]; Supply and cast in place reinforced concrete for Box culverts - ST [1204.51 m3]; Supply, placing, and fixing of high tensile reinforcement steel for Box culverts - ST [255.36 Ton] | 2,108,603.17 | C082 | Z2 | CONS | ST | Raft Works | bef |
| RHD4CZ2C082ST4500 |  | Wall and slab works for Box Culvert - (RD-C-8 /2)-Z2-C082-ST | 19d | 2027-09-14 | 2027-10-06 | RHD4PRSHLDOSST1501, RHD4PRSHLSTAGST1501, RHD4CZ2C082ST4400 | Carpenter [164 h]; Skilled labor [198.75 h]; Steel Fixer [34.74 h]; Equipment Opreator [334.88 h]; Boom Truck [6.97 h]; Concrete Mixer Truck [164 h]; Concrete Pump [164 h]; Supply and cast in place reinforced concrete for Box culverts - ST [1505.63 m3]; Supply, placing, and fixing of high tensile reinforcement steel for Box culverts - ST [383.03 Ton] | 2,866,595.78 | C082 | Z2 | CONS | ST | Wall and slab Works | bef |
| RHD4CZ2C082ST4700 |  | Backfilling works for Box Culvert - (RD-C-8 /2)-Z2-C082-ST | 17d | 2027-10-14 | 2027-11-02 | RHD4CZ2C082ST4500, RHD4CZ2C082ST5300 | Skilled labor [529.38 h]; Unskilled Labor [1058.87 h]; Equipment Opreator [847.05 h]; Boom Truck [264.74 h]; Water Truck [52.93 h]; Dump Truck [529.38 h]; Excavation for culverts (all types of soil) including backfilling - ST [2916.8 m3] | 52,502.4 | C082 | Z2 | CONS | ST | Backfilling | bef |
| RHD4CZ2C082ST4600 |  | Insulation and Testing for Box Culvert - (RD-C-8 /2)-Z2-C082-ST | 16d | 2027-11-03 | 2027-11-21 | RHD4CZ2C082ST5400, RHD4CZ2C082ST4700 | Skilled labor [164 h]; Unskilled Labor [327.91 h]; Equipment Opreator [164 h]; Water Truck [164 h]; Supply and cast in place reinforced concrete for Box culverts - ST [301.13 m3] | 296,308.97 | C082 | Z2 | CONS | ST | Insulation and Testing | bef |
|  | 707 | **RHD4-02-002-C082-(ST)-Concrete Chambers** |  | 2027-10-07 | 2027-10-16 |  |  |  |  |  |  |  |  |  |
| RHD4CZ2C082ST5100 |  | Excavation and Bedding for Concrete Chambers - for Box Culvert - (RD-C-8 /2)-Z2-C082-ST | 2d | 2027-10-07 | 2027-10-09 | RHD4ENSDZ2APPST110, RHD4CZ2C082ST4500 | Skilled labor [10.89 h]; Unskilled Labor [10.89 h]; Equipment Opreator [2.18 h]; Excavator-Poclain [1.09 h]; Dump Truck [1.09 h]; Concrete chambers - ST - Size 1.8 x 2.0 m, depth 4.51-5.5 m [0.15 nr] | 5,806.2 | C082 | Z2 | CONS | ST | Excavation & Bedding | bef |
| RHD4CZ2C082ST5200 |  | PC works for Concrete Chambers - for Box Culvert - (RD-C-8 /2)-Z2-C082-ST | 2d | 2027-10-10 | 2027-10-11 | RHD4CZ2C082ST5100 | Skilled labor [10.89 h]; Unskilled Labor [10.89 h]; Equipment Opreator [2.18 h]; Excavator-Poclain [1.09 h]; Dump Truck [1.09 h]; Concrete chambers - ST - Size 1.8 x 2.0 m, depth 4.51-5.5 m [0.1 nr] | 3,870.8 | C082 | Z2 | CONS | ST | PC Works | bef |
| RHD4CZ2C082ST5300 |  | Installation for Concrete Chambers - for Box Culvert - (RD-C-8 /2)-Z2-C082-ST | 2d | 2027-10-12 | 2027-10-13 | RHD4CZ2C082ST5200 | Skilled labor [10.89 h]; Unskilled Labor [10.89 h]; Equipment Opreator [2.18 h]; Excavator-Poclain [1.09 h]; Dump Truck [1.09 h]; Concrete chambers - ST - Size 1.8 x 2.0 m, depth 4.51-5.5 m [0.55 nr] | 21,289.4 | C082 | Z2 | CONS | ST | Installation | bef |
| RHD4CZ2C082ST5400 |  | Backfilling works for Concrete Chambers - for Box Culvert - (RD-C-8 /2)-Z2-C082-ST | 2d | 2027-10-14 | 2027-10-16 | RHD4CZ2C082ST5300 | Skilled labor [10.89 h]; Unskilled Labor [10.89 h]; Equipment Opreator [2.18 h]; Excavator-Poclain [1.09 h]; Dump Truck [1.09 h]; Concrete chambers - ST - Size 1.8 x 2.0 m, depth 4.51-5.5 m [0.2 nr] | 7,741.6 | C082 | Z2 | CONS | ST | Backfilling Works | bef |
|  | 794 | **RHD4-02-002-Z2-C082-Potable Network - PT** |  | 2027-03-27 | 2027-05-09 |  |  |  |  |  |  |  |  |  |
|  | 797 | **RHD4-02-002-C082-(PT)-HDPE Pipes - 200 mm diameter** |  | 2027-03-27 | 2027-05-04 |  |  |  |  |  |  |  |  |  |
| RHD4CZ2C082PT1102 |  | Excavation works for HDPE Pipline 200 mm - (RD-C-8 /2)-Z2-C082-PT | 5d | 2027-03-27 | 2027-03-31 | RHD4ENSDZ2APPPT130, RHD4ENMSPT2000, RHD4CZ2C082ST2500, RHD4CZ2C082SW2500 | Skilled labor [46.83 h]; Unskilled Labor [46.83 h]; Equipment Opreator [56.19 h]; Excavator-Poclain [46.83 h]; Dump Truck [9.37 h]; HDPE (200mm Diameter) - PT - Depth: less than 1.5m [105 m]; HDPE (200mm Diameter) - PT - Depth: more than 1.5m | 14,700 | C082 | Z2 | CONS | PT | Excavation | bef |
| RHD4CZ2C082PT1202 |  | Bedding works for HDPE Pipline 200 mm - (RD-C-8 /2)-Z2-C082-PT | 4d | 2027-04-01 | 2027-04-05 | RHD4CZ2C082PT1102 | Skilled labor [39.53 h]; Unskilled Labor [79.06 h]; Equipment Opreator [79.06 h]; Excavator-Poclain [39.53 h]; Dump Truck [39.53 h]; HDPE (200mm Diameter) - PT - Depth: less than 1.5m [52.5 m]; HDPE (200mm Diameter) - PT - Depth: more than 1.5m | 7,350 | C082 | Z2 | CONS | PT | Bedding | bef |
| RHD4CZ2C082PT1302 |  | Installing for HDPE Pipline 200 mm - (RD-C-8 /2)-Z2-C082-PT | 7d | 2027-04-06 | 2027-04-13 | RHD4PRSHLDOSPT1000, RHD4PRSHLSTAGPT1000, RHD4CZ2C082PT1202 | Unskilled Labor [152.46 h]; Plumber [76.23 h]; Equipment Opreator [76.23 h]; Boom Truck [76.23 h]; HDPE (200mm Diameter) - PT - Depth: less than 1.5m [472.5 m]; HDPE (200mm Diameter) - PT - Depth: more than 1.5m | 66,150 | C082 | Z2 | CONS | PT | Installation | bef |
| RHD4CZ2C082PT1402 |  | Primary Test for HDPE Pipline 200 mm - (RD-C-8 /2)-Z2-C082-PT | 3d | 2027-04-25 | 2027-04-27 | RHD4CZ2C082PT1302, RHD4CZ2C082PT5100, RHD4CZ2C082PT3100 | Unskilled Labor [24.8 h]; Plumber [24.8 h]; Equipment Opreator [24.8 h]; Water Truck [24.8 h]; HDPE (200mm Diameter) - PT - Depth: less than 1.5m [210 m]; HDPE (200mm Diameter) - PT - Depth: more than 1.5m | 29,400 | C082 | Z2 | CONS | PT | Primary Test | bef |
| RHD4CZ2C082PT1502 |  | Backfilling and warning tape works for HDPE Pipline 200 mm - (RD-C-8 /2)-Z2-C082-PT | 6d | 2027-04-28 | 2027-05-04 | RHD4CZ2C082PT1402, RHD4CZ2C082PT5100 | Skilled labor [57.83 h]; Unskilled Labor [115.76 h]; Equipment Opreator [115.76 h]; Excavator-Poclain [57.83 h]; Dump Truck [57.83 h]; HDPE (200mm Diameter) - PT - Depth: less than 1.5m [210 m]; HDPE (200mm Diameter) - PT - Depth: more than 1.5m | 29,400 | C082 | Z2 | CONS | PT | Backfilling | bef |
|  | 800 | **RHD4-02-002-C082-(PT)-Gate Valves (Direct Buried)** |  | 2027-04-12 | 2027-05-06 |  |  |  |  |  |  |  |  |  |
| RHD4CZ2C082PT3100 |  | Installation for Direct Buried Gate Valves - (RD-C-8 /2)-Z2-C082-PT | 2d | 2027-04-12 | 2027-04-13 | RHD4PRSHLDOSPT1200, RHD4PRSHLSTAGPT1200, RHD4CZ2C082PT1302 FF, RHD4CZ2C082PT1302 SS | Unskilled Labor [5.45 h]; Plumber [5.45 h]; Gate valves dia 200 mm - PT [0.9 nr] | 2,008.8 | C082 | Z2 | CONS | PT | Installation | bef |
| RHD4CZ2C082PT3200 |  | Stem and Service box for Direct Buried Gate Valves - (RD-C-8 /2)-Z2-C082-PT | 2d | 2027-05-05 | 2027-05-06 | RHD4PRSHLDOSPT1300, RHD4PRSHLSTAGPT1300, RHD4CZ2C082PT3100, RHD4CZ2C082PT1502, RHD4CZ2C082PT1302, RHD4CZ2C082PT1402 | Unskilled Labor [5.45 h]; Plumber [5.45 h]; Gate valves dia 200 mm - PT [0.1 nr] | 223.2 | C082 | Z2 | CONS | PT | Stem and Service box | bef |
|  | 808 | **RHD4-02-002-C082-(PT)-Concrete Encasement** |  | 2027-04-06 | 2027-04-24 |  |  |  |  |  |  |  |  |  |
| RHD4CZ2C082PT5100 |  | Pipe Encasement for Potable Pipelines - (RD-C-8 /2)-Z2-C082-PT | 16d | 2027-04-06 | 2027-04-24 | RHD4CZ2C082PT1302 FF, RHD4CZ2C082PT1302 SS, RHD4CZ2C082PT1202 | Skilled labor [164.55 h]; Unskilled Labor [164.55 h]; Equipment Opreator [181 h]; Concrete Mixer Truck [16.44 h]; Dump Truck [164.55 h]; Pipe Encasement - PT [75.53 m3] | 92,599.78 | C082 | Z2 | CONS | PT | Pipe Encasement | bef |

| ID | WBS | Activity | Duration | Start | Finish | Predecessors | Resources | Cost | RDH4-01-001-Road and Block Names-1 | RDH4-01-001-Zones-1 | RDH4-01-001-Phases-1 | RDH4-01-001-Networks-1 | RDH4-01-001-Work Method-1 | RDH4-01-001-MENEM |
| --- | --- | --- | --- | --- | --- | --- | --- | --- | --- | --- | --- | --- | --- | --- |
|  | 803 | **RHD4-02-002-C082-(PT)-Wash out Valve Chambers** |  | 2027-04-01 | 2027-05-09 |  |  |  |  |  |  |  |  |  |
| RHD4CZ2C082PT2101 |  | Excavation and Bedding for Wash out Valve Chambers for Potable Water Network - (RD-C-8 /2)-Z2-C082-PT | 2d | 2027-04-01 | 2027-04-03 | RHD4ENSDZ2APPPT130, RHD4CZ2C082PT1102 | Skilled labor [5.45 h]; Unskilled Labor [5.45 h]; Equipment Opreator [1.09 h]; Excavator-Poclain [0.54 h]; Dump Truck [0.54 h]; Wash out chambers - PT [0.25 nr] | 4,686.25 | C082 | Z2 | CONS | PT | Excavation and Bedding | bef |
| RHD4CZ2C082PT2201 |  | PC works for Wash out Valve Chambers for Potable Water Network - (RD-C-8 /2)-Z2-C082-PT | 2d | 2027-04-04 | 2027-04-05 | RHD4CZ2C082PT2101 | Skilled labor [5.45 h]; Unskilled Labor [10.89 h]; Equipment Opreator [0.54 h]; Concrete Pump [0.54 h]; Wash out chambers - PT [0.1 nr] | 1,874.5 | C082 | Z2 | CONS | PT | PC Works | bef |
| RHD4CZ2C082PT2301 |  | Installation for Wash out Valve Chambers for Potable Water Network - (RD-C-8 /2)-Z2-C082-PT | 2d | 2027-04-06 | 2027-04-07 | RHD4PRSHLDOSPT1100, RHD4PRSHLDOSPT1400, RHD4PRSHLSTAGPT1100, RHD4PRSHLSTAGPT1400, RHD4CZ2C082PT2201 | Skilled labor [5.45 h]; Unskilled Labor [10.89 h]; Equipment Opreator [1.09 h]; Boom Truck [1.09 h]; Wash out chambers - PT [0.55 nr] | 10,309.75 | C082 | Z2 | CONS | PT | Installation | bef |
| RHD4CZ2C082PT2401 |  | Backfilling works for Wash out Valve Chambers for Potable Water Network - (RD-C-8 /2)-Z2-C082-PT | 2d | 2027-05-08 | 2027-05-09 | RHD4CZ2C082PT2301, RHD4CZ2C082PT3200 | Skilled labor [5.45 h]; Unskilled Labor [10.89 h]; Equipment Opreator [1.09 h]; Water Truck [0.54 h]; Dump Truck [0.54 h]; Wash out chambers - PT [0.1 nr] | 1,874.5 | C082 | Z2 | CONS | PT | Backfilling Works | bef |
|  | 804 | **RHD4-02-002-C082-(PT)-Wash out Valves** |  | 2027-04-14 | 2027-04-18 |  |  |  |  |  |  |  |  |  |
| RHD4CZ2C082PT3102 |  | Installation for Wash out Valves for Potable Water Network - (RD-C-8 /2)-Z2-C082-PT | 2d | 2027-04-14 | 2027-04-15 | RHD4PRSHLDOSPT1200, RHD4PRSHLSTAGPT1200, RHD4CZ2C082PT1302 | Unskilled Labor [5.45 h]; Plumber [5.45 h]; Wash out valve diameter 100 mm - PT [0.9 nr] | 3,373.2 | C082 | Z2 | CONS | PT | Installation | bef |
| RHD4CZ2C082PT3202 |  | Stem and Service box for Wash out Valves for Potable Water Network - (RD-C-8 /2)-Z2-C082-PT | 2d | 2027-04-17 | 2027-04-18 | RHD4PRSHLDOSPT1300, RHD4PRSHLSTAGPT1300, RHD4CZ2C082PT3102 | Unskilled Labor [5.45 h]; Plumber [5.45 h]; Wash out valve diameter 100 mm - PT [0.1 nr] | 374.8 | C082 | Z2 | CONS | PT | Stem and Service box | bef |
|  | 805 | **RHD4-02-002-C082-(PT)-Air Valve Chambers** |  | 2027-04-01 | 2027-04-10 |  |  |  |  |  |  |  |  |  |
| RHD4CZ2C082PT2102 |  | Excavation and Bedding for Air Valve Chambers for Potable Water Network - (RD-C-8 /2)-Z2-C082-PT | 2d | 2027-04-01 | 2027-04-03 | RHD4ENSDZ2APPPT130, RHD4CZ2C082PT1102 | Skilled labor [5.45 h]; Unskilled Labor [5.45 h]; Equipment Opreator [1.09 h]; Excavator-Poclain [0.54 h]; Dump Truck [0.54 h]; Air Valve chambers - PT [0.25 nr] | 1,193 | C082 | Z2 | CONS | PT | Excavation and Bedding | bef |
| RHD4CZ2C082PT2202 |  | PC works for Air Valve Chambers for Potable Water Network - (RD-C-8 /2)-Z2-C082-PT | 2d | 2027-04-04 | 2027-04-05 | RHD4CZ2C082PT2102 | Skilled labor [5.45 h]; Unskilled Labor [10.89 h]; Equipment Opreator [0.54 h]; Concrete Pump [0.54 h]; Air Valve chambers - PT [0.1 nr] | 477.2 | C082 | Z2 | CONS | PT | PC Works | bef |
| RHD4CZ2C082PT2302 |  | Installation for Air Valve Chambers for Potable Water Network - (RD-C-8 /2)-Z2-C082-PT | 2d | 2027-04-06 | 2027-04-07 | RHD4PRSHLDOSPT1100, RHD4PRSHLDOSPT1400, RHD4PRSHLSTAGPT1100, RHD4PRSHLSTAGPT1400, RHD4CZ2C082PT2202 | Skilled labor [5.45 h]; Unskilled Labor [10.89 h]; Equipment Opreator [1.09 h]; Boom Truck [1.09 h]; Air Valve chambers - PT [0.55 nr] | 2,624.6 | C082 | Z2 | CONS | PT | Installation | bef |
| RHD4CZ2C082PT2402 |  | Backfilling works for Air Valve Chambers for Potable Water Network - (RD-C-8 /2)-Z2-C082-PT | 2d | 2027-04-08 | 2027-04-10 | RHD4CZ2C082PT2302 | Skilled labor [5.45 h]; Unskilled Labor [10.89 h]; Equipment Opreator [1.09 h]; Water Truck [0.54 h]; Dump Truck [0.54 h]; Air Valve chambers - PT [0.1 nr] | 477.2 | C082 | Z2 | CONS | PT | Backfilling Works | bef |
|  | 806 | **RHD4-02-002-C082-(PT)-Air Valves** |  | 2027-04-08 | 2027-04-12 |  |  |  |  |  |  |  |  |  |
| RHD4CZ2C082PT3103 |  | Installation for Air Valves for Potable Water Network - (RD-C-8 /2)-Z2-C082-PT | 2d | 2027-04-08 | 2027-04-10 | RHD4PRSHLDOSPT1200, RHD4PRSHLSTAGPT1200, RHD4CZ2C082PT2302 | Unskilled Labor [5.45 h]; Plumber [5.45 h]; Air valve diameter 50 mm - PT [0.9 nr] | 4,427.1 | C082 | Z2 | CONS | PT | Installation | bef |
| RHD4CZ2C082PT3203 |  | Stem and Service box for Air Valves for Potable Water Network - (RD-C-8 /2)-Z2-C082-PT | 2d | 2027-04-11 | 2027-04-12 | RHD4PRSHLDOSPT1300, RHD4PRSHLSTAGPT1300, RHD4CZ2C082PT3103, RHD4CZ2C082PT2402 | Unskilled Labor [5.45 h]; Plumber [5.45 h]; Air valve diameter 50 mm - PT [0.1 nr] | 491.9 | C082 | Z2 | CONS | PT | Stem and Service box | bef |
|  | 807 | **RHD4-02-002-C082-(PT)-Fire Hydrant** |  | 2027-04-14 | 2027-05-01 |  |  |  |  |  |  |  |  |  |
| RHD4CZ2C082PT4100 |  | Excavation and Bedding and Pipe Installation for Fire Hydrant - (RD-C-8 /2)-Z2-C082-PT | 4d | 2027-04-14 | 2027-04-18 | RHD4ENSDZ2APPPT130, RHD4CZ2C082PT1302 | Skilled labor [38.12 h]; Unskilled Labor [38.12 h]; Plumber [38.12 h]; Equipment Opreator [19.06 h]; Excavator-Poclain [19.06 h]; 3-outlet fire hydrant (2 x 2.5 inch and 1 x 4.5 inch) in the form of a separate dry vacuum cylinder [0.7 nr] | 8,834 | C082 | Z2 | CONS | PT | Excavation | bef |
| RHD4CZ2C082PT4200 |  | Valve Installation for Fire Hydrant - (RD-C-8 /2)-Z2-C082-PT | 3d | 2027-04-19 | 2027-04-21 | RHD4CZ2C082PT4100 | Unskilled Labor [25.37 h]; Plumber [25.37 h]; 3-outlet fire hydrant (2 x 2.5 inch and 1 x 4.5 inch) in the form of a separate dry vacuum cylinder [1.4 nr] | 17,668 | C082 | Z2 | CONS | PT | Valve | bef |
| RHD4CZ2C082PT4300 |  | Stem for Fire Hydrant - (RD-C-8 /2)-Z2-C082-PT | 3d | 2027-04-22 | 2027-04-25 | RHD4CZ2C082PT4200 | Unskilled Labor [25.37 h]; Plumber [25.37 h]; 3-outlet fire hydrant (2 x 2.5 inch and 1 x 4.5 inch) in the form of a separate dry vacuum cylinder [2.1 nr] | 26,502 | C082 | Z2 | CONS | PT | Stem | bef |
| RHD4CZ2C082PT4400 |  | Fire Installation for Fire Hydrant - (RD-C-8 /2)-Z2-C082-PT | 3d | 2027-04-26 | 2027-04-28 | RHD4PRSHLDOSPT1500, RHD4PRSHLSTAGPT1500, RHD4CZ2C082PT4300 | Unskilled Labor [25.37 h]; Plumber [25.37 h]; Equipment Opreator [25.37 h]; Boom Truck [25.37 h]; 3-outlet fire hydrant (2 x 2.5 inch and 1 x 4.5 inch) in the form of a separate dry vacuum cylinder [2.45 nr] | 30,919 | C082 | Z2 | CONS | PT | Fire | bef |
| RHD4CZ2C082PT4500 |  | Protection Barriers for Fire Hydrant - (RD-C-8 /2)-Z2-C082-PT | 2d | 2027-04-29 | 2027-05-01 | RHD4CZ2C082PT4400 | Unskilled Labor [15.25 h]; Plumber [15.25 h]; 3-outlet fire hydrant (2 x 2.5 inch and 1 x 4.5 inch) in the form of a separate dry vacuum cylinder [0.35 nr] | 4,417 | C082 | Z2 | CONS | PT | Protection Barriers | bef |
|  | 809 | **RHD4-02-002-Z2-C082-Irrigation Network - IRR** |  | 2027-04-01 | 2027-05-06 |  |  |  |  |  |  |  |  |  |
|  | 816 | **RHD4-02-002-C082-(IRR)-HDPE Pipes - 450 mm diameter** |  |  |  |  |  |  |  |  |  |  |  |  |
|  | 815 | **RHD4-02-002-C082-(IRR)-HDPE Pipes - 400 mm diameter** |  |  |  |  |  |  |  |  |  |  |  |  |
|  | 814 | **RHD4-02-002-C082-(IRR)-HDPE Pipes - 315 mm diameter** |  | 2027-04-01 | 2027-05-06 |  |  |  |  |  |  |  |  |  |
| RHD4CZ2C082IRR1104 |  | Excavation works for HDPE Pipline 315 mm - (RD-C-8 /2)-Z2-C082-IRR | 8d | 2027-04-01 | 2027-04-10 | RHD4ENSDZ2APPIRR140, RHD4ENMSRR2000, RHD4CZ2C082PT1102 | Skilled labor [77.1 h]; Unskilled Labor [77.1 h]; Equipment Opreator [92.46 h]; Excavator-Poclain [77.1 h]; Dump Truck [15.46 h]; HDPE (315mm Diameter) - TSE - Depth: less than 1.5m [106.15 m] | 31,102.83 | C082 | Z2 | CONS | IRR | Excavation | bef |
| RHD4CZ2C082IRR1204 |  | Bedding works for HDPE Pipline 315 mm - (RD-C-8 /2)-Z2-C082-IRR | 6d | 2027-04-11 | 2027-04-17 | RHD4CZ2C082IRR1104 | Skilled labor [57.83 h]; Unskilled Labor [115.66 h]; Equipment Opreator [115.66 h]; Excavator-Poclain [57.83 h]; Dump Truck [57.83 h]; HDPE (315mm Diameter) - TSE - Depth: less than 1.5m [53.08 m] | 15,551.41 | C082 | Z2 | CONS | IRR | Bedding | bef |
| RHD4CZ2C082IRR1304 |  | Installing for HDPE Pipline 315 mm - (RD-C-8 /2)-Z2-C082-IRR | 8d | 2027-04-18 | 2027-04-26 | RHD4PRSHLDOSIRR1000, RHD4PRSHLSTAGIRR1000, RHD4CZ2C082IRR1204 | Unskilled Labor [154.1 h]; Plumber [77.1 h]; Equipment Opreator [77.1 h]; Boom Truck [77.1 h]; HDPE (315mm Diameter) - TSE - Depth: less than 1.5m [477.69 m] | 139,962.73 | C082 | Z2 | CONS | IRR | Installation | bef |
| RHD4CZ2C082IRR1404 |  | Primary Test for HDPE Pipline 315 mm - (RD-C-8 /2)-Z2-C082-IRR | 3d | 2027-04-27 | 2027-04-29 | RHD4CZ2C082IRR1304, RHD4CZ2C082IRR3100 | Unskilled Labor [23.09 h]; Plumber [23.09 h]; Equipment Opreator [23.09 h]; Water Truck [23.09 h]; HDPE (315mm Diameter) - TSE - Depth: less than 1.5m [212.31 m] | 62,205.66 | C082 | Z2 | CONS | IRR | Primary Test | bef |
| RHD4CZ2C082IRR1504 |  | Backfilling and warning tape works for HDPE Pipline 315 mm - (RD-C-8 /2)-Z2-C082-IRR | 6d | 2027-05-01 | 2027-05-06 | RHD4CZ2C082IRR1404 | Skilled labor [57.83 h]; Unskilled Labor [115.66 h]; Equipment Opreator [115.66 h]; Excavator-Poclain [57.83 h]; Dump Truck [57.83 h]; HDPE (315mm Diameter) - TSE - Depth: less than 1.5m [212.31 m] | 62,205.66 | C082 | Z2 | CONS | IRR | Backfilling | bef |

| ID | WBS | Activity | Duration | Start | Finish | Predecessors | Resources | Cost | RDH4-01-001-Road and Block Names-1 | RDH4-01-001-Zones-1 | RDH4-01-001-Phases-1 | RDH4-01-001-Networks-1 | RDH4-01-001-Work Method-1 | RDH4-01-001-MENEM |
| --- | --- | --- | --- | --- | --- | --- | --- | --- | --- | --- | --- | --- | --- | --- |
|  | 812 | **RHD4-02-002-C082-(IRR)-HDPE Pipes - 200 mm diameter** |  |  |  |  |  |  |  |  |  |  |  |  |
|  | 6863 | **RHD4-02-002-C082-(IRR)-HDPE Pipes - 160 mm diameter** |  | 2027-04-11 | 2027-04-21 |  |  |  |  |  |  |  |  |  |
| RHD4CZ2C082IRR1100 |  | Excavation works for HDPE Pipline 160 mm - (RD-C-8 /2)-Z2-C082-IRR | 2d | 2027-04-11 | 2027-04-12 | RHD4CZ2C082IRR1104 SS, RHD4CZ2C082IRR1104 | Skilled labor [2.07 h]; Unskilled Labor [2.07 h]; Equipment Opreator [2.4 h]; Excavator-Poclain [2.07 h]; Dump Truck [0.44 h]; HDPE (160mm Diameter) - TSE - Depth: less than 1.5m [2.8 m] | 344.4 | C082 | Z2 | CONS | IRR | Excavation | bef |
| RHD4CZ2C082IRR1200 |  | Bedding works for HDPE Pipline 160 mm - (RD-C-8 /2)-Z2-C082-IRR | 2d | 2027-04-13 | 2027-04-14 | RHD4CZ2C082IRR1100 | Skilled labor [1.52 h]; Unskilled Labor [3.05 h]; Equipment Opreator [3.05 h]; Excavator-Poclain [1.52 h]; Dump Truck [1.52 h]; HDPE (160mm Diameter) - TSE - Depth: less than 1.5m [1.4 m] | 172.2 | C082 | Z2 | CONS | IRR | Bedding | bef |
| RHD4CZ2C082IRR1300 |  | Installing for HDPE Pipline 160 mm - (RD-C-8 /2)-Z2-C082-IRR | 2d | 2027-04-15 | 2027-04-17 | RHD4CZ2C082IRR1200 | Unskilled Labor [4 h]; Plumber [2.07 h]; Equipment Opreator [2.07 h]; Boom Truck [2.07 h]; HDPE (160mm Diameter) - TSE - Depth: less than 1.5m [12.6 m] | 1,549.8 | C082 | Z2 | CONS | IRR | Installation | bef |
| RHD4CZ2C082IRR1400 |  | Primary Test for HDPE Pipline 160 mm - (RD-C-8 /2)-Z2-C082-IRR | 2d | 2027-04-18 | 2027-04-19 | RHD4CZ2C082IRR1300 | Unskilled Labor [0.65 h]; Plumber [0.65 h]; Equipment Opreator [0.65 h]; Water Truck [0.65 h]; HDPE (160mm Diameter) - TSE - Depth: less than 1.5m [5.6 m] | 688.8 | C082 | Z2 | CONS | IRR | Primary Test | bef |
| RHD4CZ2C082IRR1500 |  | Backfilling and warning tape works for HDPE Pipline 160 mm - (RD-C-8 /2)-Z2-C082-IRR | 2d | 2027-04-20 | 2027-04-21 | RHD4CZ2C082IRR1400 | Skilled labor [1.52 h]; Unskilled Labor [3.05 h]; Equipment Opreator [3.05 h]; Excavator-Poclain [1.52 h]; Dump Truck [1.52 h]; HDPE (160mm Diameter) - TSE - Depth: less than 1.5m [5.6 m] | 688.8 | C082 | Z2 | CONS | IRR | Backfilling | bef |
|  | 818 | **RHD4-02-002-C082-(IRR)-Gate Valves (Direct Buried)** |  | 2027-04-18 | 2027-04-21 |  |  |  |  |  |  |  |  |  |
| RHD4CZ2C082IRR3100 |  | Installation for Direct Buried Gate Valves - (RD-C-8 /2)-Z2-C082-IRR | 2d | 2027-04-18 | 2027-04-19 | RHD4PRSHLDOSIRR1100, RHD4PRSHLSTAGIRR1100, RHD4CZ2C082IRR1304 SS | Unskilled Labor [5.45 h]; Plumber [5.45 h]; Gate valves dia 100 mm - TSE [0.9 nr] | 1,422 | C082 | Z2 | CONS | IRR | Installation | bef |
| RHD4CZ2C082IRR3200 |  | Stem and Service box for Direct Buried Gate Valves - (RD-C-8 /2)-Z2-C082-IRR | 2d | 2027-04-20 | 2027-04-21 | RHD4PRSHLDOSIRR1300, RHD4PRSHLSTAGIRR1300, RHD4CZ2C082IRR3100 | Unskilled Labor [5.45 h]; Plumber [5.45 h]; Gate valves dia 100 mm - TSE [0.1 nr] | 158 | C082 | Z2 | CONS | IRR | Stem and Service box | bef |
|  | 5383 | **RHD4-02-002-Z2-C082-Medium Voltage Network - MV** |  |  |  |  |  |  |  |  |  |  |  |  |
|  | 5384 | **RHD4-02-002-C082-(MV)-Medium Voltage cable trench** |  |  |  |  |  |  |  |  |  |  |  |  |
|  | 5386 | **RHD4-02-002-C082-(MV)-Medium Voltage cables 3Cx 500 mm²** |  |  |  |  |  |  |  |  |  |  |  |  |
|  | 856 | **RHD4-02-002-Z2-C082-Street Lighting Network - SL** |  | 2027-05-08 | 2027-07-06 |  |  |  |  |  |  |  |  |  |
|  | 857 | **RHD4-02-002-C082-(SL)-Street Lighting duct banks** |  | 2027-05-08 | 2027-05-27 |  |  |  |  |  |  |  |  |  |
| RHD4CZ2C082SL2100 |  | Excavation of Duct Banks for Street Lighting Network - (RD-C-8 /2)-Z2-C082-SL | 3d | 2027-05-08 | 2027-05-10 | RHD4ENSDZ2APPSL170, RHD4CZ2C082ST1106, RHD4CZ2C082IRR1504 | Skilled labor [31.58 h]; Unskilled Labor [31.58 h]; Equipment Opreator [63.27 h]; Excavator-Poclain [31.58 h]; Dump Truck [31.58 h]; Road Crossing Duct for Street Lighting cables UPVC (2x?110mm) [4.36 m] | 879.97 | C082 | Z2 | CONS | SL | Excavation | bef |
| RHD4CZ2C082SL2200 |  | Installation of Duct Banks for Street Lighting Network - (RD-C-8 /2)-Z2-C082-SL | 5d | 2027-05-11 | 2027-05-20 | RHD4PRSHLDOSSL1000, RHD4PRSHLSTAGSL1000, RHD4CZ2C082SL2100 | Carpenter [4.8 h]; Skilled labor [47.48 h]; Unskilled Labor [47.48 h]; Steel Fixer [4.8 h]; Road Crossing Duct for Street Lighting cables UPVC (2x?110mm) [4.36 m] | 879.97 | C082 | Z2 | CONS | SL | Installing | bef |
| RHD4CZ2C082SL2300 |  | Pouring of Duct Banks for Street Lighting Network - (RD-C-8 /2)-Z2-C082-SL | 3d | 2027-05-22 | 2027-05-24 | RHD4CZ2C082SL2200 | Skilled labor [31.58 h]; Unskilled Labor [31.58 h]; Equipment Opreator [12.63 h]; Concrete Mixer Truck [6.32 h]; Concrete Pump [6.32 h]; Road Crossing Duct for Street Lighting cables UPVC (2x?110mm) [28.32 m] | 5,719.8 | C082 | Z2 | CONS | SL | Pouring | bef |
| RHD4CZ2C082SL2400 |  | Backfilling of Duct Banks for Street Lighting Network - (RD-C-8 /2)-Z2-C082-SL | 3d | 2027-05-25 | 2027-05-27 | RHD4CZ2C082SL2300 | Skilled labor [23.74 h]; Unskilled Labor [23.74 h]; Equipment Opreator [9.47 h]; Excavator-Poclain [9.47 h]; Road Crossing Duct for Street Lighting cables UPVC (2x?110mm) [6.53 m] | 1,319.95 | C082 | Z2 | CONS | SL | Backfilling | bef |
|  | 858 | **RHD4-02-002-C082-(SL)-Street Lighting Drawpit** |  | 2027-06-01 | 2027-06-05 |  |  |  |  |  |  |  |  |  |
| RHD4CZ2C082SL5100 |  | Excavation of Drawpit size 600x600x900mm for Street Lighting Network - (RD-C-8 /2)-Z2-C082-SL | 2d | 2027-06-01 | 2027-06-02 | RHD4ENSDZ2APPSL170, RHD4CZ2C082SL2300, RHD4CZ2C082SL1100 | Skilled labor [1.85 h]; Unskilled Labor [1.85 h]; Equipment Opreator [1.42 h]; Excavator-Poclain [0.8 h]; Dump Truck [0.8 h]; Drawpit with medium duty steel cover, size600x600x900mm, [0.3 Unit] | 735.3 | C082 | Z2 | CONS | SL | Excavation | AFT |
| RHD4CZ2C082SL5200 |  | Installation of Drawpit size 600x600x900mm for Street Lighting Network - (RD-C-8 /2)-Z2-C082-SL | 2d | 2027-06-03 | 2027-06-05 | RHD4PRSHLDOSSL1400, RHD4PRSHLSTAGSL1400, RHD4CZ2C082SL5100, RHD4CZ2C082SW3500 | Skilled labor [1.85 h]; Unskilled Labor [1.85 h]; Equipment Opreator [0.8 h]; Boom Truck [0.8 h]; Drawpit with medium duty steel cover, size600x600x900mm, [1.7 Unit] | 4,166.7 | C082 | Z2 | CONS | SL | Installation | AFT |
|  | 860 | **RHD4-02-002-C082-(SL)-Street Lighting Poles** |  | 2027-05-29 | 2027-07-06 |  |  |  |  |  |  |  |  |  |
| RHD4CZ2C082SL1100 |  | Excavation for RC Base for Lighting Poles for Street Lighting Network - (RD-C-8 /2)-Z2-C082-SL | 3d | 2027-05-29 | 2027-05-31 | RHD4ENSDZ2APPSL170, RHD4CZ2C082SL2400, RHD4CZ2C082PT1502, RHD4CZ2C082IRR1504, RHD4CZ2C082IRR1404, RHD4CZ2C082RD3100 | Skilled labor [24.72 h]; Unskilled Labor [24.72 h]; Equipment Opreator [49.33 h]; Excavator-Poclain [24.72 h]; Dump Truck [24.72 h]; Lighting polesdouble arms, height of ( 12 ) meters [3.4 Unit] | 15,544.8 | C082 | Z2 | CONS | SL | Excavation | AFT |
| RHD4CZ2C082SL1200 |  | Installation for RC Base for Lighting Poles for Street Lighting Network - (RD-C-8 /2)-Z2-C082-SL | 3d | 2027-06-01 | 2027-06-03 | RHD4CZ2C082SL1100 | Skilled labor [24.72 h]; Unskilled Labor [24.72 h]; Equipment Opreator [49.33 h]; Excavator-Poclain [24.72 h]; Dump Truck [24.72 h]; Lighting polesdouble arms, height of ( 12 ) meters [8.5 Unit] | 38,862 | C082 | Z2 | CONS | SL | RC Base | AFT |
| RHD4CZ2C082SL1300 |  | Backfill for RC Base for Lighting Poles for Street Lighting Network - (RD-C-8 /2)-Z2-C082-SL | 3d | 2027-06-05 | 2027-06-07 | RHD4CZ2C082SL1200 | Skilled labor [24.72 h]; Unskilled Labor [24.72 h]; Equipment Opreator [49.33 h]; Excavator-Poclain [24.72 h]; Dump Truck [24.72 h]; Lighting polesdouble arms, height of ( 12 ) meters [1.7 Unit] | 7,772.4 | C082 | Z2 | CONS | SL | Backfill | AFT |
| RHD4CZ2C082SL1400 |  | Installation for Lighting Poles for Street Lighting Network - (RD-C-8 /2)-Z2-C082-SL | 4d | 2027-06-27 | 2027-06-30 | RHD4PRSHLDOSSL1200, RHD4ENMSSL2000, RHD4ENMSSL2010, RHD4PRSHLSTAGSL1200, RHD4CZ2C082SL1300, RHD4CZ2C082SL3400 | Skilled labor [37.03 h]; Unskilled Labor [37.03 h]; Electrician [37.03 h]; Equipment Opreator [37.03 h]; Boom Truck [37.03 h]; Lighting polesdouble arms, height of ( 12 ) meters [20.4 Unit] | 93,268.8 | C082 | Z2 | CONS | SL | Poles Installation | AFT |
| RHD4CZ2C082SL1500 |  | Luminaire Installation for Lighting Poles for Street Lighting Network - (RD-C-8 /2)-Z2-C082-SL | 5d | 2027-07-01 | 2027-07-06 | RHD4PRSHLDOSSL1300, RHD4PRSHLSTAGSL1300, RHD4CZ2C082SL1400 | Unskilled Labor [98.78 h]; Electrician [49.33 h]; Equipment Opreator [19.71 h]; Boom Truck [19.71 h]; Street Lighting( LED) Luminaire of Output ?18553 lumen [68 Unit] | 43,316 | C082 | Z2 | CONS | SL | Luminaire Installation | AFT |

| ID | WBS | Activity | Duration | Start | Finish | Predecessors | Resources | Cost | RDH4-01-001-Road and Block Names-1 | RDH4-01-001-Zones-1 | RDH4-01-001-Phases-1 | RDH4-01-001-Networks-1 | RDH4-01-001-Work Method-1 | RDH4-01-001-MENEM |
| --- | --- | --- | --- | --- | --- | --- | --- | --- | --- | --- | --- | --- | --- | --- |
|  | 859 | **RHD4-02-002-C082-(SL)-Street Lighting cables** |  | 2027-06-08 | 2027-06-26 |  |  |  |  |  |  |  |  |  |
| RHD4CZ2C082SL3100 |  | Excavation for Street Lighting Cables for Street Lighting Network - (RD-C-8 /2)-Z2-C082-SL | 5d | 2027-06-08 | 2027-06-13 | RHD4ENSDZ2APPSL170, RHD4CZ2C082SL1300 | Skilled labor [46.4 h]; Unskilled Labor [92.8 h]; Equipment Opreator [92.8 h]; Excavator-Poclain [46.4 h]; Boom Truck [46.4 h]; Cable, Copper 4x10mm2/ CU/XLPE/SWA/PVC + 1x10mm2 CU/PVC [213.07 m] | 10,440.37 | C082 | Z2 | CONS | SL | Excavation | AFT |
| RHD4CZ2C082SL3200 |  | Cable Laying of Street Lighting Cables for Street Lighting Network - (RD-C-8 /2)-Z2-C082-SL | 4d | 2027-06-14 | 2027-06-17 | RHD4PRSHLDOSSL1100, RHD4ENMSSL2000, RHD4ENMSSL2010, RHD4PRSHLSTAGSL1100, RHD4CZ2C082SL3100 | Skilled labor [38.66 h]; Unskilled Labor [154.64 h]; Electrician [77.32 h]; Equipment Opreator [116 h]; Boom Truck [38.66 h]; Cable Laying Machine [77.32 h]; Cable, Copper 4x10mm2/ CU/XLPE/SWA/PVC + 1x10mm2 CU/PVC [639.21 m] | 31,321.1 | C082 | Z2 | CONS | SL | Cable Laying | AFT |
| RHD4CZ2C082SL3300 |  | Warning tape and Backfill for Street Lighting Cables for Street Lighting Network - (RD-C-8 /2)-Z2-C082-SL | 4d | 2027-06-19 | 2027-06-22 | RHD4CZ2C082SL3200 | Skilled labor [38.66 h]; Unskilled Labor [154.64 h]; Electrician [77.32 h]; Equipment Opreator [38.66 h]; Boom Truck [38.66 h]; Cable, Copper 4x10mm2/ CU/XLPE/SWA/PVC + 1x10mm2 CU/PVC [159.8 m] | 7,830.2 | C082 | Z2 | CONS | SL | Warning tape and Backfill | AFT |
| RHD4CZ2C082SL3400 |  | Testing of Street Lighting Cables for Street Lighting Network - (RD-C-8 /2)-Z2-C082-SL | 3d | 2027-06-23 | 2027-06-26 | RHD4CZ2C082SL3300 | Skilled labor [23.2 h]; Unskilled Labor [92.8 h]; Electrician [46.4 h]; Equipment Opreator [23.2 h]; Boom Truck [23.2 h]; Cable, Copper 4x10mm2/ CU/XLPE/SWA/PVC + 1x10mm2 CU/PVC [53.27 m] | 2,610.09 | C082 | Z2 | CONS | SL | Testing | AFT |
|  | 862 | **RHD4-02-002-C082-(SL)-Street Lighting Earthing System** |  | 2027-07-01 | 2027-07-03 |  |  |  |  |  |  |  |  |  |
| RHD4CZ2C082SL6100 |  | Installation of Earthing for Lighting Poles and Fedder Pillers for Street Lighting Network - (RD-C-8 /2)-Z2-C082-SL | 2d | 2027-07-01 | 2027-07-03 | RHD4ENMSER2000, RHD4ENMSER2010, RHD4CZ2C082SL1400, RHD4CZ2C082SL3300 | Skilled labor [1.42 h]; Unskilled Labor [1.42 h]; Equipment Opreator [2.94 h]; Excavator-Poclain [1.42 h]; Dump Truck [1.42 h]; Including lighting poles circuits - ER [2 Unit] | 1,226 | C082 | Z2 | CONS | SL | Installation | AFT |
|  | 868 | **RHD4-02-002-Z2-C082-Telecommunications Network - TC** |  | 2027-04-22 | 2027-07-07 |  |  |  |  |  |  |  |  |  |
|  | 869 | **RHD4-02-002-C082-(TC)-Telecommunications Ducts** |  | 2027-04-22 | 2027-05-27 |  |  |  |  |  |  |  |  |  |
| RHD4CZ2C082TC2100 |  | Excavation of HDPE Ducts for Telecom Network - (RD-C-8 /2)-Z2-C082-TC | 8d | 2027-04-22 | 2027-05-01 | RHD4ENSDZ2APPTC190, RHD4CZ2C082IRR1500 | Skilled labor [77.21 h]; Unskilled Labor [77.21 h]; Equipment Opreator [154.53 h]; Excavator-Poclain [77.21 h]; Dump Truck [77.21 h]; (6*50mm) HDPE ducts -TC [212.83 m] | 18,729.22 | C082 | Z2 | CONS | TC | Excavation | AFT |
| RHD4CZ2C082TC2200 |  | Installation of HDPE Ducts for Telecom Network - (RD-C-8 /2)-Z2-C082-TC | 11d | 2027-05-02 | 2027-05-13 | RHD4PRSHLDOSTC1000, RHD4PRSHLSTAGTC1000, RHD4CZ2C082TC2100 | Carpenter [11.54 h]; Skilled labor [115.87 h]; Unskilled Labor [115.87 h]; Steel Fixer [11.54 h]; (6*50mm) HDPE ducts -TC [691.7 m] | 60,869.6 | C082 | Z2 | CONS | TC | Installing | AFT |
| RHD4CZ2C082TC2400 |  | Backfilling of HDPE Ducts for Telecom Network - (RD-C-8 /2)-Z2-C082-TC | 8d | 2027-05-19 | 2027-05-27 | RHD4CZ2C082TC2200 | Skilled labor [77.21 h]; Unskilled Labor [77.21 h]; Equipment Opreator [30.93 h]; Excavator-Poclain [30.93 h]; (6*50mm) HDPE ducts -TC [159.62 m] | 14,046.91 | C082 | Z2 | CONS | TC | Backfilling | AFT |
|  | 870 | **RHD4-02-002-C082-(TC)-Telecommunications Manholes** |  | 2027-07-04 | 2027-07-07 |  |  |  |  |  |  |  |  |  |
| RHD4CZ2C082TC5100 |  | Excavation for Manholes for Telecom Network - (RD-C-8 /2)-Z2-C082-TC | 2d | 2027-07-04 | 2027-07-05 | RHD4ENSDZ2APPTC190, RHD4CZ2C082TC2100, RHD4CZ2C082SL1100, RHD4CZ2C082SL6100 | Skilled labor [5.45 h]; Unskilled Labor [5.45 h]; Equipment Opreator [4.36 h]; Excavator-Poclain [2.18 h]; Dump Truck [2.18 h]; Manhole Type 1 - TC [0.6 nr] | 4,044.6 | C082 | Z2 | CONS | TC | Excavation | AFT |
| RHD4CZ2C082TC5200 |  | Installation of Manholes for Telecom Network - (RD-C-8 /2)-Z2-C082-TC | 2d | 2027-07-06 | 2027-07-07 | RHD4PRSHLDOSTC1200, RHD4PRSHLSTAGTC1200, RHD4CZ2C082TC5100, RHD4CZ2C082TC2200 SS, RHD4CZ2C082SL5200 | Skilled labor [5.45 h]; Unskilled Labor [5.45 h]; Equipment Opreator [2.18 h]; Boom Truck [2.18 h]; Manhole Type 1 - TC [3.4 nr] | 22,919.4 | C082 | Z2 | CONS | TC | Installation | AFT |
|  | 872 | **RHD4-02-002-Z2-C082-Information and Communication Technologies - ICT** |  | 2027-04-22 | 2027-05-25 |  |  |  |  |  |  |  |  |  |
|  | 873 | **RHD4-02-002-C082-(ICT)-Information and Communication Technologies Ducts** |  | 2027-04-22 | 2027-05-25 |  |  |  |  |  |  |  |  |  |
| RHD4CZ2C082ICT2100 |  | Excavation of HDPE Ducts for ICT Network - (RD-C-8 /2)-Z2-C082-ICT | 7d | 2027-04-22 | 2027-04-29 | RHD4ENSDZ2APPICT200, RHD4CZ2C082IRR1500 | Skilled labor [72.97 h]; Unskilled Labor [72.97 h]; Equipment Opreator [145.93 h]; Excavator-Poclain [72.97 h]; Dump Truck [72.97 h]; (2*50mm) HDPE ducts -ICT [201.04 m] | 7,639.52 | C082 | Z2 | CONS | ICT | Excavation | AFT |
| RHD4CZ2C082ICT2200 |  | Installation of HDPE Ducts for ICT Network - (RD-C-8 /2)-Z2-C082-ICT | 11d | 2027-05-01 | 2027-05-12 | RHD4PRSHLDOSICT1000, RHD4PRSHLSTAGICT1000, RHD4CZ2C082ICT2100 | Carpenter [11 h]; Skilled labor [109.45 h]; Unskilled Labor [109.45 h]; Steel Fixer [11 h]; (2*50mm) HDPE ducts -ICT [653.38 m] | 24,828.44 | C082 | Z2 | CONS | ICT | Installing | AFT |
| RHD4CZ2C082ICT2400 |  | Backfilling of HDPE Ducts for ICT Network - (RD-C-8 /2)-Z2-C082-ICT | 7d | 2027-05-13 | 2027-05-25 | RHD4CZ2C082ICT2200, RHD4CZ2C082ICT5200 | Skilled labor [72.97 h]; Unskilled Labor [72.97 h]; Equipment Opreator [29.19 h]; Excavator-Poclain [29.19 h]; (2*50mm) HDPE ducts -ICT [150.78 m] | 5,729.64 | C082 | Z2 | CONS | ICT | Backfilling | AFT |
|  | 874 | **RHD4-02-002-C082-(ICT)-Information and Communication Technologies Manholes** |  | 2027-05-01 | 2027-05-06 |  |  |  |  |  |  |  |  |  |
| RHD4CZ2C082ICT5100 |  | Excavation for Manholes for ICT Network - (RD-C-8 /2)-Z2-C082-ICT | 3d | 2027-05-01 | 2027-05-03 | RHD4ENSDZ2APPICT200, RHD4CZ2C082ICT2100 | Skilled labor [6.86 h]; Unskilled Labor [6.86 h]; Equipment Opreator [5.45 h]; Excavator-Poclain [2.72 h]; Dump Truck [2.72 h]; Manhole Type 1 - ICT [0.75 nr] | 4,044.75 | C082 | Z2 | CONS | ICT | Excavation | AFT |
| RHD4CZ2C082ICT5200 |  | Installation of Manholes for ICT Network - (RD-C-8 /2)-Z2-C082-ICT | 3d | 2027-05-04 | 2027-05-06 | RHD4PRSHLDOSICT1200, RHD4PRSHLSTAGICT1200, RHD4CZ2C082ICT5100 | Skilled labor [6.86 h]; Unskilled Labor [6.86 h]; Equipment Opreator [2.72 h]; Boom Truck [2.72 h]; Manhole Type 1 - ICT [4.25 nr] | 22,920.25 | C082 | Z2 | CONS | ICT | Installation | AFT |
|  | 863 | **RHD4-02-002-Z2-C082-Landscape Network - LS** |  |  |  |  |  |  |  |  |  |  |  |  |
|  | 864 | **RHD4-02-002-C082-(LS)-Landscape Lighting cables** |  |  |  |  |  |  |  |  |  |  |  |  |
|  | 865 | **RHD4-02-002-C082-(LS)-Landscape Feeder Pillars** |  |  |  |  |  |  |  |  |  |  |  |  |
|  | 866 | **RHD4-02-002-C082-(LS)-Landscape Bollard Poles** |  |  |  |  |  |  |  |  |  |  |  |  |
|  | 867 | **RHD4-02-002-C082-(LS)-Landscape Feeder Pillars Earthing** |  |  |  |  |  |  |  |  |  |  |  |  |
|  | 876 | **RHD4-02-002-Z2-C082-Security Network - CCTV** |  | 2027-05-29 | 2027-07-12 |  |  |  |  |  |  |  |  |  |
|  | 877 | **RHD4-02-002-C082-(CCTV)-Civil Works** |  | 2027-05-29 | 2027-06-08 |  |  |  |  |  |  |  |  |  |
| RHD4CZ2C082CCTV2100 |  | Civil Works for Security Network - (RD-C-8 /2)-Z2-C082-CCTV | 10d | 2027-05-29 | 2027-06-08 | RHD4CZ2C082ICT2400, RHD4CZ2C082TC2400 | Skilled labor [435.68 h]; Unskilled Labor [871.2 h]; Equipment Opreator [435.68 h]; Excavator-Poclain [108.9 h]; Dump Truck [108.9 h]; Civil works Digging, trenching, laying pipes Meter with supply and installation of Manholes and for power feeding sources related to all towers and poles – (from 35-meter pole to control room and from related UPS camersa distribution boards till overall 2 [300 m] | 34,800 | C082 | Z2 | CONS | CCTV | Civil Works | AFT |

| ID | WBS | Activity | Duration | Start | Finish | Predecessors | Resources | Cost | RDH4-01-001-Road and Block Names-1 | RDH4-01-001-Zones-1 | RDH4-01-001-Phases-1 | RDH4-01-001-Networks-1 | RDH4-01-001-Work Method-1 | RDH4-01-001-MENEM |
| --- | --- | --- | --- | --- | --- | --- | --- | --- | --- | --- | --- | --- | --- | --- |
|  | 878 | **RHD4-02-002-C082-(CCTV)-CCTV Poles** |  | 2027-06-09 | 2027-06-20 |  |  |  |  |  |  |  |  |  |
| RHD4CZ2C082CCTV1100 |  | Excavation for RC Base for CCTV Poles for Security Network - (RD-C-8 /2)-Z2-C082-CCTV | 2d | 2027-06-09 | 2027-06-10 | RHD4ENSDZ2APPCCTV210, RHD4CZ2C082CCTV2100 | Skilled labor [4.32 h]; Unskilled Labor [4.32 h]; Equipment Opreator [8.64 h]; Excavator-Poclain [2.18 h]; Dump Truck [2.18 h]; 25 Meters pole for CCTV Cameras [0.1 nr] | 14,090.2 | C082 | Z2 | CONS | CCTV | Excavation | AFT |
| RHD4CZ2C082CCTV1200 |  | Installation for RC Base for CCTV Poles for Security Network - (RD-C-8 /2)-Z2-C082-CCTV | 2d | 2027-06-12 | 2027-06-13 | RHD4CZ2C082CCTV1100 | Skilled labor [4.32 h]; Unskilled Labor [4.32 h]; Equipment Opreator [8.64 h]; Excavator-Poclain [2.18 h]; Dump Truck [2.18 h]; 25 Meters pole for CCTV Cameras [0.25 nr] | 35,225.5 | C082 | Z2 | CONS | CCTV | RC Base | AFT |
| RHD4CZ2C082CCTV1300 |  | Backfill for RC Base for CCTV Poles for Security Network - (RD-C-8 /2)-Z2-C082-CCTV | 2d | 2027-06-14 | 2027-06-15 | RHD4CZ2C082CCTV1200 | Skilled labor [2.88 h]; Unskilled Labor [2.88 h]; Equipment Opreator [5.44 h]; Excavator-Poclain [1.42 h]; Dump Truck [1.42 h]; 25 Meters pole for CCTV Cameras [0.05 nr] | 7,045.1 | C082 | Z2 | CONS | CCTV | Backfill | AFT |
| RHD4CZ2C082CCTV1400 |  | Installation for CCTV Poles for Security Network - (RD-C-8 /2)-Z2-C082-CCTV | 2d | 2027-06-16 | 2027-06-17 | RHD4PRSHLDOSCCTV1000, RHD4PRSHLSTACCTV1000, RHD4CZ2C082CCTV1300 | Skilled labor [7.2 h]; Unskilled Labor [14.56 h]; Electrician [7.2 h]; Equipment Opreator [7.2 h]; Boom Truck [3.59 h]; 25 Meters pole for CCTV Cameras [0.6 nr] | 84,541.2 | C082 | Z2 | CONS | CCTV | Installation | AFT |
| RHD4CZ2C082CCTV1500 |  | Protection post Installation for CCTV Poles for Security Network - (RD-C-8 /2)-Z2-C082-CCTV | 2d | 2027-06-19 | 2027-06-20 | RHD4CZ2C082CCTV1400 | Skilled labor [21.76 h]; Unskilled Labor [43.52 h]; Supply and Installation of minimum 4 Protection Post for each pole or tower with pipe ?220*6mm THK. [1 nr] | 4,903 | C082 | Z2 | CONS | CCTV | Protection post | AFT |
|  | 879 | **RHD4-02-002-C082-(CCTV)-Camera** |  | 2027-06-23 | 2027-06-24 |  |  |  |  |  |  |  |  |  |
| RHD4CZ2C082CCTV3100 |  | Installation for Cameras for Security Network - (RD-C-8 /2)-Z2-C082-CCTV | 2d | 2027-06-23 | 2027-06-24 | RHD4PRSHLDOSCCTV1100, RHD4PRSHLSTACCTV1100, RHD4CZ2C082CCTV1400, RHD4CZ2C082CCTV4100, RHD4CZ2C082CCTV4200, RHD4CZ2C082CCTV1500 | Unskilled Labor [54.4 h]; Electrician [27.2 h]; Outdoor Camera, 5MP resolution, day/night, fixed bullet camera providing Forensic WDR. [2 nr]; Outdoor PTZ with IR, HDTV 1080 and 31x optical, 12x digital, total 372x zoom, H264/265 with Motion JPEG. [2 nr] | 72,676 | C082 | Z2 | CONS | CCTV | Installation | AFT |
|  | 880 | **RHD4-02-002-C082-(CCTV)-Power and Infrastructure** |  | 2027-06-19 | 2027-06-22 |  |  |  |  |  |  |  |  |  |
| RHD4CZ2C082CCTV4100 |  | Installation of Power outlet, UPS and midspan for PTZ Camerafor Cameras for Security Network - (RD-C-8 /2)-Z2-C082-CCTV | 2d | 2027-06-19 | 2027-06-20 | RHD4PRSHLDOSCCTV1300, RHD4PRSHLSTACCTV1300, RHD4CZ2C082CCTV1400 | Skilled labor [13.12 h]; Unskilled Labor [52.32 h]; Electrician [26.08 h]; Equipment Opreator [26.08 h]; Excavator-Poclain [6.53 h]; Dump Truck [6.53 h]; Outdoor ready IP66-rated midspan for PTZ Camera (The outdoor- ready midspan should be IP66/IP67- and NEMA 4X-rated [2 nr]; 1.2KVA Industrial type UPS located at FEC remote poles [2 nr] | 18,206 | C082 | Z2 | CONS | CCTV | Power | AFT |
| RHD4CZ2C082CCTV4200 |  | Short Range Wireless PoP wireless Bridgefor CCTV Poles for Security Network - (RD-C-8 /2)-Z2-C082-CCTV | 2d | 2027-06-21 | 2027-06-22 | RHD4CZ2C082CCTV4100 | Skilled labor [21.76 h]; Unskilled Labor [43.52 h]; Electrician [21.76 h]; Equipment Opreator [43.52 h]; Excavator-Poclain [10.89 h]; Dump Truck [10.89 h]; Short Range wireless point to point wireless bridge [4 nr] | 58,548 | C082 | Z2 | CONS | CCTV | Wireless Pop | AFT |
|  | 882 | **RHD4-02-002-C082-(CCTV)-CCTV Panels and Components** |  | 2027-06-26 | 2027-07-12 |  |  |  |  |  |  |  |  |  |
| RHD4CZ2C082CCTV6100 |  | Installation for CCTV Panels for Security Network - (RD-C-8 /2)-Z2-C082-CCTV | 15d | 2027-06-26 | 2027-07-12 | RHD4PRSHLDOSCCTV1200, RHD4PRSHLSTACCTV1200, RHD4PRLOLSTACCTV1001, RHD4CZ2C082CCTV4200, RHD4CZ2C082CCTV3100 | Skilled labor [326.72 h]; Unskilled Labor [980.16 h]; Electrician [326.72 h]; Pole mounted Filed Equipment cabinet (FEC) , with fan and ventilation, NEMEX 4X ,door, minimum size (600x600x400mm) , the cabinet/enclosurE [2 nr]; 8 Port Industrial PoE Switch 10/1000BaseT (-40 deg to +70 deg. Celsius) for remote poles and as specifiedin item 15. [1 nr]; UTP CAT6 Patch Cord , connect the industrial switch with the cameras, and radio wireless antenna [12 nr] | 32,584 | C082 | Z2 | CONS | CCTV | Equipment | AFT |
|  | 324 | **RHD4-02-002-Z1** |  | 2026-10-19 | 2028-04-03 |  |  |  |  |  |  |  |  |  |
|  | 514 | **RHD4-02-002-Z1-L101** |  | 2026-10-19 | 2028-03-22 |  |  |  |  |  |  |  |  |  |
|  | 545 | **RHD4-02-002-Z1-L101-Crossings Sewage Network - SWCr** |  |  |  |  |  |  |  |  |  |  |  |  |
|  | 555 | **RHD4-02-002-L101-(SWCr)-MH Works - 1200 mm diameter** |  |  |  |  |  |  |  |  |  |  |  |  |
|  | 556 | **RHD4-02-002-L101-(SWCr)-MH Works - 1200 mm diameter with Back drop** |  |  |  |  |  |  |  |  |  |  |  |  |
|  | 551 | **RHD4-02-002-L101-(SWCr)-UPVC Pipes - 200 mm diameter** |  |  |  |  |  |  |  |  |  |  |  |  |
|  | 589 | **RHD4-02-002-Z1-L101-Crossings Potable Network - PTCr** |  |  |  |  |  |  |  |  |  |  |  |  |
|  | 590 | **RHD4-02-002-L101-(PTCr)-HDPE Pipes - 110 mm diameter** |  |  |  |  |  |  |  |  |  |  |  |  |
|  | 595 | **RHD4-02-002-L101-(PTCr)-Gate Valves (Direct Buried)** |  |  |  |  |  |  |  |  |  |  |  |  |
|  | 636 | **RHD4-02-002-Z1-L101-Crossings Irrigation Network - IRRC** |  |  |  |  |  |  |  |  |  |  |  |  |
|  | 641 | **RHD4-02-002-L101-(IRRC)-HDPE Pipes - 315 mm diameter** |  |  |  |  |  |  |  |  |  |  |  |  |
|  | 637 | **RHD4-02-002-L101-(IRRC)-HDPE Pipes - 160 mm diameter** |  |  |  |  |  |  |  |  |  |  |  |  |
|  | 645 | **RHD4-02-002-L101-(IRRC)-Gate Valves (Direct Buried)** |  |  |  |  |  |  |  |  |  |  |  |  |
|  | 646 | **RHD4-02-002-L101-(IRRC)-Butterfly Valve Chamber** |  |  |  |  |  |  |  |  |  |  |  |  |
|  | 647 | **RHD4-02-002-L101-(IRRC)-Butterfly Valves** |  |  |  |  |  |  |  |  |  |  |  |  |
|  | 693 | **RHD4-02-002-Z1-L101-Road Works - RD** |  | 2027-04-06 | 2028-03-22 |  |  |  |  |  |  |  |  |  |
|  | 694 | **RHD4-02-002-L101-(RD)-Subgrade** |  | 2027-04-06 | 2027-04-19 |  |  |  |  |  |  |  |  |  |
| RHD4CZ1L101RD1100 |  | Supply, lay and compaction subgrade compacted thickness 300 mm for Roads - (RD-L-10/1)-Z1-L101-RD | 12d | 2027-04-06 | 2027-04-19 | RHD4ENSDZ1APPRD220, RHD4ENSDZ1APPEW100, RHD4PRSHLDOSSW1000, RHD4PRSHLDOSST1701, RHD4PRSHLSTAGST1700, RHD4CZ1L101ST1505, RHD4CZ1L101ST7300, RHD4CZ1L101ICT3400 | Skilled labor [125.89 h]; Unskilled Labor [251.78 h]; Electrician [125.89 h]; Equipment Opreator [860 h]; Water Truck [41.6 h]; Roller compactor [62.95 h]; Grader [125.89 h]; Dump Truck [629.6 h]; Subgrade [6055.96 m3] | 115,063.24 | L101 | Z1 | CONS | RD | Subgrade | bef |

| ID | WBS | Activity | Duration | Start | Finish | Predecessors | Resources | Cost | RDH4-01-001-Road and Block Names-1 | RDH4-01-001-Zones-1 | RDH4-01-001-Phases-1 | RDH4-01-001-Networks-1 | RDH4-01-001-Work Method-1 | RDH4-01-001-MENEM |
| --- | --- | --- | --- | --- | --- | --- | --- | --- | --- | --- | --- | --- | --- | --- |
|  | 695 | **RHD4-02-002-L101-(RD)-Aggregate Base Course** |  | 2027-04-20 | 2027-04-29 |  |  |  |  |  |  |  |  |  |
| RHD4CZ1L101RD2100 |  | Supply, lay and compaction Aggregate base course compacted thickness 300 mmfor Roads - (RD-L-10/1)-Z1-L101-RD | 9d | 2027-04-20 | 2027-04-29 | RHD4PRSHLDOSRD1000, RHD4PRSHLSTAGRD1000, RHD4CZ1L101RD1100 | Skilled labor [46.61 h]; Unskilled Labor [93.22 h]; Equipment Opreator [590.4 h]; Water Truck [30.82 h]; Roller compactor [93.22 h]; Grader [93.22 h]; Dump Truck [373.1 h]; Aggregate Base Courses [3803.75 m3] | 216,813.75 | L101 | Z1 | CONS | RD | ABC | bef |
|  | 696 | **RHD4-02-002-L101-(RD)-Bituminous base course Two Layers, including (MC1)&(RC2)** |  | 2027-05-01 | 2028-02-03 |  |  |  |  |  |  |  |  |  |
| RHD4CZ1L101RD3100 |  | Supply, lay and Asphaltic base course including Prime Coat (MC1) for 1st Layer - (RD-L-10/1)-Z1-L101-RD | 2d | 2027-05-01 | 2027-05-02 | RHD4PRSHLDOSRD1100, RHD4ENMSASPH2000, RHD4CZ9L02RD3100, RHD4ENMSASPH2010, RHD4PRSHLSTAGRD1100, RHD4CZ1L101RD2100 | Skilled labor [14.16 h]; Unskilled Labor [84.73 h]; Equipment Opreator [211.71 h]; Bobcat [14.16 h]; Roller compactor [14.16 h]; Asphalt Paver [14.16 h]; Rubber Compactor [28.21 h]; MC1/RC2 Sprinkler [14.16 h]; Dump Truck [127.09 h]; Bituminous base course (Grading I - Class A), including Prime coat (MC1) & tack coate (RC2) [516.46 m3] | 246,867.88 | L101 | Z1 | CONS | RD | 150 mm | AFT |
| RHD4CZ1L101RD3200 |  | Supply, lay and Asphaltic base course including Tack Coat (RC2) for 2nd Layer - (RD-L-10/1)-Z1-L101-RD | 2d | 2028-02-02 | 2028-02-03 | RHD4PRSHLDOSRD1100, RHD4PRSHLSTAGRD1100, RHD4CZ1L101RD3100, RHD4CZ1L101CCTV6100 | Skilled labor [14.16 h]; Unskilled Labor [84.73 h]; Equipment Opreator [211.71 h]; Bobcat [14.16 h]; Roller compactor [14.16 h]; Asphalt Paver [14.16 h]; Rubber Compactor [28.21 h]; MC1/RC2 Sprinkler [14.16 h]; Dump Truck [127.09 h]; Bituminous base course (Grading I - Class A), including Prime coat (MC1) & tack coate (RC2) [516.46 m3] | 246,867.88 | L101 | Z1 | CONS | RD | 150 mm | AFT |
|  | 698 | **RHD4-02-002-L101-(RD)-Precast Concrete Curb** |  | 2028-02-05 | 2028-02-10 |  |  |  |  |  |  |  |  |  |
| RHD4CZ1L101RD5100 |  | Supply and installation Precast Concrete Kerb for Roads - (RD-L-10/1)-Z1-L101-RD | 6d | 2028-02-05 | 2028-02-10 | RHD4PRSHLDOSRD1200, RHD4ENMSRD2000, RHD4ENMSRD2010, RHD4PRSHLSTAGRD1200, RHD4CZ1L101RD3200 | Mason [186.77 h]; Skilled labor [62.29 h]; Unskilled Labor [186.77 h]; Equipment Opreator [124.59 h]; Bobcat [62.29 h]; Concrete Mixer Truck [62.29 h]; Precast Concrete Curbstone, type K1 [1618.7 m]; Precast Flush concrete Curbstone K3 [954.41 m] | 141,521.27 | L101 | Z1 | CONS | RD | Curbs | AFT |
|  | 701 | **RHD4-02-002-L101-(RD)-Traffic Signage** |  | 2028-02-12 | 2028-02-19 |  |  |  |  |  |  |  |  |  |
| RHD4CZ1L101RD8100 |  | Installation of Traffic Signage for Road Network - (RD-L-10/1)-Z1-L101-RD | 7d | 2028-02-12 | 2028-02-19 | RHD4PRSHLDOSRD1600, RHD4PRSHLSTAGRD1600, RHD4CZ1L101RD5100, RHD4CZ1L101TC2400, RHD4CZ1L101ICT2400 | Skilled labor [152.46 h]; Unskilled Labor [76.23 h]; Electrician [22.87 h]; Equipment Opreator [24.39 h]; Boom Truck [15.25 h]; Concrete Mixer Truck [9.15 h]; Traffic signs, ground mounted, 1 Sheet Aluminium, (breakaway)Single post [20 nr] | 24,520 | L101 | Z1 | CONS | RD | Traffic Signage | AFT |
|  | 699 | **RHD4-02-002-L101-(RD)-Precast Interlocking Block Pavers** |  | 2028-02-20 | 2028-03-12 |  |  |  |  |  |  |  |  |  |
| RHD4CZ1L101RD6100 |  | Interlocking block pavers for sidewalk-footpath for Side walks and Parking areas - (RD-L-10/1)-Z1-L101-RD | 15d | 2028-02-20 | 2028-03-12 | RHD4PRSHLDOSRD1300, RHD4PRSHLDOSRD1400, RHD4ENMSRD2000, RHD4ENMSRD2010, RHD4PRSHLSTAGRD1300, RHD4PRSHLSTAGRD1400, RHD4CZ1L101RD8100 | Skilled labor [307.54 h]; Unskilled Labor [461.32 h]; Equipment Opreator [499.76 h]; Boom Truck [153.77 h]; Bobcat [153.77 h]; Concrete Mixer Truck [153.77 h]; Water Truck [38.44 h]; Interlock 80 mm thick Pavers for parking including sand fill [3530 m2] | 261,220 | L101 | Z1 | CONS | RD | Interlocking | AFT |
|  | 697 | **RHD4-02-002-L101-(RD)-Bituminous concrete wearing course including tack coat (RC2)** |  | 2028-03-13 | 2028-03-14 |  |  |  |  |  |  |  |  |  |
| RHD4CZ1L101RD4100 |  | Supply, lay and compaction Asphaltic wearing course including tack Coat (RC2)for Road Network - (RD-L-10/1)-Z1-L101-RD | 2d | 2028-03-13 | 2028-03-14 | RHD4CZ1L101RD5100, RHD4CZ1L101RD6100 | Skilled labor [15.57 h]; Unskilled Labor [93.55 h]; Equipment Opreator [233.71 h]; Bobcat [15.57 h]; Roller compactor [15.57 h]; Asphalt Paver [15.57 h]; Rubber Compactor [31.15 h]; MC1/RC2 Sprinkler [15.57 h]; Dump Truck [140.27 h]; Bituminous concrete wearing course, (Grading I - Class A), including tack coat (RC2) [743.24 m3] | 403,579.32 | L101 | Z1 | CONS | RD | 50 mm | AFT |
|  | 700 | **RHD4-02-002-L101-(RD)-Pavement Marking** |  | 2028-03-15 | 2028-03-22 |  |  |  |  |  |  |  |  |  |
| RHD4CZ1L101RD7100 |  | Pavement Markings for Road Network - (RD-L-10/1)-Z1-L101-RD | 7d | 2028-03-15 | 2028-03-22 | RHD4PRSHLDOSRD1500, RHD4PRSHLSTAGRD1500, RHD4CZ1L101RD4100 | Skilled labor [75.69 h]; Unskilled Labor [151.27 h]; Equipment Opreator [75.69 h]; Road Marking Machine [75.69 h]; Retroreflective Thermoplastic White Traffic Markings [351.6 m2]; Retroreflective Thermoplastic Yellow, Traffic Markings [687.65 m2]; Rumble strip [82 m]; Retroreflective raised pavement markers (cat eyes) [654 nr]; Ceramic raised pavement markers [3 nr] | 64,613.75 | L101 | Z1 | CONS | RD | Pavement Marking | AFT |
|  | 518 | **RHD4-02-002-Z1-L101-Storm Network - ST** |  | 2027-03-04 | 2027-06-06 |  |  |  |  |  |  |  |  |  |
|  | 537 | **RHD4-02-002-L101-(ST)-MH Works - 2000 mm diameter** |  |  |  |  |  |  |  |  |  |  |  |  |
|  | 536 | **RHD4-02-002-L101-(ST)-MH Works - 1500 mm diameter** |  | 2027-03-28 | 2027-05-25 |  |  |  |  |  |  |  |  |  |
| RHD4CZ1L101ST3101 |  | Excavation and PC Blinding works for MH 1500 mm - (RD-L-10/1)-Z1-L101-ST | 4d | 2027-03-28 | 2027-03-31 | RHD4ENSDZ1APPST110, RHD4ENMSST2000, RHD4CZ1L101ST1505 | Skilled labor [43.56 h]; Unskilled Labor [43.56 h]; Equipment Opreator [69.7 h]; Excavator-Poclain [43.56 h]; Water Truck [4.36 h]; Dump Truck [21.78 h]; MH (1500mm Diameter) - ST - depth 2.51 - 3.5m [2 nr] | 33,004 | L101 | Z1 | CONS | ST | Excavation | bef |
| RHD4CZ1L101ST3201 |  | Installation of Base for MH 1500 mm - (RD-L-10/1)-Z1-L101-ST | 4d | 2027-04-01 | 2027-04-05 | RHD4PRSHLSTAGST1600, RHD4CZ1L101ST3101 | Skilled labor [43.56 h]; Unskilled Labor [43.56 h]; Equipment Opreator [17.42 h]; Boom Truck [8.71 h]; Concrete Mixer Truck [8.71 h]; MH (1500mm Diameter) - ST - depth 2.51 - 3.5m [2 nr] | 33,004 | L101 | Z1 | CONS | ST | Installing Base | bef |
| RHD4CZ1L101ST3301 |  | MH Ring and C.Slab works and Backfilling works for MH 1500 mm - (RD-L-10/1)-Z1-L101-ST | 4d | 2027-04-06 | 2027-04-10 | RHD4PRSHLDOSST1600, RHD4CZ1L101ST3201 | Skilled labor [43.56 h]; Unskilled Labor [43.56 h]; Equipment Opreator [30.49 h]; Boom Truck [17.42 h]; Concrete Mixer Truck [13.07 h]; MH (1500mm Diameter) - ST - depth 2.51 - 3.5m [2.8 nr] | 46,205.6 | L101 | Z1 | CONS | ST | Installing Rings | bef |
| RHD4CZ1L101ST3401 |  | Steel Cover for MH 1500 mm - (RD-L-10/1)-Z1-L101-ST | 3d | 2027-05-13 | 2027-05-20 | RHD4PRSHLDOSST1700, RHD4PRSHLSTAGST1700, RHD4CZ1L101ST1500, RHD4CZ1L101ST6100 | Skilled labor [29.08 h]; Unskilled Labor [58.05 h]; Equipment Opreator [5.77 h]; Boom Truck [5.77 h]; MH (1500mm Diameter) - ST - depth 2.51 - 3.5m [0.4 nr] | 6,600.8 | L101 | Z1 | CONS | ST | Steel Cover | bef |
| RHD4CZ1L101ST3501 |  | Finishing, Benching, Testing works for MH 1500 mm - (RD-L-10/1)-Z1-L101-ST | 4d | 2027-05-22 | 2027-05-25 | RHD4CZ1L101ST3401 | Skilled labor [43.56 h]; Unskilled Labor [87.12 h]; Plumber [43.56 h]; Equipment Opreator [8.71 h]; Water Truck [8.71 h]; MH (1500mm Diameter) - ST - depth 2.51 - 3.5m [0.8 nr] | 13,201.6 | L101 | Z1 | CONS | ST | Benching | bef |
|  | 535 | **RHD4-02-002-L101-(ST)-MH Works - 1200 mm diameter** |  | 2027-05-26 | 2027-06-06 |  |  |  |  |  |  |  |  |  |
| RHD4CZ1L101ST3100 |  | Excavation and PC Blinding works for MH 1200 mm - (RD-L-10/1)-Z1-L101-ST | 2d | 2027-05-26 | 2027-05-27 | RHD4ENSDZ1APPST110, RHD4ENMSST2000, RHD4ENMSST2010, RHD4CZ1L101ST3501 | Skilled labor [14.48 h]; Unskilled Labor [14.48 h]; Equipment Opreator [23.2 h]; Excavator-Poclain [14.48 h]; Water Truck [1.42 h]; Dump Truck [7.3 h]; MH (1200mm Diameter) - ST - depth 1.50 - 2.5m [1 nr] | 10,323 | L101 | Z1 | CONS | ST | Excavation | bef |
| RHD4CZ1L101ST3200 |  | Installation of Base for MH 1200 mm - (RD-L-10/1)-Z1-L101-ST | 2d | 2027-05-29 | 2027-05-30 | RHD4PRSHLSTAGST1600, RHD4CZ1L101ST3100, RHD4CZ1L101ST3201 | Skilled labor [14.48 h]; Unskilled Labor [14.48 h]; Equipment Opreator [5.77 h]; Boom Truck [2.94 h]; Concrete Mixer Truck [2.94 h]; MH (1200mm Diameter) - ST - depth 1.50 - 2.5m [1 nr] | 10,323 | L101 | Z1 | CONS | ST | Installing Base | bef |
| RHD4CZ1L101ST3300 |  | MH Ring and C.Slab works and Backfilling works for MH 1200 mm - (RD-L-10/1)-Z1-L101-ST | 2d | 2027-05-31 | 2027-06-01 | RHD4PRSHLDOSST1600, RHD4CZ1L101ST3200, RHD4CZ1L101ST3301 | Skilled labor [14.48 h]; Unskilled Labor [14.48 h]; Equipment Opreator [10.13 h]; Boom Truck [5.77 h]; Concrete Mixer Truck [4.36 h]; MH (1200mm Diameter) - ST - depth 1.50 - 2.5m [1.4 nr] | 14,452.2 | L101 | Z1 | CONS | ST | Installing Rings | bef |
| RHD4CZ1L101ST3400 |  | Steel Cover for MH 1200 mm - (RD-L-10/1)-Z1-L101-ST | 2d | 2027-06-02 | 2027-06-03 | RHD4PRSHLDOSST1700, RHD4PRSHLSTAGST1700, RHD4CZ1L101ST1500, RHD4CZ1L101ST6100, RHD4CZ1L101ST3401, RHD4CZ1L101ST3300 | Skilled labor [14.48 h]; Unskilled Labor [29.08 h]; Equipment Opreator [2.94 h]; Boom Truck [2.94 h]; MH (1200mm Diameter) - ST - depth 1.50 - 2.5m [0.2 nr] | 2,064.6 | L101 | Z1 | CONS | ST | Steel Cover | bef |
| RHD4CZ1L101ST3500 |  | Finishing, Benching, Testing works for MH 1200 mm - (RD-L-10/1)-Z1-L101-ST | 2d | 2027-06-05 | 2027-06-06 | RHD4CZ1L101ST3400, RHD4CZ1L101ST3501 | Skilled labor [14.48 h]; Unskilled Labor [29.08 h]; Plumber [14.48 h]; Equipment Opreator [2.94 h]; Water Truck [2.94 h]; MH (1200mm Diameter) - ST - depth 1.50 - 2.5m [0.4 nr] | 4,129.2 | L101 | Z1 | CONS | ST | Benching | bef |

| ID | WBS | Activity | Duration | Start | Finish | Predecessors | Resources | Cost | RDH4-01-001-Road and Block Names-1 | RDH4-01-001-Zones-1 | RDH4-01-001-Phases-1 | RDH4-01-001-Networks-1 | RDH4-01-001-Work Method-1 | RDH4-01-001-MENEM |
| --- | --- | --- | --- | --- | --- | --- | --- | --- | --- | --- | --- | --- | --- | --- |
|  | 525 | **RHD4-02-002-L101-(ST)-GRP Pipes - 1000 mm diameter** |  |  |  |  |  |  |  |  |  |  |  |  |
|  | 524 | **RHD4-02-002-L101-(ST)-GRP Pipes - 900 mm diameter** |  | 2027-03-04 | 2027-03-27 |  |  |  |  |  |  |  |  |  |
| RHD4CZ1L101ST1105 |  | Excavation works for GRP Pipe Line 900 mm - (RD-L-10/1)-Z1-L101-ST | 2d | 2027-03-04 | 2027-03-06 | RHD4ENSDZ1APPST110, RHD4CZ1L101RW2000, RHD4PRSHLDOSST1300, RHD4CZ5L016ST4600, RHD4CZ6A015ST4600, RHD4CZ5C061ST7500, RHD4CZ4L014TC3400, RHD4CZ5L016ST1502 | Skilled labor [21.67 h]; Unskilled Labor [21.67 h]; Equipment Opreator [26.03 h]; Excavator-Poclain [21.67 h]; Dump Truck [4.36 h]; GRP (900mm Diameter) - ST - Depth: 1.51m - 2.5m [59.7 m] | 47,580.9 | L101 | Z1 | CONS | ST | Excavation | bef |
| RHD4CZ1L101ST1205 |  | Bedding works for GRP Pipe Line 900 mm - (RD-L-10/1)-Z1-L101-ST | 2d | 2027-03-18 | 2027-03-20 | RHD4CZ1L101ST1105, RHD4CZ6A02PT3200, RHD4CZ4L014ICT3400, RHD4CZ5L016ST1509, RHD4PRSHLSTAGICT1000 | Skilled labor [21.67 h]; Unskilled Labor [43.34 h]; Equipment Opreator [43.34 h]; Excavator-Poclain [21.67 h]; Dump Truck [21.67 h]; GRP (900mm Diameter) - ST - Depth: 1.51m - 2.5m [19.9 m] | 15,860.3 | L101 | Z1 | CONS | ST | Bedding | bef |
| RHD4CZ1L101ST1305 |  | Installing for GRP Pipe Line 900 mm - (RD-L-10/1)-Z1-L101-ST | 2d | 2027-03-21 | 2027-03-22 | RHD4PRSHLSTAGST1000, RHD4CZ1L101ST1205, RHD4PRSHLDOSST1600, RHD4PRSHLPOST1000, RHD4PRSHLDOSST1000 | Unskilled Labor [28.86 h]; Plumber [14.48 h]; GRP (900mm Diameter) - ST - Depth: 1.51m - 2.5m [159.19 m] | 126,876.02 | L101 | Z1 | CONS | ST | Installation | bef |
| RHD4CZ1L101ST1405 |  | Primary Test for GRP Pipe Line 900 mm - (RD-L-10/1)-Z1-L101-ST | 2d | 2027-03-23 | 2027-03-24 | RHD4CZ1L101ST1305 | Unskilled Labor [10.78 h]; Plumber [10.78 h]; Equipment Opreator [10.78 h]; Water Truck [10.78 h]; GRP (900mm Diameter) - ST - Depth: 1.51m - 2.5m [79.59 m] | 63,433.23 | L101 | Z1 | CONS | ST | Primary Test | bef |
| RHD4CZ1L101ST1505 |  | Backfilling and warning tape works for GRP Pipe Line 900 mm - (RD-L-10/1)-Z1-L101-ST | 2d | 2027-03-25 | 2027-03-27 | RHD4CZ1L101ST1405, RHD4CZ2L102ST3502, RHD4CZ6C052ST8500 | Skilled labor [21.67 h]; Unskilled Labor [43.34 h]; Equipment Opreator [43.34 h]; Excavator-Poclain [21.67 h]; Dump Truck [21.67 h]; GRP (900mm Diameter) - ST - Depth: 1.51m - 2.5m [79.59 m] | 63,433.23 | L101 | Z1 | CONS | ST | Backfilling | bef |
|  | 523 | **RHD4-02-002-L101-(ST)-GRP Pipes - 800 mm diameter** |  | 2027-03-28 | 2027-04-07 |  |  |  |  |  |  |  |  |  |
| RHD4CZ1L101ST1104 |  | Excavation works for GRP Pipe Line 800 mm - (RD-L-10/1)-Z1-L101-ST | 2d | 2027-03-28 | 2027-03-29 | RHD4ENSDZ1APPST110, RHD4CZ1L101ST1505, RHD4CZ6A02PT4500 | Skilled labor [7.95 h]; Unskilled Labor [7.95 h]; Equipment Opreator [9.6 h]; Excavator-Poclain [7.95 h]; Dump Truck [1.6 h]; GRP (800mm Diameter) - ST - Depth: 1.51m - 2.5m [21.94 m] | 15,403.28 | L101 | Z1 | CONS | ST | Excavation | bef |
| RHD4CZ1L101ST1204 |  | Bedding works for GRP Pipe Line 800 mm - (RD-L-10/1)-Z1-L101-ST | 2d | 2027-03-30 | 2027-03-31 | RHD4CZ1L101ST1104, RHD4CZ1L101ST1205, RHD4CZ6C052ST7500, RHD4CZ5RA07SW2500, RHD4CZ5RA07SW3500 | Skilled labor [7.95 h]; Unskilled Labor [15.9 h]; Equipment Opreator [15.9 h]; Excavator-Poclain [7.95 h]; Dump Truck [7.95 h]; GRP (800mm Diameter) - ST - Depth: 1.51m - 2.5m [7.31 m] | 5,134.43 | L101 | Z1 | CONS | ST | Bedding | bef |
| RHD4CZ1L101ST1304 |  | Installing for GRP Pipe Line 800 mm - (RD-L-10/1)-Z1-L101-ST | 2d | 2027-04-01 | 2027-04-03 | RHD4PRSHLSTAGST1000, RHD4CZ1L101ST1204, RHD4CZ1L101ST1305, RHD4PRSHLDOSST1600, RHD4PRSHLPOST1000, RHD4PRSHLDOSST1000 | Unskilled Labor [10.67 h]; Plumber [5.34 h]; GRP (800mm Diameter) - ST - Depth: 1.51m - 2.5m [58.51 m] | 41,075.42 | L101 | Z1 | CONS | ST | Installation | bef |
| RHD4CZ1L101ST1404 |  | Primary Test for GRP Pipe Line 800 mm - (RD-L-10/1)-Z1-L101-ST | 2d | 2027-04-04 | 2027-04-05 | RHD4CZ1L101ST1304, RHD4CZ7C013IRR1504, RHD4CZ5A014MV2300, RHD4CZ4L014ST3500, RHD4CZ5C061SW5200, RHD4CZ5C051SW3501 | Unskilled Labor [4 h]; Plumber [4 h]; Equipment Opreator [4 h]; Water Truck [4 h]; GRP (800mm Diameter) - ST - Depth: 1.51m - 2.5m [29.25 m] | 20,533.5 | L101 | Z1 | CONS | ST | Primary Test | bef |
| RHD4CZ1L101ST1504 |  | Backfilling and warning tape works for GRP Pipe Line 800 mm - (RD-L-10/1)-Z1-L101-ST | 2d | 2027-04-06 | 2027-04-07 | RHD4CZ1L101ST1404, RHD4CZ1L101ST1505, RHD4CTUN1Z5STG31070 | Skilled labor [7.95 h]; Unskilled Labor [15.9 h]; Equipment Opreator [15.9 h]; Excavator-Poclain [7.95 h]; Dump Truck [7.95 h]; GRP (800mm Diameter) - ST - Depth: 1.51m - 2.5m [29.25 m] | 20,533.5 | L101 | Z1 | CONS | ST | Backfilling | bef |
|  | 522 | **RHD4-02-002-L101-(ST)-GRP Pipes - 700 mm diameter** |  | 2027-04-08 | 2027-04-19 |  |  |  |  |  |  |  |  |  |
| RHD4CZ1L101ST1103 |  | Excavation works for GRP Pipe Line 700 mm - (RD-L-10/1)-Z1-L101-ST | 2d | 2027-04-08 | 2027-04-10 | RHD4ENSDZ1APPST110, RHD4CZ1L101ST1104, RHD4CZ1L101ST1504, RHD4CZ5A014IRR3203, RHD4CZ1C081TC3400, RHD4CZ6C052ST3501, RHD4CZ2C082ST3502 | Skilled labor [4 h]; Unskilled Labor [4 h]; Equipment Opreator [4.9 h]; Excavator-Poclain [4 h]; Dump Truck [0.8 h]; GRP (700mm Diameter) - ST - Depth: 1.51m - 2.5m [11.19 m] | 6,680.43 | L101 | Z1 | CONS | ST | Excavation | bef |
| RHD4CZ1L101ST1203 |  | Bedding works for GRP Pipe Line 700 mm - (RD-L-10/1)-Z1-L101-ST | 2d | 2027-04-11 | 2027-04-12 | RHD4CZ1L101ST1103, RHD4CZ1L101ST1204, RHD4CZ5C061SW3501, RHD4CZ5A014IRR3200, RHD4CZ2L102ST8500 | Skilled labor [4 h]; Unskilled Labor [8.17 h]; Equipment Opreator [8.17 h]; Excavator-Poclain [4 h]; Dump Truck [4 h]; GRP (700mm Diameter) - ST - Depth: 1.51m - 2.5m [3.73 m] | 2,226.81 | L101 | Z1 | CONS | ST | Bedding | bef |
| RHD4CZ1L101ST1303 |  | Installing for GRP Pipe Line 700 mm - (RD-L-10/1)-Z1-L101-ST | 2d | 2027-04-13 | 2027-04-14 | RHD4PRSHLSTAGST1000, RHD4CZ1L101ST1203, RHD4CZ1L101ST1304, RHD4PRSHLDOSST1600, RHD4PRSHLPOST1000, RHD4PRSHLDOSST1000, RHD4CZ1C081ST8500, RHD4CZ6C052ST3500, RHD4CZ6C052MV2400 | Unskilled Labor [4 h]; Plumber [2.07 h]; GRP (700mm Diameter) - ST - Depth: 1.51m - 2.5m [29.84 m] | 17,814.48 | L101 | Z1 | CONS | ST | Installation | bef |
| RHD4CZ1L101ST1403 |  | Primary Test for GRP Pipe Line 700 mm - (RD-L-10/1)-Z1-L101-ST | 2d | 2027-04-15 | 2027-04-17 | RHD4CZ1L101ST1303, RHD4CZ1C081ST3401 SS, RHD4CZ6C052LV2400 | Unskilled Labor [2.07 h]; Plumber [2.07 h]; Equipment Opreator [2.07 h]; Water Truck [2.07 h]; GRP (700mm Diameter) - ST - Depth: 1.51m - 2.5m [14.92 m] | 8,907.24 | L101 | Z1 | CONS | ST | Primary Test | bef |
| RHD4CZ1L101ST1503 |  | Backfilling and warning tape works for GRP Pipe Line 700 mm - (RD-L-10/1)-Z1-L101-ST | 2d | 2027-04-18 | 2027-04-19 | RHD4CZ1L101ST1403, RHD4CZ1L101ST1504 | Skilled labor [4 h]; Unskilled Labor [8.17 h]; Equipment Opreator [8.17 h]; Excavator-Poclain [4 h]; Dump Truck [4 h]; GRP (700mm Diameter) - ST - Depth: 1.51m - 2.5m [14.92 m] | 8,907.24 | L101 | Z1 | CONS | ST | Backfilling | bef |
|  | 521 | **RHD4-02-002-L101-(ST)-GRP Pipes - 600 mm diameter** |  | 2027-04-20 | 2027-05-01 |  |  |  |  |  |  |  |  |  |
| RHD4CZ1L101ST1102 |  | Excavation works for GRP Pipe Line 600 mm - (RD-L-10/1)-Z1-L101-ST | 2d | 2027-04-20 | 2027-04-21 | RHD4ENSDZ1APPST110, RHD4CZ1L101ST1103, RHD4CZ1L101ST1503, RHD4CZ3L122ST3502 | Skilled labor [3.16 h]; Unskilled Labor [3.16 h]; Equipment Opreator [3.7 h]; Excavator-Poclain [3.16 h]; Dump Truck [0.65 h]; GRP (600mm Diameter) - ST - Depth less than 1.5 m [2.9 m]; GRP (600mm Diameter) - ST - Depth: 1.51m - 2.5m [4.23 m] | 3,216.85 | L101 | Z1 | CONS | ST | Excavation | bef |
| RHD4CZ1L101ST1202 |  | Bedding works for GRP Pipe Line 600 mm - (RD-L-10/1)-Z1-L101-ST | 2d | 2027-04-22 | 2027-04-24 | RHD4CZ1L101ST1102, RHD4CZ1L101ST1203 | Skilled labor [3.16 h]; Unskilled Labor [6.21 h]; Equipment Opreator [6.21 h]; Excavator-Poclain [3.16 h]; Dump Truck [3.16 h]; GRP (600mm Diameter) - ST - Depth less than 1.5 m [1.45 m]; GRP (600mm Diameter) - ST - Depth: 1.51m - 2.5m [1.41 m] | 1,280.6 | L101 | Z1 | CONS | ST | Bedding | bef |
| RHD4CZ1L101ST1302 |  | Installing for GRP Pipe Line 600 mm - (RD-L-10/1)-Z1-L101-ST | 2d | 2027-04-25 | 2027-04-26 | RHD4PRSHLSTAGST1000, RHD4CZ1L101ST1202, RHD4CZ1L101ST1303, RHD4PRSHLDOSST1600, RHD4PRSHLPOST1000, RHD4PRSHLDOSST1000 | Unskilled Labor [6.21 h]; Plumber [3.16 h]; GRP (600mm Diameter) - ST - Depth less than 1.5 m [13.03 m]; GRP (600mm Diameter) - ST - Depth: 1.51m - 2.5m [11.28 m] | 10,861.13 | L101 | Z1 | CONS | ST | Installation | bef |
| RHD4CZ1L101ST1402 |  | Primary Test for GRP Pipe Line 600 mm - (RD-L-10/1)-Z1-L101-ST | 2d | 2027-04-27 | 2027-04-28 | RHD4CZ1L101ST1302 | Unskilled Labor [3.16 h]; Plumber [3.16 h]; Equipment Opreator [3.16 h]; Water Truck [3.16 h]; GRP (600mm Diameter) - ST - Depth less than 1.5 m [5.79 m]; GRP (600mm Diameter) - ST - Depth: 1.51m - 2.5m [5.64 m] | 5,118.09 | L101 | Z1 | CONS | ST | Primary Test | bef |
| RHD4CZ1L101ST1502 |  | Backfilling and warning tape works for GRP Pipe Line 600 mm - (RD-L-10/1)-Z1-L101-ST | 2d | 2027-04-29 | 2027-05-01 | RHD4CZ1L101ST1402, RHD4CZ1L101ST1503 | Skilled labor [3.16 h]; Unskilled Labor [6.21 h]; Equipment Opreator [6.21 h]; Excavator-Poclain [3.16 h]; Dump Truck [3.16 h]; GRP (600mm Diameter) - ST - Depth less than 1.5 m [5.79 m]; GRP (600mm Diameter) - ST - Depth: 1.51m - 2.5m [5.64 m] | 5,118.09 | L101 | Z1 | CONS | ST | Backfilling | bef |

| ID | WBS | Activity | Duration | Start | Finish | Predecessors | Complete | Resources | Cost | Actual cost | RDH4-01-001-Road and Block Names-1 | RDH4-01-001-Zones-1 | RDH4-01-001-Phases-1 | RDH4-01-001-Networks-1 | RDH4-01-001-Work Method-1 | RDH4-01-001-MENEM |
| --- | --- | --- | --- | --- | --- | --- | --- | --- | --- | --- | --- | --- | --- | --- | --- | --- |
|  | 520 | **RHD4-02-002-L101-(ST)-GRP Pipes - 500 mm diameter** |  | 2027-04-22 | 2027-05-03 |  |  |  |  |  |  |  |  |  |  |  |
| RHD4CZ1L101ST1101 |  | Excavation works for GRP Pipe Line 500 mm - (RD-L-10/1)-Z1-L101-ST | 2d | 2027-04-22 | 2027-04-24 | RHD4ENSDZ1APPST110, RHD4CZ1L101ST1102, RHD4CZ9L05MV2400, RHD4CZ6A02LV3400 |  | Skilled labor [1.2 h]; Unskilled Labor [1.2 h]; Equipment Opreator [1.52 h]; Excavator-Poclain [1.2 h]; Dump Truck [0.22 h]; GRP (500mm Diameter) - ST - Depth less than 1.5 m [2.87 m] | 1,018.85 |  | L101 | Z1 | CONS | ST | Excavation | bef |
| RHD4CZ1L101ST1201 |  | Bedding works for GRP Pipe Line 500 mm - (RD-L-10/1)-Z1-L101-ST | 2d | 2027-04-25 | 2027-04-26 | RHD4CZ1L101ST1101, RHD4CZ1L101ST1202 |  | Skilled labor [1.09 h]; Unskilled Labor [2.07 h]; Equipment Opreator [2.07 h]; Excavator-Poclain [1.09 h]; Dump Truck [1.09 h]; GRP (500mm Diameter) - ST - Depth less than 1.5 m [1.44 m] | 511.2 |  | L101 | Z1 | CONS | ST | Bedding | bef |
| RHD4CZ1L101ST1301 |  | Installing for GRP Pipe Line 500 mm - (RD-L-10/1)-Z1-L101-ST | 2d | 2027-04-27 | 2027-04-28 | RHD4PRSHLSTAGST1000, RHD4CZ1L101ST1201, RHD4CZ1L101ST1302, RHD4PRSHLDOSST1600, RHD4PRSHLPOST1000, RHD4PRSHLDOSST1000 |  | Unskilled Labor [4.14 h]; Plumber [2.07 h]; GRP (500mm Diameter) - ST - Depth less than 1.5 m [12.93 m] | 4,590.15 |  | L101 | Z1 | CONS | ST | Installation | bef |
| RHD4CZ1L101ST1401 |  | Primary Test for GRP Pipe Line 500 mm - (RD-L-10/1)-Z1-L101-ST | 2d | 2027-04-29 | 2027-05-01 | RHD4CZ1L101ST1301 |  | Unskilled Labor [0.65 h]; Plumber [0.65 h]; Equipment Opreator [0.65 h]; Water Truck [0.65 h]; GRP (500mm Diameter) - ST - Depth less than 1.5 m [5.75 m] | 2,041.25 |  | L101 | Z1 | CONS | ST | Primary Test | bef |
| RHD4CZ1L101ST1501 |  | Backfilling and warning tape works for GRP Pipe Line 500 mm - (RD-L-10/1)-Z1-L101-ST | 2d | 2027-05-02 | 2027-05-03 | RHD4CZ1L101ST1401, RHD4CZ1L101ST1502 |  | Skilled labor [1.52 h]; Unskilled Labor [3.16 h]; Equipment Opreator [3.16 h]; Excavator-Poclain [1.52 h]; Dump Truck [1.52 h]; GRP (500mm Diameter) - ST - Depth less than 1.5 m [5.75 m] | 2,041.25 |  | L101 | Z1 | CONS | ST | Backfilling | bef |
|  | 519 | **RHD4-02-002-L101-(ST)-GRP Pipes - 400 mm diameter** |  | 2027-04-25 | 2027-05-05 |  |  |  |  |  |  |  |  |  |  |  |
| RHD4CZ1L101ST1100 |  | Excavation works for GRP Pipe Line 400 mm - (RD-L-10/1)-Z1-L101-ST | 2d | 2027-04-25 | 2027-04-26 | RHD4ENSDZ1APPST110, RHD4CZ1L101ST1101, RHD4CZ7L015SL2400 |  | Skilled labor [1.31 h]; Unskilled Labor [1.31 h]; Equipment Opreator [1.52 h]; Excavator-Poclain [1.31 h]; Dump Truck [0.22 h]; GRP (400mm Diameter) - ST - Depth less than 1.5 m [2.92 m] | 846.8 |  | L101 | Z1 | CONS | ST | Excavation | bef |
| RHD4CZ1L101ST1200 |  | Bedding works for GRP Pipe Line 400 mm - (RD-L-10/1)-Z1-L101-ST | 2d | 2027-04-27 | 2027-04-28 | RHD4CZ1L101ST1100, RHD4CZ1L101ST1201, RHD4CZ5A014PT3203, RHD4CZ5A014PT4500, RHD4CZ5C061PT3202, RHD4CZ5C061IRR1502 |  | Skilled labor [1.09 h]; Unskilled Labor [2.18 h]; Equipment Opreator [2.18 h]; Excavator-Poclain [1.09 h]; Dump Truck [1.09 h]; GRP (400mm Diameter) - ST - Depth less than 1.5 m [1.46 m] | 423.4 |  | L101 | Z1 | CONS | ST | Bedding | bef |
| RHD4CZ1L101ST1300 |  | Installing for GRP Pipe Line 400 mm - (RD-L-10/1)-Z1-L101-ST | 2d | 2027-04-29 | 2027-05-01 | RHD4PRSHLSTAGST1000, RHD4CZ1L101ST1200, RHD4CZ1L101ST1301, RHD4PRSHLDOSST1600, RHD4PRSHLPOST1000, RHD4PRSHLDOSST1000, RHD4CZ5C061PT4500, RHD4CZ5A014PT3202, RHD4CZ6C062MV2400 |  | Unskilled Labor [4.25 h]; Plumber [2.18 h]; GRP (400mm Diameter) - ST - Depth less than 1.5 m [13.16 m] | 3,816.4 |  | L101 | Z1 | CONS | ST | Installation | bef |
| RHD4CZ1L101ST1400 |  | Primary Test for GRP Pipe Line 400 mm - (RD-L-10/1)-Z1-L101-ST | 2d | 2027-05-02 | 2027-05-03 | RHD4CZ1L101ST1300, RHD4CZ5C061PT3200, RHD4CZ7C013IRR3203, RHD4CZ3C083RW2000 |  | Unskilled Labor [0.65 h]; Plumber [0.65 h]; Equipment Opreator [0.65 h]; Water Truck [0.65 h]; GRP (400mm Diameter) - ST - Depth less than 1.5 m [5.85 m] | 1,696.5 |  | L101 | Z1 | CONS | ST | Primary Test | bef |
| RHD4CZ1L101ST1500 |  | Backfilling and warning tape works for GRP Pipe Line 400 mm - (RD-L-10/1)-Z1-L101-ST | 2d | 2027-05-04 | 2027-05-05 | RHD4CZ1L101ST1400, RHD4CZ1L101ST1501, RHD4CZ6C052PT3202, RHD4CZ7C013IRR3200, RHD4CZ6C052PT3203 |  | Skilled labor [1.6 h]; Unskilled Labor [3.16 h]; Equipment Opreator [3.16 h]; Excavator-Poclain [1.6 h]; Dump Truck [1.6 h]; GRP (400mm Diameter) - ST - Depth less than 1.5 m [5.85 m] | 1,696.5 |  | L101 | Z1 | CONS | ST | Backfilling | bef |
|  | 533 | **RHD4-02-002-L101-(ST)-UPVC Pipes - 300 mm diameter** |  | 2027-05-06 | 2027-05-23 |  |  |  |  |  |  |  |  |  |  |  |
| RHD4CZ1L101ST2100 |  | Excavation works for UPVC Pipe Line 300 mm - (RD-L-10/1)-Z1-L101-ST | 2d | 2027-05-06 | 2027-05-08 | RHD4ENSDZ1APPST110, RHD4CZ1L101ST7300, RHD4CZ1L101ST1500 |  | Skilled labor [20.8 h]; Unskilled Labor [20.8 h]; Equipment Opreator [25.05 h]; Excavator-Poclain [20.8 h]; Dump Truck [4.14 h]; UPVC (300mm Diameter) - ST - Depth less than 1.5 [47.1 m]; UPVC (300mm Diameter) - ST - Depth: 1.51m - 2.5m | 14,271.3 |  | L101 | Z1 | CONS | ST | Excavation | bef |
| RHD4CZ1L101ST2200 |  | Bedding works for UPVC Pipe Line 300 mm - (RD-L-10/1)-Z1-L101-ST | 2d | 2027-05-09 | 2027-05-10 | RHD4CZ1L101ST2100, RHD4CZ6B17EX1002 |  | Skilled labor [17.64 h]; Unskilled Labor [35.28 h]; Equipment Opreator [35.28 h]; Excavator-Poclain [17.64 h]; Dump Truck [17.64 h]; UPVC (300mm Diameter) - ST - Depth less than 1.5 [23.55 m]; UPVC (300mm Diameter) - ST - Depth: 1.51m - 2.5m | 7,135.65 |  | L101 | Z1 | CONS | ST | Bedding | bef |
| RHD4CZ1L101ST2300 |  | Installing for UPVC Pipe Line 300 mm - (RD-L-10/1)-Z1-L101-ST | 2d | 2027-05-11 | 2027-05-12 | RHD4PRSHLDOSST1100, RHD4PRSHLSTAGST1100, RHD4CZ1L101ST2200 |  | Unskilled Labor [41.71 h]; Plumber [20.8 h]; UPVC (300mm Diameter) - ST - Depth less than 1.5 [211.94 m]; UPVC (300mm Diameter) - ST - Depth: 1.51m - 2.5m | 64,217.82 |  | L101 | Z1 | CONS | ST | Installation | bef |
| RHD4CZ1L101ST2400 |  | Primary Test for UPVC Pipe Line 300 mm - (RD-L-10/1)-Z1-L101-ST | 2d | 2027-05-13 | 2027-05-19 | RHD4CZ1L101ST2300, RHD4CZ9L06SL2400 |  | Unskilled Labor [11.2 h]; Plumber [11.2 h]; Equipment Opreator [11.2 h]; Water Truck [11.2 h]; UPVC (300mm Diameter) - ST - Depth less than 1.5 [94.19 m]; UPVC (300mm Diameter) - ST - Depth: 1.51m - 2.5m | 28,539.57 |  | L101 | Z1 | CONS | ST | Primary Test | bef |
| RHD4CZ1L101ST2500 |  | Backfilling and warning tape works for UPVC Pipe Line 300 mm - (RD-L-10/1)-Z1-L101-ST | 3d | 2027-05-20 | 2027-05-23 | RHD4CZ1L101ST2400, RHD4CZ1L101ST6100, RHD4CZ4L09ST1506 |  | Skilled labor [25.6 h]; Unskilled Labor [51.29 h]; Equipment Opreator [51.29 h]; Excavator-Poclain [25.6 h]; Dump Truck [25.6 h]; UPVC (300mm Diameter) - ST - Depth less than 1.5 [94.19 m]; UPVC (300mm Diameter) - ST - Depth: 1.51m - 2.5m | 28,539.57 |  | L101 | Z1 | CONS | ST | Backfilling | bef |
|  | 541 | **RHD4-02-002-L101-(ST)-Concrete Encasement** |  | 2027-05-11 | 2027-05-12 |  |  |  |  |  |  |  |  |  |  |  |
| RHD4CZ1L101ST6100 |  | Pipe Encasement for Storm Pipelines - (RD-L-10/1)-Z1-L101-ST | 2d | 2027-05-11 | 2027-05-12 | RHD4CZ1L101ST2300 SS, RHD4CZ1L101ST2300 FF, RHD4CZ1L101ST2200, RHD4CZ1L101RD2100 |  | Skilled labor [5.12 h]; Unskilled Labor [5.12 h]; Equipment Opreator [5.66 h]; Concrete Mixer Truck [0.54 h]; Dump Truck [5.12 h]; Pipe Encasement - ST [93.64 m3] | 47,381.84 |  | L101 | Z1 | CONS | ST | Pipe Encasement | bef |
|  | 542 | **RHD4-02-002-Z1-L101-Catch Basin - ST** |  | 2026-10-27 | 2027-06-14 |  |  |  |  |  |  |  |  |  |  |  |
|  | 543 | **RHD4-02-002-L101-(ST)-Single Catch Basin Works** |  | 2026-10-27 | 2027-06-14 |  |  |  |  |  |  |  |  |  |  |  |
| RHD4CZ1L101ST7100 |  | Excavation works for Single Catch Basin - (RD-L-10/1)-Z1-L101-ST | 3d | 2026-10-27 A | 2026-10-29 A | RHD4ENSDZ1APPST110, RHD4CZ1L101ST1105 | 100% | Skilled labor [28.31 h]; Unskilled Labor [56.63 h]; Equipment Opreator [42.47 h]; Excavator-Poclain [28.31 h]; Dump Truck [14.16 h]; Single Catch basin - ST [6.5 nr] | 24,251.5 | 24,251.5 | L101 | Z1 | CONS | ST | Excavation | bef |
| RHD4CZ1L101ST7200 |  | PC Blinding, Installation and Pipe connection for Single Catch Basin - (RD-L-10/1)-Z1-L101-ST | 3d | 2027-03-07 | 2027-03-13 | RHD4CZ1L101ST7100 |  | Skilled labor [28.31 h]; Unskilled Labor [56.63 h]; Plumber [14.16 h]; Equipment Opreator [5.66 h]; Boom Truck [5.66 h]; Single Catch basin - ST [5.2 nr] | 19,401.2 |  | L101 | Z1 | CONS | ST | Installation & Pipe Connection | bef |
| RHD4CZ1L101ST7300 |  | Rings & C.Slab & Final Backfill for Single Catch Basin - (RD-L-10/1)-Z1-L101-ST | 4d | 2027-03-14 | 2027-03-17 | RHD4PRSHLDOSST1300, RHD4PRSHLSTAGST1300, RHD4CZ1L101ST7200 |  | Skilled labor [35.39 h]; Unskilled Labor [70.79 h]; Equipment Opreator [42.47 h]; Boom Truck [7.08 h]; Bobcat [35.39 h]; Single Catch basin - ST [9.1 nr] | 33,952.1 |  | L101 | Z1 | CONS | ST | Rings | bef |
| RHD4CZ1L101ST7400 |  | Steel Cover for Single Catch Basin - (RD-L-10/1)-Z1-L101-ST | 3d | 2027-06-05 | 2027-06-07 | RHD4PRSHLDOSST1700, RHD4CZ1L101ST7300, RHD4CZ1L101ST3400 |  | Skilled labor [28.31 h]; Unskilled Labor [28.31 h]; Equipment Opreator [5.66 h]; Boom Truck [5.66 h]; Single Catch basin - ST [1.3 nr] | 4,850.3 |  | L101 | Z1 | CONS | ST | Steel Cover | bef |
| RHD4CZ1L101ST7500 |  | Finishing and Insulation works for Single Catch Basin - (RD-L-10/1)-Z1-L101-ST | 6d | 2027-06-08 | 2027-06-14 | RHD4CZ1L101ST7400, RHD4CZ1L101ST3500 |  | Skilled labor [56.63 h]; Unskilled Labor [113.26 h]; Equipment Opreator [11.33 h]; Boom Truck [11.33 h]; Single Catch basin - ST [3.9 nr] | 14,550.9 |  | L101 | Z1 | CONS | ST | Insulation | bef |

| ID | WBS | Activity | Duration | Start | Finish | Predecessors | Complete | Remaining | Planned start | Planned finish | Resources | Cost | Actual cost | RDH4-01-001-Road and Block Names-1 | RDH4-01-001-Zones-1 | RDH4-01-001-Phases-1 | RDH4-01-001-Networks-1 | RDH4-01-001-Work Method-1 | RDH4-01-001-MENEM |
| --- | --- | --- | --- | --- | --- | --- | --- | --- | --- | --- | --- | --- | --- | --- | --- | --- | --- | --- | --- |
|  | 567 | **RHD4-02-002-Z1-L101-Sewage Network - SW** |  | 2026-10-19 | 2027-08-01 |  |  |  |  |  |  |  |  |  |  |  |  |  |  |
|  | 577 | **RHD4-02-002-L101-(SW)-MH Works - 1200 mm diameter** |  | 2026-10-19 | 2027-08-01 |  |  |  |  |  |  |  |  |  |  |  |  |  |  |
| RHD4CZ1L101SW3100 |  | Excavation and PC Blinding works for MH 1200 mm - (RD-L-10/1)-Z1-L101-SW | 10d | 2026-10-19 A | 2027-06-05 | RHD4ENSDZ1APPSW120, RHD4CZ1L101SW2100 | 76% | 5d | 2026-10-19 | 2026-10-29 | Skilled labor [103.46 h]; Unskilled Labor [103.46 h]; Equipment Opreator [165.53 h]; Excavator-Poclain [103.46 h]; Water Truck [10.35 h]; Dump Truck [51.73 h]; MH (1200mm Diameter) - SW - depth 0 - 1.5m [0.75 nr]; MH (1200mm Diameter) - SW - depth 1.51 - 2.5m [1.75 nr]; MH (1200mm Diameter) - SW - depth 2.51 - 3.5m [0.25 nr]; MH (1200mm Diameter) - SW - depth 3.51 -4.5m [0.25 nr]; MH (1200mm Diameter) - SW - depth 4.51 -5.5m [1.5 nr]; MH (1200mm Diameter) - SW - depth 5.51-6.0 m [0.25 nr] | 57,069.25 | 43,565.5 | L101 | Z1 | CONS | SW | Excavation | bef |
| RHD4CZ1L101SW3200 |  | Installation of Base for MH 1200 mm - (RD-L-10/1)-Z1-L101-SW | 14d | 2027-06-06 | 2027-06-21 | RHD4CZ1L101SW3100 |  |  |  |  | Skilled labor [152.46 h]; Unskilled Labor [152.46 h]; Equipment Opreator [60.99 h]; Boom Truck [30.49 h]; Concrete Mixer Truck [30.49 h]; MH (1200mm Diameter) - SW - depth 0 - 1.5m [0.75 nr]; MH (1200mm Diameter) - SW - depth 1.51 - 2.5m [1.75 nr]; MH (1200mm Diameter) - SW - depth 2.51 - 3.5m [0.25 nr]; MH (1200mm Diameter) - SW - depth 3.51 -4.5m [0.25 nr]; MH (1200mm Diameter) - SW - depth 4.51 -5.5m [1.5 nr]; MH (1200mm Diameter) - SW - depth 5.51-6.0 m [0.25 nr] | 57,069.25 |  | L101 | Z1 | CONS | SW | Installing Base | bef |
| RHD4CZ1L101SW3300 |  | MH Ring and C.Slab works and Backfilling works for MH 1200 mm - (RD-L-10/1)-Z1-L101-SW | 14d | 2027-06-22 | 2027-07-07 | RHD4PRSHLDOSSW1300, RHD4PRSHLSTAGSW1300, RHD4CZ1L101SW3200 |  |  |  |  | Skilled labor [152.46 h]; Unskilled Labor [152.46 h]; Equipment Opreator [106.73 h]; Boom Truck [60.99 h]; Concrete Mixer Truck [45.74 h]; MH (1200mm Diameter) - SW - depth 0 - 1.5m [1.05 nr]; MH (1200mm Diameter) - SW - depth 1.51 - 2.5m [2.45 nr]; MH (1200mm Diameter) - SW - depth 2.51 - 3.5m [0.35 nr]; MH (1200mm Diameter) - SW - depth 3.51 -4.5m [0.35 nr]; MH (1200mm Diameter) - SW - depth 4.51 -5.5m [2.1 nr]; MH (1200mm Diameter) - SW - depth 5.51-6.0 m [0.35 nr] | 79,896.95 |  | L101 | Z1 | CONS | SW | Installing Rings | bef |
| RHD4CZ1L101SW3400 |  | Steel Cover for MH 1200 mm - (RD-L-10/1)-Z1-L101-SW | 7d | 2027-07-08 | 2027-07-15 | RHD4PRSHLDOSSW1400, RHD4PRSHLSTAGSW1400, RHD4CZ1L101SW3300 |  |  |  |  | Skilled labor [68.94 h]; Unskilled Labor [137.98 h]; Equipment Opreator [13.83 h]; Boom Truck [13.83 h]; MH (1200mm Diameter) - SW - depth 0 - 1.5m [0.15 nr]; MH (1200mm Diameter) - SW - depth 1.51 - 2.5m [0.35 nr]; MH (1200mm Diameter) - SW - depth 2.51 - 3.5m [0.05 nr]; MH (1200mm Diameter) - SW - depth 3.51 -4.5m [0.05 nr]; MH (1200mm Diameter) - SW - depth 4.51 -5.5m [0.3 nr]; MH (1200mm Diameter) - SW - depth 5.51-6.0 m [0.05 nr] | 11,413.85 |  | L101 | Z1 | CONS | SW | Steel Cover | bef |
| RHD4CZ1L101SW3500 |  | Finishing, Benching, Testing works for MH 1200 mm - (RD-L-10/1)-Z1-L101-SW | 14d | 2027-07-17 | 2027-08-01 | RHD4CZ1L101SW3400 |  |  |  |  | Skilled labor [152.46 h]; Unskilled Labor [304.93 h]; Plumber [152.46 h]; Equipment Opreator [30.49 h]; Water Truck [30.49 h]; MH (1200mm Diameter) - SW - depth 0 - 1.5m [0.3 nr]; MH (1200mm Diameter) - SW - depth 1.51 - 2.5m [0.7 nr]; MH (1200mm Diameter) - SW - depth 2.51 - 3.5m [0.1 nr]; MH (1200mm Diameter) - SW - depth 3.51 -4.5m [0.1 nr]; MH (1200mm Diameter) - SW - depth 4.51 -5.5m [0.6 nr]; MH (1200mm Diameter) - SW - depth 5.51-6.0 m [0.1 nr] | 22,827.7 |  | L101 | Z1 | CONS | SW | Benching | bef |
|  | 578 | **RHD4-02-002-L101-(SW)-MH Works - 1200 mm diameter with Back drop** |  |  |  |  |  |  |  |  |  |  |  |  |  |  |  |  |  |
|  | 573 | **RHD4-02-002-L101-(SW)-UPVC Pipes - 200 mm diameter** |  | 2026-10-27 | 2027-06-29 |  |  |  |  |  |  |  |  |  |  |  |  |  |  |
| RHD4CZ1L101SW2100 |  | Excavation works for UPVC Pipe Line 200 mm - (RD-L-10/1)-Z1-L101-SW | 6d | 2026-10-27 A | 2027-05-30 | RHD4ENSDZ1APPSW120, RHD4CZ1L101ST2500, RHD4CZ4A013ST8500, RHD4CZ6C052IRR3202, RHD4CZ6C062ST3501 | 80% | 6d | 2026-10-27 | 2026-11-02 | Skilled labor [56.96 h]; Unskilled Labor [56.96 h]; Equipment Opreator [68.39 h]; Excavator-Poclain [56.96 h]; Dump Truck [11.43 h]; UPVC (200mm Diameter) - SW - Depth: less than 1.5m [54.97 m]; UPVC (200mm Diameter) - SW - Depth: 1.51m - 2.5m [13.35 m]; UPVC (200mm Diameter) - SW - Depth: 2.51m - 3.5m [26.63 m]; UPVC (200mm Diameter) - SW - Depth: 3.51m - 4.5m [15.37 m]; UPVC (200mm Diameter) - SW - Depth: 4.51m - 5.5m [11.34 m] | 35,250.32 | 28,109.69 | L101 | Z1 | CONS | SW | Excavation | bef |
| RHD4CZ1L101SW2200 |  | Bedding works for UPVC Pipe Line 200 mm - (RD-L-10/1)-Z1-L101-SW | 6d | 2026-10-29 A | 2027-06-06 | RHD4CZ1L101SW2100 | 46% | 6d | 2026-10-29 | 2026-11-04 | Skilled labor [54.56 h]; Unskilled Labor [109.12 h]; Equipment Opreator [109.12 h]; Excavator-Poclain [54.56 h]; Dump Truck [54.56 h]; UPVC (200mm Diameter) - SW - Depth: less than 1.5m [27.49 m]; UPVC (200mm Diameter) - SW - Depth: 1.51m - 2.5m [4.45 m]; UPVC (200mm Diameter) - SW - Depth: 2.51m - 3.5m [8.88 m]; UPVC (200mm Diameter) - SW - Depth: 3.51m - 4.5m [5.12 m]; UPVC (200mm Diameter) - SW - Depth: 4.51m - 5.5m [3.78 m] | 13,399.73 | 6,184.93 | L101 | Z1 | CONS | SW | Bedding | bef |
| RHD4CZ1L101SW2300 |  | Installing for UPVC Pipe Line 200 mm - (RD-L-10/1)-Z1-L101-SW | 7d | 2026-10-31 A | 2027-06-14 | RHD4PRSHLDOSSW1000, RHD4CZ1L101ST3300, RHD4PRSHLSTAGSW1000, RHD4CZ1L101SW2200, RHD4CZ6A015ST3500 | 46% | 7d | 2026-10-31 | 2026-11-07 | Unskilled Labor [133.3 h]; Plumber [66.65 h]; Equipment Opreator [66.65 h]; Boom Truck [66.65 h]; UPVC (200mm Diameter) - SW - Depth: less than 1.5m [247.37 m]; UPVC (200mm Diameter) - SW - Depth: 1.51m - 2.5m [35.6 m]; UPVC (200mm Diameter) - SW - Depth: 2.51m - 3.5m [71.02 m]; UPVC (200mm Diameter) - SW - Depth: 3.51m - 4.5m [41 m]; UPVC (200mm Diameter) - SW - Depth: 4.51m - 5.5m [30.24 m] | 112,149.48 | 51,957.32 | L101 | Z1 | CONS | SW | Installation | bef |
| RHD4CZ1L101SW2400 |  | Primary Test for UPVC Pipe Line 200 mm - (RD-L-10/1)-Z1-L101-SW | 4d | 2027-06-19 | 2027-06-22 | RHD4CZ1L101SW2300, RHD4CZ9C071MV1200 |  |  |  |  | Unskilled Labor [42.58 h]; Plumber [42.58 h]; Equipment Opreator [42.58 h]; Water Truck [42.58 h]; UPVC (200mm Diameter) - SW - Depth: less than 1.5m [109.94 m]; UPVC (200mm Diameter) - SW - Depth: 1.51m - 2.5m [17.8 m]; UPVC (200mm Diameter) - SW - Depth: 2.51m - 3.5m [35.51 m]; UPVC (200mm Diameter) - SW - Depth: 3.51m - 4.5m [20.5 m]; UPVC (200mm Diameter) - SW - Depth: 4.51m - 5.5m [15.12 m] | 53,600.64 |  | L101 | Z1 | CONS | SW | Primary Test | bef |
| RHD4CZ1L101SW2500 |  | Backfilling and warning tape works for UPVC Pipe Line 200 mm - (RD-L-10/1)-Z1-L101-SW | 6d | 2027-06-23 | 2027-06-29 | RHD4CZ1L101SW2400, RHD4CZ3L122ICT2400 |  |  |  |  | Skilled labor [60.55 h]; Unskilled Labor [121.21 h]; Equipment Opreator [121.21 h]; Excavator-Poclain [60.55 h]; Dump Truck [60.55 h]; UPVC (200mm Diameter) - SW - Depth: less than 1.5m [109.94 m]; UPVC (200mm Diameter) - SW - Depth: 1.51m - 2.5m [17.8 m]; UPVC (200mm Diameter) - SW - Depth: 2.51m - 3.5m [35.51 m]; UPVC (200mm Diameter) - SW - Depth: 3.51m - 4.5m [20.5 m]; UPVC (200mm Diameter) - SW - Depth: 4.51m - 5.5m [15.12 m] | 53,600.64 |  | L101 | Z1 | CONS | SW | Backfilling | bef |
|  | 576 | **RHD4-02-002-L101-(SW)-Concrete Encasement** |  |  |  |  |  |  |  |  |  |  |  |  |  |  |  |  |  |
|  | 604 | **RHD4-02-002-Z1-L101-Potable Network - PT** |  | 2027-06-30 | 2027-08-03 |  |  |  |  |  |  |  |  |  |  |  |  |  |  |
|  | 606 | **RHD4-02-002-L101-(PT)-HDPE Pipes - 160 mm diameter** |  | 2027-06-30 | 2027-07-22 |  |  |  |  |  |  |  |  |  |  |  |  |  |  |
| RHD4CZ1L101PT1101 |  | Excavation works for HDPE Pipline 160 mm - (RD-L-10/1)-Z1-L101-PT | 4d | 2027-06-30 | 2027-07-04 | RHD4ENSDZ1APPPT130, RHD4ENMSPT2000, RHD4CZ1L101SW2500, RHD4CZ4C031ST3501 |  |  |  |  | Skilled labor [36.48 h]; Unskilled Labor [36.48 h]; Equipment Opreator [43.78 h]; Excavator-Poclain [36.48 h]; Dump Truck [7.3 h]; HDPE (160mm Diameter) - PT - Depth: less than 1.5m [81.79 m]; HDPE (160mm Diameter) - PT - Depth: 1.51m - 2.5m | 8,751.53 |  | L101 | Z1 | CONS | PT | Excavation | bef |
| RHD4CZ1L101PT1201 |  | Bedding works for HDPE Pipline 160 mm - (RD-L-10/1)-Z1-L101-PT | 3d | 2027-07-05 | 2027-07-07 | RHD4CZ1L101PT1101, RHD4CZ5L08SW2500, RHD4CZ2L102SW3500 |  |  |  |  | Skilled labor [31.15 h]; Unskilled Labor [62.29 h]; Equipment Opreator [62.29 h]; Excavator-Poclain [31.15 h]; Dump Truck [31.15 h]; HDPE (160mm Diameter) - PT - Depth: less than 1.5m [40.89 m]; HDPE (160mm Diameter) - PT - Depth: 1.51m - 2.5m | 4,375.23 |  | L101 | Z1 | CONS | PT | Bedding | bef |
| RHD4CZ1L101PT1301 |  | Installing for HDPE Pipline 160 mm - (RD-L-10/1)-Z1-L101-PT | 6d | 2027-07-08 | 2027-07-14 | RHD4PRSHLDOSPT1000, RHD4PRSHLSTAGPT1000, RHD4CZ1L101PT1201 |  |  |  |  | Unskilled Labor [115.87 h]; Plumber [57.94 h]; Equipment Opreator [57.94 h]; Boom Truck [57.94 h]; HDPE (160mm Diameter) - PT - Depth: less than 1.5m [368.04 m]; HDPE (160mm Diameter) - PT - Depth: 1.51m - 2.5m | 39,380.28 |  | L101 | Z1 | CONS | PT | Installation | bef |
| RHD4CZ1L101PT1401 |  | Primary Test for HDPE Pipline 160 mm - (RD-L-10/1)-Z1-L101-PT | 2d | 2027-07-15 | 2027-07-17 | RHD4CZ1L101PT1301 |  |  |  |  | Unskilled Labor [20.47 h]; Plumber [20.47 h]; Equipment Opreator [20.47 h]; Water Truck [20.47 h]; HDPE (160mm Diameter) - PT - Depth: less than 1.5m [163.57 m]; HDPE (160mm Diameter) - PT - Depth: 1.51m - 2.5m | 17,501.99 |  | L101 | Z1 | CONS | PT | Primary Test | bef |
| RHD4CZ1L101PT1501 |  | Backfilling and warning tape works for HDPE Pipline 160 mm - (RD-L-10/1)-Z1-L101-PT | 5d | 2027-07-18 | 2027-07-22 | RHD4CZ1L101PT1401, RHD4CZ1C081IRR3200 |  |  |  |  | Skilled labor [44.54 h]; Unskilled Labor [89.08 h]; Equipment Opreator [89.08 h]; Excavator-Poclain [44.54 h]; Dump Truck [44.54 h]; HDPE (160mm Diameter) - PT - Depth: less than 1.5m [163.57 m]; HDPE (160mm Diameter) - PT - Depth: 1.51m - 2.5m | 17,501.99 |  | L101 | Z1 | CONS | PT | Backfilling | bef |
|  | 605 | **RHD4-02-002-L101-(PT)-HDPE Pipes - 110 mm diameter** |  | 2027-06-30 | 2027-07-25 |  |  |  |  |  |  |  |  |  |  |  |  |  |  |
| RHD4CZ1L101PT1100 |  | Excavation works for HDPE Pipline 110 mm - (RD-L-10/1)-Z1-L101-PT | 2d | 2027-06-30 | 2027-07-01 | RHD4ENSDZ1APPPT130, RHD4ENMSPT2000, RHD4CZ1L101SW2500 |  |  |  |  | Skilled labor [6.97 h]; Unskilled Labor [6.97 h]; Equipment Opreator [8.39 h]; Excavator-Poclain [6.97 h]; Dump Truck [1.42 h]; HDPE (110mm Diameter) - PT - Depth: less than 1.5m [16 m] | 1,360 |  | L101 | Z1 | CONS | PT | Excavation | bef |
| RHD4CZ1L101PT1200 |  | Bedding works for HDPE Pipline 110 mm - (RD-L-10/1)-Z1-L101-PT | 2d | 2027-07-08 | 2027-07-10 | RHD4CZ1L101PT1100, RHD4CZ1L101PT1201 |  |  |  |  | Skilled labor [5.77 h]; Unskilled Labor [11.65 h]; Equipment Opreator [11.65 h]; Excavator-Poclain [5.77 h]; Dump Truck [5.77 h]; HDPE (110mm Diameter) - PT - Depth: less than 1.5m [8 m] | 680 |  | L101 | Z1 | CONS | PT | Bedding | bef |
| RHD4CZ1L101PT1300 |  | Installing for HDPE Pipline 110 mm - (RD-L-10/1)-Z1-L101-PT | 2d | 2027-07-15 | 2027-07-17 | RHD4PRSHLDOSPT1000, RHD4PRSHLSTAGPT1000, RHD4CZ1L101PT1200, RHD4CZ1L101PT1301 |  |  |  |  | Unskilled Labor [23.2 h]; Plumber [11.65 h]; Equipment Opreator [11.65 h]; Boom Truck [11.65 h]; HDPE (110mm Diameter) - PT - Depth: less than 1.5m [72 m] | 6,120 |  | L101 | Z1 | CONS | PT | Installation | bef |
| RHD4CZ1L101PT1400 |  | Primary Test for HDPE Pipline 110 mm - (RD-L-10/1)-Z1-L101-PT | 2d | 2027-07-18 | 2027-07-19 | RHD4CZ1L101PT1300, RHD4CZ1L101PT1401 |  |  |  |  | Unskilled Labor [3.48 h]; Plumber [3.48 h]; Equipment Opreator [3.48 h]; Water Truck [3.48 h]; HDPE (110mm Diameter) - PT - Depth: less than 1.5m [32 m] | 2,720 |  | L101 | Z1 | CONS | PT | Primary Test | bef |
| RHD4CZ1L101PT1500 |  | Backfilling and warning tape works for HDPE Pipline 110 mm - (RD-L-10/1)-Z1-L101-PT | 2d | 2027-07-24 | 2027-07-25 | RHD4CZ1L101PT1400, RHD4CZ1L101PT1501, RHD4CZ4L014PT3203, RHD4CZ4C031SL1500, RHD4CZ4C031SL6100 |  |  |  |  | Skilled labor [8.71 h]; Unskilled Labor [17.42 h]; Equipment Opreator [17.42 h]; Excavator-Poclain [8.71 h]; Dump Truck [8.71 h]; HDPE (110mm Diameter) - PT - Depth: less than 1.5m [32 m] | 2,720 |  | L101 | Z1 | CONS | PT | Backfilling | bef |

| ID | WBS | Activity | Duration | Start | Finish | Predecessors | Resources | Cost | RDH4-01-001-Road and Block Names-1 | RDH4-01-001-Zones-1 | RDH4-01-001-Phases-1 | RDH4-01-001-Networks-1 | RDH4-01-001-Work Method-1 | RDH4-01-001-MENEM |
| --- | --- | --- | --- | --- | --- | --- | --- | --- | --- | --- | --- | --- | --- | --- |
|  | 421 | **RHD4-02-002-L101-(PT)-Gate Valves (Direct Buried)** |  | 2027-07-26 | 2027-08-03 |  |  |  |  |  |  |  |  |  |
| RHD4CZ1L101PT3100 |  | Installation for Direct Buried Gate Valves - (RD-L-10/1)-Z1-L101-PT | 4d | 2027-07-26 | 2027-07-29 | RHD4CZ1L101PT1500 | Unskilled Labor [38.12 h]; Plumber [38.12 h]; Gate valves dia 100 mm - PT [4.5 nr]; Gate valves dia 150 mm - PT [1.8 nr] | 7,834.5 | L101 | Z1 | CONS | PT | Installation | bef |
| RHD4CZ1L101PT3200 |  | Stem and Service box for Direct Buried Gate Valves - (RD-L-10/1)-Z1-L101-PT | 4d | 2027-07-31 | 2027-08-03 | RHD4CZ1L101PT3100 | Unskilled Labor [38.12 h]; Plumber [38.12 h]; Gate valves dia 100 mm - PT [0.5 nr]; Gate valves dia 150 mm - PT [0.2 nr] | 870.5 | L101 | Z1 | CONS | PT | Stem and Service box | bef |
|  | 428 | **RHD4-02-002-L101-(PT)-Fire Hydrant** |  | 2027-06-30 | 2027-07-24 |  |  |  |  |  |  |  |  |  |
| RHD4CZ1L101PT4100 |  | Excavation and Bedding and Pipe Installation for Fire Hydrant - (RD-L-10/1)-Z1-L101-PT | 6d | 2027-06-30 | 2027-07-06 | RHD4CZ1L101PT1100 SS | Skilled labor [59.9 h]; Unskilled Labor [59.9 h]; Plumber [59.9 h]; Equipment Opreator [29.95 h]; Excavator-Poclain [29.95 h]; 3-outlet fire hydrant (2 x 2.5 inch and 1 x 4.5 inch) in the form of a separate dry vacuum cylinder [1.1 nr] | 13,882 | L101 | Z1 | CONS | PT | Excavation | bef |
| RHD4CZ1L101PT4200 |  | Valve Installation for Fire Hydrant - (RD-L-10/1)-Z1-L101-PT | 4d | 2027-07-07 | 2027-07-11 | RHD4CZ1L101PT4100 | Unskilled Labor [40 h]; Plumber [40 h]; 3-outlet fire hydrant (2 x 2.5 inch and 1 x 4.5 inch) in the form of a separate dry vacuum cylinder [2.2 nr] | 27,764 | L101 | Z1 | CONS | PT | Valve | bef |
| RHD4CZ1L101PT4300 |  | Stem for Fire Hydrant - (RD-L-10/1)-Z1-L101-PT | 4d | 2027-07-12 | 2027-07-15 | RHD4CZ1L101PT4200 | Unskilled Labor [40 h]; Plumber [40 h]; 3-outlet fire hydrant (2 x 2.5 inch and 1 x 4.5 inch) in the form of a separate dry vacuum cylinder [3.3 nr] | 41,646 | L101 | Z1 | CONS | PT | Stem | bef |
| RHD4CZ1L101PT4400 |  | Fire Installation for Fire Hydrant - (RD-L-10/1)-Z1-L101-PT | 4d | 2027-07-17 | 2027-07-20 | RHD4CZ1L101PT4300 | Unskilled Labor [40 h]; Plumber [40 h]; Equipment Opreator [40 h]; Boom Truck [40 h]; 3-outlet fire hydrant (2 x 2.5 inch and 1 x 4.5 inch) in the form of a separate dry vacuum cylinder [3.85 nr] | 48,587 | L101 | Z1 | CONS | PT | Fire | bef |
| RHD4CZ1L101PT4500 |  | Protection Barriers for Fire Hydrant - (RD-L-10/1)-Z1-L101-PT | 3d | 2027-07-21 | 2027-07-24 | RHD4CZ1L101PT4400 | Unskilled Labor [23.96 h]; Plumber [23.96 h]; 3-outlet fire hydrant (2 x 2.5 inch and 1 x 4.5 inch) in the form of a separate dry vacuum cylinder [0.55 nr] | 6,941 | L101 | Z1 | CONS | PT | Protection Barriers | bef |
|  | 618 | **RHD4-02-002-L101-(PT)-Concrete Encasement** |  |  |  |  |  |  |  |  |  |  |  |  |
|  | 619 | **RHD4-02-002-Z1-L101-Irrigation Network - IRR** |  | 2027-08-04 | 2027-09-06 |  |  |  |  |  |  |  |  |  |
|  | 626 | **RHD4-02-002-L101-(IRR)-HDPE Pipes - 450 mm diameter** |  |  |  |  |  |  |  |  |  |  |  |  |
|  | 6107 | **RHD4-02-002-L101-(IRR)-HDPE Pipes - 160 mm diameter** |  | 2027-08-11 | 2027-08-24 |  |  |  |  |  |  |  |  |  |
| RHD4CZ1L101IRR1100 |  | Excavation works for HDPE Pipline 160 mm - (RD-L-10/1)-Z1-L101-IRR | 3d | 2027-08-11 | 2027-08-14 | RHD4CZ1L101PT3200, RHD4CZ1L101SW3100, RHD4CZ1L101IRR1104 | Skilled labor [24.39 h]; Unskilled Labor [24.39 h]; Equipment Opreator [29.3 h]; Excavator-Poclain [24.39 h]; Dump Truck [4.9 h]; HDPE (160mm Diameter) - TSE - Depth: less than 1.5m [33.6 m] | 4,132.8 | L101 | Z1 | CONS | IRR | Excavation | bef |
| RHD4CZ1L101IRR1200 |  | Bedding works for HDPE Pipline 160 mm - (RD-L-10/1)-Z1-L101-IRR | 2d | 2027-08-15 | 2027-08-16 | RHD4CZ1L101IRR1100 | Skilled labor [18.3 h]; Unskilled Labor [36.59 h]; Equipment Opreator [36.59 h]; Excavator-Poclain [18.3 h]; Dump Truck [18.3 h]; HDPE (160mm Diameter) - TSE - Depth: less than 1.5m [16.8 m] | 2,066.4 | L101 | Z1 | CONS | IRR | Bedding | bef |
| RHD4CZ1L101IRR1300 |  | Installing for HDPE Pipline 160 mm - (RD-L-10/1)-Z1-L101-IRR | 3d | 2027-08-17 | 2027-08-19 | RHD4CZ1L101IRR1200 | Unskilled Labor [48.8 h]; Plumber [24.39 h]; Equipment Opreator [24.39 h]; Boom Truck [24.39 h]; HDPE (160mm Diameter) - TSE - Depth: less than 1.5m [151.2 m] | 18,597.6 | L101 | Z1 | CONS | IRR | Installation | bef |
| RHD4CZ1L101IRR1400 |  | Primary Test for HDPE Pipline 160 mm - (RD-L-10/1)-Z1-L101-IRR | 2d | 2027-08-21 | 2027-08-22 | RHD4CZ1L101IRR1300 | Unskilled Labor [7.3 h]; Plumber [7.3 h]; Equipment Opreator [7.3 h]; Water Truck [7.3 h]; HDPE (160mm Diameter) - TSE - Depth: less than 1.5m [67.2 m] | 8,265.6 | L101 | Z1 | CONS | IRR | Primary Test | bef |
| RHD4CZ1L101IRR1500 |  | Backfilling and warning tape works for HDPE Pipline 160 mm - (RD-L-10/1)-Z1-L101-IRR | 2d | 2027-08-23 | 2027-08-24 | RHD4CZ1L101IRR1400 | Skilled labor [18.3 h]; Unskilled Labor [36.59 h]; Equipment Opreator [36.59 h]; Excavator-Poclain [18.3 h]; Dump Truck [18.3 h]; HDPE (160mm Diameter) - TSE - Depth: less than 1.5m [67.2 m] | 8,265.6 | L101 | Z1 | CONS | IRR | Backfilling | bef |
|  | 6116 | **RHD4-02-002-L101-(IRR)-Butterfly Valve Chamber** |  | 2027-08-15 | 2027-08-23 |  |  |  |  |  |  |  |  |  |
| RHD4CZ1L101IRR2100 |  | Excavation and Bedding for Butterfly Valve Chamber for Irrigation Network - (RD-L-10/1)-Z1-L101-IRR | 2d | 2027-08-15 | 2027-08-16 | RHD4CZ1L101IRR1100 | Skilled labor [5.45 h]; Unskilled Labor [5.45 h]; Equipment Opreator [1.09 h]; Excavator-Poclain [0.54 h]; Dump Truck [0.54 h]; Valve chambers - TSE [0.25 nr] | 3,660.75 | L101 | Z1 | CONS | IRR | Excavation and Bedding | bef |
| RHD4CZ1L101IRR2200 |  | PC works for Butterfly Valve Chamber for Irrigation Network - (RD-L-10/1)-Z1-L101-IRR | 2d | 2027-08-17 | 2027-08-18 | RHD4CZ1L101IRR2100 | Skilled labor [5.45 h]; Unskilled Labor [10.89 h]; Equipment Opreator [0.54 h]; Concrete Pump [0.54 h]; Valve chambers - TSE [0.1 nr] | 1,464.3 | L101 | Z1 | CONS | IRR | PC Works | bef |
| RHD4CZ1L101IRR2300 |  | Installation for Butterfly Valve Chamber for Irrigation Network - (RD-L-10/1)-Z1-L101-IRR | 2d | 2027-08-19 | 2027-08-21 | RHD4CZ1L101IRR2200 | Skilled labor [5.45 h]; Unskilled Labor [10.89 h]; Equipment Opreator [1.09 h]; Boom Truck [1.09 h]; Valve chambers - TSE [0.55 nr] | 8,053.65 | L101 | Z1 | CONS | IRR | Installation | bef |
| RHD4CZ1L101IRR2400 |  | Backfilling works for Butterfly Valve Chamber for Irrigation Network - (RD-L-10/1)-Z1-L101-IRR | 2d | 2027-08-22 | 2027-08-23 | RHD4CZ1L101IRR2300 | Skilled labor [5.45 h]; Unskilled Labor [10.89 h]; Equipment Opreator [1.09 h]; Water Truck [0.54 h]; Dump Truck [0.54 h]; Valve chambers - TSE [0.1 nr] | 1,464.3 | L101 | Z1 | CONS | IRR | Backfilling Works | bef |
|  | 6117 | **RHD4-02-002-L101-(IRR)-Butterfly Valves** |  | 2027-08-22 | 2027-08-25 |  |  |  |  |  |  |  |  |  |
| RHD4CZ1L101IRR3101 |  | Installation for Butterfly Valves for Irrigation Network - (RD-L-10/1)-Z1-L101-IRR | 2d | 2027-08-22 | 2027-08-23 | RHD4CZ1L101IRR2300 | Unskilled Labor [5.45 h]; Plumber [5.45 h]; Butterfly valves dia 315 - TSE [0.9 nr] | 11,255.4 | L101 | Z1 | CONS | IRR | Installation | bef |
| RHD4CZ1L101IRR3201 |  | Stem and Service box for Butterfly Valves for Irrigation Network - (RD-L-10/1)-Z1-L101-IRR | 2d | 2027-08-24 | 2027-08-25 | RHD4CZ1L101IRR3101, RHD4CZ1L101IRR2400 | Unskilled Labor [5.45 h]; Plumber [5.45 h]; Butterfly valves dia 315 - TSE [0.1 nr] | 1,250.6 | L101 | Z1 | CONS | IRR | Stem and Service box | bef |

| ID | WBS | Activity | Duration | Start | Finish | Predecessors | Resources | Cost | RDH4-01-001-Road and Block Names-1 | RDH4-01-001-Zones-1 | RDH4-01-001-Phases-1 | RDH4-01-001-Networks-1 | RDH4-01-001-Work Method-1 | RDH4-01-001-MENEM |
| --- | --- | --- | --- | --- | --- | --- | --- | --- | --- | --- | --- | --- | --- | --- |
|  | 625 | **RHD4-02-002-L101-(IRR)-HDPE Pipes - 400 mm diameter** |  |  |  |  |  |  |  |  |  |  |  |  |
|  | 624 | **RHD4-02-002-L101-(IRR)-HDPE Pipes - 315 mm diameter** |  | 2027-08-04 | 2027-08-31 |  |  |  |  |  |  |  |  |  |
| RHD4CZ1L101IRR1104 |  | Excavation works for HDPE Pipline 315 mm - (RD-L-10/1)-Z1-L101-IRR | 6d | 2027-08-04 | 2027-08-10 | RHD4ENSDZ1APPIRR140, RHD4ENMSRR2000, RHD4CZ1L101PT3200, RHD4CZ1L101PT1101, RHD4CZ4C031PT3201, RHD4CZ4L014IRR3203 | Skilled labor [63.93 h]; Unskilled Labor [63.93 h]; Equipment Opreator [76.8 h]; Excavator-Poclain [63.93 h]; Dump Truck [12.74 h]; HDPE (315mm Diameter) - TSE - Depth: less than 1.5m [86.06 m]; HDPE (315mm Diameter) - TSE - Depth: more than 1.51m [3.07 m] | 26,212.74 | L101 | Z1 | CONS | IRR | Excavation | bef |
| RHD4CZ1L101IRR1204 |  | Bedding works for HDPE Pipline 315 mm - (RD-L-10/1)-Z1-L101-IRR | 5d | 2027-08-11 | 2027-08-16 | RHD4CZ1L101IRR1104, RHD4CZ4C031CCTV1500, RHD4CZ5L016SL2400 | Skilled labor [48.35 h]; Unskilled Labor [96.71 h]; Equipment Opreator [96.71 h]; Excavator-Poclain [48.35 h]; Dump Truck [48.35 h]; HDPE (315mm Diameter) - TSE - Depth: less than 1.5m [43.03 m]; HDPE (315mm Diameter) - TSE - Depth: more than 1.51m [1.02 m] | 12,939 | L101 | Z1 | CONS | IRR | Bedding | bef |
| RHD4CZ1L101IRR1304 |  | Installing for HDPE Pipline 315 mm - (RD-L-10/1)-Z1-L101-IRR | 6d | 2027-08-17 | 2027-08-23 | RHD4PRSHLDOSIRR1000, RHD4PRSHLSTAGIRR1000, RHD4CZ1L101IRR1204, RHD4CZ4L014IRR3200, RHD4CZ9L05PT4500 | Unskilled Labor [128 h]; Plumber [63.93 h]; Equipment Opreator [63.93 h]; Boom Truck [63.93 h]; HDPE (315mm Diameter) - TSE - Depth: less than 1.5m [387.26 m]; HDPE (315mm Diameter) - TSE - Depth: more than 1.51m [8.2 m] | 116,132.47 | L101 | Z1 | CONS | IRR | Installation | bef |
| RHD4CZ1L101IRR1404 |  | Primary Test for HDPE Pipline 315 mm - (RD-L-10/1)-Z1-L101-IRR | 2d | 2027-08-24 | 2027-08-25 | RHD4CZ1L101IRR1304 | Unskilled Labor [19.49 h]; Plumber [19.49 h]; Equipment Opreator [19.49 h]; Water Truck [19.49 h]; HDPE (315mm Diameter) - TSE - Depth: less than 1.5m [172.12 m]; HDPE (315mm Diameter) - TSE - Depth: more than 1.51m [4.1 m] | 51,762.49 | L101 | Z1 | CONS | IRR | Primary Test | bef |
| RHD4CZ1L101IRR1504 |  | Backfilling and warning tape works for HDPE Pipline 315 mm - (RD-L-10/1)-Z1-L101-IRR | 5d | 2027-08-26 | 2027-08-31 | RHD4CZ1L101IRR1500, RHD4CZ1L101IRR1404 | Skilled labor [48.35 h]; Unskilled Labor [96.71 h]; Equipment Opreator [96.71 h]; Excavator-Poclain [48.35 h]; Dump Truck [48.35 h]; HDPE (315mm Diameter) - TSE - Depth: less than 1.5m [172.12 m]; HDPE (315mm Diameter) - TSE - Depth: more than 1.51m [4.1 m] | 51,762.49 | L101 | Z1 | CONS | IRR | Backfilling | bef |
|  | 622 | **RHD4-02-002-L101-(IRR)-HDPE Pipes - 200 mm diameter** |  |  |  |  |  |  |  |  |  |  |  |  |
|  | 628 | **RHD4-02-002-L101-(IRR)-Gate Valves (Direct Buried)** |  | 2027-08-24 | 2027-09-06 |  |  |  |  |  |  |  |  |  |
| RHD4CZ1L101IRR3100 |  | Installation for Direct Buried Gate Valves - (RD-L-10/1)-Z1-L101-IRR | 6d | 2027-08-24 | 2027-08-30 | RHD4PRSHLDOSIRR1100, RHD4PRSHLSTAGIRR1100, RHD4CZ1L101IRR1304 SS, RHD4CZ1L101IRR1304 FF, RHD4CZ1L101PT1101, RHD4CZ1L101PT1101 FF, RHD4CZ1L101PT1100, RHD4CZ1L101PT1100 FF, RHD4CZ1L101IRR1304, RHD4CZ9L06ST3500, RHD4CZ3L122RW3002 FF, RHD4CZ3C083RW3001 FF | Unskilled Labor [65.34 h]; Plumber [65.34 h]; Gate valves dia 100 mm - TSE [10.8 nr] | 17,064 | L101 | Z1 | CONS | IRR | Installation | bef |
| RHD4CZ1L101IRR3200 |  | Stem and Service box for Direct Buried Gate Valves - (RD-L-10/1)-Z1-L101-IRR | 6d | 2027-08-31 | 2027-09-06 | RHD4PRSHLDOSIRR1300, RHD4PRSHLSTAGIRR1300, RHD4CZ1L101IRR3100, RHD4CZ1L101PT1101, RHD4CZ1L101PT1100, RHD4CZ6A02RD7100 FF, RHD4CZ7A012ST8500, RHD4CZ4RA02CCTV1500 FF | Unskilled Labor [65.34 h]; Plumber [65.34 h]; Gate valves dia 100 mm - TSE [1.2 nr] | 1,896 | L101 | Z1 | CONS | IRR | Stem and Service box | bef |
|  | 653 | **RHD4-02-002-Z1-L101-Medium Voltage Network - MV** |  | 2027-05-13 | 2027-06-26 |  |  |  |  |  |  |  |  |  |
|  | 654 | **RHD4-02-002-L101-(MV)-Medium Voltage cable trench** |  | 2027-05-13 | 2027-06-16 |  |  |  |  |  |  |  |  |  |
| RHD4CZ1L101MV1100 |  | Excavation for Medium Voltage Trench - (RD-L-10/1)-Z1-L101-MV | 13d | 2027-05-13 | 2027-06-01 | RHD4ENSDZ1APPMV150, RHD4CZ1L101RD3100, RHD4CZ2L011MV5400 | Skilled labor [135.69 h]; Unskilled Labor [271.39 h]; Equipment Opreator [407.08 h]; Excavator-Poclain [135.69 h]; Dump Truck [271.39 h]; Excavation for Trench size 60cm wide and 80cm deep ( for 2 cables) [872.1 m3] | 8,721 | L101 | Z1 | CONS | MV | Excavation | AFT |
| RHD4CZ1L101MV1200 |  | Trench Backfilling for Medium Voltage Network - (RD-L-10/1)-Z1-L101-MV | 13d | 2027-06-02 | 2027-06-16 | RHD4CZ1L101MV1100 | Skilled labor [135.69 h]; Unskilled Labor [135.69 h]; Equipment Opreator [271.39 h]; Dump Truck [271.39 h]; Excavation for Trench size 60cm wide and 80cm deep ( for 2 cables) [373.76 m3] | 3,737.57 | L101 | Z1 | CONS | MV | Backfilling | AFT |
|  | 655 | **RHD4-02-002-L101-(MV)-Medium Voltage duct banks** |  |  |  |  |  |  |  |  |  |  |  |  |
|  | 656 | **RHD4-02-002-L101-(MV)-Medium Voltage cables 3Cx 500 mm²** |  | 2027-06-02 | 2027-06-23 |  |  |  |  |  |  |  |  |  |
| RHD4CZ1L101MV3100 |  | Installation of Medium Voltage Cables 3Cx 500 mm² - (RD-L-10/1)-Z1-L101-MV | 6d | 2027-06-02 | 2027-06-08 | RHD4PRSHLDOSMV1100, RHD4ENMSMV2000, RHD4ENMSMV2010, RHD4PRSHLSTAGMV1100, RHD4CZ1L101MV1100 | Skilled labor [56.41 h]; Unskilled Labor [225.43 h]; Electrician [112.72 h]; Equipment Opreator [169.13 h]; Boom Truck [56.41 h]; Cable Laying Machine [112.72 h]; Cable 13.8 kV 3Cx 500 mm² Al/XLPE,/LLDPE / Unarmored [2328.94 m] | 370,301.87 | L101 | Z1 | CONS | MV | Installation | AFT |
| RHD4CZ1L101MV3200 |  | Joints Installation of Medium Voltage Cables 3Cx 500 mm² - (RD-L-10/1)-Z1-L101-MV | 2d | 2027-06-09 | 2027-06-10 | RHD4PRSHLDOSMV1300, RHD4PRSHLSTAGMV1300, RHD4CZ1L101MV3100 | Skilled labor [21.78 h]; Unskilled Labor [87.12 h]; Electrician [43.56 h]; Equipment Opreator [21.78 h]; Boom Truck [21.78 h]; Straight joints cables for 13.8 kv 3Cx 500 mm², Al /XLPE/LLDPE [4 Unit] | 12,992 | L101 | Z1 | CONS | MV | Joints Installation | AFT |
| RHD4CZ1L101MV3300 |  | Testing of Medium Voltage Cables 3Cx 500 mm² - (RD-L-10/1)-Z1-L101-MV | 6d | 2027-06-17 | 2027-06-23 | RHD4CZ1L101MV3200, RHD4CZ1L101MV1200, RHD4CZ1L101MV3100, RHD4CZ1L101MV1100 | Skilled labor [56.41 h]; Unskilled Labor [225.43 h]; Electrician [112.72 h]; Cable 13.8 kV 3Cx 500 mm² Al/XLPE,/LLDPE / Unarmored [258.77 m] | 41,144.65 | L101 | Z1 | CONS | MV | Testing | AFT |
|  | 5387 | **RHD4-02-002-C062-(MV)-Medium Voltage cables 3Cx 50 mm²** |  | 2027-06-24 | 2027-06-26 |  |  |  |  |  |  |  |  |  |
| RHD4CZ1L101MV3401 |  | Termination of Medium Voltage Cables 3Cx 50 mm² - (RD-L-10/1)-Z1-L101-MV | 2d | 2027-06-24 | 2027-06-26 | RHD4CZ1L101MV3300 | Unskilled Labor [29.08 h]; Electrician [14.48 h]; Cable Termination for 13.8 kv 3Cx 500 mm², Al /XLPE/LLDPE [2 Unit] | 5,270 | L101 | Z1 | CONS | MV | Termination | AFT |
|  | 660 | **RHD4-02-002-Z1-L101-Low Voltage Network - LV** |  | 2027-09-01 | 2027-10-07 |  |  |  |  |  |  |  |  |  |
|  | 661 | **RHD4-02-002-L101-(LV)-Low Voltage duct banks** |  | 2027-09-01 | 2027-09-09 |  |  |  |  |  |  |  |  |  |
| RHD4CZ1L101LV2100 |  | Excavation of Duct Banks for Low Voltage Network - (RD-L-10/1)-Z1-L101-LV | 2d | 2027-09-01 | 2027-09-02 | RHD4ENSDZ1APPLV160, RHD4CZ1L101IRR3201, RHD4CZ1L101IRR1504 | Skilled labor [12.85 h]; Unskilled Labor [12.85 h]; Equipment Opreator [25.7 h]; Excavator-Poclain [12.85 h]; Dump Truck [12.85 h]; Duct bank for LV cables UPVC (4xø110mm) [1.77 m] | 529.23 | L101 | Z1 | CONS | LV | Excavation | bef |
| RHD4CZ1L101LV2200 |  | Installation of Duct Banks for Low Voltage Network - (RD-L-10/1)-Z1-L101-LV | 2d | 2027-09-04 | 2027-09-05 | RHD4PRSHLDOSLV1000, RHD4PRSHLSTAGLV1000, RHD4CZ1L101LV2100 | Carpenter [1.96 h]; Skilled labor [19.28 h]; Unskilled Labor [19.28 h]; Steel Fixer [1.96 h]; Duct bank for LV cables UPVC (4xø110mm) [1.77 m] | 529.23 | L101 | Z1 | CONS | LV | Installing | bef |
| RHD4CZ1L101LV2300 |  | Pouring of Duct Banks for Low Voltage Network - (RD-L-10/1)-Z1-L101-LV | 2d | 2027-09-06 | 2027-09-07 | RHD4CZ1L101LV2200 | Skilled labor [12.85 h]; Unskilled Labor [12.85 h]; Equipment Opreator [5.12 h]; Concrete Mixer Truck [2.61 h]; Concrete Pump [2.61 h]; Duct bank for LV cables UPVC (4xø110mm) [11.51 m] | 3,441.49 | L101 | Z1 | CONS | LV | Pouring | bef |
| RHD4CZ1L101LV2400 |  | Backfilling of Duct Banks for Low Voltage Network - (RD-L-10/1)-Z1-L101-LV | 2d | 2027-09-08 | 2027-09-09 | RHD4CZ1L101LV2300 | Skilled labor [9.69 h]; Unskilled Labor [9.69 h]; Equipment Opreator [3.81 h]; Excavator-Poclain [3.81 h]; Duct bank for LV cables UPVC (4xø110mm) [2.66 m] | 795.34 | L101 | Z1 | CONS | LV | Backfilling | bef |

| ID | WBS | Activity | Duration | Start | Finish | Predecessors | Resources | Cost | RDH4-01-001-Road and Block Names-1 | RDH4-01-001-Zones-1 | RDH4-01-001-Phases-1 | RDH4-01-001-Networks-1 | RDH4-01-001-Work Method-1 | RDH4-01-001-MENEM |
| --- | --- | --- | --- | --- | --- | --- | --- | --- | --- | --- | --- | --- | --- | --- |
|  | 662 | **RHD4-02-002-L101-(LV)-Low Voltage Drawpit** |  | 2027-09-08 | 2027-09-12 |  |  |  |  |  |  |  |  |  |
| RHD4CZ1L101LV5100 |  | Excavation of Drawpit size 900x900x1000mm for Low Voltage Network - (RD-L-10/1)-Z1-L101-LV | 2d | 2027-09-08 | 2027-09-09 | RHD4ENSDZ1APPLV160, RHD4CZ1L101LV2300, RHD4CZ1L101MV3401 | Skilled labor [0.87 h]; Unskilled Labor [0.87 h]; Equipment Opreator [0.8 h]; Excavator-Poclain [0.33 h]; Dump Truck [0.33 h]; Drawpit with medium duty steel cover, size900x900x1000mm, [0.15 Unit] | 551.55 | L101 | Z1 | CONS | LV | Excavation | AFT |
| RHD4CZ1L101LV5200 |  | Installation of Drawpit size 900x900x1000mm for Low Voltage Network - (RD-L-10/1)-Z1-L101-LV | 2d | 2027-09-11 | 2027-09-12 | RHD4PRSHLDOSLV1400, RHD4PRSHLSTAGLV1400, RHD4CZ1L101LV5100 | Skilled labor [0.87 h]; Unskilled Labor [0.87 h]; Equipment Opreator [0.33 h]; Boom Truck [0.33 h]; Drawpit with medium duty steel cover, size900x900x1000mm, [0.85 Unit] | 3,125.45 | L101 | Z1 | CONS | LV | Installation | AFT |
|  | 663 | **RHD4-02-002-L101-(LV)-Low Voltage cables** |  | 2027-09-11 | 2027-10-07 |  |  |  |  |  |  |  |  |  |
| RHD4CZ1L101LV3100 |  | Excavation for Low Voltage Cables for Low Voltage Network - (RD-L-10/1)-Z1-L101-LV | 7d | 2027-09-11 | 2027-09-18 | RHD4ENSDZ1APPLV160, RHD4CZ1L101LV2400, RHD4CZ1L101MV1200, RHD4CZ1L101MV3401, RHD4CZ1L101MV3401 FF | Skilled labor [69.7 h]; Unskilled Labor [139.4 h]; Equipment Opreator [139.4 h]; Excavator-Poclain [69.7 h]; Boom Truck [69.7 h]; Cable, Copper 4x70mm2/ CU/XLPE/PVC [145.51 m]; Cable, Copper 4x50mm2/ CU/XLPE/PVC +1x25mm2 CU/PVC [54.81 m]; Cable, Copper 3x10mm2/ CU/XLPE/SWA/PVC [119.65 m] | 35,999.55 | L101 | Z1 | CONS | LV | Excavation | AFT |
| RHD4CZ1L101LV3200 |  | Cable Laying of Low Voltage Cables for Low Voltage Network - (RD-L-10/1)-Z1-L101-LV | 6d | 2027-09-19 | 2027-09-26 | RHD4PRSHLDOSLV1100, RHD4ENMSLV2000, RHD4ENMSLV2010, RHD4PRSHLSTAGLV1100, RHD4CZ1L101LV3100 | Skilled labor [58.05 h]; Unskilled Labor [232.29 h]; Electrician [116.2 h]; Equipment Opreator [174.25 h]; Boom Truck [58.05 h]; Cable Laying Machine [116.2 h]; Cable, Copper 4x70mm2/ CU/XLPE/PVC [232 m]; Cable, Copper 4x50mm2/ CU/XLPE/PVC +1x25mm2 CU/PVC [164.44 m]; Cable, Copper 3x10mm2/ CU/XLPE/SWA/PVC [358.94 m] | 73,432.89 | L101 | Z1 | CONS | LV | Cable Laying | AFT |
| RHD4CZ1L101LV3300 |  | Warning tape and Backfill for Low Voltage Cables for Low Voltage Network - (RD-L-10/1)-Z1-L101-LV | 6d | 2027-09-27 | 2027-10-03 | RHD4CZ1L101LV3200, RHD4CZ1L101LV5200 | Skilled labor [58.05 h]; Unskilled Labor [232.29 h]; Electrician [116.2 h]; Equipment Opreator [58.05 h]; Boom Truck [58.05 h]; Cable, Copper 4x70mm2/ CU/XLPE/PVC [109.13 m]; Cable, Copper 4x50mm2/ CU/XLPE/PVC +1x25mm2 CU/PVC [41.11 m]; Cable, Copper 3x10mm2/ CU/XLPE/SWA/PVC [89.74 m] | 26,999.97 | L101 | Z1 | CONS | LV | Warning tape and Backfill | AFT |
| RHD4CZ1L101LV3400 |  | Testing of Low Voltage Cables for Low Voltage Network - (RD-L-10/1)-Z1-L101-LV | 4d | 2027-10-04 | 2027-10-07 | RHD4CZ1L101LV3300 | Skilled labor [34.85 h]; Unskilled Labor [139.4 h]; Electrician [69.7 h]; Equipment Opreator [34.85 h]; Boom Truck [34.85 h]; Cable, Copper 4x70mm2/ CU/XLPE/PVC [36.38 m]; Cable, Copper 4x50mm2/ CU/XLPE/PVC +1x25mm2 CU/PVC [13.7 m]; Cable, Copper 3x10mm2/ CU/XLPE/SWA/PVC [29.91 m] | 8,999.58 | L101 | Z1 | CONS | LV | Testing | AFT |
|  | 666 | **RHD4-02-002-Z1-L101-Street Lighting Network - SL** |  | 2027-09-01 | 2027-11-04 |  |  |  |  |  |  |  |  |  |
|  | 667 | **RHD4-02-002-L101-(SL)-Street Lighting duct banks** |  | 2027-09-01 | 2027-09-12 |  |  |  |  |  |  |  |  |  |
| RHD4CZ1L101SL2100 |  | Excavation of Duct Banks for Street Lighting Network - (RD-L-10/1)-Z1-L101-SL | 2d | 2027-09-01 | 2027-09-02 | RHD4ENSDZ1APPSL170, RHD4CZ1L101IRR1504 | Skilled labor [11.76 h]; Unskilled Labor [11.76 h]; Equipment Opreator [23.52 h]; Excavator-Poclain [11.76 h]; Dump Truck [11.76 h]; Road Crossing Duct for Street Lighting cables UPVC (2x?110mm) [1.62 m] | 327.96 | L101 | Z1 | CONS | SL | Excavation | bef |
| RHD4CZ1L101SL2200 |  | Installation of Duct Banks for Street Lighting Network - (RD-L-10/1)-Z1-L101-SL | 2d | 2027-09-06 | 2027-09-07 | RHD4PRSHLDOSSL1000, RHD4PRSHLSTAGSL1000, RHD4CZ1L101SL2100, RHD4CZ1L101LV2200 | Carpenter [1.74 h]; Skilled labor [17.64 h]; Unskilled Labor [17.64 h]; Steel Fixer [1.74 h]; Road Crossing Duct for Street Lighting cables UPVC (2x?110mm) [1.62 m] | 327.96 | L101 | Z1 | CONS | SL | Installing | bef |
| RHD4CZ1L101SL2300 |  | Pouring of Duct Banks for Street Lighting Network - (RD-L-10/1)-Z1-L101-SL | 2d | 2027-09-08 | 2027-09-09 | RHD4CZ1L101SL2200, RHD4CZ1L101LV2300 | Skilled labor [11.76 h]; Unskilled Labor [11.76 h]; Equipment Opreator [4.68 h]; Concrete Mixer Truck [2.4 h]; Concrete Pump [2.4 h]; Road Crossing Duct for Street Lighting cables UPVC (2x?110mm) [10.55 m] | 2,131.72 | L101 | Z1 | CONS | SL | Pouring | bef |
| RHD4CZ1L101SL2400 |  | Backfilling of Duct Banks for Street Lighting Network - (RD-L-10/1)-Z1-L101-SL | 2d | 2027-09-11 | 2027-09-12 | RHD4CZ1L101SL2300, RHD4CZ1L101LV2400 | Skilled labor [8.8 h]; Unskilled Labor [8.8 h]; Equipment Opreator [3.48 h]; Excavator-Poclain [3.48 h]; Road Crossing Duct for Street Lighting cables UPVC (2x?110mm) [2.44 m] | 491.94 | L101 | Z1 | CONS | SL | Backfilling | bef |
|  | 668 | **RHD4-02-002-L101-(SL)-Street Lighting Drawpit** |  | 2027-09-13 | 2027-09-16 |  |  |  |  |  |  |  |  |  |
| RHD4CZ1L101SL5100 |  | Excavation of Drawpit size 600x600x900mm for Street Lighting Network - (RD-L-10/1)-Z1-L101-SL | 2d | 2027-09-13 | 2027-09-14 | RHD4ENSDZ1APPSL170, RHD4CZ1L101MV3401, RHD4CZ1L101LV5200 | Skilled labor [1.85 h]; Unskilled Labor [1.85 h]; Equipment Opreator [1.42 h]; Excavator-Poclain [0.8 h]; Dump Truck [0.8 h]; Drawpit with medium duty steel cover, size600x600x900mm, [0.3 Unit] | 735.3 | L101 | Z1 | CONS | SL | Excavation | AFT |
| RHD4CZ1L101SL5200 |  | Installation of Drawpit size 600x600x900mm for Street Lighting Network - (RD-L-10/1)-Z1-L101-SL | 2d | 2027-09-15 | 2027-09-16 | RHD4PRSHLDOSSL1400, RHD4PRSHLSTAGSL1400, RHD4CZ1L101SL5100 | Skilled labor [1.85 h]; Unskilled Labor [1.85 h]; Equipment Opreator [0.8 h]; Boom Truck [0.8 h]; Drawpit with medium duty steel cover, size600x600x900mm, [1.7 Unit] | 4,166.7 | L101 | Z1 | CONS | SL | Installation | AFT |
|  | 669 | **RHD4-02-002-L101-(SL)-Street Lighting cables** |  | 2027-09-28 | 2027-10-24 |  |  |  |  |  |  |  |  |  |
| RHD4CZ1L101SL3100 |  | Excavation for Street Lighting Cables for Street Lighting Network - (RD-L-10/1)-Z1-L101-SL | 7d | 2027-09-28 | 2027-10-05 | RHD4ENSDZ1APPSL170, RHD4CZ1L101SL1300, RHD4CZ1L101MV3300, RHD4CZ1L101SL5200 | Skilled labor [72.09 h]; Unskilled Labor [144.3 h]; Equipment Opreator [144.3 h]; Excavator-Poclain [72.09 h]; Boom Truck [72.09 h]; Cable, Copper 4x10mm2/ CU/XLPE/SWA/PVC + 1x10mm2 CU/PVC [331.13 m] | 16,225.23 | L101 | Z1 | CONS | SL | Excavation | AFT |
| RHD4CZ1L101SL3200 |  | Cable Laying of Street Lighting Cables for Street Lighting Network - (RD-L-10/1)-Z1-L101-SL | 6d | 2027-10-06 | 2027-10-12 | RHD4PRSHLDOSSL1100, RHD4ENMSSL2000, RHD4ENMSSL2010, RHD4PRSHLSTAGSL1100, RHD4CZ1L101SL3100 | Skilled labor [60.11 h]; Unskilled Labor [240.46 h]; Electrician [120.23 h]; Equipment Opreator [180.34 h]; Boom Truck [60.11 h]; Cable Laying Machine [120.23 h]; Cable, Copper 4x10mm2/ CU/XLPE/SWA/PVC + 1x10mm2 CU/PVC [993.38 m] | 48,675.68 | L101 | Z1 | CONS | SL | Cable Laying | AFT |
| RHD4CZ1L101SL3300 |  | Warning tape and Backfill for Street Lighting Cables for Street Lighting Network - (RD-L-10/1)-Z1-L101-SL | 6d | 2027-10-13 | 2027-10-19 | RHD4CZ1L101SL3200 | Skilled labor [60.11 h]; Unskilled Labor [240.46 h]; Electrician [120.23 h]; Equipment Opreator [60.11 h]; Boom Truck [60.11 h]; Cable, Copper 4x10mm2/ CU/XLPE/SWA/PVC + 1x10mm2 CU/PVC [248.35 m] | 12,168.92 | L101 | Z1 | CONS | SL | Warning tape and Backfill | AFT |
| RHD4CZ1L101SL3400 |  | Testing of Street Lighting Cables for Street Lighting Network - (RD-L-10/1)-Z1-L101-SL | 4d | 2027-10-20 | 2027-10-24 | RHD4CZ1L101SL3300 | Skilled labor [36.05 h]; Unskilled Labor [144.3 h]; Electrician [72.09 h]; Equipment Opreator [36.05 h]; Boom Truck [36.05 h]; Cable, Copper 4x10mm2/ CU/XLPE/SWA/PVC + 1x10mm2 CU/PVC [82.78 m] | 4,056.31 | L101 | Z1 | CONS | SL | Testing | AFT |
|  | 670 | **RHD4-02-002-L101-(SL)-Street Lighting Poles** |  | 2027-09-13 | 2027-11-04 |  |  |  |  |  |  |  |  |  |
| RHD4CZ1L101SL1100 |  | Excavation for RC Base for Lighting Poles for Street Lighting Network - (RD-L-10/1)-Z1-L101-SL | 4d | 2027-09-13 | 2027-09-16 | RHD4ENSDZ1APPSL170, RHD4CZ1L101SL2400, RHD4CZ1L101MV3200, RHD4CZ1L101MV3401 | Skilled labor [40.62 h]; Unskilled Labor [40.62 h]; Equipment Opreator [81.35 h]; Excavator-Poclain [40.62 h]; Dump Truck [40.62 h]; Lighting poles single arms, height of ( 10 ) meters [5.6 Unit] | 19,079.2 | L101 | Z1 | CONS | SL | Excavation | AFT |
| RHD4CZ1L101SL1200 |  | Installation for RC Base for Lighting Poles for Street Lighting Network - (RD-L-10/1)-Z1-L101-SL | 4d | 2027-09-18 | 2027-09-21 | RHD4CZ1L101SL1100 | Skilled labor [40.62 h]; Unskilled Labor [40.62 h]; Equipment Opreator [81.35 h]; Excavator-Poclain [40.62 h]; Dump Truck [40.62 h]; Lighting poles single arms, height of ( 10 ) meters [14 Unit] | 47,698 | L101 | Z1 | CONS | SL | RC Base | AFT |
| RHD4CZ1L101SL1300 |  | Backfill for RC Base for Lighting Poles for Street Lighting Network - (RD-L-10/1)-Z1-L101-SL | 4d | 2027-09-22 | 2027-09-27 | RHD4PRLOLSTACCTV1001, RHD4CZ1L101SL1200 | Skilled labor [40.62 h]; Unskilled Labor [40.62 h]; Equipment Opreator [81.35 h]; Excavator-Poclain [40.62 h]; Dump Truck [40.62 h]; Lighting poles single arms, height of ( 10 ) meters [2.8 Unit] | 9,539.6 | L101 | Z1 | CONS | SL | Backfill | AFT |
| RHD4CZ1L101SL1400 |  | Installation for Lighting Poles for Street Lighting Network - (RD-L-10/1)-Z1-L101-SL | 6d | 2027-10-25 | 2027-10-31 | RHD4PRSHLDOSSL1200, RHD4ENMSSL2000, RHD4CZ1L101LV3400, RHD4ENMSSL2010, RHD4PRSHLSTAGSL1200, RHD4CZ1L101SL1300, RHD4CZ1L101SL3400 | Skilled labor [60.99 h]; Unskilled Labor [60.99 h]; Electrician [60.99 h]; Equipment Opreator [60.99 h]; Boom Truck [60.99 h]; Lighting poles single arms, height of ( 10 ) meters [33.6 Unit] | 114,475.2 | L101 | Z1 | CONS | SL | Poles Installation | AFT |
| RHD4CZ1L101SL1500 |  | Luminaire Installation for Lighting Poles for Street Lighting Network - (RD-L-10/1)-Z1-L101-SL | 4d | 2027-11-01 | 2027-11-04 | RHD4PRSHLDOSSL1300, RHD4PRSHLSTAGSL1300, RHD4CZ1L101SL1400 | Unskilled Labor [81.35 h]; Electrician [40.62 h]; Equipment Opreator [8.17 h]; Boom Truck [16.23 h]; Street Lighting( LED) Luminaire of Output ?10898 lumen [56 Unit] | 32,928 | L101 | Z1 | CONS | SL | Luminaire Installation | AFT |

| ID | WBS | Activity | Duration | Start | Finish | Predecessors | Resources | Cost | RDH4-01-001-Road and Block Names-1 | RDH4-01-001-Zones-1 | RDH4-01-001-Phases-1 | RDH4-01-001-Networks-1 | RDH4-01-001-Work Method-1 | RDH4-01-001-MENEM |
| --- | --- | --- | --- | --- | --- | --- | --- | --- | --- | --- | --- | --- | --- | --- |
|  | 672 | **RHD4-02-002-L101-(SL)-Street Lighting Earthing System** |  | 2027-11-01 | 2027-11-02 |  |  |  |  |  |  |  |  |  |
| RHD4CZ1L101SL6100 |  | Installation of Earthing for Lighting Poles and Fedder Pillers for Street Lighting Network - (RD-L-10/1)-Z1-L101-SL | 2d | 2027-11-01 | 2027-11-02 | RHD4ENMSER2000, RHD4ENMSER2010, RHD4CZ1L101SL1400, RHD4CZ1L101SL3300 | Skilled labor [1.42 h]; Unskilled Labor [1.42 h]; Equipment Opreator [2.94 h]; Excavator-Poclain [1.42 h]; Dump Truck [1.42 h]; Including lighting poles circuits - ER [2 Unit] | 1,226 | L101 | Z1 | CONS | SL | Installation | AFT |
|  | 678 | **RHD4-02-002-Z1-L101-Telecommunications Network - TC** |  | 2027-11-03 | 2027-12-18 |  |  |  |  |  |  |  |  |  |
|  | 679 | **RHD4-02-002-L101-(TC)-Telecommunications Ducts** |  | 2027-11-03 | 2027-12-18 |  |  |  |  |  |  |  |  |  |
| RHD4CZ1L101TC2100 |  | Excavation of HDPE Ducts for Telecom Network - (RD-L-10/1)-Z1-L101-TC | 11d | 2027-11-03 | 2027-11-15 | RHD4ENSDZ1APPTC190, RHD4CZ1L101IRR1504, RHD4CZ1L101SL6100 | Skilled labor [117.18 h]; Unskilled Labor [117.18 h]; Equipment Opreator [234.25 h]; Excavator-Poclain [117.18 h]; Dump Truck [117.18 h]; (6*50mm) HDPE ducts -TC [233.44 m]; (6*50mm+2*32mm) HDPE ducts -TC [74.36 m]; (6*50mm+4*32mm) HDPE ducts -TC [6.34 m]; (2*32mm) HDPE ducts -TC [8.55 m] | 29,692.92 | L101 | Z1 | CONS | TC | Excavation | AFT |
| RHD4CZ1L101TC2200 |  | Installation of HDPE Ducts for Telecom Network - (RD-L-10/1)-Z1-L101-TC | 17d | 2027-11-16 | 2027-12-05 | RHD4PRSHLDOSTC1000, RHD4PRSHLSTAGTC1000, RHD4CZ1L101TC2100 | Carpenter [17.53 h]; Skilled labor [175.77 h]; Unskilled Labor [175.77 h]; Steel Fixer [17.53 h]; (6*50mm) HDPE ducts -TC [758.68 m]; (6*50mm+2*32mm) HDPE ducts -TC [241.66 m]; (6*50mm+4*32mm) HDPE ducts -TC [20.61 m]; (2*32mm) HDPE ducts -TC [27.79 m] | 96,502 | L101 | Z1 | CONS | TC | Installing | AFT |
| RHD4CZ1L101TC2400 |  | Backfilling of HDPE Ducts for Telecom Network - (RD-L-10/1)-Z1-L101-TC | 11d | 2027-12-06 | 2027-12-18 | RHD4CZ1L101TC2200, RHD4CZ1L101TC5200 | Skilled labor [117.18 h]; Unskilled Labor [117.18 h]; Equipment Opreator [46.83 h]; Excavator-Poclain [46.83 h]; (6*50mm) HDPE ducts -TC [175.08 m]; (6*50mm+2*32mm) HDPE ducts -TC [55.77 m]; (6*50mm+4*32mm) HDPE ducts -TC [4.76 m]; (2*32mm) HDPE ducts -TC [6.41 m] | 22,269.69 | L101 | Z1 | CONS | TC | Backfilling | AFT |
|  | 680 | **RHD4-02-002-L101-(TC)-Telecommunications Manholes** |  | 2027-11-16 | 2027-11-27 |  |  |  |  |  |  |  |  |  |
| RHD4CZ1L101TC5100 |  | Excavation for Manholes for Telecom Network - (RD-L-10/1)-Z1-L101-TC | 5d | 2027-11-16 | 2027-11-21 | RHD4ENSDZ1APPTC190, RHD4CZ1L101TC2100 | Skilled labor [13.6 h]; Unskilled Labor [13.6 h]; Equipment Opreator [10.89 h]; Excavator-Poclain [5.45 h]; Dump Truck [5.45 h]; Manhole Type 1 - TC [1.2 nr]; Manhole Type 2 - TC [0.15 nr] | 9,100.35 | L101 | Z1 | CONS | TC | Excavation | AFT |
| RHD4CZ1L101TC5200 |  | Installation of Manholes for Telecom Network - (RD-L-10/1)-Z1-L101-TC | 5d | 2027-11-22 | 2027-11-27 | RHD4PRSHLDOSTC1200, RHD4PRSHLSTAGTC1200, RHD4CZ1L101TC5100, RHD4CZ1L101TC2200 SS | Skilled labor [13.6 h]; Unskilled Labor [13.6 h]; Equipment Opreator [5.45 h]; Boom Truck [5.45 h]; Manhole Type 1 - TC [6.8 nr]; Manhole Type 2 - TC [0.85 nr] | 51,568.65 | L101 | Z1 | CONS | TC | Installation | AFT |
|  | 681 | **RHD4-02-002-L101-(TC)-Telecomminications Road Crossings** |  |  |  |  |  |  |  |  |  |  |  |  |
|  | 682 | **RHD4-02-002-Z1-L101-Information and Communication Technologies - ICT** |  | 2027-03-28 | 2027-12-07 |  |  |  |  |  |  |  |  |  |
|  | 683 | **RHD4-02-002-L101-(ICT)-Information and Communication Technologies Ducts** |  | 2027-10-25 | 2027-12-07 |  |  |  |  |  |  |  |  |  |
| RHD4CZ1L101ICT2100 |  | Excavation of HDPE Ducts for ICT Network - (RD-L-10/1)-Z1-L101-ICT | 11d | 2027-10-25 | 2027-11-06 | RHD4ENSDZ1APPICT200, RHD4CZ1L101ICT3400, RHD4CZ1L101SL3400 | Skilled labor [110.54 h]; Unskilled Labor [110.54 h]; Equipment Opreator [221.18 h]; Excavator-Poclain [110.54 h]; Dump Truck [110.54 h]; (2*50mm) HDPE ducts -ICT [211.46 m]; (2*50mm+2*32mm) HDPE ducts -ICT [73.12 m]; (2*50mm+4*32mm) HDPE ducts -ICT [6 m]; (2*32mm) HDPE ducts -ICT [14.02 m] | 14,292.51 | L101 | Z1 | CONS | ICT | Excavation | AFT |
| RHD4CZ1L101ICT2200 |  | Installation of HDPE Ducts for ICT Network - (RD-L-10/1)-Z1-L101-ICT | 16d | 2027-11-07 | 2027-11-24 | RHD4PRSHLDOSICT1000, RHD4PRSHLSTAGICT1000, RHD4CZ1L101ICT2100 | Carpenter [16.55 h]; Skilled labor [165.86 h]; Unskilled Labor [165.86 h]; Steel Fixer [16.55 h]; (2*50mm) HDPE ducts -ICT [687.25 m]; (2*50mm+2*32mm) HDPE ducts -ICT [237.63 m]; (2*50mm+4*32mm) HDPE ducts -ICT [19.5 m]; (2*32mm) HDPE ducts -ICT [45.56 m] | 46,450.66 | L101 | Z1 | CONS | ICT | Installing | AFT |
| RHD4CZ1L101ICT2400 |  | Backfilling of HDPE Ducts for ICT Network - (RD-L-10/1)-Z1-L101-ICT | 11d | 2027-11-25 | 2027-12-07 | RHD4CZ1L101ICT2200 | Skilled labor [110.54 h]; Unskilled Labor [110.54 h]; Equipment Opreator [44.21 h]; Excavator-Poclain [44.21 h]; (2*50mm) HDPE ducts -ICT [158.6 m]; (2*50mm+2*32mm) HDPE ducts -ICT [54.84 m]; (2*50mm+4*32mm) HDPE ducts -ICT [4.5 m]; (2*32mm) HDPE ducts -ICT [10.52 m] | 10,719.57 | L101 | Z1 | CONS | ICT | Backfilling | AFT |
|  | 684 | **RHD4-02-002-L101-(ICT)-Information and Communication Technologies Manholes** |  | 2027-11-07 | 2027-11-17 |  |  |  |  |  |  |  |  |  |
| RHD4CZ1L101ICT5100 |  | Excavation for Manholes for ICT Network - (RD-L-10/1)-Z1-L101-ICT | 5d | 2027-11-07 | 2027-11-11 | RHD4ENSDZ1APPICT200, RHD4CZ1L101ICT2100 | Skilled labor [12.31 h]; Unskilled Labor [12.31 h]; Equipment Opreator [9.8 h]; Excavator-Poclain [4.9 h]; Dump Truck [4.9 h]; Manhole Type 1 - ICT [1.35 nr] | 7,280.55 | L101 | Z1 | CONS | ICT | Excavation | AFT |
| RHD4CZ1L101ICT5200 |  | Installation of Manholes for ICT Network - (RD-L-10/1)-Z1-L101-ICT | 5d | 2027-11-13 | 2027-11-17 | RHD4PRSHLDOSICT1200, RHD4PRSHLSTAGICT1200, RHD4CZ1L101ICT5100, RHD4CZ1L101PT4500 | Skilled labor [12.31 h]; Unskilled Labor [12.31 h]; Equipment Opreator [4.9 h]; Boom Truck [4.9 h]; Manhole Type 1 - ICT [7.65 nr] | 41,256.45 | L101 | Z1 | CONS | ICT | Installation | AFT |
|  | 685 | **RHD4-02-002-L101-(ICT)-Information and Communication Technologies Road Crossings** |  | 2027-03-28 | 2027-04-05 |  |  |  |  |  |  |  |  |  |
| RHD4CZ1L101ICT3100 |  | Excavation for Road Crossings for ICT Network - (RD-L-10/1)-Z1-L101-ICT | 2d | 2027-03-28 | 2027-03-29 | RHD4ENSDZ1APPICT200, RHD4CZ1L101ST1505 | Skilled labor [9.15 h]; Unskilled Labor [9.15 h]; Equipment Opreator [18.19 h]; Excavator-Poclain [9.15 h]; Dump Truck [9.15 h]; Road crossing ducts, (2*50mm) HDPE -ICT [1.67 m] | 63.46 | L101 | Z1 | CONS | ICT | Excavation | bef |
| RHD4CZ1L101ICT3200 |  | Installation of Road Crossings for ICT Network - (RD-L-10/1)-Z1-L101-ICT | 2d | 2027-03-30 | 2027-03-31 | RHD4PRSHLDOSICT1100, RHD4PRSHLSTAGICT1100, RHD4CZ1L101ICT3100 | Carpenter [1.2 h]; Skilled labor [12.09 h]; Unskilled Labor [12.09 h]; Steel Fixer [1.2 h]; Road crossing ducts, (2*50mm) HDPE -ICT [1.67 m] | 63.46 | L101 | Z1 | CONS | ICT | Installing | bef |
| RHD4CZ1L101ICT3300 |  | Pouring of Road Crossings for ICT Network - (RD-L-10/1)-Z1-L101-ICT | 2d | 2027-04-01 | 2027-04-03 | RHD4CZ1L101ICT3200 | Skilled labor [12.09 h]; Unskilled Labor [12.09 h]; Equipment Opreator [4.9 h]; Concrete Mixer Truck [2.4 h]; Concrete Pump [2.4 h]; Road crossing ducts, (2*50mm) HDPE -ICT [10.86 m] | 412.49 | L101 | Z1 | CONS | ICT | Pouring | bef |
| RHD4CZ1L101ICT3400 |  | Backfilling of Road Crossings for ICT Network - (RD-L-10/1)-Z1-L101-ICT | 2d | 2027-04-04 | 2027-04-05 | RHD4CZ1L101ICT3300 | Skilled labor [9.15 h]; Unskilled Labor [9.15 h]; Equipment Opreator [3.59 h]; Excavator-Poclain [3.59 h]; Road crossing ducts, (2*50mm) HDPE -ICT [2.5 m] | 95.19 | L101 | Z1 | CONS | ICT | Backfilling | bef |

| ID | WBS | Activity | Duration | Start | Finish | Predecessors | Resources | Cost | RDH4-01-001-Road and Block Names-1 | RDH4-01-001-Zones-1 | RDH4-01-001-Phases-1 | RDH4-01-001-Networks-1 | RDH4-01-001-Work Method-1 | RDH4-01-001-MENEM |
| --- | --- | --- | --- | --- | --- | --- | --- | --- | --- | --- | --- | --- | --- | --- |
|  | 673 | **RHD4-02-002-Z1-L101-Landscape Network - LS** |  |  |  |  |  |  |  |  |  |  |  |  |
|  | 674 | **RHD4-02-002-L101-(LS)-Landscape Lighting cables** |  |  |  |  |  |  |  |  |  |  |  |  |
|  | 675 | **RHD4-02-002-L101-(LS)-Landscape Feeder Pillars** |  |  |  |  |  |  |  |  |  |  |  |  |
|  | 676 | **RHD4-02-002-L101-(LS)-Landscape Bollard Poles** |  |  |  |  |  |  |  |  |  |  |  |  |
|  | 677 | **RHD4-02-002-L101-(LS)-Landscape Feeder Pillars Earthing** |  |  |  |  |  |  |  |  |  |  |  |  |
|  | 686 | **RHD4-02-002-Z1-L101-Security Network - CCTV** |  | 2027-12-19 | 2028-02-01 |  |  |  |  |  |  |  |  |  |
|  | 687 | **RHD4-02-002-L101-(CCTV)-Civil Works** |  | 2027-12-19 | 2027-12-29 |  |  |  |  |  |  |  |  |  |
| RHD4CZ1L101CCTV2100 |  | Civil Works for Security Network - (RD-L-10/1)-Z1-L101-CCTV | 10d | 2027-12-19 | 2027-12-29 | RHD4CZ1L101ICT2400, RHD4CZ1L101TC2400 | Skilled labor [435.68 h]; Unskilled Labor [871.2 h]; Equipment Opreator [435.68 h]; Excavator-Poclain [108.9 h]; Dump Truck [108.9 h]; Civil works Digging, trenching, laying pipes Meter with supply and installation of Manholes and for power feeding sources related to all towers and poles – (from 35-meter pole to control room and from related UPS camersa distribution boards till overall 2 [300 m] | 34,800 | L101 | Z1 | CONS | CCTV | Civil Works | AFT |
|  | 688 | **RHD4-02-002-L101-(CCTV)-CCTV Poles** |  | 2027-12-30 | 2028-01-10 |  |  |  |  |  |  |  |  |  |
| RHD4CZ1L101CCTV1100 |  | Excavation for RC Base for CCTV Poles for Security Network - (RD-L-10/1)-Z1-L101-CCTV | 2d | 2027-12-30 | 2028-01-01 | RHD4ENSDZ1APPCCTV210, RHD4CZ1L101CCTV2100 | Skilled labor [4.32 h]; Unskilled Labor [4.32 h]; Equipment Opreator [8.64 h]; Excavator-Poclain [2.18 h]; Dump Truck [2.18 h]; 25 Meters pole for CCTV Cameras [0.1 nr] | 14,090.2 | L101 | Z1 | CONS | CCTV | Excavation | AFT |
| RHD4CZ1L101CCTV1200 |  | Installation for RC Base for CCTV Poles for Security Network - (RD-L-10/1)-Z1-L101-CCTV | 2d | 2028-01-02 | 2028-01-03 | RHD4CZ1L101CCTV1100 | Skilled labor [4.32 h]; Unskilled Labor [4.32 h]; Equipment Opreator [8.64 h]; Excavator-Poclain [2.18 h]; Dump Truck [2.18 h]; 25 Meters pole for CCTV Cameras [0.25 nr] | 35,225.5 | L101 | Z1 | CONS | CCTV | RC Base | AFT |
| RHD4CZ1L101CCTV1300 |  | Backfill for RC Base for CCTV Poles for Security Network - (RD-L-10/1)-Z1-L101-CCTV | 2d | 2028-01-04 | 2028-01-05 | RHD4CZ1L101CCTV1200 | Skilled labor [2.88 h]; Unskilled Labor [2.88 h]; Equipment Opreator [5.44 h]; Excavator-Poclain [1.42 h]; Dump Truck [1.42 h]; 25 Meters pole for CCTV Cameras [0.05 nr] | 7,045.1 | L101 | Z1 | CONS | CCTV | Backfill | AFT |
| RHD4CZ1L101CCTV1400 |  | Installation for CCTV Poles for Security Network - (RD-L-10/1)-Z1-L101-CCTV | 2d | 2028-01-06 | 2028-01-08 | RHD4PRSHLDOSCCTV1000, RHD4PRSHLSTACCTV1000, RHD4CZ1L101CCTV1300 | Skilled labor [7.2 h]; Unskilled Labor [14.56 h]; Electrician [7.2 h]; Equipment Opreator [7.2 h]; Boom Truck [3.59 h]; 25 Meters pole for CCTV Cameras [0.6 nr] | 84,541.2 | L101 | Z1 | CONS | CCTV | Installation | AFT |
| RHD4CZ1L101CCTV1500 |  | Protection post Installation for CCTV Poles for Security Network - (RD-L-10/1)-Z1-L101-CCTV | 2d | 2028-01-09 | 2028-01-10 | RHD4CZ1L101CCTV1400 | Skilled labor [21.76 h]; Unskilled Labor [43.52 h]; Supply and Installation of minimum 4 Protection Post for each pole or tower with pipe ?220*6mm THK. [1 nr] | 4,903 | L101 | Z1 | CONS | CCTV | Protection post | AFT |
|  | 689 | **RHD4-02-002-L101-(CCTV)-Camera** |  | 2028-01-13 | 2028-01-15 |  |  |  |  |  |  |  |  |  |
| RHD4CZ1L101CCTV3100 |  | Installation for Cameras for Security Network - (RD-L-10/1)-Z1-L101-CCTV | 2d | 2028-01-13 | 2028-01-15 | RHD4PRSHLDOSCCTV1100, RHD4PRSHLSTACCTV1100, RHD4CZ1L101CCTV1400, RHD4CZ1L101CCTV4100, RHD4CZ1L101CCTV4200 | Unskilled Labor [32.64 h]; Electrician [16.32 h]; Outdoor Camera, 5MP resolution, day/night, fixed bullet camera providing Forensic WDR. [2 nr]; Outdoor PTZ with IR, HDTV 1080 and 31x optical, 12x digital, total 372x zoom, H264/265 with Motion JPEG. [2 nr] | 72,676 | L101 | Z1 | CONS | CCTV | Installation | AFT |
|  | 690 | **RHD4-02-002-L101-(CCTV)-Power and Infrastructure** |  | 2028-01-09 | 2028-01-12 |  |  |  |  |  |  |  |  |  |
| RHD4CZ1L101CCTV4100 |  | Installation of Power outlet, UPS and midspan for PTZ Camerafor Cameras for Security Network - (RD-L-10/1)-Z1-L101-CCTV | 2d | 2028-01-09 | 2028-01-10 | RHD4PRSHLDOSCCTV1300, RHD4PRSHLSTACCTV1300, RHD4CZ1L101CCTV1400 | Skilled labor [13.12 h]; Unskilled Labor [52.32 h]; Electrician [26.08 h]; Equipment Opreator [26.08 h]; Excavator-Poclain [6.53 h]; Dump Truck [6.53 h]; Outdoor ready IP66-rated midspan for PTZ Camera (The outdoor- ready midspan should be IP66/IP67- and NEMA 4X-rated [2 nr]; 1.2KVA Industrial type UPS located at FEC remote poles [2 nr] | 18,206 | L101 | Z1 | CONS | CCTV | Power | AFT |
| RHD4CZ1L101CCTV4200 |  | Short Range Wireless PoP wireless Bridgefor CCTV Poles for Security Network - (RD-L-10/1)-Z1-L101-CCTV | 2d | 2028-01-11 | 2028-01-12 | RHD4CZ1L101CCTV4100 | Skilled labor [21.76 h]; Unskilled Labor [43.52 h]; Electrician [21.76 h]; Equipment Opreator [43.52 h]; Excavator-Poclain [10.89 h]; Dump Truck [10.89 h]; Short Range wireless point to point wireless bridge [4 nr] | 58,548 | L101 | Z1 | CONS | CCTV | Wireless Pop | AFT |
|  | 692 | **RHD4-02-002-L101-(CCTV)-CCTV Panels and Components** |  | 2028-01-16 | 2028-02-01 |  |  |  |  |  |  |  |  |  |
| RHD4CZ1L101CCTV6100 |  | Installation for CCTV Panels for Security Network - (RD-L-10/1)-Z1-L101-CCTV | 15d | 2028-01-16 | 2028-02-01 | RHD4PRSHLDOSCCTV1200, RHD4PRSHLSTACCTV1200, RHD4PRLOLSTACCTV1001, RHD4CZ1L101CCTV4200, RHD4CZ1L101CCTV3100 | Skilled labor [326.72 h]; Unskilled Labor [980.16 h]; Electrician [326.72 h]; Pole mounted Filed Equipment cabinet (FEC) , with fan and ventilation, NEMEX 4X ,door, minimum size (600x600x400mm) , the cabinet/enclosurE [2 nr]; 8 Port Industrial PoE Switch 10/1000BaseT (-40 deg to +70 deg. Celsius) for remote poles and as specifiedin item 15. [1 nr]; UTP CAT6 Patch Cord , connect the industrial switch with the cameras, and radio wireless antenna [12 nr] | 32,584 | L101 | Z1 | CONS | CCTV | Equipment | AFT |
|  | 325 | **RHD4-02-002-Z1-C081** |  | 2027-01-30 | 2028-04-03 |  |  |  |  |  |  |  |  |  |
|  | 356 | **RHD4-02-002-Z1-C081-Crossings Sewage Network - SWCr** |  |  |  |  |  |  |  |  |  |  |  |  |
|  | 366 | **RHD4-02-002-C081-(SWCr)-MH Works - 1200 mm diameter** |  |  |  |  |  |  |  |  |  |  |  |  |
|  | 362 | **RHD4-02-002-C081-(SWCr)-UPVC Pipes - 200 mm diameter** |  |  |  |  |  |  |  |  |  |  |  |  |
|  | 400 | **RHD4-02-002-Z1-C081-Crossings Potable Network - PTCr** |  |  |  |  |  |  |  |  |  |  |  |  |
|  | 403 | **RHD4-02-002-C081-(PTCr)-HDPE Pipes - 200 mm diameter** |  |  |  |  |  |  |  |  |  |  |  |  |
|  | 406 | **RHD4-02-002-C081-(PTCr)-Gate Valves (Direct Buried)** |  |  |  |  |  |  |  |  |  |  |  |  |
|  | 413 | **RHD4-02-002-C081-(PTCr)-Fire Hydrant** |  |  |  |  |  |  |  |  |  |  |  |  |
|  | 447 | **RHD4-02-002-Z1-C081-Crossings Irrigation Network - IRRC** |  |  |  |  |  |  |  |  |  |  |  |  |
|  | 452 | **RHD4-02-002-C081-(IRRC)-HDPE Pipes - 315 mm diameter** |  |  |  |  |  |  |  |  |  |  |  |  |
|  | 448 | **RHD4-02-002-C081-(IRRC)-HDPE Pipes - 160 mm diameter** |  |  |  |  |  |  |  |  |  |  |  |  |
|  | 456 | **RHD4-02-002-C081-(IRRC)-Gate Valves (Direct Buried)** |  |  |  |  |  |  |  |  |  |  |  |  |
|  | 457 | **RHD4-02-002-C081-(IRRC)-Butterfly Valve Chamber** |  |  |  |  |  |  |  |  |  |  |  |  |
|  | 458 | **RHD4-02-002-C081-(IRRC)-Butterfly Valves** |  |  |  |  |  |  |  |  |  |  |  |  |
|  | 461 | **RHD4-02-002-C081-(IRRC)-Air Valve Chamber** |  |  |  |  |  |  |  |  |  |  |  |  |
|  | 462 | **RHD4-02-002-C081-(IRRC)-Air Valves** |  |  |  |  |  |  |  |  |  |  |  |  |
|  | 504 | **RHD4-02-002-Z1-C081-Road Works - RD** |  | 2027-03-01 | 2028-04-03 |  |  |  |  |  |  |  |  |  |
|  | 505 | **RHD4-02-002-C081-(RD)-Subgrade** |  | 2027-03-01 | 2027-03-14 |  |  |  |  |  |  |  |  |  |
| RHD4CZ1C081RD1100 |  | Supply, lay and compaction subgrade compacted thickness 300 mm for Roads - (RD-C-8 /1)-Z1-C081-RD | 9d | 2027-03-01 | 2027-03-14 | RHD4ENSDZ1APPRD220, RHD4ENSDZ1APPEW100, RHD4CZ1C081ST1504, RHD4CZ1C081ST7300, RHD4CZ1C081ST8300 | Skilled labor [98.01 h]; Unskilled Labor [196 h]; Electrician [98.01 h]; Equipment Opreator [669.43 h]; Water Truck [32.34 h]; Roller compactor [49.01 h]; Grader [98.01 h]; Dump Truck [490.07 h]; Subgrade [4714.03 m3] | 89,566.57 | C081 | Z1 | CONS | RD | Subgrade | bef |

| ID | WBS | Activity | Duration | Start | Finish | Predecessors | Resources | Cost | RDH4-01-001-Road and Block Names-1 | RDH4-01-001-Zones-1 | RDH4-01-001-Phases-1 | RDH4-01-001-Networks-1 | RDH4-01-001-Work Method-1 | RDH4-01-001-MENEM |
| --- | --- | --- | --- | --- | --- | --- | --- | --- | --- | --- | --- | --- | --- | --- |
|  | 506 | **RHD4-02-002-C081-(RD)-Aggregate Base Course** |  | 2027-03-15 | 2027-03-22 |  |  |  |  |  |  |  |  |  |
| RHD4CZ1C081RD2100 |  | Supply, lay and compaction Aggregate base course compacted thickness 300 mmfor Roads - (RD-C-8 /1)-Z1-C081-RD | 7d | 2027-03-15 | 2027-03-22 | RHD4PRSHLDOSRD1000, RHD4PRSHLSTAGRD1000, RHD4CZ1C081RD1100 | Skilled labor [36.26 h]; Unskilled Labor [72.64 h]; Equipment Opreator [459.57 h]; Water Truck [23.96 h]; Roller compactor [72.64 h]; Grader [72.64 h]; Dump Truck [290.45 h]; Aggregate Base Courses [2960.88 m3] | 168,770.16 | C081 | Z1 | CONS | RD | ABC | bef |
|  | 507 | **RHD4-02-002-C081-(RD)-Bituminous base course Two Layers, including (MC1)&(RC2)** |  | 2027-03-23 | 2027-12-01 |  |  |  |  |  |  |  |  |  |
| RHD4CZ1C081RD3100 |  | Supply, lay and Asphaltic base course including Prime Coat (MC1) for 1st Layer - (RD-C-8 /1)-Z1-C081-RD | 3d | 2027-03-23 | 2027-03-25 | RHD4PRSHLDOSRD1100, RHD4ENMSASPH2000, RHD4ENMSASPH2010, RHD4PRSHLSTAGRD1100, RHD4CZ1C081RD2100 | Skilled labor [28.86 h]; Unskilled Labor [172.94 h]; Equipment Opreator [432.46 h]; Bobcat [28.86 h]; Roller compactor [28.86 h]; Asphalt Paver [28.86 h]; Rubber Compactor [57.6 h]; MC1/RC2 Sprinkler [28.86 h]; Dump Truck [259.41 h]; Bituminous base course (Grading I - Class A), including Prime coat (MC1) & tack coate (RC2) [1054.68 m3] | 504,137.04 | C081 | Z1 | CONS | RD | 150 mm | AFT |
| RHD4CZ1C081RD3200 |  | Supply, lay and Asphaltic base course including Tack Coat (RC2) for 2nd Layer - (RD-C-8 /1)-Z1-C081-RD | 3d | 2027-11-29 | 2027-12-01 | RHD4PRSHLDOSRD1100, RHD4PRSHLSTAGRD1100, RHD4CZ1C081RD3100, RHD4CZ1C081CCTV6100 | Skilled labor [28.86 h]; Unskilled Labor [172.94 h]; Equipment Opreator [432.46 h]; Bobcat [28.86 h]; Roller compactor [28.86 h]; Asphalt Paver [28.86 h]; Rubber Compactor [57.6 h]; MC1/RC2 Sprinkler [28.86 h]; Dump Truck [259.41 h]; Bituminous base course (Grading I - Class A), including Prime coat (MC1) & tack coate (RC2) [1054.68 m3] | 504,137.04 | C081 | Z1 | CONS | RD | 150 mm | AFT |
|  | 509 | **RHD4-02-002-C081-(RD)-Precast Concrete Curb** |  | 2027-12-02 | 2027-12-12 |  |  |  |  |  |  |  |  |  |
| RHD4CZ1C081RD5100 |  | Supply and installation Precast Concrete Kerb for Roads - (RD-C-8 /1)-Z1-C081-RD | 9d | 2027-12-02 | 2027-12-12 | RHD4PRSHLDOSRD1200, RHD4ENMSRD2000, RHD4ENMSRD2010, RHD4PRSHLSTAGRD1200, RHD4CZ1C081RD3200 | Mason [274.22 h]; Skilled labor [91.37 h]; Unskilled Labor [274.22 h]; Equipment Opreator [182.85 h]; Bobcat [91.37 h]; Concrete Mixer Truck [91.37 h]; Precast Concrete Curbstone, type K1 [3776.97 m] | 207,733.41 | C081 | Z1 | CONS | RD | Curbs | AFT |
|  | 512 | **RHD4-02-002-C081-(RD)-Traffic Signage** |  | 2028-02-20 | 2028-03-02 |  |  |  |  |  |  |  |  |  |
| RHD4CZ1C081RD8100 |  | Installation of Traffic Signage for Road Network - (RD-C-8 /1)-Z1-C081-RD | 7d | 2028-02-20 | 2028-03-02 | RHD4PRSHLDOSRD1600, RHD4PRSHLSTAGRD1600, RHD4CZ1C081RD5100, RHD4CZ1C081TC2400, RHD4CZ1C081ICT2400, RHD4CZ1L101RD8100, RHD4CZ1C081IRR1500 | Skilled labor [152.46 h]; Unskilled Labor [76.23 h]; Electrician [26.14 h]; Equipment Opreator [25.7 h]; Boom Truck [15.25 h]; Concrete Mixer Truck [10.45 h]; Traffic signs, ground mounted, 1 Sheet Aluminium, (breakaway)Single post [23 nr] | 28,198 | C081 | Z1 | CONS | RD | Traffic Signage | AFT |
|  | 510 | **RHD4-02-002-C081-(RD)-Precast Interlocking Block Pavers** |  |  |  |  |  |  |  |  |  |  |  |  |
|  | 508 | **RHD4-02-002-C081-(RD)-Bituminous concrete wearing course including tack coat (RC2)** |  | 2028-03-15 | 2028-03-16 |  |  |  |  |  |  |  |  |  |
| RHD4CZ1C081RD4100 |  | Supply, lay and compaction Asphaltic wearing course including tack Coat (RC2)for Road Network - (RD-C-8 /1)-Z1-C081-RD | 2d | 2028-03-15 | 2028-03-16 | RHD4CZ1L101RD4100, RHD4CZ1C081RD5100 | Skilled labor [14.81 h]; Unskilled Labor [89.08 h]; Equipment Opreator [222.71 h]; Bobcat [14.81 h]; Roller compactor [14.81 h]; Asphalt Paver [14.81 h]; Rubber Compactor [29.73 h]; MC1/RC2 Sprinkler [14.81 h]; Dump Truck [133.6 h]; Bituminous concrete wearing course, (Grading I - Class A), including tack coat (RC2) [708.3 m3] | 384,606.9 | C081 | Z1 | CONS | RD | 50 mm | AFT |
|  | 511 | **RHD4-02-002-C081-(RD)-Pavement Marking** |  | 2028-03-23 | 2028-04-03 |  |  |  |  |  |  |  |  |  |
| RHD4CZ1C081RD7100 |  | Pavement Markings for Road Network - (RD-C-8 /1)-Z1-C081-RD | 10d | 2028-03-23 | 2028-04-03 | RHD4PRSHLDOSRD1500, RHD4PRSHLSTAGRD1500, RHD4CZ1C081RD4100, RHD4CZ1L101RD7100 | Skilled labor [108.8 h]; Unskilled Labor [217.6 h]; Equipment Opreator [108.8 h]; Road Marking Machine [108.8 h]; Retroreflective Thermoplastic White Traffic Markings [336.59 m2]; Retroreflective Thermoplastic Yellow, Traffic Markings [346.53 m2]; Retroreflective raised pavement markers (cat eyes) [1850 nr]; Ceramic raised pavement markers [4 nr] | 84,176.72 | C081 | Z1 | CONS | RD | Pavement Marking | AFT |
|  | 329 | **RHD4-02-002-Z1-C081-Storm Network - ST** |  | 2027-01-30 | 2027-04-12 |  |  |  |  |  |  |  |  |  |
|  | 5253 | **RHD4-02-002-C081-(ST)-GRP Pipes - 800 mm diameter** |  | 2027-01-30 | 2027-02-09 |  |  |  |  |  |  |  |  |  |
| RHD4CZ1C081ST1104 |  | Excavation works for GRP Pipe Line 800 mm - (RD-C-8 /1)-Z1-C081-ST | 2d | 2027-01-30 | 2027-01-31 | RHD4CZ1C081RW2000, RHD4PRSHLSTAGST1000 | Skilled labor [4.47 h]; Unskilled Labor [4.47 h]; Equipment Opreator [5.34 h]; Excavator-Poclain [4.47 h]; Dump Truck [0.87 h]; GRP (800mm Diameter) - ST - Depth: 1.51m - 2.5m [9.24 m]; GRP (800mm Diameter) - ST - Depth: 2.51m - 3.5m | 6,486.48 | C081 | Z1 | CONS | ST | Excavation | bef |
| RHD4CZ1C081ST1204 |  | Bedding works for GRP Pipe Line 800 mm - (RD-C-8 /1)-Z1-C081-ST | 2d | 2027-02-01 | 2027-02-02 | RHD4CZ1C081ST1104 | Skilled labor [4.47 h]; Unskilled Labor [8.93 h]; Equipment Opreator [8.93 h]; Excavator-Poclain [4.47 h]; Dump Truck [4.47 h]; GRP (800mm Diameter) - ST - Depth: 1.51m - 2.5m [3.08 m]; GRP (800mm Diameter) - ST - Depth: 2.51m - 3.5m | 2,162.16 | C081 | Z1 | CONS | ST | Bedding | bef |
| RHD4CZ1C081ST1304 |  | Installing for GRP Pipe Line 800 mm - (RD-C-8 /1)-Z1-C081-ST | 2d | 2027-02-03 | 2027-02-04 | RHD4CZ1C081ST1204 | Unskilled Labor [5.34 h]; Plumber [2.72 h]; GRP (800mm Diameter) - ST - Depth: 1.51m - 2.5m [24.65 m]; GRP (800mm Diameter) - ST - Depth: 2.51m - 3.5m | 17,304.3 | C081 | Z1 | CONS | ST | Installation | bef |
| RHD4CZ1C081ST1404 |  | Primary Test for GRP Pipe Line 800 mm - (RD-C-8 /1)-Z1-C081-ST | 2d | 2027-02-06 | 2027-02-07 | RHD4CZ1C081ST1304 | Unskilled Labor [2.29 h]; Plumber [2.29 h]; Equipment Opreator [2.29 h]; Water Truck [2.29 h]; GRP (800mm Diameter) - ST - Depth: 1.51m - 2.5m [12.33 m]; GRP (800mm Diameter) - ST - Depth: 2.51m - 3.5m | 8,655.66 | C081 | Z1 | CONS | ST | Primary Test | bef |
| RHD4CZ1C081ST1504 |  | Backfilling and warning tape works for GRP Pipe Line 800 mm - (RD-C-8 /1)-Z1-C081-ST | 2d | 2027-02-08 | 2027-02-09 | RHD4CZ1C081ST1404 | Skilled labor [4.47 h]; Unskilled Labor [8.93 h]; Equipment Opreator [8.93 h]; Excavator-Poclain [4.47 h]; Dump Truck [4.47 h]; GRP (800mm Diameter) - ST - Depth: 1.51m - 2.5m [12.33 m]; GRP (800mm Diameter) - ST - Depth: 2.51m - 3.5m | 8,655.66 | C081 | Z1 | CONS | ST | Backfilling | bef |
|  | 346 | **RHD4-02-002-C081-(ST)-MH Works - 1200 mm diameter** |  | 2027-02-01 | 2027-03-02 |  |  |  |  |  |  |  |  |  |
| RHD4CZ1C081ST3100 |  | Excavation and PC Blinding works for MH 1200 mm - (RD-C-8 /1)-Z1-C081-ST | 5d | 2027-02-01 | 2027-02-06 | RHD4ENSDZ1APPST110, RHD4ENMSST2000, RHD4ENMSST2010, RHD4CZ1C081ST1104 | Skilled labor [47.16 h]; Unskilled Labor [47.16 h]; Equipment Opreator [75.47 h]; Excavator-Poclain [47.16 h]; Water Truck [4.68 h]; Dump Truck [23.63 h]; MH (1200mm Diameter) - ST - depth 1.50 - 2.5m [3.25 nr] | 33,549.75 | C081 | Z1 | CONS | ST | Excavation | bef |
| RHD4CZ1C081ST3200 |  | Installation of Base for MH 1200 mm - (RD-C-8 /1)-Z1-C081-ST | 5d | 2027-02-07 | 2027-02-11 | RHD4PRSHLSTAGST1600, RHD4CZ1C081ST3100 | Skilled labor [47.16 h]; Unskilled Labor [47.16 h]; Equipment Opreator [18.84 h]; Boom Truck [9.47 h]; Concrete Mixer Truck [9.47 h]; MH (1200mm Diameter) - ST - depth 1.50 - 2.5m [3.25 nr] | 33,549.75 | C081 | Z1 | CONS | ST | Installing Base | bef |
| RHD4CZ1C081ST3300 |  | MH Ring and C.Slab works and Backfilling works for MH 1200 mm - (RD-C-8 /1)-Z1-C081-ST | 5d | 2027-02-13 | 2027-02-17 | RHD4PRSHLDOSST1600, RHD4CZ1C081ST3200 | Skilled labor [47.16 h]; Unskilled Labor [47.16 h]; Equipment Opreator [33 h]; Boom Truck [18.84 h]; Concrete Mixer Truck [14.16 h]; MH (1200mm Diameter) - ST - depth 1.50 - 2.5m [4.55 nr] | 46,969.65 | C081 | Z1 | CONS | ST | Installing Rings | bef |
| RHD4CZ1C081ST3400 |  | Steel Cover for MH 1200 mm - (RD-C-8 /1)-Z1-C081-ST | 5d | 2027-02-18 | 2027-02-24 | RHD4PRSHLDOSST1700, RHD4PRSHLSTAGST1700, RHD4CZ1C081ST3300 | Skilled labor [47.16 h]; Unskilled Labor [94.4 h]; Equipment Opreator [9.47 h]; Boom Truck [9.47 h]; MH (1200mm Diameter) - ST - depth 1.50 - 2.5m [0.65 nr] | 6,709.95 | C081 | Z1 | CONS | ST | Steel Cover | bef |
| RHD4CZ1C081ST3500 |  | Finishing, Benching, Testing works for MH 1200 mm - (RD-C-8 /1)-Z1-C081-ST | 5d | 2027-02-25 | 2027-03-02 | RHD4CZ1C081ST3400 | Skilled labor [47.16 h]; Unskilled Labor [94.4 h]; Plumber [47.16 h]; Equipment Opreator [9.47 h]; Water Truck [9.47 h]; MH (1200mm Diameter) - ST - depth 1.50 - 2.5m [1.3 nr] | 13,419.9 | C081 | Z1 | CONS | ST | Benching | bef |

| ID | WBS | Activity | Duration | Start | Finish | Predecessors | Resources | Cost | RDH4-01-001-Road and Block Names-1 | RDH4-01-001-Zones-1 | RDH4-01-001-Phases-1 | RDH4-01-001-Networks-1 | RDH4-01-001-Work Method-1 | RDH4-01-001-MENEM |
| --- | --- | --- | --- | --- | --- | --- | --- | --- | --- | --- | --- | --- | --- | --- |
|  | 347 | **RHD4-02-002-C081-(ST)-MH Works - 1500 mm diameter** |  | 2027-02-07 | 2027-04-12 |  |  |  |  |  |  |  |  |  |
| RHD4CZ1C081ST3101 |  | Excavation and PC Blinding works for MH 1500 mm - (RD-C-8 /1)-Z1-C081-ST | 4d | 2027-02-07 | 2027-02-10 | RHD4ENSDZ1APPST110, RHD4ENMSST2000, RHD4CZ1C081ST3100 | Skilled labor [43.56 h]; Unskilled Labor [43.56 h]; Equipment Opreator [69.7 h]; Excavator-Poclain [43.56 h]; Water Truck [4.36 h]; Dump Truck [21.78 h]; MH (1500mm Diameter) - ST - depth 1.50 - 2.5m [0.5 nr]; MH (1500mm Diameter) - ST - depth 2.51 - 3.5m [0.5 nr]; MH (1500mm Diameter) - ST - depth 3.51 - 4.5m [0.5 nr] | 26,091 | C081 | Z1 | CONS | ST | Excavation | bef |
| RHD4CZ1C081ST3201 |  | Installation of Base for MH 1500 mm - (RD-C-8 /1)-Z1-C081-ST | 4d | 2027-02-13 | 2027-02-16 | RHD4PRSHLSTAGST1600, RHD4CZ1C081ST3101, RHD4CZ1C081ST3200 | Skilled labor [43.56 h]; Unskilled Labor [43.56 h]; Equipment Opreator [17.42 h]; Boom Truck [8.71 h]; Concrete Mixer Truck [8.71 h]; MH (1500mm Diameter) - ST - depth 1.50 - 2.5m [0.5 nr]; MH (1500mm Diameter) - ST - depth 2.51 - 3.5m [0.5 nr]; MH (1500mm Diameter) - ST - depth 3.51 - 4.5m [0.5 nr] | 26,091 | C081 | Z1 | CONS | ST | Installing Base | bef |
| RHD4CZ1C081ST3301 |  | MH Ring and C.Slab works and Backfilling works for MH 1500 mm - (RD-C-8 /1)-Z1-C081-ST | 4d | 2027-02-18 | 2027-02-23 | RHD4PRSHLDOSST1600, RHD4CZ1C081ST3201, RHD4CZ1C081ST3300 | Skilled labor [43.56 h]; Unskilled Labor [43.56 h]; Equipment Opreator [30.49 h]; Boom Truck [17.42 h]; Concrete Mixer Truck [13.07 h]; MH (1500mm Diameter) - ST - depth 1.50 - 2.5m [0.7 nr]; MH (1500mm Diameter) - ST - depth 2.51 - 3.5m [0.7 nr]; MH (1500mm Diameter) - ST - depth 3.51 - 4.5m [0.7 nr] | 36,527.4 | C081 | Z1 | CONS | ST | Installing Rings | bef |
| RHD4CZ1C081ST3401 |  | Steel Cover for MH 1500 mm - (RD-C-8 /1)-Z1-C081-ST | 2d | 2027-02-25 | 2027-02-27 | RHD4PRSHLDOSST1700, RHD4PRSHLSTAGST1700, RHD4CZ1C081ST3301, RHD4CZ1C081ST3400 | Skilled labor [21.78 h]; Unskilled Labor [43.56 h]; Equipment Opreator [4.36 h]; Boom Truck [4.36 h]; MH (1500mm Diameter) - ST - depth 1.50 - 2.5m [0.1 nr]; MH (1500mm Diameter) - ST - depth 2.51 - 3.5m [0.1 nr]; MH (1500mm Diameter) - ST - depth 3.51 - 4.5m [0.1 nr] | 5,218.2 | C081 | Z1 | CONS | ST | Steel Cover | bef |
| RHD4CZ1C081ST3501 |  | Finishing, Benching, Testing works for MH 1500 mm - (RD-C-8 /1)-Z1-C081-ST | 4d | 2027-04-08 | 2027-04-12 | RHD4CZ1C081ST3401, RHD4CZ1C081ST2500, RHD4CZ1C081ST3500 | Skilled labor [43.56 h]; Unskilled Labor [87.12 h]; Plumber [43.56 h]; Equipment Opreator [8.71 h]; Water Truck [8.71 h]; MH (1500mm Diameter) - ST - depth 1.50 - 2.5m [0.2 nr]; MH (1500mm Diameter) - ST - depth 2.51 - 3.5m [0.2 nr]; MH (1500mm Diameter) - ST - depth 3.51 - 4.5m [0.2 nr] | 10,436.4 | C081 | Z1 | CONS | ST | Benching | bef |
|  | 335 | **RHD4-02-002-C081-(ST)-GRP Pipes - 900 mm diameter** |  | 2027-02-13 | 2027-02-24 |  |  |  |  |  |  |  |  |  |
| RHD4CZ1C081ST1105 |  | Excavation works for GRP Pipe Line 900 mm - (RD-C-8 /1)-Z1-C081-ST | 2d | 2027-02-13 | 2027-02-14 | RHD4ENSDZ1APPST110, RHD4CZ1C081ST3300 SS | Skilled labor [15.57 h]; Unskilled Labor [15.57 h]; Equipment Opreator [18.62 h]; Excavator-Poclain [15.57 h]; Dump Truck [3.16 h]; GRP (900mm Diameter) - ST - Depth: 1.51m - 2.5m [9.23 m]; GRP (900mm Diameter) - ST - Depth: 2.51m - 3.5m [18.45 m]; GRP (900mm Diameter) - ST - Depth: 3.51m - 4.5m [4.4 m]; GRP (900mm Diameter) - ST - Depth: more than 4.5m | 32,601.81 | C081 | Z1 | CONS | ST | Excavation | bef |
| RHD4CZ1C081ST1205 |  | Bedding works for GRP Pipe Line 900 mm - (RD-C-8 /1)-Z1-C081-ST | 2d | 2027-02-15 | 2027-02-16 | RHD4CZ1C081ST1105 | Skilled labor [15.57 h]; Unskilled Labor [28.97 h]; Equipment Opreator [31.04 h]; Excavator-Poclain [15.57 h]; Dump Truck [15.57 h]; GRP (900mm Diameter) - ST - Depth: 1.51m - 2.5m [3.08 m]; GRP (900mm Diameter) - ST - Depth: 2.51m - 3.5m [6.15 m]; GRP (900mm Diameter) - ST - Depth: 3.51m - 4.5m [1.47 m]; GRP (900mm Diameter) - ST - Depth: more than 4.5m | 10,874.32 | C081 | Z1 | CONS | ST | Bedding | bef |
| RHD4CZ1C081ST1305 |  | Installing for GRP Pipe Line 900 mm - (RD-C-8 /1)-Z1-C081-ST | 2d | 2027-02-17 | 2027-02-18 | RHD4PRSHLSTAGST1000, RHD4CZ1C081ST1205, RHD4PRSHLDOSST1600, RHD4PRSHLPOST1000, RHD4PRSHLDOSST1000 | Skilled labor [1.6 h]; Unskilled Labor [17.64 h]; Plumber [8.06 h]; GRP (900mm Diameter) - ST - Depth: 1.51m - 2.5m [24.63 m]; GRP (900mm Diameter) - ST - Depth: 2.51m - 3.5m [49.19 m]; GRP (900mm Diameter) - ST - Depth: 3.51m - 4.5m [11.74 m]; GRP (900mm Diameter) - ST - Depth: more than 4.5m | 86,949.69 | C081 | Z1 | CONS | ST | Installation | bef |
| RHD4CZ1C081ST1405 |  | Primary Test for GRP Pipe Line 900 mm - (RD-C-8 /1)-Z1-C081-ST | 2d | 2027-02-20 | 2027-02-21 | RHD4CZ1C081ST1305 | Skilled labor [1.6 h]; Unskilled Labor [9.15 h]; Plumber [7.62 h]; Equipment Opreator [9.15 h]; Water Truck [9.15 h]; GRP (900mm Diameter) - ST - Depth: 1.51m - 2.5m [12.31 m]; GRP (900mm Diameter) - ST - Depth: 2.51m - 3.5m [24.6 m]; GRP (900mm Diameter) - ST - Depth: 3.51m - 4.5m [5.87 m]; GRP (900mm Diameter) - ST - Depth: more than 4.5m | 43,476.13 | C081 | Z1 | CONS | ST | Primary Test | bef |
| RHD4CZ1C081ST1505 |  | Backfilling and warning tape works for GRP Pipe Line 900 mm - (RD-C-8 /1)-Z1-C081-ST | 2d | 2027-02-23 | 2027-02-24 | RHD4CZ1C081ST1405 | Skilled labor [15.57 h]; Unskilled Labor [28.97 h]; Equipment Opreator [31.04 h]; Excavator-Poclain [15.57 h]; Dump Truck [15.57 h]; GRP (900mm Diameter) - ST - Depth: 1.51m - 2.5m [12.31 m]; GRP (900mm Diameter) - ST - Depth: 2.51m - 3.5m [24.6 m]; GRP (900mm Diameter) - ST - Depth: 3.51m - 4.5m [5.87 m]; GRP (900mm Diameter) - ST - Depth: more than 4.5m | 43,476.13 | C081 | Z1 | CONS | ST | Backfilling | bef |
|  | 333 | **RHD4-02-002-C081-(ST)-GRP Pipes - 700 mm diameter** |  | 2027-02-15 | 2027-02-27 |  |  |  |  |  |  |  |  |  |
| RHD4CZ1C081ST1103 |  | Excavation works for GRP Pipe Line 700 mm - (RD-C-8 /1)-Z1-C081-ST | 2d | 2027-02-15 | 2027-02-16 | RHD4ENSDZ1APPST110, RHD4CZ1C081ST1105 | Skilled labor [3.38 h]; Unskilled Labor [3.38 h]; Equipment Opreator [4 h]; Excavator-Poclain [3.38 h]; Dump Truck [0.65 h]; GRP (700mm Diameter) - ST - Depth: 1.51m - 2.5m [9.22 m] | 5,504.34 | C081 | Z1 | CONS | ST | Excavation | bef |
| RHD4CZ1C081ST1203 |  | Bedding works for GRP Pipe Line 700 mm - (RD-C-8 /1)-Z1-C081-ST | 2d | 2027-02-17 | 2027-02-18 | RHD4CZ1C081ST1103, RHD4CZ1C081ST1205 | Skilled labor [3.38 h]; Unskilled Labor [6.64 h]; Equipment Opreator [6.64 h]; Excavator-Poclain [3.38 h]; Dump Truck [3.38 h]; GRP (700mm Diameter) - ST - Depth: 1.51m - 2.5m [3.07 m] | 1,832.79 | C081 | Z1 | CONS | ST | Bedding | bef |
| RHD4CZ1C081ST1303 |  | Installing for GRP Pipe Line 700 mm - (RD-C-8 /1)-Z1-C081-ST | 2d | 2027-02-20 | 2027-02-21 | RHD4PRSHLSTAGST1000, RHD4CZ1C081ST1203, RHD4CZ1C081ST1305, RHD4PRSHLDOSST1600, RHD4PRSHLPOST1000, RHD4PRSHLDOSST1000 | Unskilled Labor [3.38 h]; Plumber [1.6 h]; GRP (700mm Diameter) - ST - Depth: 1.51m - 2.5m [24.58 m] | 14,674.26 | C081 | Z1 | CONS | ST | Installation | bef |
| RHD4CZ1C081ST1403 |  | Primary Test for GRP Pipe Line 700 mm - (RD-C-8 /1)-Z1-C081-ST | 2d | 2027-02-23 | 2027-02-24 | RHD4CZ1C081ST1303, RHD4CZ1C081ST1405 | Unskilled Labor [1.6 h]; Plumber [1.6 h]; Equipment Opreator [1.6 h]; Water Truck [1.6 h]; GRP (700mm Diameter) - ST - Depth: 1.51m - 2.5m [12.29 m] | 7,337.13 | C081 | Z1 | CONS | ST | Primary Test | bef |
| RHD4CZ1C081ST1503 |  | Backfilling and warning tape works for GRP Pipe Line 700 mm - (RD-C-8 /1)-Z1-C081-ST | 2d | 2027-02-25 | 2027-02-27 | RHD4CZ1C081ST1403, RHD4CZ1C081ST1505 | Skilled labor [3.38 h]; Unskilled Labor [6.64 h]; Equipment Opreator [6.64 h]; Excavator-Poclain [3.38 h]; Dump Truck [3.38 h]; GRP (700mm Diameter) - ST - Depth: 1.51m - 2.5m [12.29 m] | 7,337.13 | C081 | Z1 | CONS | ST | Backfilling | bef |
|  | 332 | **RHD4-02-002-C081-(ST)-GRP Pipes - 600 mm diameter** |  | 2027-02-17 | 2027-03-01 |  |  |  |  |  |  |  |  |  |
| RHD4CZ1C081ST1102 |  | Excavation works for GRP Pipe Line 600 mm - (RD-C-8 /1)-Z1-C081-ST | 2d | 2027-02-17 | 2027-02-18 | RHD4ENSDZ1APPST110, RHD4CZ1C081ST1103 | Skilled labor [10.13 h]; Unskilled Labor [10.13 h]; Equipment Opreator [12.09 h]; Excavator-Poclain [10.13 h]; Dump Truck [2.07 h]; GRP (600mm Diameter) - ST - Depth less than 1.5 m [18.51 m]; GRP (600mm Diameter) - ST - Depth: 1.51m - 2.5m | 7,977.81 | C081 | Z1 | CONS | ST | Excavation | bef |
| RHD4CZ1C081ST1202 |  | Bedding works for GRP Pipe Line 600 mm - (RD-C-8 /1)-Z1-C081-ST | 2d | 2027-02-20 | 2027-02-21 | RHD4CZ1C081ST1102, RHD4CZ1C081ST1203 | Skilled labor [10.13 h]; Unskilled Labor [20.15 h]; Equipment Opreator [20.15 h]; Excavator-Poclain [10.13 h]; Dump Truck [10.13 h]; GRP (600mm Diameter) - ST - Depth less than 1.5 m [9.25 m]; GRP (600mm Diameter) - ST - Depth: 1.51m - 2.5m | 3,986.75 | C081 | Z1 | CONS | ST | Bedding | bef |
| RHD4CZ1C081ST1302 |  | Installing for GRP Pipe Line 600 mm - (RD-C-8 /1)-Z1-C081-ST | 2d | 2027-02-23 | 2027-02-24 | RHD4PRSHLSTAGST1000, RHD4CZ1C081ST1202, RHD4CZ1C081ST1303, RHD4PRSHLDOSST1600, RHD4PRSHLPOST1000, RHD4PRSHLDOSST1000 | Unskilled Labor [20.15 h]; Plumber [10.13 h]; GRP (600mm Diameter) - ST - Depth less than 1.5 m [83.28 m]; GRP (600mm Diameter) - ST - Depth: 1.51m - 2.5m | 35,893.68 | C081 | Z1 | CONS | ST | Installation | bef |
| RHD4CZ1C081ST1402 |  | Primary Test for GRP Pipe Line 600 mm - (RD-C-8 /1)-Z1-C081-ST | 2d | 2027-02-25 | 2027-02-27 | RHD4CZ1C081ST1302, RHD4CZ1C081ST1403 | Unskilled Labor [10.13 h]; Plumber [10.13 h]; Equipment Opreator [10.13 h]; Water Truck [10.13 h]; GRP (600mm Diameter) - ST - Depth less than 1.5 m [37.01 m]; GRP (600mm Diameter) - ST - Depth: 1.51m - 2.5m | 15,951.31 | C081 | Z1 | CONS | ST | Primary Test | bef |
| RHD4CZ1C081ST1502 |  | Backfilling and warning tape works for GRP Pipe Line 600 mm - (RD-C-8 /1)-Z1-C081-ST | 2d | 2027-02-28 | 2027-03-01 | RHD4CZ1C081ST1402, RHD4CZ1C081ST1503 | Skilled labor [10.13 h]; Unskilled Labor [20.15 h]; Equipment Opreator [20.15 h]; Excavator-Poclain [10.13 h]; Dump Truck [10.13 h]; GRP (600mm Diameter) - ST - Depth less than 1.5 m [37.01 m]; GRP (600mm Diameter) - ST - Depth: 1.51m - 2.5m | 15,951.31 | C081 | Z1 | CONS | ST | Backfilling | bef |

| ID | WBS | Activity | Duration | Start | Finish | Predecessors | Resources | Cost | RDH4-01-001-Road and Block Names-1 | RDH4-01-001-Zones-1 | RDH4-01-001-Phases-1 | RDH4-01-001-Networks-1 | RDH4-01-001-Work Method-1 | RDH4-01-001-MENEM |
| --- | --- | --- | --- | --- | --- | --- | --- | --- | --- | --- | --- | --- | --- | --- |
|  | 331 | **RHD4-02-002-C081-(ST)-GRP Pipes - 500 mm diameter** |  | 2027-02-20 | 2027-03-03 |  |  |  |  |  |  |  |  |  |
| RHD4CZ1C081ST1101 |  | Excavation works for GRP Pipe Line 500 mm - (RD-C-8 /1)-Z1-C081-ST | 2d | 2027-02-20 | 2027-02-21 | RHD4ENSDZ1APPST110, RHD4CZ1C081ST1102 | Skilled labor [3.38 h]; Unskilled Labor [3.38 h]; Equipment Opreator [4 h]; Excavator-Poclain [3.38 h]; Dump Truck [0.65 h]; GRP (500mm Diameter) - ST - Depth less than 1.5 m [6.24 m]; GRP (500mm Diameter) - ST - Depth: 1.51m - 2.5m | 2,215.2 | C081 | Z1 | CONS | ST | Excavation | bef |
| RHD4CZ1C081ST1201 |  | Bedding works for GRP Pipe Line 500 mm - (RD-C-8 /1)-Z1-C081-ST | 2d | 2027-02-23 | 2027-02-24 | RHD4CZ1C081ST1101, RHD4CZ1C081ST1202 | Skilled labor [3.38 h]; Unskilled Labor [6.75 h]; Equipment Opreator [6.75 h]; Excavator-Poclain [3.38 h]; Dump Truck [3.38 h]; GRP (500mm Diameter) - ST - Depth less than 1.5 m [3.12 m]; GRP (500mm Diameter) - ST - Depth: 1.51m - 2.5m | 1,107.6 | C081 | Z1 | CONS | ST | Bedding | bef |
| RHD4CZ1C081ST1301 |  | Installing for GRP Pipe Line 500 mm - (RD-C-8 /1)-Z1-C081-ST | 2d | 2027-02-25 | 2027-02-27 | RHD4PRSHLSTAGST1000, RHD4CZ1C081ST1201, RHD4CZ1C081ST1302, RHD4PRSHLDOSST1600, RHD4PRSHLPOST1000, RHD4PRSHLDOSST1000 | Unskilled Labor [6.75 h]; Plumber [3.38 h]; GRP (500mm Diameter) - ST - Depth less than 1.5 m [28.1 m]; GRP (500mm Diameter) - ST - Depth: 1.51m - 2.5m | 9,975.5 | C081 | Z1 | CONS | ST | Installation | bef |
| RHD4CZ1C081ST1401 |  | Primary Test for GRP Pipe Line 500 mm - (RD-C-8 /1)-Z1-C081-ST | 2d | 2027-02-28 | 2027-03-01 | RHD4CZ1C081ST1301, RHD4CZ1C081ST1402 | Unskilled Labor [3.38 h]; Plumber [3.38 h]; Equipment Opreator [3.38 h]; Water Truck [3.38 h]; GRP (500mm Diameter) - ST - Depth less than 1.5 m [12.49 m]; GRP (500mm Diameter) - ST - Depth: 1.51m - 2.5m | 4,433.95 | C081 | Z1 | CONS | ST | Primary Test | bef |
| RHD4CZ1C081ST1501 |  | Backfilling and warning tape works for GRP Pipe Line 500 mm - (RD-C-8 /1)-Z1-C081-ST | 2d | 2027-03-02 | 2027-03-03 | RHD4CZ1C081ST1401, RHD4CZ1C081ST1502 | Skilled labor [3.38 h]; Unskilled Labor [6.75 h]; Equipment Opreator [6.75 h]; Excavator-Poclain [3.38 h]; Dump Truck [3.38 h]; GRP (500mm Diameter) - ST - Depth less than 1.5 m [12.49 m]; GRP (500mm Diameter) - ST - Depth: 1.51m - 2.5m | 4,433.95 | C081 | Z1 | CONS | ST | Backfilling | bef |
|  | 330 | **RHD4-02-002-C081-(ST)-GRP Pipes - 400 mm diameter** |  | 2027-02-20 | 2027-03-18 |  |  |  |  |  |  |  |  |  |
| RHD4CZ1C081ST1100 |  | Excavation works for GRP Pipe Line 400 mm - (RD-C-8 /1)-Z1-C081-ST | 4d | 2027-02-20 | 2027-02-24 | RHD4ENSDZ1APPST110, RHD4CZ1C081ST1101 SS | Skilled labor [35.94 h]; Unskilled Labor [35.94 h]; Equipment Opreator [43.13 h]; Excavator-Poclain [35.94 h]; Dump Truck [7.2 h]; GRP (400mm Diameter) - ST - Depth less than 1.5 m [59.83 m]; GRP (400mm Diameter) - ST - Depth: 1.51m - 2.5 m [16.19 m] | 22,644.83 | C081 | Z1 | CONS | ST | Excavation | bef |
| RHD4CZ1C081ST1200 |  | Bedding works for GRP Pipe Line 400 mm - (RD-C-8 /1)-Z1-C081-ST | 4d | 2027-02-25 | 2027-03-01 | RHD4CZ1C081ST1100, RHD4CZ1C081ST1201 | Skilled labor [35.94 h]; Unskilled Labor [71.88 h]; Equipment Opreator [71.88 h]; Excavator-Poclain [35.94 h]; Dump Truck [35.94 h]; GRP (400mm Diameter) - ST - Depth less than 1.5 m [29.91 m]; GRP (400mm Diameter) - ST - Depth: 1.51m - 2.5 m [5.4 m] | 10,439.7 | C081 | Z1 | CONS | ST | Bedding | bef |
| RHD4CZ1C081ST1300 |  | Installing for GRP Pipe Line 400 mm - (RD-C-8 /1)-Z1-C081-ST | 4d | 2027-03-02 | 2027-03-06 | RHD4PRSHLSTAGST1000, RHD4CZ1C081ST1200, RHD4CZ1C081ST1301, RHD4PRSHLDOSST1600, RHD4PRSHLPOST1000, RHD4PRSHLDOSST1000 | Unskilled Labor [71.88 h]; Plumber [35.94 h]; GRP (400mm Diameter) - ST - Depth less than 1.5 m [269.22 m]; GRP (400mm Diameter) - ST - Depth: 1.51m - 2.5 m [43.17 m] | 92,190.39 | C081 | Z1 | CONS | ST | Installation | bef |
| RHD4CZ1C081ST1400 |  | Primary Test for GRP Pipe Line 400 mm - (RD-C-8 /1)-Z1-C081-ST | 4d | 2027-03-07 | 2027-03-14 | RHD4CZ1C081ST1300, RHD4CZ1C081ST1401 | Unskilled Labor [35.94 h]; Plumber [35.94 h]; Equipment Opreator [35.94 h]; Water Truck [35.94 h]; GRP (400mm Diameter) - ST - Depth less than 1.5 m [119.66 m]; GRP (400mm Diameter) - ST - Depth: 1.51m - 2.5 m [21.59 m] | 41,761.33 | C081 | Z1 | CONS | ST | Primary Test | bef |
| RHD4CZ1C081ST1500 |  | Backfilling and warning tape works for GRP Pipe Line 400 mm - (RD-C-8 /1)-Z1-C081-ST | 4d | 2027-03-15 | 2027-03-18 | RHD4CZ1C081ST1400, RHD4CZ1C081ST1501 | Skilled labor [35.94 h]; Unskilled Labor [71.88 h]; Equipment Opreator [71.88 h]; Excavator-Poclain [35.94 h]; Dump Truck [35.94 h]; GRP (400mm Diameter) - ST - Depth less than 1.5 m [119.66 m]; GRP (400mm Diameter) - ST - Depth: 1.51m - 2.5 m [21.59 m] | 41,761.33 | C081 | Z1 | CONS | ST | Backfilling | bef |
|  | 345 | **RHD4-02-002-C081-(ST)-UPVC Pipes - 400 mm diameter** |  |  |  |  |  |  |  |  |  |  |  |  |
|  | 344 | **RHD4-02-002-C081-(ST)-UPVC Pipes - 300 mm diameter** |  | 2027-03-20 | 2027-04-07 |  |  |  |  |  |  |  |  |  |
| RHD4CZ1C081ST2100 |  | Excavation works for UPVC Pipe Line 300 mm - (RD-C-8 /1)-Z1-C081-ST | 4d | 2027-03-20 | 2027-03-23 | RHD4ENSDZ1APPST110, RHD4CZ1C081ST1500, RHD4CZ1C081ST3300, RHD4CZ1C081ST3301, RHD4CZ1C081ST1100 | Skilled labor [35.2 h]; Unskilled Labor [35.2 h]; Equipment Opreator [42.25 h]; Excavator-Poclain [35.2 h]; Dump Truck [7.08 h]; UPVC (300mm Diameter) - ST - Depth less than 1.5 [77.35 m]; UPVC (300mm Diameter) - ST - Depth: 1.51m - 2.5m | 23,437.05 | C081 | Z1 | CONS | ST | Excavation | bef |
| RHD4CZ1C081ST2200 |  | Bedding works for UPVC Pipe Line 300 mm - (RD-C-8 /1)-Z1-C081-ST | 3d | 2027-03-24 | 2027-03-27 | RHD4CZ1C081ST2100 | Skilled labor [30.6 h]; Unskilled Labor [61.2 h]; Equipment Opreator [61.2 h]; Excavator-Poclain [30.6 h]; Dump Truck [30.6 h]; UPVC (300mm Diameter) - ST - Depth less than 1.5 [38.68 m]; UPVC (300mm Diameter) - ST - Depth: 1.51m - 2.5m | 11,720.04 | C081 | Z1 | CONS | ST | Bedding | bef |
| RHD4CZ1C081ST2300 |  | Installing for UPVC Pipe Line 300 mm - (RD-C-8 /1)-Z1-C081-ST | 4d | 2027-03-28 | 2027-03-31 | RHD4PRSHLDOSST1100, RHD4PRSHLSTAGST1100, RHD4CZ1C081ST2200 | Unskilled Labor [70.46 h]; Plumber [35.2 h]; UPVC (300mm Diameter) - ST - Depth less than 1.5 [348.09 m]; UPVC (300mm Diameter) - ST - Depth: 1.51m - 2.5m | 105,471.27 | C081 | Z1 | CONS | ST | Installation | bef |
| RHD4CZ1C081ST2400 |  | Primary Test for UPVC Pipe Line 300 mm - (RD-C-8 /1)-Z1-C081-ST | 2d | 2027-04-01 | 2027-04-03 | RHD4CZ1C081ST2300 | Unskilled Labor [21.45 h]; Plumber [21.45 h]; Equipment Opreator [21.45 h]; Water Truck [21.45 h]; UPVC (300mm Diameter) - ST - Depth less than 1.5 [154.71 m]; UPVC (300mm Diameter) - ST - Depth: 1.51m - 2.5m | 46,877.13 | C081 | Z1 | CONS | ST | Primary Test | bef |
| RHD4CZ1C081ST2500 |  | Backfilling and warning tape works for UPVC Pipe Line 300 mm - (RD-C-8 /1)-Z1-C081-ST | 4d | 2027-04-04 | 2027-04-07 | RHD4CZ1C081ST2400, RHD4CZ1C081ST6100 | Skilled labor [42.15 h]; Unskilled Labor [84.29 h]; Equipment Opreator [84.29 h]; Excavator-Poclain [42.15 h]; Dump Truck [42.15 h]; UPVC (300mm Diameter) - ST - Depth less than 1.5 [154.71 m]; UPVC (300mm Diameter) - ST - Depth: 1.51m - 2.5m | 46,877.13 | C081 | Z1 | CONS | ST | Backfilling | bef |
|  | 352 | **RHD4-02-002-C081-(ST)-Concrete Encasement** |  | 2027-03-30 | 2027-03-31 |  |  |  |  |  |  |  |  |  |
| RHD4CZ1C081ST6100 |  | Pipe Encasement for Storm Pipelines - (RD-C-8 /1)-Z1-C081-ST | 2d | 2027-03-30 | 2027-03-31 | RHD4CZ1C081ST2300 SS, RHD4CZ1C081ST2300 FF, RHD4CZ1C081ST2200, RHD4CZ1C081RD3100 | Skilled labor [7.73 h]; Unskilled Labor [7.73 h]; Equipment Opreator [8.49 h]; Concrete Mixer Truck [0.8 h]; Dump Truck [7.73 h]; Pipe Encasement - ST [141.85 m3] | 71,776.1 | C081 | Z1 | CONS | ST | Pipe Encasement | bef |
|  | 353 | **RHD4-02-002-Z1-C081-Catch Basin - ST** |  | 2027-02-10 | 2027-03-17 |  |  |  |  |  |  |  |  |  |
|  | 354 | **RHD4-02-002-C081-(ST)-Single Catch Basin Works** |  | 2027-02-10 | 2027-03-15 |  |  |  |  |  |  |  |  |  |
| RHD4CZ1C081ST7100 |  | Excavation works for Single Catch Basin - (RD-C-8 /1)-Z1-C081-ST | 4d | 2027-02-10 | 2027-02-14 | RHD4ENSDZ1APPST110, RHD4CZ1C081ST1504 | Skilled labor [39.2 h]; Unskilled Labor [78.4 h]; Equipment Opreator [58.81 h]; Excavator-Poclain [39.2 h]; Dump Truck [19.6 h]; Single Catch basin - ST [9 nr] | 33,579 | C081 | Z1 | CONS | ST | Excavation | bef |
| RHD4CZ1C081ST7200 |  | PC Blinding, Installation and Pipe connection for Single Catch Basin - (RD-C-8 /1)-Z1-C081-ST | 4d | 2027-02-15 | 2027-02-18 | RHD4CZ1C081ST7100 | Skilled labor [39.2 h]; Unskilled Labor [78.4 h]; Plumber [19.6 h]; Equipment Opreator [7.84 h]; Boom Truck [7.84 h]; Single Catch basin - ST [7.2 nr] | 26,863.2 | C081 | Z1 | CONS | ST | Installation & Pipe Connection | bef |
| RHD4CZ1C081ST7300 |  | Rings & C.Slab & Final Backfill for Single Catch Basin - (RD-C-8 /1)-Z1-C081-ST | 5d | 2027-02-20 | 2027-02-25 | RHD4PRSHLDOSST1300, RHD4PRSHLSTAGST1300, RHD4CZ1C081ST7200 | Skilled labor [49.01 h]; Unskilled Labor [98.01 h]; Equipment Opreator [58.81 h]; Boom Truck [9.8 h]; Bobcat [49.01 h]; Single Catch basin - ST [12.6 nr] | 47,010.6 | C081 | Z1 | CONS | ST | Rings | bef |
| RHD4CZ1C081ST7400 |  | Steel Cover for Single Catch Basin - (RD-C-8 /1)-Z1-C081-ST | 4d | 2027-02-27 | 2027-03-02 | RHD4PRSHLDOSST1700, RHD4CZ1C081ST7300 | Skilled labor [39.2 h]; Unskilled Labor [39.2 h]; Equipment Opreator [7.84 h]; Boom Truck [7.84 h]; Single Catch basin - ST [1.8 nr] | 6,715.8 | C081 | Z1 | CONS | ST | Steel Cover | bef |
| RHD4CZ1C081ST7500 |  | Finishing and Insulation works for Single Catch Basin - (RD-C-8 /1)-Z1-C081-ST | 8d | 2027-03-03 | 2027-03-15 | RHD4CZ1C081ST7400 | Skilled labor [78.4 h]; Unskilled Labor [156.8 h]; Equipment Opreator [15.68 h]; Boom Truck [15.68 h]; Single Catch basin - ST [5.4 nr] | 20,147.4 | C081 | Z1 | CONS | ST | Insulation | bef |

| ID | WBS | Activity | Duration | Start | Finish | Predecessors | Resources | Cost | RDH4-01-001-Road and Block Names-1 | RDH4-01-001-Zones-1 | RDH4-01-001-Phases-1 | RDH4-01-001-Networks-1 | RDH4-01-001-Work Method-1 | RDH4-01-001-MENEM |
| --- | --- | --- | --- | --- | --- | --- | --- | --- | --- | --- | --- | --- | --- | --- |
|  | 355 | **RHD4-02-002-C081-(ST)-Double Catch Basin Works** |  | 2027-02-10 | 2027-03-17 |  |  |  |  |  |  |  |  |  |
| RHD4CZ1C081ST8100 |  | Excavation works for Double Catch Basin - (RD-C-8 /1)-Z1-C081-ST | 2d | 2027-02-10 | 2027-02-11 | RHD4ENSDZ1APPST110, RHD4CZ1C081ST1504 | Skilled labor [2.18 h]; Unskilled Labor [4.36 h]; Equipment Opreator [3.27 h]; Excavator-Poclain [2.18 h]; Dump Truck [1.09 h]; Double Catch basin - ST [0.25 nr] | 3,491.5 | C081 | Z1 | CONS | ST | Excavation | bef |
| RHD4CZ1C081ST8200 |  | PC Blinding, Installation and Pipe connection for Double Catch Basin - (RD-C-8 /1)-Z1-C081-ST | 2d | 2027-02-20 | 2027-02-21 | RHD4CZ1C081ST8100, RHD4CZ1C081ST7200 | Skilled labor [2.18 h]; Unskilled Labor [4.36 h]; Plumber [1.09 h]; Equipment Opreator [0.44 h]; Boom Truck [0.44 h]; Double Catch basin - ST [0.2 nr] | 2,793.2 | C081 | Z1 | CONS | ST | Installation & Pipe Connection | bef |
| RHD4CZ1C081ST8300 |  | Rings & C.Slab & Final Backfillfor Double Catch Basin - (RD-C-8 /1)-Z1-C081-ST | 2d | 2027-02-27 | 2027-02-28 | RHD4PRSHLDOSST1300, RHD4PRSHLSTAGST1300, RHD4CZ1C081ST8200, RHD4CZ1C081ST7300 | Skilled labor [2.72 h]; Unskilled Labor [5.45 h]; Equipment Opreator [3.27 h]; Boom Truck [0.54 h]; Bobcat [2.72 h]; Double Catch basin - ST [0.35 nr] | 4,888.1 | C081 | Z1 | CONS | ST | Rings | bef |
| RHD4CZ1C081ST8400 |  | Steel Cover for Double Catch Basin - (RD-C-8 /1)-Z1-C081-ST | 2d | 2027-03-03 | 2027-03-04 | RHD4PRSHLDOSST1700, RHD4CZ1C081ST8300, RHD4CZ1C081ST7400 | Skilled labor [2.18 h]; Unskilled Labor [2.18 h]; Equipment Opreator [0.44 h]; Boom Truck [0.44 h]; Double Catch basin - ST [0.05 nr] | 698.3 | C081 | Z1 | CONS | ST | Steel Cover | bef |
| RHD4CZ1C081ST8500 |  | Finishing and Insulation works for Double Catch Basin - (RD-C-8 /1)-Z1-C081-ST | 2d | 2027-03-16 | 2027-03-17 | RHD4CZ1C081ST8400, RHD4CZ1C081ST7500 | Skilled labor [5.45 h]; Unskilled Labor [10.89 h]; Equipment Opreator [1.09 h]; Boom Truck [1.09 h]; Double Catch basin - ST [0.15 nr] | 2,094.9 | C081 | Z1 | CONS | ST | Insulation | bef |
|  | 378 | **RHD4-02-002-Z1-C081-Sewage Network - SW** |  | 2027-04-01 | 2027-04-29 |  |  |  |  |  |  |  |  |  |
|  | 388 | **RHD4-02-002-C081-(SW)-MH Works - 1200 mm diameter** |  | 2027-04-01 | 2027-04-25 |  |  |  |  |  |  |  |  |  |
| RHD4CZ1C081SW3100 |  | Excavation and PC Blinding works for MH 1200 mm - (RD-C-8 /1)-Z1-C081-SW | 4d | 2027-04-01 | 2027-04-05 | RHD4ENSDZ1APPSW120, RHD4CZ1C081ST6100, RHD4CZ1C081ST8500, RHD4CZ1C081ST7500, RHD4CZ1C081ST8100, RHD4CZ1C081ST1500 | Skilled labor [38.12 h]; Unskilled Labor [38.12 h]; Equipment Opreator [60.99 h]; Excavator-Poclain [38.12 h]; Water Truck [3.81 h]; Dump Truck [19.06 h]; MH (1200mm Diameter) - SW - depth 1.51 - 2.5m [0.5 nr]; MH (1200mm Diameter) - SW - depth 2.51 - 3.5m [0.25 nr]; MH (1200mm Diameter) - SW - depth 3.51 -4.5m [0.25 nr]; MH (1200mm Diameter) - SW - depth 4.51 -5.5m [0.25 nr]; MH (1200mm Diameter) - SW - depth more than 6.0 m [0.25 nr] | 19,504.75 | C081 | Z1 | CONS | SW | Excavation | bef |
| RHD4CZ1C081SW3200 |  | Installation of Base for MH 1200 mm - (RD-C-8 /1)-Z1-C081-SW | 5d | 2027-04-06 | 2027-04-11 | RHD4CZ1C081SW3100 | Skilled labor [54.45 h]; Unskilled Labor [54.45 h]; Equipment Opreator [21.78 h]; Boom Truck [10.89 h]; Concrete Mixer Truck [10.89 h]; MH (1200mm Diameter) - SW - depth 1.51 - 2.5m [0.5 nr]; MH (1200mm Diameter) - SW - depth 2.51 - 3.5m [0.25 nr]; MH (1200mm Diameter) - SW - depth 3.51 -4.5m [0.25 nr]; MH (1200mm Diameter) - SW - depth 4.51 -5.5m [0.25 nr]; MH (1200mm Diameter) - SW - depth more than 6.0 m [0.25 nr] | 19,504.75 | C081 | Z1 | CONS | SW | Installing Base | bef |
| RHD4CZ1C081SW3300 |  | MH Ring and C.Slab works and Backfilling works for MH 1200 mm - (RD-C-8 /1)-Z1-C081-SW | 5d | 2027-04-12 | 2027-04-17 | RHD4PRSHLDOSSW1300, RHD4CZ1C081ST2500, RHD4PRSHLSTAGSW1300, RHD4CZ1C081SW3200 | Skilled labor [54.45 h]; Unskilled Labor [54.45 h]; Equipment Opreator [38.12 h]; Boom Truck [21.78 h]; Concrete Mixer Truck [16.34 h]; MH (1200mm Diameter) - SW - depth 1.51 - 2.5m [0.7 nr]; MH (1200mm Diameter) - SW - depth 2.51 - 3.5m [0.35 nr]; MH (1200mm Diameter) - SW - depth 3.51 -4.5m [0.35 nr]; MH (1200mm Diameter) - SW - depth 4.51 -5.5m [0.35 nr]; MH (1200mm Diameter) - SW - depth more than 6.0 m [0.35 nr] | 27,306.65 | C081 | Z1 | CONS | SW | Installing Rings | bef |
| RHD4CZ1C081SW3400 |  | Steel Cover for MH 1200 mm - (RD-C-8 /1)-Z1-C081-SW | 2d | 2027-04-18 | 2027-04-19 | RHD4PRSHLDOSSW1400, RHD4CZ1C081ST3501, RHD4PRSHLSTAGSW1400, RHD4CZ1C081SW3300 | Skilled labor [21.78 h]; Unskilled Labor [43.56 h]; Equipment Opreator [4.36 h]; Boom Truck [4.36 h]; MH (1200mm Diameter) - SW - depth 1.51 - 2.5m [0.1 nr]; MH (1200mm Diameter) - SW - depth 2.51 - 3.5m [0.05 nr]; MH (1200mm Diameter) - SW - depth 3.51 -4.5m [0.05 nr]; MH (1200mm Diameter) - SW - depth 4.51 -5.5m [0.05 nr]; MH (1200mm Diameter) - SW - depth more than 6.0 m [0.05 nr] | 3,900.95 | C081 | Z1 | CONS | SW | Steel Cover | bef |
| RHD4CZ1C081SW3500 |  | Finishing, Benching, Testing works for MH 1200 mm - (RD-C-8 /1)-Z1-C081-SW | 5d | 2027-04-20 | 2027-04-25 | RHD4CZ1C081SW3400 | Skilled labor [54.45 h]; Unskilled Labor [108.9 h]; Plumber [54.45 h]; Equipment Opreator [10.89 h]; Water Truck [10.89 h]; MH (1200mm Diameter) - SW - depth 1.51 - 2.5m [0.2 nr]; MH (1200mm Diameter) - SW - depth 2.51 - 3.5m [0.1 nr]; MH (1200mm Diameter) - SW - depth 3.51 -4.5m [0.1 nr]; MH (1200mm Diameter) - SW - depth 4.51 -5.5m [0.1 nr]; MH (1200mm Diameter) - SW - depth more than 6.0 m [0.1 nr] | 7,801.9 | C081 | Z1 | CONS | SW | Benching | bef |
|  | 384 | **RHD4-02-002-C081-(SW)-UPVC Pipes - 200 mm diameter** |  | 2027-04-06 | 2027-04-29 |  |  |  |  |  |  |  |  |  |
| RHD4CZ1C081SW2100 |  | Excavation works for UPVC Pipe Line 200 mm - (RD-C-8 /1)-Z1-C081-SW | 4d | 2027-04-06 | 2027-04-10 | RHD4ENSDZ1APPSW120, RHD4CZ1C081SW3100, RHD4CZ1C081SW3100 SS | Skilled labor [36.05 h]; Unskilled Labor [36.05 h]; Equipment Opreator [43.34 h]; Excavator-Poclain [36.05 h]; Dump Truck [7.2 h]; UPVC (200mm Diameter) - SW - Depth: less than 1.5m; UPVC (200mm Diameter) - SW - Depth: 1.51m - 2.5m [14.41 m]; UPVC (200mm Diameter) - SW - Depth: 2.51m - 3.5m [14.25 m]; UPVC (200mm Diameter) - SW - Depth: 3.51m - 4.5m [14.55 m]; UPVC (200mm Diameter) - SW - Depth: 4.51m - 5.5m [24.18 m] | 30,363.92 | C081 | Z1 | CONS | SW | Excavation | bef |
| RHD4CZ1C081SW2200 |  | Bedding works for UPVC Pipe Line 200 mm - (RD-C-8 /1)-Z1-C081-SW | 4d | 2027-04-11 | 2027-04-14 | RHD4CZ1C081SW2100, RHD4CZ1C081SW3100, RHD4CZ1C081SW3100 SS | Skilled labor [36.05 h]; Unskilled Labor [72.2 h]; Equipment Opreator [72.2 h]; Excavator-Poclain [36.05 h]; Dump Truck [36.05 h]; UPVC (200mm Diameter) - SW - Depth: less than 1.5m; UPVC (200mm Diameter) - SW - Depth: 1.51m - 2.5m [4.8 m]; UPVC (200mm Diameter) - SW - Depth: 2.51m - 3.5m [4.75 m]; UPVC (200mm Diameter) - SW - Depth: 3.51m - 4.5m [4.85 m]; UPVC (200mm Diameter) - SW - Depth: 4.51m - 5.5m [8.06 m] | 10,120.58 | C081 | Z1 | CONS | SW | Bedding | bef |
| RHD4CZ1C081SW2300 |  | Installing for UPVC Pipe Line 200 mm - (RD-C-8 /1)-Z1-C081-SW | 4d | 2027-04-18 | 2027-04-21 | RHD4PRSHLDOSSW1000, RHD4PRSHLSTAGSW1000, RHD4CZ1C081SW2200, RHD4CZ1C081SW3300, RHD4CZ1C081SW3300 SS | Unskilled Labor [72.2 h]; Plumber [36.05 h]; Equipment Opreator [36.05 h]; Boom Truck [36.05 h]; UPVC (200mm Diameter) - SW - Depth: less than 1.5m; UPVC (200mm Diameter) - SW - Depth: 1.51m - 2.5m [38.43 m]; UPVC (200mm Diameter) - SW - Depth: 2.51m - 3.5m [37.99 m]; UPVC (200mm Diameter) - SW - Depth: 3.51m - 4.5m [38.81 m]; UPVC (200mm Diameter) - SW - Depth: 4.51m - 5.5m [64.47 m] | 80,968.43 | C081 | Z1 | CONS | SW | Installation | bef |
| RHD4CZ1C081SW2400 |  | Primary Test for UPVC Pipe Line 200 mm - (RD-C-8 /1)-Z1-C081-SW | 3d | 2027-04-22 | 2027-04-25 | RHD4CZ1C081SW2300 | Unskilled Labor [30.93 h]; Plumber [30.93 h]; Equipment Opreator [30.93 h]; Water Truck [30.93 h]; UPVC (200mm Diameter) - SW - Depth: less than 1.5m; UPVC (200mm Diameter) - SW - Depth: 1.51m - 2.5m [19.22 m]; UPVC (200mm Diameter) - SW - Depth: 2.51m - 3.5m [19 m]; UPVC (200mm Diameter) - SW - Depth: 3.51m - 4.5m [19.41 m]; UPVC (200mm Diameter) - SW - Depth: 4.51m - 5.5m [32.23 m] | 40,485.15 | C081 | Z1 | CONS | SW | Primary Test | bef |
| RHD4CZ1C081SW2500 |  | Backfilling and warning tape works for UPVC Pipe Line 200 mm - (RD-C-8 /1)-Z1-C081-SW | 4d | 2027-04-26 | 2027-04-29 | RHD4CZ1C081SW2400 | Skilled labor [36.05 h]; Unskilled Labor [72.2 h]; Equipment Opreator [72.2 h]; Excavator-Poclain [36.05 h]; Dump Truck [36.05 h]; UPVC (200mm Diameter) - SW - Depth: less than 1.5m; UPVC (200mm Diameter) - SW - Depth: 1.51m - 2.5m [19.22 m]; UPVC (200mm Diameter) - SW - Depth: 2.51m - 3.5m [19 m]; UPVC (200mm Diameter) - SW - Depth: 3.51m - 4.5m [19.41 m]; UPVC (200mm Diameter) - SW - Depth: 4.51m - 5.5m [32.23 m] | 40,485.15 | C081 | Z1 | CONS | SW | Backfilling | bef |
|  | 387 | **RHD4-02-002-C081-(SW)-Concrete Encasement** |  |  |  |  |  |  |  |  |  |  |  |  |
|  | 415 | **RHD4-02-002-Z1-C081-Potable Network - PT** |  | 2027-05-01 | 2027-09-19 |  |  |  |  |  |  |  |  |  |
|  | 418 | **RHD4-02-002-C081-(PT)-HDPE Pipes - 200 mm diameter** |  | 2027-05-01 | 2027-06-08 |  |  |  |  |  |  |  |  |  |
| RHD4CZ1C081PT1102 |  | Excavation works for HDPE Pipline 200 mm - (RD-C-8 /1)-Z1-C081-PT | 6d | 2027-05-01 | 2027-05-06 | RHD4ENSDZ1APPPT130, RHD4ENMSPT2000, RHD4CZ1C081SW2500 | Skilled labor [55.76 h]; Unskilled Labor [55.76 h]; Equipment Opreator [66.98 h]; Excavator-Poclain [55.76 h]; Dump Truck [11.11 h]; HDPE (200mm Diameter) - PT - Depth: less than 1.5m [128.04 m] | 17,925.74 | C081 | Z1 | CONS | PT | Excavation | bef |
| RHD4CZ1C081PT1202 |  | Bedding works for HDPE Pipline 200 mm - (RD-C-8 /1)-Z1-C081-PT | 5d | 2027-05-08 | 2027-05-12 | RHD4CZ1C081PT1102 | Skilled labor [46.5 h]; Unskilled Labor [93 h]; Equipment Opreator [93 h]; Excavator-Poclain [46.5 h]; Dump Truck [46.5 h]; HDPE (200mm Diameter) - PT - Depth: less than 1.5m [64.02 m] | 8,962.87 | C081 | Z1 | CONS | PT | Bedding | bef |
| RHD4CZ1C081PT1302 |  | Installing for HDPE Pipline 200 mm - (RD-C-8 /1)-Z1-C081-PT | 9d | 2027-05-13 | 2027-05-27 | RHD4PRSHLDOSPT1000, RHD4PRSHLSTAGPT1000, RHD4CZ1C081PT1202 | Unskilled Labor [185.9 h]; Plumber [93 h]; Equipment Opreator [93 h]; Boom Truck [93 h]; HDPE (200mm Diameter) - PT - Depth: less than 1.5m [576.18 m] | 80,665.83 | C081 | Z1 | CONS | PT | Installation | bef |
| RHD4CZ1C081PT1402 |  | Primary Test for HDPE Pipline 200 mm - (RD-C-8 /1)-Z1-C081-PT | 3d | 2027-05-29 | 2027-05-31 | RHD4CZ1C081PT1302 | Unskilled Labor [27.88 h]; Plumber [27.88 h]; Equipment Opreator [27.88 h]; Water Truck [27.88 h]; HDPE (200mm Diameter) - PT - Depth: less than 1.5m [256.08 m] | 35,851.48 | C081 | Z1 | CONS | PT | Primary Test | bef |
| RHD4CZ1C081PT1502 |  | Backfilling and warning tape works for HDPE Pipline 200 mm - (RD-C-8 /1)-Z1-C081-PT | 7d | 2027-06-01 | 2027-06-08 | RHD4CZ1C081PT1402 | Skilled labor [69.7 h]; Unskilled Labor [139.4 h]; Equipment Opreator [139.4 h]; Excavator-Poclain [69.7 h]; Dump Truck [69.7 h]; HDPE (200mm Diameter) - PT - Depth: less than 1.5m [256.08 m] | 35,851.48 | C081 | Z1 | CONS | PT | Backfilling | bef |

| ID | WBS | Activity | Duration | Start | Finish | Predecessors | Resources | Cost | RDH4-01-001-Road and Block Names-1 | RDH4-01-001-Zones-1 | RDH4-01-001-Phases-1 | RDH4-01-001-Networks-1 | RDH4-01-001-Work Method-1 | RDH4-01-001-MENEM |
| --- | --- | --- | --- | --- | --- | --- | --- | --- | --- | --- | --- | --- | --- | --- |
|  | 417 | **RHD4-02-002-C081-(PT)-HDPE Pipes - 160 mm diameter** |  |  |  |  |  |  |  |  |  |  |  |  |
|  | 6848 | **RHD4-02-002-C081-(PT)-HDPE Pipes - 110 mm diameter** |  | 2027-06-09 | 2027-06-24 |  |  |  |  |  |  |  |  |  |
| RHD4CZ1C081PT1100 |  | Excavation works for HDPE Pipline 110 mm - (RD-C-8 /1)-Z1-C081-PT | 3d | 2027-06-09 | 2027-06-12 | RHD4CZ1C081PT1102, RHD4CZ1C081PT1502 | Skilled labor [24.61 h]; Unskilled Labor [24.61 h]; Equipment Opreator [29.51 h]; Excavator-Poclain [24.61 h]; Dump Truck [4.9 h]; HDPE (110mm Diameter) - PT - Depth: less than 1.5m |  | C081 | Z1 | CONS | PT | Excavation | bef |
| RHD4CZ1C081PT1200 |  | Bedding works for HDPE Pipline 110 mm - (RD-C-8 /1)-Z1-C081-PT | 2d | 2027-06-13 | 2027-06-14 | RHD4CZ1C081PT1100 | Skilled labor [20.47 h]; Unskilled Labor [40.95 h]; Equipment Opreator [40.95 h]; Excavator-Poclain [20.47 h]; Dump Truck [20.47 h]; HDPE (110mm Diameter) - PT - Depth: less than 1.5m |  | C081 | Z1 | CONS | PT | Bedding | bef |
| RHD4CZ1C081PT1300 |  | Installing for HDPE Pipline 110 mm - (RD-C-8 /1)-Z1-C081-PT | 4d | 2027-06-15 | 2027-06-19 | RHD4CZ1C081PT1200 | Unskilled Labor [81.9 h]; Plumber [40.95 h]; Equipment Opreator [40.95 h]; Boom Truck [40.95 h]; HDPE (110mm Diameter) - PT - Depth: less than 1.5m |  | C081 | Z1 | CONS | PT | Installation | bef |
| RHD4CZ1C081PT1400 |  | Primary Test for HDPE Pipline 110 mm - (RD-C-8 /1)-Z1-C081-PT | 2d | 2027-06-20 | 2027-06-21 | RHD4CZ1C081PT1300 | Unskilled Labor [12.31 h]; Plumber [12.31 h]; Equipment Opreator [12.31 h]; Water Truck [12.31 h]; HDPE (110mm Diameter) - PT - Depth: less than 1.5m |  | C081 | Z1 | CONS | PT | Primary Test | bef |
| RHD4CZ1C081PT1500 |  | Backfilling and warning tape works for HDPE Pipline 110 mm - (RD-C-8 /1)-Z1-C081-PT | 3d | 2027-06-22 | 2027-06-24 | RHD4CZ1C081PT1400 | Skilled labor [30.71 h]; Unskilled Labor [61.42 h]; Equipment Opreator [61.42 h]; Excavator-Poclain [30.71 h]; Dump Truck [30.71 h]; HDPE (110mm Diameter) - PT - Depth: less than 1.5m |  | C081 | Z1 | CONS | PT | Backfilling | bef |
|  | 421 | **RHD4-02-002-C081-(PT)-Gate Valves (Direct Buried)** |  | 2027-06-26 | 2027-06-29 |  |  |  |  |  |  |  |  |  |
| RHD4CZ1C081PT3100 |  | Installation for Direct Buried Gate Valves - (RD-C-8 /1)-Z1-C081-PT | 2d | 2027-06-26 | 2027-06-27 | RHD4PRSHLDOSPT1200, RHD4PRSHLSTAGPT1200, RHD4CZ1C081PT1500 | Unskilled Labor [21.78 h]; Plumber [21.78 h]; Gate valves dia 100 mm - PT; Gate valves dia 200 mm - PT [2.7 nr] | 6,026.4 | C081 | Z1 | CONS | PT | Installation | bef |
| RHD4CZ1C081PT3200 |  | Stem and Service box for Direct Buried Gate Valves - (RD-C-8 /1)-Z1-C081-PT | 2d | 2027-06-28 | 2027-06-29 | RHD4PRSHLDOSPT1300, RHD4PRSHLSTAGPT1300, RHD4CZ1C081PT3100, RHD4CZ1C081PT1502 | Unskilled Labor [21.78 h]; Plumber [21.78 h]; Gate valves dia 100 mm - PT; Gate valves dia 200 mm - PT [0.3 nr] | 669.6 | C081 | Z1 | CONS | PT | Stem and Service box | bef |
|  | 429 | **RHD4-02-002-C081-(PT)-Concrete Encasement** |  |  |  |  |  |  |  |  |  |  |  |  |
|  | 426 | **RHD4-02-002-C081-(PT)-Air Valve Chambers** |  | 2027-06-13 | 2027-06-21 |  |  |  |  |  |  |  |  |  |
| RHD4CZ1C081PT2102 |  | Excavation and Bedding for Air Valve Chambers for Potable Water Network - (RD-C-8 /1)-Z1-C081-PT | 2d | 2027-06-13 | 2027-06-14 | RHD4ENSDZ1APPPT130, RHD4CZ1C081PT1100, RHD4CZ1C081PT1100 FF | Skilled labor [5.45 h]; Unskilled Labor [5.45 h]; Equipment Opreator [1.09 h]; Excavator-Poclain [0.54 h]; Dump Truck [0.54 h]; Air Valve chambers - PT [0.25 nr] | 1,193 | C081 | Z1 | CONS | PT | Excavation and Bedding | bef |
| RHD4CZ1C081PT2202 |  | PC works for Air Valve Chambers for Potable Water Network - (RD-C-8 /1)-Z1-C081-PT | 2d | 2027-06-15 | 2027-06-16 | RHD4CZ1C081PT2102 | Skilled labor [5.45 h]; Unskilled Labor [10.89 h]; Equipment Opreator [0.54 h]; Concrete Pump [0.54 h]; Air Valve chambers - PT [0.1 nr] | 477.2 | C081 | Z1 | CONS | PT | PC Works | bef |
| RHD4CZ1C081PT2302 |  | Installation for Air Valve Chambers for Potable Water Network - (RD-C-8 /1)-Z1-C081-PT | 2d | 2027-06-17 | 2027-06-19 | RHD4PRSHLDOSPT1100, RHD4PRSHLDOSPT1400, RHD4PRSHLSTAGPT1100, RHD4PRSHLSTAGPT1400, RHD4CZ1C081PT2202 | Skilled labor [5.45 h]; Unskilled Labor [10.89 h]; Equipment Opreator [1.09 h]; Boom Truck [1.09 h]; Air Valve chambers - PT [0.55 nr] | 2,624.6 | C081 | Z1 | CONS | PT | Installation | bef |
| RHD4CZ1C081PT2402 |  | Backfilling works for Air Valve Chambers for Potable Water Network - (RD-C-8 /1)-Z1-C081-PT | 2d | 2027-06-20 | 2027-06-21 | RHD4CZ1C081PT2302 | Skilled labor [5.45 h]; Unskilled Labor [10.89 h]; Equipment Opreator [1.09 h]; Water Truck [0.54 h]; Dump Truck [0.54 h]; Air Valve chambers - PT [0.1 nr] | 477.2 | C081 | Z1 | CONS | PT | Backfilling Works | bef |
|  | 427 | **RHD4-02-002-C081-(PT)-Air Valves** |  | 2027-06-17 | 2027-06-23 |  |  |  |  |  |  |  |  |  |
| RHD4CZ1C081PT3103 |  | Installation for Air Valves for Potable Water Network - (RD-C-8 /1)-Z1-C081-PT | 2d | 2027-06-17 | 2027-06-19 | RHD4PRSHLDOSPT1200, RHD4PRSHLSTAGPT1200, RHD4CZ1C081PT2202 | Unskilled Labor [5.45 h]; Plumber [5.45 h]; Air valve diameter 50 mm - PT [0.9 nr] | 4,427.1 | C081 | Z1 | CONS | PT | Installation | bef |
| RHD4CZ1C081PT3203 |  | Stem and Service box for Air Valves for Potable Water Network - (RD-C-8 /1)-Z1-C081-PT | 2d | 2027-06-22 | 2027-06-23 | RHD4PRSHLDOSPT1300, RHD4PRSHLSTAGPT1300, RHD4CZ1C081PT3103, RHD4CZ1C081PT2402 | Unskilled Labor [5.45 h]; Plumber [5.45 h]; Air valve diameter 50 mm - PT [0.1 nr] | 491.9 | C081 | Z1 | CONS | PT | Stem and Service box | bef |
|  | 428 | **RHD4-02-002-C081-(PT)-Fire Hydrant** |  | 2027-06-24 | 2027-09-19 |  |  |  |  |  |  |  |  |  |
| RHD4CZ1C081PT4100 |  | Excavation and Bedding and Pipe Installation for Fire Hydrant - (RD-C-8 /1)-Z1-C081-PT | 4d | 2027-06-24 | 2027-06-28 | RHD4ENSDZ1APPPT130, RHD4CZ1C081PT2102, RHD4CZ1C081PT3203 | Skilled labor [43.56 h]; Unskilled Labor [43.56 h]; Plumber [43.56 h]; Equipment Opreator [21.78 h]; Excavator-Poclain [21.78 h]; 3-outlet fire hydrant (2 x 2.5 inch and 1 x 4.5 inch) in the form of a separate dry vacuum cylinder [0.8 nr] | 10,096 | C081 | Z1 | CONS | PT | Excavation | bef |
| RHD4CZ1C081PT4200 |  | Valve Installation for Fire Hydrant - (RD-C-8 /1)-Z1-C081-PT | 3d | 2027-09-07 | 2027-09-09 | RHD4CZ1C081PT1500, RHD4CZ1C081PT3200, RHD4PRSHLDOSICT1000, RHD4PRSHLSTAGICT1000, RHD4CZ1C081PT4100, RHD4CZ1L101IRR3200, RHD4CZ7L131ST3501 | Unskilled Labor [29.08 h]; Plumber [29.08 h]; 3-outlet fire hydrant (2 x 2.5 inch and 1 x 4.5 inch) in the form of a separate dry vacuum cylinder [1.6 nr] | 20,192 | C081 | Z1 | CONS | PT | Valve | bef |
| RHD4CZ1C081PT4300 |  | Stem for Fire Hydrant - (RD-C-8 /1)-Z1-C081-PT | 3d | 2027-09-11 | 2027-09-13 | RHD4CZ6C062ICT3400, RHD4CZ1C081PT4200 | Unskilled Labor [29.08 h]; Plumber [29.08 h]; 3-outlet fire hydrant (2 x 2.5 inch and 1 x 4.5 inch) in the form of a separate dry vacuum cylinder [2.4 nr] | 30,288 | C081 | Z1 | CONS | PT | Stem | bef |
| RHD4CZ1C081PT4400 |  | Fire Installation for Fire Hydrant - (RD-C-8 /1)-Z1-C081-PT | 3d | 2027-09-14 | 2027-09-16 | RHD4PRSHLDOSPT1500, RHD4PRSHLSTAGPT1500, RHD4CZ1C081PT4300, RHD4CZ9L02IRR2401 | Unskilled Labor [29.08 h]; Plumber [29.08 h]; Equipment Opreator [29.08 h]; Boom Truck [29.08 h]; 3-outlet fire hydrant (2 x 2.5 inch and 1 x 4.5 inch) in the form of a separate dry vacuum cylinder [2.8 nr] | 35,336 | C081 | Z1 | CONS | PT | Fire | bef |
| RHD4CZ1C081PT4500 |  | Protection Barriers for Fire Hydrant - (RD-C-8 /1)-Z1-C081-PT | 2d | 2027-09-18 | 2027-09-19 | RHD4CZ1C081PT4400, RHD4CZ4C012IRR3201, RHD4CZ4A013TC2400 | Unskilled Labor [17.42 h]; Plumber [17.42 h]; 3-outlet fire hydrant (2 x 2.5 inch and 1 x 4.5 inch) in the form of a separate dry vacuum cylinder [0.4 nr] | 5,048 | C081 | Z1 | CONS | PT | Protection Barriers | bef |

| ID | WBS | Activity | Duration | Start | Finish | Predecessors | Resources | Cost | RDH4-01-001-Road and Block Names-1 | RDH4-01-001-Zones-1 | RDH4-01-001-Phases-1 | RDH4-01-001-Networks-1 | RDH4-01-001-Work Method-1 | RDH4-01-001-MENEM |
| --- | --- | --- | --- | --- | --- | --- | --- | --- | --- | --- | --- | --- | --- | --- |
|  | 430 | **RHD4-02-002-Z1-C081-Irrigation Network - IRR** |  | 2027-05-08 | 2027-06-06 |  |  |  |  |  |  |  |  |  |
|  | 437 | **RHD4-02-002-C081-(IRR)-HDPE Pipes - 450 mm diameter** |  |  |  |  |  |  |  |  |  |  |  |  |
|  | 6863 | **RHD4-02-002-C081-(IRR)-HDPE Pipes - 160 mm diameter** |  | 2027-05-08 | 2027-05-23 |  |  |  |  |  |  |  |  |  |
| RHD4CZ1C081IRR1100 |  | Excavation works for HDPE Pipline 160 mm - (RD-C-8 /1)-Z1-C081-IRR | 2d | 2027-05-08 | 2027-05-09 | RHD4ENSDZ1APPIRR140, RHD4ENMSRR2000, RHD4CZ1C081PT1102 | Skilled labor [2.07 h]; Unskilled Labor [2.07 h]; Equipment Opreator [2.4 h]; Excavator-Poclain [2.07 h]; Dump Truck [0.44 h]; HDPE (160mm Diameter) - TSE - Depth: less than 1.5m [2.8 m] | 344.4 | C081 | Z1 | CONS | IRR | Excavation | bef |
| RHD4CZ1C081IRR1200 |  | Bedding works for HDPE Pipline 160 mm - (RD-C-8 /1)-Z1-C081-IRR | 2d | 2027-05-10 | 2027-05-11 | RHD4CZ1C081IRR1100 | Skilled labor [1.52 h]; Unskilled Labor [3.05 h]; Equipment Opreator [3.05 h]; Excavator-Poclain [1.52 h]; Dump Truck [1.52 h]; HDPE (160mm Diameter) - TSE - Depth: less than 1.5m [1.4 m] | 172.2 | C081 | Z1 | CONS | IRR | Bedding | bef |
| RHD4CZ1C081IRR1300 |  | Installing for HDPE Pipline 160 mm - (RD-C-8 /1)-Z1-C081-IRR | 2d | 2027-05-12 | 2027-05-13 | RHD4CZ1C081IRR1200 | Unskilled Labor [4 h]; Plumber [2.07 h]; Equipment Opreator [2.07 h]; Boom Truck [2.07 h]; HDPE (160mm Diameter) - TSE - Depth: less than 1.5m [12.6 m] | 1,549.8 | C081 | Z1 | CONS | IRR | Installation | bef |
| RHD4CZ1C081IRR1400 |  | Primary Test for HDPE Pipline 160 mm - (RD-C-8 /1)-Z1-C081-IRR | 2d | 2027-05-19 | 2027-05-20 | RHD4CZ1C081IRR1300 | Unskilled Labor [0.65 h]; Plumber [0.65 h]; Equipment Opreator [0.65 h]; Water Truck [0.65 h]; HDPE (160mm Diameter) - TSE - Depth: less than 1.5m [5.6 m] | 688.8 | C081 | Z1 | CONS | IRR | Primary Test | bef |
| RHD4CZ1C081IRR1500 |  | Backfilling and warning tape works for HDPE Pipline 160 mm - (RD-C-8 /1)-Z1-C081-IRR | 2d | 2027-05-22 | 2027-05-23 | RHD4CZ1C081IRR1400 | Skilled labor [1.52 h]; Unskilled Labor [3.05 h]; Equipment Opreator [3.05 h]; Excavator-Poclain [1.52 h]; Dump Truck [1.52 h]; HDPE (160mm Diameter) - TSE - Depth: less than 1.5m [5.6 m] | 688.8 | C081 | Z1 | CONS | IRR | Backfilling | bef |
|  | 6876 | **RHD4-02-002-C081-(IRR)-Air Valve Chamber** |  | 2027-05-24 | 2027-06-01 |  |  |  |  |  |  |  |  |  |
| RHD4CZ1C081IRR2102 |  | Excavation and Bedding for Valve Chamber for Irrigation Network - (RD-C-8 /1)-Z1-C081-IRR | 2d | 2027-05-24 | 2027-05-25 | RHD4CZ1C081IRR1100, RHD4CZ1C081IRR1500 | Skilled labor [5.45 h]; Unskilled Labor [5.45 h]; Equipment Opreator [1.09 h]; Excavator-Poclain [0.54 h]; Dump Truck [0.54 h]; Air Valve chambers - TSE [0.25 nr] | 1,193 | C081 | Z1 | CONS | IRR | Excavation and Bedding | bef |
| RHD4CZ1C081IRR2202 |  | PC works for Valve Chamber for Irrigation Network - (RD-C-8 /1)-Z1-C081-IRR | 2d | 2027-05-26 | 2027-05-27 | RHD4CZ1C081IRR2102 | Skilled labor [5.45 h]; Unskilled Labor [10.89 h]; Equipment Opreator [0.54 h]; Concrete Pump [0.54 h]; Air Valve chambers - TSE [0.1 nr] | 477.2 | C081 | Z1 | CONS | IRR | PC Works | bef |
| RHD4CZ1C081IRR2302 |  | Installation for Valve Chamber for Irrigation Network - (RD-C-8 /1)-Z1-C081-IRR | 2d | 2027-05-29 | 2027-05-30 | RHD4CZ1C081IRR2202 | Skilled labor [5.45 h]; Unskilled Labor [10.89 h]; Equipment Opreator [1.09 h]; Boom Truck [1.09 h]; Air Valve chambers - TSE [0.55 nr] | 2,624.6 | C081 | Z1 | CONS | IRR | Installation | bef |
| RHD4CZ1C081IRR2402 |  | Backfilling works for Valve Chamber for Irrigation Network - (RD-C-8 /1)-Z1-C081-IRR | 2d | 2027-05-31 | 2027-06-01 | RHD4CZ1C081IRR2302 | Skilled labor [5.45 h]; Unskilled Labor [10.89 h]; Equipment Opreator [1.09 h]; Water Truck [0.54 h]; Dump Truck [0.54 h]; Air Valve chambers - TSE [0.1 nr] | 477.2 | C081 | Z1 | CONS | IRR | Backfilling Works | bef |
|  | 6877 | **RHD4-02-002-C081-(IRR)-Air Valves** |  | 2027-06-02 | 2027-06-06 |  |  |  |  |  |  |  |  |  |
| RHD4CZ1C081IRR3103 |  | Installation for Air Valves for Irrigation Network - (RD-C-8 /1)-Z1-C081-IRR | 2d | 2027-06-02 | 2027-06-03 | RHD4CZ1C081IRR2302, RHD4CZ1C081IRR2402 | Unskilled Labor [5.45 h]; Plumber [5.45 h]; Air valve diameter 50 mm - TSE [0.9 nr] | 4,427.1 | C081 | Z1 | CONS | IRR | Installation | bef |
| RHD4CZ1C081IRR3203 |  | Stem and Service box for Air Valves for Irrigation Network - (RD-C-8 /1)-Z1-C081-IRR | 2d | 2027-06-05 | 2027-06-06 | RHD4CZ1C081IRR3103, RHD4CZ1C081IRR2402 | Unskilled Labor [5.45 h]; Plumber [5.45 h]; Air valve diameter 50 mm - TSE [0.1 nr] | 491.9 | C081 | Z1 | CONS | IRR | Stem and Service box | bef |
|  | 436 | **RHD4-02-002-C081-(IRR)-HDPE Pipes - 400 mm diameter** |  |  |  |  |  |  |  |  |  |  |  |  |
|  | 435 | **RHD4-02-002-C081-(IRR)-HDPE Pipes - 315 mm diameter** |  | 2027-05-08 | 2027-06-03 |  |  |  |  |  |  |  |  |  |
| RHD4CZ1C081IRR1104 |  | Excavation works for HDPE Pipline 315 mm - (RD-C-8 /1)-Z1-C081-IRR | 5d | 2027-05-08 | 2027-05-12 | RHD4ENSDZ1APPIRR140, RHD4ENMSRR2000, RHD4CZ1C081PT1102 | Skilled labor [54.45 h]; Unskilled Labor [54.45 h]; Equipment Opreator [65.23 h]; Excavator-Poclain [54.45 h]; Dump Truck [10.89 h]; HDPE (315mm Diameter) - TSE - Depth: less than 1.5m [74.94 m] | 21,955.96 | C081 | Z1 | CONS | IRR | Excavation | bef |
| RHD4CZ1C081IRR1204 |  | Bedding works for HDPE Pipline 315 mm - (RD-C-8 /1)-Z1-C081-IRR | 4d | 2027-05-13 | 2027-05-22 | RHD4CZ1C081IRR1104 | Skilled labor [40.8 h]; Unskilled Labor [81.6 h]; Equipment Opreator [81.6 h]; Excavator-Poclain [40.8 h]; Dump Truck [40.8 h]; HDPE (315mm Diameter) - TSE - Depth: less than 1.5m [37.47 m] | 10,977.98 | C081 | Z1 | CONS | IRR | Bedding | bef |
| RHD4CZ1C081IRR1304 |  | Installing for HDPE Pipline 315 mm - (RD-C-8 /1)-Z1-C081-IRR | 5d | 2027-05-23 | 2027-05-27 | RHD4PRSHLDOSIRR1000, RHD4PRSHLSTAGIRR1000, RHD4CZ1C081IRR1204 | Unskilled Labor [108.8 h]; Plumber [54.45 h]; Equipment Opreator [54.45 h]; Boom Truck [54.45 h]; HDPE (315mm Diameter) - TSE - Depth: less than 1.5m [337.21 m] | 98,801.8 | C081 | Z1 | CONS | IRR | Installation | bef |
| RHD4CZ1C081IRR1404 |  | Primary Test for HDPE Pipline 315 mm - (RD-C-8 /1)-Z1-C081-IRR | 2d | 2027-05-29 | 2027-05-30 | RHD4CZ1C081IRR1304 | Unskilled Labor [16.34 h]; Plumber [16.34 h]; Equipment Opreator [16.34 h]; Water Truck [16.34 h]; HDPE (315mm Diameter) - TSE - Depth: less than 1.5m [149.87 m] | 43,911.91 | C081 | Z1 | CONS | IRR | Primary Test | bef |
| RHD4CZ1C081IRR1504 |  | Backfilling and warning tape works for HDPE Pipline 315 mm - (RD-C-8 /1)-Z1-C081-IRR | 4d | 2027-05-31 | 2027-06-03 | RHD4CZ1C081IRR1404 | Skilled labor [40.8 h]; Unskilled Labor [81.6 h]; Equipment Opreator [81.6 h]; Excavator-Poclain [40.8 h]; Dump Truck [40.8 h]; HDPE (315mm Diameter) - TSE - Depth: less than 1.5m [149.87 m] | 43,911.91 | C081 | Z1 | CONS | IRR | Backfilling | bef |
|  | 433 | **RHD4-02-002-C081-(IRR)-HDPE Pipes - 200 mm diameter** |  |  |  |  |  |  |  |  |  |  |  |  |
|  | 439 | **RHD4-02-002-C081-(IRR)-Gate Valves (Direct Buried)** |  | 2027-05-29 | 2027-06-01 |  |  |  |  |  |  |  |  |  |
| RHD4CZ1C081IRR3100 |  | Installation for Direct Buried Gate Valves - (RD-C-8 /1)-Z1-C081-IRR | 2d | 2027-05-29 | 2027-05-30 | RHD4PRSHLDOSIRR1100, RHD4PRSHLSTAGIRR1100, RHD4CZ1C081IRR1304 SS, RHD4CZ1C081IRR1304 FF, RHD4CZ1C081IRR1304, RHD4CZ1C081IRR1204, RHD4CZ1C081IRR1204 FF, RHD4CZ1C081IRR1104, RHD4CZ1C081IRR1104 FF | Unskilled Labor [5.45 h]; Plumber [5.45 h]; Gate valves dia 100 mm - TSE [0.9 nr] | 1,422 | C081 | Z1 | CONS | IRR | Installation | bef |
| RHD4CZ1C081IRR3200 |  | Stem and Service box for Direct Buried Gate Valves - (RD-C-8 /1)-Z1-C081-IRR | 2d | 2027-05-31 | 2027-06-01 | RHD4PRSHLDOSIRR1300, RHD4PRSHLSTAGIRR1300, RHD4CZ1C081IRR3100, RHD4CZ1C081IRR1204, RHD4CZ1C081IRR1104 | Unskilled Labor [5.45 h]; Plumber [5.45 h]; Gate valves dia 100 mm - TSE [0.1 nr] | 158 | C081 | Z1 | CONS | IRR | Stem and Service box | bef |

| ID | WBS | Activity | Duration | Start | Finish | Predecessors | Resources | Cost | RDH4-01-001-Road and Block Names-1 | RDH4-01-001-Zones-1 | RDH4-01-001-Phases-1 | RDH4-01-001-Networks-1 | RDH4-01-001-Work Method-1 | RDH4-01-001-MENEM |
| --- | --- | --- | --- | --- | --- | --- | --- | --- | --- | --- | --- | --- | --- | --- |
|  | 446 | **RHD4-02-002-C081-(IRR)-Concrete Encasement** |  |  |  |  |  |  |  |  |  |  |  |  |
|  | 464 | **RHD4-02-002-Z1-C081-Medium Voltage Network - MV** |  | 2027-06-24 | 2027-07-27 |  |  |  |  |  |  |  |  |  |
|  | 465 | **RHD4-02-002-C081-(MV)-Medium Voltage cable trench** |  | 2027-06-24 | 2027-07-19 |  |  |  |  |  |  |  |  |  |
| RHD4CZ1C081MV1100 |  | Excavation for Medium Voltage Trench - (RD-C-8 /1)-Z1-C081-MV | 6d | 2027-06-24 | 2027-06-30 | RHD4ENSDZ1APPMV150, RHD4CZ1C081RD3100, RHD4CZ1L101MV3300 | Skilled labor [56.74 h]; Unskilled Labor [113.6 h]; Equipment Opreator [170.33 h]; Excavator-Poclain [56.74 h]; Dump Truck [113.6 h]; Excavation for Trench size 60cm wide and 80cm deep ( for 2 cables) [365.04 m3] | 3,650.37 | C081 | Z1 | CONS | MV | Excavation | AFT |
| RHD4CZ1C081MV1200 |  | Trench Backfilling for Medium Voltage Network - (RD-C-8 /1)-Z1-C081-MV | 6d | 2027-07-13 | 2027-07-19 | RHD4CZ1C081MV3200 | Skilled labor [56.74 h]; Unskilled Labor [56.74 h]; Equipment Opreator [113.6 h]; Dump Truck [113.6 h]; Excavation for Trench size 60cm wide and 80cm deep ( for 2 cables) [156.44 m3] | 1,564.44 | C081 | Z1 | CONS | MV | Backfilling | AFT |
|  | 467 | **RHD4-02-002-C081-(MV)-Medium Voltage cables 3Cx 500 mm²** |  | 2027-07-01 | 2027-07-25 |  |  |  |  |  |  |  |  |  |
| RHD4CZ1C081MV3100 |  | Installation of Medium Voltage Cables 3Cx 500 mm² - (RD-C-8 /1)-Z1-C081-MV | 8d | 2027-07-01 | 2027-07-10 | RHD4PRSHLDOSMV1100, RHD4ENMSMV2000, RHD4ENMSMV2010, RHD4PRSHLSTAGMV1100, RHD4CZ1C081MV1100, RHD4CZ1C081MV1100 SS | Skilled labor [84.4 h]; Unskilled Labor [337.71 h]; Electrician [168.91 h]; Equipment Opreator [253.31 h]; Boom Truck [84.4 h]; Cable Laying Machine [168.91 h]; Cable 13.8 kV 3Cx 500 mm² Al/XLPE,/LLDPE / Unarmored [1046.67 m] | 166,419.86 | C081 | Z1 | CONS | MV | Installation | AFT |
| RHD4CZ1C081MV3200 |  | Joints Installation of Medium Voltage Cables 3Cx 500 mm² - (RD-C-8 /1)-Z1-C081-MV | 2d | 2027-07-11 | 2027-07-12 | RHD4PRSHLDOSMV1300, RHD4PRSHLSTAGMV1300, RHD4CZ1C081MV3100 | Skilled labor [10.89 h]; Unskilled Labor [43.56 h]; Electrician [21.78 h]; Equipment Opreator [10.89 h]; Boom Truck [10.89 h]; Straight joints cables for 13.8 kv 3Cx 500 mm², Al /XLPE/LLDPE [2 Unit] | 6,496 | C081 | Z1 | CONS | MV | Joints Installation | AFT |
| RHD4CZ1C081MV3300 |  | Testing of Medium Voltage Cables 3Cx 500 mm² - (RD-C-8 /1)-Z1-C081-MV | 3d | 2027-07-20 | 2027-07-22 | RHD4CZ1C081MV3200, RHD4CZ1C081MV1200, RHD4CZ1C081MV3100 | Skilled labor [25.37 h]; Unskilled Labor [101.28 h]; Electrician [50.64 h]; Cable 13.8 kV 3Cx 500 mm² Al/XLPE,/LLDPE / Unarmored [116.3 m] | 18,491.7 | C081 | Z1 | CONS | MV | Testing | AFT |
| RHD4CZ1C081MV3400 |  | Termination of Medium Voltage Cables 3Cx 500 mm² - (RD-C-8 /1)-Z1-C081-MV | 2d | 2027-07-24 | 2027-07-25 | RHD4CZ1C081MV3300 | Unskilled Labor [2.07 h]; Electrician [2.07 h]; Cable Termination for 13.8 kv 3Cx 500 mm², Al /XLPE/LLDPE [9.6 Unit] | 25,296 | C081 | Z1 | CONS | MV | Termination | AFT |
|  | 468 | **RHD4-02-002-C081-(MV)-Medium Voltage cables 3Cx 50 mm²** |  | 2027-07-26 | 2027-07-27 |  |  |  |  |  |  |  |  |  |
| RHD4CZ1C081MV3401 |  | Termination of Medium Voltage Cables 3Cx 50 mm² - (RD-C-8 /1)-Z1-C081-MV | 2d | 2027-07-26 | 2027-07-27 | RHD4CZ1C081MV3400 | Unskilled Labor [34.85 h]; Electrician [17.42 h]; Cable Termination for 13.8 kv 3Cx 500 mm², Al /XLPE/LLDPE [2.4 Unit] | 6,324 | C081 | Z1 | CONS | MV | Termination | AFT |
|  | 470 | **RHD4-02-002-C081-(MV)-Unit Substations** |  |  |  |  |  |  |  |  |  |  |  |  |
|  | 5388 | **RHD4-02-002-C081-(MV)-Normally open Point (Outdoor Type)** |  | 2027-07-20 | 2027-07-24 |  |  |  |  |  |  |  |  |  |
| RHD4CZ1C081MV4100 |  | Installation for Normally open Point - (RD-C-8 /1)-Z1-C081-MV | 2d | 2027-07-20 | 2027-07-21 | RHD4CZ1C081MV1200 | Unskilled Labor [0.11 h]; Equipment Opreator [0.22 h]; Excavator-Poclain [0.11 h]; Dump Truck [0.11 h]; Normally Open Point 13.8 KV Outdoor type [0.9 Unit] | 77,219.1 | C081 | Z1 | CONS | MV | Installation | AFT |
| RHD4CZ1C081MV4200 |  | Termination for Normally open Point - (RD-C-8 /1)-Z1-C081-MV | 2d | 2027-07-22 | 2027-07-24 | RHD4CZ1C081MV4100 | Unskilled Labor [3.59 h]; Equipment Opreator [7.3 h]; Excavator-Poclain [3.59 h]; Dump Truck [3.59 h]; Normally Open Point 13.8 KV Outdoor type [0.1 Unit] | 8,579.9 | C081 | Z1 | CONS | MV | Termination | AFT |
|  | 471 | **RHD4-02-002-Z1-C081-Low Voltage Network - LV** |  | 2027-06-05 | 2027-07-08 |  |  |  |  |  |  |  |  |  |
|  | 472 | **RHD4-02-002-C081-(LV)-Low Voltage duct banks** |  | 2027-06-05 | 2027-06-17 |  |  |  |  |  |  |  |  |  |
| RHD4CZ1C081LV2100 |  | Excavation of Duct Banks for Low Voltage Network - (RD-C-8 /1)-Z1-C081-LV | 3d | 2027-06-05 | 2027-06-07 | RHD4ENSDZ1APPLV160, RHD4CZ1C081IRR1504 | Skilled labor [28.21 h]; Unskilled Labor [28.21 h]; Equipment Opreator [56.3 h]; Excavator-Poclain [28.21 h]; Dump Truck [28.21 h]; Duct bank for LV cables UPVC (2xø110mm) [3.88 m] | 783.98 | C081 | Z1 | CONS | LV | Excavation | bef |
| RHD4CZ1C081LV2200 |  | Installation of Duct Banks for Low Voltage Network - (RD-C-8 /1)-Z1-C081-LV | 4d | 2027-06-08 | 2027-06-12 | RHD4PRSHLDOSLV1000, RHD4PRSHLSTAGLV1000, RHD4CZ1C081LV2100 | Carpenter [4.25 h]; Skilled labor [42.25 h]; Unskilled Labor [42.25 h]; Steel Fixer [4.25 h]; Duct bank for LV cables UPVC (2xø110mm) [3.88 m] | 783.98 | C081 | Z1 | CONS | LV | Installing | bef |
| RHD4CZ1C081LV2300 |  | Pouring of Duct Banks for Low Voltage Network - (RD-C-8 /1)-Z1-C081-LV | 3d | 2027-06-13 | 2027-06-15 | RHD4CZ1C081LV2200 | Skilled labor [28.21 h]; Unskilled Labor [28.21 h]; Equipment Opreator [11.2 h]; Concrete Mixer Truck [5.66 h]; Concrete Pump [5.66 h]; Duct bank for LV cables UPVC (2xø110mm) [25.23 m] | 5,095.88 | C081 | Z1 | CONS | LV | Pouring | bef |
| RHD4CZ1C081LV2400 |  | Backfilling of Duct Banks for Low Voltage Network - (RD-C-8 /1)-Z1-C081-LV | 2d | 2027-06-16 | 2027-06-17 | RHD4CZ1C081LV2300 | Skilled labor [21.13 h]; Unskilled Labor [21.13 h]; Equipment Opreator [8.49 h]; Excavator-Poclain [8.49 h]; Duct bank for LV cables UPVC (2xø110mm) [5.82 m] | 1,175.97 | C081 | Z1 | CONS | LV | Backfilling | bef |
|  | 473 | **RHD4-02-002-C081-(LV)-Low Voltage Drawpit** |  | 2027-06-16 | 2027-06-20 |  |  |  |  |  |  |  |  |  |
| RHD4CZ1C081LV5100 |  | Excavation of Drawpit size 900x900x1000mm for Low Voltage Network - (RD-C-8 /1)-Z1-C081-LV | 2d | 2027-06-16 | 2027-06-17 | RHD4ENSDZ1APPLV160, RHD4CZ1C081LV2300 | Skilled labor [1.85 h]; Unskilled Labor [1.85 h]; Equipment Opreator [1.42 h]; Excavator-Poclain [0.8 h]; Dump Truck [0.8 h]; Drawpit with medium duty steel cover, size900x900x1000mm, [0.3 Unit] | 1,103.1 | C081 | Z1 | CONS | LV | Excavation | AFT |
| RHD4CZ1C081LV5200 |  | Installation of Drawpit size 900x900x1000mm for Low Voltage Network - (RD-C-8 /1)-Z1-C081-LV | 2d | 2027-06-19 | 2027-06-20 | RHD4PRSHLDOSLV1400, RHD4PRSHLSTAGLV1400, RHD4CZ1C081LV5100 | Skilled labor [1.85 h]; Unskilled Labor [1.85 h]; Equipment Opreator [0.8 h]; Boom Truck [0.8 h]; Drawpit with medium duty steel cover, size900x900x1000mm, [1.7 Unit] | 6,250.9 | C081 | Z1 | CONS | LV | Installation | AFT |

| ID | WBS | Activity | Duration | Start | Finish | Predecessors | Resources | Cost | RDH4-01-001-Road and Block Names-1 | RDH4-01-001-Zones-1 | RDH4-01-001-Phases-1 | RDH4-01-001-Networks-1 | RDH4-01-001-Work Method-1 | RDH4-01-001-MENEM |
| --- | --- | --- | --- | --- | --- | --- | --- | --- | --- | --- | --- | --- | --- | --- |
|  | 474 | **RHD4-02-002-C081-(LV)-Low Voltage cables** |  | 2027-06-21 | 2027-07-08 |  |  |  |  |  |  |  |  |  |
| RHD4CZ1C081LV3100 |  | Excavation for Low Voltage Cables for Low Voltage Network - (RD-C-8 /1)-Z1-C081-LV | 5d | 2027-06-21 | 2027-06-26 | RHD4ENSDZ1APPLV160, RHD4CZ1C081LV2400, RHD4CZ1C081PT1502, RHD4CZ1C081IRR1504, RHD4CZ1C081SW2500, RHD4CZ1C081SW3300, RHD4CZ1C081SW3300 SS, RHD4CZ1C081SW3200 SS, RHD4CZ1C081SW3100 SS, RHD4CZ1C081SW3100, RHD4CZ1C081PT1102, RHD4CZ1C081IRR1404, RHD4CZ1C081IRR1304, RHD4CZ1C081IRR1204, RHD4CZ1C081IRR1104, RHD4CZ1C081LV5200 | Skilled labor [44.65 h]; Unskilled Labor [89.3 h]; Equipment Opreator [89.3 h]; Excavator-Poclain [44.65 h]; Boom Truck [44.65 h]; Cable, Copper 4x50mm2/ CU/XLPE/PVC +1x25mm2 CU/PVC [49.07 m]; Cable, Copper 3x10mm2/ CU/XLPE/SWA/PVC [155.89 m] | 12,115.74 | C081 | Z1 | CONS | LV | Excavation | AFT |
| RHD4CZ1C081LV3200 |  | Cable Laying of Low Voltage Cables for Low Voltage Network - (RD-C-8 /1)-Z1-C081-LV | 4d | 2027-06-27 | 2027-06-30 | RHD4PRSHLDOSLV1100, RHD4ENMSLV2000, RHD4ENMSLV2010, RHD4PRSHLSTAGLV1100, RHD4CZ1C081LV3100 | Skilled labor [37.24 h]; Unskilled Labor [148.8 h]; Electrician [74.4 h]; Equipment Opreator [111.63 h]; Boom Truck [37.24 h]; Cable Laying Machine [74.4 h]; Cable, Copper 4x50mm2/ CU/XLPE/PVC +1x25mm2 CU/PVC [147.22 m]; Cable, Copper 3x10mm2/ CU/XLPE/SWA/PVC [467.66 m] | 36,347.21 | C081 | Z1 | CONS | LV | Cable Laying | AFT |
| RHD4CZ1C081LV3300 |  | Warning tape and Backfill for Low Voltage Cables for Low Voltage Network - (RD-C-8 /1)-Z1-C081-LV | 4d | 2027-07-01 | 2027-07-05 | RHD4CZ1C081LV3200 | Skilled labor [37.24 h]; Unskilled Labor [148.8 h]; Electrician [74.4 h]; Equipment Opreator [37.24 h]; Boom Truck [37.24 h]; Cable, Copper 4x50mm2/ CU/XLPE/PVC +1x25mm2 CU/PVC [36.81 m]; Cable, Copper 3x10mm2/ CU/XLPE/SWA/PVC [116.91 m] | 9,086.8 | C081 | Z1 | CONS | LV | Warning tape and Backfill | AFT |
| RHD4CZ1C081LV3400 |  | Testing of Low Voltage Cables for Low Voltage Network - (RD-C-8 /1)-Z1-C081-LV | 3d | 2027-07-06 | 2027-07-08 | RHD4CZ1C081LV3300 | Skilled labor [22.33 h]; Unskilled Labor [89.3 h]; Electrician [44.65 h]; Equipment Opreator [22.33 h]; Boom Truck [22.33 h]; Cable, Copper 4x50mm2/ CU/XLPE/PVC +1x25mm2 CU/PVC [12.27 m]; Cable, Copper 3x10mm2/ CU/XLPE/SWA/PVC [38.97 m] | 3,028.93 | C081 | Z1 | CONS | LV | Testing | AFT |
|  | 475 | **RHD4-02-002-C081-(LV)-Low Voltage Distribution Pillars** |  |  |  |  |  |  |  |  |  |  |  |  |
|  | 476 | **RHD4-02-002-C081-(LV)-Low Voltage Distribution Pillars Earthing** |  |  |  |  |  |  |  |  |  |  |  |  |
|  | 477 | **RHD4-02-002-Z1-C081-Street Lighting Network - SL** |  | 2027-06-21 | 2027-09-05 |  |  |  |  |  |  |  |  |  |
|  | 478 | **RHD4-02-002-C081-(SL)-Street Lighting duct banks** |  | 2027-06-21 | 2027-07-10 |  |  |  |  |  |  |  |  |  |
| RHD4CZ1C081SL2100 |  | Excavation of Duct Banks for Street Lighting Network - (RD-C-8 /1)-Z1-C081-SL | 4d | 2027-06-21 | 2027-06-24 | RHD4ENSDZ1APPSL170, RHD4CZ1C081LV5200, RHD4CZ1C081LV2100, RHD4CZ1C081IRR1504 | Skilled labor [38.77 h]; Unskilled Labor [38.77 h]; Equipment Opreator [77.54 h]; Excavator-Poclain [38.77 h]; Dump Truck [38.77 h]; Road Crossing Duct for Street Lighting cables UPVC (2x?110mm) [4.36 m]; Road Crossing Duct for Street Lighting cables UPVC (4x?110mm) [0.98 m] | 1,140.05 | C081 | Z1 | CONS | SL | Excavation | bef |
| RHD4CZ1C081SL2200 |  | Installation of Duct Banks for Street Lighting Network - (RD-C-8 /1)-Z1-C081-SL | 6d | 2027-06-26 | 2027-07-01 | RHD4PRSHLDOSSL1000, RHD4PRSHLSTAGSL1000, RHD4CZ1C081SL2100, RHD4CZ1C081LV2200 | Carpenter [5.77 h]; Skilled labor [58.15 h]; Unskilled Labor [58.15 h]; Steel Fixer [5.77 h]; Road Crossing Duct for Street Lighting cables UPVC (2x?110mm) [4.36 m]; Road Crossing Duct for Street Lighting cables UPVC (4x?110mm) [0.98 m] | 1,140.05 | C081 | Z1 | CONS | SL | Installing | bef |
| RHD4CZ1C081SL2300 |  | Pouring of Duct Banks for Street Lighting Network - (RD-C-8 /1)-Z1-C081-SL | 4d | 2027-07-03 | 2027-07-06 | RHD4CZ1C081SL2200, RHD4CZ1C081LV2300 | Skilled labor [38.77 h]; Unskilled Labor [38.77 h]; Equipment Opreator [15.46 h]; Concrete Mixer Truck [7.73 h]; Concrete Pump [7.73 h]; Road Crossing Duct for Street Lighting cables UPVC (2x?110mm) [28.37 m]; Road Crossing Duct for Street Lighting cables UPVC (4x?110mm) [6.36 m] | 7,410.29 | C081 | Z1 | CONS | SL | Pouring | bef |
| RHD4CZ1C081SL2400 |  | Backfilling of Duct Banks for Street Lighting Network - (RD-C-8 /1)-Z1-C081-SL | 3d | 2027-07-07 | 2027-07-10 | RHD4CZ1C081SL2300 | Skilled labor [29.08 h]; Unskilled Labor [29.08 h]; Equipment Opreator [11.65 h]; Excavator-Poclain [11.65 h]; Road Crossing Duct for Street Lighting cables UPVC (2x?110mm) [6.55 m]; Road Crossing Duct for Street Lighting cables UPVC (4x?110mm) [1.47 m] | 1,710.07 | C081 | Z1 | CONS | SL | Backfilling | bef |
|  | 479 | **RHD4-02-002-C081-(SL)-Street Lighting Drawpit** |  | 2027-07-15 | 2027-07-19 |  |  |  |  |  |  |  |  |  |
| RHD4CZ1C081SL5100 |  | Excavation of Drawpit size 600x600x900mm for Street Lighting Network - (RD-C-8 /1)-Z1-C081-SL | 2d | 2027-07-15 | 2027-07-17 | RHD4ENSDZ1APPSL170, RHD4CZ1C081SL2300, RHD4CZ1C081SL1100 | Skilled labor [3.59 h]; Unskilled Labor [3.59 h]; Equipment Opreator [2.94 h]; Excavator-Poclain [1.42 h]; Dump Truck [1.42 h]; Drawpit with medium duty steel cover, size600x600x900mm, [0.6 Unit] | 1,470.6 | C081 | Z1 | CONS | SL | Excavation | AFT |
| RHD4CZ1C081SL5200 |  | Installation of Drawpit size 600x600x900mm for Street Lighting Network - (RD-C-8 /1)-Z1-C081-SL | 2d | 2027-07-18 | 2027-07-19 | RHD4PRSHLDOSSL1400, RHD4PRSHLSTAGSL1400, RHD4CZ1C081SL5100 | Skilled labor [3.59 h]; Unskilled Labor [3.59 h]; Equipment Opreator [1.42 h]; Boom Truck [1.42 h]; Drawpit with medium duty steel cover, size600x600x900mm, [3.4 Unit] | 8,333.4 | C081 | Z1 | CONS | SL | Installation | AFT |
|  | 480 | **RHD4-02-002-C081-(SL)-Street Lighting cables** |  | 2027-07-25 | 2027-08-23 |  |  |  |  |  |  |  |  |  |
| RHD4CZ1C081SL3100 |  | Excavation for Street Lighting Cables for Street Lighting Network - (RD-C-8 /1)-Z1-C081-SL | 8d | 2027-07-25 | 2027-08-02 | RHD4ENSDZ1APPSL170, RHD4CZ1C081SL1300 | Skilled labor [81.02 h]; Unskilled Labor [162.16 h]; Equipment Opreator [162.16 h]; Excavator-Poclain [81.02 h]; Boom Truck [81.02 h]; Cable, Copper 4x10mm2/ CU/XLPE/SWA/PVC + 1x10mm2 CU/PVC [372.16 m] | 18,235.65 | C081 | Z1 | CONS | SL | Excavation | AFT |
| RHD4CZ1C081SL3200 |  | Cable Laying of Street Lighting Cables for Street Lighting Network - (RD-C-8 /1)-Z1-C081-SL | 7d | 2027-08-03 | 2027-08-10 | RHD4PRSHLDOSSL1100, RHD4ENMSSL2000, RHD4ENMSSL2010, RHD4PRSHLSTAGSL1100, RHD4CZ1C081SL3100 | Skilled labor [67.52 h]; Unskilled Labor [270.19 h]; Electrician [135.15 h]; Equipment Opreator [202.67 h]; Boom Truck [67.52 h]; Cable Laying Machine [135.15 h]; Cable, Copper 4x10mm2/ CU/XLPE/SWA/PVC + 1x10mm2 CU/PVC [1116.47 m] | 54,706.96 | C081 | Z1 | CONS | SL | Cable Laying | AFT |
| RHD4CZ1C081SL3300 |  | Warning tape and Backfill for Street Lighting Cables for Street Lighting Network - (RD-C-8 /1)-Z1-C081-SL | 7d | 2027-08-11 | 2027-08-18 | RHD4CZ1C081SL3200 | Skilled labor [67.52 h]; Unskilled Labor [270.19 h]; Electrician [135.15 h]; Equipment Opreator [67.52 h]; Boom Truck [67.52 h]; Cable, Copper 4x10mm2/ CU/XLPE/SWA/PVC + 1x10mm2 CU/PVC [279.12 m] | 13,676.74 | C081 | Z1 | CONS | SL | Warning tape and Backfill | AFT |
| RHD4CZ1C081SL3400 |  | Testing of Street Lighting Cables for Street Lighting Network - (RD-C-8 /1)-Z1-C081-SL | 4d | 2027-08-19 | 2027-08-23 | RHD4CZ7L131SW1501, RHD4CZ1C081SL3300, RHD4CZ1C081LV3400 | Skilled labor [40.51 h]; Unskilled Labor [162.16 h]; Electrician [81.02 h]; Equipment Opreator [40.51 h]; Boom Truck [40.51 h]; Cable, Copper 4x10mm2/ CU/XLPE/SWA/PVC + 1x10mm2 CU/PVC [93.04 m] | 4,558.91 | C081 | Z1 | CONS | SL | Testing | AFT |
|  | 481 | **RHD4-02-002-C081-(SL)-Street Lighting Poles** |  | 2027-07-11 | 2027-09-05 |  |  |  |  |  |  |  |  |  |
| RHD4CZ1C081SL1100 |  | Excavation for RC Base for Lighting Poles for Street Lighting Network - (RD-C-8 /1)-Z1-C081-SL | 4d | 2027-07-11 | 2027-07-14 | RHD4ENSDZ1APPSL170, RHD4CZ1C081SL2400, RHD4CZ1C081PT1502, RHD4CZ1C081IRR1504, RHD4CZ1C081SW2500, RHD4CZ1C081SW3300, RHD4CZ1C081SW3300 SS, RHD4CZ1C081SW3200 SS, RHD4CZ1C081SW3100 SS, RHD4CZ1C081SW3100, RHD4CZ1C081PT1102, RHD4CZ1C081IRR1404, RHD4CZ1C081IRR1304, RHD4CZ1C081IRR1204, RHD4CZ1C081IRR1104 | Skilled labor [33.43 h]; Unskilled Labor [33.43 h]; Equipment Opreator [66.76 h]; Excavator-Poclain [33.43 h]; Dump Truck [33.43 h]; Lighting polesdouble arms, height of ( 12 ) meters [4.2 Unit]; Lighting poles single arms, height of ( 10 ) meters [0.4 Unit] | 20,565.2 | C081 | Z1 | CONS | SL | Excavation | AFT |
| RHD4CZ1C081SL1200 |  | Installation for RC Base for Lighting Poles for Street Lighting Network - (RD-C-8 /1)-Z1-C081-SL | 4d | 2027-07-15 | 2027-07-19 | RHD4CZ1C081SL1100 | Skilled labor [33.43 h]; Unskilled Labor [33.43 h]; Equipment Opreator [66.76 h]; Excavator-Poclain [33.43 h]; Dump Truck [33.43 h]; Lighting polesdouble arms, height of ( 12 ) meters [10.5 Unit]; Lighting poles single arms, height of ( 10 ) meters [1 Unit] | 51,413 | C081 | Z1 | CONS | SL | RC Base | AFT |
| RHD4CZ1C081SL1300 |  | Backfill for RC Base for Lighting Poles for Street Lighting Network - (RD-C-8 /1)-Z1-C081-SL | 4d | 2027-07-20 | 2027-07-24 | RHD4CZ1C081SL1200, RHD4CZ1C081SL5200 | Skilled labor [33.43 h]; Unskilled Labor [33.43 h]; Equipment Opreator [66.76 h]; Excavator-Poclain [33.43 h]; Dump Truck [33.43 h]; Lighting polesdouble arms, height of ( 12 ) meters [2.1 Unit]; Lighting poles single arms, height of ( 10 ) meters [0.2 Unit] | 10,282.6 | C081 | Z1 | CONS | SL | Backfill | AFT |
| RHD4CZ1C081SL1400 |  | Installation for Lighting Poles for Street Lighting Network - (RD-C-8 /1)-Z1-C081-SL | 5d | 2027-08-24 | 2027-08-29 | RHD4PRSHLDOSSL1200, RHD4ENMSSL2000, RHD4ENMSSL2010, RHD4PRSHLSTAGSL1200, RHD4CZ1C081SL1300, RHD4CZ1C081SL3400 | Skilled labor [50.1 h]; Unskilled Labor [50.1 h]; Electrician [50.1 h]; Equipment Opreator [50.1 h]; Boom Truck [50.1 h]; Lighting polesdouble arms, height of ( 12 ) meters [25.2 Unit]; Lighting poles single arms, height of ( 10 ) meters [2.4 Unit] | 123,391.2 | C081 | Z1 | CONS | SL | Poles Installation | AFT |
| RHD4CZ1C081SL1500 |  | Luminaire Installation for Lighting Poles for Street Lighting Network - (RD-C-8 /1)-Z1-C081-SL | 6d | 2027-08-30 | 2027-09-05 | RHD4PRSHLDOSSL1300, RHD4PRSHLSTAGSL1300, RHD4CZ1C081SL1400 | Unskilled Labor [127.74 h]; Electrician [63.93 h]; Equipment Opreator [24.94 h]; Boom Truck [25.6 h]; Street Lighting( LED) Luminaire of Output ?18553 lumen [84 Unit]; Street Lighting( LED) Luminaire of Output ?10898 lumen [4 Unit] | 55,860 | C081 | Z1 | CONS | SL | Luminaire Installation | AFT |

| ID | WBS | Activity | Duration | Start | Finish | Predecessors | Resources | Cost | RDH4-01-001-Road and Block Names-1 | RDH4-01-001-Zones-1 | RDH4-01-001-Phases-1 | RDH4-01-001-Networks-1 | RDH4-01-001-Work Method-1 | RDH4-01-001-MENEM |
| --- | --- | --- | --- | --- | --- | --- | --- | --- | --- | --- | --- | --- | --- | --- |
|  | 482 | **RHD4-02-002-C081-(SL)-Street Lighting Feeder Pillars** |  | 2027-08-19 | 2027-08-31 |  |  |  |  |  |  |  |  |  |
| RHD4CZ1C081SL4100 |  | Leveling for Distribution Pillars for Street Lighting Network - (RD-C-8 /1)-Z1-C081-SL | 2d | 2027-08-19 | 2027-08-21 | RHD4CZ1C081SL3300 | Skilled labor [21.78 h]; Unskilled Labor [43.56 h]; Equipment Opreator [8.71 h]; Excavator-Poclain [4.36 h]; Boom Truck [4.36 h]; 0.6/1 KV Steet Lighting Feeder Pillar [0.3 Unit] | 6,876.3 | C081 | Z1 | CONS | SL | Leveling | AFT |
| RHD4CZ1C081SL4200 |  | Lean Concrete for Distribution Pillars for Street Lighting Network - (RD-C-8 /1)-Z1-C081-SL | 2d | 2027-08-22 | 2027-08-23 | RHD4CZ1C081SL4100 | Skilled labor [21.78 h]; Unskilled Labor [43.56 h]; Equipment Opreator [8.71 h]; Concrete Mixer Truck [4.36 h]; Concrete Pump [4.36 h]; 0.6/1 KV Steet Lighting Feeder Pillar [0.5 Unit] | 11,460.5 | C081 | Z1 | CONS | SL | Lean Concrete | AFT |
| RHD4CZ1C081SL4300 |  | Installation of Distribution Pillars for Street Lighting Network - (RD-C-8 /1)-Z1-C081-SL | 2d | 2027-08-30 | 2027-08-31 | RHD4CZ1C081SL4200, RHD4CZ1C081SL1400 | Skilled labor [21.78 h]; Unskilled Labor [87.12 h]; Electrician [43.56 h]; Equipment Opreator [21.78 h]; Boom Truck [21.78 h]; 0.6/1 KV Steet Lighting Feeder Pillar [1.2 Unit] | 27,505.2 | C081 | Z1 | CONS | SL | Installation | AFT |
|  | 483 | **RHD4-02-002-C081-(SL)-Street Lighting Earthing System** |  | 2027-09-01 | 2027-09-02 |  |  |  |  |  |  |  |  |  |
| RHD4CZ1C081SL6100 |  | Installation of Earthing for Lighting Poles and Fedder Pillers for Street Lighting Network - (RD-C-8 /1)-Z1-C081-SL | 2d | 2027-09-01 | 2027-09-02 | RHD4ENMSER2000, RHD4ENMSER2010, RHD4CZ1C081SL4300, RHD4CZ1C081MV3401 | Skilled labor [2.18 h]; Unskilled Labor [2.18 h]; Equipment Opreator [4.36 h]; Excavator-Poclain [2.18 h]; Dump Truck [2.18 h]; Street Lighting Feeder pillars - ER [1 Unit]; Including lighting poles circuits - ER [2 Unit] | 2,354 | C081 | Z1 | CONS | SL | Installation | AFT |
|  | 489 | **RHD4-02-002-Z1-C081-Telecommunications Network - TC** |  | 2027-02-10 | 2027-10-13 |  |  |  |  |  |  |  |  |  |
|  | 490 | **RHD4-02-002-C081-(TC)-Telecommunications Ducts** |  | 2027-09-04 | 2027-10-13 |  |  |  |  |  |  |  |  |  |
| RHD4CZ1C081TC2100 |  | Excavation of HDPE Ducts for Telecom Network - (RD-C-8 /1)-Z1-C081-TC | 10d | 2027-09-04 | 2027-09-14 | RHD4ENSDZ1APPTC190, RHD4CZ1C081SL3300, RHD4CZ1C081SL2400, RHD4CZ1C081SL2300, RHD4CZ1C081SL2200, RHD4CZ1C081SL2100, RHD4CZ1C081LV3300, RHD4CZ1C081SL6100 | Skilled labor [100 h]; Unskilled Labor [100 h]; Equipment Opreator [199.95 h]; Excavator-Poclain [100 h]; Dump Truck [100 h]; (6*50mm) HDPE ducts -TC [213.2 m]; (6*50mm+2*32mm) HDPE ducts -TC [31 m]; (6*50mm+4*32mm) HDPE ducts -TC [19.2 m]; (2*32mm) HDPE ducts -TC [12.02 m] | 24,834.08 | C081 | Z1 | CONS | TC | Excavation | AFT |
| RHD4CZ1C081TC2200 |  | Installation of HDPE Ducts for Telecom Network - (RD-C-8 /1)-Z1-C081-TC | 14d | 2027-09-15 | 2027-10-02 | RHD4PRSHLDOSTC1000, RHD4PRSHLSTAGTC1000, RHD4CZ1C081TC2100 | Carpenter [15.03 h]; Skilled labor [149.96 h]; Unskilled Labor [149.96 h]; Steel Fixer [15.03 h]; (6*50mm) HDPE ducts -TC [692.9 m]; (6*50mm+2*32mm) HDPE ducts -TC [100.75 m]; (6*50mm+4*32mm) HDPE ducts -TC [62.4 m]; (2*32mm) HDPE ducts -TC [39.06 m] | 80,710.76 | C081 | Z1 | CONS | TC | Installing | AFT |
| RHD4CZ1C081TC2400 |  | Backfilling of HDPE Ducts for Telecom Network - (RD-C-8 /1)-Z1-C081-TC | 10d | 2027-10-03 | 2027-10-13 | RHD4CZ1C081TC2200, RHD4CZ1C081TC5200 | Skilled labor [100 h]; Unskilled Labor [100 h]; Equipment Opreator [40 h]; Excavator-Poclain [40 h]; (6*50mm) HDPE ducts -TC [159.9 m]; (6*50mm+2*32mm) HDPE ducts -TC [23.25 m]; (6*50mm+4*32mm) HDPE ducts -TC [14.4 m]; (2*32mm) HDPE ducts -TC [9.02 m] | 18,625.56 | C081 | Z1 | CONS | TC | Backfilling | AFT |
|  | 491 | **RHD4-02-002-C081-(TC)-Telecommunications Manholes** |  | 2027-09-15 | 2027-09-25 |  |  |  |  |  |  |  |  |  |
| RHD4CZ1C081TC5100 |  | Excavation for Manholes for Telecom Network - (RD-C-8 /1)-Z1-C081-TC | 4d | 2027-09-15 | 2027-09-19 | RHD4ENSDZ1APPTC190, RHD4CZ1C081TC2100, RHD4CZ1C081TC2100 FF | Skilled labor [13.6 h]; Unskilled Labor [13.6 h]; Equipment Opreator [10.89 h]; Excavator-Poclain [5.45 h]; Dump Truck [5.45 h]; Manhole Type 1 - TC [0.9 nr]; Manhole Type 2 - TC [0.3 nr] | 8,089.2 | C081 | Z1 | CONS | TC | Excavation | AFT |
| RHD4CZ1C081TC5200 |  | Installation of Manholes for Telecom Network - (RD-C-8 /1)-Z1-C081-TC | 4d | 2027-09-20 | 2027-09-25 | RHD4PRSHLDOSTC1200, RHD4PRSHLSTAGTC1200, RHD4CZ1C081TC5100, RHD4CZ1C081TC2200 SS | Skilled labor [13.6 h]; Unskilled Labor [13.6 h]; Equipment Opreator [5.45 h]; Boom Truck [5.45 h]; Manhole Type 1 - TC [5.1 nr]; Manhole Type 2 - TC [1.7 nr] | 45,838.8 | C081 | Z1 | CONS | TC | Installation | AFT |
|  | 5411 | **RHD4-02-002-C081-(TC)-Telecomminications Road Crossings** |  | 2027-02-10 | 2027-02-18 |  |  |  |  |  |  |  |  |  |
| RHD4CZ1C081TC3100 |  | Excavation for Road Crossings for Telecom Network - (RD-C-8 /1)-Z1-C081-TC | 2d | 2027-02-10 | 2027-02-11 | RHD4CZ1C081RW2000, RHD4CZ1C081ST1504 | Skilled labor [9.36 h]; Unskilled Labor [9.36 h]; Equipment Opreator [18.72 h]; Excavator-Poclain [9.36 h]; Dump Truck [9.36 h]; Road crossing ducts, (6*50mm) HDPE -TC [1.7 m] | 64.6 | C062 | Z6 | CONS | TC | Excavation | bef |
| RHD4CZ1C081TC3200 |  | Installation of Road Crossings for Telecom Network - (RD-C-8 /1)-Z1-C081-TC | 2.01d | 2027-02-13 | 2027-02-15 | RHD4CZ1C081TC3100 | Carpenter [1.2 h]; Skilled labor [12.56 h]; Unskilled Labor [12.56 h]; Steel Fixer [1.2 h]; Road crossing ducts, (6*50mm) HDPE -TC [1.7 m] | 64.6 | C062 | Z6 | CONS | TC | Installing | bef |
| RHD4CZ1C081TC3300 |  | Pouring of Road Crossings for Telecom Network - (RD-C-8 /1)-Z1-C081-TC | 2.01d | 2027-02-15 | 2027-02-17 | RHD4CZ1C081TC3200 | Skilled labor [12.56 h]; Unskilled Labor [12.56 h]; Equipment Opreator [5.04 h]; Concrete Mixer Truck [2.48 h]; Concrete Pump [2.48 h]; Road crossing ducts, (6*50mm) HDPE -TC [11.05 m] | 419.9 | C062 | Z6 | CONS | TC | Pouring | bef |
| RHD4CZ1C081TC3400 |  | Backfilling of Road Crossings for Telecom Network - (RD-C-8 /1)-Z1-C081-TC | 2d | 2027-02-17 | 2027-02-18 | RHD4CZ1C081TC3300 | Skilled labor [9.36 h]; Unskilled Labor [9.36 h]; Equipment Opreator [3.68 h]; Excavator-Poclain [3.68 h]; Road crossing ducts, (6*50mm) HDPE -TC [2.55 m] | 96.9 | C062 | Z6 | CONS | TC | Backfilling | bef |
|  | 493 | **RHD4-02-002-Z1-C081-Information and Communication Technologies - ICT** |  | 2027-08-19 | 2027-10-06 |  |  |  |  |  |  |  |  |  |
|  | 494 | **RHD4-02-002-C081-(ICT)-Information and Communication Technologies Ducts** |  | 2027-08-19 | 2027-10-06 |  |  |  |  |  |  |  |  |  |
| RHD4CZ1C081ICT2100 |  | Excavation of HDPE Ducts for ICT Network - (RD-C-8 /1)-Z1-C081-ICT | 10d | 2027-08-19 | 2027-08-30 | RHD4ENSDZ1APPICT200, RHD4CZ1C081SL3300, RHD4CZ1C081SL2400, RHD4CZ1C081SL2300, RHD4CZ1C081SL2200, RHD4CZ1C081SL2100, RHD4CZ1C081LV3300 | Skilled labor [103.24 h]; Unskilled Labor [103.24 h]; Equipment Opreator [206.59 h]; Excavator-Poclain [103.24 h]; Dump Truck [103.24 h]; (2*50mm) HDPE ducts -ICT [182.83 m]; (2*50mm+2*32mm) HDPE ducts -ICT [65.6 m]; (2*50mm+4*32mm) HDPE ducts -ICT [22.13 m]; (2*32mm) HDPE ducts -ICT [13.98 m] | 14,049.23 | C081 | Z1 | CONS | ICT | Excavation | AFT |
| RHD4CZ1C081ICT2200 |  | Installation of HDPE Ducts for ICT Network - (RD-C-8 /1)-Z1-C081-ICT | 15d | 2027-08-31 | 2027-09-16 | RHD4PRSHLDOSICT1000, RHD4PRSHLSTAGICT1000, RHD4CZ1C081ICT2100 | Carpenter [15.46 h]; Skilled labor [154.97 h]; Unskilled Labor [154.97 h]; Steel Fixer [15.46 h]; (2*50mm) HDPE ducts -ICT [594.18 m]; (2*50mm+2*32mm) HDPE ducts -ICT [213.2 m]; (2*50mm+4*32mm) HDPE ducts -ICT [71.93 m]; (2*32mm) HDPE ducts -ICT [45.44 m] | 45,660 | C081 | Z1 | CONS | ICT | Installing | AFT |
| RHD4CZ1C081ICT2400 |  | Backfilling of HDPE Ducts for ICT Network - (RD-C-8 /1)-Z1-C081-ICT | 10d | 2027-09-26 | 2027-10-06 | RHD4CZ1C081ICT2200, RHD4CZ1C081ICT5200 | Skilled labor [103.24 h]; Unskilled Labor [103.24 h]; Equipment Opreator [41.27 h]; Excavator-Poclain [41.27 h]; (2*50mm) HDPE ducts -ICT [137.12 m]; (2*50mm+2*32mm) HDPE ducts -ICT [49.2 m]; (2*50mm+4*32mm) HDPE ducts -ICT [16.6 m]; (2*32mm) HDPE ducts -ICT [10.48 m] | 10,537.01 | C081 | Z1 | CONS | ICT | Backfilling | AFT |

| ID | WBS | Activity | Duration | Start | Finish | Predecessors | Resources | Cost | RDH4-01-001-Road and Block Names-1 | RDH4-01-001-Zones-1 | RDH4-01-001-Phases-1 | RDH4-01-001-Networks-1 | RDH4-01-001-Work Method-1 | RDH4-01-001-MENEM |
| --- | --- | --- | --- | --- | --- | --- | --- | --- | --- | --- | --- | --- | --- | --- |
|  | 495 | **RHD4-02-002-C081-(ICT)-Information and Communication Technologies Manholes** |  | 2027-09-15 | 2027-09-25 |  |  |  |  |  |  |  |  |  |
| RHD4CZ1C081ICT5100 |  | Excavation for Manholes for ICT Network - (RD-C-8 /1)-Z1-C081-ICT | 4d | 2027-09-15 | 2027-09-19 | RHD4ENSDZ1APPICT200, RHD4CZ1C081ICT2100, RHD4CZ1C081TC2100 | Skilled labor [13.6 h]; Unskilled Labor [13.6 h]; Equipment Opreator [10.89 h]; Excavator-Poclain [5.45 h]; Dump Truck [5.45 h]; Manhole Type 1 - ICT [0.9 nr]; Manhole Type 2 - ICT [0.3 nr] | 6,471.6 | C081 | Z1 | CONS | ICT | Excavation | AFT |
| RHD4CZ1C081ICT5200 |  | Installation of Manholes for ICT Network - (RD-C-8 /1)-Z1-C081-ICT | 4d | 2027-09-20 | 2027-09-25 | RHD4PRSHLDOSICT1200, RHD4PRSHLSTAGICT1200, RHD4CZ1C081ICT5100 | Skilled labor [13.6 h]; Unskilled Labor [13.6 h]; Equipment Opreator [5.45 h]; Boom Truck [5.45 h]; Manhole Type 1 - ICT [5.1 nr]; Manhole Type 2 - ICT [1.7 nr] | 36,672.4 | C081 | Z1 | CONS | ICT | Installation | AFT |
|  | 484 | **RHD4-02-002-Z1-C081-Landscape Network - LS** |  |  |  |  |  |  |  |  |  |  |  |  |
|  | 485 | **RHD4-02-002-C081-(LS)-Landscape Lighting cables** |  |  |  |  |  |  |  |  |  |  |  |  |
|  | 486 | **RHD4-02-002-C081-(LS)-Landscape Feeder Pillars** |  |  |  |  |  |  |  |  |  |  |  |  |
|  | 487 | **RHD4-02-002-C081-(LS)-Landscape Bollard Poles** |  |  |  |  |  |  |  |  |  |  |  |  |
|  | 488 | **RHD4-02-002-C081-(LS)-Landscape Feeder Pillars Earthing** |  |  |  |  |  |  |  |  |  |  |  |  |
|  | 497 | **RHD4-02-002-Z1-C081-Security Network - CCTV** |  | 2027-10-14 | 2027-11-28 |  |  |  |  |  |  |  |  |  |
|  | 498 | **RHD4-02-002-C081-(CCTV)-Civil Works** |  | 2027-10-14 | 2027-10-25 |  |  |  |  |  |  |  |  |  |
| RHD4CZ1C081CCTV2100 |  | Civil Works for Security Network - (RD-C-8 /1)-Z1-C081-CCTV | 10d | 2027-10-14 | 2027-10-25 | RHD4CZ1C081ICT2400, RHD4CZ1C081TC2400, RHD4CZ1C081MV4200, RHD4CZ1C081MV3401 | Skilled labor [435.68 h]; Unskilled Labor [871.2 h]; Equipment Opreator [435.68 h]; Excavator-Poclain [108.9 h]; Dump Truck [108.9 h]; Civil works Digging, trenching, laying pipes Meter with supply and installation of Manholes and for power feeding sources related to all towers and poles – (from 35-meter pole to control room and from related UPS camersa distribution boards till overall 2 [300 m] | 34,800 | C081 | Z1 | CONS | CCTV | Civil Works | AFT |
|  | 499 | **RHD4-02-002-C081-(CCTV)-CCTV Poles** |  | 2027-10-26 | 2027-11-06 |  |  |  |  |  |  |  |  |  |
| RHD4CZ1C081CCTV1100 |  | Excavation for RC Base for CCTV Poles for Security Network - (RD-C-8 /1)-Z1-C081-CCTV | 2d | 2027-10-26 | 2027-10-27 | RHD4ENSDZ1APPCCTV210, RHD4CZ1C081CCTV2100 | Skilled labor [4.32 h]; Unskilled Labor [4.32 h]; Equipment Opreator [8.64 h]; Excavator-Poclain [2.18 h]; Dump Truck [2.18 h]; 25 Meters pole for CCTV Cameras [0.1 nr] | 14,090.2 | C081 | Z1 | CONS | CCTV | Excavation | AFT |
| RHD4CZ1C081CCTV1200 |  | Installation for RC Base for CCTV Poles for Security Network - (RD-C-8 /1)-Z1-C081-CCTV | 2d | 2027-10-28 | 2027-10-30 | RHD4CZ1C081CCTV1100 | Skilled labor [4.32 h]; Unskilled Labor [4.32 h]; Equipment Opreator [8.64 h]; Excavator-Poclain [2.18 h]; Dump Truck [2.18 h]; 25 Meters pole for CCTV Cameras [0.25 nr] | 35,225.5 | C081 | Z1 | CONS | CCTV | RC Base | AFT |
| RHD4CZ1C081CCTV1300 |  | Backfill for RC Base for CCTV Poles for Security Network - (RD-C-8 /1)-Z1-C081-CCTV | 2d | 2027-10-31 | 2027-11-01 | RHD4CZ1C081CCTV1200 | Skilled labor [2.88 h]; Unskilled Labor [2.88 h]; Equipment Opreator [5.44 h]; Excavator-Poclain [1.42 h]; Dump Truck [1.42 h]; 25 Meters pole for CCTV Cameras [0.05 nr] | 7,045.1 | C081 | Z1 | CONS | CCTV | Backfill | AFT |
| RHD4CZ1C081CCTV1400 |  | Installation for CCTV Poles for Security Network - (RD-C-8 /1)-Z1-C081-CCTV | 2d | 2027-11-02 | 2027-11-03 | RHD4PRSHLDOSCCTV1000, RHD4PRSHLSTACCTV1000, RHD4CZ1C081CCTV1300 | Skilled labor [7.2 h]; Unskilled Labor [14.56 h]; Electrician [7.2 h]; Equipment Opreator [7.2 h]; Boom Truck [3.59 h]; 25 Meters pole for CCTV Cameras [0.6 nr] | 84,541.2 | C081 | Z1 | CONS | CCTV | Installation | AFT |
| RHD4CZ1C081CCTV1500 |  | Protection post Installation for CCTV Poles for Security Network - (RD-C-8 /1)-Z1-C081-CCTV | 2d | 2027-11-04 | 2027-11-06 | RHD4CZ1C081CCTV1400 | Skilled labor [21.76 h]; Unskilled Labor [43.52 h]; Supply and Installation of minimum 4 Protection Post for each pole or tower with pipe ?220*6mm THK. [1 nr] | 4,903 | C081 | Z1 | CONS | CCTV | Protection post | AFT |
|  | 501 | **RHD4-02-002-C081-(CCTV)-Power and Infrastructure** |  | 2027-11-04 | 2027-11-08 |  |  |  |  |  |  |  |  |  |
| RHD4CZ1C081CCTV4100 |  | Installation of Power outlet, UPS and midspan for PTZ Camerafor Cameras for Security Network - (RD-C-8 /1)-Z1-C081-CCTV | 2d | 2027-11-04 | 2027-11-06 | RHD4PRSHLDOSCCTV1300, RHD4PRSHLSTACCTV1300, RHD4CZ1C081CCTV1400 | Skilled labor [13.12 h]; Unskilled Labor [52.32 h]; Electrician [26.08 h]; Equipment Opreator [26.08 h]; Excavator-Poclain [6.53 h]; Dump Truck [6.53 h]; Outdoor ready IP66-rated midspan for PTZ Camera (The outdoor- ready midspan should be IP66/IP67- and NEMA 4X-rated [2 nr]; 1.2KVA Industrial type UPS located at FEC remote poles [2 nr] | 18,206 | C081 | Z1 | CONS | CCTV | Power | AFT |
| RHD4CZ1C081CCTV4200 |  | Short Range Wireless PoP wireless Bridgefor CCTV Poles for Security Network - (RD-C-8 /1)-Z1-C081-CCTV | 2d | 2027-11-07 | 2027-11-08 | RHD4CZ1C081CCTV4100 | Skilled labor [21.76 h]; Unskilled Labor [43.52 h]; Electrician [21.76 h]; Equipment Opreator [43.52 h]; Excavator-Poclain [10.89 h]; Dump Truck [10.89 h]; Short Range wireless point to point wireless bridge [4 nr] | 58,548 | C081 | Z1 | CONS | CCTV | Wireless Pop | AFT |
|  | 500 | **RHD4-02-002-C081-(CCTV)-Camera** |  | 2027-11-09 | 2027-11-10 |  |  |  |  |  |  |  |  |  |
| RHD4CZ1C081CCTV3100 |  | Installation for Cameras for Security Network - (RD-C-8 /1)-Z1-C081-CCTV | 2d | 2027-11-09 | 2027-11-10 | RHD4PRSHLDOSCCTV1100, RHD4PRSHLSTACCTV1100, RHD4CZ1C081CCTV1400, RHD4CZ1C081CCTV4100, RHD4CZ1C081CCTV4200 | Unskilled Labor [54.4 h]; Electrician [27.2 h]; Outdoor Camera, 5MP resolution, day/night, fixed bullet camera providing Forensic WDR. [2 nr]; Outdoor PTZ with IR, HDTV 1080 and 31x optical, 12x digital, total 372x zoom, H264/265 with Motion JPEG. [2 nr] | 72,676 | C081 | Z1 | CONS | CCTV | Installation | AFT |
|  | 503 | **RHD4-02-002-C081-(CCTV)-CCTV Panels and Components** |  | 2027-11-11 | 2027-11-28 |  |  |  |  |  |  |  |  |  |
| RHD4CZ1C081CCTV6100 |  | Installation for CCTV Panels for Security Network - (RD-C-8 /1)-Z1-C081-CCTV | 15d | 2027-11-11 | 2027-11-28 | RHD4PRSHLDOSCCTV1200, RHD4PRSHLSTACCTV1200, RHD4PRLOLSTACCTV1001, RHD4CZ1C081CCTV4200, RHD4CZ1C081CCTV3100 | Skilled labor [326.72 h]; Unskilled Labor [980.16 h]; Electrician [326.72 h]; Pole mounted Filed Equipment cabinet (FEC) , with fan and ventilation, NEMEX 4X ,door, minimum size (600x600x400mm) , the cabinet/enclosurE [2 nr]; 8 Port Industrial PoE Switch 10/1000BaseT (-40 deg to +70 deg. Celsius) for remote poles and as specifiedin item 15. [1 nr]; UTP CAT6 Patch Cord , connect the industrial switch with the cameras, and radio wireless antenna [12 nr] | 32,584 | C081 | Z1 | CONS | CCTV | Equipment | AFT |

| ID | WBS | Activity | Duration | Start | Finish | Predecessors | Complete | Remaining | Planned start | Planned finish | Resources | Cost | Actual cost | RDH4-01-001-Road and Block Names-1 | RDH4-01-001-Zones-1 | RDH4-01-001-Phases-1 | RDH4-01-001-Networks-1 | RDH4-01-001-Work Method-1 | RDH4-01-001-MENEM |
| --- | --- | --- | --- | --- | --- | --- | --- | --- | --- | --- | --- | --- | --- | --- | --- | --- | --- | --- | --- |
|  | 1460 | **RHD4-02-002-Z3** |  | 2026-08-04 | 2028-11-04 |  |  |  |  |  |  |  |  |  |  |  |  |  |  |
|  | 1650 | **RHD4-02-002-Z3-C011** |  | 2026-08-23 | 2028-09-28 |  |  |  |  |  |  |  |  |  |  |  |  |  |  |
|  | 1681 | **RHD4-02-002-Z3-C011-Crossings Sewage Network - SWCr** |  |  |  |  |  |  |  |  |  |  |  |  |  |  |  |  |  |
|  | 1689 | **RHD4-02-002-C011-(SWCr)-HDPE Pipes - 400 mm diameter** |  |  |  |  |  |  |  |  |  |  |  |  |  |  |  |  |  |
|  | 1699 | **RHD4-02-002-C011-(SWCr)-Butterfly Valve Chambers** |  |  |  |  |  |  |  |  |  |  |  |  |  |  |  |  |  |
|  | 1700 | **RHD4-02-002-C011-(SWCr)-Butterfly Valves** |  |  |  |  |  |  |  |  |  |  |  |  |  |  |  |  |  |
|  | 1725 | **RHD4-02-002-Z3-C011-Crossings Potable Network - PTCr** |  |  |  |  |  |  |  |  |  |  |  |  |  |  |  |  |  |
|  | 1730 | **RHD4-02-002-C011-(PTCr)-HDPE Pipes - 450 mm diameter** |  |  |  |  |  |  |  |  |  |  |  |  |  |  |  |  |  |
|  | 1729 | **RHD4-02-002-C011-(PTCr)-HDPE Pipes - 400 mm diameter** |  |  |  |  |  |  |  |  |  |  |  |  |  |  |  |  |  |
|  | 1738 | **RHD4-02-002-C011-(PTCr)-Fire Hydrant** |  |  |  |  |  |  |  |  |  |  |  |  |  |  |  |  |  |
|  | 1772 | **RHD4-02-002-Z3-C011-Crossings Irrigation Network - IRRC** |  |  |  |  |  |  |  |  |  |  |  |  |  |  |  |  |  |
|  | 1777 | **RHD4-02-002-C011-(IRRC)-HDPE Pipes - 315 mm diameter** |  |  |  |  |  |  |  |  |  |  |  |  |  |  |  |  |  |
|  | 1773 | **RHD4-02-002-C011-(IRRC)-HDPE Pipes - 160 mm diameter** |  |  |  |  |  |  |  |  |  |  |  |  |  |  |  |  |  |
|  | 1781 | **RHD4-02-002-C011-(IRRC)-Gate Valves (Direct Buried)** |  |  |  |  |  |  |  |  |  |  |  |  |  |  |  |  |  |
|  | 1782 | **RHD4-02-002-C011-(IRRC)-Butterfly Valve Chamber** |  |  |  |  |  |  |  |  |  |  |  |  |  |  |  |  |  |
|  | 1783 | **RHD4-02-002-C011-(IRRC)-Butterfly Valves** |  |  |  |  |  |  |  |  |  |  |  |  |  |  |  |  |  |
|  | 1784 | **RHD4-02-002-C011-(IRRC)-Wash out Chamber** |  |  |  |  |  |  |  |  |  |  |  |  |  |  |  |  |  |
|  | 1785 | **RHD4-02-002-C011-(IRRC)-Wash out Valves** |  |  |  |  |  |  |  |  |  |  |  |  |  |  |  |  |  |
|  | 1829 | **RHD4-02-002-Z3-C011-Road Works - RD** |  | 2026-08-25 | 2028-09-28 |  |  |  |  |  |  |  |  |  |  |  |  |  |  |
|  | 1830 | **RHD4-02-002-C011-(RD)-Subgrade** |  | 2026-08-25 | 2027-01-20 |  |  |  |  |  |  |  |  |  |  |  |  |  |  |
| RHD4CZ3C011RD1100 |  | Supply, lay and compaction subgrade compacted thickness 300 mm for Roads - (RD-C-1 /1)-Z3-C011-RD | 8d | 2026-08-25 A | 2027-01-20 | RHD4ENSDZ3APPEW100, RHD4ENSDZ3APPRD220, RHD4CZ2L102RD1100 SS | 33% | 8d | 2026-09-03 | 2026-09-12 | Skilled labor [152.9 h]; Unskilled Labor [305.91 h]; Electrician [152.9 h]; Equipment Opreator [1044.6 h]; Water Truck [50.4 h]; Roller compactor [76.45 h]; Grader [152.9 h]; Dump Truck [764.72 h]; Subgrade [19126.4 m3] | 363,401.41 |  | C011 | Z3 | CONS | RD | Subgrade | bef |
|  | 1831 | **RHD4-02-002-C011-(RD)-Aggregate Base Course** |  | 2026-09-01 | 2027-01-24 |  |  |  |  |  |  |  |  |  |  |  |  |  |  |
| RHD4CZ3C011RD2100 |  | Supply, lay and compaction Aggregate base course compacted thickness 300 mmfor Roads - (RD-C-1 /1)-Z3-C011-RD | 11d | 2026-09-01 A | 2027-01-24 | RHD4PRSHLDOSRD1000, RHD4PRSHLSTAGRD1000, RHD4CZ3C011RD1100 | 75% | 3d | 2026-09-13 | 2026-09-26 | Skilled labor [73.6 h]; Unskilled Labor [147.2 h]; Equipment Opreator [932.32 h]; Water Truck [48.57 h]; Roller compactor [147.2 h]; Grader [147.2 h]; Dump Truck [589.17 h]; Aggregate Base Courses [12013.3 m3] | 684,756.96 | 513,019.91 | C011 | Z3 | CONS | RD | ABC | bef |
|  | 1832 | **RHD4-02-002-C011-(RD)-Bituminous base course Two Layers, including (MC1)&(RC2)** |  | 2026-09-17 | 2028-07-06 |  |  |  |  |  |  |  |  |  |  |  |  |  |  |
| RHD4CZ3C011RD3100 |  | Supply, lay and Asphaltic base course including Prime Coat (MC1) for 1st Layer - (RD-C-1 /1)-Z3-C011-RD | 3d | 2026-09-17 A | 2027-02-07 | RHD4PRSHLDOSRD1100, RHD4ENMSASPH2000, RHD4ENMSASPH2010, RHD4PRSHLSTAGRD1100, RHD4CZ3C011RD2100, RHD4CZ3C011MV2400 | 70% | 3d | 2026-09-28 | 2026-09-30 | Skilled labor [116.96 h]; Unskilled Labor [701.77 h]; Equipment Opreator [1754.4 h]; Bobcat [116.96 h]; Roller compactor [116.96 h]; Asphalt Paver [116.96 h]; Rubber Compactor [233.92 h]; MC1/RC2 Sprinkler [116.96 h]; Dump Truck [1052.66 h]; Bituminous base course (Grading I - Class A), including Prime coat (MC1) & tack coate (RC2) [4279.18 m3] | 2,045,448.04 | 1,434,063.62 | C011 | Z3 | CONS | RD | 150 mm | AFT |
| RHD4CZ3C011RD3200 |  | Supply, lay and Asphaltic base course including Tack Coat (RC2) for 2nd Layer - (RD-C-1 /1)-Z3-C011-RD | 4d | 2028-07-03 | 2028-07-06 | RHD4PRSHLDOSRD1100, RHD4PRSHLSTAGRD1100, RHD4CZ3C011RD3100, RHD4CZ3C011CCTV6100 |  |  |  |  | Skilled labor [116.96 h]; Unskilled Labor [701.77 h]; Equipment Opreator [1754.4 h]; Bobcat [116.96 h]; Roller compactor [116.96 h]; Asphalt Paver [116.96 h]; Rubber Compactor [233.92 h]; MC1/RC2 Sprinkler [116.96 h]; Dump Truck [1052.66 h]; Bituminous base course (Grading I - Class A), including Prime coat (MC1) & tack coate (RC2) [4279.18 m3] | 2,045,448.04 |  | C011 | Z3 | CONS | RD | 150 mm | AFT |

| ID | WBS | Activity | Duration | Start | Finish | Predecessors | Complete | Remaining | Planned start | Planned finish | Resources | Cost | Actual cost | RDH4-01-001-Road and Block Names-1 | RDH4-01-001-Zones-1 | RDH4-01-001-Phases-1 | RDH4-01-001-Networks-1 | RDH4-01-001-Work Method-1 | RDH4-01-001-MENEM |
| --- | --- | --- | --- | --- | --- | --- | --- | --- | --- | --- | --- | --- | --- | --- | --- | --- | --- | --- | --- |
|  | 1834 | **RHD4-02-002-C011-(RD)-Precast Concrete Curb** |  | 2028-07-08 | 2028-07-11 |  |  |  |  |  |  |  |  |  |  |  |  |  |  |
| RHD4CZ3C011RD5100 |  | Supply and installation Precast Concrete Kerb for Roads - (RD-C-1 /1)-Z3-C011-RD | 4d | 2028-07-08 | 2028-07-11 | RHD4PRSHLDOSRD1200, RHD4ENMSRD2000, RHD4ENMSRD2010, RHD4PRSHLSTAGRD1200, RHD4CZ3C011RD3200 |  |  |  |  | Mason [465.02 h]; Skilled labor [154.97 h]; Unskilled Labor [465.02 h]; Equipment Opreator [310.05 h]; Bobcat [154.97 h]; Concrete Mixer Truck [154.97 h]; Precast Concrete Curbstone, type K1 [9964.16 m] | 548,028.74 |  | C011 | Z3 | CONS | RD | Curbs | AFT |
|  | 1837 | **RHD4-02-002-C011-(RD)-Traffic Signage** |  | 2028-09-18 | 2028-09-28 |  |  |  |  |  |  |  |  |  |  |  |  |  |  |
| RHD4CZ3C011RD8100 |  | Installation of Traffic Signage for Road Network - (RD-C-1 /1)-Z3-C011-RD | 9d | 2028-09-18 | 2028-09-28 | RHD4PRSHLDOSRD1600, RHD4PRSHLSTAGRD1600, RHD4CZ3C011RD5100, RHD4CZ3C011TC2400, RHD4CZ3C011ICT2400, RHD4CZ3L122RD8100 |  |  |  |  | Skilled labor [196 h]; Unskilled Labor [98.01 h]; Electrician [44.65 h]; Equipment Opreator [37.46 h]; Boom Truck [19.6 h]; Concrete Mixer Truck [17.86 h]; Traffic signs, ground mounted, 1 Sheet Aluminium, (breakaway)Single post [12 nr]; Traffic signs, ground mounted, 2 Sheets Aluminium, (breakaway)Single post [10 nr]; Traffic signs, ground mounted, 1 Sheets Aluminium, (breakaway)Double post [3 nr] | 38,619 |  | C011 | Z3 | CONS | RD | Traffic Signage | AFT |
|  | 1835 | **RHD4-02-002-C011-(RD)-Precast Interlocking Block Pavers** |  |  |  |  |  |  |  |  |  |  |  |  |  |  |  |  |  |
|  | 1833 | **RHD4-02-002-C011-(RD)-Bituminous concrete wearing course including tack coat (RC2)** |  | 2028-07-12 | 2028-07-15 |  |  |  |  |  |  |  |  |  |  |  |  |  |  |
| RHD4CZ3C011RD4100 |  | Supply, lay and compaction Asphaltic wearing course including tack Coat (RC2)for Road Network - (RD-C-1 /1)-Z3-C011-RD | 3d | 2028-07-12 | 2028-07-15 | RHD4CZ3C011RD5100 |  |  |  |  | Skilled labor [60.22 h]; Unskilled Labor [361.56 h]; Equipment Opreator [903.79 h]; Bobcat [60.22 h]; Roller compactor [60.22 h]; Asphalt Paver [60.22 h]; Rubber Compactor [120.56 h]; MC1/RC2 Sprinkler [60.22 h]; Dump Truck [542.23 h]; Bituminous concrete wearing course, (Grading I - Class A), including tack coat (RC2) [2873.79 m3] | 1,560,467.97 |  | C011 | Z3 | CONS | RD | 50 mm | AFT |
|  | 1838 | **RHD4-02-002-C011-(RD)-Speed Table and Wheel Stopper** |  | 2028-08-01 | 2028-08-03 |  |  |  |  |  |  |  |  |  |  |  |  |  |  |
| RHD4CZ3C011RD9100 |  | Installation for Speed Bump for Road Network - (RD-C-1 /1)-Z3-C011-RD | 3d | 2028-08-01 | 2028-08-03 | RHD4CZ3C011RD4100, RHD4GNICTZ9FT1900 |  |  |  |  | Mason [142.01 h]; Skilled labor [47.37 h]; Unskilled Labor [94.64 h]; Equipment Opreator [9.47 h]; Boom Truck [9.47 h]; SPEED TABLE [304.2 m2] | 37,416.6 |  | C011 | Z3 | CONS | RD | Speed Bump | AFT |
|  | 1836 | **RHD4-02-002-C011-(RD)-Pavement Marking** |  | 2028-08-05 | 2028-08-08 |  |  |  |  |  |  |  |  |  |  |  |  |  |  |
| RHD4CZ3C011RD7100 |  | Pavement Markings for Road Network - (RD-C-1 /1)-Z3-C011-RD | 4d | 2028-08-05 | 2028-08-08 | RHD4PRSHLDOSRD1500, RHD4PRSHLSTAGRD1500, RHD4CZ3C011RD9100 |  |  |  |  | Skilled labor [80.7 h]; Unskilled Labor [161.29 h]; Equipment Opreator [80.7 h]; Road Marking Machine [80.7 h]; Retroreflective Thermoplastic White Traffic Markings [1498.86 m2]; Retroreflective Thermoplastic Yellow, Traffic Markings [1531.99 m2]; Rumble strip [86 m]; Retroreflective raised pavement markers (cat eyes) [764 nr] | 130,510.35 |  | C011 | Z3 | CONS | RD | Pavement Marking | AFT |
|  | 4299 | **RHD4-02-002-Z3-C011-Concrete Box Culvert - ST** |  | 2026-08-29 | 2027-09-04 |  |  |  |  |  |  |  |  |  |  |  |  |  |  |
|  | 4300 | **RHD4-02-002-C011-(ST)-Concrete Box Culvert** |  | 2026-08-29 | 2027-09-04 |  |  |  |  |  |  |  |  |  |  |  |  |  |  |
| RHD4CZ3C011ST4100 |  | Excavation works for Box Culvert - (RD-C-1/1)-Z3-C011-ST | 7d | 2026-08-29 A | 2027-07-24 | RHD4ENSWL1APPSTC1000, RHD4CZ3C011RW1000, RHD4CZ3L122ST4100 SS | 60% | 14d | 2026-12-31 | 2027-01-07 | Skilled labor [438.88 h]; Unskilled Labor [438.88 h]; Equipment Opreator [1316.75 h]; Excavator-Poclain [438.88 h]; Water Truck [438.88 h]; Dump Truck [438.88 h]; Excavation for culverts (all types of soil) including backfilling - ST [4231.72 m3] | 76,170.96 | 45,702.58 | C011 | Z3 | CONS | ST | Excavation | bef |
| RHD4CZ3C011ST4200 |  | PC works for Box Culvert - (RD-C-1/1)-Z3-C011-ST | 3d | 2026-09-10 A | 2027-08-05 | RHD4CZ3C011ST4100, RHD4CZ3L122ST4200 | 60% | 11d | 2027-01-09 | 2027-01-11 | Skilled labor [110.32 h]; Unskilled Labor [110.32 h]; Equipment Opreator [110.32 h]; Concrete Mixer Truck [55.11 h]; Concrete Pump [55.11 h]; 100 mm thickness lean concrete under the base - ST [1519.48 m2] | 59,259.72 | 35,555.83 | C011 | Z3 | CONS | ST | PC | bef |
| RHD4CZ3C011ST4400 |  | Raft works for Box Culvert - (RD-C-1/1)-Z3-C011-ST | 7d | 2026-09-13 A | 2027-08-09 | RHD4CZ3C011ST4200 | 60% | 3d | 2027-01-12 | 2027-01-19 | Carpenter [79.06 h]; Skilled labor [97.9 h]; Steel Fixer [18.84 h]; Equipment Opreator [161.83 h]; Boom Truck [3.81 h]; Concrete Mixer Truck [79.06 h]; Concrete Pump [79.06 h]; Supply and cast in place reinforced concrete for Box culverts - ST [580.66 m3]; Supply, placing, and fixing of high tensile reinforcement steel for Box culverts - ST [138.32 Ton] | 1,071,534.56 | 642,920.74 | C011 | Z3 | CONS | ST | Raft Works | bef |
| RHD4CZ3C011ST4500 |  | Wall and slab works for Box Culvert - (RD-C-1/1)-Z3-C011-ST | 7d | 2026-09-16 A | 2027-08-12 | RHD4CZ3C011ST4400 | 60% | 3d | 2027-01-20 | 2027-01-27 | Carpenter [79.06 h]; Skilled labor [97.9 h]; Steel Fixer [18.84 h]; Equipment Opreator [161.83 h]; Boom Truck [3.81 h]; Concrete Mixer Truck [79.06 h]; Concrete Pump [79.06 h]; Supply and cast in place reinforced concrete for Box culverts - ST [725.83 m3]; Supply, placing, and fixing of high tensile reinforcement steel for Box culverts - ST [207.48 Ton] | 1,464,464.4 | 878,678.64 | C011 | Z3 | CONS | ST | Wall and slab Works | bef |
| RHD4CZ3C011ST4700 |  | Backfilling works for Box Culvert - (RD-C-1/1)-Z3-C011-ST | 11d | 2027-08-14 | 2027-08-25 | RHD4CZ3C011ST4500 |  |  |  |  | Skilled labor [329.22 h]; Unskilled Labor [658.32 h]; Equipment Opreator [526.66 h]; Boom Truck [164.55 h]; Water Truck [32.89 h]; Dump Truck [329.22 h]; Excavation for culverts (all types of soil) including backfilling - ST [1813.59 m3] | 32,644.62 |  | C011 | Z3 | CONS | ST | Backfilling | bef |
| RHD4CZ3C011ST4600 |  | Insulation and Testing for Box Culvert - (RD-C-1/1)-Z3-C011-ST | 8d | 2027-08-26 | 2027-09-04 | RHD4CZ3C011ST4700 |  |  |  |  | Skilled labor [79.06 h]; Unskilled Labor [158.13 h]; Equipment Opreator [79.06 h]; Water Truck [79.06 h]; Supply and cast in place reinforced concrete for Box culverts - ST [145.17 m3] | 142,847.28 |  | C011 | Z3 | CONS | ST | Insulation and Testing | bef |
|  | 4301 | **RHD4-02-002-C011-(ST)-Concrete Chambers** |  |  |  |  |  |  |  |  |  |  |  |  |  |  |  |  |  |
|  | 1703 | **RHD4-02-002-Z3-C011-Sewage Network - SW** |  |  |  |  |  |  |  |  |  |  |  |  |  |  |  |  |  |
|  | 1711 | **RHD4-02-002-C011-(SW)-HDPE Pipes - 400 mm diameter** |  |  |  |  |  |  |  |  |  |  |  |  |  |  |  |  |  |
|  | 1712 | **RHD4-02-002-C011-(SW)-Concrete Encasement** |  |  |  |  |  |  |  |  |  |  |  |  |  |  |  |  |  |
|  | 1740 | **RHD4-02-002-Z3-C011-Potable Network - PT** |  | 2026-08-29 | 2027-09-04 |  |  |  |  |  |  |  |  |  |  |  |  |  |  |
|  | 1745 | **RHD4-02-002-C011-(PT)-HDPE Pipes - 450 mm diameter** |  | 2027-07-25 | 2027-08-17 |  |  |  |  |  |  |  |  |  |  |  |  |  |  |
| RHD4CZ3C011PT1104 |  | Excavation works for HDPE Pipline 450 mm - (RD-C-1 /1)-Z3-C011-PT | 4d | 2027-07-25 | 2027-07-28 | RHD4ENSDZ3APPPT130, RHD4ENMSPT2000, RHD4CZ3C011ST4100, RHD4CZ2L102PT1101 |  |  |  |  | Skilled labor [33.43 h]; Unskilled Labor [33.43 h]; Equipment Opreator [40.19 h]; Excavator-Poclain [33.43 h]; Dump Truck [6.64 h]; HDPE (450mm Diameter) - PT - Depth: less than 1.5m [72.09 m]; HDPE (450mm Diameter) - PT - Depth: more than 1.5m | 27,394.2 |  | C011 | Z3 | CONS | PT | Excavation | bef |
| RHD4CZ3C011PT1204 |  | Bedding works for HDPE Pipline 450 mm - (RD-C-1 /1)-Z3-C011-PT | 3d | 2027-07-29 | 2027-08-01 | RHD4CZ3C011PT1104 |  |  |  |  | Skilled labor [28.75 h]; Unskilled Labor [57.5 h]; Equipment Opreator [57.5 h]; Excavator-Poclain [28.75 h]; Dump Truck [28.75 h]; HDPE (450mm Diameter) - PT - Depth: less than 1.5m [36.05 m]; HDPE (450mm Diameter) - PT - Depth: more than 1.5m | 13,699 |  | C011 | Z3 | CONS | PT | Bedding | bef |
| RHD4CZ3C011PT1304 |  | Installing for HDPE Pipline 450 mm - (RD-C-1 /1)-Z3-C011-PT | 5d | 2027-08-02 | 2027-08-07 | RHD4PRSHLDOSPT1000, RHD4PRSHLSTAGPT1000, RHD4CZ3C011PT1204 |  |  |  |  | Unskilled Labor [104.66 h]; Plumber [52.38 h]; Equipment Opreator [52.38 h]; Boom Truck [52.38 h]; HDPE (450mm Diameter) - PT - Depth: less than 1.5m [324.41 m]; HDPE (450mm Diameter) - PT - Depth: more than 1.5m | 123,275.8 |  | C011 | Z3 | CONS | PT | Installation | bef |
| RHD4CZ3C011PT1404 |  | Primary Test for HDPE Pipline 450 mm - (RD-C-1 /1)-Z3-C011-PT | 2d | 2027-08-11 | 2027-08-12 | RHD4CZ3C011PT1304, RHD4CZ3C011PT5100 |  |  |  |  | Unskilled Labor [19.28 h]; Plumber [19.28 h]; Equipment Opreator [19.28 h]; Water Truck [19.28 h]; HDPE (450mm Diameter) - PT - Depth: less than 1.5m [144.18 m]; HDPE (450mm Diameter) - PT - Depth: more than 1.5m | 54,788.4 |  | C011 | Z3 | CONS | PT | Primary Test | bef |
| RHD4CZ3C011PT1504 |  | Backfilling and warning tape works for HDPE Pipline 450 mm - (RD-C-1 /1)-Z3-C011-PT | 4d | 2027-08-14 | 2027-08-17 | RHD4CZ3C011PT1404 |  |  |  |  | Skilled labor [40.51 h]; Unskilled Labor [81.13 h]; Equipment Opreator [81.13 h]; Excavator-Poclain [40.51 h]; Dump Truck [40.51 h]; HDPE (450mm Diameter) - PT - Depth: less than 1.5m [144.18 m]; HDPE (450mm Diameter) - PT - Depth: more than 1.5m | 54,788.4 |  | C011 | Z3 | CONS | PT | Backfilling | bef |

| ID | WBS | Activity | Duration | Start | Finish | Predecessors | Complete | Remaining | Planned start | Planned finish | Resources | Cost | RDH4-01-001-Road and Block Names-1 | RDH4-01-001-Zones-1 | RDH4-01-001-Phases-1 | RDH4-01-001-Networks-1 | RDH4-01-001-Work Method-1 | RDH4-01-001-MENEM |
| --- | --- | --- | --- | --- | --- | --- | --- | --- | --- | --- | --- | --- | --- | --- | --- | --- | --- | --- |
|  | 1744 | **RHD4-02-002-C011-(PT)-HDPE Pipes - 400 mm diameter** |  | 2026-08-29 | 2027-08-16 |  |  |  |  |  |  |  |  |  |  |  |  |  |
| RHD4CZ3C011PT1103 |  | Excavation works for HDPE Pipline 400 mm - (RD-C-1 /1)-Z3-C011-PT | 3d | 2026-08-29 A | 2027-08-01 | RHD4ENSDZ3APPPT130, RHD4ENMSPT2000, RHD4CZ3C011PT1104 | 15% | 3d | 2027-01-13 | 2027-01-16 | Skilled labor [23.85 h]; Unskilled Labor [31.26 h]; Equipment Opreator [34.52 h]; Excavator-Poclain [23.85 h]; Dump Truck [10.78 h]; HDPE (400mm Diameter) - PT - Depth: less than 1.5m [40.98 m]; HDPE (400mm Diameter) - PT - Depth: 1.51m - 2.5m | 13,933.2 | C011 | Z3 | CONS | PT | Excavation | bef |
| RHD4CZ3C011PT1203 |  | Bedding works for HDPE Pipline 400 mm - (RD-C-1 /1)-Z3-C011-PT | 3d | 2026-08-30 A | 2027-08-04 | RHD4CZ3C011PT1103, RHD4CZ3C011PT1204 | 2% | 3d | 2027-01-17 | 2027-01-19 | Skilled labor [14.92 h]; Unskilled Labor [44.65 h]; Plumber [7.41 h]; Equipment Opreator [37.24 h]; Excavator-Poclain [14.92 h]; Boom Truck [7.41 h]; Dump Truck [14.92 h]; HDPE (400mm Diameter) - PT - Depth: less than 1.5m [20.49 m]; HDPE (400mm Diameter) - PT - Depth: 1.51m - 2.5m | 6,966.6 | C011 | Z3 | CONS | PT | Bedding | bef |
| RHD4CZ3C011PT1303 |  | Installing for HDPE Pipline 400 mm - (RD-C-1 /1)-Z3-C011-PT | 3d | 2026-09-02 A | 2027-08-10 | RHD4PRSHLDOSPT1000, RHD4PRSHLSTAGPT1000, RHD4CZ3C011PT1203, RHD4CZ3C011PT1304 | 16% | 3d | 2027-01-23 | 2027-01-25 | Unskilled Labor [52.06 h]; Plumber [29.73 h]; Equipment Opreator [29.73 h]; Boom Truck [22.33 h]; Water Truck [7.41 h]; HDPE (400mm Diameter) - PT - Depth: less than 1.5m [184.42 m]; HDPE (400mm Diameter) - PT - Depth: 1.51m - 2.5m | 62,702.8 | C011 | Z3 | CONS | PT | Installation | bef |
| RHD4CZ3C011PT1403 |  | Primary Test for HDPE Pipline 400 mm - (RD-C-1 /1)-Z3-C011-PT | 2d | 2027-08-11 | 2027-08-12 | RHD4CZ3C011PT1303, RHD4CZ3C011PT5100 |  |  |  |  | Skilled labor [7.41 h]; Unskilled Labor [26.79 h]; Plumber [11.87 h]; Equipment Opreator [26.79 h]; Excavator-Poclain [7.41 h]; Water Truck [11.87 h]; Dump Truck [7.41 h]; HDPE (400mm Diameter) - PT - Depth: less than 1.5m [81.96 m]; HDPE (400mm Diameter) - PT - Depth: 1.51m - 2.5m | 27,866.4 | C011 | Z3 | CONS | PT | Primary Test | bef |
| RHD4CZ3C011PT1503 |  | Backfilling and warning tape works for HDPE Pipline 400 mm - (RD-C-1 /1)-Z3-C011-PT | 3d | 2027-08-14 | 2027-08-16 | RHD4CZ3C011PT1403 |  |  |  |  | Skilled labor [18.62 h]; Unskilled Labor [37.14 h]; Equipment Opreator [37.14 h]; Excavator-Poclain [18.62 h]; Dump Truck [18.62 h]; HDPE (400mm Diameter) - PT - Depth: less than 1.5m [81.96 m] | 27,866.4 | C011 | Z3 | CONS | PT | Backfilling | bef |
|  | 1747 | **RHD4-02-002-C011-(PT)-Butterfly Valve Chamber** |  | 2027-07-29 | 2027-08-07 |  |  |  |  |  |  |  |  |  |  |  |  |  |
| RHD4CZ3C011PT2100 |  | Excavation and Bedding for Butterfly Valve Chamber for Potable Water Network - (RD-C-1 /1)-Z3-C011-PT | 2d | 2027-07-29 | 2027-07-31 | RHD4ENSDZ3APPPT130, RHD4CZ3C011PT1104 |  |  |  |  | Skilled labor [5.45 h]; Unskilled Labor [5.45 h]; Equipment Opreator [1.09 h]; Excavator-Poclain [0.54 h]; Dump Truck [0.54 h]; Valve chambers - PT [0.25 nr] | 3,121 | C011 | Z3 | CONS | PT | Excavation and Bedding | bef |
| RHD4CZ3C011PT2200 |  | PC works for Butterfly Valve Chamber for Potable Water Network - (RD-C-1 /1)-Z3-C011-PT | 2d | 2027-08-01 | 2027-08-02 | RHD4CZ3C011PT2100 |  |  |  |  | Skilled labor [5.45 h]; Unskilled Labor [10.89 h]; Equipment Opreator [0.54 h]; Concrete Pump [0.54 h]; Valve chambers - PT [0.1 nr] | 1,248.4 | C011 | Z3 | CONS | PT | PC Works | bef |
| RHD4CZ3C011PT2300 |  | Installation for Butterfly Valve Chamber for Potable Water Network - (RD-C-1 /1)-Z3-C011-PT | 2d | 2027-08-03 | 2027-08-04 | RHD4PRSHLDOSPT1100, RHD4PRSHLDOSPT1400, RHD4PRSHLSTAGPT1100, RHD4PRSHLSTAGPT1400, RHD4CZ3C011PT2200 |  |  |  |  | Skilled labor [5.45 h]; Unskilled Labor [10.89 h]; Equipment Opreator [1.09 h]; Boom Truck [1.09 h]; Valve chambers - PT [0.55 nr] | 6,866.2 | C011 | Z3 | CONS | PT | Installation | bef |
| RHD4CZ3C011PT2400 |  | Backfilling works for Butterfly Valve Chamber for Potable Water Network - (RD-C-1 /1)-Z3-C011-PT | 2d | 2027-08-05 | 2027-08-07 | RHD4CZ3C011PT2300 |  |  |  |  | Skilled labor [5.45 h]; Unskilled Labor [10.89 h]; Equipment Opreator [1.09 h]; Water Truck [0.54 h]; Dump Truck [0.54 h]; Valve chambers - PT [0.1 nr] | 1,248.4 | C011 | Z3 | CONS | PT | Backfilling Works | bef |
|  | 1748 | **RHD4-02-002-C011-(PT)-Butterfly Valves** |  | 2027-08-05 | 2027-08-09 |  |  |  |  |  |  |  |  |  |  |  |  |  |
| RHD4CZ3C011PT3101 |  | Installation for Butterfly Valves for Potable Water Network - (RD-C-1 /1)-Z3-C011-PT | 2d | 2027-08-05 | 2027-08-07 | RHD4PRSHLDOSPT1200, RHD4PRSHLSTAGPT1200, RHD4CZ3C011PT2300 |  |  |  |  | Unskilled Labor [5.45 h]; Plumber [5.45 h]; Butterfly valves dia 400 - PT [0.9 nr] | 27,578.7 | C011 | Z3 | CONS | PT | Installation | bef |
| RHD4CZ3C011PT3201 |  | Stem and Service box for Butterfly Valves for Potable Water Network - (RD-C-1 /1)-Z3-C011-PT | 2d | 2027-08-08 | 2027-08-09 | RHD4PRSHLDOSPT1300, RHD4PRSHLSTAGPT1300, RHD4CZ3C011PT3101, RHD4CZ3C011PT2400 |  |  |  |  | Unskilled Labor [5.45 h]; Plumber [5.45 h]; Butterfly valves dia 400 - PT [0.1 nr] | 3,064.3 | C011 | Z3 | CONS | PT | Stem and Service box | bef |
|  | 1749 | **RHD4-02-002-C011-(PT)-Wash out Valve Chambers** |  | 2027-07-29 | 2027-08-07 |  |  |  |  |  |  |  |  |  |  |  |  |  |
| RHD4CZ3C011PT2101 |  | Excavation and Bedding for Wash out Valve Chambers for Potable Water Network - (RD-C-1 /1)-Z3-C011-PT | 2d | 2027-07-29 | 2027-07-31 | RHD4ENSDZ3APPPT130, RHD4CZ3C011PT1104 |  |  |  |  | Skilled labor [5.45 h]; Unskilled Labor [5.45 h]; Equipment Opreator [1.09 h]; Excavator-Poclain [0.54 h]; Dump Truck [0.54 h]; Wash out chambers - PT [0.25 nr] | 4,686.25 | C011 | Z3 | CONS | PT | Excavation and Bedding | bef |
| RHD4CZ3C011PT2201 |  | PC works for Wash out Valve Chambers for Potable Water Network - (RD-C-1 /1)-Z3-C011-PT | 2d | 2027-08-01 | 2027-08-02 | RHD4CZ3C011PT2101 |  |  |  |  | Skilled labor [5.45 h]; Unskilled Labor [10.89 h]; Equipment Opreator [0.54 h]; Concrete Pump [0.54 h]; Wash out chambers - PT [0.1 nr] | 1,874.5 | C011 | Z3 | CONS | PT | PC Works | bef |
| RHD4CZ3C011PT2301 |  | Installation for Wash out Valve Chambers for Potable Water Network - (RD-C-1 /1)-Z3-C011-PT | 2d | 2027-08-03 | 2027-08-04 | RHD4PRSHLDOSPT1100, RHD4PRSHLDOSPT1400, RHD4PRSHLSTAGPT1100, RHD4PRSHLSTAGPT1400, RHD4CZ3C011PT2201 |  |  |  |  | Skilled labor [5.45 h]; Unskilled Labor [10.89 h]; Equipment Opreator [1.09 h]; Boom Truck [1.09 h]; Wash out chambers - PT [0.55 nr] | 10,309.75 | C011 | Z3 | CONS | PT | Installation | bef |
| RHD4CZ3C011PT2401 |  | Backfilling works for Wash out Valve Chambers for Potable Water Network - (RD-C-1 /1)-Z3-C011-PT | 2d | 2027-08-05 | 2027-08-07 | RHD4CZ3C011PT2301 |  |  |  |  | Skilled labor [5.45 h]; Unskilled Labor [10.89 h]; Equipment Opreator [1.09 h]; Water Truck [0.54 h]; Dump Truck [0.54 h]; Wash out chambers - PT [0.1 nr] | 1,874.5 | C011 | Z3 | CONS | PT | Backfilling Works | bef |
|  | 1750 | **RHD4-02-002-C011-(PT)-Wash out Valves** |  | 2027-08-05 | 2027-08-09 |  |  |  |  |  |  |  |  |  |  |  |  |  |
| RHD4CZ3C011PT3102 |  | Installation for Wash out Valves for Potable Water Network - (RD-C-1 /1)-Z3-C011-PT | 2d | 2027-08-05 | 2027-08-07 | RHD4PRSHLDOSPT1200, RHD4PRSHLSTAGPT1200, RHD4CZ3C011PT2301 |  |  |  |  | Unskilled Labor [5.45 h]; Plumber [5.45 h]; Wash out valve diameter 100 mm - PT [0.9 nr] | 3,373.2 | C011 | Z3 | CONS | PT | Installation | bef |
| RHD4CZ3C011PT3202 |  | Stem and Service box for Wash out Valves for Potable Water Network - (RD-C-1 /1)-Z3-C011-PT | 2d | 2027-08-08 | 2027-08-09 | RHD4PRSHLDOSPT1300, RHD4PRSHLSTAGPT1300, RHD4CZ3C011PT3102, RHD4CZ3C011PT2401 |  |  |  |  | Unskilled Labor [5.45 h]; Plumber [5.45 h]; Wash out valve diameter 100 mm - PT [0.1 nr] | 374.8 | C011 | Z3 | CONS | PT | Stem and Service box | bef |
|  | 1751 | **RHD4-02-002-C011-(PT)-Air Valve Chambers** |  | 2027-07-29 | 2027-08-07 |  |  |  |  |  |  |  |  |  |  |  |  |  |
| RHD4CZ3C011PT2102 |  | Excavation and Bedding for Air Valve Chambers for Potable Water Network - (RD-C-1 /1)-Z3-C011-PT | 2d | 2027-07-29 | 2027-07-31 | RHD4ENSDZ3APPPT130, RHD4CZ3C011PT1104 |  |  |  |  | Skilled labor [5.45 h]; Unskilled Labor [5.45 h]; Equipment Opreator [1.09 h]; Excavator-Poclain [0.54 h]; Dump Truck [0.54 h]; Air Valve chambers - PT [0.25 nr] | 1,193 | C011 | Z3 | CONS | PT | Excavation and Bedding | bef |
| RHD4CZ3C011PT2202 |  | PC works for Air Valve Chambers for Potable Water Network - (RD-C-1 /1)-Z3-C011-PT | 2d | 2027-08-01 | 2027-08-02 | RHD4CZ3C011PT2102 |  |  |  |  | Skilled labor [5.45 h]; Unskilled Labor [10.89 h]; Equipment Opreator [0.54 h]; Concrete Pump [0.54 h]; Air Valve chambers - PT [0.1 nr] | 477.2 | C011 | Z3 | CONS | PT | PC Works | bef |
| RHD4CZ3C011PT2302 |  | Installation for Air Valve Chambers for Potable Water Network - (RD-C-1 /1)-Z3-C011-PT | 2d | 2027-08-03 | 2027-08-04 | RHD4PRSHLDOSPT1100, RHD4PRSHLDOSPT1400, RHD4PRSHLSTAGPT1100, RHD4PRSHLSTAGPT1400, RHD4CZ3C011PT2202 |  |  |  |  | Skilled labor [5.45 h]; Unskilled Labor [10.89 h]; Equipment Opreator [1.09 h]; Boom Truck [1.09 h]; Air Valve chambers - PT [0.55 nr] | 2,624.6 | C011 | Z3 | CONS | PT | Installation | bef |
| RHD4CZ3C011PT2402 |  | Backfilling works for Air Valve Chambers for Potable Water Network - (RD-C-1 /1)-Z3-C011-PT | 2d | 2027-08-05 | 2027-08-07 | RHD4CZ3C011PT2302 |  |  |  |  | Skilled labor [5.45 h]; Unskilled Labor [10.89 h]; Equipment Opreator [1.09 h]; Water Truck [0.54 h]; Dump Truck [0.54 h]; Air Valve chambers - PT [0.1 nr] | 477.2 | C011 | Z3 | CONS | PT | Backfilling Works | bef |

| ID | WBS | Activity | Duration | Start | Finish | Predecessors | Complete | Remaining | Planned start | Planned finish | Resources | Cost | RDH4-01-001-Road and Block Names-1 | RDH4-01-001-Zones-1 | RDH4-01-001-Phases-1 | RDH4-01-001-Networks-1 | RDH4-01-001-Work Method-1 | RDH4-01-001-MENEM |
| --- | --- | --- | --- | --- | --- | --- | --- | --- | --- | --- | --- | --- | --- | --- | --- | --- | --- | --- |
|  | 1752 | **RHD4-02-002-C011-(PT)-Air Valves** |  | 2027-08-05 | 2027-08-09 |  |  |  |  |  |  |  |  |  |  |  |  |  |
| RHD4CZ3C011PT3103 |  | Installation for Air Valves for Potable Water Network - (RD-C-1 /1)-Z3-C011-PT | 2d | 2027-08-05 | 2027-08-07 | RHD4PRSHLDOSPT1200, RHD4PRSHLSTAGPT1200, RHD4CZ3C011PT2302 |  |  |  |  | Unskilled Labor [5.45 h]; Plumber [5.45 h]; Air valve diameter 65 mm - PT [0.9 nr] | 4,954.5 | C011 | Z3 | CONS | PT | Installation | bef |
| RHD4CZ3C011PT3203 |  | Stem and Service box for Air Valves for Potable Water Network - (RD-C-1 /1)-Z3-C011-PT | 2d | 2027-08-08 | 2027-08-09 | RHD4PRSHLDOSPT1300, RHD4PRSHLSTAGPT1300, RHD4CZ3C011PT3103, RHD4CZ3C011PT2402 |  |  |  |  | Unskilled Labor [5.45 h]; Plumber [5.45 h]; Air valve diameter 65 mm - PT [0.1 nr] | 550.5 | C011 | Z3 | CONS | PT | Stem and Service box | bef |
|  | 1753 | **RHD4-02-002-C011-(PT)-Fire Hydrant** |  | 2027-08-18 | 2027-09-04 |  |  |  |  |  |  |  |  |  |  |  |  |  |
| RHD4CZ3C011PT4100 |  | Excavation and Bedding and Pipe Installation for Fire Hydrant - (RD-C-1 /1)-Z3-C011-PT | 4d | 2027-08-18 | 2027-08-22 | RHD4ENSDZ3APPPT130, RHD4CZ3C011PT1504, RHD4CZ3C011PT1503 |  |  |  |  | Skilled labor [38.12 h]; Unskilled Labor [38.12 h]; Plumber [38.12 h]; Equipment Opreator [19.06 h]; Excavator-Poclain [19.06 h]; 3-outlet fire hydrant (2 x 2.5 inch and 1 x 4.5 inch) in the form of a separate dry vacuum cylinder [0.7 nr] | 8,834 | C011 | Z3 | CONS | PT | Excavation | bef |
| RHD4CZ3C011PT4200 |  | Valve Installation for Fire Hydrant - (RD-C-1 /1)-Z3-C011-PT | 3d | 2027-08-23 | 2027-08-25 | RHD4CZ3C011PT4100 |  |  |  |  | Unskilled Labor [25.37 h]; Plumber [25.37 h]; 3-outlet fire hydrant (2 x 2.5 inch and 1 x 4.5 inch) in the form of a separate dry vacuum cylinder [1.4 nr] | 17,668 | C011 | Z3 | CONS | PT | Valve | bef |
| RHD4CZ3C011PT4300 |  | Stem for Fire Hydrant - (RD-C-1 /1)-Z3-C011-PT | 3d | 2027-08-26 | 2027-08-29 | RHD4CZ3C011PT4200 |  |  |  |  | Unskilled Labor [25.37 h]; Plumber [25.37 h]; 3-outlet fire hydrant (2 x 2.5 inch and 1 x 4.5 inch) in the form of a separate dry vacuum cylinder [2.1 nr] | 26,502 | C011 | Z3 | CONS | PT | Stem | bef |
| RHD4CZ3C011PT4400 |  | Fire Installation for Fire Hydrant - (RD-C-1 /1)-Z3-C011-PT | 3d | 2027-08-30 | 2027-09-01 | RHD4PRSHLDOSPT1500, RHD4PRSHLSTAGPT1500, RHD4CZ3C011PT4300 |  |  |  |  | Unskilled Labor [25.37 h]; Plumber [25.37 h]; Equipment Opreator [25.37 h]; Boom Truck [25.37 h]; 3-outlet fire hydrant (2 x 2.5 inch and 1 x 4.5 inch) in the form of a separate dry vacuum cylinder [2.45 nr] | 30,919 | C011 | Z3 | CONS | PT | Fire | bef |
| RHD4CZ3C011PT4500 |  | Protection Barriers for Fire Hydrant - (RD-C-1 /1)-Z3-C011-PT | 2d | 2027-09-02 | 2027-09-04 | RHD4CZ3C011PT4400 |  |  |  |  | Unskilled Labor [15.25 h]; Plumber [15.25 h]; 3-outlet fire hydrant (2 x 2.5 inch and 1 x 4.5 inch) in the form of a separate dry vacuum cylinder [0.35 nr] | 4,417 | C011 | Z3 | CONS | PT | Protection Barriers | bef |
|  | 1754 | **RHD4-02-002-C011-(PT)-Concrete Encasement** |  | 2027-08-08 | 2027-08-10 |  |  |  |  |  |  |  |  |  |  |  |  |  |
| RHD4CZ3C011PT5100 |  | Pipe Encasement for Potable Pipelines - (RD-C-1 /1)-Z3-C011-PT | 3d | 2027-08-08 | 2027-08-10 | RHD4CZ3C011PT1304 FF, RHD4CZ3C011PT1303 FF, RHD4CZ3C011PT1304 SS, RHD4CZ3C011PT1303 SS, RHD4CZ3C011PT1203, RHD4CZ3C011PT1204 |  |  |  |  | Skilled labor [24.5 h]; Unskilled Labor [24.5 h]; Equipment Opreator [27.01 h]; Concrete Mixer Truck [2.5 h]; Dump Truck [24.5 h]; Pipe Encasement - PT [11.27 m3] | 13,817.02 | C011 | Z3 | CONS | PT | Pipe Encasement | bef |
|  | 1755 | **RHD4-02-002-Z3-C011-Irrigation Network - IRR** |  | 2026-08-29 | 2027-10-26 |  |  |  |  |  |  |  |  |  |  |  |  |  |
|  | 1770 | **RHD4-02-002-C011-(IRR)-Air Valves** |  | 2027-09-09 | 2027-09-13 |  |  |  |  |  |  |  |  |  |  |  |  |  |
| RHD4CZ3C011IRR3103 |  | Installation for Air Valves for Irrigation Network - (RD-C-1 /1)-Z3-C011-IRR | 2d | 2027-09-09 | 2027-09-11 | RHD4PRSHLDOSIRR1100, RHD4PRSHLSTAGIRR1100, RHD4CZ3C011IRR2402, RHD4CZ3C011IRR1300 |  |  |  |  | Unskilled Labor [10.89 h]; Plumber [10.89 h]; Air valve diameter 50 mm - TSE [1.8 nr] | 8,854.2 | C011 | Z3 | CONS | IRR | Installation | bef |
| RHD4CZ3C011IRR3203 |  | Stem and Service box for Air Valves for Irrigation Network - (RD-C-1 /1)-Z3-C011-IRR | 2d | 2027-09-12 | 2027-09-13 | RHD4PRSHLDOSIRR1300, RHD4PRSHLSTAGIRR1300, RHD4CZ3C011IRR3103 |  |  |  |  | Unskilled Labor [10.89 h]; Plumber [10.89 h]; Air valve diameter 50 mm - TSE [0.2 nr] | 983.8 | C011 | Z3 | CONS | IRR | Stem and Service box | bef |
|  | 1758 | **RHD4-02-002-C011-(IRR)-HDPE Pipes - 200 mm diameter** |  |  |  |  |  |  |  |  |  |  |  |  |  |  |  |  |
|  | 6107 | **RHD4-02-002-C011-(IRR)-HDPE Pipes - 160 mm diameter** |  | 2026-08-29 | 2027-09-08 |  |  |  |  |  |  |  |  |  |  |  |  |  |
| RHD4CZ3C011IRR1100 |  | Excavation works for HDPE Pipline 160 mm - (RD-C-1 /1)-Z3-C011-IRR | 2d | 2026-08-29 A | 2027-08-30 | RHD4CZ3C011IRR1104 | 7% | 2d | 2027-02-10 | 2027-02-11 | Skilled labor [14.27 h]; Unskilled Labor [14.27 h]; Equipment Opreator [17.1 h]; Excavator-Poclain [14.27 h]; Dump Truck [2.83 h]; HDPE (160mm Diameter) - TSE - Depth: less than 1.5m [19.6 m] | 2,410.8 | C011 | Z3 | CONS | IRR | Excavation | bef |
| RHD4CZ3C011IRR1200 |  | Bedding works for HDPE Pipline 160 mm - (RD-C-1 /1)-Z3-C011-IRR | 2d | 2026-08-30 A | 2027-09-01 | RHD4CZ3C011IRR1100 | 7% | 2d | 2027-02-13 | 2027-02-14 | Skilled labor [10.67 h]; Unskilled Labor [21.35 h]; Equipment Opreator [21.35 h]; Excavator-Poclain [10.67 h]; Dump Truck [10.67 h]; HDPE (160mm Diameter) - TSE - Depth: less than 1.5m [9.8 m] | 1,205.4 | C011 | Z3 | CONS | IRR | Bedding | bef |
| RHD4CZ3C011IRR1300 |  | Installing for HDPE Pipline 160 mm - (RD-C-1 /1)-Z3-C011-IRR | 2d | 2026-08-31 A | 2027-09-04 | RHD4CZ3C011IRR1200 | 7% | 2d | 2027-02-15 | 2027-02-16 | Unskilled Labor [28.42 h]; Plumber [14.27 h]; Equipment Opreator [14.27 h]; Boom Truck [14.27 h]; HDPE (160mm Diameter) - TSE - Depth: less than 1.5m [88.2 m] | 10,848.6 | C011 | Z3 | CONS | IRR | Installation | bef |
| RHD4CZ3C011IRR1400 |  | Primary Test for HDPE Pipline 160 mm - (RD-C-1 /1)-Z3-C011-IRR | 2d | 2027-09-05 | 2027-09-06 | RHD4CZ3C011IRR1300 |  |  |  |  | Unskilled Labor [4.25 h]; Plumber [4.25 h]; Equipment Opreator [4.25 h]; Water Truck [4.25 h]; HDPE (160mm Diameter) - TSE - Depth: less than 1.5m [39.2 m] | 4,821.6 | C011 | Z3 | CONS | IRR | Primary Test | bef |
| RHD4CZ3C011IRR1500 |  | Backfilling and warning tape works for HDPE Pipline 160 mm - (RD-C-1 /1)-Z3-C011-IRR | 2d | 2027-09-07 | 2027-09-08 | RHD4CZ3C011IRR1400 |  |  |  |  | Skilled labor [10.67 h]; Unskilled Labor [21.35 h]; Equipment Opreator [21.35 h]; Excavator-Poclain [10.67 h]; Dump Truck [10.67 h]; HDPE (160mm Diameter) - TSE - Depth: less than 1.5m [39.2 m] | 4,821.6 | C011 | Z3 | CONS | IRR | Backfilling | bef |
|  | 6111 | **RHD4-02-002-C011-(IRR)-HDPE Pipes - 315 mm diameter** |  | 2026-08-29 | 2027-10-17 |  |  |  |  |  |  |  |  |  |  |  |  |  |
| RHD4CZ3C011IRR1104 |  | Excavation works for HDPE Pipline 315 mm - (RD-C-1 /1)-Z3-C011-IRR | 8d | 2026-08-29 A | 2027-08-28 | RHD4CZ3C011RW3003 FF, RHD4CZ3C011PT1503 | 4% | 10d | 2027-02-01 | 2027-02-09 | Skilled labor [194.94 h]; Unskilled Labor [194.94 h]; Equipment Opreator [233.92 h]; Excavator-Poclain [194.94 h]; Dump Truck [38.99 h]; HDPE (315mm Diameter) - TSE - Depth: less than 1.5m [263.68 m]; HDPE (315mm Diameter) - TSE - Depth: more than 1.51m [7.23 m] | 79,607.99 | C011 | Z3 | CONS | IRR | Excavation | bef |
| RHD4CZ3C011IRR1204 |  | Bedding works for HDPE Pipline 315 mm - (RD-C-1 /1)-Z3-C011-IRR | 10d | 2026-08-30 A | 2027-09-08 | RHD4CZ3C011IRR1104 | 4% | 10d | 2027-02-10 | 2027-02-21 | Skilled labor [147.13 h]; Unskilled Labor [294.15 h]; Equipment Opreator [294.15 h]; Excavator-Poclain [147.13 h]; Dump Truck [147.13 h]; HDPE (315mm Diameter) - TSE - Depth: less than 1.5m [131.84 m]; HDPE (315mm Diameter) - TSE - Depth: more than 1.51m [2.41 m] | 39,412.37 | C011 | Z3 | CONS | IRR | Bedding | bef |
| RHD4CZ3C011IRR1304 |  | Installing for HDPE Pipline 315 mm - (RD-C-1 /1)-Z3-C011-IRR | 16d | 2026-08-31 A | 2027-09-28 | RHD4CZ3C011IRR1204 | 4% | 16d | 2027-02-23 | 2027-03-16 | Unskilled Labor [389.87 h]; Plumber [194.94 h]; Equipment Opreator [194.94 h]; Boom Truck [194.94 h]; HDPE (315mm Diameter) - TSE - Depth: less than 1.5m [1209.59 m]; HDPE (315mm Diameter) - TSE - Depth: more than 1.51m [19.28 m] | 360,676.72 | C011 | Z3 | CONS | IRR | Installation | bef |
| RHD4CZ3C011IRR1404 |  | Primary Test for HDPE Pipline 315 mm - (RD-C-1 /1)-Z3-C011-IRR | 6d | 2027-09-29 | 2027-10-05 | RHD4CZ3C011IRR1304 |  |  |  |  | Unskilled Labor [59.13 h]; Plumber [59.13 h]; Equipment Opreator [59.13 h]; Water Truck [59.13 h]; HDPE (315mm Diameter) - TSE - Depth: less than 1.5m [527.36 m]; HDPE (315mm Diameter) - TSE - Depth: more than 1.51m [9.64 m] | 157,649.48 | C011 | Z3 | CONS | IRR | Primary Test | bef |
| RHD4CZ3C011IRR1504 |  | Backfilling and warning tape works for HDPE Pipline 315 mm - (RD-C-1 /1)-Z3-C011-IRR | 10d | 2027-10-06 | 2027-10-17 | RHD4CZ3C011IRR1404 |  |  |  |  | Skilled labor [147.13 h]; Unskilled Labor [294.15 h]; Equipment Opreator [294.15 h]; Excavator-Poclain [147.13 h]; Dump Truck [147.13 h]; HDPE (315mm Diameter) - TSE - Depth: less than 1.5m [527.36 m]; HDPE (315mm Diameter) - TSE - Depth: more than 1.51m [9.64 m] | 157,649.48 | C011 | Z3 | CONS | IRR | Backfilling | bef |

| ID | WBS | Activity | Duration | Start | Finish | Predecessors | Resources | Cost | RDH4-01-001-Road and Block Names-1 | RDH4-01-001-Zones-1 | RDH4-01-001-Phases-1 | RDH4-01-001-Networks-1 | RDH4-01-001-Work Method-1 | RDH4-01-001-MENEM |
| --- | --- | --- | --- | --- | --- | --- | --- | --- | --- | --- | --- | --- | --- | --- |
|  | 6115 | **RHD4-02-002-C011-(IRR)-Gate Valves (Direct Buried)** |  | 2027-10-18 | 2027-10-26 |  |  |  |  |  |  |  |  |  |
| RHD4CZ3C011IRR3100 |  | Installation for Direct Buried Gate Valves - (RD-C-1 /1)-Z3-C011-IRR | 4d | 2027-10-18 | 2027-10-21 | RHD4CZ3C011IRR1304 SS, RHD4CZ3C011IRR1304 FF, RHD4CZ3C011IRR1300 SS, RHD4CZ3C011IRR1300 FF, RHD4CZ3C011IRR1504 | Unskilled Labor [38.12 h]; Plumber [38.12 h]; Gate valves dia 100 mm - TSE [6.3 nr] | 9,954 | C011 | Z3 | CONS | IRR | Installation | bef |
| RHD4CZ3C011IRR3200 |  | Stem and Service box for Direct Buried Gate Valves - (RD-C-1 /1)-Z3-C011-IRR | 4d | 2027-10-23 | 2027-10-26 | RHD4CZ3C011IRR3100, RHD4CZ3C011IRR1500 | Unskilled Labor [38.12 h]; Plumber [38.12 h]; Gate valves dia 100 mm - TSE [0.7 nr] | 1,106 | C011 | Z3 | CONS | IRR | Stem and Service box | bef |
|  | 6116 | **RHD4-02-002-C011-(IRR)-Butterfly Valve Chamber** |  | 2027-09-09 | 2027-09-18 |  |  |  |  |  |  |  |  |  |
| RHD4CZ3C011IRR2100 |  | Excavation and Bedding for Butterfly Valve Chamber for Irrigation Network - (RD-C-1 /1)-Z3-C011-IRR | 2d | 2027-09-09 | 2027-09-11 | RHD4CZ3C011IRR1500 | Skilled labor [21.78 h]; Unskilled Labor [21.78 h]; Equipment Opreator [4.36 h]; Excavator-Poclain [2.18 h]; Dump Truck [2.18 h]; Valve chambers - TSE [1 nr] | 14,643 | C011 | Z3 | CONS | IRR | Excavation and Bedding | bef |
| RHD4CZ3C011IRR2200 |  | PC works for Butterfly Valve Chamber for Irrigation Network - (RD-C-1 /1)-Z3-C011-IRR | 2d | 2027-09-12 | 2027-09-13 | RHD4CZ3C011IRR2100 | Skilled labor [21.78 h]; Unskilled Labor [43.56 h]; Equipment Opreator [2.18 h]; Concrete Pump [2.18 h]; Valve chambers - TSE [0.4 nr] | 5,857.2 | C011 | Z3 | CONS | IRR | PC Works | bef |
| RHD4CZ3C011IRR2300 |  | Installation for Butterfly Valve Chamber for Irrigation Network - (RD-C-1 /1)-Z3-C011-IRR | 2d | 2027-09-14 | 2027-09-15 | RHD4CZ3C011IRR2200 | Skilled labor [21.78 h]; Unskilled Labor [43.56 h]; Equipment Opreator [4.36 h]; Boom Truck [4.36 h]; Valve chambers - TSE [2.2 nr] | 32,214.6 | C011 | Z3 | CONS | IRR | Installation | bef |
| RHD4CZ3C011IRR2400 |  | Backfilling works for Butterfly Valve Chamber for Irrigation Network - (RD-C-1 /1)-Z3-C011-IRR | 2d | 2027-09-16 | 2027-09-18 | RHD4CZ3C011IRR2300 | Skilled labor [21.78 h]; Unskilled Labor [43.56 h]; Equipment Opreator [4.36 h]; Water Truck [2.18 h]; Dump Truck [2.18 h]; Valve chambers - TSE [0.4 nr] | 5,857.2 | C011 | Z3 | CONS | IRR | Backfilling Works | bef |
|  | 6117 | **RHD4-02-002-C011-(IRR)-Butterfly Valves** |  | 2027-09-16 | 2027-09-20 |  |  |  |  |  |  |  |  |  |
| RHD4CZ3C011IRR3101 |  | Installation for Butterfly Valves for Irrigation Network - (RD-C-1 /1)-Z3-C011-IRR | 2d | 2027-09-16 | 2027-09-18 | RHD4CZ3C011IRR2300 | Unskilled Labor [21.78 h]; Plumber [21.78 h]; Butterfly valves dia 315 - TSE [3.6 nr] | 45,021.6 | C011 | Z3 | CONS | IRR | Installation | bef |
| RHD4CZ3C011IRR3201 |  | Stem and Service box for Butterfly Valves for Irrigation Network - (RD-C-1 /1)-Z3-C011-IRR | 2d | 2027-09-19 | 2027-09-20 | RHD4CZ3C011IRR3101, RHD4CZ3C011IRR2400 | Unskilled Labor [21.78 h]; Plumber [21.78 h]; Butterfly valves dia 315 - TSE [0.4 nr] | 5,002.4 | C011 | Z3 | CONS | IRR | Stem and Service box | bef |
|  | 6685 | **RHD4-02-002-C011-(IRR)-Wash out Chamber** |  | 2027-08-31 | 2027-09-08 |  |  |  |  |  |  |  |  |  |
| RHD4CZ3C011IRR2101 |  | Excavation and Bedding for Wash out Chamber for Irrigation Network - (RD-C-1 /1)-Z3-C011-IRR | 2d | 2027-08-31 | 2027-09-01 | RHD4CZ3C011IRR2102 SS | Skilled labor [5.45 h]; Unskilled Labor [5.45 h]; Equipment Opreator [1.09 h]; Excavator-Poclain [0.54 h]; Dump Truck [0.54 h]; Wash out chambers - TSE [0.25 nr] | 4,686.25 | C011 | Z3 | CONS | IRR | Excavation and Bedding | bef |
| RHD4CZ3C011IRR2201 |  | PC works for Wash out Chamber for Irrigation Network - (RD-C-1 /1)-Z3-C011-IRR | 2d | 2027-09-02 | 2027-09-04 | RHD4CZ3C011IRR2101 | Skilled labor [5.45 h]; Unskilled Labor [10.89 h]; Equipment Opreator [0.54 h]; Concrete Pump [0.54 h]; Wash out chambers - TSE [0.1 nr] | 1,874.5 | C011 | Z3 | CONS | IRR | PC Works | bef |
| RHD4CZ3C011IRR2301 |  | Installation for Wash out Chamber for Irrigation Network - (RD-C-1 /1)-Z3-C011-IRR | 2d | 2027-09-05 | 2027-09-06 | RHD4CZ3C011IRR2201 | Skilled labor [5.45 h]; Unskilled Labor [10.89 h]; Equipment Opreator [1.09 h]; Boom Truck [1.09 h]; Wash out chambers - TSE [0.55 nr] | 10,309.75 | C011 | Z3 | CONS | IRR | Installation | bef |
| RHD4CZ3C011IRR2401 |  | Backfilling works for Wash out Chamber for Irrigation Network - (RD-C-1 /1)-Z3-C011-IRR | 2d | 2027-09-07 | 2027-09-08 | RHD4CZ3C011IRR2301 | Skilled labor [5.45 h]; Unskilled Labor [10.89 h]; Equipment Opreator [1.09 h]; Water Truck [0.54 h]; Dump Truck [0.54 h]; Wash out chambers - TSE [0.1 nr] | 1,874.5 | C011 | Z3 | CONS | IRR | Backfilling Works | bef |
|  | 6686 | **RHD4-02-002-C011-(IRR)-Wash out Valves** |  | 2027-09-07 | 2027-09-11 |  |  |  |  |  |  |  |  |  |
| RHD4CZ3C011IRR3102 |  | Installation for Wash out Valve for Irrigation Network - (RD-C-1 /1)-Z3-C011-IRR | 2d | 2027-09-07 | 2027-09-08 | RHD4CZ3C011IRR2301 | Unskilled Labor [5.45 h]; Plumber [5.45 h]; Wash out valve diameter 100 mm - TSE [0.9 nr] | 3,373.2 | C011 | Z3 | CONS | IRR | Installation | bef |
| RHD4CZ3C011IRR3202 |  | Stem and Service box for Wash out Valve for Irrigation Network - (RD-C-1 /1)-Z3-C011-IRR | 2d | 2027-09-09 | 2027-09-11 | RHD4CZ3C011IRR3102, RHD4CZ3C011IRR2401 | Unskilled Labor [5.45 h]; Plumber [5.45 h]; Wash out valve diameter 100 mm - TSE [0.1 nr] | 374.8 | C011 | Z3 | CONS | IRR | Stem and Service box | bef |
|  | 1769 | **RHD4-02-002-C011-(IRR)-Air Valve Chamber** |  | 2027-08-31 | 2027-09-08 |  |  |  |  |  |  |  |  |  |
| RHD4CZ3C011IRR2102 |  | Excavation and Bedding for Valve Chamber for Irrigation Network - (RD-C-1 /1)-Z3-C011-IRR | 2d | 2027-08-31 | 2027-09-01 | RHD4ENSDZ3APPIRR140, RHD4CZ3C011IRR1100 | Skilled labor [10.89 h]; Unskilled Labor [10.89 h]; Equipment Opreator [2.18 h]; Excavator-Poclain [1.09 h]; Dump Truck [1.09 h]; Air Valve chambers - TSE [0.5 nr] | 2,386 | C011 | Z3 | CONS | IRR | Excavation and Bedding | bef |
| RHD4CZ3C011IRR2202 |  | PC works for Valve Chamber for Irrigation Network - (RD-C-1 /1)-Z3-C011-IRR | 2d | 2027-09-02 | 2027-09-04 | RHD4CZ3C011IRR2102 | Skilled labor [10.89 h]; Unskilled Labor [21.78 h]; Equipment Opreator [1.09 h]; Concrete Pump [1.09 h]; Air Valve chambers - TSE [0.2 nr] | 954.4 | C011 | Z3 | CONS | IRR | PC Works | bef |
| RHD4CZ3C011IRR2302 |  | Installation for Valve Chamber for Irrigation Network - (RD-C-1 /1)-Z3-C011-IRR | 2d | 2027-09-05 | 2027-09-06 | RHD4PRSHLDOSIRR1200, RHD4PRSHLDOSIRR1400, RHD4PRSHLSTAGIRR1200, RHD4PRSHLSTAGIRR1400, RHD4CZ3C011IRR2202 | Skilled labor [10.89 h]; Unskilled Labor [21.78 h]; Equipment Opreator [2.18 h]; Boom Truck [2.18 h]; Air Valve chambers - TSE [1.1 nr] | 5,249.2 | C011 | Z3 | CONS | IRR | Installation | bef |
| RHD4CZ3C011IRR2402 |  | Backfilling works for Valve Chamber for Irrigation Network - (RD-C-1 /1)-Z3-C011-IRR | 2d | 2027-09-07 | 2027-09-08 | RHD4CZ3C011IRR2302 | Skilled labor [10.89 h]; Unskilled Labor [21.78 h]; Equipment Opreator [2.18 h]; Water Truck [1.09 h]; Dump Truck [1.09 h]; Air Valve chambers - TSE [0.2 nr] | 954.4 | C011 | Z3 | CONS | IRR | Backfilling Works | bef |

| ID | WBS | Activity | Duration | Start | Finish | Predecessors | Resources | Cost | RDH4-01-001-Road and Block Names-1 | RDH4-01-001-Zones-1 | RDH4-01-001-Phases-1 | RDH4-01-001-Networks-1 | RDH4-01-001-Work Method-1 | RDH4-01-001-MENEM |
| --- | --- | --- | --- | --- | --- | --- | --- | --- | --- | --- | --- | --- | --- | --- |
|  | 1771 | **RHD4-02-002-C011-(IRR)-Concrete Encasement** |  |  |  |  |  |  |  |  |  |  |  |  |
|  | 1789 | **RHD4-02-002-Z3-C011-Medium Voltage Network - MV** |  | 2027-01-21 | 2027-08-26 |  |  |  |  |  |  |  |  |  |
|  | 1790 | **RHD4-02-002-C011-(MV)-Medium Voltage cable trench** |  | 2027-06-24 | 2027-08-09 |  |  |  |  |  |  |  |  |  |
| RHD4CZ3C011MV1100 |  | Excavation for Medium Voltage Trench - (RD-C-1 /1)-Z3-C011-MV | 12d | 2027-06-24 | 2027-07-07 | RHD4ENSDZ3APPMV150, RHD4CZ3C011MV2100, RHD4CZ1C081MV1100 SS | Skilled labor [68.5 h]; Unskilled Labor [137.11 h]; Equipment Opreator [205.6 h]; Excavator-Poclain [68.5 h]; Dump Truck [137.11 h]; Excavation for Trench size 60cm wide and 80cm deep ( for 2 cables) [16.71 m3]; Excavation for Trench size 180cm wide and 80cm deep (for 6 cables) [1525.5 m3] | 15,422.15 | C011 | Z3 | CONS | MV | Excavation | AFT |
| RHD4CZ3C011MV1200 |  | Trench Backfilling for Medium Voltage Network - (RD-C-1 /1)-Z3-C011-MV | 7d | 2027-08-02 | 2027-08-09 | RHD4CZ3C011MV3200, RHD4CZ3C011MV3101 | Skilled labor [68.5 h]; Unskilled Labor [68.5 h]; Equipment Opreator [137.11 h]; Dump Truck [137.11 h]; Excavation for Trench size 60cm wide and 80cm deep ( for 2 cables) [7.16 m3]; Excavation for Trench size 180cm wide and 80cm deep (for 6 cables) [653.79 m3] | 6,609.53 | C011 | Z3 | CONS | MV | Backfilling | AFT |
|  | 1791 | **RHD4-02-002-C011-(MV)-Medium Voltage duct banks** |  | 2027-01-21 | 2027-02-03 |  |  |  |  |  |  |  |  |  |
| RHD4CZ3C011MV2100 |  | Excavation of Duct Banks for Medium Voltage Network - (RD-C-1 /1)-Z3-C011-MV | 3d | 2027-01-21 | 2027-01-24 | RHD4ENSDZ3APPMV150, RHD4CZ3C011RD1100 | Unskilled Labor [23.09 h]; Equipment Opreator [46.07 h]; Excavator-Poclain [23.09 h]; Dump Truck [23.09 h]; Duct bank for MV cables UPVC (8xø150mm) [3.18 m] | 2,534.46 | C011 | Z3 | CONS | MV | Excavation | bef |
| RHD4CZ3C011MV2200 |  | Installation of Duct Banks for Medium Voltage Network - (RD-C-1 /1)-Z3-C011-MV | 4d | 2027-01-25 | 2027-01-28 | RHD4PRSHLDOSMV1000, RHD4PRSHLSTAGMV1000, RHD4CZ3C011MV2100 | Unskilled Labor [34.63 h]; Equipment Opreator [69.15 h]; Excavator-Poclain [34.63 h]; Dump Truck [34.63 h]; Duct bank for MV cables UPVC (8xø150mm) [3.18 m] | 2,534.46 | C011 | Z3 | CONS | MV | Installing | bef |
| RHD4CZ3C011MV2300 |  | Pouring of Duct Banks for Medium Voltage Network - (RD-C-1 /1)-Z3-C011-MV | 3d | 2027-01-30 | 2027-02-01 | RHD4CZ3C011MV2200 | Unskilled Labor [23.09 h]; Equipment Opreator [46.07 h]; Excavator-Poclain [23.09 h]; Dump Truck [23.09 h]; Duct bank for MV cables UPVC (8xø150mm) [20.64 m] | 16,450.08 | C011 | Z3 | CONS | MV | Pouring | bef |
| RHD4CZ3C011MV2400 |  | Backfilling of Duct Banks for Medium Voltage Network - (RD-C-1 /1)-Z3-C011-MV | 2d | 2027-02-02 | 2027-02-03 | RHD4CZ3C011MV2300 | Unskilled Labor [17.32 h]; Equipment Opreator [34.63 h]; Excavator-Poclain [17.32 h]; Dump Truck [17.32 h]; Duct bank for MV cables UPVC (8xø150mm) [4.76 m] | 3,793.72 | C011 | Z3 | CONS | MV | Backfilling | bef |
|  | 1792 | **RHD4-02-002-C011-(MV)-Medium Voltage cables 3Cx 500 mm²** |  | 2027-07-08 | 2027-08-26 |  |  |  |  |  |  |  |  |  |
| RHD4CZ3C011MV3100 |  | Installation of Medium Voltage Cables 3Cx 500 mm² - (RD-C-1 /1)-Z3-C011-MV | 12d | 2027-07-08 | 2027-07-21 | RHD4PRSHLDOSMV1100, RHD4ENMSMV2000, RHD4ENMSMV2010, RHD4PRSHLSTAGMV1100, RHD4CZ3C011MV1100 | Skilled labor [90.93 h]; Unskilled Labor [363.85 h]; Electrician [181.87 h]; Equipment Opreator [272.8 h]; Boom Truck [90.93 h]; Cable Laying Machine [181.87 h]; Cable 13.8 kV 3Cx 500 mm² Al/XLPE,/LLDPE / Unarmored [12025.8 m] | 1,912,106.78 | C011 | Z3 | CONS | MV | Installation | AFT |
| RHD4CZ3C011MV3200 |  | Joints Installation of Medium Voltage Cables 3Cx 500 mm² - (RD-C-1 /1)-Z3-C011-MV | 9d | 2027-07-22 | 2027-08-01 | RHD4PRSHLDOSMV1300, RHD4PRSHLSTAGMV1300, RHD4CZ3C011MV3100 | Skilled labor [43.56 h]; Unskilled Labor [174.25 h]; Electrician [87.12 h]; Equipment Opreator [43.56 h]; Boom Truck [43.56 h]; Straight joints cables for 13.8 kv 3Cx 500 mm², Al /XLPE/LLDPE [20 Unit] | 64,960 | C011 | Z3 | CONS | MV | Joints Installation | AFT |
| RHD4CZ3C011MV3300 |  | Testing of Medium Voltage Cables 3Cx 500 mm² - (RD-C-1 /1)-Z3-C011-MV | 13d | 2027-08-10 | 2027-08-24 | RHD4CZ3C011MV3200, RHD4CZ3C011MV1200, RHD4CZ3C011MV4200 | Skilled labor [90.93 h]; Unskilled Labor [363.85 h]; Electrician [181.87 h]; Cable 13.8 kV 3Cx 500 mm² Al/XLPE,/LLDPE / Unarmored [1336.2 m] | 212,455.8 | C011 | Z3 | CONS | MV | Testing | AFT |
| RHD4CZ3C011MV3400 |  | Termination of Medium Voltage Cables 3Cx 500 mm² - (RD-C-1 /1)-Z3-C011-MV | 2d | 2027-08-25 | 2027-08-26 | RHD4CZ3C011MV3300, RHD4CZ3C011MV5400 | Unskilled Labor [1.42 h]; Electrician [1.42 h]; Cable Termination for 13.8 kv 3Cx 500 mm², Al /XLPE/LLDPE [6.4 Unit] | 16,864 | C011 | Z3 | CONS | MV | Termination | AFT |
|  | 1793 | **RHD4-02-002-C011-(MV)-Medium Voltage cables 3Cx 50 mm²** |  | 2027-07-08 | 2027-08-18 |  |  |  |  |  |  |  |  |  |
| RHD4CZ3C011MV3101 |  | Installation of Medium Voltage Cables 3Cx 50 mm² - (RD-C-1 /1)-Z3-C011-MV | 2d | 2027-07-08 | 2027-07-10 | RHD4PRSHLDOSMV1200, RHD4ENMSMV2000, RHD4ENMSMV2010, RHD4PRSHLSTAGMV1200, RHD4CZ3C011MV1100 | Unskilled Labor [1.74 h]; Electrician [0.87 h]; Equipment Opreator [1.31 h]; Boom Truck [0.44 h]; Cable Laying Machine [0.87 h]; Single Core Copper Cable 13.8 kV 3Cx 50 mm² Cu/XLPE/PVC / Unarmored [3.6 m] | 403.2 | C011 | Z3 | CONS | MV | Installation | AFT |
| RHD4CZ3C011MV3301 |  | Testing of Medium Voltage Cables 3Cx 50 mm² - (RD-C-1 /1)-Z3-C011-MV | 2d | 2027-08-10 | 2027-08-11 | RHD4CZ3C011MV3101, RHD4CZ3C011MV1200 | Unskilled Labor [0.33 h]; Electrician [0.22 h]; Single Core Copper Cable 13.8 kV 3Cx 50 mm² Cu/XLPE/PVC / Unarmored [0.4 m] | 44.8 | C011 | Z3 | CONS | MV | Testing | AFT |
| RHD4CZ3C011MV3401 |  | Termination of Medium Voltage Cables 3Cx 50 mm² - (RD-C-1 /1)-Z3-C011-MV | 2d | 2027-08-17 | 2027-08-18 | RHD4CZ3C011MV3301, RHD4CZ3C011MV5400 | Unskilled Labor [23.2 h]; Electrician [11.65 h]; Cable Termination for 13.8 kv 3Cx 500 mm², Al /XLPE/LLDPE [1.6 Unit] | 4,216 | C011 | Z3 | CONS | MV | Termination | AFT |
|  | 1794 | **RHD4-02-002-C011-(MV)-Normally open Point (Outdoor Type)** |  | 2027-07-20 | 2027-07-24 |  |  |  |  |  |  |  |  |  |
| RHD4CZ3C011MV4100 |  | Installation for Normally open Point - (RD-C-1 /1)-Z3-C011-MV | 2d | 2027-07-20 | 2027-07-21 | RHD4PRSHLDOSMV1400, RHD4PRSHLSTAGMV1400, RHD4CZ3C011MV3101 SS, RHD4CZ3C011MV3100 FF | Unskilled Labor [0.11 h]; Equipment Opreator [0.22 h]; Excavator-Poclain [0.11 h]; Dump Truck [0.11 h]; Normally Open Point 13.8 KV Outdoor type [0.9 Unit] | 77,219.1 | C011 | Z3 | CONS | MV | Installation | AFT |
| RHD4CZ3C011MV4200 |  | Termination for Normally open Point - (RD-C-1 /1)-Z3-C011-MV | 2d | 2027-07-22 | 2027-07-24 | RHD4CZ3C011MV4100 | Unskilled Labor [3.59 h]; Equipment Opreator [7.3 h]; Excavator-Poclain [3.59 h]; Dump Truck [3.59 h]; Normally Open Point 13.8 KV Outdoor type [0.1 Unit] | 8,579.9 | C011 | Z3 | CONS | MV | Termination | AFT |
|  | 1795 | **RHD4-02-002-C011-(MV)-Unit Substations** |  | 2027-08-02 | 2027-08-16 |  |  |  |  |  |  |  |  |  |
| RHD4CZ3C011MV5100 |  | Excavation for Unit Substations for Medium Voltage Network - (RD-C-1 /1)-Z3-C011-MV | 2d | 2027-08-02 | 2027-08-03 | RHD4ENSDZ3APPMV150, RHD4CZ3C011MV1200 SS | Skilled labor [21.78 h]; Unskilled Labor [21.78 h]; Equipment Opreator [43.56 h]; Excavator-Poclain [21.78 h]; Dump Truck [21.78 h]; Unit Substation 13.8/0.4 K V, 500kVA ,Including concrete foundations and fencing, According to the specifications and standards of SEC [0.1 Unit]; Ring Main Unit RMU, 13.8KV, According to the specifications and standards of SEC [0.1 Unit] | 12,257 | C011 | Z3 | CONS | MV | Excavation | AFT |
| RHD4CZ3C011MV5200 |  | Concrete Base Placement for Unit Substations for Medium Voltage Network - (RD-C-1 /1)-Z3-C011-MV | 2d | 2027-08-04 | 2027-08-05 | RHD4CZ3C011MV5100 | Skilled labor [21.78 h]; Unskilled Labor [21.78 h]; Equipment Opreator [21.78 h]; Boom Truck [21.78 h]; Unit Substation 13.8/0.4 K V, 500kVA ,Including concrete foundations and fencing, According to the specifications and standards of SEC [0.15 Unit]; Ring Main Unit RMU, 13.8KV, According to the specifications and standards of SEC [0.15 Unit] | 18,385.5 | C011 | Z3 | CONS | MV | Concrete Base Placement | AFT |
| RHD4CZ3C011MV5300 |  | Installation for Fences and doors for Medium Voltage Network - (RD-C-1 /1)-Z3-C011-MV | 5d | 2027-08-07 | 2027-08-11 | RHD4CZ3C011MV5200 | Skilled labor [54.45 h]; Unskilled Labor [54.45 h]; Equipment Opreator [65.34 h]; Excavator-Poclain [10.89 h]; Boom Truck [54.45 h]; Unit Substation 13.8/0.4 K V, 500kVA ,Including concrete foundations and fencing, According to the specifications and standards of SEC [0.1 Unit]; Ring Main Unit RMU, 13.8KV, According to the specifications and standards of SEC [0.1 Unit] | 12,257 | C011 | Z3 | CONS | MV | Fence Installation | AFT |
| RHD4CZ3C011MV5400 |  | Installation for Unit Substations for Medium Voltage Network - (RD-C-1 /1)-Z3-C011-MV | 4d | 2027-08-12 | 2027-08-16 | RHD4PRLOLSTAGMV1601, RHD4PRLOLSTAGMV1602, RHD4CZ3C011MV5300, RHD4CZ4L09SL5200 | Skilled labor [43.56 h]; Unskilled Labor [87.12 h]; Electrician [87.12 h]; Unit Substation 13.8/0.4 K V, 500kVA ,Including concrete foundations and fencing, According to the specifications and standards of SEC [0.65 Unit]; Ring Main Unit RMU, 13.8KV, According to the specifications and standards of SEC [0.65 Unit] | 79,670.5 | C011 | Z3 | CONS | MV | Substation Installation | AFT |

| ID | WBS | Activity | Duration | Start | Finish | Predecessors | Complete | Planned start | Planned finish | Resources | Cost | Actual cost | RDH4-01-001-Road and Block Names-1 | RDH4-01-001-Zones-1 | RDH4-01-001-Phases-1 | RDH4-01-001-Networks-1 | RDH4-01-001-Work Method-1 | RDH4-01-001-MENEM |
| --- | --- | --- | --- | --- | --- | --- | --- | --- | --- | --- | --- | --- | --- | --- | --- | --- | --- | --- |
|  | 1796 | **RHD4-02-002-Z3-C011-Low Voltage Network - LV** |  | 2027-08-10 | 2027-09-08 |  |  |  |  |  |  |  |  |  |  |  |  |  |
|  | 1797 | **RHD4-02-002-C011-(LV)-Low Voltage duct banks** |  | 2027-08-10 | 2027-08-23 |  |  |  |  |  |  |  |  |  |  |  |  |  |
| RHD4CZ3C011LV2100 |  | Excavation of Duct Banks for Low Voltage Network - (RD-C-1 /1)-Z3-C011-LV | 3d | 2027-08-10 | 2027-08-12 | RHD4ENSDZ3APPLV160, RHD4CZ3C011RW3003, RHD4CZ3C011PT3203 |  |  |  | Skilled labor [22 h]; Unskilled Labor [22 h]; Equipment Opreator [44 h]; Excavator-Poclain [22 h]; Dump Truck [22 h]; Duct bank for LV cables UPVC (2xø110mm) [3.03 m] | 612.06 |  | C011 | Z3 | CONS | LV | Excavation | bef |
| RHD4CZ3C011LV2200 |  | Installation of Duct Banks for Low Voltage Network - (RD-C-1 /1)-Z3-C011-LV | 4d | 2027-08-14 | 2027-08-17 | RHD4PRSHLDOSLV1000, RHD4PRSHLSTAGLV1000, RHD4CZ3C011LV2100 |  |  |  | Carpenter [3.27 h]; Skilled labor [33 h]; Unskilled Labor [33 h]; Steel Fixer [3.27 h]; Duct bank for LV cables UPVC (2xø110mm) [3.03 m] | 612.06 |  | C011 | Z3 | CONS | LV | Installing | bef |
| RHD4CZ3C011LV2300 |  | Pouring of Duct Banks for Low Voltage Network - (RD-C-1 /1)-Z3-C011-LV | 3d | 2027-08-18 | 2027-08-21 | RHD4CZ3C011LV2200 |  |  |  | Skilled labor [22 h]; Unskilled Labor [22 h]; Equipment Opreator [8.8 h]; Concrete Mixer Truck [4.36 h]; Concrete Pump [4.36 h]; Duct bank for LV cables UPVC (2xø110mm) [19.7 m] | 3,979.4 |  | C011 | Z3 | CONS | LV | Pouring | bef |
| RHD4CZ3C011LV2400 |  | Backfilling of Duct Banks for Low Voltage Network - (RD-C-1 /1)-Z3-C011-LV | 2d | 2027-08-22 | 2027-08-23 | RHD4CZ3C011LV2300 |  |  |  | Skilled labor [16.55 h]; Unskilled Labor [16.55 h]; Equipment Opreator [6.64 h]; Excavator-Poclain [6.64 h]; Duct bank for LV cables UPVC (2xø110mm) [4.55 m] | 919.1 |  | C011 | Z3 | CONS | LV | Backfilling | bef |
|  | 1799 | **RHD4-02-002-C011-(LV)-Low Voltage cables** |  | 2027-08-24 | 2027-09-01 |  |  |  |  |  |  |  |  |  |  |  |  |  |
| RHD4CZ3C011LV3100 |  | Excavation for Low Voltage Cables for Low Voltage Network - (RD-C-1 /1)-Z3-C011-LV | 2d | 2027-08-24 | 2027-08-25 | RHD4ENSDZ3APPLV160, RHD4CZ3C011LV2400, RHD4CZ3C011MV1200 |  |  |  | Skilled labor [17.53 h]; Unskilled Labor [35.2 h]; Equipment Opreator [35.2 h]; Excavator-Poclain [17.53 h]; Boom Truck [17.53 h]; Cable, Copper 4x185mm2/ CU/XLPE/PVC [6.14 m]; Cable, Copper 4x70mm2/ CU/XLPE/PVC [72.76 m]; Cable, Copper 4x50mm2/ CU/XLPE/PVC +1x25mm2 CU/PVC [1.81 m] | 14,890.67 |  | C011 | Z3 | CONS | LV | Excavation | AFT |
| RHD4CZ3C011LV3200 |  | Cable Laying of Low Voltage Cables for Low Voltage Network - (RD-C-1 /1)-Z3-C011-LV | 2d | 2027-08-26 | 2027-08-28 | RHD4PRSHLDOSLV1100, RHD4ENMSLV2000, RHD4ENMSLV2010, RHD4PRSHLSTAGLV1100, RHD4CZ3C011LV3100 |  |  |  | Skilled labor [14.7 h]; Unskilled Labor [58.59 h]; Electrician [29.3 h]; Equipment Opreator [44 h]; Boom Truck [14.7 h]; Cable Laying Machine [29.3 h]; Cable, Copper 4x185mm2/ CU/XLPE/PVC [18.43 m]; Cable, Copper 4x70mm2/ CU/XLPE/PVC [218.28 m]; Cable, Copper 4x50mm2/ CU/XLPE/PVC +1x25mm2 CU/PVC [5.44 m] | 44,672 |  | C011 | Z3 | CONS | LV | Cable Laying | AFT |
| RHD4CZ3C011LV3300 |  | Warning tape and Backfill for Low Voltage Cables for Low Voltage Network - (RD-C-1 /1)-Z3-C011-LV | 2d | 2027-08-29 | 2027-08-30 | RHD4CZ3C011LV3200 |  |  |  | Skilled labor [14.7 h]; Unskilled Labor [58.59 h]; Electrician [29.3 h]; Equipment Opreator [14.7 h]; Boom Truck [14.7 h]; Cable, Copper 4x185mm2/ CU/XLPE/PVC [4.61 m]; Cable, Copper 4x70mm2/ CU/XLPE/PVC [54.57 m]; Cable, Copper 4x50mm2/ CU/XLPE/PVC +1x25mm2 CU/PVC [1.36 m] | 11,168 |  | C011 | Z3 | CONS | LV | Warning tape and Backfill | AFT |
| RHD4CZ3C011LV3400 |  | Testing of Low Voltage Cables for Low Voltage Network - (RD-C-1 /1)-Z3-C011-LV | 2d | 2027-08-31 | 2027-09-01 | RHD4CZ3C011LV3300 |  |  |  | Skilled labor [8.8 h]; Unskilled Labor [35.2 h]; Electrician [17.53 h]; Equipment Opreator [8.8 h]; Boom Truck [8.8 h]; Cable, Copper 4x185mm2/ CU/XLPE/PVC [1.54 m]; Cable, Copper 4x70mm2/ CU/XLPE/PVC [18.19 m]; Cable, Copper 4x50mm2/ CU/XLPE/PVC +1x25mm2 CU/PVC [0.45 m] | 3,722.67 |  | C011 | Z3 | CONS | LV | Testing | AFT |
|  | 1800 | **RHD4-02-002-C011-(LV)-Low Voltage Distribution Pillars** |  | 2027-09-02 | 2027-09-08 |  |  |  |  |  |  |  |  |  |  |  |  |  |
| RHD4CZ3C011LV4100 |  | Leveling for Distribution Pillars for Low Voltage Network - (RD-C-1 /1)-Z3-C011-LV | 2d | 2027-09-02 | 2027-09-04 | RHD4CZ3C011LV3300, RHD4CZ3C011LV3400 |  |  |  | Skilled labor [16.34 h]; Unskilled Labor [32.67 h]; Equipment Opreator [6.53 h]; Excavator-Poclain [3.27 h]; Boom Truck [3.27 h]; 0.6/1 KV Low Voltage Distribution Pillars with main breaker MCCB type and 5 Outgoing feeders MCCB type [0.15 Unit]; Supply and installation of KWH meter mounting frame including concrete block wall for installation of KWH meter according to the standards and specifications of SEC [0.3 Unit] | 3,796.65 |  | C011 | Z3 | CONS | LV | Leveling | AFT |
| RHD4CZ3C011LV4200 |  | Lean Concrete for Distribution Pillars for Low Voltage Network - (RD-C-1 /1)-Z3-C011-LV | 2d | 2027-09-05 | 2027-09-06 | RHD4CZ3C011LV4100 |  |  |  | Skilled labor [10.89 h]; Unskilled Labor [21.78 h]; Equipment Opreator [4.36 h]; Concrete Mixer Truck [2.18 h]; Concrete Pump [2.18 h]; 0.6/1 KV Low Voltage Distribution Pillars with main breaker MCCB type and 5 Outgoing feeders MCCB type [0.25 Unit]; Supply and installation of KWH meter mounting frame including concrete block wall for installation of KWH meter according to the standards and specifications of SEC [0.5 Unit] | 6,327.75 |  | C011 | Z3 | CONS | LV | Lean Concrete | AFT |
| RHD4CZ3C011LV4300 |  | Installation of Distribution Pillars for Low Voltage Network - (RD-C-1 /1)-Z3-C011-LV | 2d | 2027-09-07 | 2027-09-08 | RHD4PRSHLDOSLV1200, RHD4PRSHLDOSLV1300, RHD4PRSHLSTAGLV1200, RHD4PRSHLSTAGLV1300, RHD4CZ3C011LV4200, RHD4CZ3C011MV3401 |  |  |  | Skilled labor [16.34 h]; Unskilled Labor [65.34 h]; Electrician [32.67 h]; Equipment Opreator [16.34 h]; Boom Truck [16.34 h]; 0.6/1 KV Low Voltage Distribution Pillars with main breaker MCCB type and 5 Outgoing feeders MCCB type [0.6 Unit]; Supply and installation of KWH meter mounting frame including concrete block wall for installation of KWH meter according to the standards and specifications of SEC [1.2 Unit] | 15,186.6 |  | C011 | Z3 | CONS | LV | Installation | AFT |
|  | 1801 | **RHD4-02-002-C011-(LV)-Low Voltage Distribution Pillars Earthing** |  |  |  |  |  |  |  |  |  |  |  |  |  |  |  |  |
|  | 1802 | **RHD4-02-002-Z3-C011-Street Lighting Network - SL** |  | 2026-08-23 | 2028-01-17 |  |  |  |  |  |  |  |  |  |  |  |  |  |
|  | 1803 | **RHD4-02-002-C011-(SL)-Street Lighting duct banks** |  | 2026-08-23 | 2026-09-03 |  |  |  |  |  |  |  |  |  |  |  |  |  |
| RHD4CZ3C011SL2100 |  | Excavation of Duct Banks for Street Lighting Network - (RD-C-1 /1)-Z3-C011-SL | 5d | 2026-08-23 A | 2026-08-27 A | RHD4ENSDZ3APPSL170, RHD4CZ3C011LV2100, RHD4CZ3C011PT3203 | 100% | 2027-01-31 | 2027-02-04 | Skilled labor [50.1 h]; Unskilled Labor [50.1 h]; Equipment Opreator [100.3 h]; Excavator-Poclain [50.1 h]; Dump Truck [50.1 h]; Road Crossing Duct for Street Lighting cables UPVC (2x?110mm) [5.55 m]; Road Crossing Duct for Street Lighting cables UPVC (6x?110mm) [1.36 m] | 1,646.88 | 1,646.88 | C011 | Z3 | CONS | SL | Excavation | bef |
| RHD4CZ3C011SL2200 |  | Installation of Duct Banks for Street Lighting Network - (RD-C-1 /1)-Z3-C011-SL | 7d | 2026-08-25 A | 2026-09-01 A | RHD4PRSHLDOSSL1000, RHD4PRSHLSTAGSL1000, RHD4CZ3C011SL2100, RHD4CZ3C011LV2200 | 100% | 2027-02-06 | 2027-02-13 | Carpenter [7.51 h]; Skilled labor [75.14 h]; Unskilled Labor [75.14 h]; Steel Fixer [7.51 h]; Road Crossing Duct for Street Lighting cables UPVC (2x?110mm) [5.55 m]; Road Crossing Duct for Street Lighting cables UPVC (6x?110mm) [1.36 m] | 1,646.88 | 1,646.88 | C011 | Z3 | CONS | SL | Installing | bef |
| RHD4CZ3C011SL2300 |  | Pouring of Duct Banks for Street Lighting Network - (RD-C-1 /1)-Z3-C011-SL | 2d | 2026-09-01 A | 2026-09-02 A | RHD4CZ3C011SL2200, RHD4CZ3C011LV2300 | 100% | 2027-02-14 | 2027-02-15 | Skilled labor [50.1 h]; Unskilled Labor [50.1 h]; Equipment Opreator [20 h]; Concrete Mixer Truck [10.02 h]; Concrete Pump [10.02 h]; Road Crossing Duct for Street Lighting cables UPVC (2x?110mm) [36.06 m]; Road Crossing Duct for Street Lighting cables UPVC (6x?110mm) [8.82 m] | 10,697.01 | 10,697.01 | C011 | Z3 | CONS | SL | Pouring | bef |
| RHD4CZ3C011SL2400 |  | Backfilling of Duct Banks for Street Lighting Network - (RD-C-1 /1)-Z3-C011-SL | 2d | 2026-09-02 A | 2026-09-03 A | RHD4CZ3C011SL2300, RHD4CZ3C011LV2400, RHD4CZ3C011ST4600 | 100% | 2027-02-16 | 2027-02-17 | Skilled labor [37.6 h]; Unskilled Labor [37.6 h]; Equipment Opreator [15.03 h]; Excavator-Poclain [15.03 h]; Road Crossing Duct for Street Lighting cables UPVC (2x?110mm) [8.32 m]; Road Crossing Duct for Street Lighting cables UPVC (6x?110mm) [2.03 m] | 2,466.46 | 2,466.46 | C011 | Z3 | CONS | SL | Backfilling | bef |
|  | 1804 | **RHD4-02-002-C011-(SL)-Street Lighting Drawpit** |  | 2027-08-28 | 2027-09-02 |  |  |  |  |  |  |  |  |  |  |  |  |  |
| RHD4CZ3C011SL5100 |  | Excavation of Drawpit size 600x600x900mm for Street Lighting Network - (RD-C-1 /1)-Z3-C011-SL | 2d | 2027-08-28 | 2027-08-29 | RHD4ENSDZ3APPSL170, RHD4CZ3C011SL2300, RHD4CZ3C011MV3400 |  |  |  | Skilled labor [7.3 h]; Unskilled Labor [7.3 h]; Equipment Opreator [5.77 h]; Excavator-Poclain [2.94 h]; Dump Truck [2.94 h]; Drawpit with medium duty steel cover, size600x600x900mm, [1.2 Unit] | 2,941.2 |  | C011 | Z3 | CONS | SL | Excavation | AFT |
| RHD4CZ3C011SL5200 |  | Installation of Drawpit size 600x600x900mm for Street Lighting Network - (RD-C-1 /1)-Z3-C011-SL | 4d | 2027-08-30 | 2027-09-02 | RHD4PRSHLDOSSL1400, RHD4PRSHLSTAGSL1400, RHD4CZ3C011SL5100 |  |  |  | Skilled labor [7.3 h]; Unskilled Labor [7.3 h]; Equipment Opreator [2.94 h]; Boom Truck [2.94 h]; Drawpit with medium duty steel cover, size600x600x900mm, [6.8 Unit] | 16,666.8 |  | C011 | Z3 | CONS | SL | Installation | AFT |

| ID | WBS | Activity | Duration | Start | Finish | Predecessors | Complete | Remaining | Planned start | Planned finish | Resources | Cost | RDH4-01-001-Road and Block Names-1 | RDH4-01-001-Zones-1 | RDH4-01-001-Phases-1 | RDH4-01-001-Networks-1 | RDH4-01-001-Work Method-1 | RDH4-01-001-MENEM |
| --- | --- | --- | --- | --- | --- | --- | --- | --- | --- | --- | --- | --- | --- | --- | --- | --- | --- | --- |
|  | 1805 | **RHD4-02-002-C011-(SL)-Street Lighting cables** |  | 2027-10-23 | 2027-12-23 |  |  |  |  |  |  |  |  |  |  |  |  |  |
| RHD4CZ3C011SL3100 |  | Excavation for Street Lighting Cables for Street Lighting Network - (RD-C-1 /1)-Z3-C011-SL | 14d | 2027-10-23 | 2027-11-07 | RHD4ENSDZ3APPSL170, RHD4CZ3C011SL1300, RHD4CZ3L122MV3301 |  |  |  |  | Skilled labor [145.6 h]; Unskilled Labor [291.32 h]; Equipment Opreator [291.32 h]; Excavator-Poclain [145.6 h]; Boom Truck [145.6 h]; Cable, Copper 4x10mm2/ CU/XLPE/SWA/PVC + 1x10mm2 CU/PVC [668.67 m] | 32,764.68 | C011 | Z3 | CONS | SL | Excavation | AFT |
| RHD4CZ3C011SL3200 |  | Cable Laying of Street Lighting Cables for Street Lighting Network - (RD-C-1 /1)-Z3-C011-SL | 12d | 2027-11-08 | 2027-11-21 | RHD4PRSHLDOSSL1100, RHD4ENMSSL2000, RHD4ENMSSL2010, RHD4PRSHLSTAGSL1100, RHD4CZ3C011SL3100, RHD4CZ5RA07RD7100, RHD4CZ3C011IRR3200 |  |  |  |  | Skilled labor [121.32 h]; Unskilled Labor [485.49 h]; Electrician [242.75 h]; Equipment Opreator [364.06 h]; Boom Truck [121.32 h]; Cable Laying Machine [242.75 h]; Cable, Copper 4x10mm2/ CU/XLPE/SWA/PVC + 1x10mm2 CU/PVC [2006 m] | 98,294 | C011 | Z3 | CONS | SL | Cable Laying | AFT |
| RHD4CZ3C011SL3300 |  | Warning tape and Backfill for Street Lighting Cables for Street Lighting Network - (RD-C-1 /1)-Z3-C011-SL | 12d | 2027-11-22 | 2027-12-05 | RHD4CZ3C011SL3200 |  |  |  |  | Skilled labor [121.32 h]; Unskilled Labor [485.49 h]; Electrician [242.75 h]; Equipment Opreator [121.32 h]; Boom Truck [121.32 h]; Cable, Copper 4x10mm2/ CU/XLPE/SWA/PVC + 1x10mm2 CU/PVC [501.5 m] | 24,573.5 | C011 | Z3 | CONS | SL | Warning tape and Backfill | AFT |
| RHD4CZ3C011SL3400 |  | Testing of Street Lighting Cables for Street Lighting Network - (RD-C-1 /1)-Z3-C011-SL | 7d | 2027-12-16 | 2027-12-23 | RHD4CZ3C011SL3300, RHD4CZ3C011LV3400, RHD4CZ3L122LV3400, RHD4CZ3L122LV4300, RHD4CZ2C082ST4600, RHD4CZ9L02TC5200 |  |  |  |  | Skilled labor [72.86 h]; Unskilled Labor [291.32 h]; Electrician [145.6 h]; Equipment Opreator [72.86 h]; Boom Truck [72.86 h]; Cable, Copper 4x10mm2/ CU/XLPE/SWA/PVC + 1x10mm2 CU/PVC [167.17 m] | 8,191.17 | C011 | Z3 | CONS | SL | Testing | AFT |
|  | 1806 | **RHD4-02-002-C011-(SL)-Street Lighting Poles** |  | 2027-09-14 | 2028-01-17 |  |  |  |  |  |  |  |  |  |  |  |  |  |
| RHD4CZ3C011SL1100 |  | Excavation for RC Base for Lighting Poles for Street Lighting Network - (RD-C-1 /1)-Z3-C011-SL | 6d | 2027-09-14 | 2027-09-20 | RHD4ENSDZ3APPSL170, RHD4CZ3C011SL2400, RHD4CZ3C011MV1200, RHD4CZ3C011IRR3203, RHD4CZ3C011MV3400 |  |  |  |  | Skilled labor [64.58 h]; Unskilled Labor [64.58 h]; Equipment Opreator [129.27 h]; Excavator-Poclain [64.58 h]; Dump Truck [64.58 h]; Lighting polesdouble arms, height of ( 12 ) meters [8.9 Unit] | 40,690.8 | C011 | Z3 | CONS | SL | Excavation | AFT |
| RHD4CZ3C011SL1200 |  | Installation for RC Base for Lighting Poles for Street Lighting Network - (RD-C-1 /1)-Z3-C011-SL | 6d | 2027-09-21 | 2027-09-28 | RHD4CZ3C011SL1100, RHD4CZ3C011SL5200 |  |  |  |  | Skilled labor [64.58 h]; Unskilled Labor [64.58 h]; Equipment Opreator [129.27 h]; Excavator-Poclain [64.58 h]; Dump Truck [64.58 h]; Lighting polesdouble arms, height of ( 12 ) meters [22.25 Unit] | 101,727 | C011 | Z3 | CONS | SL | RC Base | AFT |
| RHD4CZ3C011SL1300 |  | Backfill for RC Base for Lighting Poles for Street Lighting Network - (RD-C-1 /1)-Z3-C011-SL | 6d | 2027-09-29 | 2027-10-05 | RHD4CZ3C011SL1200 |  |  |  |  | Skilled labor [64.58 h]; Unskilled Labor [64.58 h]; Equipment Opreator [129.27 h]; Excavator-Poclain [64.58 h]; Dump Truck [64.58 h]; Lighting polesdouble arms, height of ( 12 ) meters [4.45 Unit] | 20,345.4 | C011 | Z3 | CONS | SL | Backfill | AFT |
| RHD4CZ3C011SL1400 |  | Installation for Lighting Poles for Street Lighting Network - (RD-C-1 /1)-Z3-C011-SL | 9d | 2027-12-25 | 2028-01-03 | RHD4PRSHLDOSSL1200, RHD4ENMSSL2000, RHD4ENMSSL2010, RHD4PRSHLSTAGSL1200, RHD4CZ3C011SL1300, RHD4CZ3C011SL3400, RHD4CZ3C011LV4300, RHD4CZ3C083CCTV6100, RHD4CZ7C032CCTV4200 |  |  |  |  | Skilled labor [96.92 h]; Unskilled Labor [96.92 h]; Electrician [96.92 h]; Equipment Opreator [96.92 h]; Boom Truck [96.92 h]; Lighting polesdouble arms, height of ( 12 ) meters [53.18 Unit] | 243,148.1 | C011 | Z3 | CONS | SL | Poles Installation | AFT |
| RHD4CZ3C011SL1500 |  | Luminaire Installation for Lighting Poles for Street Lighting Network - (RD-C-1 /1)-Z3-C011-SL | 12d | 2028-01-04 | 2028-01-17 | RHD4PRSHLDOSSL1300, RHD4PRSHLSTAGSL1300, RHD4CZ3C011SL1400 |  |  |  |  | Unskilled Labor [258.4 h]; Electrician [129.27 h]; Equipment Opreator [51.73 h]; Boom Truck [51.73 h]; Street Lighting( LED) Luminaire of Output ?18553 lumen [178 Unit] | 113,386 | C011 | Z3 | CONS | SL | Luminaire Installation | AFT |
|  | 1807 | **RHD4-02-002-C011-(SL)-Street Lighting Feeder Pillars** |  | 2027-12-06 | 2028-01-05 |  |  |  |  |  |  |  |  |  |  |  |  |  |
| RHD4CZ3C011SL4100 |  | Leveling for Distribution Pillars for Street Lighting Network - (RD-C-1 /1)-Z3-C011-SL | 2d | 2027-12-06 | 2027-12-07 | RHD4CZ3C011SL3300, RHD4CZ3C011LV4100 |  |  |  |  | Skilled labor [10.89 h]; Unskilled Labor [21.78 h]; Equipment Opreator [4.36 h]; Excavator-Poclain [2.18 h]; Boom Truck [2.18 h]; 0.6/1 KV Steet Lighting Feeder Pillar [0.15 Unit] | 3,438.15 | C011 | Z3 | CONS | SL | Leveling | AFT |
| RHD4CZ3C011SL4200 |  | Lean Concrete for Distribution Pillars for Street Lighting Network - (RD-C-1 /1)-Z3-C011-SL | 2d | 2027-12-08 | 2027-12-09 | RHD4CZ3C011SL4100 |  |  |  |  | Skilled labor [10.89 h]; Unskilled Labor [21.78 h]; Equipment Opreator [4.36 h]; Concrete Mixer Truck [2.18 h]; Concrete Pump [2.18 h]; 0.6/1 KV Steet Lighting Feeder Pillar [0.25 Unit] | 5,730.25 | C011 | Z3 | CONS | SL | Lean Concrete | AFT |
| RHD4CZ3C011SL4300 |  | Installation of Distribution Pillars for Street Lighting Network - (RD-C-1 /1)-Z3-C011-SL | 2d | 2028-01-04 | 2028-01-05 | RHD4CZ3C011SL4200, RHD4CZ3C011SL1400 |  |  |  |  | Skilled labor [10.89 h]; Unskilled Labor [43.56 h]; Electrician [21.78 h]; Equipment Opreator [10.89 h]; Boom Truck [10.89 h]; 0.6/1 KV Steet Lighting Feeder Pillar [0.6 Unit] | 13,752.6 | C011 | Z3 | CONS | SL | Installation | AFT |
|  | 1808 | **RHD4-02-002-C011-(SL)-Street Lighting Earthing System** |  | 2028-01-06 | 2028-01-08 |  |  |  |  |  |  |  |  |  |  |  |  |  |
| RHD4CZ3C011SL6100 |  | Installation of Earthing for Lighting Poles and Fedder Pillers for Street Lighting Network - (RD-C-1 /1)-Z3-C011-SL | 2d | 2028-01-06 | 2028-01-08 | RHD4ENMSER2000, RHD4ENMSER2010, RHD4CZ3C011SL4300 |  |  |  |  | Skilled labor [2.94 h]; Unskilled Labor [2.94 h]; Equipment Opreator [5.77 h]; Excavator-Poclain [2.94 h]; Dump Truck [2.94 h]; Street Lighting Feeder pillars - ER [1 Unit]; Including lighting poles circuits - ER [3 Unit] | 2,967 | C011 | Z3 | CONS | SL | Installation | AFT |
|  | 1814 | **RHD4-02-002-Z3-C011-Telecommunications Network - TC** |  | 2026-08-25 | 2028-07-03 |  |  |  |  |  |  |  |  |  |  |  |  |  |
|  | 1815 | **RHD4-02-002-C011-(TC)-Telecommunications Ducts** |  | 2026-08-25 | 2028-07-03 |  |  |  |  |  |  |  |  |  |  |  |  |  |
| RHD4CZ3C011TC2100 |  | Excavation of HDPE Ducts for Telecom Network - (RD-C-1 /1)-Z3-C011-TC | 3d | 2026-08-25 A | 2028-04-13 | RHD4ENSDZ3APPTC190, RHD4CZ3C011SL4300, RHD4CZ3C083RD5100, RHD4CZ7RA03CCTV1500, RHD4CZ7L015CCTV2100, RHD4CZ7L015RD3200, RHD4CZ8C014ICT5200 | 1% | 3d | 2027-10-09 | 2027-10-11 | Skilled labor [213.02 h]; Unskilled Labor [213.02 h]; Equipment Opreator [426.03 h]; Excavator-Poclain [213.02 h]; Dump Truck [213.02 h]; (6*50mm) HDPE ducts -TC [563.08 m]; (6*50mm+2*32mm) HDPE ducts -TC [19.42 m]; (2*32mm) HDPE ducts -TC [4.36 m] | 51,816.06 | C011 | Z3 | CONS | TC | Excavation | AFT |
| RHD4CZ3C011TC2200 |  | Installation of HDPE Ducts for Telecom Network - (RD-C-1 /1)-Z3-C011-TC | 3d | 2026-08-29 A | 2028-04-17 | RHD4PRSHLDOSTC1000, RHD4PRSHLSTAGTC1000, RHD4CZ3C011TC2100 | 1% | 3d | 2027-10-12 | 2027-10-14 | Carpenter [13.6 h]; Skilled labor [135.58 h]; Unskilled Labor [135.58 h]; Steel Fixer [13.6 h]; (6*50mm) HDPE ducts -TC [1830.01 m]; (6*50mm+2*32mm) HDPE ducts -TC [63.12 m]; (2*32mm) HDPE ducts -TC [14.17 m] | 168,402.2 | C011 | Z3 | CONS | TC | Installing | AFT |
| RHD4CZ3C011TC2400 |  | Backfilling of HDPE Ducts for Telecom Network - (RD-C-1 /1)-Z3-C011-TC | 3d | 2026-09-01 A | 2028-07-03 | RHD4CZ3C011TC2200, RHD4CZ3C011TC5200, RHD4HOASSWL1APP1300, RHD4GNCCTVZ1FT2000, RHD4GNSTZ6FT1000, RHD4GNSTZ8FT1000, RHD4GNSTZ9FT1000 | 1% | 3d | 2027-11-29 | 2027-12-01 | Skilled labor [213.02 h]; Unskilled Labor [213.02 h]; Equipment Opreator [85.16 h]; Excavator-Poclain [85.16 h]; (6*50mm) HDPE ducts -TC [422.31 m]; (6*50mm+2*32mm) HDPE ducts -TC [14.56 m]; (2*32mm) HDPE ducts -TC [3.27 m] | 38,862.04 | C011 | Z3 | CONS | TC | Backfilling | AFT |
|  | 1816 | **RHD4-02-002-C011-(TC)-Telecommunications Manholes** |  | 2028-04-15 | 2028-05-01 |  |  |  |  |  |  |  |  |  |  |  |  |  |
| RHD4CZ3C011TC5100 |  | Excavation for Manholes for Telecom Network - (RD-C-1 /1)-Z3-C011-TC | 6d | 2028-04-15 | 2028-04-20 | RHD4ENSDZ3APPTC190, RHD4CZ3C011TC2100, RHD4CZ7C013RD8100 |  |  |  |  | Skilled labor [21.78 h]; Unskilled Labor [21.78 h]; Equipment Opreator [17.42 h]; Excavator-Poclain [8.71 h]; Dump Truck [8.71 h]; Manhole Type 1 - TC [1.2 nr]; Manhole Type 2 - TC [0.6 nr] | 12,133.8 | C011 | Z3 | CONS | TC | Excavation | AFT |
| RHD4CZ3C011TC5200 |  | Installation of Manholes for Telecom Network - (RD-C-1 /1)-Z3-C011-TC | 9d | 2028-04-22 | 2028-05-01 | RHD4PRSHLDOSTC1200, RHD4PRSHLSTAGTC1200, RHD4CZ3C011TC5100, RHD4CZ3C011TC2200 SS |  |  |  |  | Skilled labor [21.78 h]; Unskilled Labor [21.78 h]; Equipment Opreator [8.71 h]; Boom Truck [8.71 h]; Manhole Type 1 - TC [6.8 nr]; Manhole Type 2 - TC [3.4 nr] | 68,758.2 | C011 | Z3 | CONS | TC | Installation | AFT |

| ID | WBS | Activity | Duration | Start | Finish | Predecessors | Complete | Planned start | Planned finish | Resources | Cost | Actual cost | RDH4-01-001-Road and Block Names-1 | RDH4-01-001-Zones-1 | RDH4-01-001-Phases-1 | RDH4-01-001-Networks-1 | RDH4-01-001-Work Method-1 | RDH4-01-001-MENEM |
| --- | --- | --- | --- | --- | --- | --- | --- | --- | --- | --- | --- | --- | --- | --- | --- | --- | --- | --- |
|  | 1817 | **RHD4-02-002-C011-(TC)-Telecomminications Road Crossings** |  |  |  |  |  |  |  |  |  |  |  |  |  |  |  |  |
|  | 1818 | **RHD4-02-002-Z3-C011-Information and Communication Technologies - ICT** |  | 2026-08-25 | 2028-06-21 |  |  |  |  |  |  |  |  |  |  |  |  |  |
|  | 1819 | **RHD4-02-002-C011-(ICT)-Information and Communication Technologies Ducts** |  | 2028-04-15 | 2028-06-21 |  |  |  |  |  |  |  |  |  |  |  |  |  |
| RHD4CZ3C011ICT2100 |  | Excavation of HDPE Ducts for ICT Network - (RD-C-1 /1)-Z3-C011-ICT | 16d | 2028-04-15 | 2028-05-02 | RHD4ENSDZ3APPICT200, RHD4CZ3C011ICT3400, RHD4CZ3C011TC2100 |  |  |  | Skilled labor [163.79 h]; Unskilled Labor [163.79 h]; Equipment Opreator [327.69 h]; Excavator-Poclain [163.79 h]; Dump Truck [163.79 h]; (2*50mm) HDPE ducts -ICT [1020.41 m]; (2*50mm+2*32mm) HDPE ducts -ICT [29.65 m]; (2*32mm) HDPE ducts -ICT [2.94 m] | 41,010.51 |  | C011 | Z3 | CONS | ICT | Excavation | AFT |
| RHD4CZ3C011ICT2200 |  | Installation of HDPE Ducts for ICT Network - (RD-C-1 /1)-Z3-C011-ICT | 24d | 2028-05-03 | 2028-06-03 | RHD4PRSHLDOSICT1000, RHD4PRSHLSTAGICT1000, RHD4CZ3C011ICT2100 |  |  |  | Carpenter [19.2 h]; Skilled labor [191.13 h]; Unskilled Labor [191.13 h]; Steel Fixer [19.2 h]; (2*50mm) HDPE ducts -ICT [3316.33 m]; (2*50mm+2*32mm) HDPE ducts -ICT [96.36 m]; (2*32mm) HDPE ducts -ICT [9.57 m] | 133,284.16 |  | C011 | Z3 | CONS | ICT | Installing | AFT |
| RHD4CZ3C011ICT2400 |  | Backfilling of HDPE Ducts for ICT Network - (RD-C-1 /1)-Z3-C011-ICT | 16d | 2028-06-04 | 2028-06-21 | RHD4CZ3C011ICT2200, RHD4CZ3C011ICT5200 |  |  |  | Skilled labor [163.79 h]; Unskilled Labor [163.79 h]; Equipment Opreator [65.56 h]; Excavator-Poclain [65.56 h]; (2*50mm) HDPE ducts -ICT [765.31 m]; (2*50mm+2*32mm) HDPE ducts -ICT [22.24 m]; (2*32mm) HDPE ducts -ICT [2.21 m] | 30,757.88 |  | C011 | Z3 | CONS | ICT | Backfilling | AFT |
|  | 1820 | **RHD4-02-002-C011-(ICT)-Information and Communication Technologies Manholes** |  | 2028-05-03 | 2028-06-03 |  |  |  |  |  |  |  |  |  |  |  |  |  |
| RHD4CZ3C011ICT5100 |  | Excavation for Manholes for ICT Network - (RD-C-1 /1)-Z3-C011-ICT | 12d | 2028-05-03 | 2028-05-20 | RHD4ENSDZ3APPICT200, RHD4CZ3C011ICT2100, RHD4CZ6CH6ST1130 |  |  |  | Skilled labor [35.39 h]; Unskilled Labor [35.39 h]; Equipment Opreator [28.31 h]; Excavator-Poclain [14.16 h]; Dump Truck [14.16 h]; Manhole Type 1 - ICT [3 nr]; Manhole Type 2 - ICT [0.45 nr] | 18,605.85 |  | C011 | Z3 | CONS | ICT | Excavation | AFT |
| RHD4CZ3C011ICT5200 |  | Installation of Manholes for ICT Network - (RD-C-1 /1)-Z3-C011-ICT | 12d | 2028-05-21 | 2028-06-03 | RHD4PRSHLDOSICT1200, RHD4PRSHLSTAGICT1200, RHD4CZ3C011ICT5100, RHD4CZ9L02CCTV1500 |  |  |  | Skilled labor [35.39 h]; Unskilled Labor [35.39 h]; Equipment Opreator [14.16 h]; Boom Truck [14.16 h]; Manhole Type 1 - ICT [17 nr]; Manhole Type 2 - ICT [2.55 nr] | 105,433.15 |  | C011 | Z3 | CONS | ICT | Installation | AFT |
|  | 1821 | **RHD4-02-002-C011-(ICT)-Information and Communication Technologies Road Crossings** |  | 2026-08-25 | 2026-09-03 |  |  |  |  |  |  |  |  |  |  |  |  |  |
| RHD4CZ3C011ICT3100 |  | Excavation for Road Crossings for ICT Network - (RD-C-1 /1)-Z3-C011-ICT | 2d | 2026-08-25 A | 2026-08-26 A | RHD4ENSDZ3APPICT200, RHD4CZ3C011IRR2302, RHD4CZ3C011PT3203, RHD4CZ3C011PT3203 FF | 100% | 2027-02-20 | 2027-02-21 | Skilled labor [8.6 h]; Unskilled Labor [8.6 h]; Equipment Opreator [17.21 h]; Excavator-Poclain [8.6 h]; Dump Truck [8.6 h]; Road crossing ducts, (2*50mm) HDPE -ICT [1.58 m] | 60.04 | 60.04 | C011 | Z3 | CONS | ICT | Excavation | bef |
| RHD4CZ3C011ICT3200 |  | Installation of Road Crossings for ICT Network - (RD-C-1 /1)-Z3-C011-ICT | 2d | 2026-08-29 A | 2026-08-30 A | RHD4PRSHLDOSICT1100, RHD4PRSHLSTAGICT1100, RHD4CZ3C011ICT3100 | 100% | 2027-02-23 | 2027-02-24 | Carpenter [1.2 h]; Skilled labor [11.43 h]; Unskilled Labor [11.43 h]; Steel Fixer [1.2 h]; Road crossing ducts, (2*50mm) HDPE -ICT [1.58 m] | 60.04 | 60.04 | C011 | Z3 | CONS | ICT | Installing | bef |
| RHD4CZ3C011ICT3300 |  | Pouring of Road Crossings for ICT Network - (RD-C-1 /1)-Z3-C011-ICT | 2d | 2026-09-01 A | 2026-09-02 A | RHD4CZ3C011ICT3200 | 100% | 2027-02-25 | 2027-02-27 | Skilled labor [11.43 h]; Unskilled Labor [11.43 h]; Equipment Opreator [4.57 h]; Concrete Mixer Truck [2.29 h]; Concrete Pump [2.29 h]; Road crossing ducts, (2*50mm) HDPE -ICT [10.27 m] | 390.26 | 390.26 | C011 | Z3 | CONS | ICT | Pouring | bef |
| RHD4CZ3C011ICT3400 |  | Backfilling of Road Crossings for ICT Network - (RD-C-1 /1)-Z3-C011-ICT | 2d | 2026-09-02 A | 2026-09-03 A | RHD4CZ3C011ICT3300 | 100% | 2027-02-28 | 2027-03-01 | Skilled labor [8.6 h]; Unskilled Labor [8.6 h]; Equipment Opreator [3.48 h]; Excavator-Poclain [3.48 h]; Road crossing ducts, (2*50mm) HDPE -ICT [2.37 m] | 90.06 | 90.06 | C011 | Z3 | CONS | ICT | Backfilling | bef |
|  | 1809 | **RHD4-02-002-Z3-C011-Landscape Network - LS** |  |  |  |  |  |  |  |  |  |  |  |  |  |  |  |  |
|  | 1810 | **RHD4-02-002-C011-(LS)-Landscape Lighting cables** |  |  |  |  |  |  |  |  |  |  |  |  |  |  |  |  |
|  | 1811 | **RHD4-02-002-C011-(LS)-Landscape Feeder Pillars** |  |  |  |  |  |  |  |  |  |  |  |  |  |  |  |  |
|  | 1812 | **RHD4-02-002-C011-(LS)-Landscape Bollard Poles** |  |  |  |  |  |  |  |  |  |  |  |  |  |  |  |  |
|  | 1813 | **RHD4-02-002-C011-(LS)-Landscape Feeder Pillars Earthing** |  |  |  |  |  |  |  |  |  |  |  |  |  |  |  |  |
|  | 1822 | **RHD4-02-002-Z3-C011-Security Network - CCTV** |  | 2028-02-01 | 2028-07-02 |  |  |  |  |  |  |  |  |  |  |  |  |  |
|  | 1823 | **RHD4-02-002-C011-(CCTV)-Civil Works** |  | 2028-02-01 | 2028-02-09 |  |  |  |  |  |  |  |  |  |  |  |  |  |
| RHD4CZ3C011CCTV2100 |  | Civil Works for Security Network - (RD-C-1 /1)-Z3-C011-CCTV | 8d | 2028-02-01 | 2028-02-09 | RHD4GNSLZ9FT1600, RHD4CZ8C014RD8100 |  |  |  | Skilled labor [435.68 h]; Unskilled Labor [871.2 h]; Equipment Opreator [435.68 h]; Excavator-Poclain [108.9 h]; Dump Truck [108.9 h]; Civil works Digging, trenching, laying pipes Meter with supply and installation of Manholes and for power feeding sources related to all towers and poles – (from 35-meter pole to control room and from related UPS camersa distribution boards till overall 2 [300 m] | 34,800 |  | C011 | Z3 | CONS | CCTV | Civil Works | AFT |
|  | 4851 | **RHD4-02-002-C011-(CCTV)-CCTV Poles** |  | 2028-04-09 | 2028-06-06 |  |  |  |  |  |  |  |  |  |  |  |  |  |
| RHD4CZ3C011CCTV1100 |  | Excavation for RC Base for CCTV Poles for Security Network - (RD-C-1 /1)-Z3-C011-CCTV | 2d | 2028-04-09 | 2028-04-10 | RHD4CZ3C011CCTV2100, RHD4CZ8A011RD7100 |  |  |  | Skilled labor [4.32 h]; Unskilled Labor [4.32 h]; Equipment Opreator [8.64 h]; Excavator-Poclain [2.18 h]; Dump Truck [2.18 h]; 25 Meters pole for CCTV Cameras [0.1 nr] | 14,090.2 |  | C011 | Z3 | CONS | CCTV | Excavation | AFT |
| RHD4CZ3C011CCTV1200 |  | Installation for RC Base for CCTV Poles for Security Network - (RD-C-1 /1)-Z3-C011-CCTV | 2d | 2028-05-21 | 2028-05-22 | RHD4CZ3C011CCTV1100, RHD4CZ7C02RD8100 |  |  |  | Skilled labor [4.32 h]; Unskilled Labor [4.32 h]; Equipment Opreator [8.64 h]; Excavator-Poclain [2.18 h]; Dump Truck [2.18 h]; 25 Meters pole for CCTV Cameras [0.25 nr] | 35,225.5 |  | C011 | Z3 | CONS | CCTV | RC Base | AFT |
| RHD4CZ3C011CCTV1300 |  | Backfill for RC Base for CCTV Poles for Security Network - (RD-C-1 /1)-Z3-C011-CCTV | 2d | 2028-05-23 | 2028-05-24 | RHD4CZ3C011CCTV1200, RHD4CZ8C014RD7100 |  |  |  | Skilled labor [2.88 h]; Unskilled Labor [2.88 h]; Equipment Opreator [5.44 h]; Excavator-Poclain [1.42 h]; Dump Truck [1.42 h]; 25 Meters pole for CCTV Cameras [0.05 nr] | 7,045.1 |  | C011 | Z3 | CONS | CCTV | Backfill | AFT |
| RHD4CZ3C011CCTV1400 |  | Installation for CCTV Poles for Security Network - (RD-C-1 /1)-Z3-C011-CCTV | 2d | 2028-05-31 | 2028-06-01 | RHD4CZ3C011CCTV1300, RHD4CZ7C02RD7100, RHD4CZ8RA04RD8100 |  |  |  | Skilled labor [7.2 h]; Unskilled Labor [14.56 h]; Electrician [7.2 h]; Equipment Opreator [7.2 h]; Boom Truck [3.59 h]; 25 Meters pole for CCTV Cameras [0.6 nr] | 84,541.2 |  | C011 | Z3 | CONS | CCTV | Installation | AFT |
| RHD4CZ3C011CCTV1500 |  | Protection post Installation for CCTV Poles for Security Network - (RD-C-1 /1)-Z3-C011-CCTV | 4d | 2028-06-03 | 2028-06-06 | RHD4CZ3C011CCTV1400 |  |  |  | Skilled labor [21.76 h]; Unskilled Labor [43.52 h]; Supply and Installation of minimum 4 Protection Post for each pole or tower with pipe ?220*6mm THK. [1 nr] | 4,903 |  | C011 | Z3 | CONS | CCTV | Protection post | AFT |

| ID | WBS | Activity | Duration | Start | Finish | Predecessors | Resources | Cost | RDH4-01-001-Road and Block Names-1 | RDH4-01-001-Zones-1 | RDH4-01-001-Phases-1 | RDH4-01-001-Networks-1 | RDH4-01-001-Work Method-1 | RDH4-01-001-MENEM |
| --- | --- | --- | --- | --- | --- | --- | --- | --- | --- | --- | --- | --- | --- | --- |
|  | 4852 | **RHD4-02-002-C011-(CCTV)-Camera** |  | 2028-06-06 | 2028-06-07 |  |  |  |  |  |  |  |  |  |
| RHD4CZ3C011CCTV3100 |  | Installation for Cameras for Security Network - (RD-C-1 /1)-Z3-C011-CCTV | 2d | 2028-06-06 | 2028-06-07 | RHD4CZ3C011CCTV1400, RHD4CZ3C011CCTV4100 | Unskilled Labor [54.4 h]; Electrician [27.2 h]; Outdoor Camera, 5MP resolution, day/night, fixed bullet camera providing Forensic WDR. [4 nr]; Outdoor PTZ with IR, HDTV 1080 and 31x optical, 12x digital, total 372x zoom, H264/265 with Motion JPEG. [1 nr] | 61,727 | C011 | Z3 | CONS | CCTV | Installation | AFT |
|  | 4853 | **RHD4-02-002-C011-(CCTV)-Power and Infrastructure** |  | 2028-06-04 | 2028-06-24 |  |  |  |  |  |  |  |  |  |
| RHD4CZ3C011CCTV4100 |  | Installation of Power outlet, UPS and midspan for PTZ Camerafor Cameras for Security Network - (RD-C-1 /1)-Z3-C011-CCTV | 2d | 2028-06-04 | 2028-06-05 | RHD4CZ3C011CCTV1400, RHD4CZ3C011ICT5200 | Skilled labor [13.12 h]; Unskilled Labor [52.32 h]; Electrician [26.08 h]; Equipment Opreator [26.08 h]; Excavator-Poclain [6.53 h]; Dump Truck [6.53 h]; Outdoor ready IP66-rated midspan for PTZ Camera (The outdoor- ready midspan should be IP66/IP67- and NEMA 4X-rated [1 nr]; 1.2KVA Industrial type UPS located at FEC remote poles [2 nr] | 15,232 | C011 | Z3 | CONS | CCTV | Power | AFT |
| RHD4CZ3C011CCTV4200 |  | Short Range Wireless PoP wireless Bridgefor CCTV Poles for Security Network - (RD-C-8 /3)-Z3-C083-CCTV | 2d | 2028-06-22 | 2028-06-24 | RHD4CZ3C011CCTV4100, RHD4CZ3C011ICT2400 | Skilled labor [21.76 h]; Unskilled Labor [43.52 h]; Electrician [21.76 h]; Equipment Opreator [43.52 h]; Excavator-Poclain [10.88 h]; Dump Truck [10.88 h]; Short Range wireless point to point wireless bridge [4 nr] | 58,548 | C083 | Z3 | CONS | CCTV | Wireless Pop | AFT |
|  | 4855 | **RHD4-02-002-C011-(CCTV)-CCTV Panels and Components** |  | 2028-06-25 | 2028-07-02 |  |  |  |  |  |  |  |  |  |
| RHD4CZ3C011CCTV6100 |  | Installation for CCTV Panels for Security Network - (RD-C-1 /1)-Z3-C011-CCTV | 7d | 2028-06-25 | 2028-07-02 | RHD4CZ3C011CCTV3100, RHD4CZ3C011CCTV1500, RHD4CZ3C011CCTV4200 | Skilled labor [326.72 h]; Unskilled Labor [980.16 h]; Electrician [326.72 h]; Pole mounted Filed Equipment cabinet (FEC) , with fan and ventilation, NEMEX 4X ,door, minimum size (600x600x400mm) , the cabinet/enclosurE [2 nr]; 8 Port Industrial PoE Switch 10/1000BaseT (-40 deg to +70 deg. Celsius) for remote poles and as specifiedin item 15. [1 nr]; UTP CAT6 Patch Cord , connect the industrial switch with the cameras, and radio wireless antenna [12 nr] | 32,584 | C011 | Z3 | CONS | CCTV | Equipment | AFT |
|  | 1839 | **RHD4-02-002-Z3-L122** |  | 2026-08-04 | 2028-11-04 |  |  |  |  |  |  |  |  |  |
|  | 1870 | **RHD4-02-002-Z3-L122-Crossings Sewage Network - SWCr** |  |  |  |  |  |  |  |  |  |  |  |  |
|  | 1880 | **RHD4-02-002-L122-(SWCr)-MH Works - 1200 mm diameter** |  |  |  |  |  |  |  |  |  |  |  |  |
|  | 1873 | **RHD4-02-002-L122-(SWCr)-GRP Pipes - 500 mm diameter** |  |  |  |  |  |  |  |  |  |  |  |  |
|  | 1872 | **RHD4-02-002-L122-(SWCr)-GRP Pipes - 400 mm diameter** |  |  |  |  |  |  |  |  |  |  |  |  |
|  | 1871 | **RHD4-02-002-L122-(SWCr)-GRP Pipes - 300 mm diameter** |  |  |  |  |  |  |  |  |  |  |  |  |
|  | 1878 | **RHD4-02-002-L122-(SWCr)-HDPE Pipes - 400 mm diameter** |  |  |  |  |  |  |  |  |  |  |  |  |
|  | 1884 | **RHD4-02-002-L122-(SWCr)-Wash out Chambers** |  |  |  |  |  |  |  |  |  |  |  |  |
|  | 1885 | **RHD4-02-002-L122-(SWCr)-Wash out Valves** |  |  |  |  |  |  |  |  |  |  |  |  |
|  | 1886 | **RHD4-02-002-L122-(SWCr)-Air Valve Chambers** |  |  |  |  |  |  |  |  |  |  |  |  |
|  | 1887 | **RHD4-02-002-L122-(SWCr)-Air Valves** |  |  |  |  |  |  |  |  |  |  |  |  |
|  | 1888 | **RHD4-02-002-L122-(SWCr)-Butterfly Valve Chambers** |  |  |  |  |  |  |  |  |  |  |  |  |
|  | 1889 | **RHD4-02-002-L122-(SWCr)-Butterfly Valves** |  |  |  |  |  |  |  |  |  |  |  |  |
|  | 1914 | **RHD4-02-002-Z3-L122-Crossings Potable Network - PTCr** |  |  |  |  |  |  |  |  |  |  |  |  |
|  | 1918 | **RHD4-02-002-L122-(PTCr)-HDPE Pipes - 400 mm diameter** |  |  |  |  |  |  |  |  |  |  |  |  |
|  | 1921 | **RHD4-02-002-L122-(PTCr)-Butterfly Valve Chamber** |  |  |  |  |  |  |  |  |  |  |  |  |
|  | 1922 | **RHD4-02-002-L122-(PTCr)-Butterfly Valves** |  |  |  |  |  |  |  |  |  |  |  |  |
|  | 1961 | **RHD4-02-002-Z3-L122-Crossings Irrigation Network - IRRC** |  |  |  |  |  |  |  |  |  |  |  |  |
|  | 1966 | **RHD4-02-002-L122-(IRRC)-HDPE Pipes - 315 mm diameter** |  |  |  |  |  |  |  |  |  |  |  |  |
|  | 2018 | **RHD4-02-002-Z3-L122-Road Works - RD** |  | 2027-03-01 | 2028-11-04 |  |  |  |  |  |  |  |  |  |
|  | 2019 | **RHD4-02-002-L122-(RD)-Subgrade** |  | 2027-03-01 | 2027-03-06 |  |  |  |  |  |  |  |  |  |
| RHD4CZ3L122RD1100 |  | Supply, lay and compaction subgrade compacted thickness 300 mm for Roads - (RD-L-12/2)-Z3-L122-RD | 5d | 2027-03-01 | 2027-03-06 | RHD4ENSDZ3APPEW100, RHD4ENSDZ3APPRD220, RHD4CZ3L122ST1506, RHD4CZ3L122TC3400, RHD4CZ3L122ICT3400 SS | Skilled labor [197.44 h]; Unskilled Labor [394.88 h]; Electrician [197.44 h]; Equipment Opreator [1348.66 h]; Water Truck [65.12 h]; Roller compactor [98.78 h]; Grader [197.44 h]; Dump Truck [987.32 h]; Subgrade [9497.2 m3] | 180,446.8 | L122 | Z3 | CONS | RD | Subgrade | bef |

| ID | WBS | Activity | Duration | Start | Finish | Predecessors | Resources | Cost | RDH4-01-001-Road and Block Names-1 | RDH4-01-001-Zones-1 | RDH4-01-001-Phases-1 | RDH4-01-001-Networks-1 | RDH4-01-001-Work Method-1 | RDH4-01-001-MENEM |
| --- | --- | --- | --- | --- | --- | --- | --- | --- | --- | --- | --- | --- | --- | --- |
|  | 2020 | **RHD4-02-002-L122-(RD)-Aggregate Base Course** |  | 2027-03-07 | 2027-03-15 |  |  |  |  |  |  |  |  |  |
| RHD4CZ3L122RD2100 |  | Supply, lay and compaction Aggregate base course compacted thickness 300 mmfor Roads - (RD-L-12/2)-Z3-L122-RD | 5d | 2027-03-07 | 2027-03-15 | RHD4PRSHLDOSRD1000, RHD4PRSHLSTAGRD1000, RHD4CZ3L122RD1100 | Skilled labor [73.18 h]; Unskilled Labor [146.26 h]; Equipment Opreator [925.9 h]; Water Truck [48.24 h]; Roller compactor [146.26 h]; Grader [146.26 h]; Dump Truck [585.03 h]; Aggregate Base Courses [5965.19 m3] | 340,015.83 | L122 | Z3 | CONS | RD | ABC | bef |
|  | 2021 | **RHD4-02-002-L122-(RD)-Bituminous base course Two Layers, including (MC1)&(RC2)** |  | 2027-03-16 | 2028-08-30 |  |  |  |  |  |  |  |  |  |
| RHD4CZ3L122RD3100 |  | Supply, lay and Asphaltic base course including Prime Coat (MC1) for 1st Layer - (RD-L-12/2)-Z3-L122-RD | 5d | 2027-03-16 | 2027-03-21 | RHD4PRSHLDOSRD1100, RHD4ENMSASPH2000, RHD4ENMSASPH2010, RHD4PRSHLSTAGRD1100, RHD4CZ3L122RD2100, RHD4CZ7A012RD3100, RHD4CZ5L016RD3100, RHD4CZ7L131RD3100 | Skilled labor [21.13 h]; Unskilled Labor [126.87 h]; Equipment Opreator [317.13 h]; Bobcat [21.13 h]; Roller compactor [21.13 h]; Asphalt Paver [21.13 h]; Rubber Compactor [42.25 h]; MC1/RC2 Sprinkler [21.13 h]; Dump Truck [190.25 h]; Bituminous base course (Grading I - Class A), including Prime coat (MC1) & tack coate (RC2) [773.43 m3] | 369,699.54 | L122 | Z3 | CONS | RD | 150 mm | AFT |
| RHD4CZ3L122RD3200 |  | Supply, lay and Asphaltic base course including Tack Coat (RC2) for 2nd Layer - (RD-L-12/2)-Z3-L122-RD | 5d | 2028-08-26 | 2028-08-30 | RHD4PRSHLDOSRD1100, RHD4PRSHLSTAGRD1100, RHD4PRSHLSTAGST1701, RHD4PRSHLDOSST1702, RHD4PRLOLSTAGLFS1300, RHD4PRSHLSTAGIRR1000, RHD4PRSHLSTAGSW1406, RHD4PRSHLSTAGSW1408, RHD4PRLOLSTAGLFS1500, RHD4PRSHLSTAGST1702, RHD4PRSHLSTAGSW1401, RHD4PRSHLSTAGPT1000, RHD4CZ3L122RD3100, RHD4CZ3L122CCTV6100 | Skilled labor [21.13 h]; Unskilled Labor [126.87 h]; Equipment Opreator [317.13 h]; Bobcat [21.13 h]; Roller compactor [21.13 h]; Asphalt Paver [21.13 h]; Rubber Compactor [42.25 h]; MC1/RC2 Sprinkler [21.13 h]; Dump Truck [190.25 h]; Bituminous base course (Grading I - Class A), including Prime coat (MC1) & tack coate (RC2) [773.43 m3] | 369,699.54 | L122 | Z3 | CONS | RD | 150 mm | AFT |
|  | 2023 | **RHD4-02-002-L122-(RD)-Precast Concrete Curb** |  | 2028-08-31 | 2028-09-09 |  |  |  |  |  |  |  |  |  |
| RHD4CZ3L122RD5100 |  | Supply and installation Precast Concrete Kerb for Roads - (RD-L-12/2)-Z3-L122-RD | 8d | 2028-08-31 | 2028-09-09 | RHD4PRSHLDOSRD1200, RHD4ENMSRD2000, RHD4ENMSRD2010, RHD4PRSHLSTAGRD1200, RHD4CZ3L122RD3200, RHD4GNSTZ7FT1000 | Mason [258.32 h]; Skilled labor [86.14 h]; Unskilled Labor [258.32 h]; Equipment Opreator [172.18 h]; Bobcat [86.14 h]; Concrete Mixer Truck [86.14 h]; Precast Concrete Curbstone, type K1 [1596.76 m]; Precast Flush concrete Curbstone K3 [1961.2 m] | 195,687.85 | L122 | Z3 | CONS | RD | Curbs | AFT |
|  | 2026 | **RHD4-02-002-L122-(RD)-Traffic Signage** |  | 2028-09-10 | 2028-09-17 |  |  |  |  |  |  |  |  |  |
| RHD4CZ3L122RD8100 |  | Installation of Traffic Signage for Road Network - (RD-L-12/2)-Z3-L122-RD | 7d | 2028-09-10 | 2028-09-17 | RHD4PRSHLDOSRD1600, RHD4PRSHLSTAGST1400, RHD4PRSHLSTAGRD1600, RHD4CZ3L122RD5100, RHD4CZ3L122TC2400, RHD4CZ3L122ICT2400 | Skilled labor [152.46 h]; Unskilled Labor [76.23 h]; Electrician [33.76 h]; Equipment Opreator [28.75 h]; Boom Truck [15.25 h]; Concrete Mixer Truck [13.5 h]; Traffic signs, ground mounted, 1 Sheet Aluminium, (breakaway)Single post [29 nr]; Traffic signs, ground mounted, 1 Sheets Aluminium, (breakaway)Double post [1 nr] | 37,393 | L122 | Z3 | CONS | RD | Traffic Signage | AFT |
|  | 2024 | **RHD4-02-002-L122-(RD)-Precast Interlocking Block Pavers** |  | 2028-09-18 | 2028-10-11 |  |  |  |  |  |  |  |  |  |
| RHD4CZ3L122RD6100 |  | Interlocking block pavers for sidewalk-footpath for Side walks and Parking areas - (RD-L-12/2)-Z3-L122-RD | 20d | 2028-09-18 | 2028-10-11 | RHD4PRSHLDOSRD1300, RHD4PRSHLDOSRD1400, RHD4ENMSRD2000, RHD4ENMSRD2010, RHD4PRSHLSTAGRD1300, RHD4PRSHLSTAGRD1400, RHD4CZ3L122RD8100, RHD4GNCCTVZ8FT2000, RHD4GNICTZ1FT1900, RHD4CZ9L02RD7100 | Skilled labor [428.64 h]; Unskilled Labor [642.97 h]; Equipment Opreator [696.55 h]; Boom Truck [214.32 h]; Bobcat [214.32 h]; Concrete Mixer Truck [214.32 h]; Water Truck [53.6 h]; Interlock 80 mm thick Pavers for parking including sand fill [4920 m2] | 364,080 | L122 | Z3 | CONS | RD | Interlocking | AFT |
|  | 2022 | **RHD4-02-002-L122-(RD)-Bituminous concrete wearing course including tack coat (RC2)** |  | 2028-10-12 | 2028-10-21 |  |  |  |  |  |  |  |  |  |
| RHD4CZ3L122RD4100 |  | Supply, lay and compaction Asphaltic wearing course including tack Coat (RC2)for Road Network - (RD-L-12/2)-Z3-L122-RD | 8d | 2028-10-12 | 2028-10-21 | RHD4CZ3L122RD5100, RHD4CZ3L122RD6100 | Skilled labor [25.05 h]; Unskilled Labor [150.29 h]; Equipment Opreator [375.72 h]; Bobcat [25.05 h]; Roller compactor [25.05 h]; Asphalt Paver [25.05 h]; Rubber Compactor [50.1 h]; MC1/RC2 Sprinkler [25.05 h]; Dump Truck [225.43 h]; Bituminous concrete wearing course, (Grading I - Class A), including tack coat (RC2) [1194.66 m3] | 648,700.38 | L122 | Z3 | CONS | RD | 50 mm | AFT |
|  | 2025 | **RHD4-02-002-L122-(RD)-Pavement Marking** |  | 2028-10-22 | 2028-11-04 |  |  |  |  |  |  |  |  |  |
| RHD4CZ3L122RD7100 |  | Pavement Markings for Road Network - (RD-L-12/2)-Z3-L122-RD | 12d | 2028-10-22 | 2028-11-04 | RHD4PRSHLDOSRD1500, RHD4PRSHLSTAGRD1500, RHD4CZ3L122RD4100 | Skilled labor [129.81 h]; Unskilled Labor [259.63 h]; Equipment Opreator [129.81 h]; Road Marking Machine [129.81 h]; Retroreflective Thermoplastic White Traffic Markings [512.99 m2]; Retroreflective Thermoplastic Yellow, Traffic Markings [193.32 m2]; Rumble strip [115 m]; Retroreflective raised pavement markers (cat eyes) [2220 nr] | 111,520.61 | L122 | Z3 | CONS | RD | Pavement Marking | AFT |
|  | 1843 | **RHD4-02-002-Z3-L122-Storm Network - ST** |  | 2026-09-19 | 2027-06-15 |  |  |  |  |  |  |  |  |  |
|  | 3743 | **RHD4-02-002-L122-(ST)-GRP Pipes - 1100 mm diameter** |  | 2027-01-19 | 2027-01-30 |  |  |  |  |  |  |  |  |  |
| RHD4CZ3L122ST1107 |  | Excavation works for GRP Pipe Line 1100 mm - (RD-L-12 /2)-Z3-L122-ST | 2d | 2027-01-19 | 2027-01-20 | RHD4CZ3L122ST1501 | Skilled labor [5.77 h]; Unskilled Labor [5.77 h]; Equipment Opreator [6.86 h]; Excavator-Poclain [5.77 h]; Dump Truck [1.2 h]; GRP (1100mm Diameter) - ST - Depth: 1.51m - 2.5m [5.49 m]; GRP (1100mm Diameter) - ST - Depth: 2.51m - 3.5m [15.56 m] | 27,545.74 | L122 | Z3 | CONS | ST | Excavation | bef |
| RHD4CZ3L122ST1207 |  | Bedding works for GRP Pipe Line 1100 mm - (RD-L-12 /2)-Z3-L122-ST | 2d | 2027-01-21 | 2027-01-23 | RHD4CZ3L122ST1107 | Skilled labor [5.77 h]; Unskilled Labor [11.43 h]; Equipment Opreator [11.43 h]; Excavator-Poclain [5.77 h]; Dump Truck [5.77 h]; GRP (1100mm Diameter) - ST - Depth: 1.51m - 2.5m [1.83 m]; GRP (1100mm Diameter) - ST - Depth: 2.51m - 3.5m [5.19 m] | 9,186.57 | L122 | Z3 | CONS | ST | Bedding | bef |
| RHD4CZ3L122ST1307 |  | Installing for GRP Pipe Line 1100 mm - (RD-L-12 /2)-Z3-L122-ST | 2d | 2027-01-24 | 2027-01-25 | RHD4CZ3L122ST1207 | Unskilled Labor [7.2 h]; Plumber [3.59 h]; GRP (1100mm Diameter) - ST - Depth: 1.51m - 2.5m [14.64 m]; GRP (1100mm Diameter) - ST - Depth: 2.51m - 3.5m [41.49 m] | 73,450.65 | L122 | Z3 | CONS | ST | Installation | bef |
| RHD4CZ3L122ST1407 |  | Primary Test for GRP Pipe Line 1100 mm - (RD-L-12 /2)-Z3-L122-ST | 2d | 2027-01-26 | 2027-01-27 | RHD4CZ3L122ST1307 | Unskilled Labor [2.83 h]; Plumber [2.83 h]; Equipment Opreator [2.83 h]; Water Truck [2.83 h]; GRP (1100mm Diameter) - ST - Depth: 1.51m - 2.5m [7.32 m]; GRP (1100mm Diameter) - ST - Depth: 2.51m - 3.5m [20.75 m] | 36,732.31 | L122 | Z3 | CONS | ST | Primary Test | bef |
| RHD4CZ3L122ST1507 |  | Backfilling and warning tape works for GRP Pipe Line 1100 mm - (RD-L-12 /2)-Z3-L122-ST | 2d | 2027-01-28 | 2027-01-30 | RHD4CZ3L122ST1407, RHD4CZ3L122ST1506 | Skilled labor [5.77 h]; Unskilled Labor [11.43 h]; Equipment Opreator [11.43 h]; Excavator-Poclain [5.77 h]; Dump Truck [5.77 h]; GRP (1100mm Diameter) - ST - Depth: 1.51m - 2.5m [7.32 m]; GRP (1100mm Diameter) - ST - Depth: 2.51m - 3.5m [20.75 m] | 36,732.31 | L122 | Z3 | CONS | ST | Backfilling | bef |
|  | 2039 | **RHD4-02-002-L122-(ST)-GRP Pipes - 1000 mm diameter** |  | 2027-01-03 | 2027-01-13 |  |  |  |  |  |  |  |  |  |
| RHD4CZ3L122ST1106 |  | Excavation works for GRP Pipe Line 1000 mm - (RD-L-12 /2)-Z3-L122-ST | 2d | 2027-01-03 | 2027-01-04 | RHD4CZ3L122ST3102 | Skilled labor [10.24 h]; Unskilled Labor [10.24 h]; Equipment Opreator [12.31 h]; Excavator-Poclain [10.24 h]; Dump Truck [2.07 h]; GRP (1000mm Diameter) - ST - Depth: 1.51m - 2.5m [28.28 m] | 25,904.48 | L122 | Z3 | CONS | ST | Excavation | bef |
| RHD4CZ3L122ST1206 |  | Bedding works for GRP Pipe Line 1000 mm - (RD-L-12 /2)-Z3-L122-ST | 2d | 2027-01-05 | 2027-01-06 | RHD4CZ3L122ST1106 | Skilled labor [10.24 h]; Unskilled Labor [20.58 h]; Equipment Opreator [20.58 h]; Excavator-Poclain [10.24 h]; Dump Truck [10.24 h]; GRP (1000mm Diameter) - ST - Depth: 1.51m - 2.5m [9.43 m] | 8,637.88 | L122 | Z3 | CONS | ST | Bedding | bef |
| RHD4CZ3L122ST1306 |  | Installing for GRP Pipe Line 1000 mm - (RD-L-12 /2)-Z3-L122-ST | 2d | 2027-01-07 | 2027-01-09 | RHD4CZ3L122ST1206 | Unskilled Labor [13.72 h]; Plumber [6.86 h]; GRP (1000mm Diameter) - ST - Depth: 1.51m - 2.5m [75.42 m] | 69,084.72 | L122 | Z3 | CONS | ST | Installation | bef |
| RHD4CZ3L122ST1406 |  | Primary Test for GRP Pipe Line 1000 mm - (RD-L-12 /2)-Z3-L122-ST | 2d | 2027-01-10 | 2027-01-11 | RHD4CZ3L122ST1306 | Unskilled Labor [5.12 h]; Plumber [5.12 h]; Equipment Opreator [5.12 h]; Water Truck [5.12 h]; GRP (1000mm Diameter) - ST - Depth: 1.51m - 2.5m [37.71 m] | 34,542.36 | L122 | Z3 | CONS | ST | Primary Test | bef |
| RHD4CZ3L122ST1506 |  | Backfilling and warning tape works for GRP Pipe Line 1000 mm - (RD-L-12 /2)-Z3-L122-ST | 2d | 2027-01-12 | 2027-01-13 | RHD4CZ3L122ST1406 | Skilled labor [10.24 h]; Unskilled Labor [20.58 h]; Equipment Opreator [20.58 h]; Excavator-Poclain [10.24 h]; Dump Truck [10.24 h]; GRP (1000mm Diameter) - ST - Depth: 1.51m - 2.5m [37.71 m] | 34,542.36 | L122 | Z3 | CONS | ST | Backfilling | bef |

| ID | WBS | Activity | Duration | Start | Finish | Predecessors | Resources | Cost | RDH4-01-001-Road and Block Names-1 | RDH4-01-001-Zones-1 | RDH4-01-001-Phases-1 | RDH4-01-001-Networks-1 | RDH4-01-001-Work Method-1 | RDH4-01-001-MENEM |
| --- | --- | --- | --- | --- | --- | --- | --- | --- | --- | --- | --- | --- | --- | --- |
|  | 5252 | **RHD4-02-002-L122-(ST)-GRP Pipes - 700 mm diameter** |  | 2027-01-05 | 2027-01-16 |  |  |  |  |  |  |  |  |  |
| RHD4CZ3L122ST1103 |  | Excavation works for GRP Pipe Line 700 mm - (RD-L-12 /2)-Z3-L122-ST | 2d | 2027-01-05 | 2027-01-06 | RHD4CZ3L122ST1106 | Skilled labor [19.6 h]; Unskilled Labor [19.6 h]; Equipment Opreator [23.41 h]; Excavator-Poclain [19.6 h]; Dump Truck [3.92 h]; GRP (700mm Diameter) - ST - Depth less than 1.5 m [22.43 m]; GRP (700mm Diameter) - ST - Depth: 1.51m - 2.5m [10.59 m]; GRP (700mm Diameter) - ST - Depth: 2.51m - 3.5m [7.22 m] | 25,073.17 | L122 | Z3 | CONS | ST | Excavation | bef |
| RHD4CZ3L122ST1203 |  | Bedding works for GRP Pipe Line 700 mm - (RD-L-12 /2)-Z3-L122-ST | 2d | 2027-01-07 | 2027-01-09 | RHD4CZ3L122ST1103 | Skilled labor [19.6 h]; Unskilled Labor [39.1 h]; Equipment Opreator [39.1 h]; Excavator-Poclain [19.6 h]; Dump Truck [19.6 h]; GRP (700mm Diameter) - ST - Depth less than 1.5 m [11.21 m]; GRP (700mm Diameter) - ST - Depth: 1.51m - 2.5m [3.53 m]; GRP (700mm Diameter) - ST - Depth: 2.51m - 3.5m [2.41 m] | 10,428.91 | L122 | Z3 | CONS | ST | Bedding | bef |
| RHD4CZ3L122ST1303 |  | Installing for GRP Pipe Line 700 mm - (RD-L-12 /2)-Z3-L122-ST | 2d | 2027-01-10 | 2027-01-11 | RHD4CZ3L122ST1203 | Unskilled Labor [19.6 h]; Plumber [9.8 h]; GRP (700mm Diameter) - ST - Depth less than 1.5 m [100.93 m]; GRP (700mm Diameter) - ST - Depth: 1.51m - 2.5m [28.23 m]; GRP (700mm Diameter) - ST - Depth: 2.51m - 3.5m [19.24 m] | 89,622.77 | L122 | Z3 | CONS | ST | Installation | bef |
| RHD4CZ3L122ST1403 |  | Primary Test for GRP Pipe Line 700 mm - (RD-L-12 /2)-Z3-L122-ST | 2d | 2027-01-12 | 2027-01-13 | RHD4CZ3L122ST1303 | Unskilled Labor [9.8 h]; Plumber [9.8 h]; Equipment Opreator [9.8 h]; Water Truck [9.8 h]; GRP (700mm Diameter) - ST - Depth less than 1.5 m [44.86 m]; GRP (700mm Diameter) - ST - Depth: 1.51m - 2.5m [14.12 m]; GRP (700mm Diameter) - ST - Depth: 2.51m - 3.5m [9.62 m] | 41,709.2 | L122 | Z3 | CONS | ST | Primary Test | bef |
| RHD4CZ3L122ST1503 |  | Backfilling and warning tape works for GRP Pipe Line 700 mm - (RD-L-12 /2)-Z3-L122-ST | 2d | 2027-01-14 | 2027-01-16 | RHD4CZ3L122ST1403 | Skilled labor [19.6 h]; Unskilled Labor [39.1 h]; Equipment Opreator [39.1 h]; Excavator-Poclain [19.6 h]; Dump Truck [19.6 h]; GRP (700mm Diameter) - ST - Depth less than 1.5 m [44.86 m]; GRP (700mm Diameter) - ST - Depth: 1.51m - 2.5m [14.12 m]; GRP (700mm Diameter) - ST - Depth: 2.51m - 3.5m [9.62 m] | 41,709.2 | L122 | Z3 | CONS | ST | Backfilling | bef |
|  | 5250 | **RHD4-02-002-L122-(ST)-GRP Pipes - 500 mm diameter** |  | 2027-01-07 | 2027-01-18 |  |  |  |  |  |  |  |  |  |
| RHD4CZ3L122ST1101 |  | Excavation works for GRP Pipe Line 500 mm - (RD-L-12 /2)-Z3-L122-ST | 2d | 2027-01-07 | 2027-01-09 | RHD4CZ3L122ST1103 | Skilled labor [10.02 h]; Unskilled Labor [10.02 h]; Equipment Opreator [12.09 h]; Excavator-Poclain [10.02 h]; Dump Truck [1.96 h]; GRP (500mm Diameter) - ST - Depth less than 1.5 m [19.8 m]; GRP (500mm Diameter) - ST - Depth: 1.51m - 2.5m | 7,029 | L122 | Z3 | CONS | ST | Excavation | bef |
| RHD4CZ3L122ST1201 |  | Bedding works for GRP Pipe Line 500 mm - (RD-L-12 /2)-Z3-L122-ST | 2d | 2027-01-10 | 2027-01-11 | RHD4CZ3L122ST1101 | Skilled labor [9.6 h]; Unskilled Labor [19.06 h]; Equipment Opreator [19.06 h]; Excavator-Poclain [9.6 h]; Dump Truck [9.6 h]; GRP (500mm Diameter) - ST - Depth less than 1.5 m [9.9 m]; GRP (500mm Diameter) - ST - Depth: 1.51m - 2.5m | 3,514.5 | L122 | Z3 | CONS | ST | Bedding | bef |
| RHD4CZ3L122ST1301 |  | Installing for GRP Pipe Line 500 mm - (RD-L-12 /2)-Z3-L122-ST | 2d | 2027-01-12 | 2027-01-13 | RHD4CZ3L122ST1201 | Unskilled Labor [24.07 h]; Plumber [12 h]; GRP (500mm Diameter) - ST - Depth less than 1.5 m [89.08 m]; GRP (500mm Diameter) - ST - Depth: 1.51m - 2.5m | 31,623.4 | L122 | Z3 | CONS | ST | Installation | bef |
| RHD4CZ3L122ST1401 |  | Primary Test for GRP Pipe Line 500 mm - (RD-L-12 /2)-Z3-L122-ST | 2d | 2027-01-14 | 2027-01-16 | RHD4CZ3L122ST1301 | Unskilled Labor [8.49 h]; Plumber [8.49 h]; Equipment Opreator [8.49 h]; Water Truck [8.49 h]; GRP (500mm Diameter) - ST - Depth less than 1.5 m [39.59 m]; GRP (500mm Diameter) - ST - Depth: 1.51m - 2.5m | 14,054.45 | L122 | Z3 | CONS | ST | Primary Test | bef |
| RHD4CZ3L122ST1501 |  | Backfilling and warning tape works for GRP Pipe Line 500 mm - (RD-L-12 /2)-Z3-L122-ST | 2d | 2027-01-17 | 2027-01-18 | RHD4CZ3L122ST1401, RHD4CZ3L122ST1503 | Skilled labor [10.78 h]; Unskilled Labor [21.6 h]; Equipment Opreator [21.6 h]; Excavator-Poclain [10.78 h]; Dump Truck [10.78 h]; GRP (500mm Diameter) - ST - Depth less than 1.5 m [39.59 m]; GRP (500mm Diameter) - ST - Depth: 1.51m - 2.5m | 14,054.45 | L122 | Z3 | CONS | ST | Backfilling | bef |
|  | 1862 | **RHD4-02-002-L122-(ST)-MH Works - 2000 mm diameter** |  | 2026-12-31 | 2027-03-04 |  |  |  |  |  |  |  |  |  |
| RHD4CZ3L122ST3102 |  | Excavation and PC Blinding works for MH 2000 mm - (RD-L-12/2)-Z3-L122-ST | 2d | 2026-12-31 | 2027-01-02 | RHD4ENSDZ3APPST110, RHD4ENMSST2000, RHD4PRSHLDOSST1301 | Skilled labor [18.19 h]; Unskilled Labor [18.19 h]; Equipment Opreator [29.08 h]; Excavator-Poclain [18.19 h]; Water Truck [1.85 h]; Dump Truck [9.04 h]; MH (2000mm Diameter) - ST - depth 1.50 - 2.5m [0.75 nr]; MH (2000mm Diameter) - ST - depth 2.51 - 3.5m [0.5 nr] | 23,614.25 | L122 | Z3 | CONS | ST | Excavation | bef |
| RHD4CZ3L122ST3202 |  | Installation of Base for MH 2000 mm - (RD-L-12/2)-Z3-L122-ST | 3d | 2027-02-18 | 2027-02-21 | RHD4PRSHLSTAGST1602, RHD4CZ3L122ST3102, RHD4CZ5L016ST7500 | Skilled labor [21.78 h]; Unskilled Labor [21.78 h]; Equipment Opreator [8.71 h]; Boom Truck [4.36 h]; Concrete Mixer Truck [4.36 h]; MH (2000mm Diameter) - ST - depth 1.50 - 2.5m [0.75 nr]; MH (2000mm Diameter) - ST - depth 2.51 - 3.5m [0.5 nr] | 23,614.25 | L122 | Z3 | CONS | ST | Installing Base | bef |
| RHD4CZ3L122ST3302 |  | MH Ring and C.Slab works and Backfilling works for MH 2000 mm - (RD-L-12/2)-Z3-L122-ST | 5d | 2027-02-23 | 2027-02-28 | RHD4PRSHLDOSST1602, RHD4CZ3L122ST3202 | Skilled labor [21.78 h]; Unskilled Labor [21.78 h]; Equipment Opreator [15.25 h]; Boom Truck [8.71 h]; Concrete Mixer Truck [6.53 h]; MH (2000mm Diameter) - ST - depth 1.50 - 2.5m [1.05 nr]; MH (2000mm Diameter) - ST - depth 2.51 - 3.5m [0.7 nr] | 33,059.95 | L122 | Z3 | CONS | ST | Installing Rings | bef |
| RHD4CZ3L122ST3402 |  | Steel Cover for MH 2000 mm - (RD-L-12/2)-Z3-L122-ST | 2d | 2027-03-01 | 2027-03-02 | RHD4PRSHLDOSST1702, RHD4PRSHLSTAGST1702, RHD4CZ3L122ST3302, RHD4CZ3L122ST1500 | Skilled labor [18.19 h]; Unskilled Labor [36.26 h]; Equipment Opreator [3.59 h]; Boom Truck [3.59 h]; MH (2000mm Diameter) - ST - depth 1.50 - 2.5m [0.15 nr]; MH (2000mm Diameter) - ST - depth 2.51 - 3.5m [0.1 nr] | 4,722.85 | L122 | Z3 | CONS | ST | Steel Cover | bef |
| RHD4CZ3L122ST3502 |  | Finishing, Benching, Testing works for MH 2000 mm - (RD-L-12/2)-Z3-L122-ST | 2d | 2027-03-03 | 2027-03-04 | RHD4CZ3L122ST3402 | Skilled labor [18.19 h]; Unskilled Labor [36.26 h]; Plumber [18.19 h]; Equipment Opreator [3.59 h]; Water Truck [3.59 h]; MH (2000mm Diameter) - ST - depth 1.50 - 2.5m [0.3 nr]; MH (2000mm Diameter) - ST - depth 2.51 - 3.5m [0.2 nr] | 9,445.7 | L122 | Z3 | CONS | ST | Benching | bef |
|  | 1861 | **RHD4-02-002-L122-(ST)-MH Works - 1500 mm diameter** |  | 2027-04-25 | 2027-06-12 |  |  |  |  |  |  |  |  |  |
| RHD4CZ3L122ST3101 |  | Excavation and PC Blinding works for MH 1500 mm - (RD-L-12/2)-Z3-L122-ST | 5d | 2027-04-25 | 2027-04-29 | RHD4ENSDZ3APPST110, RHD4ENMSST2000, RHD4CZ3L122ST3102 SS, RHD4CZ5L016SW3501, RHD4CZ3C011RD3100 | Skilled labor [49.01 h]; Unskilled Labor [49.01 h]; Equipment Opreator [78.4 h]; Excavator-Poclain [49.01 h]; Water Truck [4.9 h]; Dump Truck [24.5 h]; MH (1500mm Diameter) - ST - depth 1.50 - 2.5m [2 nr]; MH (1500mm Diameter) - ST - depth 2.51 - 3.5m [0.25 nr] | 33,297.5 | L122 | Z3 | CONS | ST | Excavation | bef |
| RHD4CZ3L122ST3201 |  | Installation of Base for MH 1500 mm - (RD-L-12/2)-Z3-L122-ST | 5d | 2027-05-01 | 2027-05-05 | RHD4PRSHLSTAGST1602, RHD4CZ3L122ST3101, RHD4CZ3L122ST3202, RHD4CZ5L016SW3000 | Skilled labor [49.01 h]; Unskilled Labor [49.01 h]; Equipment Opreator [19.6 h]; Boom Truck [9.8 h]; Concrete Mixer Truck [9.8 h]; MH (1500mm Diameter) - ST - depth 1.50 - 2.5m [2 nr]; MH (1500mm Diameter) - ST - depth 2.51 - 3.5m [0.25 nr] | 33,297.5 | L122 | Z3 | CONS | ST | Installing Base | bef |
| RHD4CZ3L122ST3301 |  | MH Ring and C.Slab works and Backfilling works for MH 1500 mm - (RD-L-12/2)-Z3-L122-ST | 5d | 2027-05-06 | 2027-05-11 | RHD4PRSHLDOSST1602, RHD4CZ3L122ST3201, RHD4CZ3L122ST3302, RHD4CTUN1Z5STG21170 | Skilled labor [49.01 h]; Unskilled Labor [49.01 h]; Equipment Opreator [34.3 h]; Boom Truck [19.6 h]; Concrete Mixer Truck [14.7 h]; MH (1500mm Diameter) - ST - depth 1.50 - 2.5m [2.8 nr]; MH (1500mm Diameter) - ST - depth 2.51 - 3.5m [0.35 nr] | 46,616.5 | L122 | Z3 | CONS | ST | Installing Rings | bef |
| RHD4CZ3L122ST3401 |  | Steel Cover for MH 1500 mm - (RD-L-12/2)-Z3-L122-ST | 3d | 2027-05-12 | 2027-05-19 | RHD4PRSHLDOSST1702, RHD4PRSHLSTAGST1702, RHD4CZ3L122ST3301, RHD4CZ3L122ST1500, RHD4CZ3L122ST3402 | Skilled labor [32.67 h]; Unskilled Labor [65.34 h]; Equipment Opreator [6.53 h]; Boom Truck [6.53 h]; MH (1500mm Diameter) - ST - depth 1.50 - 2.5m [0.4 nr]; MH (1500mm Diameter) - ST - depth 2.51 - 3.5m [0.05 nr] | 6,659.5 | L122 | Z3 | CONS | ST | Steel Cover | bef |
| RHD4CZ3L122ST3501 |  | Finishing, Benching, Testing works for MH 1500 mm - (RD-L-12/2)-Z3-L122-ST | 5d | 2027-06-07 | 2027-06-12 | RHD4CZ3L122ST3401, RHD4CZ3L122ST2500, RHD4CZ3L122ST3502 | Skilled labor [49.01 h]; Unskilled Labor [98.01 h]; Plumber [49.01 h]; Equipment Opreator [9.8 h]; Water Truck [9.8 h]; MH (1500mm Diameter) - ST - depth 1.50 - 2.5m [0.8 nr]; MH (1500mm Diameter) - ST - depth 2.51 - 3.5m [0.1 nr] | 13,319 | L122 | Z3 | CONS | ST | Benching | bef |

| ID | WBS | Activity | Duration | Start | Finish | Predecessors | Complete | Remaining | Planned start | Planned finish | Resources | Cost | RDH4-01-001-Road and Block Names-1 | RDH4-01-001-Zones-1 | RDH4-01-001-Phases-1 | RDH4-01-001-Networks-1 | RDH4-01-001-Work Method-1 | RDH4-01-001-MENEM |
| --- | --- | --- | --- | --- | --- | --- | --- | --- | --- | --- | --- | --- | --- | --- | --- | --- | --- | --- |
|  | 1860 | **RHD4-02-002-L122-(ST)-MH Works - 1200 mm diameter** |  | 2027-05-01 | 2027-06-15 |  |  |  |  |  |  |  |  |  |  |  |  |  |
| RHD4CZ3L122ST3100 |  | Excavation and PC Blinding works for MH 1200 mm - (RD-L-12/2)-Z3-L122-ST | 5d | 2027-05-01 | 2027-05-05 | RHD4ENSDZ3APPST110, RHD4ENMSST2000, RHD4ENMSST2010, RHD4CZ3L122ST3101 |  |  |  |  | Skilled labor [26.14 h]; Unskilled Labor [26.14 h]; Equipment Opreator [41.82 h]; Excavator-Poclain [26.14 h]; Water Truck [2.61 h]; Dump Truck [13.07 h]; MH (1200mm Diameter) - ST - depth less than 1.5 [0.5 nr]; MH (1200mm Diameter) - ST - depth 1.50 - 2.5m [1.5 nr] | 19,867.5 | L122 | Z3 | CONS | ST | Excavation | bef |
| RHD4CZ3L122ST3200 |  | Installation of Base for MH 1200 mm - (RD-L-12/2)-Z3-L122-ST | 5d | 2027-05-06 | 2027-05-11 | RHD4PRSHLSTAGST1602, RHD4CZ3L122ST3100, RHD4CZ3L122ST3201 |  |  |  |  | Skilled labor [27.2 h]; Unskilled Labor [27.2 h]; Equipment Opreator [10.89 h]; Boom Truck [5.45 h]; Concrete Mixer Truck [5.45 h]; MH (1200mm Diameter) - ST - depth less than 1.5 [0.5 nr]; MH (1200mm Diameter) - ST - depth 1.50 - 2.5m [1.5 nr] | 19,867.5 | L122 | Z3 | CONS | ST | Installing Base | bef |
| RHD4CZ3L122ST3300 |  | MH Ring and C.Slab works and Backfilling works for MH 1200 mm - (RD-L-12/2)-Z3-L122-ST | 3d | 2027-05-12 | 2027-05-19 | RHD4PRSHLDOSST1602, RHD4CZ3L122ST3200, RHD4CZ3L122ST3301 |  |  |  |  | Skilled labor [27.2 h]; Unskilled Labor [27.2 h]; Equipment Opreator [19.06 h]; Boom Truck [10.89 h]; Concrete Mixer Truck [8.17 h]; MH (1200mm Diameter) - ST - depth less than 1.5 [0.7 nr]; MH (1200mm Diameter) - ST - depth 1.50 - 2.5m [2.1 nr] | 27,814.5 | L122 | Z3 | CONS | ST | Installing Rings | bef |
| RHD4CZ3L122ST3400 |  | Steel Cover for MH 1200 mm - (RD-L-12/2)-Z3-L122-ST | 3d | 2027-06-07 | 2027-06-09 | RHD4PRSHLDOSST1702, RHD4PRSHLSTAGST1702, RHD4CZ3L122ST3300, RHD4CZ3L122ST2500, RHD4CZ3L122ST1500, RHD4CZ3L122ST3401 |  |  |  |  | Skilled labor [29.08 h]; Unskilled Labor [58.05 h]; Equipment Opreator [5.77 h]; Boom Truck [5.77 h]; MH (1200mm Diameter) - ST - depth less than 1.5 [0.1 nr]; MH (1200mm Diameter) - ST - depth 1.50 - 2.5m [0.3 nr] | 3,973.5 | L122 | Z3 | CONS | ST | Steel Cover | bef |
| RHD4CZ3L122ST3500 |  | Finishing, Benching, Testing works for MH 1200 mm - (RD-L-12/2)-Z3-L122-ST | 3d | 2027-06-13 | 2027-06-15 | RHD4CZ3L122ST3400, RHD4CZ3L122ST3501 |  |  |  |  | Skilled labor [26.14 h]; Unskilled Labor [52.27 h]; Plumber [26.14 h]; Equipment Opreator [5.23 h]; Water Truck [5.23 h]; MH (1200mm Diameter) - ST - depth less than 1.5 [0.2 nr]; MH (1200mm Diameter) - ST - depth 1.50 - 2.5m [0.6 nr] | 7,947 | L122 | Z3 | CONS | ST | Benching | bef |
|  | 1852 | **RHD4-02-002-L122-(ST)-GRP Pipes - 1200 mm diameter** |  |  |  |  |  |  |  |  |  |  |  |  |  |  |  |  |
|  | 1849 | **RHD4-02-002-L122-(ST)-GRP Pipes - 900 mm diameter** |  |  |  |  |  |  |  |  |  |  |  |  |  |  |  |  |
|  | 1848 | **RHD4-02-002-L122-(ST)-GRP Pipes - 800 mm diameter** |  | 2027-01-14 | 2027-01-25 |  |  |  |  |  |  |  |  |  |  |  |  |  |
| RHD4CZ3L122ST1104 |  | Excavation works for GRP Pipe Line 800 mm - (RD-L-12/2)-Z3-L122-ST | 2d | 2027-01-14 | 2027-01-16 | RHD4ENSDZ3APPST110, RHD4CZ3L122ST1506 |  |  |  |  | Skilled labor [8.93 h]; Unskilled Labor [8.93 h]; Equipment Opreator [10.67 h]; Excavator-Poclain [8.93 h]; Dump Truck [1.74 h]; GRP (800mm Diameter) - ST - Depth less than 1.5 m [6.36 m]; GRP (800mm Diameter) - ST - Depth: 1.51m - 2.5m [15.08 m] | 14,739.24 | L122 | Z3 | CONS | ST | Excavation | bef |
| RHD4CZ3L122ST1204 |  | Bedding works for GRP Pipe Line 800 mm - (RD-L-12/2)-Z3-L122-ST | 2d | 2027-01-17 | 2027-01-18 | RHD4CZ3L122ST1104 |  |  |  |  | Skilled labor [8.93 h]; Unskilled Labor [17.86 h]; Equipment Opreator [17.86 h]; Excavator-Poclain [8.93 h]; Dump Truck [8.93 h]; GRP (800mm Diameter) - ST - Depth less than 1.5 m [3.18 m]; GRP (800mm Diameter) - ST - Depth: 1.51m - 2.5m [5.03 m] | 5,607.6 | L122 | Z3 | CONS | ST | Bedding | bef |
| RHD4CZ3L122ST1304 |  | Installing for GRP Pipe Line 800 mm - (RD-L-12/2)-Z3-L122-ST | 2d | 2027-01-19 | 2027-01-20 | RHD4PRSHLSTAGST1002, RHD4CZ3L122ST1204, RHD4PRSHLDOSST1602, RHD4PRSHLPOST1000, RHD4PRSHLDOSST1008 SS, RHD4PRSHLDOSST1608, RHD4PRSHLDOSST1008, RHD4PRSHLDOSST1604, RHD4PRSHLDOSST1004 |  |  |  |  | Unskilled Labor [11.87 h]; Plumber [5.99 h]; GRP (800mm Diameter) - ST - Depth less than 1.5 m [28.61 m]; GRP (800mm Diameter) - ST - Depth: 1.51m - 2.5m [40.21 m] | 46,909.75 | L122 | Z3 | CONS | ST | Installation | bef |
| RHD4CZ3L122ST1404 |  | Primary Test for GRP Pipe Line 800 mm - (RD-L-12/2)-Z3-L122-ST | 2d | 2027-01-21 | 2027-01-23 | RHD4CZ3L122ST1304 |  |  |  |  | Unskilled Labor [4.47 h]; Plumber [4.47 h]; Equipment Opreator [4.47 h]; Water Truck [4.47 h]; GRP (800mm Diameter) - ST - Depth less than 1.5 m [12.71 m]; GRP (800mm Diameter) - ST - Depth: 1.51m - 2.5m [20.1 m] | 22,409.83 | L122 | Z3 | CONS | ST | Primary Test | bef |
| RHD4CZ3L122ST1504 |  | Backfilling and warning tape works for GRP Pipe Line 800 mm - (RD-L-12/2)-Z3-L122-ST | 2d | 2027-01-24 | 2027-01-25 | RHD4CZ3L122ST1404 |  |  |  |  | Skilled labor [8.93 h]; Unskilled Labor [17.86 h]; Equipment Opreator [17.86 h]; Excavator-Poclain [8.93 h]; Dump Truck [8.93 h]; GRP (800mm Diameter) - ST - Depth less than 1.5 m [12.71 m]; GRP (800mm Diameter) - ST - Depth: 1.51m - 2.5m [20.1 m] | 22,409.83 | L122 | Z3 | CONS | ST | Backfilling | bef |
|  | 1844 | **RHD4-02-002-L122-(ST)-GRP Pipes - 400 mm diameter** |  | 2026-09-19 | 2027-01-28 |  |  |  |  |  |  |  |  |  |  |  |  |  |
| RHD4CZ3L122ST1100 |  | Excavation works for GRP Pipe Line 400 mm - (RD-L-12/2)-Z3-L122-ST | 2d | 2026-09-19 A | 2027-01-18 | RHD4ENSDZ3APPST110, RHD4CZ3L122ST1104 | 71% | 2d | 2026-09-08 | 2026-09-09 | Skilled labor [16.12 h]; Unskilled Labor [16.12 h]; Equipment Opreator [19.28 h]; Excavator-Poclain [16.12 h]; Dump Truck [3.27 h]; GRP (400mm Diameter) - ST - Depth less than 1.5 m [35.18 m]; GRP (400mm Diameter) - ST - Depth: 1.51m - 2.5 m | 10,202.2 | L122 | Z3 | CONS | ST | Excavation | bef |
| RHD4CZ3L122ST1200 |  | Bedding works for GRP Pipe Line 400 mm - (RD-L-12/2)-Z3-L122-ST | 2d | 2027-01-19 | 2027-01-20 | RHD4CZ3L122ST1100, RHD4CZ3L122ST1204 |  |  |  |  | Skilled labor [14.05 h]; Unskilled Labor [28 h]; Equipment Opreator [28 h]; Excavator-Poclain [14.05 h]; Dump Truck [14.05 h]; GRP (400mm Diameter) - ST - Depth less than 1.5 m [17.59 m]; GRP (400mm Diameter) - ST - Depth: 1.51m - 2.5 m | 5,101.1 | L122 | Z3 | CONS | ST | Bedding | bef |
| RHD4CZ3L122ST1300 |  | Installing for GRP Pipe Line 400 mm - (RD-L-12/2)-Z3-L122-ST | 3d | 2027-01-21 | 2027-01-24 | RHD4PRSHLSTAGST1002, RHD4CZ3L122ST1200, RHD4CZ3L122ST1304, RHD4PRSHLDOSST1602, RHD4PRSHLPOST1000, RHD4PRSHLDOSST1008 SS, RHD4PRSHLDOSST1608, RHD4PRSHLDOSST1008, RHD4PRSHLDOSST1604, RHD4PRSHLDOSST1004 |  |  |  |  | Unskilled Labor [48.57 h]; Plumber [24.29 h]; GRP (400mm Diameter) - ST - Depth less than 1.5 m [158.32 m]; GRP (400mm Diameter) - ST - Depth: 1.51m - 2.5 m | 45,912.8 | L122 | Z3 | CONS | ST | Installation | bef |
| RHD4CZ3L122ST1400 |  | Primary Test for GRP Pipe Line 400 mm - (RD-L-12/2)-Z3-L122-ST | 2d | 2027-01-25 | 2027-01-26 | RHD4CZ3L122ST1300, RHD4CZ3L122ST1404 |  |  |  |  | Unskilled Labor [9.91 h]; Plumber [9.91 h]; Equipment Opreator [9.91 h]; Water Truck [9.91 h]; GRP (400mm Diameter) - ST - Depth less than 1.5 m [70.36 m]; GRP (400mm Diameter) - ST - Depth: 1.51m - 2.5 m | 20,404.4 | L122 | Z3 | CONS | ST | Primary Test | bef |
| RHD4CZ3L122ST1500 |  | Backfilling and warning tape works for GRP Pipe Line 400 mm - (RD-L-12/2)-Z3-L122-ST | 2d | 2027-01-27 | 2027-01-28 | RHD4CZ3L122ST1400, RHD4CZ3L122ST1504 |  |  |  |  | Skilled labor [19.2 h]; Unskilled Labor [38.33 h]; Equipment Opreator [38.33 h]; Excavator-Poclain [19.2 h]; Dump Truck [19.2 h]; GRP (400mm Diameter) - ST - Depth less than 1.5 m [70.36 m]; GRP (400mm Diameter) - ST - Depth: 1.51m - 2.5 m | 20,404.4 | L122 | Z3 | CONS | ST | Backfilling | bef |
|  | 1859 | **RHD4-02-002-L122-(ST)-UPVC Pipes - 400 mm diameter** |  |  |  |  |  |  |  |  |  |  |  |  |  |  |  |  |
|  | 1858 | **RHD4-02-002-L122-(ST)-UPVC Pipes - 300 mm diameter** |  | 2026-09-19 | 2027-06-06 |  |  |  |  |  |  |  |  |  |  |  |  |  |
| RHD4CZ3L122ST2100 |  | Excavation works for UPVC Pipe Line 300 mm - (RD-L-12/2)-Z3-L122-ST | 3d | 2026-09-19 A | 2027-05-23 | RHD4ENSDZ3APPST110, RHD4CZ3L122ST3300, RHD4CZ3L122ST3301 | 28% | 3d | 2026-11-12 | 2026-11-15 | Skilled labor [32 h]; Unskilled Labor [32 h]; Equipment Opreator [38.44 h]; Excavator-Poclain [32 h]; Dump Truck [6.4 h]; UPVC (300mm Diameter) - ST - Depth less than 1.5 [73.29 m]; UPVC (300mm Diameter) - ST - Depth: 1.51m - 2.5m | 22,206.87 | L122 | Z3 | CONS | ST | Excavation | bef |
| RHD4CZ3L122ST2200 |  | Bedding works for UPVC Pipe Line 300 mm - (RD-L-12/2)-Z3-L122-ST | 3d | 2027-05-24 | 2027-05-26 | RHD4CZ3L122ST2100 |  |  |  |  | Skilled labor [26.79 h]; Unskilled Labor [53.6 h]; Equipment Opreator [53.6 h]; Excavator-Poclain [26.79 h]; Dump Truck [26.79 h]; UPVC (300mm Diameter) - ST - Depth less than 1.5 [36.64 m]; UPVC (300mm Diameter) - ST - Depth: 1.51m - 2.5m | 11,101.92 | L122 | Z3 | CONS | ST | Bedding | bef |
| RHD4CZ3L122ST2300 |  | Installing for UPVC Pipe Line 300 mm - (RD-L-12/2)-Z3-L122-ST | 3d | 2027-05-27 | 2027-05-30 | RHD4PRSHLDOSST1102, RHD4PRSHLSTAGST1102, RHD4PRSHLSTAGSW1007, RHD4CZ3L122ST2200 |  |  |  |  | Unskilled Labor [64 h]; Plumber [32 h]; UPVC (300mm Diameter) - ST - Depth less than 1.5 [329.8 m]; UPVC (300mm Diameter) - ST - Depth: 1.51m - 2.5m | 99,929.4 | L122 | Z3 | CONS | ST | Installation | bef |
| RHD4CZ3L122ST2400 |  | Primary Test for UPVC Pipe Line 300 mm - (RD-L-12/2)-Z3-L122-ST | 2d | 2027-05-31 | 2027-06-01 | RHD4CZ3L122ST2300 |  |  |  |  | Unskilled Labor [16.23 h]; Plumber [16.23 h]; Equipment Opreator [16.23 h]; Water Truck [16.23 h]; UPVC (300mm Diameter) - ST - Depth less than 1.5 [146.58 m]; UPVC (300mm Diameter) - ST - Depth: 1.51m - 2.5m | 44,413.74 | L122 | Z3 | CONS | ST | Primary Test | bef |
| RHD4CZ3L122ST2500 |  | Backfilling and warning tape works for UPVC Pipe Line 300 mm - (RD-L-12/2)-Z3-L122-ST | 4d | 2027-06-02 | 2027-06-06 | RHD4CZ3L122ST2400, RHD4CZ3L122ST6100 |  |  |  |  | Skilled labor [39.86 h]; Unskilled Labor [79.83 h]; Equipment Opreator [79.83 h]; Excavator-Poclain [39.86 h]; Dump Truck [39.86 h]; UPVC (300mm Diameter) - ST - Depth less than 1.5 [146.58 m]; UPVC (300mm Diameter) - ST - Depth: 1.51m - 2.5m | 44,413.74 | L122 | Z3 | CONS | ST | Backfilling | bef |

| ID | WBS | Activity | Duration | Start | Finish | Predecessors | Complete | Remaining | Planned start | Planned finish | Resources | Cost | Actual cost | RDH4-01-001-Road and Block Names-1 | RDH4-01-001-Zones-1 | RDH4-01-001-Phases-1 | RDH4-01-001-Networks-1 | RDH4-01-001-Work Method-1 | RDH4-01-001-MENEM |
| --- | --- | --- | --- | --- | --- | --- | --- | --- | --- | --- | --- | --- | --- | --- | --- | --- | --- | --- | --- |
|  | 1866 | **RHD4-02-002-L122-(ST)-Concrete Encasement** |  | 2027-05-27 | 2027-06-01 |  |  |  |  |  |  |  |  |  |  |  |  |  |  |
| RHD4CZ3L122ST6100 |  | Pipe Encasement for Storm Pipelines - (RD-L-12/2)-Z3-L122-ST | 5d | 2027-05-27 | 2027-06-01 | RHD4CZ3L122ST2300 SS, RHD4CZ3L122ST2300 FF, RHD4CZ3L122ST2200 |  |  |  |  | Skilled labor [4.9 h]; Unskilled Labor [4.9 h]; Equipment Opreator [5.45 h]; Concrete Mixer Truck [0.54 h]; Dump Truck [4.9 h]; Pipe Encasement - ST [90.01 m3] | 45,545.06 |  | L122 | Z3 | CONS | ST | Pipe Encasement | bef |
|  | 1867 | **RHD4-02-002-Z3-L122-Catch Basin - ST** |  | 2026-09-19 | 2027-07-07 |  |  |  |  |  |  |  |  |  |  |  |  |  |  |
|  | 1868 | **RHD4-02-002-L122-(ST)-Single Catch Basin Works** |  | 2026-09-19 | 2027-06-26 |  |  |  |  |  |  |  |  |  |  |  |  |  |  |
| RHD4CZ3L122ST7100 |  | Excavation works for Single Catch Basin - (RD-L-12/2)-Z3-L122-ST | 3d | 2026-09-19 A | 2027-05-08 | RHD4ENSDZ3APPST110, RHD4CZ3L122ST3301 SS | 80% | 2d | 2026-11-03 | 2026-11-05 | Skilled labor [44.65 h]; Unskilled Labor [89.3 h]; Equipment Opreator [66.98 h]; Excavator-Poclain [44.65 h]; Dump Truck [22.33 h]; Single Catch basin - ST [10.25 nr] | 38,242.75 | 30,781.59 | L122 | Z3 | CONS | ST | Excavation | bef |
| RHD4CZ3L122ST7200 |  | PC Blinding, Installation and Pipe connection for Single Catch Basin - (RD-L-12/2)-Z3-L122-ST | 5d | 2027-05-09 | 2027-05-13 | RHD4CZ3L122ST7100, RHD4CZ2C082ST3501, RHD4CZ9C071ST1501, RHD4CZ2C082SW3500 |  |  |  |  | Skilled labor [44.65 h]; Unskilled Labor [89.3 h]; Plumber [22.33 h]; Equipment Opreator [8.93 h]; Boom Truck [8.93 h]; Single Catch basin - ST [8.2 nr] | 30,594.2 |  | L122 | Z3 | CONS | ST | Installation & Pipe Connection | bef |
| RHD4CZ3L122ST7300 |  | Rings & C.Slab & Final Backfill for Single Catch Basin - (RD-L-12/2)-Z3-L122-ST | 6d | 2027-05-19 | 2027-05-25 | RHD4PRSHLDOSST1302, RHD4PRSHLSTAGST1302, RHD4CZ3L122ST7200 |  |  |  |  | Skilled labor [55.87 h]; Unskilled Labor [111.63 h]; Equipment Opreator [66.98 h]; Boom Truck [11.11 h]; Bobcat [55.87 h]; Single Catch basin - ST [14.35 nr] | 53,539.85 |  | L122 | Z3 | CONS | ST | Rings | bef |
| RHD4CZ3L122ST7400 |  | Steel Cover for Single Catch Basin - (RD-L-12/2)-Z3-L122-ST | 5d | 2027-05-26 | 2027-05-31 | RHD4PRSHLDOSST1702, RHD4CZ3L122ST7300 |  |  |  |  | Skilled labor [44.65 h]; Unskilled Labor [44.65 h]; Equipment Opreator [8.93 h]; Boom Truck [8.93 h]; Single Catch basin - ST [2.05 nr] | 7,648.55 |  | L122 | Z3 | CONS | ST | Steel Cover | bef |
| RHD4CZ3L122ST7500 |  | Finishing and Insulation works for Single Catch Basin - (RD-L-12/2)-Z3-L122-ST | 9d | 2027-06-16 | 2027-06-26 | RHD4CZ3L122ST7400, RHD4CZ3L122ST3500 |  |  |  |  | Skilled labor [89.3 h]; Unskilled Labor [178.6 h]; Equipment Opreator [17.86 h]; Boom Truck [17.86 h]; Single Catch basin - ST [6.15 nr] | 22,945.65 |  | L122 | Z3 | CONS | ST | Insulation | bef |
|  | 1869 | **RHD4-02-002-L122-(ST)-Double Catch Basin Works** |  | 2027-06-27 | 2027-07-07 |  |  |  |  |  |  |  |  |  |  |  |  |  |  |
| RHD4CZ3L122ST8100 |  | Excavation works for Double Catch Basin - (RD-L-12/2)-Z3-L122-ST | 2d | 2027-06-27 | 2027-06-28 | RHD4ENSDZ3APPST110, RHD4CZ3L122ST3300, RHD4CZ3L122ST3301, RHD4CZ3L122ST7500 |  |  |  |  | Skilled labor [2.18 h]; Unskilled Labor [4.36 h]; Equipment Opreator [3.27 h]; Excavator-Poclain [2.18 h]; Dump Truck [1.09 h]; Double Catch basin - ST [0.25 nr] | 3,491.5 |  | L122 | Z3 | CONS | ST | Excavation | bef |
| RHD4CZ3L122ST8200 |  | PC Blinding, Installation and Pipe connection for Double Catch Basin - (RD-L-12/2)-Z3-L122-ST | 2d | 2027-06-29 | 2027-06-30 | RHD4CZ3L122ST8100 |  |  |  |  | Skilled labor [2.18 h]; Unskilled Labor [4.36 h]; Plumber [1.09 h]; Equipment Opreator [0.44 h]; Boom Truck [0.44 h]; Double Catch basin - ST [0.2 nr] | 2,793.2 |  | L122 | Z3 | CONS | ST | Installation & Pipe Connection | bef |
| RHD4CZ3L122ST8300 |  | Rings & C.Slab & Final Backfillfor Double Catch Basin - (RD-L-12/2)-Z3-L122-ST | 2d | 2027-07-01 | 2027-07-03 | RHD4PRSHLDOSST1302, RHD4PRSHLSTAGST1302, RHD4CZ3L122ST8200, RHD4CZ3L122ST7300 |  |  |  |  | Skilled labor [2.72 h]; Unskilled Labor [5.45 h]; Equipment Opreator [3.27 h]; Boom Truck [0.54 h]; Bobcat [2.72 h]; Double Catch basin - ST [0.35 nr] | 4,888.1 |  | L122 | Z3 | CONS | ST | Rings | bef |
| RHD4CZ3L122ST8400 |  | Steel Cover for Double Catch Basin - (RD-L-12/2)-Z3-L122-ST | 2d | 2027-07-04 | 2027-07-05 | RHD4PRSHLDOSST1702, RHD4CZ3L122ST8300, RHD4CZ3L122ST7400 |  |  |  |  | Skilled labor [2.18 h]; Unskilled Labor [2.18 h]; Equipment Opreator [0.44 h]; Boom Truck [0.44 h]; Double Catch basin - ST [0.05 nr] | 698.3 |  | L122 | Z3 | CONS | ST | Steel Cover | bef |
| RHD4CZ3L122ST8500 |  | Finishing and Insulation works for Double Catch Basin - (RD-L-12/2)-Z3-L122-ST | 2d | 2027-07-06 | 2027-07-07 | RHD4CZ3L122ST8400, RHD4CZ3L122ST7500 |  |  |  |  | Skilled labor [5.45 h]; Unskilled Labor [10.89 h]; Equipment Opreator [1.09 h]; Boom Truck [1.09 h]; Double Catch basin - ST [0.15 nr] | 2,094.9 |  | L122 | Z3 | CONS | ST | Insulation | bef |
|  | 4299 | **RHD4-02-002-Z3-L122-Concrete Box Culvert - ST** |  | 2026-08-04 | 2027-07-25 |  |  |  |  |  |  |  |  |  |  |  |  |  |  |
|  | 4300 | **RHD4-02-002-L122-(ST)-Concrete Box Culvert** |  | 2026-08-04 | 2027-07-25 |  |  |  |  |  |  |  |  |  |  |  |  |  |  |
| RHD4CZ3L122ST4100 |  | Excavation works for Box Culvert - (RD-L-12/2)-Z3-L122-ST | 12d | 2026-08-04 A | 2026-08-08 A | RHD4CZ3L122ST8500, RHD4ENSDZ3APPST110 | 100% |  | 2026-12-31 | 2027-01-13 | Skilled labor [129.92 h]; Unskilled Labor [129.92 h]; Equipment Opreator [389.77 h]; Excavator-Poclain [129.92 h]; Water Truck [129.92 h]; Dump Truck [129.92 h]; Excavation for culverts (all types of soil) including backfilling - ST [1252.61 m3] | 22,546.98 | 22,546.98 | L122 | Z3 | CONS | ST | Excavation | bef |
| RHD4CZ3L122ST4200 |  | PC works for Box Culvert - (RD-L-12/2)-Z3-L122-ST | 6d | 2026-08-06 A | 2026-08-08 A | RHD4CZ3L122ST4100 SS | 100% |  | 2026-12-31 | 2027-01-06 | Skilled labor [62.73 h]; Unskilled Labor [62.73 h]; Equipment Opreator [62.73 h]; Concrete Mixer Truck [31.36 h]; Concrete Pump [31.36 h]; 100 mm thickness lean concrete under the base - ST [863.26 m2] | 33,667.14 | 33,667.14 | L122 | Z3 | CONS | ST | PC | bef |
| RHD4CZ3L122ST4400 |  | Raft works for Box Culvert - (RD-L-12/2)-Z3-L122-ST | 5d | 2026-08-09 A | 2026-08-12 A | RHD4CZ3L122ST4200 SS | 100% |  | 2026-12-31 | 2027-01-05 | Carpenter [37.35 h]; Skilled labor [45.3 h]; Steel Fixer [7.95 h]; Equipment Opreator [76.34 h]; Boom Truck [1.6 h]; Concrete Mixer Truck [37.35 h]; Concrete Pump [37.35 h]; Supply and cast in place reinforced concrete for Box culverts - ST [274.52 m3]; Supply, placing, and fixing of high tensile reinforcement steel for Box culverts - ST [58.66 Ton] | 482,242.24 | 482,242.24 | L122 | Z3 | CONS | ST | Raft Works | bef |
| RHD4CZ3L122ST4500 |  | Wall and slab works for Box Culvert - (RD-L-12/2)-Z3-L122-ST | 5d | 2026-08-13 A | 2026-09-23 A | RHD4CZ3L122ST4400 | 100% |  | 2027-01-06 | 2027-01-11 | Carpenter [37.35 h]; Skilled labor [45.3 h]; Steel Fixer [7.95 h]; Equipment Opreator [76.34 h]; Boom Truck [1.6 h]; Concrete Mixer Truck [37.35 h]; Concrete Pump [37.35 h]; Supply and cast in place reinforced concrete for Box culverts - ST [343.15 m3]; Supply, placing, and fixing of high tensile reinforcement steel for Box culverts - ST [87.99 Ton] | 655,831.44 | 655,831.44 | L122 | Z3 | CONS | ST | Wall and slab Works | bef |
| RHD4CZ3L122ST4600 |  | Insulation and Testing for Box Culvert - (RD-L-12/2)-Z3-L122-ST | 4d | 2026-09-24 A | 2026-09-28 A | RHD4CZ3L122ST4700, RHD4CZ3L122ST5400, RHD4CZ3L122ST1503 | 100% |  | 2027-01-30 | 2027-02-02 | Skilled labor [37.35 h]; Unskilled Labor [74.71 h]; Equipment Opreator [37.35 h]; Water Truck [37.35 h]; Supply and cast in place reinforced concrete for Box culverts - ST [68.63 m3] | 67,531.92 | 67,531.92 | L122 | Z3 | CONS | ST | Insulation and Testing | bef |
| RHD4CZ3L122ST4700 |  | Backfilling works for Box Culvert - (RD-L-12/2)-Z3-L122-ST | 9d | 2027-07-15 | 2027-07-25 | RHD4CZ3L122ST4500, RHD4CZ3L122ST5300 |  |  |  |  | Skilled labor [97.47 h]; Unskilled Labor [194.83 h]; Equipment Opreator [155.95 h]; Boom Truck [48.68 h]; Water Truck [9.69 h]; Dump Truck [97.47 h]; Excavation for culverts (all types of soil) including backfilling - ST [536.83 m3] | 9,662.94 |  | L122 | Z3 | CONS | ST | Backfilling | bef |
|  | 4301 | **RHD4-02-002-L122-(ST)-Concrete Chambers** |  | 2026-09-30 | 2027-07-17 |  |  |  |  |  |  |  |  |  |  |  |  |  |  |
| RHD4CZ3L122ST5100 |  | Excavation and Bedding for Concrete Chambers - for Box Culvert - (RD-L-12/2)-Z3-L122-ST | 2d | 2026-09-30 A | 2027-07-10 | RHD4CZ3L122ST4500 | 50% | 2d | 2026-09-30 | 2026-10-01 | Skilled labor [21.78 h]; Unskilled Labor [21.78 h]; Equipment Opreator [4.36 h]; Excavator-Poclain [2.18 h]; Dump Truck [2.18 h]; Concrete chambers - ST - Size 1.8 x 2.0 m, depth 4.51-5.5 m [0.3 nr] | 11,612.4 | 5,806.2 | L122 | Z3 | CONS | ST | Excavation & Bedding | bef |
| RHD4CZ3L122ST5200 |  | PC works for Concrete Chambers - for Box Culvert - (RD-L-12/2)-Z3-L122-ST | 2d | 2026-10-03 A | 2027-07-12 | RHD4CZ3L122ST5100 | 50% | 2d | 2026-10-03 | 2026-10-04 | Skilled labor [21.78 h]; Unskilled Labor [21.78 h]; Equipment Opreator [4.36 h]; Excavator-Poclain [2.18 h]; Dump Truck [2.18 h]; Concrete chambers - ST - Size 1.8 x 2.0 m, depth 4.51-5.5 m [0.2 nr] | 7,741.6 | 3,870.8 | L122 | Z3 | CONS | ST | PC Works | bef |
| RHD4CZ3L122ST5300 |  | Installation for Concrete Chambers - for Box Culvert - (RD-L-12/2)-Z3-L122-ST | 2d | 2026-10-05 A | 2027-07-14 | RHD4CZ3L122ST5200 | 50% | 2d | 2026-10-05 | 2026-10-06 | Skilled labor [21.78 h]; Unskilled Labor [21.78 h]; Equipment Opreator [4.36 h]; Excavator-Poclain [2.18 h]; Dump Truck [2.18 h]; Concrete chambers - ST - Size 1.8 x 2.0 m, depth 4.51-5.5 m [1.1 nr] | 42,578.8 | 21,289.4 | L122 | Z3 | CONS | ST | Installation | bef |
| RHD4CZ3L122ST5400 |  | Backfilling works for Concrete Chambers - for Box Culvert - (RD-L-12/2)-Z3-L122-ST | 2d | 2027-07-15 | 2027-07-17 | RHD4CZ3L122ST5300 |  |  |  |  | Skilled labor [21.78 h]; Unskilled Labor [21.78 h]; Equipment Opreator [4.36 h]; Excavator-Poclain [2.18 h]; Dump Truck [2.18 h]; Concrete chambers - ST - Size 1.8 x 2.0 m, depth 4.51-5.5 m [0.4 nr] | 15,483.2 |  | L122 | Z3 | CONS | ST | Backfilling Works | bef |

| ID | WBS | Activity | Duration | Start | Finish | Predecessors | Complete | Resources | Cost | Actual cost | RDH4-01-001-Road and Block Names-1 | RDH4-01-001-Zones-1 | RDH4-01-001-Phases-1 | RDH4-01-001-Networks-1 | RDH4-01-001-Work Method-1 | RDH4-01-001-MENEM |
| --- | --- | --- | --- | --- | --- | --- | --- | --- | --- | --- | --- | --- | --- | --- | --- | --- |
|  | 1892 | **RHD4-02-002-Z3-L122-Sewage Network - SW** |  | 2026-10-20 | 2027-07-27 |  |  |  |  |  |  |  |  |  |  |  |
|  | 577 | **RHD4-02-002-L122-(SW)-MH Works - 1200 mm diameter** |  | 2026-10-20 | 2027-07-27 |  |  |  |  |  |  |  |  |  |  |  |
| RHD4CZ3L122SW3100 |  | Excavation and PC Blinding works for MH 1200 mm - (RD-L-12 /2)-Z3-L122-SW | 2d | 2026-10-20 A | 2026-10-21 A | RHD4CZ3L122ST2500, RHD4CZ3L122ST1500, RHD4CZ3L122ST8500 | 100% | Skilled labor [16.34 h]; Unskilled Labor [16.34 h]; Equipment Opreator [26.14 h]; Excavator-Poclain [16.34 h]; Water Truck [1.6 h]; Dump Truck [8.17 h]; MH (1200mm Diameter) - SW - depth 1.51 - 2.5m [0.5 nr]; MH (1200mm Diameter) - SW - depth 2.51 - 3.5m [0.25 nr] | 7,690 | 7,690 | L122 | Z3 | CONS | SW | Excavation | bef |
| RHD4CZ3L122SW3200 |  | Installation of Base for MH 1200 mm - (RD-L-12 /2)-Z3-L122-SW | 2d | 2027-07-08 | 2027-07-10 | RHD4CZ3L122SW3100 |  | Skilled labor [21.78 h]; Unskilled Labor [21.78 h]; Equipment Opreator [8.71 h]; Boom Truck [4.36 h]; Concrete Mixer Truck [4.36 h]; MH (1200mm Diameter) - SW - depth 1.51 - 2.5m [0.5 nr]; MH (1200mm Diameter) - SW - depth 2.51 - 3.5m [0.25 nr] | 7,690 |  | L122 | Z3 | CONS | SW | Installing Base | bef |
| RHD4CZ3L122SW3300 |  | MH Ring and C.Slab works and Backfilling works for MH 1200 mm - (RD-L-12 /2)-Z3-L122-SW | 2d | 2027-07-11 | 2027-07-12 | RHD4CZ3L122SW3200 |  | Skilled labor [21.78 h]; Unskilled Labor [21.78 h]; Equipment Opreator [15.25 h]; Boom Truck [8.71 h]; Concrete Mixer Truck [6.53 h]; MH (1200mm Diameter) - SW - depth 1.51 - 2.5m [0.7 nr]; MH (1200mm Diameter) - SW - depth 2.51 - 3.5m [0.35 nr] | 10,766 |  | L122 | Z3 | CONS | SW | Installing Rings | bef |
| RHD4CZ3L122SW3400 |  | Steel Cover for MH 1200 mm - (RD-L-12 /2)-Z3-L122-SW | 2d | 2027-07-13 | 2027-07-14 | RHD4CZ3L122SW3300 |  | Skilled labor [10.89 h]; Unskilled Labor [21.78 h]; Equipment Opreator [2.18 h]; Boom Truck [2.18 h]; MH (1200mm Diameter) - SW - depth 1.51 - 2.5m [0.1 nr]; MH (1200mm Diameter) - SW - depth 2.51 - 3.5m [0.05 nr] | 1,538 |  | L122 | Z3 | CONS | SW | Steel Cover | bef |
| RHD4CZ3L122SW3500 |  | Finishing, Benching, Testing works for MH 1200 mm - (RD-L-12 /2)-Z3-L122-SW | 2d | 2027-07-26 | 2027-07-27 | RHD4CZ3L122SW3400, RHD4CZ3L122ST4600 |  | Skilled labor [21.78 h]; Unskilled Labor [43.56 h]; Plumber [21.78 h]; Equipment Opreator [4.36 h]; Water Truck [4.36 h]; MH (1200mm Diameter) - SW - depth 1.51 - 2.5m [0.2 nr]; MH (1200mm Diameter) - SW - depth 2.51 - 3.5m [0.1 nr] | 3,076 |  | L122 | Z3 | CONS | SW | Benching | bef |
|  | 1895 | **RHD4-02-002-L122-(SW)-GRP Pipes - 500 mm diameter** |  |  |  |  |  |  |  |  |  |  |  |  |  |  |
|  | 573 | **RHD4-02-002-L122-(SW)-UPVC Pipes - 200 mm diameter** |  | 2026-10-27 | 2027-07-17 |  |  |  |  |  |  |  |  |  |  |  |
| RHD4CZ3L122SW2100 |  | Excavation works for UPVC Pipe Line 200 mm - (RD-L-12 /2)-Z3-L122-SW | 2d | 2026-10-27 A | 2026-10-28 A | RHD4CZ3L122SW3100 | 100% | Skilled labor [12.85 h]; Unskilled Labor [12.85 h]; Equipment Opreator [15.36 h]; Excavator-Poclain [12.85 h]; Dump Truck [2.61 h]; UPVC (200mm Diameter) - SW - Depth: less than 1.5m; UPVC (200mm Diameter) - SW - Depth: 1.51m - 2.5m [25.22 m] | 5,472.74 | 5,472.74 | L122 | Z3 | CONS | SW | Excavation | bef |
| RHD4CZ3L122SW2200 |  | Bedding works for UPVC Pipe Line 200 mm - (RD-L-12 /2)-Z3-L122-SW | 2d | 2027-07-08 | 2027-07-10 | RHD4CZ3L122SW2100 |  | Skilled labor [12.85 h]; Unskilled Labor [25.6 h]; Equipment Opreator [25.6 h]; Excavator-Poclain [12.85 h]; Dump Truck [12.85 h]; UPVC (200mm Diameter) - SW - Depth: less than 1.5m; UPVC (200mm Diameter) - SW - Depth: 1.51m - 2.5m [8.41 m] | 1,824.97 |  | L122 | Z3 | CONS | SW | Bedding | bef |
| RHD4CZ3L122SW2300 |  | Installing for UPVC Pipe Line 200 mm - (RD-L-12 /2)-Z3-L122-SW | 2d | 2027-07-11 | 2027-07-12 | RHD4CZ3L122SW2200 |  | Unskilled Labor [25.6 h]; Plumber [12.85 h]; Equipment Opreator [12.85 h]; Boom Truck [12.85 h]; UPVC (200mm Diameter) - SW - Depth: less than 1.5m; UPVC (200mm Diameter) - SW - Depth: 1.51m - 2.5m [67.24 m] | 14,591.08 |  | L122 | Z3 | CONS | SW | Installation | bef |
| RHD4CZ3L122SW2400 |  | Primary Test for UPVC Pipe Line 200 mm - (RD-L-12 /2)-Z3-L122-SW | 2d | 2027-07-13 | 2027-07-14 | RHD4CZ3L122SW2300 |  | Unskilled Labor [8.49 h]; Plumber [8.49 h]; Equipment Opreator [8.49 h]; Water Truck [8.49 h]; UPVC (200mm Diameter) - SW - Depth: less than 1.5m; UPVC (200mm Diameter) - SW - Depth: 1.51m - 2.5m [33.62 m] | 7,295.54 |  | L122 | Z3 | CONS | SW | Primary Test | bef |
| RHD4CZ3L122SW2500 |  | Backfilling and warning tape works for UPVC Pipe Line 200 mm - (RD-L-12 /2)-Z3-L122-SW | 2d | 2027-07-15 | 2027-07-17 | RHD4CZ3L122SW2400, RHD4CZ5L016IRR3200 |  | Skilled labor [12.85 h]; Unskilled Labor [25.6 h]; Equipment Opreator [25.6 h]; Excavator-Poclain [12.85 h]; Dump Truck [12.85 h]; UPVC (200mm Diameter) - SW - Depth: less than 1.5m; UPVC (200mm Diameter) - SW - Depth: 1.51m - 2.5m [33.62 m] | 7,295.54 |  | L122 | Z3 | CONS | SW | Backfilling | bef |
|  | 1894 | **RHD4-02-002-L122-(SW)-GRP Pipes - 400 mm diameter** |  |  |  |  |  |  |  |  |  |  |  |  |  |  |
|  | 1893 | **RHD4-02-002-L122-(SW)-GRP Pipes - 300 mm diameter** |  |  |  |  |  |  |  |  |  |  |  |  |  |  |
|  | 1900 | **RHD4-02-002-L122-(SW)-HDPE Pipes - 400 mm diameter** |  |  |  |  |  |  |  |  |  |  |  |  |  |  |
|  | 1901 | **RHD4-02-002-L122-(SW)-Concrete Encasement** |  |  |  |  |  |  |  |  |  |  |  |  |  |  |
|  | 1929 | **RHD4-02-002-Z3-L122-Potable Network - PT** |  | 2027-07-18 | 2027-09-21 |  |  |  |  |  |  |  |  |  |  |  |
|  | 1933 | **RHD4-02-002-L122-(PT)-HDPE Pipes - 400 mm diameter** |  | 2027-07-18 | 2027-08-31 |  |  |  |  |  |  |  |  |  |  |  |
| RHD4CZ3L122PT1103 |  | Excavation works for HDPE Pipline 400 mm - (RD-L-12/2)-Z3-L122-PT | 8d | 2027-07-18 | 2027-07-26 | RHD4ENSDZ3APPPT130, RHD4ENMSPT2000, RHD4CZ3L122SW2500 |  | Skilled labor [78.63 h]; Unskilled Labor [88.76 h]; Equipment Opreator [102.48 h]; Excavator-Poclain [78.63 h]; Dump Truck [23.74 h]; HDPE (400mm Diameter) - PT - Depth: less than 1.5m [162.19 m]; HDPE (400mm Diameter) - PT - Depth: 1.51m - 2.5m | 55,144.6 |  | L122 | Z3 | CONS | PT | Excavation | bef |
| RHD4CZ3L122PT1203 |  | Bedding works for HDPE Pipline 400 mm - (RD-L-12/2)-Z3-L122-PT | 7d | 2027-07-27 | 2027-08-03 | RHD4CZ3L122PT1103 |  | Skilled labor [58.92 h]; Unskilled Labor [137.87 h]; Plumber [10.02 h]; Equipment Opreator [127.74 h]; Excavator-Poclain [58.92 h]; Boom Truck [10.02 h]; Dump Truck [58.92 h]; HDPE (400mm Diameter) - PT - Depth: less than 1.5m [81.09 m]; HDPE (400mm Diameter) - PT - Depth: 1.51m - 2.5m | 27,570.6 |  | L122 | Z3 | CONS | PT | Bedding | bef |
| RHD4CZ3L122PT1303 |  | Installing for HDPE Pipline 400 mm - (RD-L-12/2)-Z3-L122-PT | 11d | 2027-08-04 | 2027-08-16 | RHD4PRSHLDOSPT1000, RHD4PRSHLSTAGPT1000, RHD4CZ3L122PT1203 |  | Unskilled Labor [225.43 h]; Plumber [117.72 h]; Equipment Opreator [117.72 h]; Boom Truck [107.71 h]; Water Truck [10.02 h]; HDPE (400mm Diameter) - PT - Depth: less than 1.5m [840.35 m]; HDPE (400mm Diameter) - PT - Depth: 1.51m - 2.5m | 285,718.97 |  | L122 | Z3 | CONS | PT | Installation | bef |
| RHD4CZ3L122PT1403 |  | Primary Test for HDPE Pipline 400 mm - (RD-L-12/2)-Z3-L122-PT | 5d | 2027-08-17 | 2027-08-22 | RHD4CZ3L122PT1303 |  | Skilled labor [10.02 h]; Unskilled Labor [59.46 h]; Plumber [39.31 h]; Equipment Opreator [59.46 h]; Excavator-Poclain [10.02 h]; Water Truck [39.31 h]; Dump Truck [10.02 h]; HDPE (400mm Diameter) - PT - Depth: less than 1.5m [324.38 m]; HDPE (400mm Diameter) - PT - Depth: 1.51m - 2.5m | 110,289.2 |  | L122 | Z3 | CONS | PT | Primary Test | bef |
| RHD4CZ3L122PT1503 |  | Backfilling and warning tape works for HDPE Pipline 400 mm - (RD-L-12/2)-Z3-L122-PT | 8d | 2027-08-23 | 2027-08-31 | RHD4CZ3L122PT1403 |  | Skilled labor [83.31 h]; Unskilled Labor [166.62 h]; Equipment Opreator [166.62 h]; Excavator-Poclain [83.31 h]; Dump Truck [83.31 h]; HDPE (400mm Diameter) - PT - Depth: less than 1.5m [324.38 m] | 110,289.2 |  | L122 | Z3 | CONS | PT | Backfilling | bef |
