# Developing Infrastructure Networks in Riyadh's Fourth Industrial City-RVSD#01-REV01-1 baseline modif

Schedule from Primavera P6, 2025-11-30 to 2029-01-25, data date 2026-11-02, costs in USD, A marks actual dates.
Must finish by 2028-05-30

| ID | WBS | Activity | Duration | Start | Finish | Predecessors | Resources | Cost | RDH4-01-001-Road and Block Names-1 | RDH4-01-001-Zones-1 | RDH4-01-001-Phases-1 | RDH4-01-001-Networks-1 | RDH4-01-001-Work Method-1 | RDH4-01-001-MENEM |
| --- | --- | --- | --- | --- | --- | --- | --- | --- | --- | --- | --- | --- | --- | --- |
|  | 1747 | **RHD4-02-002-L122-(PT)-Butterfly Valve Chamber** |  | 2027-07-27 | 2027-08-04 |  |  |  |  |  |  |  |  |  |
| RHD4CZ3L122PT2100 |  | Excavation and Bedding for Butterfly Valve Chamber for Potable Water Network - (RD-L-12/2)-Z3-L122-PT | 2d | 2027-07-27 | 2027-07-28 | RHD4CZ3L122PT1103 | Skilled labor [16.34 h]; Unskilled Labor [16.34 h]; Equipment Opreator [3.27 h]; Excavator-Poclain [1.6 h]; Dump Truck [1.6 h]; Valve chambers - PT [0.75 nr] | 9,363 | L122 | Z3 | CONS | PT | Excavation and Bedding | bef |
| RHD4CZ3L122PT2200 |  | PC works for Butterfly Valve Chamber for Potable Water Network - (RD-L-12/2)-Z3-L122-PT | 2d | 2027-07-29 | 2027-07-31 | RHD4CZ3L122PT2100 | Skilled labor [16.34 h]; Unskilled Labor [32.67 h]; Equipment Opreator [1.6 h]; Concrete Pump [1.6 h]; Valve chambers - PT [0.3 nr] | 3,745.2 | L122 | Z3 | CONS | PT | PC Works | bef |
| RHD4CZ3L122PT2300 |  | Installation for Butterfly Valve Chamber for Potable Water Network - (RD-L-12/2)-Z3-L122-PT | 2d | 2027-08-01 | 2027-08-02 | RHD4CZ3L122PT2200 | Skilled labor [16.34 h]; Unskilled Labor [32.67 h]; Equipment Opreator [3.27 h]; Boom Truck [3.27 h]; Valve chambers - PT [1.65 nr] | 20,598.6 | L122 | Z3 | CONS | PT | Installation | bef |
| RHD4CZ3L122PT2400 |  | Backfilling works for Butterfly Valve Chamber for Potable Water Network - (RD-L-12/2)-Z3-L122-PT | 2d | 2027-08-03 | 2027-08-04 | RHD4CZ3L122PT2300 | Skilled labor [16.34 h]; Unskilled Labor [32.67 h]; Equipment Opreator [3.27 h]; Water Truck [1.6 h]; Dump Truck [1.6 h]; Valve chambers - PT [0.3 nr] | 3,745.2 | L122 | Z3 | CONS | PT | Backfilling Works | bef |
|  | 1748 | **RHD4-02-002-L122-(PT)-Butterfly Valves** |  | 2027-08-03 | 2027-08-07 |  |  |  |  |  |  |  |  |  |
| RHD4CZ3L122PT3101 |  | Installation for Butterfly Valves for Potable Water Network - (RD-L-12/2)-Z3-L122-PT | 2d | 2027-08-03 | 2027-08-04 | RHD4CZ3L122PT2300 | Unskilled Labor [16.34 h]; Plumber [16.34 h]; Butterfly valves dia 400 - PT [2.7 nr] | 82,736.1 | L122 | Z3 | CONS | PT | Installation | bef |
| RHD4CZ3L122PT3201 |  | Stem and Service box for Butterfly Valves for Potable Water Network - (RD-L-12/2)-Z3-L122-PT | 2d | 2027-08-05 | 2027-08-07 | RHD4CZ3L122PT3101, RHD4CZ3L122PT2400 | Unskilled Labor [16.34 h]; Plumber [16.34 h]; Butterfly valves dia 400 - PT [0.3 nr] | 9,192.9 | L122 | Z3 | CONS | PT | Stem and Service box | bef |
|  | 1939 | **RHD4-02-002-L122-(PT)-Wash out Valves** |  | 2027-09-15 | 2027-09-21 |  |  |  |  |  |  |  |  |  |
| RHD4CZ3L122PT3102 |  | Installation for Wash out Valves for Potable Water Network - (RD-L-12/2)-Z3-L122-PT | 2d | 2027-09-15 | 2027-09-16 | RHD4PRSHLDOSPT1200, RHD4PRSHLSTAGPT1200, RHD4CZ3L122PT2301 | Unskilled Labor [5.45 h]; Plumber [5.45 h]; Wash out valve diameter 100 mm - PT [0.9 nr] | 3,373.2 | L122 | Z3 | CONS | PT | Installation | bef |
| RHD4CZ3L122PT3202 |  | Stem and Service box for Wash out Valves for Potable Water Network - (RD-L-12/2)-Z3-L122-PT | 2d | 2027-09-20 | 2027-09-21 | RHD4PRSHLDOSPT1300, RHD4PRSHLSTAGPT1300, RHD4CZ3L122PT3102, RHD4CZ3L122PT2401 | Unskilled Labor [5.45 h]; Plumber [5.45 h]; Wash out valve diameter 100 mm - PT [0.1 nr] | 374.8 | L122 | Z3 | CONS | PT | Stem and Service box | bef |
|  | 1940 | **RHD4-02-002-L122-(PT)-Air Valve Chambers** |  | 2027-07-27 | 2027-08-04 |  |  |  |  |  |  |  |  |  |
| RHD4CZ3L122PT2102 |  | Excavation and Bedding for Air Valve Chambers for Potable Water Network - (RD-L-12/2)-Z3-L122-PT | 2d | 2027-07-27 | 2027-07-28 | RHD4ENSDZ3APPPT130, RHD4CZ3L122PT1103 | Skilled labor [10.89 h]; Unskilled Labor [10.89 h]; Equipment Opreator [2.18 h]; Excavator-Poclain [1.09 h]; Dump Truck [1.09 h]; Air Valve chambers - PT [0.5 nr] | 2,386 | L122 | Z3 | CONS | PT | Excavation and Bedding | bef |
| RHD4CZ3L122PT2202 |  | PC works for Air Valve Chambers for Potable Water Network - (RD-L-12/2)-Z3-L122-PT | 2d | 2027-07-29 | 2027-07-31 | RHD4CZ3L122PT2102 | Skilled labor [10.89 h]; Unskilled Labor [21.78 h]; Equipment Opreator [1.09 h]; Concrete Pump [1.09 h]; Air Valve chambers - PT [0.2 nr] | 954.4 | L122 | Z3 | CONS | PT | PC Works | bef |
| RHD4CZ3L122PT2302 |  | Installation for Air Valve Chambers for Potable Water Network - (RD-L-12/2)-Z3-L122-PT | 2d | 2027-08-01 | 2027-08-02 | RHD4PRSHLDOSPT1100, RHD4PRSHLDOSPT1400, RHD4PRSHLSTAGPT1100, RHD4PRSHLSTAGPT1400, RHD4CZ3L122PT2202 | Skilled labor [10.89 h]; Unskilled Labor [21.78 h]; Equipment Opreator [2.18 h]; Boom Truck [2.18 h]; Air Valve chambers - PT [1.1 nr] | 5,249.2 | L122 | Z3 | CONS | PT | Installation | bef |
| RHD4CZ3L122PT2402 |  | Backfilling works for Air Valve Chambers for Potable Water Network - (RD-L-12/2)-Z3-L122-PT | 2d | 2027-08-03 | 2027-08-04 | RHD4CZ3L122PT2302 | Skilled labor [10.89 h]; Unskilled Labor [21.78 h]; Equipment Opreator [2.18 h]; Water Truck [1.09 h]; Dump Truck [1.09 h]; Air Valve chambers - PT [0.2 nr] | 954.4 | L122 | Z3 | CONS | PT | Backfilling Works | bef |
|  | 1941 | **RHD4-02-002-L122-(PT)-Air Valves** |  | 2027-08-03 | 2027-08-07 |  |  |  |  |  |  |  |  |  |
| RHD4CZ3L122PT3103 |  | Installation for Air Valves for Potable Water Network - (RD-L-12/2)-Z3-L122-PT | 2d | 2027-08-03 | 2027-08-04 | RHD4PRSHLDOSPT1200, RHD4PRSHLSTAGPT1200, RHD4CZ3L122PT2302 | Unskilled Labor [10.89 h]; Plumber [10.89 h]; Air valve diameter 65 mm - PT [1.8 nr] | 9,909 | L122 | Z3 | CONS | PT | Installation | bef |
| RHD4CZ3L122PT3203 |  | Stem and Service box for Air Valves for Potable Water Network - (RD-L-12/2)-Z3-L122-PT | 2d | 2027-08-05 | 2027-08-07 | RHD4PRSHLDOSPT1300, RHD4PRSHLSTAGPT1300, RHD4CZ3L122PT3103, RHD4CZ3L122PT2402 | Unskilled Labor [10.89 h]; Plumber [10.89 h]; Air valve diameter 65 mm - PT [0.2 nr] | 1,101 | L122 | Z3 | CONS | PT | Stem and Service box | bef |
|  | 1942 | **RHD4-02-002-L122-(PT)-Fire Hydrant** |  | 2027-09-01 | 2027-09-12 |  |  |  |  |  |  |  |  |  |
| RHD4CZ3L122PT4100 |  | Excavation and Bedding and Pipe Installation for Fire Hydrant - (RD-L-12/2)-Z3-L122-PT | 2d | 2027-09-01 | 2027-09-02 | RHD4ENSDZ3APPPT130, RHD4CZ3L122PT1503 | Skilled labor [108.9 h]; Unskilled Labor [108.9 h]; Plumber [108.9 h]; Equipment Opreator [54.45 h]; Excavator-Poclain [54.45 h]; 3-outlet fire hydrant (2 x 2.5 inch and 1 x 4.5 inch) in the form of a separate dry vacuum cylinder [2 nr] | 25,240 | L122 | Z3 | CONS | PT | Excavation | bef |
| RHD4CZ3L122PT4200 |  | Valve Installation for Fire Hydrant - (RD-L-12/2)-Z3-L122-PT | 2d | 2027-09-04 | 2027-09-05 | RHD4CZ3L122PT4100 | Unskilled Labor [72.64 h]; Plumber [72.64 h]; 3-outlet fire hydrant (2 x 2.5 inch and 1 x 4.5 inch) in the form of a separate dry vacuum cylinder [4 nr] | 50,480 | L122 | Z3 | CONS | PT | Valve | bef |
| RHD4CZ3L122PT4300 |  | Stem for Fire Hydrant - (RD-L-12/2)-Z3-L122-PT | 2d | 2027-09-06 | 2027-09-07 | RHD4CZ3L122PT4200 | Unskilled Labor [72.64 h]; Plumber [72.64 h]; 3-outlet fire hydrant (2 x 2.5 inch and 1 x 4.5 inch) in the form of a separate dry vacuum cylinder [6 nr] | 75,720 | L122 | Z3 | CONS | PT | Stem | bef |
| RHD4CZ3L122PT4400 |  | Fire Installation for Fire Hydrant - (RD-L-12/2)-Z3-L122-PT | 2d | 2027-09-08 | 2027-09-09 | RHD4PRSHLDOSPT1500, RHD4PRSHLSTAGPT1500, RHD4CZ3L122PT4300 | Unskilled Labor [72.64 h]; Plumber [72.64 h]; Equipment Opreator [72.64 h]; Boom Truck [72.64 h]; 3-outlet fire hydrant (2 x 2.5 inch and 1 x 4.5 inch) in the form of a separate dry vacuum cylinder [7 nr] | 88,340 | L122 | Z3 | CONS | PT | Fire | bef |
| RHD4CZ3L122PT4500 |  | Protection Barriers for Fire Hydrant - (RD-L-12/2)-Z3-L122-PT | 2d | 2027-09-11 | 2027-09-12 | RHD4CZ3L122PT4400, RHD4CZ3L122PT3203 | Unskilled Labor [43.56 h]; Plumber [43.56 h]; 3-outlet fire hydrant (2 x 2.5 inch and 1 x 4.5 inch) in the form of a separate dry vacuum cylinder [1 nr] | 12,620 | L122 | Z3 | CONS | PT | Protection Barriers | bef |

| ID | WBS | Activity | Duration | Start | Finish | Predecessors | Resources | Cost | RDH4-01-001-Road and Block Names-1 | RDH4-01-001-Zones-1 | RDH4-01-001-Phases-1 | RDH4-01-001-Networks-1 | RDH4-01-001-Work Method-1 | RDH4-01-001-MENEM |
| --- | --- | --- | --- | --- | --- | --- | --- | --- | --- | --- | --- | --- | --- | --- |
|  | 1943 | **RHD4-02-002-L122-(PT)-Concrete Encasement** |  |  |  |  |  |  |  |  |  |  |  |  |
|  | 1938 | **RHD4-02-002-L122-(PT)-Wash out Valve Chambers** |  | 2027-09-01 | 2027-09-19 |  |  |  |  |  |  |  |  |  |
| RHD4CZ3L122PT2101 |  | Excavation and Bedding for Wash out Valve Chambers for Potable Water Network - (RD-L-12/2)-Z3-L122-PT | 4d | 2027-09-01 | 2027-09-05 | RHD4ENSDZ3APPPT130, RHD4CZ3L122PT1503 | Skilled labor [5.45 h]; Unskilled Labor [5.45 h]; Equipment Opreator [1.09 h]; Excavator-Poclain [0.54 h]; Dump Truck [0.54 h]; Wash out chambers - PT [0.25 nr] | 4,686.25 | L122 | Z3 | CONS | PT | Excavation and Bedding | bef |
| RHD4CZ3L122PT2201 |  | PC works for Wash out Valve Chambers for Potable Water Network - (RD-L-12/2)-Z3-L122-PT | 4d | 2027-09-06 | 2027-09-09 | RHD4CZ3L122PT2101 | Skilled labor [5.45 h]; Unskilled Labor [10.89 h]; Equipment Opreator [0.54 h]; Concrete Pump [0.54 h]; Wash out chambers - PT [0.1 nr] | 1,874.5 | L122 | Z3 | CONS | PT | PC Works | bef |
| RHD4CZ3L122PT2301 |  | Installation for Wash out Valve Chambers for Potable Water Network - (RD-L-12/2)-Z3-L122-PT | 4d | 2027-09-11 | 2027-09-14 | RHD4PRSHLDOSPT1100, RHD4PRSHLDOSPT1400, RHD4PRSHLSTAGPT1100, RHD4PRSHLSTAGPT1400, RHD4CZ3L122PT2201 | Skilled labor [5.45 h]; Unskilled Labor [10.89 h]; Equipment Opreator [1.09 h]; Boom Truck [1.09 h]; Wash out chambers - PT [0.55 nr] | 10,309.75 | L122 | Z3 | CONS | PT | Installation | bef |
| RHD4CZ3L122PT2401 |  | Backfilling works for Wash out Valve Chambers for Potable Water Network - (RD-L-12/2)-Z3-L122-PT | 4d | 2027-09-15 | 2027-09-19 | RHD4CZ3L122PT2301 | Skilled labor [5.45 h]; Unskilled Labor [10.89 h]; Equipment Opreator [1.09 h]; Water Truck [0.54 h]; Dump Truck [0.54 h]; Wash out chambers - PT [0.1 nr] | 1,874.5 | L122 | Z3 | CONS | PT | Backfilling Works | bef |
|  | 1944 | **RHD4-02-002-Z3-L122-Irrigation Network - IRR** |  | 2027-07-27 | 2027-10-10 |  |  |  |  |  |  |  |  |  |
|  | 1951 | **RHD4-02-002-L122-(IRR)-HDPE Pipes - 450 mm diameter** |  |  |  |  |  |  |  |  |  |  |  |  |
|  | 1950 | **RHD4-02-002-L122-(IRR)-HDPE Pipes - 400 mm diameter** |  |  |  |  |  |  |  |  |  |  |  |  |
|  | 1949 | **RHD4-02-002-L122-(IRR)-HDPE Pipes - 315 mm diameter** |  | 2027-08-23 | 2027-10-10 |  |  |  |  |  |  |  |  |  |
| RHD4CZ3L122IRR1104 |  | Excavation works for HDPE Pipline 315 mm - (RD-L-12/2)-Z3-L122-IRR | 10d | 2027-08-23 | 2027-09-02 | RHD4ENSDZ3APPIRR140, RHD4ENMSRR2000, RHD4CZ3L122PT1403 | Skilled labor [102.8 h]; Unskilled Labor [102.8 h]; Equipment Opreator [123.39 h]; Excavator-Poclain [102.8 h]; Dump Truck [20.58 h]; HDPE (315mm Diameter) - TSE - Depth: less than 1.5m [141 m]; HDPE (315mm Diameter) - TSE - Depth: more than 1.51m [0.91 m] | 41,608.75 | L122 | Z3 | CONS | IRR | Excavation | bef |
| RHD4CZ3L122IRR1204 |  | Bedding works for HDPE Pipline 315 mm - (RD-L-12/2)-Z3-L122-IRR | 8d | 2027-09-04 | 2027-09-12 | RHD4CZ3L122IRR1104 | Skilled labor [77.21 h]; Unskilled Labor [154.4 h]; Equipment Opreator [154.4 h]; Excavator-Poclain [77.21 h]; Dump Truck [77.21 h]; HDPE (315mm Diameter) - TSE - Depth: less than 1.5m [70.5 m]; HDPE (315mm Diameter) - TSE - Depth: more than 1.51m [0.3 m] | 20,754 | L122 | Z3 | CONS | IRR | Bedding | bef |
| RHD4CZ3L122IRR1304 |  | Installing for HDPE Pipline 315 mm - (RD-L-12/2)-Z3-L122-IRR | 10d | 2027-09-13 | 2027-09-25 | RHD4PRSHLDOSIRR1000, RHD4PRSHLSTAGIRR1000, RHD4CZ3L122IRR1204 | Unskilled Labor [205.6 h]; Plumber [102.8 h]; Equipment Opreator [102.8 h]; Boom Truck [102.8 h]; HDPE (315mm Diameter) - TSE - Depth: less than 1.5m [634.5 m]; HDPE (315mm Diameter) - TSE - Depth: more than 1.51m [2.42 m] | 186,695 | L122 | Z3 | CONS | IRR | Installation | bef |
| RHD4CZ3L122IRR1404 |  | Primary Test for HDPE Pipline 315 mm - (RD-L-12/2)-Z3-L122-IRR | 5d | 2027-09-26 | 2027-09-30 | RHD4PRSHLDOSTC1000, RHD4PRSHLSTAGTC1000, RHD4CZ3L122IRR1304 | Unskilled Labor [30.93 h]; Plumber [30.93 h]; Equipment Opreator [30.93 h]; Water Truck [30.93 h]; HDPE (315mm Diameter) - TSE - Depth: less than 1.5m [282 m]; HDPE (315mm Diameter) - TSE - Depth: more than 1.51m [1.21 m] | 83,019.25 | L122 | Z3 | CONS | IRR | Primary Test | bef |
| RHD4CZ3L122IRR1504 |  | Backfilling and warning tape works for HDPE Pipline 315 mm - (RD-L-12/2)-Z3-L122-IRR | 8d | 2027-10-02 | 2027-10-10 | RHD4CZ3L122IRR1404 | Skilled labor [77.21 h]; Unskilled Labor [154.4 h]; Equipment Opreator [154.4 h]; Excavator-Poclain [77.21 h]; Dump Truck [77.21 h]; HDPE (315mm Diameter) - TSE - Depth: less than 1.5m [282 m]; HDPE (315mm Diameter) - TSE - Depth: more than 1.51m [1.21 m] | 83,019.25 | L122 | Z3 | CONS | IRR | Backfilling | bef |
|  | 1947 | **RHD4-02-002-L122-(IRR)-HDPE Pipes - 200 mm diameter** |  |  |  |  |  |  |  |  |  |  |  |  |
|  | 1945 | **RHD4-02-002-L122-(IRR)-HDPE Pipes - 160 mm diameter** |  | 2027-07-27 | 2027-09-29 |  |  |  |  |  |  |  |  |  |
| RHD4CZ3L122IRR1100 |  | Excavation works for HDPE Pipline 160 mm - (RD-L-12/2)-Z3-L122-IRR | 2d | 2027-07-27 | 2027-07-28 | RHD4ENSDZ3APPIRR140, RHD4ENMSRR2000, RHD4CZ3L122PT1103 | Skilled labor [12.2 h]; Unskilled Labor [12.2 h]; Equipment Opreator [14.59 h]; Excavator-Poclain [12.2 h]; Dump Truck [2.4 h]; HDPE (160mm Diameter) - TSE - Depth: less than 1.5m [16.8 m] | 2,066.4 | L122 | Z3 | CONS | IRR | Excavation | bef |
| RHD4CZ3L122IRR1200 |  | Bedding works for HDPE Pipline 160 mm - (RD-L-12/2)-Z3-L122-IRR | 2d | 2027-07-29 | 2027-07-31 | RHD4CZ3L122IRR1100 | Skilled labor [9.15 h]; Unskilled Labor [18.3 h]; Equipment Opreator [18.3 h]; Excavator-Poclain [9.15 h]; Dump Truck [9.15 h]; HDPE (160mm Diameter) - TSE - Depth: less than 1.5m [8.4 m] | 1,033.2 | L122 | Z3 | CONS | IRR | Bedding | bef |
| RHD4CZ3L122IRR1300 |  | Installing for HDPE Pipline 160 mm - (RD-L-12/2)-Z3-L122-IRR | 2d | 2027-08-01 | 2027-08-02 | RHD4PRSHLDOSIRR1000, RHD4PRSHLSTAGIRR1000, RHD4CZ3L122IRR1200 | Unskilled Labor [24.39 h]; Plumber [12.2 h]; Equipment Opreator [12.2 h]; Boom Truck [12.2 h]; HDPE (160mm Diameter) - TSE - Depth: less than 1.5m [75.6 m] | 9,298.8 | L122 | Z3 | CONS | IRR | Installation | bef |
| RHD4CZ3L122IRR1400 |  | Primary Test for HDPE Pipline 160 mm - (RD-L-12/2)-Z3-L122-IRR | 2d | 2027-09-26 | 2027-09-27 | RHD4CZ3L122IRR1300, RHD4CZ3L122IRR3100 | Unskilled Labor [3.7 h]; Plumber [3.7 h]; Equipment Opreator [3.7 h]; Water Truck [3.7 h]; HDPE (160mm Diameter) - TSE - Depth: less than 1.5m [33.6 m] | 4,132.8 | L122 | Z3 | CONS | IRR | Primary Test | bef |
| RHD4CZ3L122IRR1500 |  | Backfilling and warning tape works for HDPE Pipline 160 mm - (RD-L-12/2)-Z3-L122-IRR | 2d | 2027-09-28 | 2027-09-29 | RHD4CZ3L122IRR1400 | Skilled labor [9.15 h]; Unskilled Labor [18.3 h]; Equipment Opreator [18.3 h]; Excavator-Poclain [9.15 h]; Dump Truck [9.15 h]; HDPE (160mm Diameter) - TSE - Depth: less than 1.5m [33.6 m] | 4,132.8 | L122 | Z3 | CONS | IRR | Backfilling | bef |
|  | 1953 | **RHD4-02-002-L122-(IRR)-Gate Valves (Direct Buried)** |  | 2027-09-21 | 2027-09-28 |  |  |  |  |  |  |  |  |  |
| RHD4CZ3L122IRR3100 |  | Installation for Direct Buried Gate Valves - (RD-L-12/2)-Z3-L122-IRR | 3d | 2027-09-21 | 2027-09-25 | RHD4PRSHLDOSIRR1100, RHD4PRSHLSTAGIRR1100, RHD4CZ3L122IRR1304 SS, RHD4CZ3L122IRR1304 FF, RHD4CZ3L122IRR1300 SS, RHD4CZ3L122IRR1300 FF | Unskilled Labor [32.67 h]; Plumber [32.67 h]; Gate valves dia 100 mm - TSE [5.4 nr] | 8,532 | L122 | Z3 | CONS | IRR | Installation | bef |
| RHD4CZ3L122IRR3200 |  | Stem and Service box for Direct Buried Gate Valves - (RD-L-12/2)-Z3-L122-IRR | 3d | 2027-09-26 | 2027-09-28 | RHD4PRSHLDOSIRR1300, RHD4PRSHLSTAGIRR1300, RHD4CZ3L122IRR3100 | Unskilled Labor [32.67 h]; Plumber [32.67 h]; Gate valves dia 100 mm - TSE [0.6 nr] | 948 | L122 | Z3 | CONS | IRR | Stem and Service box | bef |

| ID | WBS | Activity | Duration | Start | Finish | Predecessors | Resources | Cost | RDH4-01-001-Road and Block Names-1 | RDH4-01-001-Zones-1 | RDH4-01-001-Phases-1 | RDH4-01-001-Networks-1 | RDH4-01-001-Work Method-1 | RDH4-01-001-MENEM |
| --- | --- | --- | --- | --- | --- | --- | --- | --- | --- | --- | --- | --- | --- | --- |
|  | 1956 | **RHD4-02-002-L122-(IRR)-Wash out Chamber** |  | 2027-07-29 | 2027-08-07 |  |  |  |  |  |  |  |  |  |
| RHD4CZ3L122IRR2101 |  | Excavation and Bedding for Wash out Chamber for Irrigation Network - (RD-L-12/2)-Z3-L122-IRR | 2d | 2027-07-29 | 2027-07-31 | RHD4ENSDZ3APPIRR140, RHD4CZ3L122IRR1100 | Skilled labor [5.45 h]; Unskilled Labor [5.45 h]; Equipment Opreator [1.09 h]; Excavator-Poclain [0.54 h]; Dump Truck [0.54 h]; Wash out chambers - TSE [0.25 nr] | 4,686.25 | L122 | Z3 | CONS | IRR | Excavation and Bedding | bef |
| RHD4CZ3L122IRR2201 |  | PC works for Wash out Chamber for Irrigation Network - (RD-L-12/2)-Z3-L122-IRR | 2d | 2027-08-01 | 2027-08-02 | RHD4CZ3L122IRR2101 | Skilled labor [5.45 h]; Unskilled Labor [10.89 h]; Equipment Opreator [0.54 h]; Concrete Pump [0.54 h]; Wash out chambers - TSE [0.1 nr] | 1,874.5 | L122 | Z3 | CONS | IRR | PC Works | bef |
| RHD4CZ3L122IRR2301 |  | Installation for Wash out Chamber for Irrigation Network - (RD-L-12/2)-Z3-L122-IRR | 2d | 2027-08-03 | 2027-08-04 | RHD4PRSHLDOSIRR1200, RHD4PRSHLDOSIRR1400, RHD4PRSHLSTAGIRR1200, RHD4PRSHLSTAGIRR1400, RHD4CZ3L122IRR2201 | Skilled labor [5.45 h]; Unskilled Labor [10.89 h]; Equipment Opreator [1.09 h]; Boom Truck [1.09 h]; Wash out chambers - TSE [0.55 nr] | 10,309.75 | L122 | Z3 | CONS | IRR | Installation | bef |
| RHD4CZ3L122IRR2401 |  | Backfilling works for Wash out Chamber for Irrigation Network - (RD-L-12/2)-Z3-L122-IRR | 2d | 2027-08-05 | 2027-08-07 | RHD4CZ3L122IRR2301 | Skilled labor [5.45 h]; Unskilled Labor [10.89 h]; Equipment Opreator [1.09 h]; Water Truck [0.54 h]; Dump Truck [0.54 h]; Wash out chambers - TSE [0.1 nr] | 1,874.5 | L122 | Z3 | CONS | IRR | Backfilling Works | bef |
|  | 1957 | **RHD4-02-002-L122-(IRR)-Wash out Valves** |  | 2027-08-05 | 2027-08-09 |  |  |  |  |  |  |  |  |  |
| RHD4CZ3L122IRR3102 |  | Installation for Wash out Valve for Irrigation Network - (RD-L-12/2)-Z3-L122-IRR | 2d | 2027-08-05 | 2027-08-07 | RHD4PRSHLDOSIRR1100, RHD4PRSHLSTAGIRR1100, RHD4CZ3L122IRR2301 | Unskilled Labor [5.45 h]; Plumber [5.45 h]; Wash out valve diameter 100 mm - TSE [0.9 nr] | 3,373.2 | L122 | Z3 | CONS | IRR | Installation | bef |
| RHD4CZ3L122IRR3202 |  | Stem and Service box for Wash out Valve for Irrigation Network - (RD-L-12/2)-Z3-L122-IRR | 2d | 2027-08-08 | 2027-08-09 | RHD4PRSHLDOSIRR1300, RHD4PRSHLSTAGIRR1300, RHD4CZ3L122IRR3102, RHD4CZ3L122IRR2401 | Unskilled Labor [5.45 h]; Plumber [5.45 h]; Wash out valve diameter 100 mm - TSE [0.1 nr] | 374.8 | L122 | Z3 | CONS | IRR | Stem and Service box | bef |
|  | 1978 | **RHD4-02-002-Z3-L122-Medium Voltage Network - MV** |  | 2027-07-25 | 2027-11-10 |  |  |  |  |  |  |  |  |  |
|  | 1979 | **RHD4-02-002-L122-(MV)-Medium Voltage cable trench** |  | 2027-07-25 | 2027-10-19 |  |  |  |  |  |  |  |  |  |
| RHD4CZ3L122MV1100 |  | Excavation for Medium Voltage Trench - (RD-L-12/2)-Z3-L122-MV | 20d | 2027-07-25 | 2027-08-16 | RHD4ENSDZ3APPMV150, RHD4CZ3L122RD3100, RHD4CZ1C081MV4200 | Skilled labor [199.4 h]; Unskilled Labor [398.91 h]; Equipment Opreator [598.32 h]; Excavator-Poclain [199.4 h]; Dump Truck [398.91 h]; Excavation for Trench size 60cm wide and 80cm deep ( for 2 cables) [366.85 m3]; Excavation for Trench size 120cm wide and 80cm deep (for 4 cables) [377.46 m3]; Excavation for Trench size 180cm wide and 80cm deep (for 6 cables) [537.64 m3] | 12,819.53 | L122 | Z3 | CONS | MV | Excavation | AFT |
| RHD4CZ3L122MV1200 |  | Trench Backfilling for Medium Voltage Network - (RD-L-12/2)-Z3-L122-MV | 20d | 2027-09-27 | 2027-10-19 | RHD4CZ3L122MV3200, RHD4CZ3L122MV3101 | Skilled labor [199.4 h]; Unskilled Labor [199.4 h]; Equipment Opreator [398.91 h]; Dump Truck [398.91 h]; Excavation for Trench size 60cm wide and 80cm deep ( for 2 cables) [157.22 m3]; Excavation for Trench size 120cm wide and 80cm deep (for 4 cables) [161.77 m3]; Excavation for Trench size 180cm wide and 80cm deep (for 6 cables) [230.42 m3] | 5,494.11 | L122 | Z3 | CONS | MV | Backfilling | AFT |
|  | 1980 | **RHD4-02-002-L122-(MV)-Medium Voltage duct banks** |  | 2027-08-17 | 2027-09-05 |  |  |  |  |  |  |  |  |  |
| RHD4CZ3L122MV2100 |  | Excavation of Duct Banks for Medium Voltage Network - (RD-L-12/2)-Z3-L122-MV | 4d | 2027-08-17 | 2027-08-21 | RHD4ENSDZ3APPMV150, RHD4CZ3L122MV1100 | Unskilled Labor [37.46 h]; Equipment Opreator [74.93 h]; Excavator-Poclain [37.46 h]; Dump Truck [37.46 h]; Duct bank for MV cables UPVC (4xø150mm) [3.54 m]; Duct bank for MV cables UPVC (8xø150mm) [1.62 m] | 2,700.06 | L122 | Z3 | CONS | MV | Excavation | bef |
| RHD4CZ3L122MV2200 |  | Installation of Duct Banks for Medium Voltage Network - (RD-L-12/2)-Z3-L122-MV | 6d | 2027-08-22 | 2027-08-28 | RHD4PRSHLDOSMV1000, RHD4PRSHLSTAGMV1000, RHD4CZ3L122MV2100 | Unskilled Labor [56.19 h]; Equipment Opreator [112.5 h]; Excavator-Poclain [56.19 h]; Dump Truck [56.19 h]; Duct bank for MV cables UPVC (4xø150mm) [3.54 m]; Duct bank for MV cables UPVC (8xø150mm) [1.62 m] | 2,700.06 | L122 | Z3 | CONS | MV | Installing | bef |
| RHD4CZ3L122MV2300 |  | Pouring of Duct Banks for Medium Voltage Network - (RD-L-12/2)-Z3-L122-MV | 4d | 2027-08-29 | 2027-09-01 | RHD4CZ3L122MV2200 | Unskilled Labor [37.46 h]; Equipment Opreator [74.93 h]; Excavator-Poclain [37.46 h]; Dump Truck [37.46 h]; Duct bank for MV cables UPVC (4xø150mm) [23.01 m]; Duct bank for MV cables UPVC (8xø150mm) [10.55 m] | 17,566.33 | L122 | Z3 | CONS | MV | Pouring | bef |
| RHD4CZ3L122MV2400 |  | Backfilling of Duct Banks for Medium Voltage Network - (RD-L-12/2)-Z3-L122-MV | 3d | 2027-09-02 | 2027-09-05 | RHD4CZ3L122MV2300 | Unskilled Labor [28.1 h]; Equipment Opreator [56.19 h]; Excavator-Poclain [28.1 h]; Dump Truck [28.1 h]; Duct bank for MV cables UPVC (4xø150mm) [5.31 m]; Duct bank for MV cables UPVC (8xø150mm) [2.44 m] | 4,058.06 | L122 | Z3 | CONS | MV | Backfilling | bef |
|  | 1981 | **RHD4-02-002-L122-(MV)-Medium Voltage cables 3Cx 500 mm²** |  | 2027-08-17 | 2027-11-10 |  |  |  |  |  |  |  |  |  |
| RHD4CZ3L122MV3100 |  | Installation of Medium Voltage Cables 3Cx 500 mm² - (RD-L-12/2)-Z3-L122-MV | 17d | 2027-08-17 | 2027-09-05 | RHD4PRSHLDOSMV1100, RHD4ENMSMV2000, RHD4ENMSMV2010, RHD4PRSHLSTAGMV1100, RHD4CZ3L122MV1100 | Skilled labor [176 h]; Unskilled Labor [703.73 h]; Electrician [351.87 h]; Equipment Opreator [527.86 h]; Boom Truck [176 h]; Cable Laying Machine [351.87 h]; Cable 13.8 kV 3Cx 500 mm² Al/XLPE,/LLDPE / Unarmored [7269.81 m] | 1,155,900.55 | L122 | Z3 | CONS | MV | Installation | AFT |
| RHD4CZ3L122MV3200 |  | Joints Installation of Medium Voltage Cables 3Cx 500 mm² - (RD-L-12/2)-Z3-L122-MV | 17d | 2027-09-06 | 2027-09-26 | RHD4PRSHLDOSMV1300, RHD4PRSHLSTAGMV1300, RHD4CZ3L122MV3100 | Skilled labor [59.9 h]; Unskilled Labor [239.59 h]; Electrician [119.79 h]; Equipment Opreator [59.9 h]; Boom Truck [59.9 h]; Straight joints cables for 13.8 kv 3Cx 500 mm², Al /XLPE/LLDPE [11 Unit] | 35,728 | L122 | Z3 | CONS | MV | Joints Installation | AFT |
| RHD4CZ3L122MV3300 |  | Testing of Medium Voltage Cables 3Cx 500 mm² - (RD-L-12/2)-Z3-L122-MV | 17d | 2027-10-20 | 2027-11-08 | RHD4CZ3L122MV3200, RHD4CZ3L122MV1200, RHD4CZ3L122MV2400 | Skilled labor [176 h]; Unskilled Labor [703.73 h]; Electrician [351.87 h]; Cable 13.8 kV 3Cx 500 mm² Al/XLPE,/LLDPE / Unarmored [807.76 m] | 128,433.39 | L122 | Z3 | CONS | MV | Testing | AFT |
| RHD4CZ3L122MV3400 |  | Termination of Medium Voltage Cables 3Cx 500 mm² - (RD-L-12/2)-Z3-L122-MV | 2d | 2027-11-09 | 2027-11-10 | RHD4CZ3L122MV3300, RHD4CZ3L122MV5400 | Unskilled Labor [2.4 h]; Electrician [2.4 h]; Cable Termination for 13.8 kv 3Cx 500 mm², Al /XLPE/LLDPE [11.2 Unit] | 29,512 | L122 | Z3 | CONS | MV | Termination | AFT |
|  | 1982 | **RHD4-02-002-L122-(MV)-Medium Voltage cables 3Cx 50 mm²** |  | 2027-08-17 | 2027-10-27 |  |  |  |  |  |  |  |  |  |
| RHD4CZ3L122MV3101 |  | Installation of Medium Voltage Cables 3Cx 50 mm² - (RD-L-12/2)-Z3-L122-MV | 2d | 2027-08-17 | 2027-08-18 | RHD4PRSHLDOSMV1200, RHD4ENMSMV2000, RHD4ENMSMV2010, RHD4PRSHLSTAGMV1200, RHD4CZ3L122MV1100 | Unskilled Labor [1.74 h]; Electrician [0.87 h]; Equipment Opreator [1.31 h]; Boom Truck [0.44 h]; Cable Laying Machine [0.87 h]; Single Core Copper Cable 13.8 kV 3Cx 50 mm² Cu/XLPE/PVC / Unarmored [3.6 m] | 403.2 | L122 | Z3 | CONS | MV | Installation | AFT |
| RHD4CZ3L122MV3301 |  | Testing of Medium Voltage Cables 3Cx 50 mm² - (RD-L-12/2)-Z3-L122-MV | 2d | 2027-10-20 | 2027-10-21 | RHD4CZ3L122MV3101, RHD4CZ3L122MV1200 | Unskilled Labor [0.33 h]; Electrician [0.22 h]; Single Core Copper Cable 13.8 kV 3Cx 50 mm² Cu/XLPE/PVC / Unarmored [0.4 m] | 44.8 | L122 | Z3 | CONS | MV | Testing | AFT |
| RHD4CZ3L122MV3401 |  | Termination of Medium Voltage Cables 3Cx 50 mm² - (RD-L-12/2)-Z3-L122-MV | 5d | 2027-10-23 | 2027-10-27 | RHD4CZ3L122MV3301, RHD4CZ3L122MV5400 | Unskilled Labor [40.62 h]; Electrician [20.36 h]; Cable Termination for 13.8 kv 3Cx 500 mm², Al /XLPE/LLDPE [2.8 Unit] | 7,378 | L122 | Z3 | CONS | MV | Termination | AFT |

| ID | WBS | Activity | Duration | Start | Finish | Predecessors | Resources | Cost | RDH4-01-001-Road and Block Names-1 | RDH4-01-001-Zones-1 | RDH4-01-001-Phases-1 | RDH4-01-001-Networks-1 | RDH4-01-001-Work Method-1 | RDH4-01-001-MENEM |
| --- | --- | --- | --- | --- | --- | --- | --- | --- | --- | --- | --- | --- | --- | --- |
|  | 1984 | **RHD4-02-002-L122-(MV)-Unit Substations** |  | 2027-08-17 | 2027-08-31 |  |  |  |  |  |  |  |  |  |
| RHD4CZ3L122MV5100 |  | Excavation for Unit Substations for Medium Voltage Network - (RD-L-12/2)-Z3-L122-MV | 2d | 2027-08-17 | 2027-08-18 | RHD4ENSDZ3APPMV150, RHD4CZ3L122MV1100 | Skilled labor [21.78 h]; Unskilled Labor [21.78 h]; Equipment Opreator [43.56 h]; Excavator-Poclain [21.78 h]; Dump Truck [21.78 h]; Unit Substation 13.8/0.4 K V, 500kVA ,Including concrete foundations and fencing, According to the specifications and standards of SEC [0.1 Unit]; Ring Main Unit RMU, 13.8KV, According to the specifications and standards of SEC [0.1 Unit] | 12,257 | L122 | Z3 | CONS | MV | Excavation | AFT |
| RHD4CZ3L122MV5200 |  | Concrete Base Placement for Unit Substations for Medium Voltage Network - (RD-L-12/2)-Z3-L122-MV | 2d | 2027-08-19 | 2027-08-21 | RHD4CZ3L122MV5100 | Skilled labor [21.78 h]; Unskilled Labor [21.78 h]; Equipment Opreator [21.78 h]; Boom Truck [21.78 h]; Unit Substation 13.8/0.4 K V, 500kVA ,Including concrete foundations and fencing, According to the specifications and standards of SEC [0.15 Unit]; Ring Main Unit RMU, 13.8KV, According to the specifications and standards of SEC [0.15 Unit] | 18,385.5 | L122 | Z3 | CONS | MV | Concrete Base Placement | AFT |
| RHD4CZ3L122MV5300 |  | Installation for Fences and doors for Medium Voltage Network - (RD-L-12/2)-Z3-L122-MV | 5d | 2027-08-22 | 2027-08-26 | RHD4CZ3L122MV5200 | Skilled labor [54.45 h]; Unskilled Labor [54.45 h]; Equipment Opreator [65.34 h]; Excavator-Poclain [10.89 h]; Boom Truck [54.45 h]; Unit Substation 13.8/0.4 K V, 500kVA ,Including concrete foundations and fencing, According to the specifications and standards of SEC [0.1 Unit]; Ring Main Unit RMU, 13.8KV, According to the specifications and standards of SEC [0.1 Unit] | 12,257 | L122 | Z3 | CONS | MV | Fence Installation | AFT |
| RHD4CZ3L122MV5400 |  | Installation for Unit Substations for Medium Voltage Network - (RD-L-12/2)-Z3-L122-MV | 4d | 2027-08-28 | 2027-08-31 | RHD4PRLOLSTAGMV1601, RHD4PRLOLSTAGMV1602, RHD4CZ3L122MV5300 | Skilled labor [43.56 h]; Unskilled Labor [87.12 h]; Electrician [87.12 h]; Unit Substation 13.8/0.4 K V, 500kVA ,Including concrete foundations and fencing, According to the specifications and standards of SEC [0.65 Unit]; Ring Main Unit RMU, 13.8KV, According to the specifications and standards of SEC [0.65 Unit] | 79,670.5 | L122 | Z3 | CONS | MV | Substation Installation | AFT |
|  | 5388 | **RHD4-02-002-L122-(MV)-Normally open Point (Outdoor Type)** |  |  |  |  |  |  |  |  |  |  |  |  |
|  | 1985 | **RHD4-02-002-Z3-L122-Low Voltage Network - LV** |  | 2027-09-20 | 2027-12-15 |  |  |  |  |  |  |  |  |  |
|  | 1986 | **RHD4-02-002-L122-(LV)-Low Voltage duct banks** |  | 2027-09-20 | 2027-10-10 |  |  |  |  |  |  |  |  |  |
| RHD4CZ3L122LV2100 |  | Excavation of Duct Banks for Low Voltage Network - (RD-L-12/2)-Z3-L122-LV | 2d | 2027-09-20 | 2027-09-21 | RHD4ENSDZ3APPLV160, RHD4CZ3L122RW3002, RHD4CZ3L122PT2401 | Skilled labor [12.41 h]; Unskilled Labor [12.41 h]; Equipment Opreator [24.8 h]; Excavator-Poclain [12.41 h]; Dump Truck [12.41 h]; Duct bank for LV cables UPVC (4xø110mm) [1.71 m] | 511.29 | L122 | Z3 | CONS | LV | Excavation | bef |
| RHD4CZ3L122LV2200 |  | Installation of Duct Banks for Low Voltage Network - (RD-L-12/2)-Z3-L122-LV | 2d | 2027-09-22 | 2027-09-25 | RHD4PRSHLDOSLV1000, RHD4PRSHLSTAGLV1000, RHD4CZ3L122LV2100 | Carpenter [1.85 h]; Skilled labor [18.62 h]; Unskilled Labor [18.62 h]; Steel Fixer [1.85 h]; Duct bank for LV cables UPVC (4xø110mm) [1.71 m] | 511.29 | L122 | Z3 | CONS | LV | Installing | bef |
| RHD4CZ3L122LV2300 |  | Pouring of Duct Banks for Low Voltage Network - (RD-L-12/2)-Z3-L122-LV | 6d | 2027-09-26 | 2027-10-02 | RHD4CZ3L122LV2200 | Skilled labor [12.41 h]; Unskilled Labor [12.41 h]; Equipment Opreator [5.01 h]; Concrete Mixer Truck [2.5 h]; Concrete Pump [2.5 h]; Duct bank for LV cables UPVC (4xø110mm) [11.14 m] | 3,330.86 | L122 | Z3 | CONS | LV | Pouring | bef |
| RHD4CZ3L122LV2400 |  | Backfilling of Duct Banks for Low Voltage Network - (RD-L-12/2)-Z3-L122-LV | 7d | 2027-10-03 | 2027-10-10 | RHD4CZ3L122LV2300, RHD4CZ3L122IRR3200 | Skilled labor [9.37 h]; Unskilled Labor [9.37 h]; Equipment Opreator [3.7 h]; Excavator-Poclain [3.7 h]; Duct bank for LV cables UPVC (4xø110mm) [2.57 m] | 768.43 | L122 | Z3 | CONS | LV | Backfilling | bef |
|  | 1989 | **RHD4-02-002-L122-(LV)-Low Voltage Distribution Pillars** |  | 2027-12-07 | 2027-12-15 |  |  |  |  |  |  |  |  |  |
| RHD4CZ3L122LV4100 |  | Leveling for Distribution Pillars for Low Voltage Network - (RD-L-12/2)-Z3-L122-LV | 3d | 2027-12-07 | 2027-12-09 | RHD4CZ3L122LV3300, RHD4CZ3L122IRR1504 | Skilled labor [27.2 h]; Unskilled Labor [54.45 h]; Equipment Opreator [10.89 h]; Excavator-Poclain [5.45 h]; Boom Truck [5.45 h]; 0.6/1 KV Low Voltage Distribution Pillars with main breaker MCCB type and 5 Outgoing feeders MCCB type [0.15 Unit]; 0.6/1 KV Low Voltage Distribution Panels for Industrial UPS - Cameras [0.15 Unit]; Supply and installation of KWH meter mounting frame including concrete block wall for installation of KWH meter according to the standards and specifications of SEC [0.45 Unit] | 6,701.55 | L122 | Z3 | CONS | LV | Leveling | AFT |
| RHD4CZ3L122LV4200 |  | Lean Concrete for Distribution Pillars for Low Voltage Network - (RD-L-12/2)-Z3-L122-LV | 2d | 2027-12-11 | 2027-12-12 | RHD4CZ3L122LV4100 | Skilled labor [18.19 h]; Unskilled Labor [36.26 h]; Equipment Opreator [7.3 h]; Concrete Mixer Truck [3.59 h]; Concrete Pump [3.59 h]; 0.6/1 KV Low Voltage Distribution Pillars with main breaker MCCB type and 5 Outgoing feeders MCCB type [0.25 Unit]; 0.6/1 KV Low Voltage Distribution Panels for Industrial UPS - Cameras [0.25 Unit]; Supply and installation of KWH meter mounting frame including concrete block wall for installation of KWH meter according to the standards and specifications of SEC [0.75 Unit] | 11,169.25 | L122 | Z3 | CONS | LV | Lean Concrete | AFT |
| RHD4CZ3L122LV4300 |  | Installation of Distribution Pillars for Low Voltage Network - (RD-L-12/2)-Z3-L122-LV | 3d | 2027-12-13 | 2027-12-15 | RHD4PRSHLDOSLV1200, RHD4PRSHLDOSLV1300, RHD4PRSHLSTAGLV1200, RHD4PRSHLSTAGLV1300, RHD4CZ3L122LV4200 | Skilled labor [27.2 h]; Unskilled Labor [108.9 h]; Electrician [54.45 h]; Equipment Opreator [27.2 h]; Boom Truck [27.2 h]; 0.6/1 KV Low Voltage Distribution Pillars with main breaker MCCB type and 5 Outgoing feeders MCCB type [0.6 Unit]; 0.6/1 KV Low Voltage Distribution Panels for Industrial UPS - Cameras [0.6 Unit]; Supply and installation of KWH meter mounting frame including concrete block wall for installation of KWH meter according to the standards and specifications of SEC [1.8 Unit] | 26,806.2 | L122 | Z3 | CONS | LV | Installation | AFT |
|  | 1990 | **RHD4-02-002-L122-(LV)-Low Voltage Distribution Pillars Earthing** |  |  |  |  |  |  |  |  |  |  |  |  |
|  | 4257 | **RHD4-02-002-L122-(LV)-Low Voltage Drawpit** |  | 2027-09-20 | 2027-09-25 |  |  |  |  |  |  |  |  |  |
| RHD4CZ3L122LV5100 |  | Excavation of Drawpit size 900x900x1000mm for Low Voltage Network - (RD-L-12/2)-Z3-L122-LV | 2d | 2027-09-20 | 2027-09-21 | RHD4CZ3L122LV2100 SS, RHD4CZ3L122MV5400 | Skilled labor [1.85 h]; Unskilled Labor [1.85 h]; Equipment Opreator [1.42 h]; Excavator-Poclain [0.8 h]; Dump Truck [0.8 h]; Drawpit with medium duty steel cover, size900x900x1000mm, [0.3 Unit] | 1,103.1 | L122 | Z3 | CONS | LV | Excavation | AFT |
| RHD4CZ3L122LV5200 |  | Installation of Drawpit size 900x900x1000mm for Low Voltage Network - (RD-L-12/2)-Z3-L122-LV | 2d | 2027-09-22 | 2027-09-25 | RHD4CZ3L122LV5100, RHD4CZ3L122SW3500 | Skilled labor [1.85 h]; Unskilled Labor [1.85 h]; Equipment Opreator [0.8 h]; Boom Truck [0.8 h]; Drawpit with medium duty steel cover, size900x900x1000mm, [1.7 Unit] | 6,250.9 | L122 | Z3 | CONS | LV | Installation | AFT |
|  | 1988 | **RHD4-02-002-L122-(LV)-Low Voltage cables** |  | 2027-11-11 | 2027-12-11 |  |  |  |  |  |  |  |  |  |
| RHD4CZ3L122LV3100 |  | Excavation for Low Voltage Cables for Low Voltage Network - (RD-L-12/2)-Z3-L122-LV | 8d | 2027-11-11 | 2027-11-20 | RHD4ENSDZ3APPLV160, RHD4CZ3L122LV2400, RHD4CZ3L122MV1200, RHD4CZ3L122MV5400, RHD4CZ3L122MV3400, RHD4CZ3L122MV3401 | Skilled labor [79.61 h]; Unskilled Labor [159.2 h]; Equipment Opreator [159.2 h]; Excavator-Poclain [79.61 h]; Boom Truck [79.61 h]; Cable, Copper 4x185mm2/ CU/XLPE/PVC [40.52 m]; Cable, Copper 4x70mm2/ CU/XLPE/PVC [5.23 m]; Cable, Copper 4x50mm2/ CU/XLPE/PVC +1x25mm2 CU/PVC [10.26 m]; Cable, Copper 3x10mm2/ CU/XLPE/SWA/PVC [309.39 m] | 29,851.13 | L122 | Z3 | CONS | LV | Excavation | AFT |
| RHD4CZ3L122LV3200 |  | Cable Laying of Low Voltage Cables for Low Voltage Network - (RD-L-12/2)-Z3-L122-LV | 7d | 2027-11-21 | 2027-11-28 | RHD4PRSHLDOSLV1100, RHD4ENMSLV2000, RHD4ENMSLV2010, RHD4PRSHLSTAGLV1100, RHD4CZ3L122LV3100 | Skilled labor [66.32 h]; Unskilled Labor [265.29 h]; Electrician [132.64 h]; Equipment Opreator [198.97 h]; Boom Truck [66.32 h]; Cable Laying Machine [132.64 h]; Cable, Copper 4x185mm2/ CU/XLPE/PVC [121.55 m]; Cable, Copper 4x70mm2/ CU/XLPE/PVC [15.68 m]; Cable, Copper 4x50mm2/ CU/XLPE/PVC +1x25mm2 CU/PVC [30.79 m]; Cable, Copper 3x10mm2/ CU/XLPE/SWA/PVC [928.17 m] | 89,554.62 | L122 | Z3 | CONS | LV | Cable Laying | AFT |
| RHD4CZ3L122LV3300 |  | Warning tape and Backfill for Low Voltage Cables for Low Voltage Network - (RD-L-12/2)-Z3-L122-LV | 7d | 2027-11-29 | 2027-12-06 | RHD4CZ3L122LV3200 | Skilled labor [66.32 h]; Unskilled Labor [265.29 h]; Electrician [132.64 h]; Equipment Opreator [66.32 h]; Boom Truck [66.32 h]; Cable, Copper 4x185mm2/ CU/XLPE/PVC [30.39 m]; Cable, Copper 4x70mm2/ CU/XLPE/PVC [3.92 m]; Cable, Copper 4x50mm2/ CU/XLPE/PVC +1x25mm2 CU/PVC [7.7 m]; Cable, Copper 3x10mm2/ CU/XLPE/SWA/PVC [232.04 m] | 22,388.96 | L122 | Z3 | CONS | LV | Warning tape and Backfill | AFT |
| RHD4CZ3L122LV3400 |  | Testing of Low Voltage Cables for Low Voltage Network - (RD-L-12/2)-Z3-L122-LV | 4d | 2027-12-07 | 2027-12-11 | RHD4CZ3L122LV3300, RHD4CZ3C083LV3400 | Skilled labor [39.75 h]; Unskilled Labor [159.2 h]; Electrician [79.61 h]; Equipment Opreator [39.75 h]; Boom Truck [39.75 h]; Cable, Copper 4x185mm2/ CU/XLPE/PVC [10.13 m]; Cable, Copper 4x70mm2/ CU/XLPE/PVC [1.31 m]; Cable, Copper 4x50mm2/ CU/XLPE/PVC +1x25mm2 CU/PVC [2.57 m]; Cable, Copper 3x10mm2/ CU/XLPE/SWA/PVC [77.35 m] | 7,463.4 | L122 | Z3 | CONS | LV | Testing | AFT |

| ID | WBS | Activity | Duration | Start | Finish | Predecessors | Resources | Cost | RDH4-01-001-Road and Block Names-1 | RDH4-01-001-Zones-1 | RDH4-01-001-Phases-1 | RDH4-01-001-Networks-1 | RDH4-01-001-Work Method-1 | RDH4-01-001-MENEM |
| --- | --- | --- | --- | --- | --- | --- | --- | --- | --- | --- | --- | --- | --- | --- |
|  | 1991 | **RHD4-02-002-Z3-L122-Street Lighting Network - SL** |  | 2027-09-20 | 2028-07-12 |  |  |  |  |  |  |  |  |  |
|  | 1994 | **RHD4-02-002-L122-(SL)-Street Lighting cables** |  | 2028-04-29 | 2028-06-27 |  |  |  |  |  |  |  |  |  |
| RHD4CZ3L122SL3100 |  | Excavation for Street Lighting Cables for Street Lighting Network - (RD-L-12/2)-Z3-L122-SL | 15d | 2028-04-29 | 2028-05-18 | RHD4ENSDZ3APPSL170, RHD4CZ3L122MV3401, RHD4CZ3L122MV3400, RHD4CZ3L122SL1300 | Skilled labor [158.56 h]; Unskilled Labor [317.13 h]; Equipment Opreator [317.13 h]; Excavator-Poclain [158.56 h]; Boom Truck [158.56 h]; Cable, Copper 4x10mm2/ CU/XLPE/SWA/PVC + 1x10mm2 CU/PVC [728.11 m] | 35,677.33 | L122 | Z3 | CONS | SL | Excavation | AFT |
| RHD4CZ3L122SL3200 |  | Cable Laying of Street Lighting Cables for Street Lighting Network - (RD-L-12/2)-Z3-L122-SL | 13d | 2028-05-20 | 2028-06-03 | RHD4PRSHLDOSSL1100, RHD4ENMSSL2000, RHD4ENMSSL2010, RHD4PRSHLSTAGSL1100, RHD4CZ3L122SL3100 | Skilled labor [132.21 h]; Unskilled Labor [528.62 h]; Electrician [264.31 h]; Equipment Opreator [396.52 h]; Boom Truck [132.21 h]; Cable Laying Machine [264.31 h]; Cable, Copper 4x10mm2/ CU/XLPE/SWA/PVC + 1x10mm2 CU/PVC [2184.33 m] | 107,032 | L122 | Z3 | CONS | SL | Cable Laying | AFT |
| RHD4CZ3L122SL3300 |  | Warning tape and Backfill for Street Lighting Cables for Street Lighting Network - (RD-L-12/2)-Z3-L122-SL | 13d | 2028-06-04 | 2028-06-18 | RHD4CZ3L122SL3200 | Skilled labor [132.21 h]; Unskilled Labor [528.62 h]; Electrician [264.31 h]; Equipment Opreator [132.21 h]; Boom Truck [132.21 h]; Cable, Copper 4x10mm2/ CU/XLPE/SWA/PVC + 1x10mm2 CU/PVC [546.08 m] | 26,758 | L122 | Z3 | CONS | SL | Warning tape and Backfill | AFT |
| RHD4CZ3L122SL3400 |  | Testing of Street Lighting Cables for Street Lighting Network - (RD-L-12/2)-Z3-L122-SL | 8d | 2028-06-19 | 2028-06-27 | RHD4CZ3L122SL3300, RHD4CZ3L122LV3400 | Skilled labor [79.28 h]; Unskilled Labor [317.13 h]; Electrician [158.56 h]; Equipment Opreator [79.28 h]; Boom Truck [79.28 h]; Cable, Copper 4x10mm2/ CU/XLPE/SWA/PVC + 1x10mm2 CU/PVC [182.03 m] | 8,919.33 | L122 | Z3 | CONS | SL | Testing | AFT |
|  | 1997 | **RHD4-02-002-L122-(SL)-Street Lighting Earthing System** |  | 2028-07-02 | 2028-07-03 |  |  |  |  |  |  |  |  |  |
| RHD4CZ3L122SL6100 |  | Installation of Earthing for Lighting Poles and Fedder Pillers for Street Lighting Network - (RD-L-12/2)-Z3-L122-SL | 2d | 2028-07-02 | 2028-07-03 | RHD4ENMSER2000, RHD4ENMSER2010, RHD4CZ3L122SL1400 | Skilled labor [3.59 h]; Unskilled Labor [3.59 h]; Equipment Opreator [7.3 h]; Excavator-Poclain [3.59 h]; Dump Truck [3.59 h]; Street Lighting Feeder pillars - ER [1 Unit]; Including lighting poles circuits - ER [4 Unit] | 3,580 | L122 | Z3 | CONS | SL | Installation | AFT |
|  | 5019 | **RHD4-02-002-L122-(SL)-Street Lighting duct banks** |  | 2027-09-20 | 2027-10-10 |  |  |  |  |  |  |  |  |  |
| RHD4CZ3L122SL2100 |  | Excavation of Duct Banks for Street Lighting Network - (RD-L-12/2)-Z3-L122-SL | 3d | 2027-09-20 | 2027-09-22 | RHD4CZ3L122PT2401 | Skilled labor [25.16 h]; Unskilled Labor [25.16 h]; Equipment Opreator [50.31 h]; Excavator-Poclain [25.16 h]; Dump Truck [25.16 h]; Road Crossing Duct for Street Lighting cables UPVC (2x?110mm) [1.66 m]; Road Crossing Duct for Street Lighting cables UPVC (4x?110mm) [1.8 m] | 810.52 | L122 | Z3 | CONS | SL | Excavation | bef |
| RHD4CZ3L122SL2200 |  | Installation of Duct Banks for Street Lighting Network - (RD-L-12/2)-Z3-L122-SL | 4d | 2027-09-25 | 2027-09-28 | RHD4CZ3L122SL2100 | Carpenter [3.81 h]; Skilled labor [37.79 h]; Unskilled Labor [37.79 h]; Steel Fixer [3.81 h]; Road Crossing Duct for Street Lighting cables UPVC (2x?110mm) [1.66 m]; Road Crossing Duct for Street Lighting cables UPVC (4x?110mm) [1.8 m] | 810.52 | L122 | Z3 | CONS | SL | Installing | bef |
| RHD4CZ3L122SL2300 |  | Pouring of Duct Banks for Street Lighting Network - (RD-L-12/2)-Z3-L122-SL | 5d | 2027-09-29 | 2027-10-04 | RHD4CZ3L122SL2200 | Skilled labor [25.16 h]; Unskilled Labor [25.16 h]; Equipment Opreator [10.02 h]; Concrete Mixer Truck [5.01 h]; Concrete Pump [5.01 h]; Road Crossing Duct for Street Lighting cables UPVC (2x?110mm) [10.81 m]; Road Crossing Duct for Street Lighting cables UPVC (4x?110mm) [11.73 m] | 5,280.34 | L122 | Z3 | CONS | SL | Pouring | bef |
| RHD4CZ3L122SL2400 |  | Backfilling of Duct Banks for Street Lighting Network - (RD-L-12/2)-Z3-L122-SL | 5d | 2027-10-05 | 2027-10-10 | RHD4CZ3L122SL2300 | Skilled labor [18.84 h]; Unskilled Labor [18.84 h]; Equipment Opreator [7.51 h]; Excavator-Poclain [7.51 h]; Road Crossing Duct for Street Lighting cables UPVC (2x?110mm) [2.49 m]; Road Crossing Duct for Street Lighting cables UPVC (4x?110mm) [2.71 m] | 1,218.42 | L122 | Z3 | CONS | SL | Backfilling | bef |
|  | 5020 | **RHD4-02-002-L122-(SL)-Street Lighting Drawpit** |  | 2027-10-05 | 2027-10-13 |  |  |  |  |  |  |  |  |  |
| RHD4CZ3L122SL5100 |  | Excavation of Drawpit size 600x600x900mm for Street Lighting Network - (RD-L-12/2)-Z3-L122-SL | 2d | 2027-10-05 | 2027-10-06 | RHD4CZ3L122SL2300, RHD4CZ3L122MV5400 | Skilled labor [3.59 h]; Unskilled Labor [3.59 h]; Equipment Opreator [2.94 h]; Excavator-Poclain [1.42 h]; Dump Truck [1.42 h]; Drawpit with medium duty steel cover, size600x600x900mm, [0.6 Unit] | 1,470.6 | L122 | Z3 | CONS | SL | Excavation | AFT |
| RHD4CZ3L122SL5200 |  | Installation of Drawpit size 600x600x900mm for Street Lighting Network - (RD-L-12/2)-Z3-L122-SL | 6d | 2027-10-07 | 2027-10-13 | RHD4CZ3L122SL5100, RHD4CZ3L122MV5400 | Skilled labor [3.59 h]; Unskilled Labor [3.59 h]; Equipment Opreator [1.42 h]; Boom Truck [1.42 h]; Drawpit with medium duty steel cover, size600x600x900mm, [3.4 Unit] | 8,333.4 | L122 | Z3 | CONS | SL | Installation | AFT |
|  | 1995 | **RHD4-02-002-L122-(SL)-Street Lighting Poles** |  | 2027-10-20 | 2028-07-12 |  |  |  |  |  |  |  |  |  |
| RHD4CZ3L122SL1100 |  | Excavation for RC Base for Lighting Poles for Street Lighting Network - (RD-L-12/2)-Z3-L122-SL | 8d | 2027-10-20 | 2027-10-28 | RHD4ENSDZ3APPSL170, RHD4CZ3L122MV1200, RHD4CZ3L122MV5400, RHD4CZ3L122IRR1500 | Skilled labor [76.99 h]; Unskilled Labor [76.99 h]; Equipment Opreator [153.88 h]; Excavator-Poclain [76.99 h]; Dump Truck [76.99 h]; Lighting poles single arms, height of ( 10 ) meters [10.6 Unit] | 36,114.2 | L122 | Z3 | CONS | SL | Excavation | AFT |
| RHD4CZ3L122SL1200 |  | Installation for RC Base for Lighting Poles for Street Lighting Network - (RD-L-12/2)-Z3-L122-SL | 8d | 2028-04-10 | 2028-04-18 | RHD4CZ3L122SL1100, RHD4CZ3L122SL5200, RHD4CSWL1B07D151214 SS, RHD4CZ2L102RD7100, RHD4CZ7C013RD8100 | Skilled labor [76.99 h]; Unskilled Labor [76.99 h]; Equipment Opreator [153.88 h]; Excavator-Poclain [76.99 h]; Dump Truck [76.99 h]; Lighting poles single arms, height of ( 10 ) meters [26.5 Unit] | 90,285.5 | L122 | Z3 | CONS | SL | RC Base | AFT |
| RHD4CZ3L122SL1300 |  | Backfill for RC Base for Lighting Poles for Street Lighting Network - (RD-L-12/2)-Z3-L122-SL | 8d | 2028-04-19 | 2028-04-27 | RHD4CZ9L02RD7100, RHD4CZ3L122SL1200, RHD4CZ4L09ICT2400 | Skilled labor [76.99 h]; Unskilled Labor [76.99 h]; Equipment Opreator [153.88 h]; Excavator-Poclain [76.99 h]; Dump Truck [76.99 h]; Lighting poles single arms, height of ( 10 ) meters [5.3 Unit] | 18,057.1 | L122 | Z3 | CONS | SL | Backfill | AFT |
| RHD4CZ3L122SL1400 |  | Installation for Lighting Poles for Street Lighting Network - (RD-L-12/2)-Z3-L122-SL | 11d | 2028-06-19 | 2028-07-01 | RHD4PRSHLDOSSL1200, RHD4ENMSSL2000, RHD4ENMSSL2010, RHD4PRSHLSTAGSL1200, RHD4CZ3L122SL1300, RHD4CZ3L122SL3400 SS | Skilled labor [115.44 h]; Unskilled Labor [115.44 h]; Electrician [115.44 h]; Equipment Opreator [115.44 h]; Boom Truck [115.44 h]; Lighting poles single arms, height of ( 10 ) meters [63.6 Unit] | 216,685.2 | L122 | Z3 | CONS | SL | Poles Installation | AFT |
| RHD4CZ3L122SL1500 |  | Luminaire Installation for Lighting Poles for Street Lighting Network - (RD-L-12/2)-Z3-L122-SL | 8d | 2028-07-04 | 2028-07-12 | RHD4PRSHLDOSSL1300, RHD4PRSHLSTAGSL1300, RHD4CZ3L122SL1400, RHD4CZ3L122SL6100 | Unskilled Labor [153.88 h]; Electrician [76.99 h]; Equipment Opreator [15.36 h]; Boom Truck [30.82 h]; Street Lighting( LED) Luminaire of Output ?10898 lumen [106 Unit] | 62,328 | L122 | Z3 | CONS | SL | Luminaire Installation | AFT |
|  | 2003 | **RHD4-02-002-Z3-L122-Telecommunications Network - TC** |  | 2027-01-03 | 2028-07-08 |  |  |  |  |  |  |  |  |  |
|  | 2004 | **RHD4-02-002-L122-(TC)-Telecommunications Ducts** |  | 2028-04-29 | 2028-07-08 |  |  |  |  |  |  |  |  |  |
| RHD4CZ3L122TC2100 |  | Excavation of HDPE Ducts for Telecom Network - (RD-L-12/2)-Z3-L122-TC | 21d | 2028-04-29 | 2028-05-25 | RHD4ENSDZ3APPTC190, RHD4CZ3L122TC3400, RHD4CZ3L122SL1300 | Skilled labor [220.64 h]; Unskilled Labor [220.64 h]; Equipment Opreator [441.28 h]; Excavator-Poclain [220.64 h]; Dump Truck [220.64 h]; (6*50mm) HDPE ducts -TC [554.82 m]; (6*50mm+2*32mm) HDPE ducts -TC [50.07 m]; (2*32mm) HDPE ducts -TC [2.92 m] | 54,381.07 | L122 | Z3 | CONS | TC | Excavation | AFT |
| RHD4CZ3L122TC2200 |  | Installation of HDPE Ducts for Telecom Network - (RD-L-12/2)-Z3-L122-TC | 11d | 2028-05-27 | 2028-06-07 | RHD4PRSHLDOSTC1000, RHD4PRSHLSTAGTC1000, RHD4CZ3L122TC2100 | Carpenter [33.11 h]; Skilled labor [330.96 h]; Unskilled Labor [330.96 h]; Steel Fixer [33.11 h]; (6*50mm) HDPE ducts -TC [1803.16 m]; (6*50mm+2*32mm) HDPE ducts -TC [162.73 m]; (2*32mm) HDPE ducts -TC [9.49 m] | 176,738.48 | L122 | Z3 | CONS | TC | Installing | AFT |
| RHD4CZ3L122TC2400 |  | Backfilling of HDPE Ducts for Telecom Network - (RD-L-12/2)-Z3-L122-TC | 21d | 2028-06-14 | 2028-07-08 | RHD4CZ3L122TC2200, RHD4CZ3L122TC5200, RHD4GNSLZ7FT1600, RHD4CZ7RA03CCTV6100, RHD4CZ4L014CCTV6100, RHD4CZ5L08RD7100 | Skilled labor [220.64 h]; Unskilled Labor [220.64 h]; Equipment Opreator [88.21 h]; Excavator-Poclain [88.21 h]; (6*50mm) HDPE ducts -TC [416.12 m]; (6*50mm+2*32mm) HDPE ducts -TC [37.55 m]; (2*32mm) HDPE ducts -TC [2.19 m] | 40,785.8 | L122 | Z3 | CONS | TC | Backfilling | AFT |

| ID | WBS | Activity | Duration | Start | Finish | Predecessors | Resources | Cost | RDH4-01-001-Road and Block Names-1 | RDH4-01-001-Zones-1 | RDH4-01-001-Phases-1 | RDH4-01-001-Networks-1 | RDH4-01-001-Work Method-1 | RDH4-01-001-MENEM |
| --- | --- | --- | --- | --- | --- | --- | --- | --- | --- | --- | --- | --- | --- | --- |
|  | 2005 | **RHD4-02-002-L122-(TC)-Telecommunications Manholes** |  | 2028-05-27 | 2028-06-13 |  |  |  |  |  |  |  |  |  |
| RHD4CZ3L122TC5100 |  | Excavation for Manholes for Telecom Network - (RD-L-12/2)-Z3-L122-TC | 8d | 2028-05-27 | 2028-06-04 | RHD4ENSDZ3APPTC190, RHD4CZ3L122TC2100, RHD4CZ7A012RD5100, RHD4CZ9L06RD7100 | Skilled labor [24.5 h]; Unskilled Labor [24.5 h]; Equipment Opreator [19.6 h]; Excavator-Poclain [9.8 h]; Dump Truck [9.8 h]; Manhole Type 1 - TC [2.1 nr]; Manhole Type 2 - TC [0.3 nr] | 16,178.4 | L122 | Z3 | CONS | TC | Excavation | AFT |
| RHD4CZ3L122TC5200 |  | Installation of Manholes for Telecom Network - (RD-L-12/2)-Z3-L122-TC | 8d | 2028-06-05 | 2028-06-13 | RHD4PRSHLDOSTC1200, RHD4PRSHLSTAGTC1200, RHD4CZ3L122TC5100, RHD4CZ3L122TC2200 SS, RHD4CSTL1B07D151185 | Skilled labor [24.5 h]; Unskilled Labor [24.5 h]; Equipment Opreator [9.8 h]; Boom Truck [9.8 h]; Manhole Type 1 - TC [11.9 nr]; Manhole Type 2 - TC [1.7 nr] | 91,677.6 | L122 | Z3 | CONS | TC | Installation | AFT |
|  | 2006 | **RHD4-02-002-L122-(TC)-Telecomminications Road Crossings** |  | 2027-01-03 | 2027-02-08 |  |  |  |  |  |  |  |  |  |
| RHD4CZ3L122TC3100 |  | Excavation for Road Crossings for Telecom Network - (RD-L-12/2)-Z3-L122-TC | 2d | 2027-01-03 | 2027-01-04 | RHD4ENSDZ3APPTC190, RHD4CZ3L122ST3102 | Skilled labor [9.37 h]; Unskilled Labor [9.37 h]; Equipment Opreator [18.73 h]; Excavator-Poclain [9.37 h]; Dump Truck [9.37 h]; Road crossing ducts, (6*50mm) HDPE -TC [1.72 m] | 65.36 | L122 | Z3 | CONS | TC | Excavation | bef |
| RHD4CZ3L122TC3200 |  | Installation of Road Crossings for Telecom Network - (RD-L-12/2)-Z3-L122-TC | 2d | 2027-01-30 | 2027-01-31 | RHD4PRSHLDOSTC1100, RHD4PRSHLSTAGTC1100, RHD4CZ3L122TC3100 | Carpenter [1.2 h]; Skilled labor [12.52 h]; Unskilled Labor [12.52 h]; Steel Fixer [1.2 h]; Road crossing ducts, (6*50mm) HDPE -TC [1.72 m] | 65.36 | L122 | Z3 | CONS | TC | Installing | bef |
| RHD4CZ3L122TC3300 |  | Pouring of Road Crossings for Telecom Network - (RD-L-12/2)-Z3-L122-TC | 2d | 2027-02-01 | 2027-02-02 | RHD4CZ3L122TC3200 | Skilled labor [12.52 h]; Unskilled Labor [12.52 h]; Equipment Opreator [5.01 h]; Concrete Mixer Truck [2.5 h]; Concrete Pump [2.5 h]; Road crossing ducts, (6*50mm) HDPE -TC [11.18 m] | 424.84 | L122 | Z3 | CONS | TC | Pouring | bef |
| RHD4CZ3L122TC3400 |  | Backfilling of Road Crossings for Telecom Network - (RD-L-12/2)-Z3-L122-TC | 5d | 2027-02-03 | 2027-02-08 | RHD4CZ3L122TC3300 | Skilled labor [9.37 h]; Unskilled Labor [9.37 h]; Equipment Opreator [3.7 h]; Excavator-Poclain [3.7 h]; Road crossing ducts, (6*50mm) HDPE -TC [2.58 m] | 98.04 | L122 | Z3 | CONS | TC | Backfilling | bef |
|  | 2007 | **RHD4-02-002-Z3-L122-Information and Communication Technologies - ICT** |  | 2027-01-05 | 2027-05-19 |  |  |  |  |  |  |  |  |  |
|  | 2008 | **RHD4-02-002-L122-(ICT)-Information and Communication Technologies Ducts** |  | 2027-03-08 | 2027-05-19 |  |  |  |  |  |  |  |  |  |
| RHD4CZ3L122ICT2100 |  | Excavation of HDPE Ducts for ICT Network - (RD-L-12/2)-Z3-L122-ICT | 20d | 2027-03-08 | 2027-04-03 | RHD4ENSDZ3APPICT200, RHD4CZ3L122ICT3400 | Skilled labor [212.69 h]; Unskilled Labor [212.69 h]; Equipment Opreator [425.38 h]; Excavator-Poclain [212.69 h]; Dump Truck [212.69 h]; (2*50mm) HDPE ducts -ICT [510.12 m]; (2*50mm+2*32mm) HDPE ducts -ICT [69.86 m]; (2*32mm) HDPE ducts -ICT [5.96 m] | 24,617.27 | L122 | Z3 | CONS | ICT | Excavation | AFT |
| RHD4CZ3L122ICT2200 |  | Installation of HDPE Ducts for ICT Network - (RD-L-12/2)-Z3-L122-ICT | 16d | 2027-04-04 | 2027-04-21 | RHD4PRSHLDOSICT1000, RHD4PRSHLSTAGICT1000, RHD4CZ3L122ICT2100 | Carpenter [31.91 h]; Skilled labor [319.09 h]; Unskilled Labor [319.09 h]; Steel Fixer [31.91 h]; (2*50mm) HDPE ducts -ICT [1657.9 m]; (2*50mm+2*32mm) HDPE ducts -ICT [227.04 m]; (2*32mm) HDPE ducts -ICT [19.37 m] | 80,006.02 | L122 | Z3 | CONS | ICT | Installing | AFT |
| RHD4CZ3L122ICT2400 |  | Backfilling of HDPE Ducts for ICT Network - (RD-L-12/2)-Z3-L122-ICT | 20d | 2027-04-22 | 2027-05-19 | RHD4CZ3L122ICT2200, RHD4CZ3L122ICT5200 | Skilled labor [212.69 h]; Unskilled Labor [212.69 h]; Equipment Opreator [85.05 h]; Excavator-Poclain [85.05 h]; (2*50mm) HDPE ducts -ICT [382.59 m]; (2*50mm+2*32mm) HDPE ducts -ICT [52.4 m]; (2*32mm) HDPE ducts -ICT [4.47 m] | 18,463.31 | L122 | Z3 | CONS | ICT | Backfilling | AFT |
|  | 2009 | **RHD4-02-002-L122-(ICT)-Information and Communication Technologies Manholes** |  | 2027-04-04 | 2027-04-21 |  |  |  |  |  |  |  |  |  |
| RHD4CZ3L122ICT5100 |  | Excavation for Manholes for ICT Network - (RD-L-12/2)-Z3-L122-ICT | 8d | 2027-04-04 | 2027-04-12 | RHD4ENSDZ3APPICT200, RHD4CZ3L122ICT2100 | Skilled labor [24.5 h]; Unskilled Labor [24.5 h]; Equipment Opreator [19.6 h]; Excavator-Poclain [9.8 h]; Dump Truck [9.8 h]; Manhole Type 1 - ICT [2.1 nr]; Manhole Type 2 - ICT [0.3 nr] | 12,943.2 | L122 | Z3 | CONS | ICT | Excavation | AFT |
| RHD4CZ3L122ICT5200 |  | Installation of Manholes for ICT Network - (RD-L-12/2)-Z3-L122-ICT | 8d | 2027-04-13 | 2027-04-21 | RHD4PRSHLDOSICT1200, RHD4PRSHLSTAGICT1200, RHD4CZ3L122ICT5100 | Skilled labor [24.5 h]; Unskilled Labor [24.5 h]; Equipment Opreator [9.8 h]; Boom Truck [9.8 h]; Manhole Type 1 - ICT [11.9 nr]; Manhole Type 2 - ICT [1.7 nr] | 73,344.8 | L122 | Z3 | CONS | ICT | Installation | AFT |
|  | 2010 | **RHD4-02-002-L122-(ICT)-Information and Communication Technologies Road Crossings** |  | 2027-01-05 | 2027-03-07 |  |  |  |  |  |  |  |  |  |
| RHD4CZ3L122ICT3100 |  | Excavation for Road Crossings for ICT Network - (RD-L-12/2)-Z3-L122-ICT | 4d | 2027-01-05 | 2027-01-09 | RHD4ENSDZ3APPICT200, RHD4CZ3L122TC3100 | Skilled labor [9.6 h]; Unskilled Labor [9.6 h]; Equipment Opreator [19.06 h]; Excavator-Poclain [9.6 h]; Dump Truck [9.6 h]; Road crossing ducts, (2*50mm) HDPE -ICT [1.75 m] | 66.5 | L122 | Z3 | CONS | ICT | Excavation | bef |
| RHD4CZ3L122ICT3200 |  | Installation of Road Crossings for ICT Network - (RD-L-12/2)-Z3-L122-ICT | 2d | 2027-02-20 | 2027-02-21 | RHD4PRSHLDOSICT1100, RHD4PRSHLSTAGICT1100, RHD4CZ3L122ICT3100, RHD4CZ3L122TC3200 | Carpenter [1.31 h]; Skilled labor [12.74 h]; Unskilled Labor [12.74 h]; Steel Fixer [1.31 h]; Road crossing ducts, (2*50mm) HDPE -ICT [1.75 m] | 66.5 | L122 | Z3 | CONS | ICT | Installing | bef |
| RHD4CZ3L122ICT3300 |  | Pouring of Road Crossings for ICT Network - (RD-L-12/2)-Z3-L122-ICT | 5d | 2027-02-23 | 2027-02-28 | RHD4CZ3L122ICT3200, RHD4CZ3L122TC3300 | Skilled labor [12.74 h]; Unskilled Labor [12.74 h]; Equipment Opreator [5.12 h]; Concrete Mixer Truck [2.5 h]; Concrete Pump [2.5 h]; Road crossing ducts, (2*50mm) HDPE -ICT [11.38 m] | 432.25 | L122 | Z3 | CONS | ICT | Pouring | bef |
| RHD4CZ3L122ICT3400 |  | Backfilling of Road Crossings for ICT Network - (RD-L-12/2)-Z3-L122-ICT | 6d | 2027-03-01 | 2027-03-07 | RHD4CZ3L122ICT3300, RHD4CZ3L122TC3400 | Skilled labor [9.6 h]; Unskilled Labor [9.6 h]; Equipment Opreator [3.81 h]; Excavator-Poclain [3.81 h]; Road crossing ducts, (2*50mm) HDPE -ICT [2.62 m] | 99.75 | L122 | Z3 | CONS | ICT | Backfilling | bef |
|  | 1998 | **RHD4-02-002-Z3-L122-Landscape Network - LS** |  |  |  |  |  |  |  |  |  |  |  |  |
|  | 1999 | **RHD4-02-002-L122-(LS)-Landscape Lighting cables** |  |  |  |  |  |  |  |  |  |  |  |  |
|  | 2000 | **RHD4-02-002-L122-(LS)-Landscape Feeder Pillars** |  |  |  |  |  |  |  |  |  |  |  |  |
|  | 2001 | **RHD4-02-002-L122-(LS)-Landscape Bollard Poles** |  |  |  |  |  |  |  |  |  |  |  |  |
|  | 2002 | **RHD4-02-002-L122-(LS)-Landscape Feeder Pillars Earthing** |  |  |  |  |  |  |  |  |  |  |  |  |
|  | 2011 | **RHD4-02-002-Z3-L122-Security Network - CCTV** |  | 2028-07-09 | 2028-08-24 |  |  |  |  |  |  |  |  |  |
|  | 2012 | **RHD4-02-002-L122-(CCTV)-Civil Works** |  | 2028-07-09 | 2028-07-19 |  |  |  |  |  |  |  |  |  |
| RHD4CZ3L122CCTV2100 |  | Civil Works for Security Network - (RD-L-12/2)-Z3-L122-CCTV | 10d | 2028-07-09 | 2028-07-19 | RHD4CZ3L122ICT2400, RHD4CZ3L122TC2400, RHD4HOASTUN1APP1200 SS | Skilled labor [435.68 h]; Unskilled Labor [871.2 h]; Equipment Opreator [435.68 h]; Excavator-Poclain [108.9 h]; Dump Truck [108.9 h]; Civil works Digging, trenching, laying pipes Meter with supply and installation of Manholes and for power feeding sources related to all towers and poles – (from 35-meter pole to control room and from related UPS camersa distribution boards till overall 2 [300 m] | 34,800 | L122 | Z3 | CONS | CCTV | Civil Works | AFT |

| ID | WBS | Activity | Duration | Start | Finish | Predecessors | Resources | Cost | RDH4-01-001-Road and Block Names-1 | RDH4-01-001-Zones-1 | RDH4-01-001-Phases-1 | RDH4-01-001-Networks-1 | RDH4-01-001-Work Method-1 | RDH4-01-001-MENEM |
| --- | --- | --- | --- | --- | --- | --- | --- | --- | --- | --- | --- | --- | --- | --- |
|  | 2013 | **RHD4-02-002-L122-(CCTV)-CCTV Poles** |  | 2028-07-20 | 2028-07-31 |  |  |  |  |  |  |  |  |  |
| RHD4CZ3L122CCTV1100 |  | Excavation for RC Base for CCTV Poles for Security Network - (RD-L-12/2)-Z3-L122-CCTV | 2d | 2028-07-20 | 2028-07-22 | RHD4ENSDZ3APPCCTV210, RHD4CZ3L122CCTV2100, RHD4CZ2C082RD8100 | Skilled labor [4.32 h]; Unskilled Labor [4.32 h]; Equipment Opreator [8.64 h]; Excavator-Poclain [2.18 h]; Dump Truck [2.18 h]; 25 Meters pole for CCTV Cameras [0.1 nr] | 14,090.2 | L122 | Z3 | CONS | CCTV | Excavation | AFT |
| RHD4CZ3L122CCTV1200 |  | Installation for RC Base for CCTV Poles for Security Network - (RD-L-12/2)-Z3-L122-CCTV | 2d | 2028-07-23 | 2028-07-24 | RHD4CZ3L122CCTV1100 | Skilled labor [4.32 h]; Unskilled Labor [4.32 h]; Equipment Opreator [8.64 h]; Excavator-Poclain [2.18 h]; Dump Truck [2.18 h]; 25 Meters pole for CCTV Cameras [0.25 nr] | 35,225.5 | L122 | Z3 | CONS | CCTV | RC Base | AFT |
| RHD4CZ3L122CCTV1300 |  | Backfill for RC Base for CCTV Poles for Security Network - (RD-L-12/2)-Z3-L122-CCTV | 2d | 2028-07-25 | 2028-07-26 | RHD4CZ3L122CCTV1200 | Skilled labor [2.88 h]; Unskilled Labor [2.88 h]; Equipment Opreator [5.44 h]; Excavator-Poclain [1.42 h]; Dump Truck [1.42 h]; 25 Meters pole for CCTV Cameras [0.05 nr] | 7,045.1 | L122 | Z3 | CONS | CCTV | Backfill | AFT |
| RHD4CZ3L122CCTV1400 |  | Installation for CCTV Poles for Security Network - (RD-L-12/2)-Z3-L122-CCTV | 2d | 2028-07-27 | 2028-07-29 | RHD4PRSHLDOSCCTV1000, RHD4PRSHLSTACCTV1000, RHD4CZ3L122CCTV1300 | Skilled labor [7.2 h]; Unskilled Labor [14.56 h]; Electrician [7.2 h]; Equipment Opreator [7.2 h]; Boom Truck [3.59 h]; 25 Meters pole for CCTV Cameras [0.6 nr] | 84,541.2 | L122 | Z3 | CONS | CCTV | Installation | AFT |
| RHD4CZ3L122CCTV1500 |  | Protection post Installation for CCTV Poles for Security Network - (RD-L-12/2)-Z3-L122-CCTV | 2d | 2028-07-30 | 2028-07-31 | RHD4CZ3L122CCTV1400 | Skilled labor [21.76 h]; Unskilled Labor [43.52 h]; Supply and Installation of minimum 4 Protection Post for each pole or tower with pipe ?220*6mm THK. [1 nr] | 4,903 | L122 | Z3 | CONS | CCTV | Protection post | AFT |
|  | 2014 | **RHD4-02-002-L122-(CCTV)-Camera** |  | 2028-08-01 | 2028-08-02 |  |  |  |  |  |  |  |  |  |
| RHD4CZ3L122CCTV3100 |  | Installation for Cameras for Security Network - (RD-L-12/2)-Z3-L122-CCTV | 2d | 2028-08-01 | 2028-08-02 | RHD4PRSHLDOSCCTV1100, RHD4PRSHLSTACCTV1100, RHD4CZ3L122CCTV1400, RHD4CZ3L122CCTV4100, RHD4HOASZ4APPSL170, RHD4CZ4L014RD7100 | Unskilled Labor [32.64 h]; Electrician [16.32 h]; Outdoor Camera, 5MP resolution, day/night, fixed bullet camera providing Forensic WDR. [2 nr]; Outdoor PTZ with IR, HDTV 1080 and 31x optical, 12x digital, total 372x zoom, H264/265 with Motion JPEG. [1 nr] | 44,801 | L122 | Z3 | CONS | CCTV | Installation | AFT |
|  | 2015 | **RHD4-02-002-L122-(CCTV)-Power and Infrastructure** |  | 2028-07-30 | 2028-08-02 |  |  |  |  |  |  |  |  |  |
| RHD4CZ3L122CCTV4100 |  | Installation of Power outlet, UPS and midspan for PTZ Camerafor Cameras for Security Network - (RD-L-12/2)-Z3-L122-CCTV | 2d | 2028-07-30 | 2028-07-31 | RHD4PRSHLDOSCCTV1300, RHD4PRSHLSTACCTV1300, RHD4CZ3L122CCTV1400 | Skilled labor [13.12 h]; Unskilled Labor [52.32 h]; Electrician [26.08 h]; Equipment Opreator [26.08 h]; Excavator-Poclain [6.53 h]; Dump Truck [6.53 h]; Outdoor ready IP66-rated midspan for PTZ Camera (The outdoor- ready midspan should be IP66/IP67- and NEMA 4X-rated [1 nr]; 1.2KVA Industrial type UPS located at FEC remote poles [2 nr] | 15,232 | L122 | Z3 | CONS | CCTV | Power | AFT |
| RHD4CZ3L122CCTV4200 |  | Short Range Wireless PoP wireless Bridgefor CCTV Poles for Security Network - (RD-L-12/2)-Z3-L122-CCTV | 2d | 2028-08-01 | 2028-08-02 | RHD4CZ3L122CCTV4100 | Skilled labor [10.88 h]; Unskilled Labor [21.76 h]; Electrician [10.88 h]; Equipment Opreator [21.76 h]; Excavator-Poclain [5.45 h]; Dump Truck [5.45 h]; Short Range wireless point to point wireless bridge [2 nr] | 29,274 | L122 | Z3 | CONS | CCTV | Wireless Pop | AFT |
|  | 2017 | **RHD4-02-002-L122-(CCTV)-CCTV Panels and Components** |  | 2028-08-03 | 2028-08-24 |  |  |  |  |  |  |  |  |  |
| RHD4CZ3L122CCTV6100 |  | Installation for CCTV Panels for Security Network - (RD-L-12/2)-Z3-L122-CCTV | 19d | 2028-08-03 | 2028-08-24 | RHD4PRSHLDOSCCTV1200, RHD4PRSHLSTACCTV1200, RHD4PRLOLSTACCTV1001, RHD4CZ3L122CCTV4200, RHD4CZ3L122CCTV3100 | Skilled labor [326.72 h]; Unskilled Labor [980.16 h]; Electrician [326.72 h]; Pole mounted Filed Equipment cabinet (FEC) , with fan and ventilation, NEMEX 4X ,door, minimum size (600x600x400mm) , the cabinet/enclosurE [2 nr]; 8 Port Industrial PoE Switch 10/1000BaseT (-40 deg to +70 deg. Celsius) for remote poles and as specifiedin item 15. [1 nr]; UTP CAT6 Patch Cord , connect the industrial switch with the cameras, and radio wireless antenna [12 nr] | 32,584 | L122 | Z3 | CONS | CCTV | Equipment | AFT |
|  | 1461 | **RHD4-02-002-Z3-C083** |  | 2026-12-31 | 2028-10-12 |  |  |  |  |  |  |  |  |  |
|  | 567 | **RHD4-02-002-Z3-C083-Sewage Network - SW** |  | 2027-05-26 | 2027-07-07 |  |  |  |  |  |  |  |  |  |
|  | 577 | **RHD4-02-002-C083-(SW)-MH Works - 1200 mm diameter** |  | 2027-06-14 | 2027-07-07 |  |  |  |  |  |  |  |  |  |
| RHD4CZ3C083SW3100 |  | Excavation and PC Blinding works for MH 1200 mm - (RD-C-8 /3)-Z3-C083-SW | 3d | 2027-06-14 | 2027-06-16 | RHD4CZ2C082SW3100, RHD4CZ3C083SW2500 | Skilled labor [32.67 h]; Unskilled Labor [32.67 h]; Equipment Opreator [52.27 h]; Excavator-Poclain [32.67 h]; Water Truck [3.27 h]; Dump Truck [16.34 h]; MH (1200mm Diameter) - SW - depth 0 - 1.5m [0.75 nr]; MH (1200mm Diameter) - SW - depth 1.51 - 2.5m [0.25 nr]; MH (1200mm Diameter) - SW - depth 2.51 - 3.5m [0.5 nr]; MH (1200mm Diameter) - SW - depth 3.51 -4.5m [0.25 nr] | 17,900.75 | C082 | Z2 | CONS | SW | Excavation | bef |
| RHD4CZ3C083SW3200 |  | Installation of Base for MH 1200 mm - (RD-C-8 /3)-Z3-C083-SW | 5d | 2027-06-17 | 2027-06-22 | RHD4CZ3C083SW3100 | Skilled labor [54.45 h]; Unskilled Labor [54.45 h]; Equipment Opreator [21.78 h]; Boom Truck [10.89 h]; Concrete Mixer Truck [10.89 h]; MH (1200mm Diameter) - SW - depth 0 - 1.5m [0.75 nr]; MH (1200mm Diameter) - SW - depth 1.51 - 2.5m [0.25 nr]; MH (1200mm Diameter) - SW - depth 2.51 - 3.5m [0.5 nr]; MH (1200mm Diameter) - SW - depth 3.51 -4.5m [0.25 nr] | 17,900.75 | C082 | Z2 | CONS | SW | Installing Base | bef |
| RHD4CZ3C083SW3300 |  | MH Ring and C.Slab works and Backfilling works for MH 1200 mm - (RD-C-8 /3)-Z3-C083-SW | 5d | 2027-06-23 | 2027-06-28 | RHD4CZ3C083SW3200 | Skilled labor [54.45 h]; Unskilled Labor [54.45 h]; Equipment Opreator [38.12 h]; Boom Truck [21.78 h]; Concrete Mixer Truck [16.34 h]; MH (1200mm Diameter) - SW - depth 0 - 1.5m [1.05 nr]; MH (1200mm Diameter) - SW - depth 1.51 - 2.5m [0.35 nr]; MH (1200mm Diameter) - SW - depth 2.51 - 3.5m [0.7 nr]; MH (1200mm Diameter) - SW - depth 3.51 -4.5m [0.35 nr] | 25,061.05 | C082 | Z2 | CONS | SW | Installing Rings | bef |
| RHD4CZ3C083SW3400 |  | Steel Cover for MH 1200 mm - (RD-C-8 /3)-Z3-C083-SW | 3d | 2027-06-29 | 2027-07-01 | RHD4CZ3C083SW3300 | Skilled labor [25.37 h]; Unskilled Labor [50.86 h]; Equipment Opreator [5.12 h]; Boom Truck [5.12 h]; MH (1200mm Diameter) - SW - depth 0 - 1.5m [0.15 nr]; MH (1200mm Diameter) - SW - depth 1.51 - 2.5m [0.05 nr]; MH (1200mm Diameter) - SW - depth 2.51 - 3.5m [0.1 nr]; MH (1200mm Diameter) - SW - depth 3.51 -4.5m [0.05 nr] | 3,580.15 | C082 | Z2 | CONS | SW | Steel Cover | bef |
| RHD4CZ3C083SW3500 |  | Finishing, Benching, Testing works for MH 1200 mm - (RD-C-8 /3)-Z3-C083-SW | 5d | 2027-07-03 | 2027-07-07 | RHD4CZ3C083SW3400, RHD4CZ3C083ST8500 | Skilled labor [54.45 h]; Unskilled Labor [108.9 h]; Plumber [54.45 h]; Equipment Opreator [10.89 h]; Water Truck [10.89 h]; MH (1200mm Diameter) - SW - depth 0 - 1.5m [0.3 nr]; MH (1200mm Diameter) - SW - depth 1.51 - 2.5m [0.1 nr]; MH (1200mm Diameter) - SW - depth 2.51 - 3.5m [0.2 nr]; MH (1200mm Diameter) - SW - depth 3.51 -4.5m [0.1 nr] | 7,160.3 | C082 | Z2 | CONS | SW | Benching | bef |
|  | 573 | **RHD4-02-002-C083-(SW)-UPVC Pipes - 200 mm diameter** |  | 2027-05-26 | 2027-06-13 |  |  |  |  |  |  |  |  |  |
| RHD4CZ3C083SW2100 |  | Excavation works for UPVC Pipe Line 200 mm - (RD-C-8 /3)-Z3-C083-SW | 3d | 2027-05-26 | 2027-05-29 | RHD4ENSDZ3APPSW120, RHD4CZ3L122ST7300 | Skilled labor [26.79 h]; Unskilled Labor [26.79 h]; Equipment Opreator [32.13 h]; Excavator-Poclain [26.79 h]; Dump Truck [5.34 h]; UPVC (200mm Diameter) - SW - Depth: less than 1.5m [30.92 m]; UPVC (200mm Diameter) - SW - Depth: 1.51m - 2.5m; UPVC (200mm Diameter) - SW - Depth: 2.51m - 3.5m [16.37 m]; UPVC (200mm Diameter) - SW - Depth: 3.51m - 4.5m | 10,574.82 | C082 | Z2 | CONS | SW | Excavation | bef |
| RHD4CZ3C083SW2200 |  | Bedding works for UPVC Pipe Line 200 mm - (RD-C-8 /3)-Z3-C083-SW | 3d | 2027-05-30 | 2027-06-01 | RHD4CZ3C083SW2100 | Skilled labor [24.5 h]; Unskilled Labor [49.12 h]; Equipment Opreator [49.12 h]; Excavator-Poclain [24.5 h]; Dump Truck [24.5 h]; UPVC (200mm Diameter) - SW - Depth: less than 1.5m [15.46 m]; UPVC (200mm Diameter) - SW - Depth: 1.51m - 2.5m; UPVC (200mm Diameter) - SW - Depth: 2.51m - 3.5m [5.46 m]; UPVC (200mm Diameter) - SW - Depth: 3.51m - 4.5m | 4,453.56 | C082 | Z2 | CONS | SW | Bedding | bef |
| RHD4CZ3C083SW2300 |  | Installing for UPVC Pipe Line 200 mm - (RD-C-8 /3)-Z3-C083-SW | 4d | 2027-06-02 | 2027-06-06 | RHD4CZ3C083SW2200 | Unskilled Labor [71.55 h]; Plumber [35.72 h]; Equipment Opreator [35.72 h]; Boom Truck [35.72 h]; UPVC (200mm Diameter) - SW - Depth: less than 1.5m [139.13 m]; UPVC (200mm Diameter) - SW - Depth: 1.51m - 2.5m; UPVC (200mm Diameter) - SW - Depth: 2.51m - 3.5m [43.67 m]; UPVC (200mm Diameter) - SW - Depth: 3.51m - 4.5m | 38,406.42 | C082 | Z2 | CONS | SW | Installation | bef |
| RHD4CZ3C083SW2400 |  | Primary Test for UPVC Pipe Line 200 mm - (RD-C-8 /3)-Z3-C083-SW | 3d | 2027-06-07 | 2027-06-09 | RHD4CZ3C083SW2300 | Unskilled Labor [17.21 h]; Plumber [17.21 h]; Equipment Opreator [17.21 h]; Water Truck [17.21 h]; UPVC (200mm Diameter) - SW - Depth: less than 1.5m [61.83 m]; UPVC (200mm Diameter) - SW - Depth: 1.51m - 2.5m; UPVC (200mm Diameter) - SW - Depth: 2.51m - 3.5m [21.83 m]; UPVC (200mm Diameter) - SW - Depth: 3.51m - 4.5m | 17,809.38 | C082 | Z2 | CONS | SW | Primary Test | bef |
| RHD4CZ3C083SW2500 |  | Backfilling and warning tape works for UPVC Pipe Line 200 mm - (RD-C-8 /3)-Z3-C083-SW | 3d | 2027-06-10 | 2027-06-13 | RHD4CZ3C083SW2400 | Skilled labor [30.17 h]; Unskilled Labor [60.33 h]; Equipment Opreator [60.33 h]; Excavator-Poclain [30.17 h]; Dump Truck [30.17 h]; UPVC (200mm Diameter) - SW - Depth: less than 1.5m [61.83 m]; UPVC (200mm Diameter) - SW - Depth: 1.51m - 2.5m; UPVC (200mm Diameter) - SW - Depth: 2.51m - 3.5m [21.83 m]; UPVC (200mm Diameter) - SW - Depth: 3.51m - 4.5m | 17,809.38 | C082 | Z2 | CONS | SW | Backfilling | bef |

| ID | WBS | Activity | Duration | Start | Finish | Predecessors | Resources | Cost | RDH4-01-001-Road and Block Names-1 | RDH4-01-001-Zones-1 | RDH4-01-001-Phases-1 | RDH4-01-001-Networks-1 | RDH4-01-001-Work Method-1 | RDH4-01-001-MENEM |
| --- | --- | --- | --- | --- | --- | --- | --- | --- | --- | --- | --- | --- | --- | --- |
|  | 1583 | **RHD4-02-002-Z3-C083-Crossings Irrigation Network - IRRC** |  |  |  |  |  |  |  |  |  |  |  |  |
|  | 1588 | **RHD4-02-002-C083-(IRRC)-HDPE Pipes - 315 mm diameter** |  |  |  |  |  |  |  |  |  |  |  |  |
|  | 1640 | **RHD4-02-002-Z3-C083-Road Works - RD** |  | 2027-01-31 | 2028-10-12 |  |  |  |  |  |  |  |  |  |
|  | 1641 | **RHD4-02-002-C083-(RD)-Subgrade** |  | 2027-01-31 | 2027-02-03 |  |  |  |  |  |  |  |  |  |
| RHD4CZ3C083RD1100 |  | Supply, lay and compaction subgrade compacted thickness 300 mm for Roads - (RD-C-8 /3)-Z3-C083-RD | 4d | 2027-01-31 | 2027-02-03 | RHD4ENSDZ3APPEW100, RHD4ENSDZ3APPRD220, RHD4CZ3C083ST1502, RHD4CZ3C083SL2400, RHD4CZ3C083ST7300 SS | Skilled labor [133.73 h]; Unskilled Labor [267.36 h]; Electrician [133.73 h]; Equipment Opreator [913.16 h]; Water Truck [44.11 h]; Roller compactor [66.87 h]; Grader [133.73 h]; Dump Truck [668.45 h]; Subgrade [6429.94 m3] | 122,168.86 | C083 | Z3 | CONS | RD | Subgrade | bef |
|  | 1642 | **RHD4-02-002-C083-(RD)-Aggregate Base Course** |  | 2027-02-04 | 2027-02-08 |  |  |  |  |  |  |  |  |  |
| RHD4CZ3C083RD2100 |  | Supply, lay and compaction Aggregate base course compacted thickness 300 mmfor Roads - (RD-C-8 /3)-Z3-C083-RD | 4d | 2027-02-04 | 2027-02-08 | RHD4PRSHLDOSRD1000, RHD4PRSHLSTAGRD1000, RHD4CZ3C083RD1100 | Skilled labor [49.55 h]; Unskilled Labor [98.99 h]; Equipment Opreator [626.85 h]; Water Truck [32.67 h]; Roller compactor [98.99 h]; Grader [98.99 h]; Dump Truck [396.08 h]; Aggregate Base Courses [4038.64 m3] | 230,202.48 | C083 | Z3 | CONS | RD | ABC | bef |
|  | 1643 | **RHD4-02-002-C083-(RD)-Bituminous base course Two Layers, including (MC1)&(RC2)** |  | 2027-02-09 | 2027-12-14 |  |  |  |  |  |  |  |  |  |
| RHD4CZ3C083RD3100 |  | Supply, lay and Asphaltic base course including Prime Coat (MC1) for 1st Layer - (RD-C-8 /3)-Z3-C083-RD | 4d | 2027-02-09 | 2027-02-13 | RHD4PRSHLDOSRD1100, RHD4ENMSASPH2000, RHD4ENMSASPH2010, RHD4PRSHLSTAGRD1100, RHD4CZ3C083RD2100 | Skilled labor [34.63 h]; Unskilled Labor [207.57 h]; Equipment Opreator [518.93 h]; Bobcat [34.63 h]; Roller compactor [34.63 h]; Asphalt Paver [34.63 h]; Rubber Compactor [69.15 h]; MC1/RC2 Sprinkler [34.63 h]; Dump Truck [311.36 h]; Bituminous base course (Grading I - Class A), including Prime coat (MC1) & tack coate (RC2) [1265.61 m3] | 604,961.58 | C083 | Z3 | CONS | RD | 150 mm | AFT |
| RHD4CZ3C083RD3200 |  | Supply, lay and Asphaltic base course including Tack Coat (RC2) for 2nd Layer - (RD-C-8 /3)-Z3-C083-RD | 4d | 2027-12-11 | 2027-12-14 | RHD4PRSHLDOSRD1100, RHD4PRSHLSTAGRD1100, RHD4CZ3C083RD3100, RHD4CZ3C083CCTV6100 | Skilled labor [34.63 h]; Unskilled Labor [207.57 h]; Equipment Opreator [518.93 h]; Bobcat [34.63 h]; Roller compactor [34.63 h]; Asphalt Paver [34.63 h]; Rubber Compactor [69.15 h]; MC1/RC2 Sprinkler [34.63 h]; Dump Truck [311.36 h]; Bituminous base course (Grading I - Class A), including Prime coat (MC1) & tack coate (RC2) [1265.61 m3] | 604,961.58 | C083 | Z3 | CONS | RD | 150 mm | AFT |
|  | 1645 | **RHD4-02-002-C083-(RD)-Precast Concrete Curb** |  | 2027-12-15 | 2027-12-27 |  |  |  |  |  |  |  |  |  |
| RHD4CZ3C083RD5100 |  | Supply and installation Precast Concrete Kerb for Roads - (RD-C-8 /3)-Z3-C083-RD | 11d | 2027-12-15 | 2027-12-27 | RHD4PRSHLDOSRD1200, RHD4ENMSRD2000, RHD4ENMSRD2010, RHD4PRSHLSTAGRD1200, RHD4CZ3C083RD3200 | Mason [334.12 h]; Skilled labor [111.41 h]; Unskilled Labor [334.12 h]; Equipment Opreator [222.71 h]; Bobcat [111.41 h]; Concrete Mixer Truck [111.41 h]; Precast Concrete Curbstone, type K1 [4601.71 m] | 253,093.82 | C083 | Z3 | CONS | RD | Curbs | AFT |
|  | 1648 | **RHD4-02-002-C083-(RD)-Traffic Signage** |  | 2028-09-30 | 2028-10-05 |  |  |  |  |  |  |  |  |  |
| RHD4CZ3C083RD8100 |  | Installation of Traffic Signage for Road Network - (RD-C-8 /3)-Z3-C083-RD | 6d | 2028-09-30 | 2028-10-05 | RHD4PRSHLDOSRD1600, RHD4PRSHLSTAGST1401, RHD4PRSHLSTAGST1501, RHD4PRSHLSTAGRD1600, RHD4CZ3C083RD5100, RHD4CZ3C083TC2400, RHD4CZ3C083ICT2400, RHD4CZ3C011RD8100, RHD4CZ3C083SW3500, RHD4CZ3C011ST4600 | Skilled labor [130.68 h]; Unskilled Labor [65.34 h]; Electrician [3.27 h]; Equipment Opreator [14.4 h]; Boom Truck [13.07 h]; Concrete Mixer Truck [1.31 h]; Traffic signs, ground mounted, 1 Sheet Aluminium, (breakaway)Single post [3 nr] | 3,678 | C083 | Z3 | CONS | RD | Traffic Signage | AFT |
|  | 1646 | **RHD4-02-002-C083-(RD)-Precast Interlocking Block Pavers** |  |  |  |  |  |  |  |  |  |  |  |  |
|  | 1644 | **RHD4-02-002-C083-(RD)-Bituminous concrete wearing course including tack coat (RC2)** |  | 2028-10-07 | 2028-10-12 |  |  |  |  |  |  |  |  |  |
| RHD4CZ3C083RD4100 |  | Supply, lay and compaction Asphaltic wearing course including tack Coat (RC2)for Road Network - (RD-C-8 /3)-Z3-C083-RD | 6d | 2028-10-07 | 2028-10-12 | RHD4CZ3C083RD5100, RHD4CZ3C011RD4100, RHD4CZ3C083RD8100 | Skilled labor [20.26 h]; Unskilled Labor [121.54 h]; Equipment Opreator [303.84 h]; Bobcat [20.26 h]; Roller compactor [20.26 h]; Asphalt Paver [20.26 h]; Rubber Compactor [40.51 h]; MC1/RC2 Sprinkler [20.26 h]; Dump Truck [182.3 h]; Bituminous concrete wearing course, (Grading I - Class A), including tack coat (RC2) [966.11 m3] | 524,597.73 | C083 | Z3 | CONS | RD | 50 mm | AFT |
|  | 1649 | **RHD4-02-002-C083-(RD)-Speed Table and Wheel Stopper** |  |  |  |  |  |  |  |  |  |  |  |  |
|  | 1647 | **RHD4-02-002-C083-(RD)-Pavement Marking** |  | 2028-08-09 | 2028-08-16 |  |  |  |  |  |  |  |  |  |
| RHD4CZ3C083RD7100 |  | Pavement Markings for Road Network - (RD-C-8 /3)-Z3-C083-RD | 7d | 2028-08-09 | 2028-08-16 | RHD4PRSHLDOSRD1500, RHD4PRSHLSTAGRD1500, RHD4CZ3C011RD7100 | Skilled labor [45.96 h]; Unskilled Labor [91.81 h]; Equipment Opreator [45.96 h]; Road Marking Machine [45.96 h]; Retroreflective Thermoplastic White Traffic Markings [342.52 m2]; Retroreflective Thermoplastic Yellow, Traffic Markings [347.01 m2]; Rumble strip [49 m]; Retroreflective raised pavement markers (cat eyes) [356 nr] | 39,506.43 | C083 | Z3 | CONS | RD | Pavement Marking | AFT |
|  | 1465 | **RHD4-02-002-Z3-C083-Storm Network - ST** |  | 2026-12-31 | 2027-03-31 |  |  |  |  |  |  |  |  |  |
|  | 5251 | **RHD4-02-002-C083-(ST)-GRP Pipes - 600 mm diameter** |  | 2027-01-06 | 2027-01-17 |  |  |  |  |  |  |  |  |  |
| RHD4CZ3C083ST1102 |  | Excavation works for GRP Pipe Line 600 mm - (RD-C-8 /3)-Z3-C083-ST | 2d | 2027-01-06 | 2027-01-07 | RHD4CZ3C083ST3100 | Skilled labor [2.29 h]; Unskilled Labor [2.29 h]; Equipment Opreator [2.72 h]; Excavator-Poclain [2.29 h]; Dump Truck [0.44 h]; GRP (600mm Diameter) - ST - Depth: 1.51m - 2.5m [4.72 m]; GRP (600mm Diameter) - ST - Depth: 2.51m - 3.5m | 2,194.8 | C083 | Z3 | CONS | ST | Excavation | bef |
| RHD4CZ3C083ST1202 |  | Bedding works for GRP Pipe Line 600 mm - (RD-C-8 /3)-Z3-C083-ST | 2d | 2027-01-09 | 2027-01-10 | RHD4CZ3C083ST1102 | Skilled labor [2.29 h]; Unskilled Labor [4.57 h]; Equipment Opreator [4.57 h]; Excavator-Poclain [2.29 h]; Dump Truck [2.29 h]; GRP (600mm Diameter) - ST - Depth: 1.51m - 2.5m [1.57 m]; GRP (600mm Diameter) - ST - Depth: 2.51m - 3.5m | 730.05 | C083 | Z3 | CONS | ST | Bedding | bef |
| RHD4CZ3C083ST1302 |  | Installing for GRP Pipe Line 600 mm - (RD-C-8 /3)-Z3-C083-ST | 2d | 2027-01-11 | 2027-01-12 | RHD4CZ3C083ST1202 | Unskilled Labor [4.57 h]; Plumber [2.29 h]; GRP (600mm Diameter) - ST - Depth: 1.51m - 2.5m [12.6 m]; GRP (600mm Diameter) - ST - Depth: 2.51m - 3.5m | 5,859 | C083 | Z3 | CONS | ST | Installation | bef |
| RHD4CZ3C083ST1402 |  | Primary Test for GRP Pipe Line 600 mm - (RD-C-8 /3)-Z3-C083-ST | 2d | 2027-01-13 | 2027-01-14 | RHD4CZ3C083ST1302 | Unskilled Labor [2.29 h]; Plumber [2.29 h]; Equipment Opreator [2.29 h]; Water Truck [2.29 h]; GRP (600mm Diameter) - ST - Depth: 1.51m - 2.5m [6.3 m]; GRP (600mm Diameter) - ST - Depth: 2.51m - 3.5m | 2,929.5 | C083 | Z3 | CONS | ST | Primary Test | bef |
| RHD4CZ3C083ST1502 |  | Backfilling and warning tape works for GRP Pipe Line 600 mm - (RD-C-8 /3)-Z3-C083-ST | 2d | 2027-01-16 | 2027-01-17 | RHD4CZ3C083ST1402 | Skilled labor [2.29 h]; Unskilled Labor [4.57 h]; Equipment Opreator [4.57 h]; Excavator-Poclain [2.29 h]; Dump Truck [2.29 h]; GRP (600mm Diameter) - ST - Depth: 1.51m - 2.5m [6.3 m]; GRP (600mm Diameter) - ST - Depth: 2.51m - 3.5m | 2,929.5 | C083 | Z3 | CONS | ST | Backfilling | bef |

| ID | WBS | Activity | Duration | Start | Finish | Predecessors | Resources | Cost | RDH4-01-001-Road and Block Names-1 | RDH4-01-001-Zones-1 | RDH4-01-001-Phases-1 | RDH4-01-001-Networks-1 | RDH4-01-001-Work Method-1 | RDH4-01-001-MENEM |
| --- | --- | --- | --- | --- | --- | --- | --- | --- | --- | --- | --- | --- | --- | --- |
|  | 710 | **RHD4-02-002-C083-(ST)-GRP Pipes - 500 mm diameter** |  | 2027-01-09 | 2027-01-21 |  |  |  |  |  |  |  |  |  |
| RHD4CZ3C083ST1101 |  | Excavation works for GRP Pipe Line 500 mm - (RD-C-8 /3)-Z3-C083-ST | 2d | 2027-01-09 | 2027-01-10 | RHD4CZ3C083ST1102 | Skilled labor [20.26 h]; Unskilled Labor [20.26 h]; Equipment Opreator [24.39 h]; Excavator-Poclain [20.26 h]; Dump Truck [4 h]; GRP (500mm Diameter) - ST - Depth less than 1.5 m [26.02 m]; GRP (500mm Diameter) - ST - Depth: 1.51m - 2.5m [18.12 m]; GRP (500mm Diameter) - ST - Depth: 2.51m - 3.5m | 16,394.5 | C083 | Z3 | CONS | ST | Excavation | bef |
| RHD4CZ3C083ST1201 |  | Bedding works for GRP Pipe Line 500 mm - (RD-C-8 /3)-Z3-C083-ST | 2d | 2027-01-11 | 2027-01-12 | RHD4CZ3C083ST1101 | Skilled labor [18.84 h]; Unskilled Labor [37.6 h]; Equipment Opreator [37.6 h]; Excavator-Poclain [18.84 h]; Dump Truck [18.84 h]; GRP (500mm Diameter) - ST - Depth less than 1.5 m [13.01 m]; GRP (500mm Diameter) - ST - Depth: 1.51m - 2.5m [6.04 m]; GRP (500mm Diameter) - ST - Depth: 2.51m - 3.5m | 7,004.35 | C083 | Z3 | CONS | ST | Bedding | bef |
| RHD4CZ3C083ST1301 |  | Installing for GRP Pipe Line 500 mm - (RD-C-8 /3)-Z3-C083-ST | 3d | 2027-01-13 | 2027-01-16 | RHD4CZ3C083ST1201 | Unskilled Labor [52.49 h]; Plumber [26.25 h]; GRP (500mm Diameter) - ST - Depth less than 1.5 m [117.08 m]; GRP (500mm Diameter) - ST - Depth: 1.51m - 2.5m [48.32 m]; GRP (500mm Diameter) - ST - Depth: 2.51m - 3.5m | 60,649.8 | C083 | Z3 | CONS | ST | Installation | bef |
| RHD4CZ3C083ST1401 |  | Primary Test for GRP Pipe Line 500 mm - (RD-C-8 /3)-Z3-C083-ST | 2d | 2027-01-17 | 2027-01-18 | RHD4CZ3C083ST1301 | Unskilled Labor [15.79 h]; Plumber [15.79 h]; Equipment Opreator [15.79 h]; Water Truck [15.79 h]; GRP (500mm Diameter) - ST - Depth less than 1.5 m [52.03 m]; GRP (500mm Diameter) - ST - Depth: 1.51m - 2.5m [24.16 m]; GRP (500mm Diameter) - ST - Depth: 2.51m - 3.5m | 28,013.85 | C083 | Z3 | CONS | ST | Primary Test | bef |
| RHD4CZ3C083ST1501 |  | Backfilling and warning tape works for GRP Pipe Line 500 mm - (RD-C-8 /3)-Z3-C083-ST | 3d | 2027-01-19 | 2027-01-21 | RHD4CZ3C083ST1401 | Skilled labor [22.54 h]; Unskilled Labor [45.09 h]; Equipment Opreator [45.09 h]; Excavator-Poclain [22.54 h]; Dump Truck [22.54 h]; GRP (500mm Diameter) - ST - Depth less than 1.5 m [52.03 m]; GRP (500mm Diameter) - ST - Depth: 1.51m - 2.5m [24.16 m]; GRP (500mm Diameter) - ST - Depth: 2.51m - 3.5m | 28,013.85 | C083 | Z3 | CONS | ST | Backfilling | bef |
|  | 1482 | **RHD4-02-002-C083-(ST)-MH Works - 1200 mm diameter** |  | 2026-12-31 | 2027-03-31 |  |  |  |  |  |  |  |  |  |
| RHD4CZ3C083ST3100 |  | Excavation and PC Blinding works for MH 1200 mm - (RD-C-8 /3)-Z3-C083-ST | 5d | 2026-12-31 | 2027-01-05 | RHD4ENSDZ3APPST110, RHD4ENMSST2000, RHD4ENMSST2010, RHD4PRSHLDOSST1301 | Skilled labor [47.16 h]; Unskilled Labor [47.16 h]; Equipment Opreator [75.47 h]; Excavator-Poclain [47.16 h]; Water Truck [4.68 h]; Dump Truck [23.63 h]; MH (1200mm Diameter) - ST - depth 1.50 - 2.5m [2.5 nr]; MH (1200mm Diameter) - ST - depth 2.51 - 3.5m [0.75 nr] | 34,715.25 | C083 | Z3 | CONS | ST | Excavation | bef |
| RHD4CZ3C083ST3200 |  | Installation of Base for MH 1200 mm - (RD-C-8 /3)-Z3-C083-ST | 5d | 2027-01-06 | 2027-01-11 | RHD4PRSHLSTAGST1602, RHD4CZ3C083ST3100 | Skilled labor [52.6 h]; Unskilled Labor [52.6 h]; Equipment Opreator [21.02 h]; Boom Truck [10.56 h]; Concrete Mixer Truck [10.56 h]; MH (1200mm Diameter) - ST - depth 1.50 - 2.5m [2.5 nr]; MH (1200mm Diameter) - ST - depth 2.51 - 3.5m [0.75 nr] | 34,715.25 | C083 | Z3 | CONS | ST | Installing Base | bef |
| RHD4CZ3C083ST3300 |  | MH Ring and C.Slab works and Backfilling works for MH 1200 mm - (RD-C-8 /3)-Z3-C083-ST | 5d | 2027-01-12 | 2027-01-17 | RHD4PRSHLDOSST1602, RHD4CZ3C083ST3200 | Skilled labor [52.6 h]; Unskilled Labor [52.6 h]; Equipment Opreator [36.8 h]; Boom Truck [21.02 h]; Concrete Mixer Truck [15.79 h]; MH (1200mm Diameter) - ST - depth 1.50 - 2.5m [3.5 nr]; MH (1200mm Diameter) - ST - depth 2.51 - 3.5m [1.05 nr] | 48,601.35 | C083 | Z3 | CONS | ST | Installing Rings | bef |
| RHD4CZ3C083ST3400 |  | Steel Cover for MH 1200 mm - (RD-C-8 /3)-Z3-C083-ST | 5d | 2027-03-21 | 2027-03-25 | RHD4PRSHLDOSST1702, RHD4PRSHLSTAGST1702, RHD4CZ3C083ST3300, RHD4CZ3C083ST2500, RHD4CZ3C083ST1500, RHD4CZ3C083RD3100, RHD4CZ3C083ST1501 | Skilled labor [47.16 h]; Unskilled Labor [94.4 h]; Equipment Opreator [9.47 h]; Boom Truck [9.47 h]; MH (1200mm Diameter) - ST - depth 1.50 - 2.5m [0.5 nr]; MH (1200mm Diameter) - ST - depth 2.51 - 3.5m [0.15 nr] | 6,943.05 | C083 | Z3 | CONS | ST | Steel Cover | bef |
| RHD4CZ3C083ST3500 |  | Finishing, Benching, Testing works for MH 1200 mm - (RD-C-8 /3)-Z3-C083-ST | 5d | 2027-03-27 | 2027-03-31 | RHD4CZ3C083ST3400 | Skilled labor [47.16 h]; Unskilled Labor [94.4 h]; Plumber [47.16 h]; Equipment Opreator [9.47 h]; Water Truck [9.47 h]; MH (1200mm Diameter) - ST - depth 1.50 - 2.5m [1 nr]; MH (1200mm Diameter) - ST - depth 2.51 - 3.5m [0.3 nr] | 13,886.1 | C083 | Z3 | CONS | ST | Benching | bef |
|  | 1466 | **RHD4-02-002-C083-(ST)-GRP Pipes - 400 mm diameter** |  | 2027-01-18 | 2027-01-28 |  |  |  |  |  |  |  |  |  |
| RHD4CZ3C083ST1100 |  | Excavation works for GRP Pipe Line 400 mm - (RD-C-8 /3)-Z3-C083-ST | 2d | 2027-01-18 | 2027-01-19 | RHD4ENSDZ3APPST110, RHD4CZ3C083ST3300 | Skilled labor [9.6 h]; Unskilled Labor [9.6 h]; Equipment Opreator [11.54 h]; Excavator-Poclain [9.6 h]; Dump Truck [1.96 h]; GRP (400mm Diameter) - ST - Depth less than 1.5 m [20.49 m]; GRP (400mm Diameter) - ST - Depth: 1.51m - 2.5 m | 5,942.1 | C083 | Z3 | CONS | ST | Excavation | bef |
| RHD4CZ3C083ST1200 |  | Bedding works for GRP Pipe Line 400 mm - (RD-C-8 /3)-Z3-C083-ST | 2d | 2027-01-20 | 2027-01-21 | RHD4CZ3C083ST1100 | Skilled labor [8.6 h]; Unskilled Labor [17.21 h]; Equipment Opreator [17.21 h]; Excavator-Poclain [8.6 h]; Dump Truck [8.6 h]; GRP (400mm Diameter) - ST - Depth less than 1.5 m [10.25 m]; GRP (400mm Diameter) - ST - Depth: 1.51m - 2.5 m | 2,972.5 | C083 | Z3 | CONS | ST | Bedding | bef |
| RHD4CZ3C083ST1300 |  | Installing for GRP Pipe Line 400 mm - (RD-C-8 /3)-Z3-C083-ST | 2d | 2027-01-23 | 2027-01-24 | RHD4PRSHLSTAGST1002, RHD4CZ3C083ST1200, RHD4PRSHLDOSST1602, RHD4PRSHLPOST1000, RHD4PRSHLDOSST1008 SS, RHD4PRSHLDOSST1608, RHD4PRSHLDOSST1008, RHD4PRSHLDOSST1604, RHD4PRSHLDOSST1004 | Unskilled Labor [27.44 h]; Plumber [13.72 h]; GRP (400mm Diameter) - ST - Depth less than 1.5 m [92.22 m]; GRP (400mm Diameter) - ST - Depth: 1.51m - 2.5 m | 26,743.8 | C083 | Z3 | CONS | ST | Installation | bef |
| RHD4CZ3C083ST1400 |  | Primary Test for GRP Pipe Line 400 mm - (RD-C-8 /3)-Z3-C083-ST | 2d | 2027-01-25 | 2027-01-26 | RHD4CZ3C083ST1300 | Unskilled Labor [6.64 h]; Plumber [6.64 h]; Equipment Opreator [6.64 h]; Water Truck [6.64 h]; GRP (400mm Diameter) - ST - Depth less than 1.5 m [40.99 m]; GRP (400mm Diameter) - ST - Depth: 1.51m - 2.5 m | 11,887.1 | C083 | Z3 | CONS | ST | Primary Test | bef |
| RHD4CZ3C083ST1500 |  | Backfilling and warning tape works for GRP Pipe Line 400 mm - (RD-C-8 /3)-Z3-C083-ST | 2d | 2027-01-27 | 2027-01-28 | RHD4CZ3C083ST1400 | Skilled labor [11.11 h]; Unskilled Labor [22.33 h]; Equipment Opreator [22.33 h]; Excavator-Poclain [11.11 h]; Dump Truck [11.11 h]; GRP (400mm Diameter) - ST - Depth less than 1.5 m [40.99 m]; GRP (400mm Diameter) - ST - Depth: 1.51m - 2.5 m | 11,887.1 | C083 | Z3 | CONS | ST | Backfilling | bef |
|  | 1480 | **RHD4-02-002-C083-(ST)-UPVC Pipes - 300 mm diameter** |  | 2027-01-30 | 2027-03-20 |  |  |  |  |  |  |  |  |  |
| RHD4CZ3C083ST2100 |  | Excavation works for UPVC Pipe Line 300 mm - (RD-C-8 /3)-Z3-C083-ST | 3d | 2027-01-30 | 2027-02-01 | RHD4ENSDZ3APPST110, RHD4PRSHLSTAGSW1001, RHD4CZ3C083ST3300, RHD4CZ3C083ST1500 | Skilled labor [22.87 h]; Unskilled Labor [22.87 h]; Equipment Opreator [27.33 h]; Excavator-Poclain [22.87 h]; Dump Truck [4.57 h]; UPVC (300mm Diameter) - ST - Depth less than 1.5 [49.86 m]; UPVC (300mm Diameter) - ST - Depth: 1.51m - 2.5m | 15,107.58 | C083 | Z3 | CONS | ST | Excavation | bef |
| RHD4CZ3C083ST2200 |  | Bedding works for UPVC Pipe Line 300 mm - (RD-C-8 /3)-Z3-C083-ST | 2d | 2027-02-02 | 2027-02-03 | RHD4CZ3C083ST2100 | Skilled labor [19.93 h]; Unskilled Labor [39.86 h]; Equipment Opreator [39.86 h]; Excavator-Poclain [19.93 h]; Dump Truck [19.93 h]; UPVC (300mm Diameter) - ST - Depth less than 1.5 [24.93 m]; UPVC (300mm Diameter) - ST - Depth: 1.51m - 2.5m | 7,553.79 | C083 | Z3 | CONS | ST | Bedding | bef |
| RHD4CZ3C083ST2300 |  | Installing for UPVC Pipe Line 300 mm - (RD-C-8 /3)-Z3-C083-ST | 3d | 2027-02-04 | 2027-02-07 | RHD4PRSHLDOSST1102, RHD4PRSHLSTAGST1102, RHD4CZ3C083ST2200, RHD4CZ3C083ST7300 | Unskilled Labor [45.6 h]; Plumber [22.87 h]; UPVC (300mm Diameter) - ST - Depth less than 1.5 [224.39 m]; UPVC (300mm Diameter) - ST - Depth: 1.51m - 2.5m | 67,990.17 | C083 | Z3 | CONS | ST | Installation | bef |
| RHD4CZ3C083ST2400 |  | Primary Test for UPVC Pipe Line 300 mm - (RD-C-8 /3)-Z3-C083-ST | 2d | 2027-03-15 | 2027-03-16 | RHD4CZ7L015TC3400, RHD4CZ3C083ST2300 | Unskilled Labor [14.16 h]; Plumber [14.16 h]; Equipment Opreator [14.16 h]; Water Truck [14.16 h]; UPVC (300mm Diameter) - ST - Depth less than 1.5 [99.73 m]; UPVC (300mm Diameter) - ST - Depth: 1.51m - 2.5m | 30,218.19 | C083 | Z3 | CONS | ST | Primary Test | bef |
| RHD4CZ3C083ST2500 |  | Backfilling and warning tape works for UPVC Pipe Line 300 mm - (RD-C-8 /3)-Z3-C083-ST | 3d | 2027-03-17 | 2027-03-20 | RHD4PRSHLSTAGSW1000, RHD4PRSHLSTAGSW1008, RHD4CZ3C083ST2400, RHD4CZ3C083ST6100 | Skilled labor [27.12 h]; Unskilled Labor [54.34 h]; Equipment Opreator [54.34 h]; Excavator-Poclain [27.12 h]; Dump Truck [27.12 h]; UPVC (300mm Diameter) - ST - Depth less than 1.5 [99.73 m]; UPVC (300mm Diameter) - ST - Depth: 1.51m - 2.5m | 30,218.19 | C083 | Z3 | CONS | ST | Backfilling | bef |

| ID | WBS | Activity | Duration | Start | Finish | Predecessors | Resources | Cost | RDH4-01-001-Road and Block Names-1 | RDH4-01-001-Zones-1 | RDH4-01-001-Phases-1 | RDH4-01-001-Networks-1 | RDH4-01-001-Work Method-1 | RDH4-01-001-MENEM |
| --- | --- | --- | --- | --- | --- | --- | --- | --- | --- | --- | --- | --- | --- | --- |
|  | 1488 | **RHD4-02-002-C083-(ST)-Concrete Encasement** |  | 2027-02-06 | 2027-02-07 |  |  |  |  |  |  |  |  |  |
| RHD4CZ3C083ST6100 |  | Pipe Encasement for Storm Pipelines - (RD-C-8 /3)-Z3-C083-ST | 2d | 2027-02-06 | 2027-02-07 | RHD4CZ3C083ST2300 SS, RHD4CZ3C083ST2300 FF, RHD4CZ3C083ST2200 | Skilled labor [0.33 h]; Unskilled Labor [0.33 h]; Equipment Opreator [0.44 h]; Concrete Mixer Truck; Dump Truck [0.33 h]; Pipe Encasement - ST [6.9 m3] | 3,491.4 | C083 | Z3 | CONS | ST | Pipe Encasement | bef |
|  | 1489 | **RHD4-02-002-Z3-C083-Catch Basin - ST** |  | 2027-01-18 | 2027-04-06 |  |  |  |  |  |  |  |  |  |
|  | 1490 | **RHD4-02-002-C083-(ST)-Single Catch Basin Works** |  | 2027-01-18 | 2027-04-06 |  |  |  |  |  |  |  |  |  |
| RHD4CZ3C083ST7100 |  | Excavation works for Single Catch Basin - (RD-C-8 /3)-Z3-C083-ST | 3d | 2027-01-18 | 2027-01-20 | RHD4ENSDZ3APPST110, RHD4CZ3C083ST3300 | Skilled labor [26.14 h]; Unskilled Labor [52.27 h]; Equipment Opreator [39.2 h]; Excavator-Poclain [26.14 h]; Dump Truck [13.07 h]; Single Catch basin - ST [6 nr] | 22,386 | C083 | Z3 | CONS | ST | Excavation | bef |
| RHD4CZ3C083ST7200 |  | PC Blinding, Installation and Pipe connection for Single Catch Basin - (RD-C-8 /3)-Z3-C083-ST | 3d | 2027-01-21 | 2027-01-24 | RHD4CZ3C083ST7100 | Skilled labor [26.14 h]; Unskilled Labor [52.27 h]; Plumber [13.07 h]; Equipment Opreator [5.23 h]; Boom Truck [5.23 h]; Single Catch basin - ST [4.8 nr] | 17,908.8 | C083 | Z3 | CONS | ST | Installation & Pipe Connection | bef |
| RHD4CZ3C083ST7300 |  | Rings & C.Slab & Final Backfill for Single Catch Basin - (RD-C-8 /3)-Z3-C083-ST | 3d | 2027-01-25 | 2027-01-27 | RHD4PRSHLDOSST1302, RHD4PRSHLSTAGST1302, RHD4CZ3C083ST7200 | Skilled labor [32.67 h]; Unskilled Labor [65.34 h]; Equipment Opreator [39.2 h]; Boom Truck [6.53 h]; Bobcat [32.67 h]; Single Catch basin - ST [8.4 nr] | 31,340.4 | C083 | Z3 | CONS | ST | Rings | bef |
| RHD4CZ3C083ST7400 |  | Steel Cover for Single Catch Basin - (RD-C-8 /3)-Z3-C083-ST | 3d | 2027-03-27 | 2027-03-29 | RHD4PRSHLDOSST1702, RHD4CZ3C083ST7300, RHD4CZ3C083ST2500, RHD4CZ3C083ST3400 | Skilled labor [26.14 h]; Unskilled Labor [26.14 h]; Equipment Opreator [5.23 h]; Boom Truck [5.23 h]; Single Catch basin - ST [1.2 nr] | 4,477.2 | C083 | Z3 | CONS | ST | Steel Cover | bef |
| RHD4CZ3C083ST7500 |  | Finishing and Insulation works for Single Catch Basin - (RD-C-8 /3)-Z3-C083-ST | 5d | 2027-04-01 | 2027-04-06 | RHD4CZ3C083ST7400, RHD4CZ3C083ST3500 | Skilled labor [52.27 h]; Unskilled Labor [104.55 h]; Equipment Opreator [10.45 h]; Boom Truck [10.45 h]; Single Catch basin - ST [3.6 nr] | 13,431.6 | C083 | Z3 | CONS | ST | Insulation | bef |
|  | 5274 | **RHD4-02-002-C083-(ST)-Double Catch Basin Works** |  | 2027-01-28 | 2027-02-08 |  |  |  |  |  |  |  |  |  |
| RHD4CZ3C083ST8100 |  | Excavation works for Double Catch Basin - (RD-C-8 /3)-Z3-C083-ST | 2d | 2027-01-28 | 2027-01-30 | RHD4CZ3C083ST7300 | Skilled labor [2.18 h]; Unskilled Labor [4.36 h]; Equipment Opreator [3.27 h]; Excavator-Poclain [2.18 h]; Dump Truck [1.09 h]; Double Catch basin - ST [0.25 nr] | 3,491.5 | C083 | Z3 | CONS | ST | Excavation | bef |
| RHD4CZ3C083ST8200 |  | PC Blinding, Installation and Pipe connection for Double Catch Basin - (RD-C-8 /3)-Z3-C083-ST | 2d | 2027-01-31 | 2027-02-01 | RHD4CZ3C083ST8100 | Skilled labor [2.18 h]; Unskilled Labor [4.36 h]; Plumber [1.09 h]; Equipment Opreator [0.44 h]; Boom Truck [0.44 h]; Double Catch basin - ST [0.2 nr] | 2,793.2 | C083 | Z3 | CONS | ST | Installation & Pipe Connection | bef |
| RHD4CZ3C083ST8300 |  | Rings & C.Slab & Final Backfillfor Double Catch Basin - (RD-C-8 /3)-Z3-C083-ST | 2d | 2027-02-02 | 2027-02-03 | RHD4CZ3C083ST8200 | Skilled labor [2.72 h]; Unskilled Labor [5.45 h]; Equipment Opreator [3.27 h]; Boom Truck [0.54 h]; Bobcat [2.72 h]; Double Catch basin - ST [0.35 nr] | 4,888.1 | C083 | Z3 | CONS | ST | Rings | bef |
| RHD4CZ3C083ST8400 |  | Steel Cover for Double Catch Basin - (RD-C-8 /3)-Z3-C083-ST | 2d | 2027-02-04 | 2027-02-06 | RHD4CZ3C083ST8300 | Skilled labor [2.18 h]; Unskilled Labor [2.18 h]; Equipment Opreator [0.44 h]; Boom Truck [0.44 h]; Double Catch basin - ST [0.05 nr] | 698.3 | C083 | Z3 | CONS | ST | Steel Cover | bef |
| RHD4CZ3C083ST8500 |  | Finishing and Insulation works for Double Catch Basin - (RD-C-8 /3)-Z3-C083-ST | 2d | 2027-02-07 | 2027-02-08 | RHD4CZ3C083ST8400 | Skilled labor [5.45 h]; Unskilled Labor [10.89 h]; Equipment Opreator [1.09 h]; Boom Truck [1.09 h]; Double Catch basin - ST [0.15 nr] | 2,094.9 | C083 | Z3 | CONS | ST | Insulation | bef |
|  | 1551 | **RHD4-02-002-Z3-C083-Potable Network - PT** |  | 2027-04-01 | 2027-06-14 |  |  |  |  |  |  |  |  |  |
|  | 1555 | **RHD4-02-002-C083-(PT)-HDPE Pipes - 400 mm diameter** |  | 2027-04-01 | 2027-05-04 |  |  |  |  |  |  |  |  |  |
| RHD4CZ3C083PT1103 |  | Excavation works for HDPE Pipline 400 mm - (RD-C-8 /3)-Z3-C083-PT | 6d | 2027-04-01 | 2027-04-07 | RHD4ENSDZ3APPPT130, RHD4ENMSPT2000, RHD4CZ3C083ST1500, RHD4CZ3C083ST2200, RHD4CZ3C083ST3500 | Skilled labor [54.67 h]; Unskilled Labor [62.95 h]; Equipment Opreator [72.2 h]; Excavator-Poclain [54.67 h]; Dump Truck [17.53 h]; HDPE (400mm Diameter) - PT - Depth: less than 1.5m [108.02 m]; HDPE (400mm Diameter) - PT - Depth: 1.51m - 2.5m [1.03 m] | 37,101.72 | C083 | Z3 | CONS | PT | Excavation | bef |
| RHD4CZ3C083PT1203 |  | Bedding works for HDPE Pipline 400 mm - (RD-C-8 /3)-Z3-C083-PT | 5d | 2027-04-08 | 2027-04-13 | RHD4CZ3C083PT1103 | Skilled labor [40 h]; Unskilled Labor [96.6 h]; Plumber [8.28 h]; Equipment Opreator [88.21 h]; Excavator-Poclain [40 h]; Boom Truck [8.28 h]; Dump Truck [40 h]; HDPE (400mm Diameter) - PT - Depth: less than 1.5m [54.01 m]; HDPE (400mm Diameter) - PT - Depth: 1.51m - 2.5m [8.24 m] | 21,362.76 | C083 | Z3 | CONS | PT | Bedding | bef |
| RHD4CZ3C083PT1303 |  | Installing for HDPE Pipline 400 mm - (RD-C-8 /3)-Z3-C083-PT | 8d | 2027-04-14 | 2027-04-22 | RHD4PRSHLDOSPT1000, RHD4PRSHLSTAGPT1000, RHD4CZ3C083PT1203 | Unskilled Labor [151.48 h]; Plumber [79.94 h]; Equipment Opreator [79.94 h]; Boom Truck [71.55 h]; Water Truck [8.28 h]; HDPE (400mm Diameter) - PT - Depth: less than 1.5m [486.09 m]; HDPE (400mm Diameter) - PT - Depth: 1.51m - 2.5m [4.12 m] | 166,770.28 | C083 | Z3 | CONS | PT | Installation | bef |
| RHD4CZ3C083PT1403 |  | Primary Test for HDPE Pipline 400 mm - (RD-C-8 /3)-Z3-C083-PT | 4d | 2027-04-24 | 2027-04-27 | RHD4CZ3C083PT1303 | Skilled labor [8.28 h]; Unskilled Labor [44 h]; Plumber [27.33 h]; Equipment Opreator [44 h]; Excavator-Poclain [8.28 h]; Water Truck [27.33 h]; Dump Truck [8.28 h]; HDPE (400mm Diameter) - PT - Depth: less than 1.5m [216.04 m]; HDPE (400mm Diameter) - PT - Depth: 1.51m - 2.5m [4.12 m] | 74,953.28 | C083 | Z3 | CONS | PT | Primary Test | bef |
| RHD4CZ3C083PT1503 |  | Backfilling and warning tape works for HDPE Pipline 400 mm - (RD-C-8 /3)-Z3-C083-PT | 6d | 2027-04-28 | 2027-05-04 | RHD4CZ3C083PT1403 | Skilled labor [55.76 h]; Unskilled Labor [111.52 h]; Equipment Opreator [111.52 h]; Excavator-Poclain [55.76 h]; Dump Truck [55.76 h]; HDPE (400mm Diameter) - PT - Depth: less than 1.5m [216.04 m] | 73,453.6 | C083 | Z3 | CONS | PT | Backfilling | bef |
|  | 1563 | **RHD4-02-002-C083-(PT)-Air Valves** |  | 2027-05-05 | 2027-05-09 |  |  |  |  |  |  |  |  |  |
| RHD4CZ3C083PT3103 |  | Installation for Air Valves for Potable Water Network - (RD-C-8 /3)-Z3-C083-PT | 2d | 2027-05-05 | 2027-05-06 | RHD4PRSHLDOSPT1200, RHD4PRSHLSTAGPT1200, RHD4CZ3C083PT2302, RHD4CZ3C083PT1503 | Unskilled Labor [5.45 h]; Plumber [5.45 h]; Air valve diameter 65 mm - PT [0.9 nr] | 4,954.5 | C083 | Z3 | CONS | PT | Installation | bef |
| RHD4CZ3C083PT3203 |  | Stem and Service box for Air Valves for Potable Water Network - (RD-C-8 /3)-Z3-C083-PT | 2d | 2027-05-08 | 2027-05-09 | RHD4PRSHLDOSPT1300, RHD4PRSHLSTAGPT1300, RHD4CZ3C083PT3103, RHD4CZ3C083PT2402 | Unskilled Labor [5.45 h]; Plumber [5.45 h]; Air valve diameter 65 mm - PT [0.1 nr] | 550.5 | C083 | Z3 | CONS | PT | Stem and Service box | bef |

| ID | WBS | Activity | Duration | Start | Finish | Predecessors | Resources | Cost | RDH4-01-001-Road and Block Names-1 | RDH4-01-001-Zones-1 | RDH4-01-001-Phases-1 | RDH4-01-001-Networks-1 | RDH4-01-001-Work Method-1 | RDH4-01-001-MENEM |
| --- | --- | --- | --- | --- | --- | --- | --- | --- | --- | --- | --- | --- | --- | --- |
|  | 1564 | **RHD4-02-002-C083-(PT)-Fire Hydrant** |  | 2027-05-10 | 2027-05-31 |  |  |  |  |  |  |  |  |  |
| RHD4CZ3C083PT4100 |  | Excavation and Bedding and Pipe Installation for Fire Hydrant - (RD-C-8 /3)-Z3-C083-PT | 4d | 2027-05-10 | 2027-05-13 | RHD4ENSDZ3APPPT130, RHD4CZ3C083PT1103 SS, RHD4CZ3C083PT3203 | Skilled labor [43.56 h]; Unskilled Labor [43.56 h]; Plumber [43.56 h]; Equipment Opreator [21.78 h]; Excavator-Poclain [21.78 h]; 3-outlet fire hydrant (2 x 2.5 inch and 1 x 4.5 inch) in the form of a separate dry vacuum cylinder [0.8 nr] | 10,096 | C083 | Z3 | CONS | PT | Excavation | bef |
| RHD4CZ3C083PT4200 |  | Valve Installation for Fire Hydrant - (RD-C-8 /3)-Z3-C083-PT | 3d | 2027-05-19 | 2027-05-22 | RHD4CZ3C083PT4100 | Unskilled Labor [29.08 h]; Plumber [29.08 h]; 3-outlet fire hydrant (2 x 2.5 inch and 1 x 4.5 inch) in the form of a separate dry vacuum cylinder [1.6 nr] | 20,192 | C083 | Z3 | CONS | PT | Valve | bef |
| RHD4CZ3C083PT4300 |  | Stem for Fire Hydrant - (RD-C-8 /3)-Z3-C083-PT | 3d | 2027-05-23 | 2027-05-25 | RHD4CZ3C083PT4200 | Unskilled Labor [29.08 h]; Plumber [29.08 h]; 3-outlet fire hydrant (2 x 2.5 inch and 1 x 4.5 inch) in the form of a separate dry vacuum cylinder [2.4 nr] | 30,288 | C083 | Z3 | CONS | PT | Stem | bef |
| RHD4CZ3C083PT4400 |  | Fire Installation for Fire Hydrant - (RD-C-8 /3)-Z3-C083-PT | 3d | 2027-05-26 | 2027-05-29 | RHD4PRSHLDOSPT1500, RHD4PRSHLSTAGPT1500, RHD4CZ3C083PT4300 | Unskilled Labor [29.08 h]; Plumber [29.08 h]; Equipment Opreator [29.08 h]; Boom Truck [29.08 h]; 3-outlet fire hydrant (2 x 2.5 inch and 1 x 4.5 inch) in the form of a separate dry vacuum cylinder [2.8 nr] | 35,336 | C083 | Z3 | CONS | PT | Fire | bef |
| RHD4CZ3C083PT4500 |  | Protection Barriers for Fire Hydrant - (RD-C-8 /3)-Z3-C083-PT | 2d | 2027-05-30 | 2027-05-31 | RHD4CZ3C083PT4400 | Unskilled Labor [17.42 h]; Plumber [17.42 h]; 3-outlet fire hydrant (2 x 2.5 inch and 1 x 4.5 inch) in the form of a separate dry vacuum cylinder [0.4 nr] | 5,048 | C083 | Z3 | CONS | PT | Protection Barriers | bef |
|  | 1565 | **RHD4-02-002-C083-(PT)-Concrete Encasement** |  |  |  |  |  |  |  |  |  |  |  |  |
|  | 1749 | **RHD4-02-002-C083-(PT)-Wash out Valve Chambers** |  | 2027-06-01 | 2027-06-09 |  |  |  |  |  |  |  |  |  |
| RHD4CZ3C083PT2101 |  | Excavation and Bedding for Wash out Valve Chambers for Potable Water Network - (RD-C-8 /3)-Z3-C083-PT | 2d | 2027-06-01 | 2027-06-02 | RHD4CZ3C083ST3500, RHD4CZ3C083PT4500 | Skilled labor [5.45 h]; Unskilled Labor [5.45 h]; Equipment Opreator [1.09 h]; Excavator-Poclain [0.54 h]; Dump Truck [0.54 h]; Wash out chambers - PT [0.25 nr] | 4,686.25 | C083 | Z3 | CONS | PT | Excavation and Bedding | bef |
| RHD4CZ3C083PT2201 |  | PC works for Wash out Valve Chambers for Potable Water Network - (RD-C-8 /3)-Z3-C083-PT | 2d | 2027-06-03 | 2027-06-05 | RHD4CZ3C083PT2101 | Skilled labor [5.45 h]; Unskilled Labor [10.89 h]; Equipment Opreator [0.54 h]; Concrete Pump [0.54 h]; Wash out chambers - PT [0.1 nr] | 1,874.5 | C083 | Z3 | CONS | PT | PC Works | bef |
| RHD4CZ3C083PT2301 |  | Installation for Wash out Valve Chambers for Potable Water Network - (RD-C-8 /3)-Z3-C083-PT | 2d | 2027-06-06 | 2027-06-07 | RHD4CZ3C083PT2201 | Skilled labor [5.45 h]; Unskilled Labor [10.89 h]; Equipment Opreator [1.09 h]; Boom Truck [1.09 h]; Wash out chambers - PT [0.55 nr] | 10,309.75 | C083 | Z3 | CONS | PT | Installation | bef |
| RHD4CZ3C083PT2401 |  | Backfilling works for Wash out Valve Chambers for Potable Water Network - (RD-C-8 /3)-Z3-C083-PT | 2d | 2027-06-08 | 2027-06-09 | RHD4CZ3C083PT2301 | Skilled labor [5.45 h]; Unskilled Labor [10.89 h]; Equipment Opreator [1.09 h]; Water Truck [0.54 h]; Dump Truck [0.54 h]; Wash out chambers - PT [0.1 nr] | 1,874.5 | C083 | Z3 | CONS | PT | Backfilling Works | bef |
|  | 1750 | **RHD4-02-002-C083-(PT)-Wash out Valves** |  | 2027-06-10 | 2027-06-14 |  |  |  |  |  |  |  |  |  |
| RHD4CZ3C083PT3102 |  | Installation for Wash out Valves for Potable Water Network - (RD-C-8 /3)-Z3-C083-PT | 2d | 2027-06-10 | 2027-06-12 | RHD4CZ3C083PT2301, RHD4CZ3C083PT2401 | Unskilled Labor [5.45 h]; Plumber [5.45 h]; Wash out valve diameter 100 mm - PT [0.9 nr] | 3,373.2 | C083 | Z3 | CONS | PT | Installation | bef |
| RHD4CZ3C083PT3202 |  | Stem and Service box for Wash out Valves for Potable Water Network - (RD-C-8 /3)-Z3-C083-PT | 2d | 2027-06-13 | 2027-06-14 | RHD4CZ3C083PT3102, RHD4CZ3C083PT2401 | Unskilled Labor [5.45 h]; Plumber [5.45 h]; Wash out valve diameter 100 mm - PT [0.1 nr] | 374.8 | C083 | Z3 | CONS | PT | Stem and Service box | bef |
|  | 1562 | **RHD4-02-002-C083-(PT)-Air Valve Chambers** |  | 2027-04-08 | 2027-04-17 |  |  |  |  |  |  |  |  |  |
| RHD4CZ3C083PT2102 |  | Excavation and Bedding for Air Valve Chambers for Potable Water Network - (RD-C-8 /3)-Z3-C083-PT | 2d | 2027-04-08 | 2027-04-10 | RHD4ENSDZ3APPPT130, RHD4CZ3C083PT1103 | Skilled labor [5.45 h]; Unskilled Labor [5.45 h]; Equipment Opreator [1.09 h]; Excavator-Poclain [0.54 h]; Dump Truck [0.54 h]; Air Valve chambers - PT [0.25 nr] | 1,193 | C083 | Z3 | CONS | PT | Excavation and Bedding | bef |
| RHD4CZ3C083PT2202 |  | PC works for Air Valve Chambers for Potable Water Network - (RD-C-8 /3)-Z3-C083-PT | 2d | 2027-04-11 | 2027-04-12 | RHD4CZ3C083PT2102 | Skilled labor [5.45 h]; Unskilled Labor [10.89 h]; Equipment Opreator [0.54 h]; Concrete Pump [0.54 h]; Air Valve chambers - PT [0.1 nr] | 477.2 | C083 | Z3 | CONS | PT | PC Works | bef |
| RHD4CZ3C083PT2302 |  | Installation for Air Valve Chambers for Potable Water Network - (RD-C-8 /3)-Z3-C083-PT | 2d | 2027-04-13 | 2027-04-14 | RHD4PRSHLDOSPT1100, RHD4PRSHLDOSPT1400, RHD4PRSHLSTAGPT1100, RHD4PRSHLSTAGPT1400, RHD4CZ3C083PT2202 | Skilled labor [5.45 h]; Unskilled Labor [10.89 h]; Equipment Opreator [1.09 h]; Boom Truck [1.09 h]; Air Valve chambers - PT [0.55 nr] | 2,624.6 | C083 | Z3 | CONS | PT | Installation | bef |
| RHD4CZ3C083PT2402 |  | Backfilling works for Air Valve Chambers for Potable Water Network - (RD-C-8 /3)-Z3-C083-PT | 2d | 2027-04-15 | 2027-04-17 | RHD4CZ3C083PT2302 | Skilled labor [5.45 h]; Unskilled Labor [10.89 h]; Equipment Opreator [1.09 h]; Water Truck [0.54 h]; Dump Truck [0.54 h]; Air Valve chambers - PT [0.1 nr] | 477.2 | C083 | Z3 | CONS | PT | Backfilling Works | bef |
|  | 1536 | **RHD4-02-002-Z3-C083-Crossings Potable Network - PTCr** |  |  |  |  |  |  |  |  |  |  |  |  |
|  | 1549 | **RHD4-02-002-C083-(PTCr)-Fire Hydrant** |  |  |  |  |  |  |  |  |  |  |  |  |
|  | 1566 | **RHD4-02-002-Z3-C083-Irrigation Network - IRR** |  | 2027-06-15 | 2027-07-15 |  |  |  |  |  |  |  |  |  |
|  | 1573 | **RHD4-02-002-C083-(IRR)-HDPE Pipes - 450 mm diameter** |  |  |  |  |  |  |  |  |  |  |  |  |
|  | 1572 | **RHD4-02-002-C083-(IRR)-HDPE Pipes - 400 mm diameter** |  |  |  |  |  |  |  |  |  |  |  |  |
|  | 1571 | **RHD4-02-002-C083-(IRR)-HDPE Pipes - 315 mm diameter** |  | 2027-06-15 | 2027-07-15 |  |  |  |  |  |  |  |  |  |
| RHD4CZ3C083IRR1104 |  | Excavation works for HDPE Pipline 315 mm - (RD-C-8 /3)-Z3-C083-IRR | 5d | 2027-06-15 | 2027-06-20 | RHD4ENSDZ3APPIRR140, RHD4ENMSRR2000, RHD4CZ3C083ST2500, RHD4CZ3C083PT3202 | Skilled labor [85.16 h]; Unskilled Labor [85.16 h]; Equipment Opreator [102.26 h]; Excavator-Poclain [85.16 h]; Dump Truck [16.99 h]; HDPE (315mm Diameter) - TSE - Depth: less than 1.5m [105.37 m]; HDPE (315mm Diameter) - TSE - Depth: more than 1.51m [18 m] | 36,724.29 | C083 | Z3 | CONS | IRR | Excavation | bef |
| RHD4CZ3C083IRR1204 |  | Bedding works for HDPE Pipline 315 mm - (RD-C-8 /3)-Z3-C083-IRR | 7d | 2027-06-21 | 2027-06-28 | RHD4CZ3C083IRR1104 | Skilled labor [66.1 h]; Unskilled Labor [132.21 h]; Equipment Opreator [132.21 h]; Excavator-Poclain [66.1 h]; Dump Truck [66.1 h]; HDPE (315mm Diameter) - TSE - Depth: less than 1.5m [52.69 m]; HDPE (315mm Diameter) - TSE - Depth: more than 1.51m [6 m] | 17,387.14 | C083 | Z3 | CONS | IRR | Bedding | bef |
| RHD4CZ3C083IRR1304 |  | Installing for HDPE Pipline 315 mm - (RD-C-8 /3)-Z3-C083-IRR | 7d | 2027-06-29 | 2027-07-06 | RHD4PRSHLDOSIRR1000, RHD4PRSHLSTAGIRR1000, RHD4CZ3C083IRR1204 | Unskilled Labor [170.4 h]; Plumber [85.16 h]; Equipment Opreator [85.16 h]; Boom Truck [85.16 h]; HDPE (315mm Diameter) - TSE - Depth: less than 1.5m [474.18 m]; HDPE (315mm Diameter) - TSE - Depth: more than 1.51m [48 m] | 154,534.3 | C083 | Z3 | CONS | IRR | Installation | bef |
| RHD4CZ3C083IRR1404 |  | Primary Test for HDPE Pipline 315 mm - (RD-C-8 /3)-Z3-C083-IRR | 3d | 2027-07-07 | 2027-07-10 | RHD4CZ3C083IRR1304 | Unskilled Labor [27.33 h]; Plumber [27.33 h]; Equipment Opreator [27.33 h]; Water Truck [27.33 h]; HDPE (315mm Diameter) - TSE - Depth: less than 1.5m [210.75 m]; HDPE (315mm Diameter) - TSE - Depth: more than 1.51m [24 m] | 69,548.58 | C083 | Z3 | CONS | IRR | Primary Test | bef |
| RHD4CZ3C083IRR1504 |  | Backfilling and warning tape works for HDPE Pipline 315 mm - (RD-C-8 /3)-Z3-C083-IRR | 5d | 2027-07-11 | 2027-07-15 | RHD4CZ3C083IRR1404 | Skilled labor [66.1 h]; Unskilled Labor [132.21 h]; Equipment Opreator [132.21 h]; Excavator-Poclain [66.1 h]; Dump Truck [66.1 h]; HDPE (315mm Diameter) - TSE - Depth: less than 1.5m [210.75 m]; HDPE (315mm Diameter) - TSE - Depth: more than 1.51m [24 m] | 69,548.58 | C083 | Z3 | CONS | IRR | Backfilling | bef |

| ID | WBS | Activity | Duration | Start | Finish | Predecessors | Resources | Cost | RDH4-01-001-Road and Block Names-1 | RDH4-01-001-Zones-1 | RDH4-01-001-Phases-1 | RDH4-01-001-Networks-1 | RDH4-01-001-Work Method-1 | RDH4-01-001-MENEM |
| --- | --- | --- | --- | --- | --- | --- | --- | --- | --- | --- | --- | --- | --- | --- |
|  | 1600 | **RHD4-02-002-Z3-C083-Medium Voltage Network - MV** |  |  |  |  |  |  |  |  |  |  |  |  |
|  | 1601 | **RHD4-02-002-C083-(MV)-Medium Voltage cable trench** |  |  |  |  |  |  |  |  |  |  |  |  |
|  | 1603 | **RHD4-02-002-C083-(MV)-Medium Voltage cables 3Cx 500 mm²** |  |  |  |  |  |  |  |  |  |  |  |  |
|  | 1604 | **RHD4-02-002-C083-(MV)-Medium Voltage cables 3Cx 50 mm²** |  |  |  |  |  |  |  |  |  |  |  |  |
|  | 1606 | **RHD4-02-002-C083-(MV)-Unit Substations** |  |  |  |  |  |  |  |  |  |  |  |  |
|  | 1607 | **RHD4-02-002-Z3-C083-Low Voltage Network - LV** |  | 2027-07-17 | 2027-08-03 |  |  |  |  |  |  |  |  |  |
|  | 1610 | **RHD4-02-002-C083-(LV)-Low Voltage cables** |  | 2027-07-17 | 2027-08-03 |  |  |  |  |  |  |  |  |  |
| RHD4CZ3C083LV3100 |  | Excavation for Low Voltage Cables for Low Voltage Network - (RD-C-8 /3)-Z3-C083-LV | 5d | 2027-07-17 | 2027-07-21 | RHD4ENSDZ3APPLV160, RHD4CZ3C083PT1503, RHD4CZ3C083RD3100, RHD4CZ3C083IRR1504 | Skilled labor [49.01 h]; Unskilled Labor [98.12 h]; Equipment Opreator [98.12 h]; Excavator-Poclain [49.01 h]; Boom Truck [49.01 h]; Cable, Copper 3x10mm2/ CU/XLPE/SWA/PVC [225.18 m] | 8,781.99 | C083 | Z3 | CONS | LV | Excavation | AFT |
| RHD4CZ3C083LV3200 |  | Cable Laying of Low Voltage Cables for Low Voltage Network - (RD-C-8 /3)-Z3-C083-LV | 4d | 2027-07-22 | 2027-07-26 | RHD4PRSHLDOSLV1100, RHD4ENMSLV2000, RHD4ENMSLV2010, RHD4PRSHLSTAGLV1100, RHD4CZ3C083LV3100 | Skilled labor [40.8 h]; Unskilled Labor [163.46 h]; Electrician [81.79 h]; Equipment Opreator [122.63 h]; Boom Truck [40.8 h]; Cable Laying Machine [81.79 h]; Cable, Copper 3x10mm2/ CU/XLPE/SWA/PVC [675.54 m] | 26,345.97 | C083 | Z3 | CONS | LV | Cable Laying | AFT |
| RHD4CZ3C083LV3300 |  | Warning tape and Backfill for Low Voltage Cables for Low Voltage Network - (RD-C-8 /3)-Z3-C083-LV | 4d | 2027-07-27 | 2027-07-31 | RHD4CZ3C083LV3200 | Skilled labor [40.8 h]; Unskilled Labor [163.46 h]; Electrician [81.79 h]; Equipment Opreator [40.8 h]; Boom Truck [40.8 h]; Cable, Copper 3x10mm2/ CU/XLPE/SWA/PVC [168.88 m] | 6,586.49 | C083 | Z3 | CONS | LV | Warning tape and Backfill | AFT |
| RHD4CZ3C083LV3400 |  | Testing of Low Voltage Cables for Low Voltage Network - (RD-C-8 /3)-Z3-C083-LV | 3d | 2027-08-01 | 2027-08-03 | RHD4CZ3C083LV3300 | Skilled labor [24.5 h]; Unskilled Labor [98.12 h]; Electrician [49.01 h]; Equipment Opreator [24.5 h]; Boom Truck [24.5 h]; Cable, Copper 3x10mm2/ CU/XLPE/SWA/PVC [56.29 m] | 2,195.5 | C083 | Z3 | CONS | LV | Testing | AFT |
|  | 1611 | **RHD4-02-002-C083-(LV)-Low Voltage Distribution Pillars** |  |  |  |  |  |  |  |  |  |  |  |  |
|  | 1612 | **RHD4-02-002-C083-(LV)-Low Voltage Distribution Pillars Earthing** |  |  |  |  |  |  |  |  |  |  |  |  |
|  | 1613 | **RHD4-02-002-Z3-C083-Street Lighting Network - SL** |  | 2027-01-18 | 2027-09-19 |  |  |  |  |  |  |  |  |  |
|  | 1614 | **RHD4-02-002-C083-(SL)-Street Lighting duct banks** |  | 2027-01-18 | 2027-01-30 |  |  |  |  |  |  |  |  |  |
| RHD4CZ3C083SL2100 |  | Excavation of Duct Banks for Street Lighting Network - (RD-C-8 /3)-Z3-C083-SL | 2d | 2027-01-18 | 2027-01-19 | RHD4ENSDZ3APPSL170, RHD4CZ3C083ST1502 | Skilled labor [9.15 h]; Unskilled Labor [9.15 h]; Equipment Opreator [18.19 h]; Excavator-Poclain [9.15 h]; Dump Truck [9.15 h]; Road Crossing Duct for Street Lighting cables UPVC (4x?110mm) [1.25 m] | 330 | C083 | Z3 | CONS | SL | Excavation | bef |
| RHD4CZ3C083SL2200 |  | Installation of Duct Banks for Street Lighting Network - (RD-C-8 /3)-Z3-C083-SL | 2d | 2027-01-24 | 2027-01-25 | RHD4PRSHLDOSSL1000, RHD4PRSHLSTAGSL1000, RHD4CZ3C083SL2100 | Carpenter [1.42 h]; Skilled labor [13.6 h]; Unskilled Labor [13.6 h]; Steel Fixer [1.42 h]; Road Crossing Duct for Street Lighting cables UPVC (4x?110mm) [1.25 m] | 330 | C083 | Z3 | CONS | SL | Installing | bef |
| RHD4CZ3C083SL2300 |  | Pouring of Duct Banks for Street Lighting Network - (RD-C-8 /3)-Z3-C083-SL | 2d | 2027-01-26 | 2027-01-27 | RHD4CZ3C083SL2200 | Skilled labor [9.15 h]; Unskilled Labor [9.15 h]; Equipment Opreator [3.59 h]; Concrete Mixer Truck [1.85 h]; Concrete Pump [1.85 h]; Road Crossing Duct for Street Lighting cables UPVC (4x?110mm) [8.16 m] | 2,154.24 | C083 | Z3 | CONS | SL | Pouring | bef |
| RHD4CZ3C083SL2400 |  | Backfilling of Duct Banks for Street Lighting Network - (RD-C-8 /3)-Z3-C083-SL | 2d | 2027-01-28 | 2027-01-30 | RHD4CZ3C083SL2300 | Skilled labor [6.86 h]; Unskilled Labor [6.86 h]; Equipment Opreator [2.72 h]; Excavator-Poclain [2.72 h]; Road Crossing Duct for Street Lighting cables UPVC (4x?110mm) [1.88 m] | 496.32 | C083 | Z3 | CONS | SL | Backfilling | bef |
|  | 1615 | **RHD4-02-002-C083-(SL)-Street Lighting Drawpit** |  | 2027-08-04 | 2027-08-08 |  |  |  |  |  |  |  |  |  |
| RHD4CZ3C083SL5100 |  | Excavation of Drawpit size 600x600x900mm for Street Lighting Network - (RD-C-8 /3)-Z3-C083-SL | 2d | 2027-08-04 | 2027-08-05 | RHD4ENSDZ3APPSL170, RHD4CZ3C083SL2300, RHD4CZ3C083LV3400 | Skilled labor [0.87 h]; Unskilled Labor [0.87 h]; Equipment Opreator [0.8 h]; Excavator-Poclain [0.33 h]; Dump Truck [0.33 h]; Drawpit with medium duty steel cover, size600x600x900mm, [0.15 Unit] | 367.65 | C083 | Z3 | CONS | SL | Excavation | AFT |
| RHD4CZ3C083SL5200 |  | Installation of Drawpit size 600x600x900mm for Street Lighting Network - (RD-C-8 /3)-Z3-C083-SL | 2d | 2027-08-07 | 2027-08-08 | RHD4PRSHLDOSSL1400, RHD4PRSHLSTAGSL1400, RHD4CZ3C083SL5100 | Skilled labor [0.87 h]; Unskilled Labor [0.87 h]; Equipment Opreator [0.33 h]; Boom Truck [0.33 h]; Drawpit with medium duty steel cover, size600x600x900mm, [0.85 Unit] | 2,083.35 | C083 | Z3 | CONS | SL | Installation | AFT |
|  | 1616 | **RHD4-02-002-C083-(SL)-Street Lighting cables** |  | 2027-08-05 | 2027-09-04 |  |  |  |  |  |  |  |  |  |
| RHD4CZ3C083SL3100 |  | Excavation for Street Lighting Cables for Street Lighting Network - (RD-C-8 /3)-Z3-C083-SL | 8d | 2027-08-05 | 2027-08-14 | RHD4ENSDZ3APPSL170, RHD4CZ3C083SL1300 | Skilled labor [83.64 h]; Unskilled Labor [167.28 h]; Equipment Opreator [167.28 h]; Excavator-Poclain [83.64 h]; Boom Truck [83.64 h]; Cable, Copper 4x10mm2/ CU/XLPE/SWA/PVC + 1x10mm2 CU/PVC [384.09 m] | 18,820.33 | C083 | Z3 | CONS | SL | Excavation | AFT |
| RHD4CZ3C083SL3200 |  | Cable Laying of Street Lighting Cables for Street Lighting Network - (RD-C-8 /3)-Z3-C083-SL | 7d | 2027-08-15 | 2027-08-22 | RHD4PRSHLDOSSL1100, RHD4ENMSSL2000, RHD4ENMSSL2010, RHD4PRSHLSTAGSL1100, RHD4CZ3C083SL3100 | Skilled labor [69.7 h]; Unskilled Labor [278.9 h]; Electrician [139.4 h]; Equipment Opreator [209.09 h]; Boom Truck [69.7 h]; Cable Laying Machine [139.4 h]; Cable, Copper 4x10mm2/ CU/XLPE/SWA/PVC + 1x10mm2 CU/PVC [1152.26 m] | 56,460.98 | C083 | Z3 | CONS | SL | Cable Laying | AFT |
| RHD4CZ3C083SL3300 |  | Warning tape and Backfill for Street Lighting Cables for Street Lighting Network - (RD-C-8 /3)-Z3-C083-SL | 7d | 2027-08-23 | 2027-08-30 | RHD4CZ3C083SL3200 | Skilled labor [69.7 h]; Unskilled Labor [278.9 h]; Electrician [139.4 h]; Equipment Opreator [69.7 h]; Boom Truck [69.7 h]; Cable, Copper 4x10mm2/ CU/XLPE/SWA/PVC + 1x10mm2 CU/PVC [288.07 m] | 14,115.25 | C083 | Z3 | CONS | SL | Warning tape and Backfill | AFT |
| RHD4CZ3C083SL3400 |  | Testing of Street Lighting Cables for Street Lighting Network - (RD-C-8 /3)-Z3-C083-SL | 4d | 2027-08-31 | 2027-09-04 | RHD4CZ3C083SL3300, RHD4CZ3C083SL5200 | Skilled labor [41.82 h]; Unskilled Labor [167.28 h]; Electrician [83.64 h]; Equipment Opreator [41.82 h]; Boom Truck [41.82 h]; Cable, Copper 4x10mm2/ CU/XLPE/SWA/PVC + 1x10mm2 CU/PVC [96.02 m] | 4,705.08 | C083 | Z3 | CONS | SL | Testing | AFT |

| ID | WBS | Activity | Duration | Start | Finish | Predecessors | Resources | Cost | RDH4-01-001-Road and Block Names-1 | RDH4-01-001-Zones-1 | RDH4-01-001-Phases-1 | RDH4-01-001-Networks-1 | RDH4-01-001-Work Method-1 | RDH4-01-001-MENEM |
| --- | --- | --- | --- | --- | --- | --- | --- | --- | --- | --- | --- | --- | --- | --- |
|  | 1617 | **RHD4-02-002-C083-(SL)-Street Lighting Poles** |  | 2027-07-22 | 2027-09-19 |  |  |  |  |  |  |  |  |  |
| RHD4CZ3C083SL1100 |  | Excavation for RC Base for Lighting Poles for Street Lighting Network - (RD-C-8 /3)-Z3-C083-SL | 4d | 2027-07-22 | 2027-07-26 | RHD4ENSDZ3APPSL170, RHD4CZ3C083SL2400, RHD4CZ3C083PT1503, RHD4CZ3C083IRR1504, RHD4CZ3C083LV3100 | Skilled labor [38.44 h]; Unskilled Labor [38.44 h]; Equipment Opreator [76.99 h]; Excavator-Poclain [38.44 h]; Dump Truck [38.44 h]; Lighting polesdouble arms, height of ( 12 ) meters [3.9 Unit]; Lighting poles single arms, height of ( 10 ) meters [1.4 Unit] | 22,600.6 | C083 | Z3 | CONS | SL | Excavation | AFT |
| RHD4CZ3C083SL1200 |  | Installation for RC Base for Lighting Poles for Street Lighting Network - (RD-C-8 /3)-Z3-C083-SL | 4d | 2027-07-27 | 2027-07-31 | RHD4CZ3C083SL1100 | Skilled labor [38.44 h]; Unskilled Labor [38.44 h]; Equipment Opreator [76.99 h]; Excavator-Poclain [38.44 h]; Dump Truck [38.44 h]; Lighting polesdouble arms, height of ( 12 ) meters [9.75 Unit]; Lighting poles single arms, height of ( 10 ) meters [3.5 Unit] | 56,501.5 | C083 | Z3 | CONS | SL | RC Base | AFT |
| RHD4CZ3C083SL1300 |  | Backfill for RC Base for Lighting Poles for Street Lighting Network - (RD-C-8 /3)-Z3-C083-SL | 4d | 2027-08-01 | 2027-08-04 | RHD4CZ3C083SL1200, RHD4CZ3C083LV3100 | Skilled labor [38.44 h]; Unskilled Labor [38.44 h]; Equipment Opreator [76.99 h]; Excavator-Poclain [38.44 h]; Dump Truck [38.44 h]; Lighting polesdouble arms, height of ( 12 ) meters [1.95 Unit]; Lighting poles single arms, height of ( 10 ) meters [0.7 Unit] | 11,300.3 | C083 | Z3 | CONS | SL | Backfill | AFT |
| RHD4CZ3C083SL1400 |  | Installation for Lighting Poles for Street Lighting Network - (RD-C-8 /3)-Z3-C083-SL | 6d | 2027-09-05 | 2027-09-11 | RHD4PRSHLDOSSL1200, RHD4ENMSSL2000, RHD4ENMSSL2010, RHD4PRSHLSTAGSL1200, RHD4CZ3C083SL1300, RHD4CZ3C083SL3400 | Skilled labor [57.72 h]; Unskilled Labor [57.72 h]; Electrician [57.72 h]; Equipment Opreator [57.72 h]; Boom Truck [57.72 h]; Lighting polesdouble arms, height of ( 12 ) meters [23.4 Unit]; Lighting poles single arms, height of ( 10 ) meters [8.4 Unit] | 135,603.6 | C083 | Z3 | CONS | SL | Poles Installation | AFT |
| RHD4CZ3C083SL1500 |  | Luminaire Installation for Lighting Poles for Street Lighting Network - (RD-C-8 /3)-Z3-C083-SL | 7d | 2027-09-12 | 2027-09-19 | RHD4PRSHLDOSSL1300, RHD4PRSHLSTAGSL1300, RHD4CZ3C083SL1400 | Unskilled Labor [133.6 h]; Electrician [66.76 h]; Equipment Opreator [24.72 h]; Boom Truck [26.68 h]; Street Lighting( LED) Luminaire of Output ?18553 lumen [78 Unit]; Street Lighting( LED) Luminaire of Output ?10898 lumen [14 Unit] | 57,918 | C083 | Z3 | CONS | SL | Luminaire Installation | AFT |
|  | 1618 | **RHD4-02-002-C083-(SL)-Street Lighting Feeder Pillars** |  | 2027-08-31 | 2027-09-13 |  |  |  |  |  |  |  |  |  |
| RHD4CZ3C083SL4100 |  | Leveling for Distribution Pillars for Street Lighting Network - (RD-C-8 /3)-Z3-C083-SL | 2d | 2027-08-31 | 2027-09-01 | RHD4CZ3C083SL3300 | Skilled labor [10.89 h]; Unskilled Labor [21.78 h]; Equipment Opreator [4.36 h]; Excavator-Poclain [2.18 h]; Boom Truck [2.18 h]; 0.6/1 KV Steet Lighting Feeder Pillar [0.15 Unit] | 3,438.15 | C083 | Z3 | CONS | SL | Leveling | AFT |
| RHD4CZ3C083SL4200 |  | Lean Concrete for Distribution Pillars for Street Lighting Network - (RD-C-8 /3)-Z3-C083-SL | 2d | 2027-09-02 | 2027-09-04 | RHD4CZ3C083SL4100 | Skilled labor [10.89 h]; Unskilled Labor [21.78 h]; Equipment Opreator [4.36 h]; Concrete Mixer Truck [2.18 h]; Concrete Pump [2.18 h]; 0.6/1 KV Steet Lighting Feeder Pillar [0.25 Unit] | 5,730.25 | C083 | Z3 | CONS | SL | Lean Concrete | AFT |
| RHD4CZ3C083SL4300 |  | Installation of Distribution Pillars for Street Lighting Network - (RD-C-8 /3)-Z3-C083-SL | 2d | 2027-09-12 | 2027-09-13 | RHD4CZ3C083SL4200, RHD4CZ3C083SL1400 | Skilled labor [10.89 h]; Unskilled Labor [43.56 h]; Electrician [21.78 h]; Equipment Opreator [10.89 h]; Boom Truck [10.89 h]; 0.6/1 KV Steet Lighting Feeder Pillar [0.6 Unit] | 13,752.6 | C083 | Z3 | CONS | SL | Installation | AFT |
|  | 1619 | **RHD4-02-002-C083-(SL)-Street Lighting Earthing System** |  | 2027-09-14 | 2027-09-15 |  |  |  |  |  |  |  |  |  |
| RHD4CZ3C083SL6100 |  | Installation of Earthing for Lighting Poles and Fedder Pillers for Street Lighting Network - (RD-C-8 /3)-Z3-C083-SL | 2d | 2027-09-14 | 2027-09-15 | RHD4ENMSER2000, RHD4ENMSER2010, RHD4CZ3C083SL4300 | Skilled labor [0.8 h]; Unskilled Labor [0.8 h]; Equipment Opreator [1.42 h]; Excavator-Poclain [0.8 h]; Dump Truck [0.8 h]; Including lighting poles circuits - ER [1 Unit] | 613 | C083 | Z3 | CONS | SL | Installation | AFT |
|  | 1625 | **RHD4-02-002-Z3-C083-Telecommunications Network - TC** |  | 2027-09-16 | 2027-10-23 |  |  |  |  |  |  |  |  |  |
|  | 1626 | **RHD4-02-002-C083-(TC)-Telecommunications Ducts** |  | 2027-09-16 | 2027-10-23 |  |  |  |  |  |  |  |  |  |
| RHD4CZ3C083TC2100 |  | Excavation of HDPE Ducts for Telecom Network - (RD-C-8 /3)-Z3-C083-TC | 9d | 2027-09-16 | 2027-09-27 | RHD4ENSDZ3APPTC190, RHD4CZ3C083IRR1504, RHD4CZ3C083SL6100 | Skilled labor [88 h]; Unskilled Labor [88 h]; Equipment Opreator [176 h]; Excavator-Poclain [88 h]; Dump Truck [88 h]; (6*50mm) HDPE ducts -TC [123.32 m]; (6*50mm+2*32mm) HDPE ducts -TC [57.16 m]; (6*50mm+4*32mm) HDPE ducts -TC [46.32 m]; (2*32mm) HDPE ducts -TC [20.61 m] | 23,295.42 | C083 | Z3 | CONS | TC | Excavation | AFT |
| RHD4CZ3C083TC2200 |  | Installation of HDPE Ducts for Telecom Network - (RD-C-8 /3)-Z3-C083-TC | 13d | 2027-09-28 | 2027-10-12 | RHD4PRSHLDOSTC1000, RHD4PRSHLSTAGTC1000, RHD4CZ3C083TC2100 | Carpenter [13.18 h]; Skilled labor [132 h]; Unskilled Labor [132 h]; Steel Fixer [13.18 h]; (6*50mm) HDPE ducts -TC [400.79 m]; (6*50mm+2*32mm) HDPE ducts -TC [185.77 m]; (6*50mm+4*32mm) HDPE ducts -TC [150.54 m]; (2*32mm) HDPE ducts -TC [66.98 m] | 75,710.11 | C083 | Z3 | CONS | TC | Installing | AFT |
| RHD4CZ3C083TC2400 |  | Backfilling of HDPE Ducts for Telecom Network - (RD-C-8 /3)-Z3-C083-TC | 9d | 2027-10-13 | 2027-10-23 | RHD4CZ3C083TC2200, RHD4CZ3C083TC5200, RHD4CZ3L122SL2400 | Skilled labor [88 h]; Unskilled Labor [88 h]; Equipment Opreator [35.2 h]; Excavator-Poclain [35.2 h]; (6*50mm) HDPE ducts -TC [92.49 m]; (6*50mm+2*32mm) HDPE ducts -TC [42.87 m]; (6*50mm+4*32mm) HDPE ducts -TC [34.74 m]; (2*32mm) HDPE ducts -TC [15.46 m] | 17,471.57 | C083 | Z3 | CONS | TC | Backfilling | AFT |
|  | 1627 | **RHD4-02-002-C083-(TC)-Telecommunications Manholes** |  | 2027-09-28 | 2027-10-04 |  |  |  |  |  |  |  |  |  |
| RHD4CZ3C083TC5100 |  | Excavation for Manholes for Telecom Network - (RD-C-8 /3)-Z3-C083-TC | 3d | 2027-09-28 | 2027-09-30 | RHD4ENSDZ3APPTC190, RHD4CZ3C083TC2100, RHD4CZ3C083SL1500 | Skilled labor [6.86 h]; Unskilled Labor [6.86 h]; Equipment Opreator [5.45 h]; Excavator-Poclain [2.72 h]; Dump Truck [2.72 h]; Manhole Type 1 - TC [0.75 nr] | 5,055.75 | C083 | Z3 | CONS | TC | Excavation | AFT |
| RHD4CZ3C083TC5200 |  | Installation of Manholes for Telecom Network - (RD-C-8 /3)-Z3-C083-TC | 3d | 2027-10-02 | 2027-10-04 | RHD4PRSHLDOSTC1200, RHD4PRSHLSTAGTC1200, RHD4CZ3C083TC5100, RHD4CZ3C083TC2200 SS | Skilled labor [6.86 h]; Unskilled Labor [6.86 h]; Equipment Opreator [2.72 h]; Boom Truck [2.72 h]; Manhole Type 1 - TC [4.25 nr] | 28,649.25 | C083 | Z3 | CONS | TC | Installation | AFT |
|  | 1629 | **RHD4-02-002-Z3-C083-Information and Communication Technologies - ICT** |  | 2027-09-16 | 2027-10-26 |  |  |  |  |  |  |  |  |  |
|  | 1630 | **RHD4-02-002-C083-(ICT)-Information and Communication Technologies Ducts** |  | 2027-09-16 | 2027-10-26 |  |  |  |  |  |  |  |  |  |
| RHD4CZ3C083ICT2100 |  | Excavation of HDPE Ducts for ICT Network - (RD-C-8 /3)-Z3-C083-ICT | 10d | 2027-09-16 | 2027-09-28 | RHD4ENSDZ3APPICT200, RHD4CZ3C083RW3001, RHD4CZ3C083SL6100 | Skilled labor [101.5 h]; Unskilled Labor [101.5 h]; Equipment Opreator [202.89 h]; Excavator-Poclain [101.5 h]; Dump Truck [101.5 h]; (2*50mm) HDPE ducts -ICT [144.24 m]; (2*50mm+2*32mm) HDPE ducts -ICT [72.1 m]; (2*50mm+4*32mm) HDPE ducts -ICT [44.32 m]; (2*32mm) HDPE ducts -ICT [18.82 m] | 15,123.72 | C083 | Z3 | CONS | ICT | Excavation | AFT |
| RHD4CZ3C083ICT2200 |  | Installation of HDPE Ducts for ICT Network - (RD-C-8 /3)-Z3-C083-ICT | 14d | 2027-09-29 | 2027-10-14 | RHD4PRSHLDOSICT1000, RHD4PRSHLSTAGICT1000, RHD4CZ3C083ICT2100 | Carpenter [15.25 h]; Skilled labor [152.14 h]; Unskilled Labor [152.14 h]; Steel Fixer [15.25 h]; (2*50mm) HDPE ducts -ICT [468.78 m]; (2*50mm+2*32mm) HDPE ducts -ICT [234.32 m]; (2*50mm+4*32mm) HDPE ducts -ICT [144.04 m]; (2*32mm) HDPE ducts -ICT [61.16 m] | 49,152.09 | C083 | Z3 | CONS | ICT | Installing | AFT |
| RHD4CZ3C083ICT2400 |  | Backfilling of HDPE Ducts for ICT Network - (RD-C-8 /3)-Z3-C083-ICT | 10d | 2027-10-16 | 2027-10-26 | RHD4CZ3C083ICT2200, RHD4CZ3C083ICT5200 | Skilled labor [101.5 h]; Unskilled Labor [101.5 h]; Equipment Opreator [40.62 h]; Excavator-Poclain [40.62 h]; (2*50mm) HDPE ducts -ICT [108.18 m]; (2*50mm+2*32mm) HDPE ducts -ICT [54.08 m]; (2*50mm+4*32mm) HDPE ducts -ICT [33.24 m]; (2*32mm) HDPE ducts -ICT [14.12 m] | 11,342.79 | C083 | Z3 | CONS | ICT | Backfilling | AFT |

| ID | WBS | Activity | Duration | Start | Finish | Predecessors | Resources | Cost | RDH4-01-001-Road and Block Names-1 | RDH4-01-001-Zones-1 | RDH4-01-001-Phases-1 | RDH4-01-001-Networks-1 | RDH4-01-001-Work Method-1 | RDH4-01-001-MENEM |
| --- | --- | --- | --- | --- | --- | --- | --- | --- | --- | --- | --- | --- | --- | --- |
|  | 1631 | **RHD4-02-002-C083-(ICT)-Information and Communication Technologies Manholes** |  | 2027-09-29 | 2027-10-05 |  |  |  |  |  |  |  |  |  |
| RHD4CZ3C083ICT5100 |  | Excavation for Manholes for ICT Network - (RD-C-8 /3)-Z3-C083-ICT | 3d | 2027-09-29 | 2027-10-02 | RHD4ENSDZ3APPICT200, RHD4CZ3C083ICT2100 | Skilled labor [6.86 h]; Unskilled Labor [6.86 h]; Equipment Opreator [5.45 h]; Excavator-Poclain [2.72 h]; Dump Truck [2.72 h]; Manhole Type 1 - ICT [0.75 nr] | 4,044.75 | C083 | Z3 | CONS | ICT | Excavation | AFT |
| RHD4CZ3C083ICT5200 |  | Installation of Manholes for ICT Network - (RD-C-8 /3)-Z3-C083-ICT | 3d | 2027-10-03 | 2027-10-05 | RHD4PRSHLDOSICT1200, RHD4PRSHLSTAGICT1200, RHD4CZ3C083ICT5100 | Skilled labor [6.86 h]; Unskilled Labor [6.86 h]; Equipment Opreator [2.72 h]; Boom Truck [2.72 h]; Manhole Type 1 - ICT [4.25 nr] | 22,920.25 | C083 | Z3 | CONS | ICT | Installation | AFT |
|  | 1620 | **RHD4-02-002-Z3-C083-Landscape Network - LS** |  |  |  |  |  |  |  |  |  |  |  |  |
|  | 1621 | **RHD4-02-002-C083-(LS)-Landscape Lighting cables** |  |  |  |  |  |  |  |  |  |  |  |  |
|  | 1622 | **RHD4-02-002-C083-(LS)-Landscape Feeder Pillars** |  |  |  |  |  |  |  |  |  |  |  |  |
|  | 1623 | **RHD4-02-002-C083-(LS)-Landscape Bollard Poles** |  |  |  |  |  |  |  |  |  |  |  |  |
|  | 1624 | **RHD4-02-002-C083-(LS)-Landscape Feeder Pillars Earthing** |  |  |  |  |  |  |  |  |  |  |  |  |
|  | 1633 | **RHD4-02-002-Z3-C083-Security Network - CCTV** |  | 2027-10-27 | 2027-12-09 |  |  |  |  |  |  |  |  |  |
|  | 1634 | **RHD4-02-002-C083-(CCTV)-Civil Works** |  | 2027-10-27 | 2027-11-07 |  |  |  |  |  |  |  |  |  |
| RHD4CZ3C083CCTV2100 |  | Civil Works for Security Network - (RD-C-8 /3)-Z3-C083-CCTV | 10d | 2027-10-27 | 2027-11-07 | RHD4CZ3C083ICT2400, RHD4CZ3C083TC2400 | Skilled labor [435.68 h]; Unskilled Labor [871.2 h]; Equipment Opreator [435.68 h]; Excavator-Poclain [108.9 h]; Dump Truck [108.9 h]; Civil works Digging, trenching, laying pipes Meter with supply and installation of Manholes and for power feeding sources related to all towers and poles – (from 35-meter pole to control room and from related UPS camersa distribution boards till overall 2 [300 m] | 34,800 | C083 | Z3 | CONS | CCTV | Civil Works | AFT |
|  | 1635 | **RHD4-02-002-C083-(CCTV)-CCTV Poles** |  | 2027-11-08 | 2027-11-18 |  |  |  |  |  |  |  |  |  |
| RHD4CZ3C083CCTV1100 |  | Excavation for RC Base for CCTV Poles for Security Network - (RD-C-8 /3)-Z3-C083-CCTV | 2d | 2027-11-08 | 2027-11-09 | RHD4ENSDZ3APPCCTV210, RHD4CZ3C083CCTV2100 | Skilled labor [8.64 h]; Unskilled Labor [8.64 h]; Equipment Opreator [17.44 h]; Excavator-Poclain [4.36 h]; Dump Truck [4.36 h]; 25 Meters pole for CCTV Cameras [0.2 nr] | 28,180.4 | C083 | Z3 | CONS | CCTV | Excavation | AFT |
| RHD4CZ3C083CCTV1200 |  | Installation for RC Base for CCTV Poles for Security Network - (RD-C-8 /3)-Z3-C083-CCTV | 2d | 2027-11-10 | 2027-11-11 | RHD4CZ3C083CCTV1100 | Skilled labor [8.64 h]; Unskilled Labor [8.64 h]; Equipment Opreator [17.44 h]; Excavator-Poclain [4.36 h]; Dump Truck [4.36 h]; 25 Meters pole for CCTV Cameras [0.5 nr] | 70,451 | C083 | Z3 | CONS | CCTV | RC Base | AFT |
| RHD4CZ3C083CCTV1300 |  | Backfill for RC Base for CCTV Poles for Security Network - (RD-C-8 /3)-Z3-C083-CCTV | 2d | 2027-11-13 | 2027-11-14 | RHD4CZ3C083CCTV1200 | Skilled labor [5.44 h]; Unskilled Labor [5.44 h]; Equipment Opreator [10.88 h]; Excavator-Poclain [2.72 h]; Dump Truck [2.72 h]; 25 Meters pole for CCTV Cameras [0.1 nr] | 14,090.2 | C083 | Z3 | CONS | CCTV | Backfill | AFT |
| RHD4CZ3C083CCTV1400 |  | Installation for CCTV Poles for Security Network - (RD-C-8 /3)-Z3-C083-CCTV | 2d | 2027-11-15 | 2027-11-16 | RHD4PRSHLDOSCCTV1000, RHD4PRSHLSTACCTV1000, RHD4CZ3C083CCTV1300 | Skilled labor [14.56 h]; Unskilled Labor [28.96 h]; Electrician [14.56 h]; Equipment Opreator [14.56 h]; Boom Truck [7.3 h]; 25 Meters pole for CCTV Cameras [1.2 nr] | 169,082.4 | C083 | Z3 | CONS | CCTV | Installation | AFT |
| RHD4CZ3C083CCTV1500 |  | Protection post Installation for CCTV Poles for Security Network - (RD-C-8 /3)-Z3-C083-CCTV | 2d | 2027-11-17 | 2027-11-18 | RHD4CZ3C083CCTV1400 | Skilled labor [21.76 h]; Unskilled Labor [43.52 h]; Supply and Installation of minimum 4 Protection Post for each pole or tower with pipe ?220*6mm THK. [1 nr] | 4,903 | C083 | Z3 | CONS | CCTV | Protection post | AFT |
|  | 1636 | **RHD4-02-002-C083-(CCTV)-Camera** |  | 2027-11-20 | 2027-11-21 |  |  |  |  |  |  |  |  |  |
| RHD4CZ3C083CCTV3100 |  | Installation for Cameras for Security Network - (RD-C-8 /3)-Z3-C083-CCTV | 2d | 2027-11-20 | 2027-11-21 | RHD4PRSHLDOSCCTV1100, RHD4PRSHLSTACCTV1100, RHD4CZ3C083CCTV1400, RHD4CZ3C083CCTV4100 | Unskilled Labor [108.96 h]; Electrician [54.4 h]; Outdoor Camera, 5MP resolution, day/night, fixed bullet camera providing Forensic WDR. [6 nr]; Outdoor PTZ with IR, HDTV 1080 and 31x optical, 12x digital, total 372x zoom, H264/265 with Motion JPEG. [2 nr] | 106,528 | C083 | Z3 | CONS | CCTV | Installation | AFT |
|  | 1637 | **RHD4-02-002-C083-(CCTV)-Power and Infrastructure** |  | 2027-11-17 | 2027-11-21 |  |  |  |  |  |  |  |  |  |
| RHD4CZ3C083CCTV4100 |  | Installation of Power outlet, UPS and midspan for PTZ Camerafor Cameras for Security Network - (RD-C-8 /3)-Z3-C083-CCTV | 2d | 2027-11-17 | 2027-11-18 | RHD4PRSHLDOSCCTV1300, RHD4PRSHLSTACCTV1300, RHD4CZ3C083CCTV1400 | Skilled labor [17.44 h]; Unskilled Labor [69.76 h]; Electrician [34.88 h]; Equipment Opreator [34.88 h]; Excavator-Poclain [8.71 h]; Dump Truck [8.71 h]; Outdoor ready IP66-rated midspan for PTZ Camera (The outdoor- ready midspan should be IP66/IP67- and NEMA 4X-rated [2 nr]; 1.2KVA Industrial type UPS located at FEC remote poles [2 nr] | 18,206 | C083 | Z3 | CONS | CCTV | Power | AFT |
| RHD4CZ3C083CCTV4200 |  | Short Range Wireless PoP wireless Bridgefor CCTV Poles for Security Network - (RD-C-8 /3)-Z3-C083-CCTV | 2d | 2027-11-20 | 2027-11-21 | RHD4CZ3C083CCTV4100 | Skilled labor [21.76 h]; Unskilled Labor [43.52 h]; Electrician [21.76 h]; Equipment Opreator [43.52 h]; Excavator-Poclain [10.89 h]; Dump Truck [10.89 h]; Short Range wireless point to point wireless bridge [4 nr] | 58,548 | C083 | Z3 | CONS | CCTV | Wireless Pop | AFT |
|  | 1639 | **RHD4-02-002-C083-(CCTV)-CCTV Panels and Components** |  | 2027-11-22 | 2027-12-09 |  |  |  |  |  |  |  |  |  |
| RHD4CZ3C083CCTV6100 |  | Installation for CCTV Panels for Security Network - (RD-C-8 /3)-Z3-C083-CCTV | 16d | 2027-11-22 | 2027-12-09 | RHD4PRSHLDOSCCTV1200, RHD4PRSHLSTACCTV1200, RHD4PRLOLSTACCTV1001, RHD4CZ3C083CCTV4200, RHD4CZ3C083CCTV3100, RHD4CZ3C083CCTV1500 | Skilled labor [348.48 h]; Unskilled Labor [1045.44 h]; Electrician [348.48 h]; Pole mounted Filed Equipment cabinet (FEC) , with fan and ventilation, NEMEX 4X ,door, minimum size (600x600x400mm) , the cabinet/enclosurE [2 nr]; 8 Port Industrial PoE Switch 10/1000BaseT (-40 deg to +70 deg. Celsius) for remote poles and as specifiedin item 15. [1 nr]; UTP CAT6 Patch Cord , connect the industrial switch with the cameras, and radio wireless antenna [12 nr] | 32,584 | C083 | Z3 | CONS | CCTV | Equipment | AFT |

| ID | WBS | Activity | Duration | Start | Finish | Predecessors | Complete | Planned start | Planned finish | Resources | Cost | Actual cost | RDH4-01-001-Zones-1 | RDH4-01-001-Phases-1 | RDH4-01-001-Networks-1 |
| --- | --- | --- | --- | --- | --- | --- | --- | --- | --- | --- | --- | --- | --- | --- | --- |
|  | 2028 | **RHD4-02-002-Z3-RA06** |  |  |  |  |  |  |  |  |  |  |  |  |  |
|  | 2207 | **RHD4-02-002-Z3-RA06-Road Works - RD** |  |  |  |  |  |  |  |  |  |  |  |  |  |
|  | 2208 | **RHD4-02-002-RA06-(RD)-Subgrade** |  |  |  |  |  |  |  |  |  |  |  |  |  |
|  | 2209 | **RHD4-02-002-RA06-(RD)-Aggregate Base Course** |  |  |  |  |  |  |  |  |  |  |  |  |  |
|  | 2210 | **RHD4-02-002-RA06-(RD)-Bituminous base course Two Layers, including (MC1)&(RC2)** |  |  |  |  |  |  |  |  |  |  |  |  |  |
|  | 2212 | **RHD4-02-002-RA06-(RD)-Precast Concrete Curb** |  |  |  |  |  |  |  |  |  |  |  |  |  |
|  | 2215 | **RHD4-02-002-RA06-(RD)-Traffic Signage** |  |  |  |  |  |  |  |  |  |  |  |  |  |
|  | 2213 | **RHD4-02-002-RA06-(RD)-Precast Interlocking Block Pavers** |  |  |  |  |  |  |  |  |  |  |  |  |  |
|  | 2211 | **RHD4-02-002-RA06-(RD)-Bituminous concrete wearing course including tack coat (RC2)** |  |  |  |  |  |  |  |  |  |  |  |  |  |
|  | 2214 | **RHD4-02-002-RA06-(RD)-Pavement Marking** |  |  |  |  |  |  |  |  |  |  |  |  |  |
|  | 2032 | **RHD4-02-002-Z3-RA06-Storm Network - ST** |  |  |  |  |  |  |  |  |  |  |  |  |  |
|  | 2051 | **RHD4-02-002-RA06-(ST)-MH Works - 2000 mm diameter** |  |  |  |  |  |  |  |  |  |  |  |  |  |
|  | 2049 | **RHD4-02-002-RA06-(ST)-MH Works - 1200 mm diameter** |  |  |  |  |  |  |  |  |  |  |  |  |  |
|  | 2050 | **RHD4-02-002-RA06-(ST)-MH Works - 1500 mm diameter** |  |  |  |  |  |  |  |  |  |  |  |  |  |
|  | 2039 | **RHD4-02-002-RA06-(ST)-GRP Pipes - 1000 mm diameter** |  |  |  |  |  |  |  |  |  |  |  |  |  |
|  | 2038 | **RHD4-02-002-RA06-(ST)-GRP Pipes - 900 mm diameter** |  |  |  |  |  |  |  |  |  |  |  |  |  |
|  | 2033 | **RHD4-02-002-RA06-(ST)-GRP Pipes - 400 mm diameter** |  |  |  |  |  |  |  |  |  |  |  |  |  |
|  | 2048 | **RHD4-02-002-RA06-(ST)-UPVC Pipes - 400 mm diameter** |  |  |  |  |  |  |  |  |  |  |  |  |  |
|  | 2047 | **RHD4-02-002-RA06-(ST)-UPVC Pipes - 300 mm diameter** |  |  |  |  |  |  |  |  |  |  |  |  |  |
|  | 2055 | **RHD4-02-002-RA06-(ST)-Concrete Encasement** |  |  |  |  |  |  |  |  |  |  |  |  |  |
|  | 2056 | **RHD4-02-002-Z3-RA06-Catch Basin - ST** |  |  |  |  |  |  |  |  |  |  |  |  |  |
|  | 2057 | **RHD4-02-002-RA06-(ST)-Single Catch Basin Works** |  |  |  |  |  |  |  |  |  |  |  |  |  |
|  | 2058 | **RHD4-02-002-RA06-(ST)-Double Catch Basin Works** |  |  |  |  |  |  |  |  |  |  |  |  |  |
|  | 2180 | **RHD4-02-002-Z3-RA06-Street Lighting Network - SL** |  |  |  |  |  |  |  |  |  |  |  |  |  |
|  | 2183 | **RHD4-02-002-RA06-(SL)-Street Lighting cables** |  |  |  |  |  |  |  |  |  |  |  |  |  |
|  | 2184 | **RHD4-02-002-RA06-(SL)-Street Lighting Poles** |  |  |  |  |  |  |  |  |  |  |  |  |  |
|  | 2186 | **RHD4-02-002-RA06-(SL)-Street Lighting Earthing System** |  |  |  |  |  |  |  |  |  |  |  |  |  |
|  | 2187 | **RHD4-02-002-Z3-RA06-Landscape Network - LS** |  |  |  |  |  |  |  |  |  |  |  |  |  |
|  | 2188 | **RHD4-02-002-RA06-(LS)-Landscape Lighting cables** |  |  |  |  |  |  |  |  |  |  |  |  |  |
|  | 2189 | **RHD4-02-002-RA06-(LS)-Landscape Feeder Pillars** |  |  |  |  |  |  |  |  |  |  |  |  |  |
|  | 2190 | **RHD4-02-002-RA06-(LS)-Landscape Bollard Poles** |  |  |  |  |  |  |  |  |  |  |  |  |  |
|  | 2191 | **RHD4-02-002-RA06-(LS)-Landscape Feeder Pillars Earthing** |  |  |  |  |  |  |  |  |  |  |  |  |  |
|  | 2200 | **RHD4-02-002-Z3-RA06-Security Network - CCTV** |  |  |  |  |  |  |  |  |  |  |  |  |  |
|  | 2201 | **RHD4-02-002-RA06-(CCTV)-Civil Works** |  |  |  |  |  |  |  |  |  |  |  |  |  |
|  | 3 | **Tunnels** |  | 2026-04-19 | 2027-11-10 |  |  |  |  |  |  |  |  |  |  |
|  | 4 | **Tunnel 01** |  | 2026-04-19 | 2027-11-10 |  |  |  |  |  |  |  |  |  |  |
|  | 17 | **RHD4-02-002 - Tunnel 1 - Stage 02** |  | 2026-04-19 | 2027-11-10 |  |  |  |  |  |  |  |  |  |  |
|  | 18 | **RHD4-02-002 - Tunnel 1 - STG 2 - Concrete Works** |  | 2026-04-19 | 2027-02-12 |  |  |  |  |  |  |  |  |  |  |
|  | 19 | **RHD4-02-002 - Tunnel 1 - Concrete Works - PC Foundation** |  | 2026-04-19 | 2026-06-08 |  |  |  |  |  |  |  |  |  |  |
| RHD4CTUN1Z5STG21000 |  | PC Footing Shuttering Works -TUN1-Z5-STG2-Concrete Works-PC Foundation | 2d | 2026-04-19 A | 2026-05-24 A | RHD4ENMSTUN2000, RHD4ENMSTUN2010, RHD4CZ5A014RW3000, RHD4PRSHLDOSST1304, RHD4PRSHLDOSST1306 | 100% | 2026-04-19 | 2026-04-20 | Supply and cast in place plain concrete 100 mm thickness lean concrete under the foundation for (Sewer and Storm Pump station) and (tunnels) [242.03 m2]; Carpenter [1708.48 h]; Skilled labor [81.35 h]; Unskilled Labor [244.05 h]; Equipment Opreator [5.12 h]; Bobcat [6.32 h] | 15,974.19 | 15,974.19 | Z5 | CONS | TUN1 |
| RHD4CTUN1Z5STG21010 |  | Casting of 100mm Blinding Concrete Under Foundation-TUN1-Z5-STG2-Concrete Works-PC Foundation | 2d | 2026-04-21 A | 2026-05-25 A | RHD4CTUN1Z5STG21000 | 100% | 2026-04-21 | 2026-04-22 | Supply and cast in place plain concrete 100 mm thickness lean concrete under the foundation for (Sewer and Storm Pump station) and (tunnels) [2178.3 m2]; Mason [549.2 h]; Unskilled Labor [1647.49 h]; Equipment Opreator [257.88 h]; Bobcat [43.02 h]; Concrete Mixer Truck [214.87 h]; Concrete Pump [64.47 h] | 143,767.8 | 143,767.8 | Z5 | CONS | TUN1 |
| RHD4CTUN1Z5STG21020 |  | Applying 2 layers of waterproofing bitumenous membrane 4mm below footings-TUN1-Z5-STG2-Concrete Works-PC Foundation | 2d | 2026-04-23 A | 2026-06-06 A | RHD4CTUN1Z5STG21010 | 100% | 2026-04-23 | 2026-04-25 | Bituminous Sheet Waterproofing (2 layers of waterproofing bitumenous membrane 4mm below footings) [2170.57 m2]; Skilled labor [266.27 h]; Unskilled Labor [266.27 h] | 186,668.64 | 186,668.64 | Z5 | CONS | TUN1 |
| RHD4CTUN1Z5STG21030 |  | Casting of 50mm Screed for Membrane Protection-TUN1-Z5-STG2-Concrete Works-PC Foundation | 2d | 2026-04-26 A | 2026-06-08 A | RHD4CTUN1Z5STG21020 | 100% | 2026-04-26 | 2026-04-27 | Supply and cast in place screed concrete 50 mm thickness screed concrete for protecting waterproofing under the foundation for (Sewer and Storm Pump station) and (tunnels) [71.32 m2]; Mason [1046.02 h]; Unskilled Labor [1743.44 h]; Equipment Opreator [131.01 h]; Bobcat [27.2 h]; Concrete Mixer Truck [136.46 h] | 2,282.13 | 2,282.13 | Z5 | CONS | TUN1 |

| ID | WBS | Activity | Duration | Start | Finish | Predecessors | Complete | Planned start | Planned finish | Calendar | Resources | Cost | Actual cost | RDH4-01-001-Zones-1 | RDH4-01-001-Phases-1 | RDH4-01-001-Networks-1 |
| --- | --- | --- | --- | --- | --- | --- | --- | --- | --- | --- | --- | --- | --- | --- | --- | --- |
|  | 20 | **RHD4-02-002 - Tunnel 1 - Concrete Works - RC Foundation** |  | 2026-04-28 | 2026-07-20 |  |  |  |  |  |  |  |  |  |  |  |
| RHD4CTUN1Z5STG21040 |  | Shuttering Works for RC Footing-TUN1-Z5-STG2-Concrete Works-RC Foundation(Completed) | 27d | 2026-04-28 A | 2026-07-14 A | RHD4ENMSTUN2010, RHD4CTUN1Z5STG21030 | 100% | 2026-04-28 | 2026-06-01 |  | Supply and cast in place reinforced concrete with fc'=50 Mpa for the sub- structures for (tunnels) for Footings [221.06 m3]; Carpenter [1599.9 h]; Skilled labor [76.23 h]; Unskilled Labor [228.59 h]; Equipment Opreator [4.8 h]; Bobcat [5.99 h] | 371,817.13 | 371,817.13 | Z5 | CONS | TUN1 |
| RHD4CTUN1Z5STG21050 |  | Steel fixing Works for RC Footing -TUN1-Z5-STG2-Concrete Works-RC Foundation(Completed) | 29d | 2026-04-28 A | 2026-07-12 A | RHD4CTUN1Z5STG21040 SS | 100% | 2026-04-28 | 2026-06-03 |  | Supply and cast in place reinforced concrete with fc'=50 Mpa for the sub- structures for (tunnels) for Footings [221.06 m3]; Skilled labor [38.12 h]; Unskilled Labor [152.36 h]; Steel Fixer [1828.49 h] | 371,817.13 | 371,817.13 | Z5 | CONS | TUN1 |
| RHD4CTUN1Z5STG21060 |  | casting of reinforced concrete for RC Footing -TUN1-Z5-STG2-Concrete Works-RC Foundation(Completed) | 23d | 2026-04-28 A | 2026-07-15 A | RHD4ENMARAPPTU100, RHD4CTUN1Z5STG21050 SS | 100% | 2026-04-28 | 2026-05-24 |  | Supply and cast in place reinforced concrete with fc'=50 Mpa for the sub- structures for (tunnels) for Footings [552.64 m3]; Mason [190.47 h]; Skilled labor [190.47 h]; Unskilled Labor [571.2 h]; Equipment Opreator [125.13 h]; Bobcat [7.51 h]; Concrete Mixer Truck [111.73 h]; Concrete Pump [37.35 h] | 929,542.83 | 929,542.83 | Z5 | CONS | TUN1 |
| RHD4CTUN1Z5STG21070 |  | De-shuttering and Curing Works for RC Footing -TUN1-Z5-STG2-Concrete Works-RC Foundation(Completed) | 25d | 2026-04-28 A | 2026-07-20 A | RHD4CTUN1Z5STG21060 SS | 100% | 2026-04-28 | 2026-05-22 | RHD4 - (7 Days - 8 Hours)-48 | Supply and cast in place reinforced concrete with fc'=50 Mpa for the sub- structures for (tunnels) for Footings [110.53 m3]; Carpenter [800 h]; Skilled labor [38.12 h]; Unskilled Labor [114.24 h]; Equipment Opreator [2.4 h]; Bobcat [3.05 h] | 185,908.57 | 185,908.57 | Z5 | CONS | TUN1 |
|  | 21 | **RHD4-02-002 - Tunnel 1 - Concrete Works - Under Ground Walls** |  | 2026-06-04 | 2026-12-31 |  |  |  |  |  |  |  |  |  |  |  |
|  | 22 | **RHD4-02-002 - Tunnel 1 - Under Ground Walls - Stage 1 (Up to 3m)** |  | 2026-06-04 | 2026-09-08 |  |  |  |  |  |  |  |  |  |  |  |
| RHD4CTUN1Z5STG21080 |  | shuttering Works of Three Sides for Walls <Stage 01>-TUN1-Z5-STG2-Concrete Works-Under Ground Walls | 5d | 2026-06-04 A | 2026-08-09 A | RHD4CTUN1Z5STG21070, RHD4ENMARAPPTU100, RHD4CTUN1Z5STG21060, RHD4CTUN1Z5STG21050, RHD4CTUN1Z5STG21030, RHD4ENMSTUN2010, RHD4CTUN1Z5STG21040 | 100% | 2026-06-04 | 2026-06-09 |  | Supply and cast in place reinforced concrete with fc'=50 Mpa for the sub- structures for (tunnels) for Walls below ground level [61.85 m3]; Carpenter [463.93 h]; Skilled labor [22.11 h]; Unskilled Labor [66.32 h]; Equipment Opreator [1.42 h]; Bobcat [1.74 h] | 154,872.4 | 154,872.4 | Z5 | CONS | TUN1 |
| RHD4CTUN1Z5STG21090 |  | Steel fixing Works for Walls <Stage 01>-TUN1-Z5-STG2-Concrete Works-Under Ground Walls | 5d | 2026-06-10 A | 2026-08-15 A | RHD4CTUN1Z5STG21080 | 100% | 2026-06-10 | 2026-06-15 |  | Supply and cast in place reinforced concrete with fc'=50 Mpa for the sub- structures for (tunnels) for Walls below ground level [82.47 m3]; Skilled labor [14.81 h]; Unskilled Labor [58.92 h]; Steel Fixer [706.89 h] | 206,496.53 | 206,496.53 | Z5 | CONS | TUN1 |
| RHD4CTUN1Z5STG21100 |  | shuttering Works of the 4th Side for Walls <Stage 01>-TUN1-Z5-STG2-Concrete Works-Under Ground Walls | 4d | 2026-06-16 A | 2026-08-19 A | RHD4CTUN1Z5STG21090 | 100% | 2026-06-16 | 2026-06-20 |  | Supply and cast in place reinforced concrete with fc'=50 Mpa for the sub- structures for (tunnels) for Walls below ground level [20.62 m3]; Carpenter [154.64 h]; Skilled labor [7.3 h]; Unskilled Labor [22.11 h]; Equipment Opreator [0.44 h]; Bobcat [0.54 h] | 51,624.13 | 51,624.13 | Z5 | CONS | TUN1 |
| RHD4CTUN1Z5STG21110 |  | casting of reinforced concrete for Walls <Stage 01>-TUN1-Z5-STG2-Concrete Works-Under Ground Walls | 4d | 2026-06-21 A | 2026-08-24 A | RHD4ENMARAPPTU100, RHD4CTUN1Z5STG21100 | 100% | 2026-06-21 | 2026-06-24 |  | Supply and cast in place reinforced concrete with fc'=50 Mpa for the sub- structures for (tunnels) for Walls below ground level [206.17 m3]; Mason [73.73 h]; Skilled labor [73.73 h]; Unskilled Labor [221.07 h]; Equipment Opreator [48.46 h]; Bobcat [2.83 h]; Concrete Mixer Truck [43.34 h]; Concrete Pump [14.48 h] | 516,241.33 | 516,241.33 | Z5 | CONS | TUN1 |
| RHD4CTUN1Z5STG21120 |  | De-shuttering and Curing Works for Walls <Stage 01>-TUN1-Z5-STG2-Concrete Works-Under Ground Walls | 5d | 2026-06-25 A | 2026-09-08 A | RHD4CTUN1Z5STG21110 | 100% | 2026-06-25 | 2026-06-29 | RHD4 - (7 Days - 8 Hours)-48 | Supply and cast in place reinforced concrete with fc'=50 Mpa for the sub- structures for (tunnels) for Walls below ground level [41.23 m3]; Carpenter [309.29 h]; Skilled labor [14.81 h]; Unskilled Labor [44.21 h]; Equipment Opreator [0.87 h]; Bobcat [1.09 h] | 103,248.27 | 103,248.27 | Z5 | CONS | TUN1 |
|  | 23 | **RHD4-02-002 - Tunnel 1 - Under Ground Walls - Stage 2 (Up to 6m)** |  | 2026-06-25 | 2026-09-09 |  |  |  |  |  |  |  |  |  |  |  |
| RHD4CTUN1Z5STG21130 |  | shuttering Works of Three Sides for Walls <Stage 02>-TUN1-Z5-STG2-Concrete Works-Under Ground Walls | 5d | 2026-06-25 A | 2026-08-09 A | RHD4CTUN1Z5STG21080 SS, RHD4CTUN1Z5STG21110 | 100% | 2026-06-25 | 2026-06-30 |  | Supply and cast in place reinforced concrete with fc'=50 Mpa for the sub- structures for (tunnels) for Walls below ground level [61.85 m3]; Carpenter [463.93 h]; Skilled labor [22.11 h]; Unskilled Labor [66.32 h]; Equipment Opreator [1.42 h]; Bobcat [1.74 h] | 154,872.4 | 154,872.4 | Z5 | CONS | TUN1 |
| RHD4CTUN1Z5STG21140 |  | Steel fixing Works for Walls <Stage 02>-TUN1-Z5-STG2-Concrete Works-Under Ground Walls | 5d | 2026-07-01 A | 2026-08-15 A | RHD4CTUN1Z5STG21130 | 100% | 2026-07-01 | 2026-07-06 |  | Supply and cast in place reinforced concrete with fc'=50 Mpa for the sub- structures for (tunnels) for Walls below ground level [82.47 m3]; Skilled labor [14.81 h]; Unskilled Labor [58.92 h]; Steel Fixer [706.89 h] | 206,496.53 | 206,496.53 | Z5 | CONS | TUN1 |
| RHD4CTUN1Z5STG21150 |  | shuttering Works of the 4th Side for Walls <Stage 02>-TUN1-Z5-STG2-Concrete Works-Under Ground Walls | 5d | 2026-07-07 A | 2026-08-20 A | RHD4CTUN1Z5STG21140 | 100% | 2026-07-07 | 2026-07-12 |  | Supply and cast in place reinforced concrete with fc'=50 Mpa for the sub- structures for (tunnels) for Walls below ground level [20.62 m3]; Carpenter [154.64 h]; Skilled labor [7.3 h]; Unskilled Labor [22.11 h]; Equipment Opreator [0.44 h]; Bobcat [0.54 h] | 51,624.13 | 51,624.13 | Z5 | CONS | TUN1 |
| RHD4CTUN1Z5STG21160 |  | casting of reinforced concrete for Walls <Stage 02>-TUN1-Z5-STG2-Concrete Works-Under Ground Walls | 4d | 2026-07-13 A | 2026-08-25 A | RHD4CZ5A014ST3400, RHD4ENMARAPPTU100, RHD4CTUN1Z5STG21150 | 100% | 2026-07-13 | 2026-07-16 |  | Supply and cast in place reinforced concrete with fc'=50 Mpa for the sub- structures for (tunnels) for Walls below ground level [206.17 m3]; Mason [73.73 h]; Skilled labor [73.73 h]; Unskilled Labor [221.07 h]; Equipment Opreator [48.46 h]; Bobcat [2.83 h]; Concrete Mixer Truck [43.34 h]; Concrete Pump [14.48 h] | 516,241.33 | 516,241.33 | Z5 | CONS | TUN1 |
| RHD4CTUN1Z5STG21170 |  | De-shuttering and Curing Works for Walls <Stage 02>-TUN1-Z5-STG2-Concrete Works-Under Ground Walls | 5d | 2026-07-17 A | 2026-09-09 A | RHD4CTUN1Z5STG21120, RHD4CTUN1Z5STG21160 | 100% | 2026-07-17 | 2026-07-21 | RHD4 - (7 Days - 8 Hours)-48 | Supply and cast in place reinforced concrete with fc'=50 Mpa for the sub- structures for (tunnels) for Walls below ground level [41.23 m3]; Carpenter [309.29 h]; Skilled labor [14.81 h]; Unskilled Labor [44.21 h]; Equipment Opreator [0.87 h]; Bobcat [1.09 h] | 103,248.27 | 103,248.27 | Z5 | CONS | TUN1 |
|  | 24 | **RHD4-02-002 - Tunnel 1 - Under Ground Walls - Stage 3 (Up to 9m)** |  | 2026-06-25 | 2026-12-31 |  |  |  |  |  |  |  |  |  |  |  |
| RHD4CTUN1Z5STG21180 |  | shuttering Works of Three Sides for Walls <Stage 03>-TUN1-Z5-STG2-Concrete Works-Under Ground Walls | 5d | 2026-06-25 A | 2026-08-09 A | RHD4CTUN1Z5STG21130 SS | 100% | 2026-06-25 | 2026-06-30 |  | Supply and cast in place reinforced concrete with fc'=50 Mpa for the sub- structures for (tunnels) for Walls below ground level [61.85 m3]; Carpenter [463.93 h]; Skilled labor [22.11 h]; Unskilled Labor [66.32 h]; Equipment Opreator [1.42 h]; Bobcat [1.74 h] | 154,872.4 | 154,872.4 | Z5 | CONS | TUN1 |
| RHD4CTUN1Z5STG21190 |  | Steel fixing Works for Walls <Stage 03>-TUN1-Z5-STG2-Concrete Works-Under Ground Walls | 5d | 2026-07-01 A | 2026-09-09 A | RHD4CTUN1Z5STG21180 | 100% | 2026-07-01 | 2026-07-06 |  | Supply and cast in place reinforced concrete with fc'=50 Mpa for the sub- structures for (tunnels) for Walls below ground level [82.47 m3]; Skilled labor [14.81 h]; Unskilled Labor [58.92 h]; Steel Fixer [706.89 h] | 206,496.53 | 206,496.53 | Z5 | CONS | TUN1 |
| RHD4CTUN1Z5STG21200 |  | shuttering Works of the 4th Side for Walls <Stage 03>-TUN1-Z5-STG2-Concrete Works-Under Ground Walls | 5d | 2026-09-10 A | 2026-09-15 A | RHD4CTUN1Z5STG21190 | 100% |  |  |  | Supply and cast in place reinforced concrete with fc'=50 Mpa for the sub- structures for (tunnels) for Walls below ground level [20.62 m3]; Carpenter [154.64 h]; Skilled labor [7.3 h]; Unskilled Labor [22.11 h]; Equipment Opreator [0.44 h]; Bobcat [0.54 h] | 51,624.13 | 51,624.13 | Z5 | CONS | TUN1 |
| RHD4CTUN1Z5STG21210 |  | casting of reinforced concrete for Walls <Stage 03>-TUN1-Z5-STG2-Concrete Works-Under Ground Walls | 4d | 2026-09-17 A | 2026-09-21 A | RHD4ENMARAPPTU100, RHD4CTUN1Z5STG21200 | 100% |  |  |  | Supply and cast in place reinforced concrete with fc'=50 Mpa for the sub- structures for (tunnels) for Walls below ground level [206.17 m3]; Mason [73.73 h]; Skilled labor [73.73 h]; Unskilled Labor [221.07 h]; Equipment Opreator [48.46 h]; Bobcat [2.83 h]; Concrete Mixer Truck [43.34 h]; Concrete Pump [14.48 h] | 516,241.33 | 516,241.33 | Z5 | CONS | TUN1 |
| RHD4CTUN1Z5STG21220 |  | De-shuttering and Curing Works for Walls <Stage 03>-TUN1-Z5-STG2-Concrete Works-Under Ground Walls | 4d | 2026-09-22 A | 2026-09-27 A | RHD4CTUN1Z5STG21210 | 100% |  |  |  | Supply and cast in place reinforced concrete with fc'=50 Mpa for the sub- structures for (tunnels) for Walls below ground level [41.23 m3]; Carpenter [309.29 h]; Skilled labor [14.81 h]; Unskilled Labor [44.21 h]; Equipment Opreator [0.87 h]; Bobcat [1.09 h] | 103,248.27 | 103,248.27 | Z5 | CONS | TUN1 |
| RHD4CTUN1Z5STG21230 |  | Installation of 2 layers of bitumenous waterproofing membrane<Stage 03>-TUN1-Z5-STG2-Concrete Works-Under Ground Walls | 4d | 2026-12-26 | 2026-12-29 | RHD4CTUN1Z5STG21220 |  |  |  |  | Bituminous Sheet Waterproofing (2 layers of waterproofing bitumenous membrane 4mm including protection board for substructure vertical and top surfaces in contact with soil) [3770.05 m2]; Skilled labor [350.02 h]; Unskilled Labor [350.02 h] | 324,224.53 |  | Z5 | CONS | TUN1 |
| RHD4CTUN1Z5STG21240 |  | Installation of Protection board for waterproofing <Stage 03>-TUN1-Z5-STG2-Concrete Works-Under Ground Walls | 2d | 2026-12-30 | 2026-12-31 | RHD4CTUN1Z5STG21230 |  |  |  |  | Bituminous Sheet Waterproofing (2 layers of waterproofing bitumenous membrane 4mm including protection board for substructure vertical and top surfaces in contact with soil) [942.51 m2]; Skilled labor [87.56 h]; Unskilled Labor [87.56 h] | 81,056.13 |  | Z5 | CONS | TUN1 |

| ID | WBS | Activity | Duration | Start | Finish | Predecessors | Complete | Planned start | Planned finish | Calendar | Resources | Cost | Actual cost | RDH4-01-001-Zones-1 | RDH4-01-001-Phases-1 | RDH4-01-001-Networks-1 |
| --- | --- | --- | --- | --- | --- | --- | --- | --- | --- | --- | --- | --- | --- | --- | --- | --- |
|  | 25 | **RHD4-02-002 - Tunnel 1 - Concrete Works - Slab** |  | 2026-09-01 | 2027-01-26 |  |  |  |  |  |  |  |  |  |  |  |
| RHD4CTUN1Z5STG21250 |  | shuttering Works for Beams And Slab-TUN1-Z5-STG2-Concrete Works-Slab | 10d | 2026-09-01 A | 2026-10-18 A | RHD4CTUN1Z5STG21240 | 100% | 2026-07-29 | 2026-08-09 |  | Supply and cast in place reinforced concrete with fc'=50 Mpa for the sub- structures for (tunnels) for Solid Slabs [224.44 m3]; Carpenter [65.78 h]; Skilled labor [3.16 h]; Unskilled Labor [9.37 h]; Equipment Opreator [0.22 h]; Bobcat [0.33 h] | 582,633.78 | 582,633.78 | Z5 | CONS | TUN1 |
| RHD4CTUN1Z5STG21260 |  | Steel fixing Works for Beams And Slab-TUN1-Z5-STG2-Concrete Works-Slab | 12d | 2026-09-15 A | 2026-10-27 A | RHD4CTUN1Z5STG21250 | 100% | 2026-08-10 | 2026-08-23 |  | Supply and cast in place reinforced concrete with fc'=50 Mpa for the sub- structures for (tunnels) for Solid Slabs [224.44 m3]; Skilled labor [1.52 h]; Unskilled Labor [6.21 h]; Steel Fixer [75.14 h] | 582,633.78 | 582,633.78 | Z5 | CONS | TUN1 |
| RHD4CTUN1Z5STG21270 |  | casting of reinforced concrete for Beams And Slab-TUN1-Z5-STG2-Concrete Works-Slab | 8d | 2026-10-05 A | 2026-11-01 A | RHD4CTUN1Z5STG21250, RHD4ENMARAPPTU100, RHD4CTUN1Z5STG21260 | 100% | 2026-08-24 | 2026-09-01 |  | Supply and cast in place reinforced concrete with fc'=50 Mpa for the sub- structures for (tunnels) for Solid Slabs [561.09 m3]; Mason [7.84 h]; Skilled labor [7.84 h]; Unskilled Labor [23.63 h]; Equipment Opreator [5.23 h]; Bobcat [0.33 h]; Concrete Mixer Truck [4.68 h]; Concrete Pump [1.52 h] | 1,456,584.45 | 1,456,584.45 | Z5 | CONS | TUN1 |
| RHD4CTUN1Z5STG21280 |  | De-shuttering and Curing Works for Beams And Slab-TUN1-Z5-STG2-Concrete Works-Slab | 26d | 2027-01-01 | 2027-01-26 | RHD4CTUN1Z5STG21270 |  |  |  | RHD4 - (7 Days - 8 Hours)-48 | Supply and cast in place reinforced concrete with fc'=50 Mpa for the sub- structures for (tunnels) for Solid Slabs [112.22 m3]; Carpenter [32.89 h]; Skilled labor [1.52 h]; Unskilled Labor [4.68 h]; Equipment Opreator [0.11 h]; Bobcat [0.11 h] | 291,316.89 |  | Z5 | CONS | TUN1 |
|  | 26 | **RHD4-02-002 - Tunnel 1 - Concrete Works - Concrete Parapet** |  | 2027-01-27 | 2027-02-12 |  |  |  |  |  |  |  |  |  |  |  |
| RHD4CTUN1Z5STG21290 |  | shuttering Works for Parapet-TUN1-Z5-STG2-Concrete Works-Concrete Parapet | 3d | 2027-01-27 | 2027-01-30 | RHD4CTUN1Z5STG21280, RHD4CTUN1Z5STG21280 SS |  |  |  |  | Supply and cast in place reinforced concrete with fc'=50 Mpa for the sub- structures for (tunnels) for Solid Slabs [56.11 m3]; Carpenter [6.1 h]; Skilled labor [0.33 h]; Unskilled Labor [0.87 h]; Equipment Opreator [0.11 h]; Bobcat [0.11 h] | 145,658.44 |  | Z5 | CONS | TUN1 |
| RHD4CTUN1Z5STG21300 |  | Steel fixing Works for Parapet-TUN1-Z5-STG2-Concrete Works-Concrete Parapet | 5d | 2027-01-31 | 2027-02-04 | RHD4CTUN1Z5STG21290 |  |  |  |  | Supply and cast in place reinforced concrete with fc'=50 Mpa for the sub- structures for (tunnels) for Solid Slabs [56.11 m3]; Skilled labor [0.22 h]; Unskilled Labor [0.54 h]; Steel Fixer [6.97 h] | 145,658.44 |  | Z5 | CONS | TUN1 |
| RHD4CTUN1Z5STG21310 |  | casting of reinforced concrete for Parapet-TUN1-Z5-STG2-Concrete Works-Concrete Parapet | 2d | 2027-02-06 | 2027-02-07 | RHD4ENMARAPPTU100, RHD4CTUN1Z5STG21300 |  |  |  |  | Supply and cast in place reinforced concrete with fc'=50 Mpa for the sub- structures for (tunnels) for Solid Slabs [140.27 m3]; Mason [0.65 h]; Skilled labor [0.65 h]; Unskilled Labor [2.07 h]; Equipment Opreator [0.44 h]; Bobcat [0.11 h]; Concrete Mixer Truck [0.44 h]; Concrete Pump [0.11 h] | 364,146.11 |  | Z5 | CONS | TUN1 |
| RHD4CTUN1Z5STG21320 |  | De-shuttering and Curing Works for Parapet-TUN1-Z5-STG2-Concrete Works-Concrete Parapet | 5d | 2027-02-08 | 2027-02-12 | RHD4CTUN1Z5STG21310 |  |  |  | RHD4 - (7 Days - 8 Hours)-48 | Supply and cast in place reinforced concrete with fc'=50 Mpa for the sub- structures for (tunnels) for Solid Slabs [28.05 m3]; Carpenter [2.4 h]; Skilled labor [0.22 h]; Unskilled Labor [0.33 h]; Equipment Opreator [0.11 h]; Bobcat [0.11 h] | 72,829.22 |  | Z5 | CONS | TUN1 |
|  | 27 | **RDH4-01-001 - Tunnel 1 - Painting Works - Finishing** |  | 2027-01-27 | 2027-01-31 |  |  |  |  |  |  |  |  |  |  |  |
| RHD4CTUN1Z5STG21900 |  | Tunnel Painting-TUN1-Z5-STG2-Painting Works-Finishing | 5d | 2027-01-27 | 2027-01-31 | RHD4CTUN1Z5STG21280 |  |  |  | RHD4 - (7 Days - 8 Hours)-48 | Anti-Carbonated external paint for external elevations [6417.59 m2] | 237,450.83 |  |  |  | TUN |
|  | 27 | **RHD4-02-002 - Tunnel 1 - STG 2 - MEP Works** |  | 2027-07-17 | 2027-11-10 |  |  |  |  |  |  |  |  |  |  |  |
|  | 28 | **RHD4-02-002 - Tunnel 1 - MEP Works - Electrical Works** |  | 2027-07-17 | 2027-11-10 |  |  |  |  |  |  |  |  |  |  |  |
|  | 29 | **RHD4-02-002 - Tunnel 1 - Electrical Works - Low Voltage** |  | 2027-07-17 | 2027-11-10 |  |  |  |  |  |  |  |  |  |  |  |
| RHD4CTUN1Z5STG21330 |  | Marking, Cutting & Chasing and Putting LV Conduits in Walls-TUN1-Z5-STG2-MEP Works-Electrical Works | 4d | 2027-07-17 | 2027-07-20 | RHD4CZ3C083IRR1504, RHD4CTUN1Z5STG21900, RHD4CTUN1Z5STG21320 |  |  |  |  | Outdoor Lighting Fixtures - L5 lighting units of the (LED) type [5.3 nr]; Outdoor Lighting Fixtures - L6 lighting units of the (LED) type [0.6 nr]; Unskilled Labor [0.22 h]; Electrician [0.22 h] | 3,295.7 |  | Z5 | CONS | TUN1 |
| RHD4CTUN1Z5STG21340 |  | Hanger & Support Installation for LV System-TUN1-Z5-STG2-MEP Works-Electrical Works | 16d | 2027-07-21 | 2027-08-08 | RHD4CTUN1Z5STG21330 |  |  |  |  | Outdoor Lighting Fixtures - L5 lighting units of the (LED) type [5.3 nr]; Outdoor Lighting Fixtures - L6 lighting units of the (LED) type [0.6 nr]; Unskilled Labor [0.22 h]; Electrician [0.22 h] | 3,295.7 |  | Z5 | CONS | TUN1 |
| RHD4CTUN1Z5STG21350 |  | Cable Tray Installation for LV System-TUN1-Z5-STG2-MEP Works-Electrical Works | 16d | 2027-08-09 | 2027-08-26 | RHD4CTUN1Z5STG21340 |  |  |  |  | Outdoor Lighting Fixtures - L5 lighting units of the (LED) type [5.3 nr]; Outdoor Lighting Fixtures - L6 lighting units of the (LED) type [0.6 nr]; Unskilled Labor [0.22 h]; Electrician [0.22 h]; Equipment Opreator [0.11 h]; Boom Truck [0.11 h] | 3,295.7 |  | Z5 | CONS | TUN1 |
| RHD4CTUN1Z5STG21360 |  | Exposed LV Conduits Installation-TUN1-Z5-STG2-MEP Works-Electrical Works | 16d | 2027-08-28 | 2027-09-14 | RHD4CTUN1Z5STG21350 |  |  |  |  | Outdoor Lighting Fixtures - L5 lighting units of the (LED) type [5.3 nr]; Outdoor Lighting Fixtures - L6 lighting units of the (LED) type [0.6 nr]; Unskilled Labor [0.22 h]; Electrician [0.22 h] | 3,295.7 |  | Z5 | CONS | TUN1 |
| RHD4CTUN1Z5STG21370 |  | Pulling Cables & Wires for LV Systems-TUN1-Z5-STG2-MEP Works-Electrical Works | 16d | 2027-09-15 | 2027-10-04 | RHD4CTUN1Z5STG21360 |  |  |  |  | Outdoor Lighting Fixtures - L5 lighting units of the (LED) type [31.8 nr]; Outdoor Lighting Fixtures - L6 lighting units of the (LED) type [3.6 nr]; Unskilled Labor [0.22 h]; Electrician [0.22 h]; Equipment Opreator [0.11 h]; Cable Laying Machine [0.11 h] | 19,774.2 |  | Z5 | CONS | TUN1 |
| RHD4CTUN1Z5STG21390 |  | Wiring Devices Installation for LV System -TUN1-Z5-STG2-MEP Works-Electrical Works | 16d | 2027-10-05 | 2027-10-23 | RHD4CTUN1Z5STG21370 |  |  |  |  | DB-08 Panel: 100/100 A, 3P, IP66, 60Hz incomer MCCB, 54 Ways [1 nr]; SPN industrial type socket outlet, 25A, 230V, IP54 protection, single- phase, complete with mounting box and cover plate, wall-mounted [8 nr]; Unskilled Labor [1.09 h]; Electrician [1.42 h] | 12,994 |  | Z5 | CONS | TUN1 |
| RHD4CTUN1Z5STG21380 |  | Lighting Fixtures Installation-TUN1-Z5-STG2-MEP Works-Electrical Works | 16d | 2027-10-24 | 2027-11-10 | RHD4CTUN1Z5STG21390, RHD4CTUN1Z5STG21490, RHD4CTUN1Z5STG11240, RHD4CTUN1Z5STG31240, RHD4CTUN1Z5STG21370 |  |  |  |  | Outdoor Lighting Fixtures - L5 lighting units of the (LED) type [53 nr]; Outdoor Lighting Fixtures - L6 lighting units of the (LED) type [6 nr]; Unskilled Labor [0.8 h]; Electrician [1.09 h] | 32,957 |  | Z5 | CONS | TUN1 |
|  | 30 | **RHD4-02-002 - Tunnel 1 - Electrical Works - Light Current** |  | 2027-08-28 | 2027-10-13 |  |  |  |  |  |  |  |  |  |  |  |
| RHD4CTUN1Z5STG21400 |  | Marking, Cutting & Chasing and Putting LC Conduits-TUN1-Z5-STG2-MEP Works-Electrical Works | 7d | 2027-08-28 | 2027-09-04 | RHD4CTUN1Z5STG21350, RHD4CTUN1Z5STG21330 |  |  |  |  | DALI - based tunnel lighting control system [0.05 Item]; Centralized Firefighter Telephone Control Panel [0.05 nr]; Digital Linear Heat Detection System [0.1 Item]; Combination Fire Alarm Speaker/strobe Unit Wall Mounted, Ip-rated [0.2 nr]; Addressable Output Control Module For Fire Alarm System [0.2 nr]; Addressable Manual Call Point Enclosed In IP65 - rated Nema Type 4 Box For Harsh Environments [0.2 nr]; Addressable Input Monitor Module For Signal Interface With Mechanical Systems [0.1 nr]; Firefighter Telephone Jack Point For Use With Fire Alarm System [0.2 nr]; IP dome camera, wall-mounted FOR Tunnel , IP67 - rated, vandal-resistant, with 5MP resolution [0.5 nr]; Unskilled Labor [0.22 h]; Electrician [0.22 h] | 47,156.55 |  | Z5 | CONS | TUN1 |
| RHD4CTUN1Z5STG21410 |  | Hanger & Support Installation for LC System-TUN1-Z5-STG2-MEP Works-Electrical Works | 7d | 2027-09-05 | 2027-09-12 | RHD4CTUN1Z5STG21400 |  |  |  |  | DALI - based tunnel lighting control system [0.05 Item]; Centralized Firefighter Telephone Control Panel [0.05 nr]; Digital Linear Heat Detection System [0.1 Item]; Combination Fire Alarm Speaker/strobe Unit Wall Mounted, Ip-rated [0.2 nr]; Addressable Output Control Module For Fire Alarm System [0.2 nr]; Addressable Manual Call Point Enclosed In IP65 - rated Nema Type 4 Box For Harsh Environments [0.2 nr]; Addressable Input Monitor Module For Signal Interface With Mechanical Systems [0.1 nr]; Firefighter Telephone Jack Point For Use With Fire Alarm System [0.2 nr]; IP dome camera, wall-mounted FOR Tunnel , IP67 - rated, vandal-resistant, with 5MP resolution [0.5 nr]; Unskilled Labor [0.22 h]; Electrician [0.11 h] | 47,156.55 |  | Z5 | CONS | TUN1 |
| RHD4CTUN1Z5STG21420 |  | Cable Trunk Installation for LC System-TUN1-Z5-STG2-MEP Works-Electrical Works | 7d | 2027-09-13 | 2027-09-20 | RHD4CTUN1Z5STG21410 |  |  |  |  | DALI - based tunnel lighting control system [0.05 Item]; Centralized Firefighter Telephone Control Panel [0.05 nr]; Digital Linear Heat Detection System [0.1 Item]; Combination Fire Alarm Speaker/strobe Unit Wall Mounted, Ip-rated [0.2 nr]; Addressable Output Control Module For Fire Alarm System [0.2 nr]; Addressable Manual Call Point Enclosed In IP65 - rated Nema Type 4 Box For Harsh Environments [0.2 nr]; Addressable Input Monitor Module For Signal Interface With Mechanical Systems [0.1 nr]; Firefighter Telephone Jack Point For Use With Fire Alarm System [0.2 nr]; IP dome camera, wall-mounted FOR Tunnel , IP67 - rated, vandal-resistant, with 5MP resolution [0.5 nr]; Unskilled Labor [0.22 h]; Electrician [0.22 h]; Equipment Opreator [0.11 h]; Boom Truck [0.11 h] | 47,156.55 |  | Z5 | CONS | TUN1 |
| RHD4CTUN1Z5STG21430 |  | Exposed LC Conduits Installation-TUN1-Z5-STG2-MEP Works-Electrical Works | 7d | 2027-09-21 | 2027-09-29 | RHD4CTUN1Z5STG21420 |  |  |  |  | DALI - based tunnel lighting control system [0.05 Item]; Centralized Firefighter Telephone Control Panel [0.05 nr]; Digital Linear Heat Detection System [0.1 Item]; Combination Fire Alarm Speaker/strobe Unit Wall Mounted, Ip-rated [0.2 nr]; Addressable Output Control Module For Fire Alarm System [0.2 nr]; Addressable Manual Call Point Enclosed In IP65 - rated Nema Type 4 Box For Harsh Environments [0.2 nr]; Addressable Input Monitor Module For Signal Interface With Mechanical Systems [0.1 nr]; Firefighter Telephone Jack Point For Use With Fire Alarm System [0.2 nr]; IP dome camera, wall-mounted FOR Tunnel , IP67 - rated, vandal-resistant, with 5MP resolution [0.5 nr]; Unskilled Labor [0.22 h]; Electrician [0.22 h] | 47,156.55 |  | Z5 | CONS | TUN1 |
| RHD4CTUN1Z5STG21440 |  | Pulling Cables for lighting control system (DALI)-TUN1-Z5-STG2-MEP Works-Electrical Works | 3d | 2027-09-30 | 2027-10-03 | RHD4CTUN1Z5STG21430 |  |  |  |  | DALI - based tunnel lighting control system [0.3 Item]; Unskilled Labor [0.22 h]; Electrician [0.22 h]; Equipment Opreator [0.11 h]; Cable Laying Machine [0.11 h] | 166,448.4 |  | Z5 | CONS | TUN1 |
| RHD4CTUN1Z5STG21450 |  | Pulling Cables for Fire Alarm System-TUN1-Z5-STG2-MEP Works-Electrical Works | 3d | 2027-09-30 | 2027-10-03 | RHD4CTUN1Z5STG21430 |  |  |  |  | Centralized Firefighter Telephone Control Panel [0.3 nr]; Digital Linear Heat Detection System [0.6 Item]; Combination Fire Alarm Speaker/strobe Unit Wall Mounted, Ip-rated [1.2 nr]; Addressable Output Control Module For Fire Alarm System [1.2 nr]; Addressable Manual Call Point Enclosed In IP65 - rated Nema Type 4 Box For Harsh Environments [1.2 nr]; Addressable Input Monitor Module For Signal Interface With Mechanical Systems [0.6 nr]; Firefighter Telephone Jack Point For Use With Fire Alarm System [1.2 nr]; Unskilled Labor [0.22 h]; Electrician [0.22 h]; Equipment Opreator [0.11 h]; Cable Laying Machine [0.11 h] | 64,827.9 |  | Z5 | CONS | TUN1 |
| RHD4CTUN1Z5STG21460 |  | Pulling Cables for IP CCTV-TUN1-Z5-STG2-MEP Works-Electrical Works | 4d | 2027-09-30 | 2027-10-04 | RHD4CTUN1Z5STG21430 |  |  |  |  | IP dome camera, wall-mounted FOR Tunnel , IP67 - rated, vandal-resistant, with 5MP resolution [3 nr]; Unskilled Labor [0.33 h]; Electrician [0.22 h]; Equipment Opreator [0.11 h]; Cable Laying Machine [0.11 h] | 51,663 |  | Z5 | CONS | TUN1 |
| RHD4CTUN1Z5STG21470 |  | lighting control system (DALI) Devices Installation -TUN1-Z5-STG2-MEP Works-Electrical Works | 3d | 2027-10-04 | 2027-10-06 | RHD4CTUN1Z5STG21440 |  |  |  |  | DALI - based tunnel lighting control system [0.5 Item]; Unskilled Labor [0.22 h]; Electrician [0.11 h] | 277,414 |  | Z5 | CONS | TUN1 |
| RHD4CTUN1Z5STG21480 |  | Fire Alarm Devices Installation-TUN1-Z5-STG2-MEP Works-Electrical Works | 3d | 2027-10-07 | 2027-10-10 | RHD4CTUN1Z5STG21470, RHD4CTUN1Z5STG21450 |  |  |  |  | Centralized Firefighter Telephone Control Panel [0.5 nr]; Digital Linear Heat Detection System [1 Item]; Combination Fire Alarm Speaker/strobe Unit Wall Mounted, Ip-rated [2 nr]; Addressable Output Control Module For Fire Alarm System [2 nr]; Addressable Manual Call Point Enclosed In IP65 - rated Nema Type 4 Box For Harsh Environments [2 nr]; Addressable Input Monitor Module For Signal Interface With Mechanical Systems [1 nr]; Firefighter Telephone Jack Point For Use With Fire Alarm System [2 nr]; Unskilled Labor [0.22 h]; Electrician [0.11 h] | 108,046.5 |  | Z5 | CONS | TUN1 |
| RHD4CTUN1Z5STG21490 |  | IP CCTV Devices Installation-TUN1-Z5-STG2-MEP Works-Electrical Works | 3d | 2027-10-11 | 2027-10-13 | RHD4CTUN1Z5STG21480, RHD4CTUN1Z5STG21460 |  |  |  |  | IP dome camera, wall-mounted FOR Tunnel , IP67 - rated, vandal-resistant, with 5MP resolution [5 nr]; Unskilled Labor [1.31 h]; Electrician [1.74 h] | 86,105 |  | Z5 | CONS | TUN1 |

| ID | WBS | Activity | Duration | Start | Finish | Predecessors | Complete | Planned start | Planned finish | Calendar | Resources | Cost | Actual cost | RDH4-01-001-Zones-1 | RDH4-01-001-Phases-1 | RDH4-01-001-Networks-1 |
| --- | --- | --- | --- | --- | --- | --- | --- | --- | --- | --- | --- | --- | --- | --- | --- | --- |
|  | 31 | **RHD4-02-002 - Tunnel 1 - Stage 03** |  | 2026-08-10 | 2027-04-10 |  |  |  |  |  |  |  |  |  |  |  |
|  | 32 | **RHD4-02-002 - Tunnel 1 - STG 3 - Concrete works** |  | 2026-08-10 | 2027-04-10 |  |  |  |  |  |  |  |  |  |  |  |
|  | 33 | **RHD4-02-002 - Tunnel 1 - Concrete works - PC Foundation** |  | 2026-08-10 | 2026-09-10 |  |  |  |  |  |  |  |  |  |  |  |
| RHD4CTUN1Z5STG31000 |  | PC Footing Shuttering Works -TUN1-Z5-STG3-Concrete works -PC Foundation | 2d | 2026-08-10 A | 2026-08-30 A | RHD4ENMSTUN2000, RHD4ENMSTUN2010, RHD4ENMARAPPTU100, RHD4CTUN1Z5STG21060, RHD4CTUN1Z5STG21050, RHD4CTUN1Z5STG21030, RHD4CTUN1Z5STG21040, RHD4CTUN1Z5STG21250 | 100% | 2026-08-10 | 2026-08-11 |  | Supply and cast in place plain concrete 100 mm thickness lean concrete under the foundation for (Sewer and Storm Pump station) and (tunnels) [69.85 m2]; Carpenter [1281.36 h]; Skilled labor [60.99 h]; Unskilled Labor [183.07 h]; Equipment Opreator [3.81 h]; Bobcat [4.8 h] | 4,610.07 | 4,610.07 | Z5 | CONS | TUN1 |
| RHD4CTUN1Z5STG31010 |  | Casting of 100mm Blinding Concrete Under Foundation-TUN1-Z5-STG3-Concrete works -PC Foundation | 2d | 2026-08-12 A | 2026-09-01 A | RHD4CTUN1Z5STG31000 | 100% | 2026-08-12 | 2026-08-13 |  | Supply and cast in place plain concrete 100 mm thickness lean concrete under the foundation for (Sewer and Storm Pump station) and (tunnels) [628.65 m2]; Mason [411.87 h]; Unskilled Labor [1235.62 h]; Equipment Opreator [193.41 h]; Bobcat [32.24 h]; Concrete Mixer Truck [161.18 h]; Concrete Pump [48.35 h] | 41,490.65 | 41,490.65 | Z5 | CONS | TUN1 |
| RHD4CTUN1Z5STG31020 |  | Applying 2 layers of waterproofing bitumenous membrane 4mm below footings-TUN1-Z5-STG3-Concrete works -PC Foundation | 3d | 2026-08-15 A | 2026-09-07 A | RHD4CTUN1Z5STG31010 | 100% | 2026-08-15 | 2026-08-17 |  | Bituminous Sheet Waterproofing (2 layers of waterproofing bitumenous membrane 4mm below footings) [626.41 m2]; Skilled labor [199.73 h]; Unskilled Labor [199.73 h] | 53,871.66 | 53,871.66 | Z5 | CONS | TUN1 |
| RHD4CTUN1Z5STG31030 |  | Casting of 50mm Screed for Membrane Protection-TUN1-Z5-STG3-Concrete works -PC Foundation | 3d | 2026-08-18 A | 2026-09-10 A | RHD4CTUN1Z5STG31020 | 100% | 2026-08-18 | 2026-08-20 |  | Supply and cast in place screed concrete 50 mm thickness screed concrete for protecting waterproofing under the foundation for (Sewer and Storm Pump station) and (tunnels) [20.58 m2]; Mason [998.4 h]; Unskilled Labor [1664.15 h]; Equipment Opreator [125.02 h]; Bobcat [26.03 h]; Concrete Mixer Truck [130.25 h] | 658.61 | 658.61 | Z5 | CONS | TUN1 |
|  | 34 | **RHD4-02-002 - Tunnel 1 - Concrete works - RC Foundation** |  | 2026-08-22 | 2026-09-22 |  |  |  |  |  |  |  |  |  |  |  |
| RHD4CTUN1Z5STG31040 |  | Shuttering Works for RC Footing-TUN1-Z5-STG3-Concrete works -RC Foundation | 5d | 2026-08-22 A | 2026-09-16 A | RHD4ENMSTUN2010, RHD4CTUN1Z5STG31030 | 100% | 2026-08-22 | 2026-08-26 |  | Supply and cast in place reinforced concrete with fc'=50 Mpa for the sub- structures for (tunnels) for Footings [90.39 m3]; Carpenter [1199.35 h]; Skilled labor [57.07 h]; Unskilled Labor [171.31 h]; Equipment Opreator [3.59 h]; Bobcat [4.47 h] | 152,032.62 | 152,032.62 | Z5 | CONS | TUN1 |
| RHD4CTUN1Z5STG31050 |  | Steel fixing Works for RC Footing -TUN1-Z5-STG3-Concrete works -RC Foundation | 5d | 2026-08-27 A | 2026-09-20 A | RHD4CTUN1Z5STG31040 | 100% | 2026-08-27 | 2026-09-01 |  | Supply and cast in place reinforced concrete with fc'=50 Mpa for the sub- structures for (tunnels) for Footings [90.39 m3]; Skilled labor [28.53 h]; Unskilled Labor [114.24 h]; Steel Fixer [1370.66 h] | 152,032.62 | 152,032.62 | Z5 | CONS | TUN1 |
| RHD4CTUN1Z5STG31060 |  | casting of reinforced concrete for RC Footing -TUN1-Z5-STG3-Concrete works -RC Foundation | 4d | 2026-09-02 A | 2026-09-22 A | RHD4ENMARAPPTU100, RHD4CTUN1Z5STG31050 | 100% | 2026-09-02 | 2026-09-06 |  | Supply and cast in place reinforced concrete with fc'=50 Mpa for the sub- structures for (tunnels) for Footings [286.31 m3]; Mason [142.77 h]; Skilled labor [142.77 h]; Unskilled Labor [428.43 h]; Equipment Opreator [93.87 h]; Bobcat [5.55 h]; Concrete Mixer Truck [83.86 h]; Concrete Pump [27.88 h] | 481,577.96 | 481,577.96 | Z5 | CONS | TUN1 |
| RHD4CTUN1Z5STG31070 |  | De-shuttering and Curing Works for RC Footing -TUN1-Z5-STG3-Concrete works -RC Foundation | 5d | 2026-09-07 A | 2026-09-12 A | RHD4CTUN1Z5STG31060 | 100% | 2026-09-07 | 2026-09-11 | RHD4 - (7 Days - 8 Hours)-48 | Supply and cast in place reinforced concrete with fc'=50 Mpa for the sub- structures for (tunnels) for Footings [45.19 m3]; Carpenter [600.28 h]; Skilled labor [28.53 h]; Unskilled Labor [85.71 h]; Equipment Opreator [1.74 h]; Bobcat [2.18 h] | 76,016.31 | 76,016.31 | Z5 | CONS | TUN1 |
|  | 35 | **RHD4-02-002 - Tunnel 1 - Concrete works - Under Ground Walls** |  | 2026-09-12 | 2027-04-10 |  |  |  |  |  |  |  |  |  |  |  |
|  | 36 | **RHD4-02-002 - Tunnel 1 - Under Ground Walls - Stage 1 (Up to 3m)** |  | 2026-09-12 | 2026-10-07 |  |  |  |  |  |  |  |  |  |  |  |
| RHD4CTUN1Z5STG31080 |  | shuttering Works of Three Sides for Walls <Stage 01>-TUN1-Z5-STG3-Concrete works -Under Ground Walls | 5d | 2026-09-12 A | 2026-09-27 A | RHD4CTUN1Z5STG31070 | 100% | 2026-09-12 | 2026-09-16 |  | Supply and cast in place reinforced concrete with fc'=50 Mpa for the sub- structures for (tunnels) for Walls below ground level [38.81 m3]; Carpenter [348.27 h]; Skilled labor [16.55 h]; Unskilled Labor [49.77 h]; Equipment Opreator [1.09 h]; Bobcat [1.42 h] | 97,188.38 | 97,188.38 | Z5 | CONS | TUN1 |
| RHD4CTUN1Z5STG31090 |  | Steel fixing Works for Walls <Stage 01>-TUN1-Z5-STG3-Concrete works -Under Ground Walls | 5d | 2026-09-17 A | 2026-10-01 A | RHD4CTUN1Z5STG31080 | 100% | 2026-09-17 | 2026-09-22 |  | Supply and cast in place reinforced concrete with fc'=50 Mpa for the sub- structures for (tunnels) for Walls below ground level [51.75 m3]; Skilled labor [11.11 h]; Unskilled Labor [44.21 h]; Steel Fixer [530.14 h] | 129,584.5 | 129,584.5 | Z5 | CONS | TUN1 |
| RHD4CTUN1Z5STG31100 |  | shuttering Works of the 4th Side for Walls <Stage 01>-TUN1-Z5-STG3-Concrete works -Under Ground Walls | 5d | 2026-09-24 A | 2026-10-03 A | RHD4CTUN1Z5STG31090 | 100% | 2026-09-24 | 2026-09-29 |  | Supply and cast in place reinforced concrete with fc'=50 Mpa for the sub- structures for (tunnels) for Walls below ground level [12.94 m3]; Carpenter [115.66 h]; Skilled labor [5.55 h]; Unskilled Labor [16.55 h]; Equipment Opreator [0.33 h]; Bobcat [0.44 h] | 32,396.13 | 32,396.13 | Z5 | CONS | TUN1 |
| RHD4CTUN1Z5STG31110 |  | casting of reinforced concrete for Walls <Stage 01>-TUN1-Z5-STG3-Concrete works -Under Ground Walls | 4d | 2026-10-04 A | 2026-10-05 A | RHD4ENMARAPPTU100, RHD4CTUN1Z5STG31100 | 100% | 2026-09-30 | 2026-10-04 |  | Supply and cast in place reinforced concrete with fc'=50 Mpa for the sub- structures for (tunnels) for Walls below ground level [129.38 m3]; Mason [55.32 h]; Skilled labor [55.32 h]; Unskilled Labor [165.75 h]; Equipment Opreator [36.37 h]; Bobcat [2.18 h]; Concrete Mixer Truck [32.45 h]; Concrete Pump [10.78 h] | 323,961.26 | 323,961.26 | Z5 | CONS | TUN1 |
| RHD4CTUN1Z5STG31120 |  | De-shuttering and Curing Works for Walls <Stage 01>-TUN1-Z5-STG3-Concrete works -Under Ground Walls | 4d | 2026-10-06 A | 2026-10-07 A | RHD4CTUN1Z5STG31170, RHD4CTUN1Z5STG31110 | 100% | 2026-10-27 | 2026-10-30 | RHD4 - (7 Days - 8 Hours)-48 | Supply and cast in place reinforced concrete with fc'=50 Mpa for the sub- structures for (tunnels) for Walls below ground level [25.88 m3]; Carpenter [232.51 h]; Skilled labor [11.11 h]; Unskilled Labor [33.22 h]; Equipment Opreator [0.65 h]; Bobcat [0.87 h] | 64,792.25 | 64,792.25 | Z5 | CONS | TUN1 |
|  | 37 | **RHD4-02-002 - Tunnel 1 - Under Ground Walls - Stage 2 (Up to 6m)** |  | 2026-09-24 | 2026-10-14 |  |  |  |  |  |  |  |  |  |  |  |
| RHD4CTUN1Z5STG31130 |  | shuttering Works of Three Sides for Walls <Stage 02>-TUN1-Z5-STG3-Concrete works -Under Ground Walls | 4d | 2026-09-24 A | 2026-09-28 A | RHD4CTUN1Z5STG31080 SS, RHD4CTUN1Z5STG31110 | 100% | 2026-10-05 | 2026-10-08 |  | Supply and cast in place reinforced concrete with fc'=50 Mpa for the sub- structures for (tunnels) for Walls below ground level [38.81 m3]; Carpenter [348.27 h]; Skilled labor [16.55 h]; Unskilled Labor [49.77 h]; Equipment Opreator [1.09 h]; Bobcat [1.42 h] | 97,188.38 | 97,188.38 | Z5 | CONS | TUN1 |
| RHD4CTUN1Z5STG31140 |  | Steel fixing Works for Walls <Stage 02>-TUN1-Z5-STG3-Concrete works -Under Ground Walls | 4d | 2026-09-27 A | 2026-09-30 A | RHD4CTUN1Z5STG31130 | 100% | 2026-10-10 | 2026-10-13 |  | Supply and cast in place reinforced concrete with fc'=50 Mpa for the sub- structures for (tunnels) for Walls below ground level [51.75 m3]; Skilled labor [11.11 h]; Unskilled Labor [44.21 h]; Steel Fixer [530.14 h] | 129,584.5 | 129,584.5 | Z5 | CONS | TUN1 |
| RHD4CTUN1Z5STG31150 |  | shuttering Works of the 4th Side for Walls <Stage 02>-TUN1-Z5-STG3-Concrete works -Under Ground Walls | 4d | 2026-10-01 A | 2026-10-05 A | RHD4CTUN1Z5STG31140 | 100% |  |  |  | Supply and cast in place reinforced concrete with fc'=50 Mpa for the sub- structures for (tunnels) for Walls below ground level [12.94 m3]; Carpenter [115.66 h]; Skilled labor [5.55 h]; Unskilled Labor [16.55 h]; Equipment Opreator [0.33 h]; Bobcat [0.44 h] | 32,396.13 | 32,396.13 | Z5 | CONS | TUN1 |
| RHD4CTUN1Z5STG31160 |  | casting of reinforced concrete for Walls <Stage 02>-TUN1-Z5-STG3-Concrete works -Under Ground Walls | 4d | 2026-10-06 A | 2026-10-10 A | RHD4ENMARAPPTU100, RHD4CTUN1Z5STG31150 | 100% |  |  |  | Supply and cast in place reinforced concrete with fc'=50 Mpa for the sub- structures for (tunnels) for Walls below ground level [129.38 m3]; Mason [55.32 h]; Skilled labor [55.32 h]; Unskilled Labor [165.75 h]; Equipment Opreator [36.37 h]; Bobcat [2.18 h]; Concrete Mixer Truck [32.45 h]; Concrete Pump [10.78 h] | 323,961.26 | 323,961.26 | Z5 | CONS | TUN1 |
| RHD4CTUN1Z5STG31170 |  | De-shuttering and Curing Works for Walls <Stage 02>-TUN1-Z5-STG3-Concrete works -Under Ground Walls | 4d | 2026-10-11 A | 2026-10-14 A | RHD4CTUN1Z5STG31160 | 100% |  |  | RHD4 - (7 Days - 8 Hours)-48 | Supply and cast in place reinforced concrete with fc'=50 Mpa for the sub- structures for (tunnels) for Walls below ground level [25.88 m3]; Carpenter [232.51 h]; Skilled labor [11.11 h]; Unskilled Labor [33.22 h]; Equipment Opreator [0.65 h]; Bobcat [0.87 h] | 64,792.25 | 64,792.25 | Z5 | CONS | TUN1 |

| ID | WBS | Activity | Duration | Start | Finish | Predecessors | Complete | Remaining | Planned start | Planned finish | Calendar | Resources | Cost | Actual cost | RDH4-01-001-Zones-1 | RDH4-01-001-Phases-1 | RDH4-01-001-Networks-1 |
| --- | --- | --- | --- | --- | --- | --- | --- | --- | --- | --- | --- | --- | --- | --- | --- | --- | --- |
|  | 38 | **RHD4-02-002 - Tunnel 1 - Under Ground Walls - Stage 3 (Up to 9m)** |  | 2026-09-24 | 2027-04-10 |  |  |  |  |  |  |  |  |  |  |  |  |
| RHD4CTUN1Z5STG31180 |  | shuttering Works of Three Sides for Walls <Stage 03>-TUN1-Z5-STG3-Concrete works -Under Ground Walls | 4d | 2026-09-24 A | 2026-09-28 A | RHD4CTUN1Z5STG31130 SS | 100% |  | 2026-10-05 | 2026-10-08 |  | Supply and cast in place reinforced concrete with fc'=50 Mpa for the sub- structures for (tunnels) for Walls below ground level [38.81 m3]; Carpenter [348.27 h]; Skilled labor [16.55 h]; Unskilled Labor [49.77 h]; Equipment Opreator [1.09 h]; Bobcat [1.42 h] | 97,188.38 | 97,188.38 | Z5 | CONS | TUN1 |
| RHD4CTUN1Z5STG31190 |  | Steel fixing Works for Walls <Stage 03>-TUN1-Z5-STG3-Concrete works -Under Ground Walls | 4d | 2026-09-27 A | 2026-09-30 A | RHD4CTUN1Z5STG31180 | 100% |  | 2026-10-10 | 2026-10-13 |  | Supply and cast in place reinforced concrete with fc'=50 Mpa for the sub- structures for (tunnels) for Walls below ground level [51.75 m3]; Skilled labor [11.11 h]; Unskilled Labor [44.21 h]; Steel Fixer [530.14 h] | 129,584.5 | 129,584.5 | Z5 | CONS | TUN1 |
| RHD4CTUN1Z5STG31200 |  | shuttering Works of the 4th Side for Walls <Stage 03>-TUN1-Z5-STG3-Concrete works -Under Ground Walls | 4d | 2026-10-01 A | 2026-10-05 A | RHD4CTUN1Z5STG31190 | 100% |  |  |  |  | Supply and cast in place reinforced concrete with fc'=50 Mpa for the sub- structures for (tunnels) for Walls below ground level [12.94 m3]; Carpenter [115.66 h]; Skilled labor [5.55 h]; Unskilled Labor [16.55 h]; Equipment Opreator [0.33 h]; Bobcat [0.44 h] | 32,396.13 | 32,396.13 | Z5 | CONS | TUN1 |
| RHD4CTUN1Z5STG31210 |  | casting of reinforced concrete for Walls <Stage 03>-TUN1-Z5-STG3-Concrete works -Under Ground Walls | 4d | 2026-10-06 A | 2027-01-05 | RHD4ENMARAPPTU100, RHD4CTUN1Z5STG31200 | 90% | 4d | 2026-10-06 | 2026-10-10 |  | Supply and cast in place reinforced concrete with fc'=50 Mpa for the sub- structures for (tunnels) for Walls below ground level [129.38 m3]; Mason [55.32 h]; Skilled labor [55.32 h]; Unskilled Labor [165.75 h]; Equipment Opreator [36.37 h]; Bobcat [2.18 h]; Concrete Mixer Truck [32.45 h]; Concrete Pump [10.78 h] | 323,961.26 | 291,565.13 | Z5 | CONS | TUN1 |
| RHD4CTUN1Z5STG31220 |  | De-shuttering and Curing Works for Walls <Stage 03>-TUN1-Z5-STG3-Concrete works -Under Ground Walls | 4d | 2027-01-06 | 2027-01-10 | RHD4CTUN1Z5STG31210 |  |  |  |  |  | Supply and cast in place reinforced concrete with fc'=50 Mpa for the sub- structures for (tunnels) for Walls below ground level [25.88 m3]; Carpenter [232.51 h]; Skilled labor [11.11 h]; Unskilled Labor [33.22 h]; Equipment Opreator [0.65 h]; Bobcat [0.87 h] | 64,792.25 |  | Z5 | CONS | TUN1 |
| RHD4CTUN1Z5STG31230 |  | Installation of 2 layers of 4mm bitumenous waterproofing membrane <Stage 03>-TUN1-Z5-STG3-Concrete works -Under Ground W | 8d | 2027-03-23 | 2027-03-31 | RHD4CTUN1Z5STG31170, RHD4CTUN1Z5STG11170, RHD4CTUN1Z5STG31220 |  |  |  |  |  | Bituminous Sheet Waterproofing (2 layers of waterproofing bitumenous membrane 4mm including protection board for substructure vertical and top surfaces in contact with soil) [2365.85 m2]; Skilled labor [262.57 h]; Unskilled Labor [262.57 h] | 203,463.34 |  | Z5 | CONS | TUN1 |
| RHD4CTUN1Z5STG31240 |  | Installation of Protection board for waterproofing <Stage 03>-TUN1-Z5-STG3-Concrete works -Under Ground Walls | 8d | 2027-04-01 | 2027-04-10 | RHD4CTUN1Z5STG31120, RHD4CTUN1Z5STG11240, RHD4CTUN1Z5STG21900, RHD4CTUN1Z5STG31230 |  |  |  |  |  | Bituminous Sheet Waterproofing (2 layers of waterproofing bitumenous membrane 4mm including protection board for substructure vertical and top surfaces in contact with soil) [591.46 m2]; Skilled labor [65.67 h]; Unskilled Labor [65.67 h] | 50,865.84 |  | Z5 | CONS | TUN1 |
|  | 5 | **RHD4-02-002 - Tunnel 1 - Stage 01** |  | 2026-10-15 | 2027-03-30 |  |  |  |  |  |  |  |  |  |  |  |  |
|  | 6 | **RHD4-02-002 - Tunnel 1 - STG 1 - Concrete Works** |  | 2026-10-15 | 2027-03-30 |  |  |  |  |  |  |  |  |  |  |  |  |
|  | 7 | **RHD4-02-002 - Tunnel 1 - Concrete Works - PC Foundation** |  | 2026-10-15 | 2027-01-10 |  |  |  |  |  |  |  |  |  |  |  |  |
| RHD4CTUN1Z5STG11000 |  | PC Footing Shuttering Works -TUN1-Z5-STG1-Concrete Works-PC Foundation | 2d | 2026-10-15 A | 2027-01-03 | RHD4CZ5L07RW1000, RHD4ENMSTUN2000, RHD4ENMSTUN2010, RHD4ENMARAPPTU100, RHD4CTUN1Z5STG21060, RHD4ENTUN1APPSTC1200, RHD4GNPPSD1100, RHD4ENSDZ6SUBRD220, RHD4ENSDTUN1SUB1200, RHD4ENTUN1APPSTC1100, RHD4ENSDTUN1SUB1100, RHD4CTUN1Z5STG21050, RHD4CTUN1Z5STG21030, RHD4CTUN1Z5STG21040, RHD4CTUN1Z5STG21250, RHD4ENTUN1APPSTC1000 | 50% | 2d | 2026-10-15 | 2026-10-17 |  | Supply and cast in place plain concrete 100 mm thickness lean concrete under the foundation for (Sewer and Storm Pump station) and (tunnels) [69.85 m2]; Carpenter [1281.36 h]; Skilled labor [60.99 h]; Unskilled Labor [183.07 h]; Equipment Opreator [3.81 h]; Bobcat [4.8 h] | 4,610.07 | 2,305.04 | Z5 | CONS | TUN1 |
| RHD4CTUN1Z5STG11010 |  | Casting of 100mm Blinding Concrete Under Foundation-TUN1-Z5-STG1-Concrete Works-PC Foundation | 2d | 2026-10-18 A | 2027-01-05 | RHD4CTUN1Z5STG11000 | 50% | 2d | 2026-10-18 | 2026-10-19 |  | Supply and cast in place plain concrete 100 mm thickness lean concrete under the foundation for (Sewer and Storm Pump station) and (tunnels) [628.65 m2]; Mason [411.87 h]; Unskilled Labor [1235.62 h]; Equipment Opreator [193.41 h]; Bobcat [32.24 h]; Concrete Mixer Truck [161.18 h]; Concrete Pump [48.35 h] | 41,490.65 | 20,745.33 | Z5 | CONS | TUN1 |
| RHD4CTUN1Z5STG11020 |  | Applying 2 layers of waterproofing bitumenous membrane 4mm below footings-TUN1-Z5-STG1-Concrete Works-PC Foundation | 2d | 2026-10-20 A | 2027-01-07 | RHD4CTUN1Z5STG11010 | 50% | 2d | 2026-10-20 | 2026-10-21 |  | Bituminous Sheet Waterproofing (2 layers of waterproofing bitumenous membrane 4mm below footings) [626.41 m2]; Skilled labor [199.73 h]; Unskilled Labor [199.73 h] | 53,871.66 | 26,935.83 | Z5 | CONS | TUN1 |
| RHD4CTUN1Z5STG11030 |  | Casting of 50mm Screed for Membrane Protection-TUN1-Z5-STG1-Concrete Works-PC Foundation | 2d | 2026-10-22 A | 2027-01-10 | RHD4CTUN1Z5STG11020 | 50% | 2d | 2026-10-22 | 2026-10-24 |  | Supply and cast in place screed concrete 50 mm thickness screed concrete for protecting waterproofing under the foundation for (Sewer and Storm Pump station) and (tunnels) [20.58 m2]; Mason [998.4 h]; Unskilled Labor [1664.15 h]; Equipment Opreator [125.02 h]; Bobcat [26.03 h]; Concrete Mixer Truck [130.25 h] | 658.61 | 329.31 | Z5 | CONS | TUN1 |
|  | 8 | **RHD4-02-002 - Tunnel 1 - Concrete Works - RC Foundation** |  | 2026-10-27 | 2027-01-30 |  |  |  |  |  |  |  |  |  |  |  |  |
| RHD4CTUN1Z5STG11040 |  | Shuttering Works for RC Footing-TUN1-Z5-STG1-Concrete Works-RC Foundation | 4d | 2026-10-27 A | 2027-01-14 | RHD4ENMSTUN2000, RHD4ENMSTUN2010, RHD4ENTUN1APPSTC1100, RHD4GNPPSD1100, RHD4ENSDZ6SUBRD220, RHD4ENSDTUN1SUB1100, RHD4CTUN1Z5STG11030, RHD4ENTUN1APPSTC1000 | 50% | 4d | 2026-10-27 | 2026-10-31 |  | Supply and cast in place reinforced concrete with fc'=50 Mpa for the sub- structures for (tunnels) for Footings [90.39 m3]; Carpenter [1199.35 h]; Skilled labor [57.07 h]; Unskilled Labor [171.31 h]; Equipment Opreator [3.59 h]; Bobcat [4.47 h] | 152,035.98 | 76,017.99 | Z5 | CONS | TUN1 |
| RHD4CTUN1Z5STG11050 |  | Steel fixing Works for RC Footing -TUN1-Z5-STG1-Concrete Works-RC Foundation | 5d | 2026-10-29 A | 2027-01-20 | RHD4ENTUN1APPSTC1200, RHD4GNPPSD1100, RHD4ENSDZ6SUBRD220, RHD4ENSDTUN1SUB1200, RHD4CTUN1Z5STG11040 | 50% | 5d | 2026-10-29 | 2026-11-03 |  | Supply and cast in place reinforced concrete with fc'=50 Mpa for the sub- structures for (tunnels) for Footings [90.39 m3]; Skilled labor [28.53 h]; Unskilled Labor [114.24 h]; Steel Fixer [1370.66 h] | 152,035.98 | 76,017.99 | Z5 | CONS | TUN1 |
| RHD4CTUN1Z5STG11060 |  | casting of reinforced concrete for RC Footing -TUN1-Z5-STG1-Concrete Works-RC Foundation | 4d | 2026-10-31 A | 2027-01-25 | RHD4ENMARAPPTU100, RHD4CTUN1Z5STG11050 | 50% | 4d | 2026-11-01 | 2026-11-04 |  | Supply and cast in place reinforced concrete with fc'=50 Mpa for the sub- structures for (tunnels) for Footings [286.31 m3]; Mason [142.77 h]; Skilled labor [142.77 h]; Unskilled Labor [428.43 h]; Equipment Opreator [93.87 h]; Bobcat [5.55 h]; Concrete Mixer Truck [83.86 h]; Concrete Pump [27.88 h] | 481,577.96 | 240,788.98 | Z5 | CONS | TUN1 |
| RHD4CTUN1Z5STG11070 |  | De-shuttering and Curing Works for RC Footing -TUN1-Z5-STG1-Concrete Works-RC Foundation | 5d | 2026-11-01 A | 2027-01-30 | RHD4CTUN1Z5STG11060 | 50% | 5d | 2026-11-01 | 2026-11-05 | RHD4 - (7 Days - 8 Hours)-48 | Supply and cast in place reinforced concrete with fc'=50 Mpa for the sub- structures for (tunnels) for Footings [45.19 m3]; Carpenter [600.28 h]; Skilled labor [28.53 h]; Unskilled Labor [85.71 h]; Equipment Opreator [1.74 h]; Bobcat [2.18 h] | 76,009.58 | 38,004.79 | Z5 | CONS | TUN1 |
|  | 9 | **RHD4-02-002 - Tunnel 1 - Concrete Works - Under Ground Walls** |  | 2027-01-31 | 2027-03-30 |  |  |  |  |  |  |  |  |  |  |  |  |
|  | 10 | **RHD4-02-002 - Tunnel 1 - Under Ground Walls - Stage 1 (Up to 3m)** |  | 2027-01-31 | 2027-02-24 |  |  |  |  |  |  |  |  |  |  |  |  |
| RHD4CTUN1Z5STG11080 |  | shuttering Works of Three Sides for Walls <Stage 01>-TUN1-Z5-STG1-Concrete Works-Under Ground Walls | 5d | 2027-01-31 | 2027-02-04 | RHD4ENMSTUN2000, RHD4ENMSTUN2010, RHD4CTUN1Z5STG11070 |  |  |  |  |  | Supply and cast in place reinforced concrete with fc'=50 Mpa for the sub- structures for (tunnels) for Walls below ground level [38.81 m3]; Carpenter [348.27 h]; Skilled labor [16.55 h]; Unskilled Labor [49.77 h]; Equipment Opreator [1.09 h]; Bobcat [1.42 h] | 97,188.38 |  | Z5 | CONS | TUN1 |
| RHD4CTUN1Z5STG11090 |  | Steel fixing Works for Walls <Stage 01>-TUN1-Z5-STG1-Concrete Works-Under Ground Walls | 5d | 2027-02-06 | 2027-02-10 | RHD4CTUN1Z5STG11080 |  |  |  |  |  | Supply and cast in place reinforced concrete with fc'=50 Mpa for the sub- structures for (tunnels) for Walls below ground level [51.75 m3]; Skilled labor [11.11 h]; Unskilled Labor [44.21 h]; Steel Fixer [530.14 h] | 129,584.5 |  | Z5 | CONS | TUN1 |
| RHD4CTUN1Z5STG11100 |  | shuttering Works of the 4th Side for Walls <Stage 01>-TUN1-Z5-STG1-Concrete Works-Under Ground Walls | 4d | 2027-02-11 | 2027-02-15 | RHD4CTUN1Z5STG11090 |  |  |  |  |  | Supply and cast in place reinforced concrete with fc'=50 Mpa for the sub- structures for (tunnels) for Walls below ground level [12.94 m3]; Carpenter [115.66 h]; Skilled labor [5.55 h]; Unskilled Labor [16.55 h]; Equipment Opreator [0.33 h]; Bobcat [0.44 h] | 32,396.13 |  | Z5 | CONS | TUN1 |
| RHD4CTUN1Z5STG11110 |  | casting of reinforced concrete for Walls <Stage 01>-TUN1-Z5-STG1-Concrete Works-Under Ground Walls | 4d | 2027-02-16 | 2027-02-20 | RHD4ENMARAPPTU100, RHD4CTUN1Z5STG11100 |  |  |  |  |  | Supply and cast in place reinforced concrete with fc'=50 Mpa for the sub- structures for (tunnels) for Walls below ground level [129.38 m3]; Mason [55.32 h]; Skilled labor [55.32 h]; Unskilled Labor [165.75 h]; Equipment Opreator [36.37 h]; Bobcat [2.18 h]; Concrete Mixer Truck [32.45 h]; Concrete Pump [10.78 h] | 323,961.26 |  | Z5 | CONS | TUN1 |
| RHD4CTUN1Z5STG11120 |  | De-shuttering and Curing Works for Walls <Stage 01>-TUN1-Z5-STG1-Concrete Works-Under Ground Walls | 4d | 2027-02-21 | 2027-02-24 | RHD4CTUN1Z5STG11110 |  |  |  |  | RHD4 - (7 Days - 8 Hours)-48 | Supply and cast in place reinforced concrete with fc'=50 Mpa for the sub- structures for (tunnels) for Walls below ground level [25.88 m3]; Carpenter [232.51 h]; Skilled labor [11.11 h]; Unskilled Labor [33.22 h]; Equipment Opreator [0.65 h]; Bobcat [0.87 h] | 64,792.25 |  | Z5 | CONS | TUN1 |

| ID | WBS | Activity | Duration | Start | Finish | Predecessors | Complete | Planned start | Planned finish | Calendar | Resources | Cost | Actual cost | RDH4-01-001-Zones-1 | RDH4-01-001-Phases-1 | RDH4-01-001-Networks-1 |
| --- | --- | --- | --- | --- | --- | --- | --- | --- | --- | --- | --- | --- | --- | --- | --- | --- |
|  | 11 | **RHD4-02-002 - Tunnel 1 - Under Ground Walls - Stage 2 (Up to 6m)** |  | 2027-02-25 | 2027-03-22 |  |  |  |  |  |  |  |  |  |  |  |
| RHD4CTUN1Z5STG11130 |  | shuttering Works of Three Sides for Walls <Stage 02>-TUN1-Z5-STG1-Concrete Works-Under Ground Walls | 4d | 2027-02-25 | 2027-03-01 | RHD4CTUN1Z5STG11080 SS, RHD4CTUN1Z5STG11110, RHD4CTUN1Z5STG11120 |  |  |  |  | Supply and cast in place reinforced concrete with fc'=50 Mpa for the sub- structures for (tunnels) for Walls below ground level [38.81 m3]; Carpenter [348.27 h]; Skilled labor [16.55 h]; Unskilled Labor [49.77 h]; Equipment Opreator [1.09 h]; Bobcat [1.42 h] | 97,188.38 |  | Z5 | CONS | TUN1 |
| RHD4CTUN1Z5STG11140 |  | Steel fixing Works for Walls <Stage 02>-TUN1-Z5-STG1-Concrete Works-Under Ground Walls | 4d | 2027-03-02 | 2027-03-06 | RHD4CTUN1Z5STG11130 |  |  |  |  | Supply and cast in place reinforced concrete with fc'=50 Mpa for the sub- structures for (tunnels) for Walls below ground level [51.75 m3]; Skilled labor [11.11 h]; Unskilled Labor [44.21 h]; Steel Fixer [530.14 h] | 129,584.5 |  | Z5 | CONS | TUN1 |
| RHD4CTUN1Z5STG11150 |  | shuttering Works of the 4th Side for Walls <Stage 02>-TUN1-Z5-STG1-Concrete Works-Under Ground Walls | 4d | 2027-03-07 | 2027-03-14 | RHD4CTUN1Z5STG11140 |  |  |  |  | Supply and cast in place reinforced concrete with fc'=50 Mpa for the sub- structures for (tunnels) for Walls below ground level [12.94 m3]; Carpenter [115.66 h]; Skilled labor [5.55 h]; Unskilled Labor [16.55 h]; Equipment Opreator [0.33 h]; Bobcat [0.44 h] | 32,396.13 |  | Z5 | CONS | TUN1 |
| RHD4CTUN1Z5STG11160 |  | casting of reinforced concrete for Walls <Stage 02>-TUN1-Z5-STG1-Concrete Works-Under Ground Walls | 4d | 2027-03-15 | 2027-03-18 | RHD4ENMARAPPTU100, RHD4CTUN1Z5STG11150 |  |  |  |  | Supply and cast in place reinforced concrete with fc'=50 Mpa for the sub- structures for (tunnels) for Walls below ground level [129.38 m3]; Mason [55.32 h]; Skilled labor [55.32 h]; Unskilled Labor [165.75 h]; Equipment Opreator [36.37 h]; Bobcat [2.18 h]; Concrete Mixer Truck [32.45 h]; Concrete Pump [10.78 h] | 323,961.26 |  | Z5 | CONS | TUN1 |
| RHD4CTUN1Z5STG11170 |  | De-shuttering and Curing Works for Walls <Stage 02>-TUN1-Z5-STG1-Concrete Works-Under Ground Walls | 4d | 2027-03-19 | 2027-03-22 | RHD4CTUN1Z5STG11160 |  |  |  | RHD4 - (7 Days - 8 Hours)-48 | Supply and cast in place reinforced concrete with fc'=50 Mpa for the sub- structures for (tunnels) for Walls below ground level [25.88 m3]; Carpenter [232.51 h]; Skilled labor [11.11 h]; Unskilled Labor [33.22 h]; Equipment Opreator [0.65 h]; Bobcat [0.87 h] | 64,792.25 |  | Z5 | CONS | TUN1 |
|  | 12 | **RHD4-02-002 - Tunnel 1 - Under Ground Walls - Stage 3 (Up to 9m)** |  | 2027-02-25 | 2027-03-30 |  |  |  |  |  |  |  |  |  |  |  |
| RHD4CTUN1Z5STG11180 |  | shuttering Works of Three Sides for Walls <Stage 03>-TUN1-Z5-STG1-Concrete Works-Under Ground Walls | 4d | 2027-02-25 | 2027-03-01 | RHD4CTUN1Z5STG11130 SS |  |  |  |  | Supply and cast in place reinforced concrete with fc'=50 Mpa for the sub- structures for (tunnels) for Walls below ground level [38.81 m3]; Carpenter [348.27 h]; Skilled labor [16.55 h]; Unskilled Labor [49.77 h]; Equipment Opreator [1.09 h]; Bobcat [1.42 h] | 97,188.38 |  | Z5 | CONS | TUN1 |
| RHD4CTUN1Z5STG11190 |  | Steel fixing Works for Walls <Stage 03>-TUN1-Z5-STG1-Concrete Works-Under Ground Walls | 4d | 2027-03-02 | 2027-03-06 | RHD4CTUN1Z5STG11180 |  |  |  |  | Supply and cast in place reinforced concrete with fc'=50 Mpa for the sub- structures for (tunnels) for Walls below ground level [51.75 m3]; Skilled labor [11.11 h]; Unskilled Labor [44.21 h]; Steel Fixer [530.14 h] | 129,584.5 |  | Z5 | CONS | TUN1 |
| RHD4CTUN1Z5STG11200 |  | shuttering Works of the 4th Side for Walls <Stage 03>-TUN1-Z5-STG1-Concrete Works-Under Ground Walls | 4d | 2027-03-07 | 2027-03-14 | RHD4CTUN1Z5STG11190 |  |  |  |  | Supply and cast in place reinforced concrete with fc'=50 Mpa for the sub- structures for (tunnels) for Walls below ground level [12.94 m3]; Carpenter [115.66 h]; Skilled labor [5.55 h]; Unskilled Labor [16.55 h]; Equipment Opreator [0.33 h]; Bobcat [0.44 h] | 32,396.13 |  | Z5 | CONS | TUN1 |
| RHD4CTUN1Z5STG11210 |  | casting of reinforced concrete for Walls <Stage 03>-TUN1-Z5-STG1-Concrete Works-Under Ground Walls | 3d | 2027-03-15 | 2027-03-17 | RHD4ENMARAPPTU100, RHD4CTUN1Z5STG11200 |  |  |  |  | Supply and cast in place reinforced concrete with fc'=50 Mpa for the sub- structures for (tunnels) for Walls below ground level [129.38 m3]; Mason [55.32 h]; Skilled labor [55.32 h]; Unskilled Labor [165.75 h]; Equipment Opreator [36.37 h]; Bobcat [2.18 h]; Concrete Mixer Truck [32.45 h]; Concrete Pump [10.78 h] | 323,961.26 |  | Z5 | CONS | TUN1 |
| RHD4CTUN1Z5STG11220 |  | De-shuttering and Curing Works for Walls <Stage 03>-TUN1-Z5-STG1-Concrete Works-Under Ground Walls | 4d | 2027-03-18 | 2027-03-21 | RHD4CTUN1Z5STG11210 |  |  |  | RHD4 - (7 Days - 8 Hours)-48 | Supply and cast in place reinforced concrete with fc'=50 Mpa for the sub- structures for (tunnels) for Walls below ground level [25.88 m3]; Carpenter [232.51 h]; Skilled labor [11.11 h]; Unskilled Labor [33.22 h]; Equipment Opreator [0.65 h]; Bobcat [0.87 h] | 64,792.25 |  | Z5 | CONS | TUN1 |
| RHD4CTUN1Z5STG11230 |  | Installation of 2 layers of bitumenous waterproofing membrane<Stage 03>-TUN1-Z5-STG1-Concrete Works-Under Ground Walls | 4d | 2027-03-22 | 2027-03-25 | RHD4CTUN1Z5STG11220 |  |  |  |  | Bituminous Sheet Waterproofing (2 layers of waterproofing bitumenous membrane 4mm including protection board for substructure vertical and top surfaces in contact with soil) [2365.85 m2]; Skilled labor [262.57 h]; Unskilled Labor [262.57 h] | 203,463.34 |  | Z5 | CONS | TUN1 |
| RHD4CTUN1Z5STG11240 |  | Installation of Protection board for waterproofing <Stage 03>-TUN1-Z5-STG1-Concrete Works-Under Ground Walls | 4d | 2027-03-27 | 2027-03-30 | RHD4CTUN1Z5STG11120, RHD4CTUN1Z5STG11170, RHD4CTUN1Z5STG11230 |  |  |  |  | Bituminous Sheet Waterproofing (2 layers of waterproofing bitumenous membrane 4mm including protection board for substructure vertical and top surfaces in contact with soil) [591.46 m2]; Skilled labor [65.67 h]; Unskilled Labor [65.67 h] | 50,865.84 |  | Z5 | CONS | TUN1 |
|  | 1 | **Stations** |  | 2026-10-20 | 2028-05-08 |  |  |  |  |  |  |  |  |  |  |  |
|  | 160 | **Storm Lift Station 01** |  | 2026-10-27 | 2028-05-08 |  |  |  |  |  |  |  |  |  |  |  |
|  | 161 | **RHD4-02-002-Storm Lift Station 01-Wet Well Structure And Valve Chamber** |  | 2026-10-27 | 2027-09-06 |  |  |  |  |  |  |  |  |  |  |  |
|  | 162 | **RHD4-02-002-STL1-Wet Well** |  | 2026-10-27 | 2027-09-06 |  |  |  |  |  |  |  |  |  |  |  |
|  | 163 | **RHD4-02-002-STL1-B07-Concrete works Wet Well** |  | 2026-10-27 | 2027-06-14 |  |  |  |  |  |  |  |  |  |  |  |
| RHD4CSTL1B07D021001 |  | Lean Concrete for Plain Concrete for Wet Well - (B7.03 00 00 .01)-STL1-B07-D02 | 6d | 2026-10-27 A | 2026-11-01 A | RHD4CTUN1Z5STG31220, RHD4CTUN1Z5STG11220, RHD4CZ3C083PT4200 | 100% | 2026-10-27 | 2026-11-02 |  | Supply and cast in place plain concrete 100 mm thickness lean concrete under the foundation for (Sewer and Storm Pump station) and (tunnels) [13.85 m2] | 913.77 | 913.77 | Z5 | CONS | STR |
| RHD4CSTL1B07D021002 |  | Water proofing membrance for Wet well structure - (B7.07 13 13.01)-STL1-B07-D02 | 8d | 2027-05-23 | 2027-05-31 | RHD4CSTL1B07D021001, RHD4PRSHLDOSLFS1200, RHD4PRSHLSTAGLFS1200 |  |  |  |  | Bituminous Sheet Waterproofing (2 layers of waterproofing bitumenous membrane 4mm below footings) [12.49 m2] | 1,074.31 |  | Z5 | CONS | ARC |
| RHD4CSTL1B07D021003 |  | Screed for Wet well structurefor Wet Well - (B7.03 00 00 .04)-STL1-B07-D02 | 3d | 2027-06-01 | 2027-06-03 | RHD4CSTL1B07D021002, RHD4ENSTL1APPSTC1000 |  |  |  |  | Supply and cast in place screed concrete 50 mm thickness screed concrete for protecting waterproofing under the foundation for (Sewer and Storm Pump station) and (tunnels) [273.87 m2] | 8,763.89 |  | Z5 | CONS | STR |
| RHD4CSTL1B07D021004 |  | Steel Fixing foundations for Wet well structure - (B7.03 00 00 .05)-STL1-B07-D02 | 4d | 2027-06-05 | 2027-06-08 | RHD4CSTL1B07D021003, RHD4ENSTL1APPSTC1000 |  |  |  |  | Supply and cast in place reinforced concrete with fc'=31 Mpa for the sub- structures for (Sewer and Storm Pump station) and (tunnels) for Footings [3.99 m3] | 6,134.47 |  | Z5 | CONS | STR |
| RHD4CSTL1B07D021005 |  | Formwork foundations for Wet well structure - (B7.03 00 00 .05)-STL1-B07-D02 | 2d | 2027-06-09 | 2027-06-10 | RHD4CSTL1B07D021004, RHD4ENSTL1APPSTC1000 |  |  |  |  | Supply and cast in place reinforced concrete with fc'=31 Mpa for the sub- structures for (Sewer and Storm Pump station) and (tunnels) for Footings [3.99 m3] | 6,134.47 |  | Z5 | CONS | STR |
| RHD4CSTL1B07D021006 |  | RC Casting foundations for Wet well structure - (B7.03 00 00 .05)-STL1-B07-D02 | 3d | 2027-06-12 | 2027-06-14 | RHD4CSTL1B07D021005 |  |  |  |  | Supply and cast in place reinforced concrete with fc'=31 Mpa for the sub- structures for (Sewer and Storm Pump station) and (tunnels) for Footings [3.99 m3] | 6,134.47 |  | Z5 | CONS | STR |

| ID | WBS | Activity | Duration | Start | Finish | Predecessors | Resources | Cost | RDH4-01-001-Zones-1 | RDH4-01-001-Phases-1 | RDH4-01-001-Networks-1 |
| --- | --- | --- | --- | --- | --- | --- | --- | --- | --- | --- | --- |
|  | 164 | **RHD4-02-002-STL1-B07-Valve Chamber** |  | 2027-06-15 | 2027-07-04 |  |  |  |  |  |  |
| RHD4CSTL1B07D021008 |  | Water proofing membrance for Wet well structure - (B7.07 13 13.01)-STL1-B07-D02 | 4d | 2027-06-15 | 2027-06-19 | RHD4PRSHLDOSLFS1200, RHD4PRSHLSTAGLFS1200, RHD4CSTL1B07D021006 | Bituminous Sheet Waterproofing (2 layers of waterproofing bitumenous membrane 4mm below footings) [12.49 m2] | 1,074.31 | Z5 | CONS | ARC |
| RHD4CSTL1B07D021009 |  | Screed for Wet well structure - (B7.03 00 00 .04)-STL1-B07-D02 | 3d | 2027-06-20 | 2027-06-22 | RHD4CSTL1B07D021008, RHD4ENSTL1APPSTC1000 | Supply and cast in place screed concrete 50 mm thickness screed concrete for protecting waterproofing under the foundation for (Sewer and Storm Pump station) and (tunnels) [273.87 m2] | 8,763.89 | Z5 | CONS | STR |
| RHD4CSTL1B07D021010 |  | Steel Fixing foundations for Wet well structure - (B7.03 00 00 .05)-STL1-B07-D02 | 4d | 2027-06-23 | 2027-06-27 | RHD4CSTL1B07D021009, RHD4ENSTL1APPSTC1000 | Supply and cast in place reinforced concrete with fc'=31 Mpa for the sub- structures for (Sewer and Storm Pump station) and (tunnels) for Footings [3.99 m3] | 6,134.47 | Z5 | CONS | STR |
| RHD4CSTL1B07D021011 |  | Formwork foundations for Wet well structure - (B7.03 00 00 .05)-STL1-B07-D02 | 4d | 2027-06-28 | 2027-07-01 | RHD4CSTL1B07D021010, RHD4ENSTL1APPSTC1000 | Supply and cast in place reinforced concrete with fc'=31 Mpa for the sub- structures for (Sewer and Storm Pump station) and (tunnels) for Footings [3.99 m3] | 6,134.47 | Z5 | CONS | STR |
| RHD4CSTL1B07D021012 |  | RC Casting foundations for Wet well structure - (B7.03 00 00 .05)-STL1-B07-D02 | 2d | 2027-07-03 | 2027-07-04 | RHD4CSTL1B07D021011 | Supply and cast in place reinforced concrete with fc'=31 Mpa for the sub- structures for (Sewer and Storm Pump station) and (tunnels) for Footings [3.99 m3] | 6,134.47 | Z5 | CONS | STR |
|  | 165 | **RHD4-02-002-STL1-B07-Retaining Walls & Slab** |  | 2027-07-05 | 2027-07-24 |  |  |  |  |  |  |
| RHD4CSTL1B07D021013 |  | Steel Fixing for Wet well structure - (B7.03 00 00 .07)-STL1-B07-D02 | 5d | 2027-07-05 | 2027-07-10 | RHD4CSTL1B07D021012, RHD4ENSTL1APPSTC1000 | Supply and cast in place reinforced concrete with fc'=31 Mpa for the sub- structures for (Sewer and Storm Pump station) and (tunnels) for Walls below ground level [59.37 m3] | 159,291.59 | Z5 | CONS | STR |
| RHD4CSTL1B07D021014 |  | Formwork for Wet well structure - (B7.03 00 00 .07)-STL1-B07-D02 | 4d | 2027-07-11 | 2027-07-14 | RHD4CSTL1B07D021013, RHD4ENSTL1APPSTC1000 | Supply and cast in place reinforced concrete with fc'=31 Mpa for the sub- structures for (Sewer and Storm Pump station) and (tunnels) for Walls below ground level [59.37 m3] | 159,291.59 | Z5 | CONS | STR |
| RHD4CSTL1B07D021015 |  | RC Casting for Wet well structure - (B7.03 00 00 .07)-STL1-B07-D02 | 4d | 2027-07-15 | 2027-07-19 | RHD4CSTL1B07D021014, RHD4ENSTL1APPSTC1000 | Supply and cast in place reinforced concrete with fc'=31 Mpa for the sub- structures for (Sewer and Storm Pump station) and (tunnels) for Walls below ground level [59.37 m3] | 159,291.59 | Z5 | CONS | STR |
| RHD4CSTL1B07D021016 |  | Water protection Board membrance for Wet well structure - (B7.07 13 13.02)-STL1-B07-D02 | 4d | 2027-07-20 | 2027-07-24 | RHD4CSTL1B07D021015, RHD4PRSHLDOSLFS1200, RHD4PRSHLSTAGLFS1200 | Bituminous Sheet Waterproofing (2 layers of waterproofing bitumenous membrane 4mm including protection board for substructure vertical and top surfaces in contact with soil) [484.99 m2] | 41,709.14 | Z5 | CONS | ARC |
|  | 166 | **RHD4-02-002-STL1-B07-Finishes** |  | 2027-07-25 | 2027-08-03 |  |  |  |  |  |  |
| RHD4CSTL1B07D091017 |  | Epoxy Coating for Wet well structure - (B7.09 96 56.01)-STL1-B07-D09 | 4d | 2027-07-25 | 2027-07-28 | RHD4CSTL1B07D021016, RHD4PRSHLDOSLFS1600, RHD4PRSHLSTAGLFS1600, RHD4ENSTL1APPARC1100, RHD4GNPPSD1100, RHD4ENSDZ6SUBRD220, RHD4ENSDSTL1SUB2000 | Epoxy coating two perpendicular layers for inner surfaces for Tank walls, footings and bottom of the roof and for room flooring [442.75 m2] | 35,420.4 | Z5 | CONS | ARC |
| RHD4CSTL1B07D091018 |  | External Plastering for walls 20mm - (B7.09 24 00.02)-STL1-B07-D09 | 5d | 2027-07-29 | 2027-08-03 | RHD4CSTL1B07D091017, RHD4ENSTL1APPARC1100, RHD4GNPPSD1100, RHD4ENSDZ6SUBRD220, RHD4ENSDSTL1SUB2000 | Internal plastering to walls and columns min. 20mm thick with cement mortar [33.21 m2] | 1,826.73 | Z5 | CONS | ARC |
|  | 167 | **RHD4-02-002-STL1-B07-Metal Doors** |  | 2027-08-04 | 2027-08-09 |  |  |  |  |  |  |
| RHD4CSTL1B07D051022 |  | metal floor door size (1000x1000mm) for Wet well structure - (B7.08 31 13.04)-STL1-B07-D05 | 5d | 2027-08-04 | 2027-08-09 | RHD4PRSHLDOSLFS1400, RHD4PRSHLSTAGLFS1400, RHD4CSTL1B07D091018, RHD4PRSHLDOSLFS1500, RHD4PRSHLSTAGLFS1500, RHD4ENSTL1APPARC1100, RHD4GNPPSD1100, RHD4ENSDZ6SUBRD220, RHD4ENSDSTL1SUB2000 | Access Doors and Frames - Metal floor door size (1000x1000mm) [3 nr] | 3,309 | Z5 | CONS | ARC |
|  | 168 | **RHD4-02-002-STL1-B07-Screening Container** |  | 2027-08-10 | 2027-08-12 |  |  |  |  |  |  |
| RHD4CSTL1B07D151023 |  | Steel Container Screening Installation - (B7.46 21 00.01)-STL1-B07-D15 | 3d | 2027-08-10 | 2027-08-12 | RHD4CSTL1B07D051022, RHD4PRLOLSTAGLFS1000, RHD4ENSTL1APPMEC1200, RHD4GNPPSD1100, RHD4ENSDZ6SUBRD220, RHD4ENSDSTL1SUB3000 | Screening Container Constructed From Steel [1 nr] | 18,386 | Z5 | CONS | MECH |
|  | 169 | **RHD4-02-002-STL1-B07-Motorized basket screen** |  | 2027-08-14 | 2027-09-01 |  |  |  |  |  |  |
| RHD4CSTL1B07D151024 |  | Basket Screen Frame Mounting - (B7.46 21 00.011)-STL1-B07-D15 | 5d | 2027-08-14 | 2027-08-18 | RHD4CSTL1B07D151023, RHD4PRSHLDOSLFS1900, RHD4PRSHLSTAGLFS1900, RHD4ENSTL1APPMEC1200, RHD4GNPPSD1100, RHD4ENSDZ6SUBRD220, RHD4ENSDSTL1SUB3000 | Basket screen [0.5 nr] | 196,112 | Z5 | CONS | MECH |
| RHD4CSTL1B07D151025 |  | Basket Screen Alignment - (B7.46 21 00.011)-STL1-B07-D15 | 6d | 2027-08-19 | 2027-08-25 | RHD4CSTL1B07D151024, RHD4PRSHLDOSLFS1900, RHD4PRSHLSTAGLFS1900, RHD4ENSTL1APPMEC1200, RHD4GNPPSD1100, RHD4ENSDZ6SUBRD220, RHD4ENSDSTL1SUB3000 | Basket screen [0.25 nr] | 98,056 | Z5 | CONS | MECH |
| RHD4CSTL1B07D151026 |  | Motor and Drive System Installation - (B7.46 21 00.011)-STL1-B07-D15 | 6d | 2027-08-26 | 2027-09-01 | RHD4CSTL1B07D151025, RHD4ENSTL1APPMEC1200, RHD4GNPPSD1100, RHD4ENSDZ6SUBRD220, RHD4ENSDSTL1SUB3000 | Basket screen [0.25 nr] | 98,056 | Z5 | CONS | MECH |
|  | 170 | **RHD4-02-002-STL1-B07-Pumps** |  | 2027-09-02 | 2027-09-06 |  |  |  |  |  |  |
| RHD4CSTL1B07D151027 |  | Constant Speed Submersible pump Installation - 20 lps - (B7. 22 14 29.16.03)-STL1-B07-D15 | 4d | 2027-09-02 | 2027-09-06 | RHD4CSTL1B07D151026, RHD4PRLOLSTAGLFS1100, RHD4ENSTL1APPMEC1200, RHD4GNPPSD1100, RHD4ENSDZ6SUBRD220, RHD4ENSDSTL1SUB3000 | Submersible, wet-installed pump for stormwater Capacity: 20, lps Head: 16.50 m [2 nr] | 122,660 | Z5 | CONS | MECH |

| ID | WBS | Activity | Duration | Start | Finish | Predecessors | Complete | Resources | Cost | Actual cost | RDH4-01-001-Zones-1 | RDH4-01-001-Phases-1 | RDH4-01-001-Networks-1 |
| --- | --- | --- | --- | --- | --- | --- | --- | --- | --- | --- | --- | --- | --- |
|  | 171 | **RHD4-02-002-STL1-B07-Gate Valves** |  | 2027-07-05 | 2027-07-11 |  |  |  |  |  |  |  |  |
| RHD4CSTL1B07D151029 |  | Manually operated Gate Valve DN150 for - (B7.22 05 23.03)-STL1-B07-D15 | 6d | 2027-07-05 | 2027-07-11 | RHD4PRSHLDOSLFS1800, RHD4PRSHLSTAGLFS1800, RHD4CSTL1B07D021012, RHD4ENSTL1APPMEC1200, RHD4GNPPSD1100, RHD4ENSDZ6SUBRD220, RHD4ENSDSTL1SUB3000 |  | Manually Operated Gate Valve DN150 [2 nr] | 6,496 |  | Z5 | CONS | MECH |
|  | 172 | **RHD4-02-002-STL1-B07-Non-Return Valve** |  | 2027-07-12 | 2027-07-18 |  |  |  |  |  |  |  |  |
| RHD4CSTL1B07D151030 |  | Check Valve with diameter 150mm. 150mm - (B7.22 05 24.03)-STL1-B07-D15 | 6d | 2027-07-12 | 2027-07-18 | RHD4CSTL1B07D151029, RHD4PRSHLDOSLFS1800, RHD4PRSHLSTAGLFS1800, RHD4ENSTL1APPMEC1200, RHD4GNPPSD1100, RHD4ENSDZ6SUBRD220, RHD4ENSDSTL1SUB3000 |  | Check Valve With Diameter 150mm. [2 nr] | 10,542 |  | Z5 | CONS | MECH |
|  | 173 | **RHD4-02-002-STL1-Pump Lifting System** |  | 2027-07-19 | 2027-08-07 |  |  |  |  |  |  |  |  |
|  | 174 | **RHD4-02-002-STL1-Ductile Pipes & Fittings** |  | 2027-07-19 | 2027-08-01 |  |  |  |  |  |  |  |  |
| RHD4CSTL1B07D151031 |  | Buried ductile iron pipes with diameter 150 mm - (B7.22 11 13.07)-STL1-B07-D15 | 6d | 2027-07-19 | 2027-07-25 | RHD4CSTL1B07D151030, RHD4PRSHLDOSLFS1700, RHD4PRSHLSTAGLFS1700 |  | Buried Ductile Iron Pipes With Diameter 400 Mm [5.3 m] | 4,870.7 |  | Z5 | CONS | MECH |
| RHD4CSTL1B07D151032 |  | Double flanged ductile iron pipe with diameter 150 mm - (B7.22 11 13.08)-STL1-B07-D15 | 6d | 2027-07-26 | 2027-08-01 | RHD4CSTL1B07D151031 |  | Double Flanged Ductile Iron Pipe With Diameter 150 Mm [27 m] | 52,947 |  | Z5 | CONS | MECH |
|  | 175 | **RHD4-02-002-STL1-JIB Crane** |  | 2027-08-02 | 2027-08-07 |  |  |  |  |  |  |  |  |
| RHD4CSTL1B07D151033 |  | Install JIB Crane For storm and sewer pumping Stations - (B7.41 22 10.01)-STL1-B07-D15 | 5d | 2027-08-02 | 2027-08-07 | RHD4CSTL1B07D151032, RHD4PRLOLSTAGLFS1500 |  | JIB Crane For storm and sewer pumping Stations [1 nr] | 67,414 |  | Z5 | CONS | MECH |
|  | 176 | **RHD4-02-002-Storm Lift Station 01-Electrical Room** |  | 2026-10-27 | 2028-04-16 |  |  |  |  |  |  |  |  |
|  | 177 | **RHD4-02-002-STL1-Sub Structure** |  | 2026-10-27 | 2027-10-31 |  |  |  |  |  |  |  |  |
|  | 178 | **RHD4-02-002-STL1-Plain Concrete** |  | 2026-10-27 | 2027-05-31 |  |  |  |  |  |  |  |  |
| RHD4CSTL1B07D031034 |  | Shuttering Plain Concrete - (B7.03 00 00 .01)-STL1-B07-D03 | 4d | 2026-10-27 A | 2026-10-31 A | RHD4CSTL1B07D021001 | 100% | Supply and cast in place plain concrete 100 mm thickness lean concrete under the foundation for (Sewer and Storm Pump station) and (tunnels) [13.85 m2] | 913.77 | 913.77 | Z5 | CONS | STR |
| RHD4CSTL1B07D031035 |  | Lean Concrete Plain Concrete - (B7.03 00 00 .01)-STL1-B07-D03 | 3d | 2026-10-29 A | 2026-11-01 A | RHD4CSTL1B07D031034 | 100% | Supply and cast in place plain concrete 100 mm thickness lean concrete under the foundation for (Sewer and Storm Pump station) and (tunnels) [18.46 m2] | 1,218.36 | 1,218.36 | Z5 | CONS | STR |
| RHD4CSTL1B07D031036 |  | Water proofing membrance Plain Concrete - (B7.07 13 13.01)-STL1-B07-D03 | 5d | 2027-05-23 | 2027-05-27 | RHD4CSTL1B07D031035, RHD4PRSHLDOSLFS1200, RHD4PRSHLSTAGLFS1200 |  | Bituminous Sheet Waterproofing (2 layers of waterproofing bitumenous membrane 4mm below footings) [12.49 m2] | 1,074.31 |  | Z5 | CONS | ARC |
| RHD4CSTL1B07D031037 |  | Screeding Plain Concrete - (B7.03 00 00 .04)-STL1-B07-D03 | 3d | 2027-05-29 | 2027-05-31 | RHD4CSTL1B07D031036 |  | Supply and cast in place screed concrete 50 mm thickness screed concrete for protecting waterproofing under the foundation for (Sewer and Storm Pump station) and (tunnels) [273.87 m2] | 8,763.89 |  | Z5 | CONS | STR |
|  | 179 | **RHD4-02-002-STL1-Footing / Foundation** |  | 2027-06-01 | 2027-06-14 |  |  |  |  |  |  |  |  |
| RHD4CSTL1B07D031038 |  | Shuttering Foundation - (B7.03 00 00 .05)-STL1-B07-D03 | 3d | 2027-06-01 | 2027-06-03 | RHD4CSTL1B07D031037, RHD4ENSTL1APPSTC1000 |  | Supply and cast in place reinforced concrete with fc'=31 Mpa for the sub- structures for (Sewer and Storm Pump station) and (tunnels) for Footings [3.99 m3] | 6,134.47 |  | Z5 | CONS | STR |
| RHD4CSTL1B07D031039 |  | Steel Fixing Foundation - (B7.03 00 00 .05)-STL1-B07-D03 | 4d | 2027-06-05 | 2027-06-08 | RHD4CSTL1B07D031038, RHD4ENSTL1APPSTC1000 |  | Supply and cast in place reinforced concrete with fc'=31 Mpa for the sub- structures for (Sewer and Storm Pump station) and (tunnels) for Footings [3.99 m3] | 6,134.47 |  | Z5 | CONS | STR |
| RHD4CSTL1B07D031040 |  | RC Casting Foundation - (B7.03 00 00 .05)-STL1-B07-D03 | 3d | 2027-06-09 | 2027-06-12 | RHD4CSTL1B07D031039, RHD4ENSTL1APPSTC1000 |  | Supply and cast in place reinforced concrete with fc'=31 Mpa for the sub- structures for (Sewer and Storm Pump station) and (tunnels) for Footings [3.99 m3] | 6,134.47 |  | Z5 | CONS | STR |
| RHD4CSTL1B07D031041 |  | Deshuttering Foundation - (B7.03 00 00 .05)-STL1-B07-D03 | 2d | 2027-06-13 | 2027-06-14 | RHD4CSTL1B07D031040 |  | Supply and cast in place reinforced concrete with fc'=31 Mpa for the sub- structures for (Sewer and Storm Pump station) and (tunnels) for Footings [3.99 m3] | 6,134.47 |  | Z5 | CONS | STR |
|  | 180 | **RHD4-02-002-STL1-Neck Columns** |  | 2027-06-15 | 2027-07-03 |  |  |  |  |  |  |  |  |
| RHD4CSTL1B07D031042 |  | Steel Fixing Neck Columns - (B7.03 00 00 .06)-STL1-B07-D03 | 4d | 2027-06-15 | 2027-06-19 | RHD4CSTL1B07D031041, RHD4ENSTL1APPSTC1000 |  | Supply and cast in place reinforced concrete with fc'=31 Mpa for the sub- structures for (Sewer and Storm Pump station) and (tunnels) for Neck columns [0.07 m3] | 114.26 |  | Z5 | CONS | STR |
| RHD4CSTL1B07D031043 |  | Shuttering Neck Columns - (B7.03 00 00 .06)-STL1-B07-D03 | 3d | 2027-06-20 | 2027-06-22 | RHD4CSTL1B07D031042, RHD4ENSTL1APPSTC1000 |  | Supply and cast in place reinforced concrete with fc'=31 Mpa for the sub- structures for (Sewer and Storm Pump station) and (tunnels) for Neck columns [0.11 m3] | 171.4 |  | Z5 | CONS | STR |
| RHD4CSTL1B07D031044 |  | RC Casting Neck Columns - (B7.03 00 00 .06)-STL1-B07-D03 | 4d | 2027-06-23 | 2027-06-27 | RHD4CSTL1B07D031043, RHD4ENSTL1APPSTC1000 |  | Supply and cast in place reinforced concrete with fc'=31 Mpa for the sub- structures for (Sewer and Storm Pump station) and (tunnels) for Neck columns [0.11 m3] | 171.4 |  | Z5 | CONS | STR |
| RHD4CSTL1B07D031045 |  | Deshuttering Neck Columns - (B7.03 00 00 .06)-STL1-B07-D03 | 5d | 2027-06-28 | 2027-07-03 | RHD4CSTL1B07D031044 |  | Supply and cast in place reinforced concrete with fc'=31 Mpa for the sub- structures for (Sewer and Storm Pump station) and (tunnels) for Neck columns [0.07 m3] | 114.26 |  | Z5 | CONS | STR |

| ID | WBS | Activity | Duration | Start | Finish | Predecessors | Resources | Cost | RDH4-01-001-Zones-1 | RDH4-01-001-Phases-1 | RDH4-01-001-Networks-1 |
| --- | --- | --- | --- | --- | --- | --- | --- | --- | --- | --- | --- |
|  | 181 | **RHD4-02-002-STL1-Ground Beams** |  | 2027-07-04 | 2027-08-12 |  |  |  |  |  |  |
| RHD4CSTL1B07D031046 |  | Steel Fixing Ground Beams - (B7.03 00 00 .08)-STL1-B07-D03 | 5d | 2027-07-04 | 2027-07-08 | RHD4CSTL1B07D031045, RHD4ENSTL1APPSTC1000 | Supply and cast in place reinforced concrete with fc'=31 Mpa for the sub- structures for (Sewer and Storm Pump station) and (tunnels) for Ground beams [0.91 m3] | 1,199.54 | Z5 | CONS | STR |
| RHD4CSTL1B07D031047 |  | Shuttering Ground Beams - (B7.03 00 00 .08)-STL1-B07-D03 | 4d | 2027-07-10 | 2027-07-13 | RHD4CSTL1B07D031046, RHD4ENSTL1APPSTC1000 | Supply and cast in place reinforced concrete with fc'=31 Mpa for the sub- structures for (Sewer and Storm Pump station) and (tunnels) for Ground beams [1.36 m3] | 1,799.32 | Z5 | CONS | STR |
| RHD4CSTL1B07D031048 |  | RC Casting Ground Beams - (B7.03 00 00 .08)-STL1-B07-D03 | 2d | 2027-08-08 | 2027-08-09 | RHD4CSTL1B07D031047, RHD4ENSTL1APPSTC1000, RHD4CSTL1B07D151033 | Supply and cast in place reinforced concrete with fc'=31 Mpa for the sub- structures for (Sewer and Storm Pump station) and (tunnels) for Ground beams [1.36 m3] | 1,799.32 | Z5 | CONS | STR |
| RHD4CSTL1B07D031049 |  | Deshuttering Ground Beams - (B7.03 00 00 .08)-STL1-B07-D03 | 3d | 2027-08-10 | 2027-08-12 | RHD4CSTL1B07D031048 | Supply and cast in place reinforced concrete with fc'=31 Mpa for the sub- structures for (Sewer and Storm Pump station) and (tunnels) for Ground beams [0.91 m3] | 1,199.54 | Z5 | CONS | STR |
|  | 182 | **RHD4-02-002-STL1-Aggregate base Course** |  | 2027-08-14 | 2027-08-21 |  |  |  |  |  |  |
| RHD4CSTL1B07D031050 |  | Laying Aggregate base course Slab on Grade - (B7.32 11 23.01)-STL1-B07-D03 | 5d | 2027-08-14 | 2027-08-18 | RHD4CSTL1B07D031049, RHD4ENSTL1APPSTC1000 | Aggregate base course below slab on grade and ground beams for Sewer and Storm Pump station building [9.45 m3] | 236.25 | Z5 | CONS | ARC |
| RHD4CSTL1B07D031051 |  | Compaction of aggregate base course Slab on Grade - (B7.32 11 23.01)-STL1-B07-D03 | 2d | 2027-08-19 | 2027-08-21 | RHD4CSTL1B07D031050, RHD4ENSTL1APPSTC1000 | Aggregate base course below slab on grade and ground beams for Sewer and Storm Pump station building [4.05 m3] | 101.25 | Z5 | CONS | ARC |
|  | 183 | **RHD4-02-002-STL1-Slab on Grade** |  | 2027-08-22 | 2027-09-09 |  |  |  |  |  |  |
| RHD4CSTL1B07D031052 |  | Screeding for SOG works Slab on Grade - (B7.03 00 00 .02)-STL1-B07-D03 | 4d | 2027-08-22 | 2027-08-25 | RHD4CSTL1B07D031051, RHD4ENSTL1APPSTC1000 | Supply and cast in place plain concrete 50 mm thickness lean concrete under slab on grade and gound beams for (Sewer and Storm Pump station building) [14.09 m2] | 352.25 | Z5 | CONS | STR |
| RHD4CSTL1B07D031053 |  | Shuttering Slab on Grade - (B7.03 00 00 .09)-STL1-B07-D03 | 5d | 2027-08-26 | 2027-08-31 | RHD4CSTL1B07D031052, RHD4ENSTL1APPSTC1000 | Supply and cast in place reinforced concrete with fc'=31 Mpa for the sub- structures for (Sewer and Storm Pump station) and (tunnels) for Slab on grade [0.39 m3] | 290.86 | Z5 | CONS | STR |
| RHD4CSTL1B07D031054 |  | Steel Fixing Slab on Grade - (B7.03 00 00 .09)-STL1-B07-D03 | 3d | 2027-09-01 | 2027-09-04 | RHD4CSTL1B07D031053, RHD4ENSTL1APPSTC1000 | Supply and cast in place reinforced concrete with fc'=31 Mpa for the sub- structures for (Sewer and Storm Pump station) and (tunnels) for Slab on grade [0.59 m3] | 436.3 | Z5 | CONS | STR |
| RHD4CSTL1B07D031055 |  | RC Casting Slab on Grade - (B7.03 00 00 .09)-STL1-B07-D03 | 3d | 2027-09-05 | 2027-09-07 | RHD4CSTL1B07D031054, RHD4ENSTL1APPSTC1000 | Supply and cast in place reinforced concrete with fc'=31 Mpa for the sub- structures for (Sewer and Storm Pump station) and (tunnels) for Slab on grade [0.59 m3] | 436.3 | Z5 | CONS | STR |
| RHD4CSTL1B07D031056 |  | Deshuttering Slab on Grade - (B7.03 00 00 .09)-STL1-B07-D03 | 2d | 2027-09-08 | 2027-09-09 | RHD4CSTL1B07D031055, RHD4CSTL1B07D151027 | Supply and cast in place reinforced concrete with fc'=31 Mpa for the sub- structures for (Sewer and Storm Pump station) and (tunnels) for Slab on grade [0.39 m3] | 290.86 | Z5 | CONS | STR |
|  | 184 | **RHD4-02-002-STL1-Waterproofing** |  | 2027-09-11 | 2027-09-18 |  |  |  |  |  |  |
| RHD4CSTL1B07D071057 |  | 2 coats of bitumen on footings Slab on Grade - (B7.07 14 00.01)-STL1-B07-D07 | 3d | 2027-09-11 | 2027-09-13 | RHD4CSTL1B07D031056, RHD4PRSHLDOSLFS1200, RHD4PRSHLSTAGLFS1200 | Fluid-Applied Waterproofing (2 coats of bitumen waterproofing paint for slab on grade and ground beams) [16.79 m2] | 251.78 | Z5 | CONS | ARC |
| RHD4CSTL1B07D071058 |  | 2 coats of bitumen on Grade Beams and SOW Slab on Grade - (B7.07 14 00.01)-STL1-B07-D07 | 4d | 2027-09-14 | 2027-09-18 | RHD4CSTL1B07D071057, RHD4PRSHLDOSLFS1200, RHD4PRSHLSTAGLFS1200 | Fluid-Applied Waterproofing (2 coats of bitumen waterproofing paint for slab on grade and ground beams) [16.79 m2] | 251.78 | Z5 | CONS | ARC |
|  | 185 | **RHD4-02-002-STL1-Vapor Retarders** |  | 2027-09-19 | 2027-09-22 |  |  |  |  |  |  |
| RHD4CSTL1B07D071059 |  | 250 micron Polyethylene sheet Slab on Grade - (B7.07 26 16.01)-STL1-B07-D07 | 4d | 2027-09-19 | 2027-09-22 | RHD4CSTL1B07D071058, RHD4PRSHLDOSLFS1200, RHD4PRSHLSTAGLFS1200 | Vapor Retarders (250 micron thk polyethylene sheet below slab on grade and ground beams) [10.64 m2] | 42.56 | Z5 | CONS | ARC |
|  | 186 | **RHD4-02-002-STL1-Columns** |  | 2027-09-25 | 2027-10-06 |  |  |  |  |  |  |
| RHD4CSTL1B07D031060 |  | Shuttering Columns - (B7.03 00 00 .13)-STL1-B07-D03 | 2d | 2027-09-25 | 2027-09-26 | RHD4CSTL1B07D071059, RHD4ENSTL1APPSTC1000 | Supply and cast in place reinforced concrete with fc'=31 Mpa for the Super- structures for (Sewer and Storm Pump station) for Columns [0.23 m3] | 360.18 | Z5 | CONS | STR |
| RHD4CSTL1B07D031061 |  | Steel Fixing Columns - (B7.03 00 00 .13)-STL1-B07-D03 | 4d | 2027-09-27 | 2027-09-30 | RHD4CSTL1B07D031060, RHD4ENSTL1APPSTC1000 | Supply and cast in place reinforced concrete with fc'=31 Mpa for the Super- structures for (Sewer and Storm Pump station) for Columns [0.34 m3] | 540.27 | Z5 | CONS | STR |
| RHD4CSTL1B07D031062 |  | RC Casting Columns - (B7.03 00 00 .13)-STL1-B07-D03 | 2d | 2027-10-02 | 2027-10-03 | RHD4CSTL1B07D031061, RHD4ENSTL1APPSTC1000 | Supply and cast in place reinforced concrete with fc'=31 Mpa for the Super- structures for (Sewer and Storm Pump station) for Columns [0.34 m3] | 540.27 | Z5 | CONS | STR |
| RHD4CSTL1B07D031063 |  | Deshuttering Columns - (B7.03 00 00 .13)-STL1-B07-D03 | 3d | 2027-10-04 | 2027-10-06 | RHD4CSTL1B07D031062 | Supply and cast in place reinforced concrete with fc'=31 Mpa for the Super- structures for (Sewer and Storm Pump station) for Columns [0.23 m3] | 360.18 | Z5 | CONS | STR |

| ID | WBS | Activity | Duration | Start | Finish | Predecessors | Resources | Cost | RDH4-01-001-Zones-1 | RDH4-01-001-Phases-1 | RDH4-01-001-Networks-1 |
| --- | --- | --- | --- | --- | --- | --- | --- | --- | --- | --- | --- |
|  | 187 | **RHD4-02-002-STL1-Slab Beams** |  | 2027-10-07 | 2027-10-19 |  |  |  |  |  |  |
| RHD4CSTL1B07D031064 |  | Shuttering Roof Slab - (B7.03 00 00 .14)-STL1-B07-D03 | 4d | 2027-10-07 | 2027-10-11 | RHD4CSTL1B07D031063, RHD4ENSTL1APPSTC1000 | Supply and cast in place reinforced concrete with fc'=31 Mpa for the Super- structures for (Sewer and Storm Pump station) for Beams [0.32 m3] | 419.02 | Z5 | CONS | STR |
| RHD4CSTL1B07D031065 |  | Steel Fixing Roof Slab - (B7.03 00 00 .14)-STL1-B07-D03 | 3d | 2027-10-12 | 2027-10-14 | RHD4CSTL1B07D031064, RHD4ENSTL1APPSTC1000 | Supply and cast in place reinforced concrete with fc'=31 Mpa for the Super- structures for (Sewer and Storm Pump station) for Beams [0.47 m3] | 628.52 | Z5 | CONS | STR |
| RHD4CSTL1B07D031066 |  | RC Casting Roof Slab - (B7.03 00 00 .14)-STL1-B07-D03 | 2d | 2027-10-16 | 2027-10-17 | RHD4CSTL1B07D031065, RHD4ENSTL1APPSTC1000 | Supply and cast in place reinforced concrete with fc'=31 Mpa for the Super- structures for (Sewer and Storm Pump station) for Beams [0.47 m3] | 628.52 | Z5 | CONS | STR |
| RHD4CSTL1B07D031067 |  | Deshuttering Roof Slab - (B7.03 00 00 .14)-STL1-B07-D03 | 2d | 2027-10-18 | 2027-10-19 | RHD4CSTL1B07D031066 | Supply and cast in place reinforced concrete with fc'=31 Mpa for the Super- structures for (Sewer and Storm Pump station) for Beams [0.32 m3] | 419.02 | Z5 | CONS | STR |
|  | 188 | **RHD4-02-002-STL1-Roof Slab** |  | 2027-10-20 | 2027-10-31 |  |  |  |  |  |  |
| RHD4CSTL1B07D031068 |  | Shuttering Roof Slab - (B7.03 00 00 .15)-STL1-B07-D03 | 3d | 2027-10-20 | 2027-10-23 | RHD4CSTL1B07D031067, RHD4ENSTL1APPSTC1000 | Supply and cast in place reinforced concrete with fc'=31 Mpa for the Super- structures for (Sewer and Storm Pump station) for Solid Slabs [5.11 m3] | 6,599.59 | Z5 | CONS | STR |
| RHD4CSTL1B07D031069 |  | Steel Fixing Roof Slab - (B7.03 00 00 .15)-STL1-B07-D03 | 3d | 2027-10-24 | 2027-10-26 | RHD4CSTL1B07D031068, RHD4ENSTL1APPSTC1000 | Supply and cast in place reinforced concrete with fc'=31 Mpa for the Super- structures for (Sewer and Storm Pump station) for Solid Slabs [7.67 m3] | 9,899.39 | Z5 | CONS | STR |
| RHD4CSTL1B07D031070 |  | RC Casting Roof Slab - (B7.03 00 00 .15)-STL1-B07-D03 | 2d | 2027-10-27 | 2027-10-28 | RHD4CSTL1B07D031069, RHD4ENSTL1APPSTC1000 | Supply and cast in place reinforced concrete with fc'=31 Mpa for the Super- structures for (Sewer and Storm Pump station) for Solid Slabs [7.67 m3] | 9,899.39 | Z5 | CONS | STR |
| RHD4CSTL1B07D031071 |  | Deshuttering Roof Slab - (B7.03 00 00 .15)-STL1-B07-D03 | 2d | 2027-10-30 | 2027-10-31 | RHD4CSTL1B07D031070 | Supply and cast in place reinforced concrete with fc'=31 Mpa for the Super- structures for (Sewer and Storm Pump station) for Solid Slabs [5.11 m3] | 6,599.59 | Z5 | CONS | STR |
|  | 189 | **RHD4-02-002-STL1-Electrical Room-Finishes** |  | 2027-11-01 | 2027-12-13 |  |  |  |  |  |  |
|  | 190 | **RHD4-02-002-STL1-Masonary** |  | 2027-11-01 | 2027-11-03 |  |  |  |  |  |  |
| RHD4CSTL1B07D091072 |  | Masonary Block work (CMU walls) Insulated Block Work - (B7.04 22 00.01)-STL1-B07-D09 | 3d | 2027-11-01 | 2027-11-03 | RHD4CSTL1B07D031071, RHD4CSTL1B07D151033, RHD4ENSTL1APPARC1100, RHD4GNPPSD1100, RHD4ENSDZ6SUBRD220, RHD4ENSDSTL1SUB2000 | Concrete masonry unit, hollow block 200mm thick [51.02 m2] | 3,112.34 | Z5 | CONS | ARC |
|  | 191 | **RHD4-02-002-STL1-Roofs waterproofing system** |  | 2027-11-04 | 2027-11-20 |  |  |  |  |  |  |
| RHD4CSTL1B07D071073 |  | 250 micron Polyethylene sheet - (B7.07 00 00.06)-STL1-B07-D07 | 2d | 2027-11-04 | 2027-11-06 | RHD4CSTL1B07D091072, RHD4PRSHLDOSLFS1200, RHD4PRSHLDOSLFS1100, RHD4PRSHLSTAGLFS1200, RHD4PRSHLSTAGLFS1100, RHD4ENSTL1APPARC1100, RHD4GNPPSD1100, RHD4ENSDZ6SUBRD220, RHD4ENSDSTL1SUB2000 | Roofs Waterproofing System (250 micron Polyethylene sheet) [10.44 m2] | 41.76 | Z5 | CONS | ARC |
| RHD4CSTL1B07D071074 |  | 50 mm thick minimum Foam Concrete - (B7.07 00 00.05)-STL1-B07-D07 | 3d | 2027-11-07 | 2027-11-09 | RHD4CSTL1B07D071073, RHD4PRSHLDOSLFS1100, RHD4PRSHLSTAGLFS1100, RHD4ENSTL1APPARC1100, RHD4GNPPSD1100, RHD4ENSDZ6SUBRD220, RHD4ENSDSTL1SUB2000 | Roofs Waterproofing System (50mm thik min. Foam concrete) [10.44 m2] | 323.64 | Z5 | CONS | ARC |
| RHD4CSTL1B07D071075 |  | 30 mm thick Screed Concrete - (B7.07 00 00.04)-STL1-B07-D07 | 3d | 2027-11-07 | 2027-11-09 | RHD4CSTL1B07D071074 SS, RHD4PRSHLDOSLFS1100, RHD4PRSHLSTAGLFS1100, RHD4ENSTL1APPARC1100, RHD4GNPPSD1100, RHD4ENSDZ6SUBRD220, RHD4ENSDSTL1SUB2000 | Roofs Waterproofing System (30mm thick Screed concrete (Fc' = 20 Mpa)) [10.44 m2] | 187.92 | Z5 | CONS | ARC |
| RHD4CSTL1B07D071076 |  | 4 mm thick Waterproofing Bituminous Membrane - (B7.07 00 00.03)-STL1-B07-D07 | 2d | 2027-11-10 | 2027-11-11 | RHD4CSTL1B07D071075, RHD4PRSHLDOSLFS1200, RHD4PRSHLDOSLFS1100, RHD4PRSHLSTAGLFS1200, RHD4PRSHLSTAGLFS1100, RHD4ENSTL1APPARC1100, RHD4GNPPSD1100, RHD4ENSDZ6SUBRD220, RHD4ENSDSTL1SUB2000 | Roofs Waterproofing System (4mm thick Water proofing Bitumenous Membrane) [10.44 m2] | 323.64 | Z5 | CONS | ARC |
| RHD4CSTL1B07D071077 |  | Geotextile Membrane - (B7.07 00 00.02)-STL1-B07-D07 | 4d | 2027-11-13 | 2027-11-16 | RHD4CSTL1B07D071076, RHD4PRSHLDOSLFS1100, RHD4PRSHLSTAGLFS1100, RHD4CSTL1B07D071074, RHD4ENSTL1APPARC1100, RHD4GNPPSD1100, RHD4ENSDZ6SUBRD220, RHD4ENSDSTL1SUB2000 | Roofs Waterproofing System (Geotextile Membrane) [10.44 m2] | 73.08 | Z5 | CONS | ARC |
| RHD4CSTL1B07D071078 |  | 50 mm thick Gravel Toppings - (B7.07 00 00.01)-STL1-B07-D07 | 3d | 2027-11-17 | 2027-11-20 | RHD4CSTL1B07D071077, RHD4PRSHLDOSLFS1100, RHD4PRSHLSTAGLFS1100, RHD4ENSTL1APPARC1100, RHD4GNPPSD1100, RHD4ENSDZ6SUBRD220, RHD4ENSDSTL1SUB2000 | Roofs Waterproofing System (50mm thk gravel toppings) [6.78 m2] | 169.5 | Z5 | CONS | ARC |
|  | 192 | **RHD4-02-002-STL1-Stone Copings** |  | 2027-11-21 | 2027-11-22 |  |  |  |  |  |  |
| RHD4CSTL1B07D091079 |  | Supply and install Stone coping 40mm thickness Insulated Block Work - (B7.07 71 13.01)-STL1-B07-D09 | 2d | 2027-11-21 | 2027-11-22 | RHD4CSTL1B07D071078, RHD4ENSTL1APPARC1100, RHD4GNPPSD1100, RHD4ENSDZ6SUBRD220, RHD4ENSDSTL1SUB2000 | Manufactured Copings (Supply and install Stone coping 40mm thickness) [14.8 m] | 2,175.6 | Z5 | CONS | ARC |
|  | 193 | **RHD4-02-002-STL1-Doors & Windows** |  |  |  |  |  |  |  |  |  |
|  | 194 | **RHD4-02-002-STL1-Cement Plastering** |  | 2027-11-23 | 2027-11-27 |  |  |  |  |  |  |
| RHD4CSTL1B07D091081 |  | Internal Plastering For Walls 15mm - (B7.09 24 00.01)-STL1-B07-D09 | 4d | 2027-11-23 | 2027-11-27 | RHD4CSTL1B07D091079, RHD4ENSTL1APPARC1100, RHD4GNPPSD1100, RHD4ENSDZ6SUBRD220, RHD4ENSDSTL1SUB2000 | Internal plastering to walls and columns min. 15mm thick with cement mortar [43.79 m2] | 2,145.71 | Z5 | CONS | ARC |
| RHD4CSTL1B07D091082 |  | External Plastering for walls 20mm - (B7.09 24 00.02)-STL1-B07-D09 | 3d | 2027-11-23 | 2027-11-25 | RHD4CSTL1B07D091081 SS, RHD4ENSTL1APPARC1100, RHD4GNPPSD1100, RHD4ENSDZ6SUBRD220, RHD4ENSDSTL1SUB2000 | Internal plastering to walls and columns min. 20mm thick with cement mortar [33.21 m2] | 1,826.73 | Z5 | CONS | ARC |

| ID | WBS | Activity | Duration | Start | Finish | Predecessors | Resources | Cost | RDH4-01-001-Zones-1 | RDH4-01-001-Phases-1 | RDH4-01-001-Networks-1 |
| --- | --- | --- | --- | --- | --- | --- | --- | --- | --- | --- | --- |
|  | 195 | **RHD4-02-002-STL1-Metal Ladders** |  | 2027-11-27 | 2027-12-01 |  |  |  |  |  |  |
| RHD4CSTL1B07D051085 |  | With cage, Length 3.6m - (B7.05 51 33.10)-STL1-B07-D05 | 5d | 2027-11-27 | 2027-12-01 | RHD4CSTL1B07D091082, RHD4PRSHLDOSLFS1000, RHD4PRSHLSTAGLFS1000, RHD4ENSTL1APPARC1100, RHD4GNPPSD1100, RHD4ENSDZ6SUBRD220, RHD4ENSDSTL1SUB2000 | Supply and install Checkered plate [1 nr] | 306 | Z5 | CONS | ARC |
|  | 196 | **RHD4-02-002-STL1-Painting** |  | 2027-12-02 | 2027-12-07 |  |  |  |  |  |  |
| RHD4CSTL1B07D091087 |  | Internal Acrylic Paint For Walls Acrylic Paint - (B7.09 91 00.01)-STL1-B07-D09 | 5d | 2027-12-02 | 2027-12-07 | RHD4PRSHLDOSLFS1500, RHD4PRSHLSTAGLFS1500, RHD4CSTL1B07D051085, RHD4ENSTL1APPARC1100, RHD4GNPPSD1100, RHD4ENSDZ6SUBRD220, RHD4ENSDSTL1SUB2000 | 2 coats of paint at internal walls, columns and ceiling including one coat of primer and two coats of putty [42.4 m2] | 1,060 | Z5 | CONS | ARC |
| RHD4CSTL1B07D091088 |  | External Acrylic Paint for walls Acrylic Paint - (B7.09 91 00.02)-STL1-B07-D09 | 5d | 2027-12-02 | 2027-12-07 | RHD4CSTL1B07D091087 SS, RHD4PRSHLDOSLFS1500, RHD4PRSHLSTAGLFS1500, RHD4ENSTL1APPARC1100, RHD4GNPPSD1100, RHD4ENSDZ6SUBRD220, RHD4ENSDSTL1SUB2000 | External paint for external elevations [67.11 m2] | 2,080.42 | Z5 | CONS | ARC |
|  | 197 | **RHD4-02-002-STL1-Epoxy Coating** |  | 2027-12-08 | 2027-12-13 |  |  |  |  |  |  |
| RHD4CSTL1B07D091090 |  | Internal Acrylic Paint For Walls Acrylic Paint - (B7.09 96 56.01)-STL1-B07-D09 | 5d | 2027-12-08 | 2027-12-13 | RHD4PRSHLDOSLFS1500, RHD4PRSHLSTAGLFS1500, RHD4CSTL1B07D091088, RHD4ENSTL1APPARC1100, RHD4GNPPSD1100, RHD4ENSDZ6SUBRD220, RHD4ENSDSTL1SUB2000 | Epoxy coating two perpendicular layers for inner surfaces for Tank walls, footings and bottom of the roof and for room flooring [442.75 m2] | 35,420.4 | Z5 | CONS | ARC |
|  | 198 | **RHD4-02-002-STL1-Mechanical Works** |  | 2027-10-30 | 2027-12-26 |  |  |  |  |  |  |
|  | 199 | **RHD4-02-002-STL1-Wall mounted Split/AC** |  | 2027-10-30 | 2027-11-20 |  |  |  |  |  |  |
| RHD4CSTL1B07D151091 |  | Wall mounted Split Air Conditioning Unit. FCU-01 Installation 3.6 kw - (B7.23 81 26.01)-STL1-B07-D15 | 10d | 2027-10-30 | 2027-11-09 | RHD4CSTL1B07D031071 SS, RHD4PRSHLDOSLFS2200, RHD4PRSHLSTAGLFS2200, RHD4ENSTL1APPMEC1200, RHD4GNPPSD1100, RHD4ENSDZ6SUBRD220, RHD4ENSDSTL1SUB3000 | (FCU-01/ACCU-01) DX wall mounted Split/AC with nominal cooling capacity of 3.6 KW [1 nr] | 10,173 | Z5 | CONS | MECH |
| RHD4CSTL1B07D151092 |  | Wall mounted Split Air Conditioning Unit. FCU-01 Installation 3.6 kw - (B7.23 81 26.01)-STL1-B07-D15 | 9d | 2027-11-10 | 2027-11-20 | RHD4CSTL1B07D151091, RHD4PRSHLDOSLFS2200, RHD4PRSHLSTAGLFS2200, RHD4ENSTL1APPMEC1200, RHD4GNPPSD1100, RHD4ENSDZ6SUBRD220, RHD4ENSDSTL1SUB3000 | (FCU-01/ACCU-01) DX wall mounted Split/AC with nominal cooling capacity of 3.6 KW [1 nr] | 10,173 | Z5 | CONS | MECH |
|  | 200 | **RHD4-02-002-STL1-Portable Fire Extinguishers** |  | 2027-11-21 | 2027-12-09 |  |  |  |  |  |  |
| RHD4CSTL1B07D151093 |  | Powder fire extinguishers installation - (B7.21 20 00.01)-STL1-B07-D15 | 8d | 2027-11-21 | 2027-11-29 | RHD4CSTL1B07D151092, RHD4ENSTL1APPMEC1200, RHD4GNPPSD1100, RHD4ENSDZ6SUBRD220, RHD4ENSDSTL1SUB3000 | Fire Extinguishers 6 KG, Powder fire extinguishers (EF-1) [1 nr] | 552 | Z5 | CONS | MECH |
| RHD4CSTL1B07D151094 |  | CO2 fire extinguishers installation - (B7.21 20 00.02)-STL1-B07-D15 | 9d | 2027-11-30 | 2027-12-09 | RHD4CSTL1B07D151093, RHD4ENSTL1APPMEC1200, RHD4GNPPSD1100, RHD4ENSDZ6SUBRD220, RHD4ENSDSTL1SUB3000 | UPVC pipes with Diameter 110mm. [3.35 m]; Fire Extinguishers 4.5 KG, CO2 fire extinguishers (EF-2) [1 nr] | 1,066.2 | Z5 | CONS | MECH |
|  | 201 | **RHD4-02-002-STL1-Scupper** |  | 2027-12-11 | 2027-12-18 |  |  |  |  |  |  |
| RHD4CSTL1B07D151095 |  | Scupper with diameter 110mm - Installation - (B7.22 13 19.13.01)-STL1-B07-D15 | 7d | 2027-12-11 | 2027-12-18 | RHD4CSTL1B07D151094, RHD4ENSTL1APPMEC1200, RHD4GNPPSD1100, RHD4ENSDZ6SUBRD220, RHD4ENSDSTL1SUB3000 | Scupper with Diameter 110mm [1 nr] | 147 | Z5 | CONS | MECH |
|  | 202 | **RHD4-02-002-STL1-Pipes, Fittings & Appurtenances** |  | 2027-12-19 | 2027-12-26 |  |  |  |  |  |  |
| RHD4CSTL1B07D151096 |  | uPVC pipes with diameter 25mm. Roof Slab - (B7.22 13 16.02)-STL1-B07-D15 | 7d | 2027-12-19 | 2027-12-26 | RHD4CSTL1B07D151095, RHD4PRSHLDOSLFS2100, RHD4PRSHLSTAGLFS2100, RHD4ENSTL1APPMEC1200, RHD4GNPPSD1100, RHD4ENSDZ6SUBRD220, RHD4ENSDSTL1SUB3000 | UPVC pipes with Diameter 25mm. [6 m] | 738 | Z5 | CONS | MECH |
|  | 203 | **RHD4-02-002-STL1-Electrical Works** |  | 2027-11-01 | 2028-04-16 |  |  |  |  |  |  |
|  | 204 | **RHD4-02-002-STL1-4Cx 6mm2 + 1Cx6mm2 Cu/XLPE/PVC** |  | 2027-11-01 | 2027-11-15 |  |  |  |  |  |  |
| RHD4CSTL1B07D161097 |  | Electrical Conduits and Pull Box Installation for LV Cables 4Cx mm²- (B7.26 05 19.03)-STL1-B07-D16 | 2d | 2027-11-01 | 2027-11-02 | RHD4CSTL1B07D091072 SS, RHD4ENSTL1APPELE1300 | LV Cables - 4Cx 6mm2 + 1Cx6mm2 Cu/XLPE/PVC [2 m] | 134 | Z5 | CONS | ELEC |
| RHD4CSTL1B07D161098 |  | Cable Tray Installation for LV Cables 4Cx mm²- (B7.26 05 19.03)-STL1-B07-D16 | 3d | 2027-11-03 | 2027-11-06 | RHD4CSTL1B07D161097, RHD4ENSTL1APPELE1300 | LV Cables - 4Cx 6mm2 + 1Cx6mm2 Cu/XLPE/PVC [3 m] | 201 | Z5 | CONS | ELEC |
| RHD4CSTL1B07D161099 |  | LV Cable Pulling for LV Cables 4Cx mm²- (B7.26 05 19.03)-STL1-B07-D16 | 4d | 2027-11-07 | 2027-11-10 | RHD4CSTL1B07D161098, RHD4PRSHLDOSLFS2600, RHD4PRSHLSTAGLFS2600 | LV Cables - 4Cx 6mm2 + 1Cx6mm2 Cu/XLPE/PVC [4 m] | 268 | Z5 | CONS | ELEC |
| RHD4CSTL1B07D161100 |  | LV Cable Termination for LV Cables 4Cx mm²- (B7.26 05 19.03)-STL1-B07-D16 | 4d | 2027-11-11 | 2027-11-15 | RHD4CSTL1B07D161099 | LV Cables - 4Cx 6mm2 + 1Cx6mm2 Cu/XLPE/PVC [1 m] | 67 | Z5 | CONS | ELEC |

| ID | WBS | Activity | Duration | Start | Finish | Predecessors | Resources | Cost | RDH4-01-001-Zones-1 | RDH4-01-001-Phases-1 | RDH4-01-001-Networks-1 |
| --- | --- | --- | --- | --- | --- | --- | --- | --- | --- | --- | --- |
|  | 205 | **RHD4-02-002-STL1-4Cx 95mm2 + 1Cx50mm2 Cu/XLPE/PVC** |  | 2027-11-11 | 2027-11-29 |  |  |  |  |  |  |
| RHD4CSTL1B07D161101 |  | Electrical Conduits and Pull Box Installation for LV Cables 4Cx95 mm²- (B7.26 05 19.05)-STL1-B07-D16 | 5d | 2027-11-11 | 2027-11-16 | RHD4CSTL1B07D161100 SS, RHD4ENSTL1APPELE1300 | LV Cables - 4Cx 95mm2 + 1Cx50mm2 Cu/XLPE/PVC [1 m] | 245 | Z5 | CONS | ELEC |
| RHD4CSTL1B07D161102 |  | Cable Tray Installation for LV Cables 4Cx95 mm²- (B7.26 05 19.05)-STL1-B07-D16 | 4d | 2027-11-17 | 2027-11-21 | RHD4CSTL1B07D161101, RHD4ENSTL1APPELE1300 | LV Cables - 4Cx 95mm2 + 1Cx50mm2 Cu/XLPE/PVC [1.5 m] | 367.5 | Z5 | CONS | ELEC |
| RHD4CSTL1B07D161103 |  | LV Cable Pulling for LV Cables 4Cx95 mm²- (B7.26 05 19.05)-STL1-B07-D16 | 3d | 2027-11-22 | 2027-11-24 | RHD4CSTL1B07D161102, RHD4PRSHLDOSLFS2600, RHD4PRSHLSTAGLFS2600 | LV Cables - 4Cx 95mm2 + 1Cx50mm2 Cu/XLPE/PVC [2 m] | 490 | Z5 | CONS | ELEC |
| RHD4CSTL1B07D161104 |  | LV Cable Termination for LV Cables 4Cx95 mm²- (B7.26 05 19.05)-STL1-B07-D16 | 4d | 2027-11-25 | 2027-11-29 | RHD4CSTL1B07D161103 | LV Cables - 4Cx 95mm2 + 1Cx50mm2 Cu/XLPE/PVC [0.5 m] | 122.5 | Z5 | CONS | ELEC |
|  | 206 | **RHD4-02-002-STL1-4Cx 50mm2 + 1Cx25mm2 CU/XLPE / SWA / PVC** |  | 2027-11-25 | 2027-12-12 |  |  |  |  |  |  |
| RHD4CSTL1B07D161105 |  | Electrical Conduits and Pull Box Installation for LV Cables 4Cx6 mm²- (B7.26 05 19.06)-STL1-B07-D16 | 5d | 2027-11-25 | 2027-11-30 | RHD4CSTL1B07D161104 SS, RHD4ENSTL1APPELE1300 | LV Cables - 4Cx 185mm2 CU/XLPE/SWA/PVC [4 m] | 1,580 | Z5 | CONS | ELEC |
| RHD4CSTL1B07D161106 |  | Cable Tray Installation for LV Cables 4Cx6 mm²- (B7.26 05 19.06)-STL1-B07-D16 | 3d | 2027-12-01 | 2027-12-04 | RHD4CSTL1B07D161105, RHD4ENSTL1APPELE1300 | LV Cables - 4Cx 185mm2 CU/XLPE/SWA/PVC [6 m] | 2,370 | Z5 | CONS | ELEC |
| RHD4CSTL1B07D161107 |  | LV Cable Pulling for LV Cables 4Cx6 mm²- (B7.26 05 19.06)-STL1-B07-D16 | 4d | 2027-12-05 | 2027-12-08 | RHD4CSTL1B07D161106, RHD4PRSHLDOSLFS2600, RHD4PRSHLSTAGLFS2600 | LV Cables - 4Cx 185mm2 CU/XLPE/SWA/PVC [8 m] | 3,160 | Z5 | CONS | ELEC |
| RHD4CSTL1B07D161108 |  | LV Cable Termination for LV Cables 4Cx6 mm²- (B7.26 05 19.06)-STL1-B07-D16 | 3d | 2027-12-09 | 2027-12-12 | RHD4CSTL1B07D161107 | LV Cables - 4Cx 185mm2 CU/XLPE/SWA/PVC [2 m] | 790 | Z5 | CONS | ELEC |
|  | 207 | **RHD4-02-002-STL1-4Cx 4mm2 + 1Cx4mm2 Cu/XLPE/PVC** |  | 2027-12-09 | 2027-12-25 |  |  |  |  |  |  |
| RHD4CSTL1B07D161109 |  | Electrical Conduits and Pull Box Installation for LV Cables 4Cx4 mm²- (B7.26 05 19.07)-STL1-B07-D16 | 3d | 2027-12-09 | 2027-12-12 | RHD4CSTL1B07D161108 SS, RHD4ENSTL1APPELE1300 | LV Cables - 4Cx 4mm2 + 1Cx4mm2 Cu/XLPE/PVC [12 m] | 528 | Z5 | CONS | ELEC |
| RHD4CSTL1B07D161110 |  | Cable Tray Installation for LV Cables 4Cx4 mm²- (B7.26 05 19.07)-STL1-B07-D16 | 4d | 2027-12-13 | 2027-12-16 | RHD4CSTL1B07D161109, RHD4ENSTL1APPELE1300 | LV Cables - 4Cx 4mm2 + 1Cx4mm2 Cu/XLPE/PVC [18 m] | 792 | Z5 | CONS | ELEC |
| RHD4CSTL1B07D161111 |  | LV Cable Pulling for LV Cables 4Cx4 mm²- (B7.26 05 19.07)-STL1-B07-D16 | 3d | 2027-12-18 | 2027-12-20 | RHD4CSTL1B07D161110, RHD4PRSHLDOSLFS2600, RHD4PRSHLSTAGLFS2600 | LV Cables - 4Cx 4mm2 + 1Cx4mm2 Cu/XLPE/PVC [24 m] | 1,056 | Z5 | CONS | ELEC |
| RHD4CSTL1B07D161112 |  | LV Cable Termination for LV Cables 4Cx4 mm²- (B7.26 05 19.07)-STL1-B07-D16 | 4d | 2027-12-21 | 2027-12-25 | RHD4CSTL1B07D161111 | LV Cables - 4Cx 4mm2 + 1Cx4mm2 Cu/XLPE/PVC [6 m] | 264 | Z5 | CONS | ELEC |
|  | 208 | **RHD4-02-002-STL1-Wiring Devices** |  | 2027-12-21 | 2028-01-02 |  |  |  |  |  |  |
| RHD4CSTL1B07D161113 |  | 13A Signle Socket Outlet WP for Wiring Devices - (B7.26 27 26 .01)-STL1-B07-D16 | 4d | 2027-12-21 | 2027-12-25 | RHD4CSTL1B07D161112 SS, RHD4ENSTL1APPELE1300, RHD4PRSHLDOSLFS2800, RHD4PRSHLSTAGLFS2800 | Single socket outlet with a 13-amp switch, single-pole, 230 volts, with a grounding hole, mounted on the wall [4 nr] | 940 | Z5 | CONS | ELEC |
| RHD4CSTL1B07D161114 |  | 13A Double Socket Outlet WP for Wiring Devices - (B7.26 27 26 .02)-STL1-B07-D16 | 3d | 2027-12-26 | 2027-12-28 | RHD4CSTL1B07D161113, RHD4ENSTL1APPELE1300, RHD4PRSHLDOSLFS2800, RHD4PRSHLSTAGLFS2800 | Double socket outlet with a 13-amp switch, mounted on the wall, fed from an uninterruptible power supply (UPS) [1 nr] | 282 | Z5 | CONS | ELEC |
| RHD4CSTL1B07D161115 |  | 25A Switch Socket Outlet (for Split Unit), WP for Wiring Devices - (B7.26 27 26 .03)-STL1-B07-D16 | 4d | 2027-12-29 | 2028-01-02 | RHD4CSTL1B07D161114, RHD4ENSTL1APPELE1300, RHD4PRSHLDOSLFS2800, RHD4PRSHLSTAGLFS2800 | 25-amp wall-mounted double-pole switch with an indicator light for powering the wall-mounted split air conditioning units [2 nr] | 784 | Z5 | CONS | ELEC |
|  | 209 | **RHD4-02-002-STL1-Grounding and Bonding** |  | 2027-12-29 | 2028-01-17 |  |  |  |  |  |  |
| RHD4CSTL1B07D161116 |  | Copper Conductor Connecting to Steel Rebar Installation for Copper Rods - (B7.26 05 26.03)-STL1-B07-D16 | 4d | 2027-12-29 | 2028-01-02 | RHD4CSTL1B07D161115 SS, RHD4ENSTL1APPELE1300, RHD4PRSHLDOSLFS2500, RHD4PRSHLSTAGLFS2500 | Earthing System for Storm PS1 [0.4 Item] | 4,935.2 | Z5 | CONS | ELEC |
| RHD4CSTL1B07D161117 |  | Earth pits Installation for Copper Rods - (B7.26 05 26.03)-STL1-B07-D16 | 5d | 2028-01-03 | 2028-01-08 | RHD4CSTL1B07D161116, RHD4ENSTL1APPELE1300 | Earthing System for Storm PS1 [0.1 Item] | 1,233.8 | Z5 | CONS | ELEC |
| RHD4CSTL1B07D161118 |  | Earth Bars Installation for Copper Rods - (B7.26 05 26.03)-STL1-B07-D16 | 4d | 2028-01-09 | 2028-01-12 | RHD4CSTL1B07D161117, RHD4ENSTL1APPELE1300 | Earthing System for Storm PS1 [0.1 Item] | 1,233.8 | Z5 | CONS | ELEC |
| RHD4CSTL1B07D161119 |  | Copper Tape on Roof Installation for Copper Rods - (B7.26 05 26.03)-STL1-B07-D16 | 4d | 2028-01-13 | 2028-01-17 | RHD4CSTL1B07D161118, RHD4ENSTL1APPELE1300 | Earthing System for Storm PS1 [0.4 Item] | 4,935.2 | Z5 | CONS | ELEC |

| ID | WBS | Activity | Duration | Start | Finish | Predecessors | Resources | Cost | RDH4-01-001-Zones-1 | RDH4-01-001-Phases-1 | RDH4-01-001-Networks-1 |
| --- | --- | --- | --- | --- | --- | --- | --- | --- | --- | --- | --- |
|  | 210 | **RHD4-02-002-STL1-Indoor Lighting Fixtures** |  | 2028-01-13 | 2028-02-09 |  |  |  |  |  |  |
| RHD4CSTL1B07D161120 |  | Electrical Conduits and Pull Box Installation - 24.5 W for Lighting Fixtures - (B7.26 51 00.01)-STL1-B07-D16 | 5d | 2028-01-13 | 2028-01-18 | RHD4CSTL1B07D161119 SS, RHD4ENSTL1APPELE1300 | Indoor Lighting Fixtures - L1 lighting units of the (LED) type [0.4 nr] | 171.6 | Z5 | CONS | ELEC |
| RHD4CSTL1B07D161121 |  | LV Cable Pulling for Lighting Fixtures - (B7.26 51 00.01)-STL1-B07-D16 | 4d | 2028-01-19 | 2028-01-23 | RHD4CSTL1B07D161120, RHD4ENSTL1APPELE1300 | Indoor Lighting Fixtures - L1 lighting units of the (LED) type [0.4 nr] | 171.6 | Z5 | CONS | ELEC |
| RHD4CSTL1B07D161122 |  | Lighting Fixture Installation for Lighting Fixtures - (B7.26 51 00.01)-STL1-B07-D16 | 4d | 2028-01-24 | 2028-01-27 | RHD4CSTL1B07D161121, RHD4ENSTL1APPELE1300, RHD4PRSHLDOSLFS2700, RHD4PRSHLSTAGLFS2700 | Indoor Lighting Fixtures - L1 lighting units of the (LED) type [1.2 nr] | 514.8 | Z5 | CONS | ELEC |
| RHD4CSTL1B07D161123 |  | Electrical Conduits and Pull Box Installation - 8 W for Lighting Fixtures - (B7.26 51 00.02)-STL1-B07-D16 | 3d | 2028-01-29 | 2028-01-31 | RHD4CSTL1B07D161122 | Indoor Lighting Fixtures - LE lighting units of the (LED) type, Exit sign [0.2 nr] | 132.4 | Z5 | CONS | ELEC |
| RHD4CSTL1B07D161124 |  | LV Cable Pulling for Lighting Fixtures - (B7.26 51 00.02)-STL1-B07-D16 | 3d | 2028-02-01 | 2028-02-03 | RHD4CSTL1B07D161123 | Indoor Lighting Fixtures - LE lighting units of the (LED) type, Exit sign [0.2 nr] | 132.4 | Z5 | CONS | ELEC |
| RHD4CSTL1B07D161125 |  | Lighting Fixture Installation for Lighting Fixtures - (B7.26 51 00.02)-STL1-B07-D16 | 5d | 2028-02-05 | 2028-02-09 | RHD4CSTL1B07D161124, RHD4PRSHLDOSLFS2700, RHD4PRSHLSTAGLFS2700 | Indoor Lighting Fixtures - LE lighting units of the (LED) type, Exit sign [0.6 nr] | 397.2 | Z5 | CONS | ELEC |
|  | 211 | **RHD4-02-002-STL1-Outdoor Lighting Fixtures** |  | 2027-12-21 | 2028-01-16 |  |  |  |  |  |  |
| RHD4CSTL1B07D161126 |  | Electrical Conduits and Pull Box Installation - 7 W for Lighting Fixtures - (B7.26 56 00.01)-STL1-B07-D16 | 2d | 2027-12-21 | 2027-12-22 | RHD4CSTL1B07D161112 SS, RHD4ENSTL1APPELE1300 | Outdoor Lighting Fixtures - L3 lighting units of the (LED) type [0.2 nr] | 78 | Z5 | CONS | ELEC |
| RHD4CSTL1B07D161127 |  | LV Cable Pulling for Lighting Fixtures - (B7.26 56 00.01)-STL1-B07-D16 | 3d | 2027-12-23 | 2027-12-26 | RHD4CSTL1B07D161126, RHD4ENSTL1APPELE1300 | Outdoor Lighting Fixtures - L3 lighting units of the (LED) type [0.2 nr] | 78 | Z5 | CONS | ELEC |
| RHD4CSTL1B07D161128 |  | Lighting Fixture Installation for Lighting Fixtures - (B7.26 56 00.01)-STL1-B07-D16 | 4d | 2027-12-27 | 2027-12-30 | RHD4CSTL1B07D161127, RHD4ENSTL1APPELE1300, RHD4PRSHLDOSLFS2700, RHD4PRSHLSTAGLFS2700 | Outdoor Lighting Fixtures - L3 lighting units of the (LED) type [0.6 nr] | 234 | Z5 | CONS | ELEC |
| RHD4CSTL1B07D161129 |  | Electrical Conduits and Pull Box Installation - 42.5 W for Lighting Fixtures - (B7.26 56 00.02)-STL1-B07-D16 | 4d | 2028-01-01 | 2028-01-04 | RHD4CSTL1B07D161128, RHD4ENSTL1APPELE1300 | Outdoor Lighting Fixtures - L4 lighting units of the (LED) type [0.6 nr] | 277.2 | Z5 | CONS | ELEC |
| RHD4CSTL1B07D161130 |  | LV Cable Pulling for Lighting Fixtures - (B7.26 56 00.02)-STL1-B07-D16 | 5d | 2028-01-05 | 2028-01-10 | RHD4CSTL1B07D161129 | Outdoor Lighting Fixtures - L4 lighting units of the (LED) type [0.6 nr] | 277.2 | Z5 | CONS | ELEC |
| RHD4CSTL1B07D161131 |  | Lighting Fixture Installation for Lighting Fixtures - (B7.26 56 00.02)-STL1-B07-D16 | 5d | 2028-01-11 | 2028-01-16 | RHD4CSTL1B07D161130, RHD4PRSHLDOSLFS2700, RHD4PRSHLSTAGLFS2700 | Outdoor Lighting Fixtures - L4 lighting units of the (LED) type [1.8 nr] | 831.6 | Z5 | CONS | ELEC |
|  | 212 | **RHD4-02-002-STL1- Enclosed Switches and Circuit Breakers** |  | 2028-01-11 | 2028-01-24 |  |  |  |  |  |  |
| RHD4CSTL1B07D161132 |  | 25-amp single-pole disconnect switches for Lighting Fixtures - (B7.26 28 16.01)-STL1-B07-D16 | 6d | 2028-01-11 | 2028-01-17 | RHD4CSTL1B07D161131 SS, RHD4ENSTL1APPELE1300, RHD4PRSHLDOSLFS2900, RHD4PRSHLSTAGLFS2900 | 25-amp single-pole disconnect/isolation switches, 60 Hz, IP65 [3 nr] | 1,731 | Z5 | CONS | ELEC |
| RHD4CSTL1B07D161133 |  | 25-amp three-pole disconnect switches for Lighting Fixtures - (B7.26 28 16.02)-STL1-B07-D16 | 6d | 2028-01-18 | 2028-01-24 | RHD4CSTL1B07D161132, RHD4ENSTL1APPELE1300, RHD4PRSHLDOSLFS2900, RHD4PRSHLSTAGLFS2900 | 25-amp three-pole disconnect/isolation switches, 60 Hz, IP65 [2 nr] | 1,154 | Z5 | CONS | ELEC |
|  | 213 | **RHD4-02-002-STL1-Secondery Panel Boards** |  | 2028-01-18 | 2028-01-30 |  |  |  |  |  |  |
| RHD4CSTL1B07D161136 |  | Panel "LPP-UT5" Installation for Panelboards - (B7.26 24 16.06)-STL1-B07-D16 | 5d | 2028-01-18 | 2028-01-23 | RHD4ENSTL1APPELE1300, RHD4PRSHLDOSLFS2400, RHD4PRSHLSTAGLFS2400, RHD4CSTL1B07D161133 SS | DB-08 Panel: 100/100 A, 3P, IP66, 60Hz incomer MCCB, 54 Ways [1.6 nr] | 11,728 | Z5 | CONS | ELEC |
| RHD4CSTL1B07D161137 |  | Panel "DB-UT5" Termination for Panelboards - (B7.26 24 16.06)-STL1-B07-D16 | 6d | 2028-01-24 | 2028-01-30 | RHD4CSTL1B07D161136, RHD4ENSTL1APPELE1300 | DB-08 Panel: 100/100 A, 3P, IP66, 60Hz incomer MCCB, 54 Ways [0.4 nr] | 2,932 | Z5 | CONS | ELEC |
|  | 214 | **RHD4-02-002-STL1-Addressable Fire-Alarm System** |  | 2028-01-13 | 2028-02-12 |  |  |  |  |  |  |
| RHD4CSTL1B07D161138 |  | 2 loop FACP with charger, battries and auto dialer for Fire Alarm - (B7.28 46 00.02)-STL1-B07-D16 | 4d | 2028-01-13 | 2028-01-17 | RHD4CSTL1B07D161119 SS, RHD4ENSTL1APPELE1300, RHD4PRSHLDOSLFS3000, RHD4PRSHLSTAGLFS3000 | 2 Loop Facp With Charger, Battries And Auto Dialer [1 nr] | 22,063 | Z5 | CONS | ELEC |
| RHD4CSTL1B07D161139 |  | Addressable type fire alarm Photoelectric smoke detector complete base for Fire Alarm - (B7.28 46 00.04)-STL1-B07-D16 | 4d | 2028-01-18 | 2028-01-22 | RHD4CSTL1B07D161138 | Centralized Firefighter Telephone Control Panel [1 nr] | 79,671 | Z5 | CONS | ELEC |
| RHD4CSTL1B07D161140 |  | Addressable type fire alarm manual call station/pull station for Fire Alarm - (B7.28 46 00.05)-STL1-B07-D16 | 4d | 2028-01-23 | 2028-01-26 | RHD4CSTL1B07D161139 | Addressable Type Fire Alarm Photoelectric Smoke Detector Complete With Base [1 nr] | 613 | Z5 | CONS | ELEC |
| RHD4CSTL1B07D161141 |  | Addressable type fire alarm manual call station/pull station for Fire Alarm - (B7.28 46 00.06)-STL1-B07-D16 | 2d | 2028-01-27 | 2028-01-29 | RHD4CSTL1B07D161140 | Addressable Type Fire Alarm Manual Call Station/pull Station [1 nr] | 662 | Z5 | CONS | ELEC |
| RHD4CSTL1B07D161142 |  | Conventional 24V DC fire alarm wall mounted 15cd flasher/strobe. for Fire Alarm - (B7.28 46 00.07)-STL1-B07-D16 | 3d | 2028-01-30 | 2028-02-01 | RHD4CSTL1B07D161141 | Conventional 24v DC Fire Alarm Wall Mounted 15cd Flasher/strobe. [1 nr] | 674 | Z5 | CONS | ELEC |
| RHD4CSTL1B07D161143 |  | Conventional 24V DC fire alarm wall mounted 15cd weather proof for Fire Alarm - (B7.28 46 00.08)-STL1-B07-D16 | 3d | 2028-02-02 | 2028-02-05 | RHD4CSTL1B07D161142, RHD4CSTL1B07D161137 | Conventional 24v DC Fire Alarm Wall Mounted 15cd Flasher/strobe Weather Proof [1 nr] | 858 | Z5 | CONS | ELEC |
| RHD4CSTL1B07D161144 |  | Short CCT Isolator. for Fire Alarm - (B7.28 46 00.09)-STRM1-B07-D16 | 2d | 2028-02-06 | 2028-02-07 | RHD4CSTL1B07D161143 | Short CCT Isolator [1 nr] | 797 | Z5 | CONS | ELEC |
| RHD4CSTL1B07D161145 |  | Addressable Control module. for Fire Alarm - (B7.28 46 00.10)-STL1-B07-D16 | 4d | 2028-02-08 | 2028-02-12 | RHD4CSTL1B07D161144 | Addressable Control Module. [2 nr] | 1,470 | Z5 | CONS | ELEC |

| ID | WBS | Activity | Duration | Start | Finish | Predecessors | Resources | Cost | RDH4-01-001-Zones-1 | RDH4-01-001-Phases-1 | RDH4-01-001-Networks-1 |
| --- | --- | --- | --- | --- | --- | --- | --- | --- | --- | --- | --- |
|  | 215 | **RHD4-02-002-STL1-Main Motor Control Center (MCC)** |  | 2028-01-18 | 2028-01-30 |  |  |  |  |  |  |
| RHD4CSTL1B07D161151 |  | Installation for MCC-8 - (B7.26 29 00.03)-STL1-B07-D16 | 6d | 2028-01-18 | 2028-01-24 | RHD4CSTL1B07D161133 SS, RHD4ENSTL1APPELE1300, RHD4PRSHLDOSLFS2300, RHD4PRSHLSTAGLFS2300 | Motor Control Center - MCC-8 - 160AT/160AF, 400V, 3PH, 60HZ [0.8 nr] | 46,429.6 | Z5 | CONS | ELEC |
| RHD4CSTL1B07D161152 |  | Termination for MCC-8 - (B7.26 29 00.03)-STL1-B07-D16 | 5d | 2028-01-25 | 2028-01-30 | RHD4CSTL1B07D161151, RHD4ENSTL1APPELE1300 | Motor Control Center - MCC-8 - 160AT/160AF, 400V, 3PH, 60HZ [0.2 nr] | 11,607.4 | Z5 | CONS | ELEC |
|  | 216 | **RHD4-02-002-STL1-Programmable Logic Controllers** |  | 2028-03-29 | 2028-04-16 |  |  |  |  |  |  |
| RHD4CSTL1B07D161153 |  | PLC System Installation for - (B7.40 63 43.01)-STL1-B07-D16 | 6d | 2028-03-29 | 2028-04-04 | RHD4CSTL1B07D161152, RHD4CSTL1B07D161125, RHD4ENSTL1APPELE1300, RHD4CZ2C082RD7100, RHD4PRLOLSTAGLFS1700 | PLC system, serving the pumping station and all related utilities [1 Item] | 966,493 | Z5 | CONS | ELEC |
| RHD4CSTL1B07D161154 |  | Process Control Wiring Installation for - (B7.40 67 10.01)-STL1-B07-D16 | 5d | 2028-04-05 | 2028-04-10 | RHD4CSTL1B07D161153, RHD4ENSTL1APPELE1300, RHD4CSTL1B07D161145, RHD4PRLOLSTAGLFS1700 | Supply, installation, testing and commissioning of all control, instrumentation [1 Item] | 61,285 | Z5 | CONS | ELEC |
| RHD4CSTL1B07D161155 |  | Instrumentation for Process Systems for - (B7.40 70 00.01)-STL1-B07-D16 | 5d | 2028-04-11 | 2028-04-16 | RHD4CSTL1B07D161154, RHD4ENSTL1APPELE1300, RHD4PRLOLSTAGLFS1700 | Supply, installation, testing and commissioning of all field instruments such as hydrostatic level meter, level switches, etc.. [1 Item] | 367,710 | Z5 | CONS | ELEC |
|  | 217 | **RHD4-02-002-Storm Lift Station 01-Site Works** |  | 2027-12-27 | 2028-05-08 |  |  |  |  |  |  |
|  | 218 | **RHD4-02-002-STL1-FLOW METER CHAMABER** |  | 2027-12-27 | 2028-02-23 |  |  |  |  |  |  |
|  | 219 | **RHD4-02-002-STL1-Concrete works** |  | 2027-12-27 | 2028-01-15 |  |  |  |  |  |  |
| RHD4CSTL1B07D031156 |  | Lean Concrete Plain Concrete - (B7.03 00 00 .01)-STL1-B07-D03 | 2d | 2027-12-27 | 2027-12-28 | RHD4CSTL1B07D031034, RHD4CSTL1B07D091072, RHD4CSTL1B07D091090 SS, RHD4CSTL1B07D151033 SS, RHD4CSTL1B07D151096 | Supply and cast in place plain concrete 100 mm thickness lean concrete under the foundation for (Sewer and Storm Pump station) and (tunnels) [18.46 m2] | 1,218.36 | Z5 | CONS | STR |
| RHD4CSTL1B07D031157 |  | Water proofing membrance Bituminous Sheet - (B7.07 13 13.01)-STL1-B07-D03 | 3d | 2027-12-29 | 2028-01-01 | RHD4CSTL1B07D031156, RHD4PRSHLDOSLFS1200, RHD4PRSHLSTAGLFS1200 | Bituminous Sheet Waterproofing (2 layers of waterproofing bitumenous membrane 4mm below footings) [12.49 m2] | 1,074.31 | Z5 | CONS | ARC |
| RHD4CSTL1B07D031158 |  | Screed 50mm - (B7.03 00 00 .04)-STL1-B07-D03 | 2d | 2028-01-02 | 2028-01-03 | RHD4CSTL1B07D031157 | Supply and cast in place screed concrete 50 mm thickness screed concrete for protecting waterproofing under the foundation for (Sewer and Storm Pump station) and (tunnels) [273.87 m2] | 8,763.89 | Z5 | CONS | STR |
| RHD4CSTL1B07D031159 |  | Steel Fixing - (B7.03 00 00 .04)-STL1-B07-D03 | 4d | 2028-01-04 | 2028-01-08 | RHD4CSTL1B07D031158 | Supply and cast in place screed concrete 50 mm thickness screed concrete for protecting waterproofing under the foundation for (Sewer and Storm Pump station) and (tunnels) [273.87 m2] | 8,763.89 | Z5 | CONS | STR |
| RHD4CSTL1B07D031160 |  | Formwork - (B7.03 00 00 .04)-STL1-B07-D03 | 4d | 2028-01-09 | 2028-01-12 | RHD4CSTL1B07D031159 | Supply and cast in place screed concrete 50 mm thickness screed concrete for protecting waterproofing under the foundation for (Sewer and Storm Pump station) and (tunnels) [273.87 m2] | 8,763.89 | Z5 | CONS | STR |
| RHD4CSTL1B07D031161 |  | RC Casting Fluid-Applied - (B7.03 00 00 .04)-STL1-B07-D03 | 2d | 2028-01-13 | 2028-01-15 | RHD4CSTL1B07D031160 | Supply and cast in place screed concrete 50 mm thickness screed concrete for protecting waterproofing under the foundation for (Sewer and Storm Pump station) and (tunnels) [273.87 m2] | 8,763.89 | Z5 | CONS | STR |
|  | 220 | **RHD4-02-002-STL1-Retaining Walls & Slab** |  | 2028-01-16 | 2028-01-30 |  |  |  |  |  |  |
| RHD4CSTL1B07D031162 |  | Steel Fixing - (B7.03 00 00 .07)-STL1-B07-D03 | 4d | 2028-01-16 | 2028-01-19 | RHD4CSTL1B07D031161, RHD4ENSTL1APPSTC1000 | Supply and cast in place reinforced concrete with fc'=31 Mpa for the sub- structures for (Sewer and Storm Pump station) and (tunnels) for Walls below ground level [29.11 m3] | 78,111.52 | Z5 | CONS | STR |
| RHD4CSTL1B07D031163 |  | Formwork - (B7.03 00 00 .07)-STL1-B07-D03 | 3d | 2028-01-20 | 2028-01-23 | RHD4CSTL1B07D031162, RHD4ENSTL1APPSTC1000 | Supply and cast in place reinforced concrete with fc'=31 Mpa for the sub- structures for (Sewer and Storm Pump station) and (tunnels) for Walls below ground level [29.11 m3] | 78,111.52 | Z5 | CONS | STR |
| RHD4CSTL1B07D031164 |  | RC Casting - (B7.03 00 00 .07)-STL1-B07-D03 | 4d | 2028-01-24 | 2028-01-27 | RHD4CSTL1B07D031163, RHD4ENSTL1APPSTC1000 | Supply and cast in place reinforced concrete with fc'=31 Mpa for the sub- structures for (Sewer and Storm Pump station) and (tunnels) for Walls below ground level [23.29 m3] | 62,489.22 | Z5 | CONS | STR |
| RHD4CSTL1B07D031165 |  | Water protection Board membrance Fluid-Applied - (B7.03 00 00 .07)-STL1-B07-D03 | 2d | 2028-01-29 | 2028-01-30 | RHD4CSTL1B07D031164, RHD4PRSHLDOSLFS1300, RHD4PRSHLSTAGLFS1300 | Supply and cast in place reinforced concrete with fc'=31 Mpa for the sub- structures for (Sewer and Storm Pump station) and (tunnels) for Walls below ground level [25.23 m3] | 67,696.65 | Z5 | CONS | ARC |
|  | 221 | **RHD4-02-002-STL1-Metal Floor Door** |  | 2028-01-31 | 2028-02-05 |  |  |  |  |  |  |
| RHD4CSTL1B07D021166 |  | Installation of metal door size (600x600mm) - (B7.08 31 13.01)-STL1-B07-D02 | 5d | 2028-01-31 | 2028-02-05 | RHD4CSTL1B07D031165, RHD4PRSHLDOSLFS1400, RHD4PRSHLSTAGLFS1400 | Access Doors and Frames - Metal floor door size (600x600mm) [2 nr] | 1,838 | Z5 | CONS | ARC |
|  | 222 | **RHD4-02-002-STL1-Magnetic type flowmeter Installation** |  | 2028-02-06 | 2028-02-23 |  |  |  |  |  |  |
| RHD4CSTL1B07D151167 |  | Flow meter installation 150mm - (B7.22 05 19.03)-STL1-B07-D15 | 5d | 2028-02-06 | 2028-02-10 | RHD4CSTL1B07D021166, RHD4PRLOLSTAGLFS1200, RHD4ENSTL1APPMEC1200, RHD4GNPPSD1100, RHD4ENSDZ6SUBRD220, RHD4ENSDSTL1SUB3000 | Magnetic Type Flowmeter With Diameter 150mm [0.5 nr] | 16,547 | Z5 | CONS | MECH |
| RHD4CSTL1B07D151168 |  | UPVC Conduits 1 inch UPVC - (B7.22 05 19.03)-STL1-B07-D15 | 4d | 2028-02-12 | 2028-02-15 | RHD4CSTL1B07D151167, RHD4ENSTL1APPMEC1200, RHD4GNPPSD1100, RHD4ENSDZ6SUBRD220, RHD4ENSDSTL1SUB3000 | Magnetic Type Flowmeter With Diameter 150mm [0.1 nr] | 3,309.4 | Z5 | CONS | MECH |
| RHD4CSTL1B07D151169 |  | Electrical power and cable connection - (B7.22 05 19.03)-STL1-B07-D15 | 3d | 2028-02-16 | 2028-02-19 | RHD4CSTL1B07D151168 | Magnetic Type Flowmeter With Diameter 150mm [0.1 nr] | 3,309.4 | Z5 | CONS | MECH |
| RHD4CSTL1B07D151170 |  | Flow meter Panel Integration and connection - (B7.22 05 19.03)-STL1-B07-D15 | 3d | 2028-02-20 | 2028-02-23 | RHD4CSTL1B07D151169 | Magnetic Type Flowmeter With Diameter 150mm [0.3 nr] | 9,928.2 | Z5 | CONS | MECH |

| ID | WBS | Activity | Duration | Start | Finish | Predecessors | Complete | Resources | Cost | Actual cost | RDH4-01-001-Zones-1 | RDH4-01-001-Phases-1 | RDH4-01-001-Networks-1 |
| --- | --- | --- | --- | --- | --- | --- | --- | --- | --- | --- | --- | --- | --- |
|  | 223 | **RHD4-02-002-STL1-GENERATOR FOUNDATION** |  | 2027-12-29 | 2028-05-08 |  |  |  |  |  |  |  |  |
|  | 224 | **RHD4-02-002-STL1-GENERATOR FOUNDATION-Concrete works** |  | 2027-12-29 | 2028-01-24 |  |  |  |  |  |  |  |  |
| RHD4CSTL1B07D031171 |  | Lean Concrete Plain Concrete - (B7.03 00 00 .01)-STL1-B07-D03 | 2d | 2027-12-29 | 2027-12-30 | RHD4CSTL1B07D031156, RHD4ENSTL1APPSTC1000 |  | Supply and cast in place plain concrete 100 mm thickness lean concrete under the foundation for (Sewer and Storm Pump station) and (tunnels) [13.85 m2] | 913.77 |  | Z5 | CONS | STR |
| RHD4CSTL1B07D031172 |  | Water proofing membrance Bituminous Sheet - (B7.07 13 13.01)-STL1-B07-D03 | 3d | 2028-01-01 | 2028-01-03 | RHD4CSTL1B07D031171, RHD4ENSTL1APPSTC1000, RHD4PRSHLDOSLFS1200, RHD4PRSHLSTAGLFS1200 |  | Bituminous Sheet Waterproofing (2 layers of waterproofing bitumenous membrane 4mm below footings) [12.49 m2] | 1,074.31 |  | Z5 | CONS | ARC |
| RHD4CSTL1B07D031173 |  | Screed 50mm - (B7.03 00 00 .04)-STL1-B07-D03 | 4d | 2028-01-04 | 2028-01-08 | RHD4CSTL1B07D031172, RHD4ENSTL1APPSTC1000 |  | Supply and cast in place screed concrete 50 mm thickness screed concrete for protecting waterproofing under the foundation for (Sewer and Storm Pump station) and (tunnels) [273.87 m2] | 8,763.89 |  | Z5 | CONS | STR |
| RHD4CSTL1B07D031174 |  | Steel Fixing - (B7.03 00 00 .04)-STL1-B07-D03 | 4d | 2028-01-09 | 2028-01-12 | RHD4CSTL1B07D031173, RHD4ENSTL1APPSTC1000 |  | Supply and cast in place screed concrete 50 mm thickness screed concrete for protecting waterproofing under the foundation for (Sewer and Storm Pump station) and (tunnels) [273.87 m2] | 8,763.89 |  | Z5 | CONS | STR |
| RHD4CSTL1B07D031175 |  | Formwork - (B7.03 00 00 .04)-STL1-B07-D03 | 5d | 2028-01-13 | 2028-01-18 | RHD4CSTL1B07D031174 |  | Supply and cast in place screed concrete 50 mm thickness screed concrete for protecting waterproofing under the foundation for (Sewer and Storm Pump station) and (tunnels) [273.87 m2] | 8,763.89 |  | Z5 | CONS | STR |
| RHD4CSTL1B07D031176 |  | RC Casting - (B7.03 00 00 .04)-STL1-B07-D03 | 5d | 2028-01-19 | 2028-01-24 | RHD4CSTL1B07D031175 |  | Supply and cast in place screed concrete 50 mm thickness screed concrete for protecting waterproofing under the foundation for (Sewer and Storm Pump station) and (tunnels) [342.34 m2] | 10,954.86 |  | Z5 | CONS | STR |
|  | 225 | **RHD4-02-002-STL1-Standby Diesel Generator** |  | 2028-01-25 | 2028-05-08 |  |  |  |  |  |  |  |  |
| RHD4CSTL1B07D151177 |  | Standby Diesel Generator Set 150 KVA - Installation 100kva - (B7.26 32 12.05)-STL1-B07-D15 | 4d | 2028-01-25 | 2028-01-29 | RHD4CSTL1B07D031176, RHD4ENSTL1APPELE1300, RHD4PRLOLSTAGLFS1600 |  | Standby Diesel Generator Set 150 KVA, 400/230v, 3P, 60Hz in Sound Attenuated Enclosure [1 Item_set] | 136,420 |  | Z5 | CONS | ELEC |
| RHD4CSTL1B07D151178 |  | Automatic Transfer Switch ATS panel 300A - Installation 160A - (B7.26 32 12.06)-STL1-B07-D15 | 4d | 2028-01-30 | 2028-02-02 | RHD4CSTL1B07D151177, RHD4ENSTL1APPELE1300 |  | Automatic Transfer Switch ATS panel 300A [1 nr] | 67,414 |  | Z5 | CONS | ELEC |
| RHD4CSTL1B07D151179 |  | Lean Concrete Plain Concrete - (B7.03 00 00 .01)-STL1-B07-D15 | 5d | 2028-02-03 | 2028-02-08 | RHD4CSTL1B07D151178 |  | Supply and cast in place plain concrete 100 mm thickness lean concrete under the foundation for (Sewer and Storm Pump station) and (tunnels) [13.85 m2] | 913.77 |  | Z5 | CONS | STR |
| RHD4CSTL1B07D151180 |  | Water proofing membrance Bituminous Sheet - (B7.07 13 13.01)-STL1-B07-D15 | 5d | 2028-04-11 | 2028-04-16 | RHD4CSTL1B07D151179, RHD4CSTL1B07D161155 SS, RHD4PRSHLDOSLFS1200, RHD4PRSHLSTAGLFS1200 |  | Bituminous Sheet Waterproofing (2 layers of waterproofing bitumenous membrane 4mm below footings) [12.49 m2] | 1,074.31 |  | Z5 | CONS | ARC |
| RHD4CSTL1B07D151181 |  | Screed 50mm - (B7.03 00 00 .04)-STL1-B07-D15 | 3d | 2028-04-17 | 2028-04-19 | RHD4CSTL1B07D151180, RHD4CSTL1B07D151170 |  | Supply and cast in place screed concrete 50 mm thickness screed concrete for protecting waterproofing under the foundation for (Sewer and Storm Pump station) and (tunnels) [342.34 m2] | 10,954.86 |  | Z5 | CONS | STR |
| RHD4CSTL1B07D151182 |  | Steel Fixing - (B7.03 00 00 .05)-STL1-B07-D15 | 4d | 2028-04-20 | 2028-04-24 | RHD4CSTL1B07D151181 |  | Supply and cast in place reinforced concrete with fc'=31 Mpa for the sub- structures for (Sewer and Storm Pump station) and (tunnels) for Footings [3.99 m3] | 6,134.47 |  | Z5 | CONS | STR |
| RHD4CSTL1B07D151183 |  | Formwork - (B7.03 00 00 .05)-STL1-B07-D15 | 3d | 2028-04-25 | 2028-04-27 | RHD4CSTL1B07D151182 |  | Supply and cast in place reinforced concrete with fc'=31 Mpa for the sub- structures for (Sewer and Storm Pump station) and (tunnels) for Footings [2.99 m3] | 4,600.86 |  | Z5 | CONS | STR |
| RHD4CSTL1B07D151184 |  | RC Casting - (B7.03 00 00 .05)-STL1-B07-D15 | 3d | 2028-04-29 | 2028-05-01 | RHD4CSTL1B07D151183 |  | Supply and cast in place reinforced concrete with fc'=31 Mpa for the sub- structures for (Sewer and Storm Pump station) and (tunnels) for Footings [2.99 m3] | 4,600.86 |  | Z5 | CONS | STR |
| RHD4CSTL1B07D151185 |  | Water protection Board membrance Fluid-Applied - (B7.07 13 13.01)-STL1-B07-D15 | 3d | 2028-05-02 | 2028-05-08 | RHD4CSTL1B07D151184, RHD4PRSHLDOSLFS1300, RHD4PRSHLSTAGLFS1300 |  | Bituminous Sheet Waterproofing (2 layers of waterproofing bitumenous membrane 4mm below footings) [8.33 m2] | 716.21 |  | Z5 | CONS | ARC |
|  | 4 | **Sewage Lift Station 01** |  | 2026-10-20 | 2028-04-17 |  |  |  |  |  |  |  |  |
|  | 20 | **RHD4-02-002-Sewage Lift Station 01-Electrical Room** |  | 2026-10-20 | 2028-04-03 |  |  |  |  |  |  |  |  |
|  | 21 | **RHD4-02-002-SWL1-B07-Sub Structure** |  | 2026-10-20 | 2027-12-11 |  |  |  |  |  |  |  |  |
|  | 22 | **RHD4-02-002-SWL1-B07-Electrical Room-Plain Concrete** |  | 2026-10-20 | 2027-06-09 |  |  |  |  |  |  |  |  |
| RHD4CSWL1B07D031035 |  | Shuttering Plain Concrete for Electrical Room - (B7.03 00 00 .01)-SWL1-B07-D03 | 3d | 2026-10-20 A | 2026-10-22 A | RHD4CZ9L02ST1501, RHD4CZ9L02ST1504, RHD4CZ9L02ST1506, RHD4CZ8L04ST2200, RHD4CZ8L04ST1504, RHD4CZ8A011ST1504, RHD4CZ8A011ST1509, RHD4CZ4L014ST8500, RHD4CZ5L016SW3500, RHD4CZ5L08PT4500, RHD4CZ5C061PT3200, RHD4CZ5C061PT4500, RHD4CZ5C051ICT3400, RHD4CZ5C051TC3400, RHD4CZ6A015PT4500, RHD4CZ6A015PT3202, RHD4CZ6A015PT3200 | 100% | Supply and cast in place plain concrete 100 mm thickness lean concrete under the foundation for (Sewer and Storm Pump station) and (tunnels) [19.72 m2]; Carpenter [74.16 h]; Unskilled Labor [21.24 h] | 1,301.26 | 1,301.26 | Z3 | CONS | STR |
| RHD4CSWL1B07D031036 |  | Lean Concrete Plain Concrete for Electrical Room - (B7.03 00 00 .01)-SWL1-B07-D03 | 2d | 2027-06-08 | 2027-06-09 | RHD4CSWL1B07D031035, RHD4CZ8L04ST1502, RHD4CZ8A011ST1502, RHD4CZ8A011ST1503, RHD4CZ4C031PT2400, RHD4CZ4C031PT3203 |  | Supply and cast in place plain concrete 100 mm thickness lean concrete under the foundation for (Sewer and Storm Pump station) and (tunnels) [19.72 m2]; Unskilled Labor [21.24 h]; RIC Machine [6.64 h]; Concrete Mixer Truck [3.27 h]; Concrete Pump [3.27 h] | 1,301.26 |  | Z3 | CONS | STR |

| ID | WBS | Activity | Duration | Start | Finish | Predecessors | Resources | Cost | RDH4-01-001-Zones-1 | RDH4-01-001-Phases-1 | RDH4-01-001-Networks-1 |
| --- | --- | --- | --- | --- | --- | --- | --- | --- | --- | --- | --- |
|  | 23 | **RHD4-02-002-SWL1-B07-Electrical Room-Footing / Foundation** |  | 2027-06-10 | 2027-07-18 |  |  |  |  |  |  |
| RHD4CSWL1B07D031037 |  | Shuttering Foundation for Electrical Room - (B7.03 00 00 .05)-SWL1-B07-D03 | 3d | 2027-06-10 | 2027-06-13 | RHD4CSWL1B07D031036 | Supply and cast in place reinforced concrete with fc'=31 Mpa for the sub- structures for (Sewer and Storm Pump station) and (tunnels) for Footings [1.24 m3]; Carpenter [35.28 h]; Unskilled Labor [5.01 h] | 1,912.64 | Z3 | CONS | STR |
| RHD4CSWL1B07D031038 |  | Steel Fixing Foundation for Electrical Room - (B7.03 00 00 .05)-SWL1-B07-D03 | 4d | 2027-07-08 | 2027-07-12 | RHD4CSWL1B07D031037, RHD4CZ3C083SW3500, RHD4CZ1C081SW3500, RHD4CZ9L02ST3502, RHD4CZ8A011ST1500, RHD4CZ5L07SW3500, RHD4CZ6C052PT3200, RHD4CZ4L09PT3203, RHD4CZ4L09PT3202 | Supply and cast in place reinforced concrete with fc'=31 Mpa for the sub- structures for (Sewer and Storm Pump station) and (tunnels) for Footings [1.24 m3]; Unskilled Labor [5.01 h]; Steel Fixer [40.4 h] | 1,912.64 | Z3 | CONS | STR |
| RHD4CSWL1B07D031039 |  | RC Casting Foundation for Electrical Room - (B7.03 00 00 .05)-SWL1-B07-D03 | 2d | 2027-07-13 | 2027-07-14 | RHD4CSWL1B07D031038, RHD4CZ2C082ST1200, RHD4CZ9L02ST3500, RHD4CZ4C031SL2400, RHD4CZ4C031MV2400, RHD4CZ4C031PT4500, RHD4CZ6A015IRR3202 | Supply and cast in place reinforced concrete with fc'=31 Mpa for the sub- structures for (Sewer and Storm Pump station) and (tunnels) for Footings [2.49 m3]; Unskilled Labor [4 h]; RIC Machine [2.5 h]; Concrete Mixer Truck [1.31 h]; Concrete Pump [1.31 h] | 3,825.29 | Z3 | CONS | STR |
| RHD4CSWL1B07D031040 |  | Deshuttering Foundation for Electrical Room - (B7.03 00 00 .05)-SWL1-B07-D03 | 3d | 2027-07-15 | 2027-07-18 | RHD4CSWL1B07D031039, RHD4CZ2C082ST1501, RHD4CZ8A011ST8500, RHD4CZ4L014PT3202, RHD4CZ4C031ICT3400, RHD4CZ5A014PT3202, RHD4CZ6A015IRR3203 | Supply and cast in place reinforced concrete with fc'=31 Mpa for the sub- structures for (Sewer and Storm Pump station) and (tunnels) for Footings [1.24 m3]; Carpenter [14.16 h]; Unskilled Labor [2.07 h] | 1,912.64 | Z3 | CONS | STR |
|  | 24 | **RHD4-02-002-SWL1-B07-Electrical Room-Neck Column** |  | 2027-07-20 | 2027-08-15 |  |  |  |  |  |  |
| RHD4CSWL1B07D031041 |  | Steel Fixing for Neck Column for Electrical Room - (B7.03 00 00 .06)-SWL1-B07-D03 | 3d | 2027-07-20 | 2027-07-22 | RHD4CSWL1B07D031040, RHD4CZ2C082ST3502, RHD4CZ6C052PT4500, RHD4CZ6A015ST7500, RHD4CZ6C062PT4500 | Supply and cast in place reinforced concrete with fc'=31 Mpa for the sub- structures for (Sewer and Storm Pump station) and (tunnels) for Neck columns [0.09 m3]; Unskilled Labor [0.44 h]; Steel Fixer [3.48 h] | 136.48 | Z3 | CONS | STR |
| RHD4CSWL1B07D031042 |  | Shuttering for Neck Column for Electrical Room - (B7.03 00 00 .06)-SWL1-B07-D03 | 4d | 2027-07-24 | 2027-07-27 | RHD4CSWL1B07D031041 | Supply and cast in place reinforced concrete with fc'=31 Mpa for the sub- structures for (Sewer and Storm Pump station) and (tunnels) for Neck columns [0.13 m3]; Unskilled Labor [0.65 h]; Steel Fixer [5.23 h] | 204.72 | Z3 | CONS | STR |
| RHD4CSWL1B07D031043 |  | RC Casting for Neck Column for Electrical Room - (B7.03 00 00 .06)-SWL1-B07-D03 | 2d | 2027-07-28 | 2027-07-29 | RHD4CSWL1B07D031042 | Supply and cast in place reinforced concrete with fc'=31 Mpa for the sub- structures for (Sewer and Storm Pump station) and (tunnels) for Neck columns [0.13 m3]; Unskilled Labor [0.22 h]; RIC Machine [0.22 h] | 204.72 | Z3 | CONS | STR |
| RHD4CSWL1B07D031044 |  | Deshuttering for Neck Column for Electrical Room - (B7.03 00 00 .06)-SWL1-B07-D03 | 3d | 2027-08-12 | 2027-08-15 | RHD4CSWL1B07D031043, RHD4CZ7C02ST1508, RHD4CZ7C013IRR1500, RHD4CZ7L03ST1500, RHD4CZ9C071ST3501, RHD4CZ8L04ST3502, RHD4CZ8A011ST3502, RHD4CZ4L014IRR3202 | Supply and cast in place reinforced concrete with fc'=31 Mpa for the sub- structures for (Sewer and Storm Pump station) and (tunnels) for Neck columns [0.09 m3]; Carpenter [1.52 h]; Unskilled Labor [0.22 h] | 136.48 | Z3 | CONS | STR |
|  | 25 | **RHD4-02-002-SWL1-B07-Electrical Room-Ground Beams** |  | 2027-08-16 | 2027-08-30 |  |  |  |  |  |  |
| RHD4CSWL1B07D031045 |  | Steel Fixing for Ground Beams for Electrical Room - (B7.03 00 00 .08)-SWL1-B07-D03 | 3d | 2027-08-16 | 2027-08-18 | RHD4CSWL1B07D031044, RHD4CZ2C082ST8500, RHD4CZ7C02ST1500, RHD4CZ7L03ST3502, RHD4CZ9L02PT3203, RHD4CZ9C071ST3502, RHD4CZ8L04SW2500, RHD4CZ4C031RD2100, RHD4CZ7RA05SL2400 | Supply and cast in place reinforced concrete with fc'=31 Mpa for the sub- structures for (Sewer and Storm Pump station) and (tunnels) for Ground beams [1.99 m3]; Unskilled Labor [0.87 h]; Steel Fixer [6.97 h] | 2,629.46 | Z3 | CONS | STR |
| RHD4CSWL1B07D031046 |  | Shuttering for Ground Beams for Electrical Room - (B7.03 00 00 .08)-SWL1-B07-D03 | 4d | 2027-08-19 | 2027-08-23 | RHD4CSWL1B07D031045, RHD4CZ2L011PT3203, RHD4CZ9L06ST1505, RHD4CZ9C071ST3500, RHD4CZ8L04SW3501, RHD4CZ8A011ST3501, RHD4CZ5L016ICT3400 | Supply and cast in place reinforced concrete with fc'=31 Mpa for the sub- structures for (Sewer and Storm Pump station) and (tunnels) for Ground beams [2.98 m3]; Unskilled Labor [1.31 h]; Steel Fixer [10.45 h] | 3,944.2 | Z3 | CONS | STR |
| RHD4CSWL1B07D031047 |  | RC Casting for Ground Beams for Electrical Room - (B7.03 00 00 .08)-SWL1-B07-D03 | 2d | 2027-08-25 | 2027-08-26 | RHD4CSWL1B07D031046, RHD4CZ1L101PT4500, RHD4CZ7C02ST8100, RHD4CZ9L02IRR3202, RHD4CZ9L02ST7500, RHD4CZ9L05ST7500, RHD4CZ8L04IRR1503 FF, RHD4CZ8A011ST3500 | Supply and cast in place reinforced concrete with fc'=31 Mpa for the sub- structures for (Sewer and Storm Pump station) and (tunnels) for Ground beams [2.98 m3]; Unskilled Labor [0.54 h]; RIC Machine [0.33 h]; Concrete Mixer Truck [0.22 h]; Concrete Pump [0.22 h] | 3,944.2 | Z3 | CONS | STR |
| RHD4CSWL1B07D031048 |  | Deshuttering for Ground Beams for Electrical Room - (B7.03 00 00 .08)-SWL1-B07-D03 | 3d | 2027-08-28 | 2027-08-30 | RHD4CSWL1B07D031047, RHD4CZ2L011MV2400, RHD4CZ2L011PT4500, RHD4CZ9L02IRR3201, RHD4CZ9L02IRR2400, RHD4CZ9L02IRR1507 FF, RHD4CZ9L06ST1502, RHD4CZ8L04ST3401, RHD4CZ7RA05RD2100 | Supply and cast in place reinforced concrete with fc'=31 Mpa for the sub- structures for (Sewer and Storm Pump station) and (tunnels) for Ground beams [1.99 m3]; Carpenter [2.4 h]; Unskilled Labor [0.33 h] | 2,629.46 | Z3 | CONS | STR |
|  | 26 | **RHD4-02-002-SWL1-B07-Electrical Room-Aggregate base Course** |  | 2027-08-31 | 2027-09-07 |  |  |  |  |  |  |
| RHD4CSWL1B07D031049 |  | Laying Aggregate base course Slab on Grade - (B7.32 11 23.01)-SWL1-B07-D03 | 4d | 2027-08-31 | 2027-09-04 | RHD4CSWL1B07D031048, RHD4CZ7L03SW1500, RHD4CZ7L03ST7500, RHD4CZ9L06ST1500, RHD4CZ8L04SW3500, RHD4CZ4L014SW3500, RHD4CZ5L07IRR3202, RHD4CZ5L016PT4500 | Aggregate base course below slab on grade and ground beams for Sewer and Storm Pump station building [9.45 m3]; Carpenter [106.51 h]; Unskilled Labor [15.25 h] | 236.25 | Z3 | CONS | ARC |
| RHD4CSWL1B07D031050 |  | Compaction Slab on Grade - (B7.32 11 23.01)-SWL1-B07-D03 | 3d | 2027-09-05 | 2027-09-07 | RHD4CSWL1B07D031049, RHD4CZ2L011ICT3400, RHD4CZ2L011LV2400, RHD4CZ8L04PT4500, RHD4CZ8L04PT3200, RHD4CZ8L04ST7500, RHD4CZ5L07ICT3400, RHD4CZ5L07SL2400 | Aggregate base course below slab on grade and ground beams for Sewer and Storm Pump station building [4.05 m3]; Unskilled Labor [6.53 h]; Steel Fixer [52.16 h] | 101.25 | Z3 | CONS | ARC |
|  | 27 | **RHD4-02-002-SWL1-B07-Electrical Room-Slab on Grade** |  | 2027-09-08 | 2027-10-02 |  |  |  |  |  |  |
| RHD4CSWL1B07D031051 |  | Screeding for SOG works Slab on Grade for Electrical Room - (B7.03 00 00 .02)-SWL1-B07-D03 | 4d | 2027-09-08 | 2027-09-12 | RHD4CSWL1B07D031050, RHD4CZ3L122SW3500, RHD4CZ2L102IRR3200, RHD4CZ7C02ST3500, RHD4CZ2L102ST4600 | Supply and cast in place plain concrete 50 mm thickness lean concrete under slab on grade and gound beams for (Sewer and Storm Pump station building) [30.77 m2]; Carpenter [334.88 h]; Unskilled Labor [47.81 h] | 769.25 | Z3 | CONS | STR |
| RHD4CSWL1B07D031052 |  | Shuttering for Slab on Grade for Electrical Room - (B7.03 00 00 .09)-SWL1-B07-D03 | 5d | 2027-09-13 | 2027-09-18 | RHD4CSWL1B07D031051, RHD4CZ7C02ST3501, RHD4CZ9L02PT3200, RHD4CZ9L02PT3202, RHD4CZ8A011SW2500 | Supply and cast in place reinforced concrete with fc'=31 Mpa for the sub- structures for (Sewer and Storm Pump station) and (tunnels) for Slab on grade [0.87 m3]; Carpenter [24.39 h]; Unskilled Labor [3.48 h] | 645.54 | Z3 | CONS | STR |
| RHD4CSWL1B07D031053 |  | Steel Fixing for Slab on Grade for Electrical Room - (B7.03 00 00 .09)-SWL1-B07-D03 | 5d | 2027-09-20 | 2027-09-26 | RHD4CSWL1B07D031052, RHD4CZ1C081PT4500, RHD4CZ1L101SW3500, RHD4CZ7C02SW1500, RHD4CZ7L03SW3000, RHD4CZ7L03SW4403, RHD4CZ7L03SW4401, RHD4CZ7L03SW5201, RHD4CZ7L03SW5200, RHD4CZ9L06ST3502, RHD4CZ9L05PT5100, RHD4CZ9C071PT3202, RHD4PRLOLSTAGLFS1400, RHD4PRLOLSTAGLFS1300, RHD4PRLOLSTAGLFS1200 | Supply and cast in place reinforced concrete with fc'=31 Mpa for the sub- structures for (Sewer and Storm Pump station) and (tunnels) for Slab on grade [1.3 m3]; Unskilled Labor [5.23 h]; Steel Fixer [41.71 h] | 968.31 | Z3 | CONS | STR |
| RHD4CSWL1B07D031054 |  | RC Casting for Slab on Grade for Electrical Room - (B7.03 00 00 .09)-SWL1-B07-D03 | 2d | 2027-09-27 | 2027-09-28 | RHD4CSWL1B07D031053, RHD4CZ3C011PT3202, RHD4CZ3C011PT3201, RHD4CZ2L102PT4500, RHD4CZ9L06SW3501, RHD4CZ9L05PT3200, RHD4CZ9L05PT3203, RHD4CZ9L05PT2402, RHD4CZ8A011IRR3203, RHD4PRLOLSTAGLFS1700 FF, RHD4PRLOLSTAGLFS2000, RHD4PRLOLSTAGLFS1600 | Supply and cast in place reinforced concrete with fc'=31 Mpa for the sub- structures for (Sewer and Storm Pump station) and (tunnels) for Slab on grade [1.3 m3]; Unskilled Labor [1.09 h]; RIC Machine [0.65 h]; Concrete Mixer Truck [0.33 h]; Concrete Pump [0.33 h] | 968.31 | Z3 | CONS | STR |
| RHD4CSWL1B07D031055 |  | Deshuttering for Slab on Grade for Electrical Room - (B7.03 00 00 .09)-SWL1-B07-D03 | 3d | 2027-09-29 | 2027-10-02 | RHD4CSWL1B07D031054, RHD4CZ2C082PT4500, RHD4CZ9L06ST7500, RHD4CZ9L05SW3500, RHD4CZ8L04IRR2402 | Supply and cast in place reinforced concrete with fc'=31 Mpa for the sub- structures for (Sewer and Storm Pump station) and (tunnels) for Slab on grade [0.87 m3]; Carpenter [4.9 h]; Unskilled Labor [0.65 h] | 645.54 | Z3 | CONS | STR |

| ID | WBS | Activity | Duration | Start | Finish | Predecessors | Resources | Cost | RDH4-01-001-Zones-1 | RDH4-01-001-Phases-1 | RDH4-01-001-Networks-1 |
| --- | --- | --- | --- | --- | --- | --- | --- | --- | --- | --- | --- |
|  | 28 | **RHD4-02-002-SWL1-B07-Electrical Room-Fluid-Applied Waterproofing** |  | 2027-10-03 | 2027-10-06 |  |  |  |  |  |  |
| RHD4CSWL1B07D071056 |  | 2 coats of bitumen on Grade Beams and SOW Slab on Grade - (B7.07 14 00.01)-SWL1-B07-D07 | 4d | 2027-10-03 | 2027-10-06 | RHD4CSWL1B07D031055, RHD4PRSHLDOSLFS1200, RHD4PRSHLSTAGLFS1200, RHD4CZ3L122IRR1300, RHD4CZ3L122PT3201, RHD4CZ8L04IRR3203, RHD4CZ5L07PT4500 | Fluid-Applied Waterproofing (2 coats of bitumen waterproofing paint for slab on grade and ground beams) [10.28 m2]; Carpenter [133.95 h]; Unskilled Labor [19.2 h] | 154.17 | Z3 | CONS | ARC |
|  | 29 | **RHD4-02-002-SWL1-B07-Electrical Room-Vapor Retarders** |  | 2027-10-07 | 2027-10-10 |  |  |  |  |  |  |
| RHD4CSWL1B07D071057 |  | 250 micron Polyethylene sheet Slab on Grade - (B7.07 26 16.01)-SWL1-B07-D07 | 3d | 2027-10-07 | 2027-10-10 | RHD4CSWL1B07D071056, RHD4PRSHLDOSLFS1200, RHD4PRSHLSTAGLFS1200, RHD4CZ3C011ICT3400, RHD4CZ3C011IRR2402, RHD4CZ3C011IRR3202, RHD4CZ3C011IRR3203, RHD4CZ9L06SW3500, RHD4CZ9L05PT4500, RHD4CZ9C071ST7500, RHD4CZ8L04IRR3200, RHD4CZ4C012IRR3200, RHD4CZ4L09ST7500, RHD4CZ7L03IRR3102, RHD4CZ7L03IRR2401, RHD4CZ8A011IRR1503, RHD4CZ8A011IRR3201, RHD4PRLOLSTACCTV1001 | Vapor Retarders (250 micron thk polyethylene sheet below slab on grade and ground beams) [10.64 m2]; Carpenter [365.26 h]; Unskilled Labor [52.16 h] | 42.56 | Z3 | CONS | ARC |
|  | 30 | **RHD4-02-002-SWL1-B07-Electrical Room-Columns** |  | 2027-10-12 | 2027-11-02 |  |  |  |  |  |  |
| RHD4CSWL1B07D031058 |  | Shuttering for Columns for Electrical Room - (B7.03 00 00 .13)-SWL1-B07-D03 | 5d | 2027-10-12 | 2027-10-17 | RHD4CSWL1B07D071057, RHD4CZ3C011LV2400, RHD4CZ3C011MV2400, RHD4CZ7L03IRR3200, RHD4CZ9L02IRR1500, RHD4CZ9L05ST3500 | Supply and cast in place reinforced concrete with fc'=31 Mpa for the Super- structures for (Sewer and Storm Pump station) for Columns [0.23 m3]; Carpenter [10.13 h]; Unskilled Labor [2.94 h] | 360.18 | Z3 | CONS | STR |
| RHD4CSWL1B07D031059 |  | Steel Fixing for Columns for Electrical Room - (B7.03 00 00 .13)-SWL1-B07-D03 | 3d | 2027-10-18 | 2027-10-20 | RHD4CSWL1B07D031058, RHD4CZ3C011IRR3201, RHD4CZ7C02PT3202, RHD4CZ4L09PT3201, RHD4CZ4L09ST3501, RHD4CZ4L014PT4500, RHD4PRLOLSTAGMV1602, RHD4PRLOLSTAGMV1601, RHD4CZ8RA04SL2400, RHD4CZ7C032IRR3200, RHD4CZ4C031RW3000, RHD4CZ7C032PT4500 FF, RHD4CZ7L03IRR3201 FF, RHD4CZ7L03IRR3203, RHD4CZ8A011PT4500, RHD4CZ4C012LV4300, RHD4CZ8A011PT2401 | Supply and cast in place reinforced concrete with fc'=31 Mpa for the Super- structures for (Sewer and Storm Pump station) for Columns [0.34 m3]; Unskilled Labor [2.18 h]; Steel Fixer [17.42 h] | 540.27 | Z3 | CONS | STR |
| RHD4CSWL1B07D031060 |  | RC Casting for Columns for Electrical Room - (B7.03 00 00 .13)-SWL1-B07-D03 | 2d | 2027-10-27 | 2027-10-28 | RHD4CSWL1B07D031059, RHD4CZ7C02PT3200, RHD4CZ7C02PT4500, RHD4CZ9L06PT4500, RHD4CZ8A011PT3201, RHD4CZ8A011PT3202, RHD4CZ7C02ST3502, RHD4CZ8L04SL2400, RHD4CZ4C012RW3000, RHD4CZ7C032RD7100, RHD4CZ7C032RD8100 | Supply and cast in place reinforced concrete with fc'=31 Mpa for the Super- structures for (Sewer and Storm Pump station) for Columns [0.34 m3]; Unskilled Labor [0.65 h]; RIC Machine [0.65 h]; Concrete Mixer Truck [0.33 h]; Concrete Pump [0.33 h] | 540.27 | Z3 | CONS | STR |
| RHD4CSWL1B07D031061 |  | Deshuttering for Columns for Electrical Room - (B7.03 00 00 .13)-SWL1-B07-D03 | 4d | 2027-10-30 | 2027-11-02 | RHD4CSWL1B07D031060, RHD4CZ3C083ST8500, RHD4CZ3C011PT4500, RHD4CZ8A011PT3203, RHD4CZ4L09PT3203, RHD4CZ4RA02SL5200 | Supply and cast in place reinforced concrete with fc'=31 Mpa for the Super- structures for (Sewer and Storm Pump station) for Columns [0.23 m3] | 360.18 | Z3 | CONS | STR |
|  | 31 | **RHD4-02-002-SWL1-B07-Electrical Room-Beams** |  | 2027-11-03 | 2027-11-27 |  |  |  |  |  |  |
| RHD4CSWL1B07D031062 |  | Shuttering for Roof Beams for Electrical Room - (B7.03 00 00 .14)-SWL1-B07-D03 | 6d | 2027-11-03 | 2027-11-09 | RHD4CSWL1B07D031061, RHD4CZ9C071LV3400, RHD4CZ3L122PT4500 FF, RHD4CZ7A012PT3201, RHD4CZ7A012PT4500, RHD4CZ5B14EX1003, RHD4CZ5RA07CCTV1500 FF | Supply and cast in place reinforced concrete with fc'=31 Mpa for the Super- structures for (Sewer and Storm Pump station) for Beams [0.44 m3]; Carpenter [10.13 h]; Unskilled Labor [4.36 h] | 578.14 | Z3 | CONS | STR |
| RHD4CSWL1B07D031063 |  | Steel Fixing for Roof Beams for Electrical Room - (B7.03 00 00 .14)-SWL1-B07-D03 | 8d | 2027-11-10 | 2027-11-18 | RHD4CSWL1B07D031062, RHD4CZ7C02ST8500, RHD4CZ9L02PT4500, RHD4CZ4L09PT3200, RHD4CZ4RA02SL1500, RHD4CZ6C052RD7100 FF, RHD4CZ7A012IRR5100, RHD4CZ6RA01RD9100, RHD4CZ3L122PT3202, RHD4CZ7A012IRR3202, RHD4CZ3C011SL3100 | Supply and cast in place reinforced concrete with fc'=31 Mpa for the Super- structures for (Sewer and Storm Pump station) for Beams [0.65 m3]; Unskilled Labor [3.27 h]; Steel Fixer [17.42 h] | 867.2 | Z3 | CONS | STR |
| RHD4CSWL1B07D031064 |  | RC Casting for Roof Beams for Electrical Room - (B7.03 00 00 .14)-SWL1-B07-D03 | 4d | 2027-11-20 | 2027-11-23 | RHD4CSWL1B07D031063, RHD4CZ3C083ST7500, RHD4CZ8A011ST7500, RHD4CZ1C081TC5200, RHD4CZ4L01RD7100, RHD4CZ7C02IRR3202, RHD4CZ3L122LV5200 | Supply and cast in place reinforced concrete with fc'=31 Mpa for the Super- structures for (Sewer and Storm Pump station) for Beams [0.65 m3]; Unskilled Labor [0.98 h]; RIC Machine [0.65 h]; Concrete Mixer Truck [0.33 h]; Concrete Pump [0.33 h] | 867.2 | Z3 | CONS | STR |
| RHD4CSWL1B07D031065 |  | Deshuttering for Roof Beams for Electrical Room - (B7.03 00 00 .14)-SWL1-B07-D03 | 3d | 2027-11-24 | 2027-11-27 | RHD4CSWL1B07D031064, RHD4CZ7L03PT4500, RHD4CZ7L03SW3500, RHD4CZ9L02SW3500, RHD4CZ4C031SL6100, RHD4CZ4C031SL1500, RHD4CZ4A013LV5100, RHD4CZ1L101ICT5200, RHD4CZ2B05EX1001, RHD4CZ9L05RD7100 | Supply and cast in place reinforced concrete with fc'=31 Mpa for the Super- structures for (Sewer and Storm Pump station) for Beams [0.44 m3] | 578.14 | Z3 | CONS | STR |
|  | 32 | **RHD4-02-002-SWL1-B07-Electrical Room-Roof Slab** |  | 2027-11-28 | 2027-12-11 |  |  |  |  |  |  |
| RHD4CSWL1B07D031066 |  | Shuttering for Roof Slab for Electrical Room - (B7.03 00 00 .15)-SWL1-B07-D03 | 3d | 2027-11-28 | 2027-11-30 | RHD4CSWL1B07D031065, RHD4CZ3L122SL1100, RHD4CZ1C081ICT2400 | Supply and cast in place reinforced concrete with fc'=31 Mpa for the Super- structures for (Sewer and Storm Pump station) for Solid Slabs [3.1 m3]; Carpenter [121.75 h]; Unskilled Labor [52.16 h] | 4,002.1 | Z3 | CONS | STR |
| RHD4CSWL1B07D031067 |  | Steel Fixing for Roof Slab for Electrical Room - (B7.03 00 00 .15)-SWL1-B07-D03 | 4d | 2027-12-01 | 2027-12-05 | RHD4CSWL1B07D031066, RHD4CZ7L03IRR3202, RHD4CZ5C061RD7100, RHD4CZ4BZ4EX1001, RHD4CZ3L122SL5200, RHD4CZ4A013RD4100, RHD4CZ5C061RD8100, RHD4CZ9L02TC5200 | Supply and cast in place reinforced concrete with fc'=31 Mpa for the Super- structures for (Sewer and Storm Pump station) for Solid Slabs [4.65 m3]; Unskilled Labor [39.1 h]; Steel Fixer [208.8 h] | 5,999.28 | Z3 | CONS | STR |
| RHD4CSWL1B07D031068 |  | RC Casting for Roof Slab for Electrical Room - (B7.03 00 00 .15)-SWL1-B07-D03 | 2d | 2027-12-06 | 2027-12-07 | RHD4CSWL1B07D031067, RHD4CZ4L09SW3500, RHD4CZ4A013RD8100, RHD4CZ4B08EX1001 | Supply and cast in place reinforced concrete with fc'=31 Mpa for the Super- structures for (Sewer and Storm Pump station) for Solid Slabs [4.65 m3]; Unskilled Labor [11.76 h]; RIC Machine [7.41 h]; Concrete Mixer Truck [3.7 h]; Concrete Pump [3.7 h] | 5,999.28 | Z3 | CONS | STR |
| RHD4CSWL1B07D031069 |  | Deshuttering for Roof Slab for Electrical Room - (B7.03 00 00 .15)-SWL1-B07-D03 | 3d | 2027-12-08 | 2027-12-11 | RHD4CSWL1B07D031068, RHD4CZ4L09PT4500, RHD4CZ3BZ3EX1002 | Supply and cast in place reinforced concrete with fc'=31 Mpa for the Super- structures for (Sewer and Storm Pump station) for Solid Slabs [3.1 m3]; Carpenter [7.3 h]; Unskilled Labor [1.52 h] | 4,002.1 | Z3 | CONS | STR |
|  | 33 | **RHD4-02-002-SWL1-B07-Finishes** |  | 2027-12-12 | 2028-01-26 |  |  |  |  |  |  |
|  | 34 | **RHD4-02-002-SWL1-B07-Finishes-Masonary** |  | 2027-12-12 | 2027-12-16 |  |  |  |  |  |  |
| RHD4CSWL1B07D091070 |  | Masonary Block work (CMU walls) Insulated Block Work - (B7.04 22 00.01)-SWL1-B07-D09 | 5d | 2027-12-12 | 2027-12-16 | RHD4CSWL1B07D031069, RHD4ENSWL1APPARC1100, RHD4GNPPSD1100, RHD4ENSDSWL1SUB2000, RHD4ENSDZ6SUBRD220, RHD4ENSDSTL1SUB2000 | Concrete masonry unit, hollow block 200mm thick [51.02 m2]; Mason [16.34 h]; Unskilled Labor [24.5 h] | 3,112.34 | Z3 | CONS | ARC |
|  | 35 | **RHD4-02-002-SWL1-B07-Finishes-Roofs waterproofing system** |  | 2027-12-12 | 2028-01-02 |  |  |  |  |  |  |
| RHD4CSWL1B07D071071 |  | 250 micron Polyethylene sheet - (B7.07 00 00.06)-SWL1-B07-D07 | 2d | 2027-12-12 | 2027-12-13 | RHD4CSWL1B07D091070 SS, RHD4PRSHLDOSLFS1200, RHD4PRSHLDOSLFS1100, RHD4PRSHLSTAGLFS1200, RHD4PRSHLSTAGLFS1100, RHD4ENSWL1APPARC1100, RHD4GNPPSD1100, RHD4ENSDSWL1SUB2000, RHD4ENSDZ6SUBRD220, RHD4ENSDSTL1SUB2000 | Roofs Waterproofing System (250 micron Polyethylene sheet) [10.44 m2]; Skilled labor [2.61 h]; Unskilled Labor [3.92 h] | 41.76 | Z3 | CONS | ARC |
| RHD4CSWL1B07D071072 |  | 50 mm thick minimum Foam Concrete - (B7.07 00 00.05)-SWL1-B07-D07 | 3d | 2027-12-14 | 2027-12-16 | RHD4CSWL1B07D071071, RHD4PRSHLDOSLFS1100, RHD4PRSHLSTAGLFS1100, RHD4ENSWL1APPARC1100, RHD4GNPPSD1100, RHD4ENSDSWL1SUB2000, RHD4ENSDZ6SUBRD220, RHD4ENSDSTL1SUB2000 | Roofs Waterproofing System (50mm thik min. Foam concrete) [10.44 m2]; Skilled labor [2.61 h]; Unskilled Labor [3.92 h] | 323.64 | Z3 | CONS | ARC |
| RHD4CSWL1B07D071073 |  | 30 mm thick Screed Concrete - (B7.07 00 00.04)-SWL1-B07-D07 | 3d | 2027-12-18 | 2027-12-20 | RHD4CSWL1B07D071072, RHD4PRSHLDOSLFS1100, RHD4PRSHLSTAGLFS1100, RHD4CZ2C082CCTV6100, RHD4CZ2C082RD3200, RHD4CZ4RA02RD7100, RHD4CZ6RA01CCTV1500, RHD4ENSWL1APPARC1100, RHD4GNPPSD1100, RHD4ENSDSWL1SUB2000, RHD4ENSDZ6SUBRD220, RHD4ENSDSTL1SUB2000, RHD4GNSLZ1FT1600 | Roofs Waterproofing System (30mm thick Screed concrete (Fc' = 20 Mpa)) [10.44 m2]; Skilled labor [2.61 h]; Unskilled Labor [3.92 h] | 187.92 | Z3 | CONS | ARC |
| RHD4CSWL1B07D071074 |  | 4 mm thick Waterproofing Bituminous Membrane - (B7.07 00 00.03)-SWL1-B07-D07 | 3d | 2027-12-21 | 2027-12-23 | RHD4CSWL1B07D071073, RHD4PRSHLDOSLFS1200, RHD4PRSHLDOSLFS1100, RHD4PRSHLSTAGLFS1200, RHD4PRSHLSTAGLFS1100, RHD4CZ4C031CCTV1500, RHD4CZ6C052SL6100, RHD4ENSWL1APPARC1100, RHD4GNPPSD1100, RHD4ENSDSWL1SUB2000, RHD4ENSDZ6SUBRD220, RHD4ENSDSTL1SUB2000, RHD4CZ7B24BF2000 | Roofs Waterproofing System (4mm thick Water proofing Bitumenous Membrane) [10.44 m2]; Skilled labor [3.27 h]; Unskilled Labor [4.9 h] | 323.64 | Z3 | CONS | ARC |
| RHD4CSWL1B07D071075 |  | Geotextile Membrane - (B7.07 00 00.02)-SWL1-B07-D07 | 4d | 2027-12-25 | 2027-12-28 | RHD4CSWL1B07D071074, RHD4PRSHLDOSLFS1100, RHD4PRSHLSTAGLFS1100, RHD4CZ6A02CCTV6100, RHD4ENSWL1APPARC1100, RHD4GNPPSD1100, RHD4ENSDSWL1SUB2000, RHD4ENSDZ6SUBRD220, RHD4ENSDSTL1SUB2000, RHD4CZ4B07EX1001 | Roofs Waterproofing System (Geotextile Membrane) [10.44 m2]; Skilled labor [2.61 h]; Unskilled Labor [3.92 h] | 73.08 | Z3 | CONS | ARC |
| RHD4CSWL1B07D071076 |  | 50 mm thick Gravel Toppings - (B7.07 00 00.01)-SWL1-B07-D07 | 4d | 2027-12-29 | 2028-01-02 | RHD4CSWL1B07D071075, RHD4PRSHLDOSLFS1100, RHD4PRSHLSTAGLFS1100, RHD4CZ1L101LV3400, RHD4CZ2C082SL1500, RHD4CZ7L03MV4200, RHD4CZ4A013TC2400, RHD4CZ4L01MV3300, RHD4ENSWL1APPARC1100, RHD4GNPPSD1100, RHD4ENSDSWL1SUB2000, RHD4ENSDZ6SUBRD220, RHD4ENSDSTL1SUB2000, RHD4GNSLZ2FT1600 | Roofs Waterproofing System (50mm thk gravel toppings) [6.78 m2]; Skilled labor [2.61 h]; Unskilled Labor [3.92 h] | 169.5 | Z3 | CONS | ARC |

| ID | WBS | Activity | Duration | Start | Finish | Predecessors | Resources | Cost | RDH4-01-001-Zones-1 | RDH4-01-001-Phases-1 | RDH4-01-001-Networks-1 |
| --- | --- | --- | --- | --- | --- | --- | --- | --- | --- | --- | --- |
|  | 36 | **RHD4-02-002-SWL1-B07-Finishes-Manufactured Copings** |  | 2027-12-29 | 2028-01-03 |  |  |  |  |  |  |
| RHD4CSWL1B07D091077 |  | Supply and install Stone coping 40mm thickness Insulated Block Work - (B7.07 71 13.01)-SWL1-B07-D09 | 5d | 2027-12-29 | 2028-01-03 | RHD4CSWL1B07D071076 SS, RHD4ENSWL1APPARC1100, RHD4GNPPSD1100, RHD4ENSDSWL1SUB2000, RHD4ENSDZ6SUBRD220, RHD4ENSDSTL1SUB2000 | Manufactured Copings (Supply and install Stone coping 40mm thickness) [14.8 m]; Mason [5.77 h]; Unskilled Labor [8.71 h] | 2,175.6 | Z3 | CONS | ARC |
|  | 37 | **RHD4-02-002-SWL1-B07-Finishes-Doors & Windows** |  |  |  |  |  |  |  |  |  |
|  | 38 | **RHD4-02-002-SWL1-B07-Finishes-Cement Plastering** |  | 2027-12-29 | 2028-01-03 |  |  |  |  |  |  |
| RHD4CSWL1B07D091079 |  | Internal Plastering For Walls 15mm - (B7.09 24 00.01)-SWL1-B07-D09 | 5d | 2027-12-29 | 2028-01-03 | RHD4CSWL1B07D091077 SS, RHD4ENSWL1APPARC1100, RHD4GNPPSD1100, RHD4ENSDSWL1SUB2000, RHD4ENSDZ6SUBRD220, RHD4ENSDSTL1SUB2000 | Internal plastering to walls and columns min. 15mm thick with cement mortar [43.79 m2]; Skilled labor [3.16 h]; Unskilled Labor [9.37 h] | 2,145.71 | Z3 | CONS | ARC |
| RHD4CSWL1B07D091080 |  | External Plastering for walls 20mm - (B7.09 24 00.02)-SWL1-B07-D09 | 5d | 2027-12-29 | 2028-01-03 | RHD4CSWL1B07D091079 SS, RHD4ENSWL1APPARC1100, RHD4GNPPSD1100, RHD4ENSDSWL1SUB2000, RHD4ENSDZ6SUBRD220, RHD4ENSDSTL1SUB2000 | Internal plastering to walls and columns min. 20mm thick with cement mortar [66.43 m2]; Skilled labor [5.23 h]; Unskilled Labor [15.68 h] | 3,653.45 | Z3 | CONS | ARC |
|  | 39 | **RHD4-02-002-SWL1-B07-Finishes-Metal Ladders** |  | 2027-12-29 | 2028-01-16 |  |  |  |  |  |  |
| RHD4CSWL1B07D051082 |  | Length 5.4m - (B7.05 51 33.06)-SWL1-B07-D05 | 6d | 2027-12-29 | 2028-01-04 | RHD4CSWL1B07D091080 SS, RHD4PRSHLDOSLFS1000, RHD4PRSHLSTAGLFS1000, RHD4ENSWL1APPARC1100, RHD4GNPPSD1100, RHD4ENSDSWL1SUB2000, RHD4ENSDZ6SUBRD220, RHD4ENSDSTL1SUB2000 | Metal Ladder of Length 5.4m [1 nr] | 4,964 | Z3 | CONS | ARC |
| RHD4CSWL1B07D051084 |  | Installation of With cage, Length 4.3m - (B7.05 51 33.11)-SWL1-B07-D05 | 5d | 2028-01-05 | 2028-01-10 | RHD4CSWL1B07D051082, RHD4ENSWL1APPARC1100, RHD4GNPPSD1100, RHD4ENSDSWL1SUB2000, RHD4ENSDZ6SUBRD220, RHD4ENSDSTL1SUB2000 | Metal Ladder With cage, Length 4.3m [1 nr] | 3,953 | Z3 | CONS | ARC |
| RHD4CSWL1B07D051085 |  | Install Checkered plate - (B7.05 50 00 .01)-SWL1-B07-D05 | 5d | 2028-01-11 | 2028-01-16 | RHD4CSWL1B07D051084, RHD4PRSHLDOSLFS1000, RHD4PRSHLSTAGLFS1000, RHD4ENSWL1APPARC1100, RHD4GNPPSD1100, RHD4ENSDSWL1SUB2000, RHD4ENSDZ6SUBRD220, RHD4ENSDSTL1SUB2000 | Supply and install Checkered plate [1 nr]; Carpenter [50.75 h]; Unskilled Labor [21.78 h] | 306 | Z3 | CONS | ARC |
|  | 40 | **RHD4-02-002-SWL1-B07-Finishes-Painting** |  | 2028-01-17 | 2028-01-22 |  |  |  |  |  |  |
| RHD4CSWL1B07D091086 |  | Internal Acrylic Paint For Walls Acrylic Paint - (B7.09 91 00.01)-SWL1-B07-D09 | 5d | 2028-01-17 | 2028-01-22 | RHD4CSWL1B07D051085, RHD4PRSHLDOSLFS1500, RHD4PRSHLSTAGLFS1500, RHD4ENSWL1APPARC1100, RHD4GNPPSD1100, RHD4ENSDSWL1SUB2000, RHD4ENSDZ6SUBRD220, RHD4ENSDSTL1SUB2000 | 2 coats of paint at internal walls, columns and ceiling including one coat of primer and two coats of putty [42.4 m2]; Skilled labor [3.16 h]; Unskilled Labor [9.37 h] | 1,060 | Z3 | CONS | ARC |
| RHD4CSWL1B07D091087 |  | External Acrylic Paint for walls Acrylic Paint - (B7.09 91 00.02)-SWL1-B07-D09 | 5d | 2028-01-17 | 2028-01-22 | RHD4CSWL1B07D091086 SS, RHD4PRSHLDOSLFS1500, RHD4PRSHLSTAGLFS1500, RHD4ENSWL1APPARC1100, RHD4GNPPSD1100, RHD4ENSDSWL1SUB2000, RHD4ENSDZ6SUBRD220, RHD4ENSDSTL1SUB2000 | External paint for external elevations [67.11 m2]; Skilled labor [7.84 h]; Unskilled Labor [23.52 h] | 2,080.42 | Z3 | CONS | ARC |
|  | 41 | **RHD4-02-002-SWL1-B07-Finishes-Epoxy Coating** |  | 2028-01-23 | 2028-01-26 |  |  |  |  |  |  |
| RHD4CSWL1B07D091088 |  | Internal Acrylic Paint For Walls Acrylic Paint - (B7.09 96 56.01)-SWL1-B07-D09 | 4d | 2028-01-23 | 2028-01-26 | RHD4CSWL1B07D091087, RHD4PRSHLDOSLFS1500, RHD4CSWL1B07D151032, RHD4PRSHLSTAGLFS1500, RHD4ENSWL1APPARC1100, RHD4GNPPSD1100, RHD4ENSDSWL1SUB2000, RHD4ENSDZ6SUBRD220, RHD4ENSDSTL1SUB2000 | Epoxy coating two perpendicular layers for inner surfaces for Tank walls, footings and bottom of the roof and for room flooring [206.03 m2]; Skilled labor [9.15 h]; Unskilled Labor [27.33 h] | 16,482 | Z3 | CONS | ARC |
|  | 42 | **RHD4-02-002-SWL1-B07-Mechanical Works** |  | 2028-01-03 | 2028-02-19 |  |  |  |  |  |  |
|  | 43 | **RHD4-02-002-SWL1-B07-Mechanical Works-Wall mounted Split/AC** |  | 2028-01-27 | 2028-02-08 |  |  |  |  |  |  |
| RHD4CSWL1B07D151089 |  | Wall mounted Split Air Conditioning Unit. FCU-01 Installation 3.5 kw - (B7.23 81 26.01)-SWL1-B07-D15 | 6d | 2028-01-27 | 2028-02-02 | RHD4CSWL1B07D091088, RHD4PRSHLDOSLFS2200, RHD4PRSHLSTAGLFS2200, RHD4ENSWL1APPMEC1200, RHD4GNPPSD1100, RHD4ENSDSWL1SUB3000, RHD4ENSDZ6SUBRD220, RHD4ENSDSTL1SUB3000 | (FCU-01/ACCU-01) DX wall mounted Split/AC with nominal cooling capacity of 3.6 KW [1 nr]; Skilled labor [10.89 h]; Unskilled Labor [32.56 h] | 10,173 | Z3 | CONS | MECH |
| RHD4CSWL1B07D151090 |  | Wall mounted Split Air Conditioning Unit. FCU-01 Installation 3.5 kw - (B7.23 81 26.01)-SWL1-B07-D15 | 5d | 2028-02-03 | 2028-02-08 | RHD4CSWL1B07D151089, RHD4PRSHLDOSLFS2200, RHD4PRSHLSTAGLFS2200 | (FCU-01/ACCU-01) DX wall mounted Split/AC with nominal cooling capacity of 3.6 KW [1 nr]; Skilled labor [10.89 h]; Unskilled Labor [32.56 h] | 10,173 | Z3 | CONS | MECH |
|  | 44 | **RHD4-02-002-SWL1-B07-Mechanical Works-Portable Fire Extinguishers** |  | 2028-02-09 | 2028-02-19 |  |  |  |  |  |  |
| RHD4CSWL1B07D151091 |  | Powder fire extinguishers installation - (B7.21 20 00.01)-SWL1-B07-D15 | 5d | 2028-02-09 | 2028-02-14 | RHD4CSWL1B07D151090, RHD4ENSWL1APPMEC1200, RHD4GNPPSD1100, RHD4ENSDSWL1SUB3000, RHD4ENSDZ6SUBRD220, RHD4ENSDSTL1SUB3000 | Fire Extinguishers 6 KG, Powder fire extinguishers (EF-1) [1 nr]; Unskilled Labor [16.34 h] | 552 | Z3 | CONS | MECH |
| RHD4CSWL1B07D151092 |  | CO2 fire extinguishers installation - (B7.21 20 00.02)-SWL1-B07-D15 | 4d | 2028-02-15 | 2028-02-19 | RHD4CSWL1B07D151091, RHD4ENSWL1APPMEC1200, RHD4GNPPSD1100, RHD4ENSDSWL1SUB3000, RHD4ENSDZ6SUBRD220, RHD4ENSDSTL1SUB3000 | Fire Extinguishers 4.5 KG, CO2 fire extinguishers (EF-2) [1 nr]; Unskilled Labor [16.34 h] | 490 | Z3 | CONS | MECH |
|  | 45 | **RHD4-02-002-SWL1-B07-Mechanical Works-Scupper** |  | 2028-01-03 | 2028-01-05 |  |  |  |  |  |  |
| RHD4CSWL1B07D151093 |  | Scupper with diameter 110mm - Installation - (B7.22 13 19.13.01)-SWL1-B07-D15 | 3d | 2028-01-03 | 2028-01-05 | RHD4CSWL1B07D071076, RHD4CZ2C082TC5200, RHD4CZ2L011SL5200, RHD4ENSWL1APPMEC1200, RHD4GNPPSD1100, RHD4ENSDSWL1SUB3000, RHD4ENSDZ6SUBRD220, RHD4ENSDSTL1SUB3000, RHD4CZ7L03CCTV1500 | Scupper with Diameter 110mm [1 nr]; Unskilled Labor [16.34 h] | 147 | Z3 | CONS | MECH |

| ID | WBS | Activity | Duration | Start | Finish | Predecessors | Resources | Cost | RDH4-01-001-Zones-1 | RDH4-01-001-Phases-1 | RDH4-01-001-Networks-1 |
| --- | --- | --- | --- | --- | --- | --- | --- | --- | --- | --- | --- |
|  | 46 | **RHD4-02-002-SWL1-B07-Mechanical Works-Pipes, Fittings & Appurtenances** |  | 2028-01-06 | 2028-01-10 |  |  |  |  |  |  |
| RHD4CSWL1B07D151094 |  | uPVC pipes with diameter 110mm. Roof Slab - (B7.22 13 16.01)-SWL1-B07-D15 | 3d | 2028-01-06 | 2028-01-09 | RHD4CSWL1B07D151093, RHD4PRSHLDOSLFS2100, RHD4PRSHLSTAGLFS2100, RHD4ENSWL1APPMEC1200, RHD4GNPPSD1100, RHD4ENSDSWL1SUB3000, RHD4ENSDZ6SUBRD220, RHD4ENSDSTL1SUB3000, RHD4CZ3C011SL4200 | UPVC pipes with Diameter 110mm. [3.35 m]; Carpenter [329.76 h]; Unskilled Labor [141.36 h] | 576.2 | Z3 | CONS | MECH |
| RHD4CSWL1B07D151095 |  | uPVC pipes with diameter 25mm. Roof Slab - (B7.22 13 16.02)-SWL1-B07-D15 | 4d | 2028-01-06 | 2028-01-10 | RHD4CSWL1B07D151094 SS, RHD4PRSHLDOSLFS2100, RHD4PRSHLSTAGLFS2100, RHD4CZ4C031RD7100, RHD4ENSWL1APPMEC1200, RHD4GNPPSD1100, RHD4ENSDSWL1SUB3000, RHD4ENSDZ6SUBRD220, RHD4ENSDSTL1SUB3000 | UPVC pipes with Diameter 25mm. [6 m]; Unskilled Labor [141.36 h]; Steel Fixer [753.72 h] | 738 | Z3 | CONS | MECH |
|  | 47 | **RHD4-02-002-SWL1-B07-Electrical Works** |  | 2027-12-18 | 2028-04-03 |  |  |  |  |  |  |
|  | 48 | **RHD4-02-002-SWL1-B07-Electrical Works-4Cx 185mm2 CU/XLPE/SWA/PVC** |  | 2027-12-18 | 2027-12-30 |  |  |  |  |  |  |
| RHD4CSWL1B07D161096 |  | Electrical Conduits and Pull Box Installation for LV Cables 4Cx185 mm²- (B7.26 05 19.01)-SWL1-B07-D16 | 4d | 2027-12-18 | 2027-12-21 | RHD4CSWL1B07D091070, RHD4ENSWL1APPELE1300 | LV Cables - 4Cx 185mm2 CU/XLPE/SWA/PVC [6 m]; Unskilled Labor [49.55 h]; Electrician [8.28 h] | 2,370 | Z3 | CONS | ELEC |
| RHD4CSWL1B07D161097 |  | Cable Tray Installation for LV Cables 4Cx185 mm²- (B7.26 05 19.01)-SWL1-B07-D16 | 3d | 2027-12-22 | 2027-12-25 | RHD4CSWL1B07D161096, RHD4ENSWL1APPELE1300 | LV Cables - 4Cx 185mm2 CU/XLPE/SWA/PVC [9 m]; Unskilled Labor [74.4 h]; Electrician [12.41 h] | 3,555 | Z3 | CONS | ELEC |
| RHD4CSWL1B07D161098 |  | LV Cable Pulling for LV Cables 4Cx185 mm²- (B7.26 05 19.01)-SWL1-B07-D16 | 2d | 2027-12-26 | 2027-12-27 | RHD4CSWL1B07D161097, RHD4PRSHLDOSLFS2600, RHD4PRSHLSTAGLFS2600 | LV Cables - 4Cx 185mm2 CU/XLPE/SWA/PVC [12 m]; Unskilled Labor [61.97 h]; Electrician [41.27 h] | 4,740 | Z3 | CONS | ELEC |
| RHD4CSWL1B07D161099 |  | LV Cable Termination for LV Cables 4Cx185 mm²- (B7.26 05 19.01)-SWL1-B07-D16 | 3d | 2027-12-28 | 2027-12-30 | RHD4CSWL1B07D161098 | LV Cables - 4Cx 185mm2 CU/XLPE/SWA/PVC [3 m]; Unskilled Labor [61.97 h]; Electrician [41.27 h] | 1,185 | Z3 | CONS | ELEC |
|  | 49 | **RHD4-02-002-SWL1-B07-Electrical Works-4Cx 70mm2 + 1Cx35mm2 Cu/XLPE/PVC FROM MCC-3 TO LP-01** |  | 2027-12-28 | 2028-01-10 |  |  |  |  |  |  |
| RHD4CSWL1B07D161100 |  | Electrical Conduits and Pull Box Installation for LV Cables 4Cx95 mm²- (B7.26 05 19.02)-SWL1-B07-D16 | 3d | 2027-12-28 | 2027-12-30 | RHD4CSWL1B07D161099 SS, RHD4ENSWL1APPELE1300 | LV Lables - 4Cx 70mm2 + 1Cx35mm2 Cu/XLPE/PVC FROM MCC-3 TO LP-01 [12 m]; Unskilled Labor [78.3 h]; Electrician [13.07 h] | 2,064 | Z3 | CONS | ELEC |
| RHD4CSWL1B07D161101 |  | Cable Tray Installation for LV Cables 4Cx95 mm²- (B7.26 05 19.02)-SWL1-B07-D16 | 2d | 2028-01-01 | 2028-01-02 | RHD4CSWL1B07D161100, RHD4ENSWL1APPELE1300 | LV Lables - 4Cx 70mm2 + 1Cx35mm2 Cu/XLPE/PVC FROM MCC-3 TO LP-01 [18 m]; Unskilled Labor [23.52 h]; Electrician [3.92 h] | 3,096 | Z3 | CONS | ELEC |
| RHD4CSWL1B07D161102 |  | LV Cable Pulling for LV Cables 4Cx95 mm²- (B7.26 05 19.02)-SWL1-B07-D16 | 4d | 2028-01-03 | 2028-01-06 | RHD4CSWL1B07D161101, RHD4PRSHLDOSLFS2600, RHD4PRSHLSTAGLFS2600 | LV Lables - 4Cx 70mm2 + 1Cx35mm2 Cu/XLPE/PVC FROM MCC-3 TO LP-01 [24 m]; Unskilled Labor [7.84 h]; Electrician [5.23 h] | 4,128 | Z3 | CONS | ELEC |
| RHD4CSWL1B07D161103 |  | LV Cable Termination for LV Cables 4Cx95 mm²- (B7.26 05 19.02)-SWL1-B07-D16 | 3d | 2028-01-08 | 2028-01-10 | RHD4CSWL1B07D161102 | LV Lables - 4Cx 70mm2 + 1Cx35mm2 Cu/XLPE/PVC FROM MCC-3 TO LP-01 [6 m]; Unskilled Labor [19.6 h]; Electrician [13.07 h] | 1,032 | Z3 | CONS | ELEC |
|  | 50 | **RHD4-02-002-SWL1-B07-Electrical Works-4Cx 6mm2 + 1Cx6mm2 Cu/XLPE/PVC** |  | 2028-01-01 | 2028-01-16 |  |  |  |  |  |  |
| RHD4CSWL1B07D161104 |  | Electrical Conduits and Pull Box Installation for LV Cables 4Cx10 mm²- (B7.26 05 19.03)-SWL1-B07-D16 | 3d | 2028-01-01 | 2028-01-03 | RHD4CSWL1B07D161096 SS, RHD4CSWL1B07D161100 | LV Cables - 4Cx 6mm2 + 1Cx6mm2 Cu/XLPE/PVC [6 m]; Unskilled Labor [39.1 h]; Electrician [6.53 h] | 402 | Z3 | CONS | ELEC |
| RHD4CSWL1B07D161105 |  | Cable Tray Installation for LV Cables 4Cx10 mm²- (B7.26 05 19.03)-SWL1-B07-D16 | 4d | 2028-01-04 | 2028-01-08 | RHD4CSWL1B07D161104, RHD4CZ4L09RD7100 | LV Cables - 4Cx 6mm2 + 1Cx6mm2 Cu/XLPE/PVC [9 m]; Unskilled Labor [58.7 h]; Electrician [9.8 h] | 603 | Z3 | CONS | ELEC |
| RHD4CSWL1B07D161106 |  | LV Cable Pulling for LV Cables 4Cx10 mm²- (B7.26 05 19.03)-SWL1-B07-D16 | 3d | 2028-01-09 | 2028-01-11 | RHD4CSWL1B07D161105, RHD4PRSHLDOSLFS2600, RHD4PRSHLSTAGLFS2600 | LV Cables - 4Cx 6mm2 + 1Cx6mm2 Cu/XLPE/PVC [12 m]; Unskilled Labor [39.1 h]; Electrician [26.14 h] | 804 | Z3 | CONS | ELEC |
| RHD4CSWL1B07D161107 |  | LV Cable Termination for LV Cables 4Cx10 mm²- (B7.26 05 19.03)-SWL1-B07-D16 | 4d | 2028-01-12 | 2028-01-16 | RHD4CSWL1B07D161106, RHD4CSWL1B07D161103, RHD4CSWL1B07D151094, RHD4CSWL1B07D151095 | LV Cables - 4Cx 6mm2 + 1Cx6mm2 Cu/XLPE/PVC [3 m]; Unskilled Labor [9.8 h]; Electrician [6.53 h] | 201 | Z3 | CONS | ELEC |
|  | 51 | **RHD4-02-002-SWL1-B07-Electrical Works-4Cx 95mm2 + 1Cx50mm2 Cu/XLPE/PVC** |  | 2028-01-06 | 2028-01-19 |  |  |  |  |  |  |
| RHD4CSWL1B07D161108 |  | Electrical Conduits and Pull Box Installation for LV Cables 4Cx10 mm²+1Cx10 mm²- (B7.26 05 19.05)-SWL1-B07-D16 | 3d | 2028-01-06 | 2028-01-09 | RHD4CSWL1B07D151095 SS, RHD4ENSWL1APPELE1300, RHD4CSWL1B07D161104 | LV Cables - 4Cx 95mm2 + 1Cx50mm2 Cu/XLPE/PVC [1 m]; Unskilled Labor [52.16 h]; Electrician [8.71 h] | 245 | Z3 | CONS | ELEC |
| RHD4CSWL1B07D161109 |  | Cable Tray Installation for LV Cables 4Cx10 mm²+1Cx10 mm²- (B7.26 05 19.05)-SWL1-B07-D16 | 4d | 2028-01-10 | 2028-01-13 | RHD4CSWL1B07D161108, RHD4CZ1CH1ST1200, RHD4CZ4C031CCTV6100, RHD4CSWL1B07D031205 | LV Cables - 4Cx 95mm2 + 1Cx50mm2 Cu/XLPE/PVC [1.5 m]; Unskilled Labor [78.3 h]; Electrician [13.07 h] | 367.5 | Z3 | CONS | ELEC |
| RHD4CSWL1B07D161110 |  | LV Cable Pulling for LV Cables 4Cx10 mm²+1Cx10 mm²- (B7.26 05 19.05)-SWL1-B07-D16 | 3d | 2028-01-15 | 2028-01-17 | RHD4CSWL1B07D161109, RHD4PRSHLDOSLFS2600, RHD4PRSHLSTAGLFS2600, RHD4CZ1L101SL1500, RHD4CZ4L014SL1300, RHD4CZ6RA01CCTV5200, RHD4CZ6A02RD7100, RHD4CZ1B03BF2000 | LV Cables - 4Cx 95mm2 + 1Cx50mm2 Cu/XLPE/PVC [2 m]; Unskilled Labor [78.3 h]; Electrician [34.74 h] | 490 | Z3 | CONS | ELEC |
| RHD4CSWL1B07D161111 |  | LV Cable Termination for LV Cables 4Cx10 mm²+1Cx10 mm²- (B7.26 05 19.05)-SWL1-B07-D16 | 2d | 2028-01-18 | 2028-01-19 | RHD4CSWL1B07D161110, RHD4CSWL1B07D161107 | LV Cables - 4Cx 95mm2 + 1Cx50mm2 Cu/XLPE/PVC [0.5 m]; Unskilled Labor [19.6 h]; Electrician [8.71 h] | 122.5 | Z3 | CONS | ELEC |

| ID | WBS | Activity | Duration | Start | Finish | Predecessors | Resources | Cost | RDH4-01-001-Zones-1 | RDH4-01-001-Phases-1 | RDH4-01-001-Networks-1 |
| --- | --- | --- | --- | --- | --- | --- | --- | --- | --- | --- | --- |
|  | 52 | **RHD4-02-002-SWL1-B07-Electrical Works-4Cx 4mm2 + 1Cx4mm2 Cu/XLPE/PVC** |  |  |  |  |  |  |  |  |  |
|  | 53 | **RHD4-02-002-SWL1-B07-Electrical Works-Wiring Devices** |  | 2028-01-20 | 2028-01-29 |  |  |  |  |  |  |
| RHD4CSWL1B07D161116 |  | 13A Signle Socket Outlet WP for Wiring Devices - (B7.26 27 26 .01)-SWL1-B07-D16 | 3d | 2028-01-20 | 2028-01-23 | RHD4CSWL1B07D161110, RHD4CSWL1B07D161106, RHD4CSWL1B07D161102, RHD4PRSHLDOSLFS2800, RHD4PRSHLSTAGLFS2800, RHD4PRSHLDOSLFS2600, RHD4PRSHLSTAGLFS2600, RHD4CSWL1B07D161111, RHD4ENSWL1APPELE1300, RHD4CSWL1B07D161108, RHD4CZ2L011SL1500, RHD4CZ2L011LV4300, RHD4CZ1C081SL1500, RHD4CZ5C061TC2400, RHD4GNLVZ1FT1500, RHD4GNLVZ3FT1500, RHD4GNTCZ6FT1800, RHD4GNLVZ8FT1500 | Single socket outlet with a 13-amp switch, single-pole, 230 volts, with a grounding hole, mounted on the wall [4 nr]; Unskilled Labor [110.1 h]; Electrician [16.34 h] | 940 | Z3 | CONS | ELEC |
| RHD4CSWL1B07D161117 |  | 13A Double Socket Outlet WP for Wiring Devices - (B7.26 27 26 .02)-SWL1-B07-D16 | 2d | 2028-01-24 | 2028-01-25 | RHD4CSWL1B07D161116, RHD4PRSHLDOSLFS2800, RHD4PRSHLSTAGLFS2800, RHD4CZ1L101ICT5200, RHD4CZ2L011TC2400, RHD4CZ7RA03LV4300, RHD4CZ4L09SL5200, RHD4CZ8L04CCTV1500 | Double socket outlet with a 13-amp switch, mounted on the wall, fed from an uninterruptible power supply (UPS) [1 nr]; Unskilled Labor [36.7 h]; Electrician [5.45 h] | 282 | Z3 | CONS | ELEC |
| RHD4CSWL1B07D161118 |  | 25A Switch Socket Outlet (for Split Unit), WP for Wiring Devices - (B7.26 27 26 .03)-SWL1-B07-D16 | 3d | 2028-01-26 | 2028-01-29 | RHD4CSWL1B07D161117, RHD4PRSHLDOSLFS2800, RHD4PRSHLSTAGLFS2800, RHD4CZ2L011ICT2400, RHD4CZ2L102LV3400, RHD4CZ7RA03CCTV2100, RHD4CZ4A013ICT2400, RHD4CZ4BZ4BF4001, RHD4CZ2B05BF2001 | 25-amp wall-mounted double-pole switch with an indicator light for powering the wall-mounted split air conditioning units [2 nr]; Unskilled Labor [73.4 h]; Electrician [10.89 h] | 784 | Z3 | CONS | ELEC |
|  | 54 | **RHD4-02-002-SWL1-B07-Electrical Works-Grounding and Bonding** |  | 2028-01-26 | 2028-02-09 |  |  |  |  |  |  |
| RHD4CSWL1B07D161119 |  | Copper Conductor Connecting to Steel Rebar Installation for Copper Rods - (B7.26 05 26.01)-SWL1-B07-D16 | 4d | 2028-01-26 | 2028-01-30 | RHD4CSWL1B07D161118 SS, RHD4ENSWL1APPELE1300, RHD4PRSHLDOSLFS2500, RHD4PRSHLSTAGLFS2500 | Earthing System for Sewer Lifting Station 1 [0.4 Item]; Unskilled Labor [587.1 h]; Electrician [43.45 h] | 4,935.2 | Z3 | CONS | ELEC |
| RHD4CSWL1B07D161120 |  | Earth pits Installation for Copper Rods - (B7.26 05 26.01)-SWL1-B07-D16 | 4d | 2028-01-31 | 2028-02-03 | RHD4CSWL1B07D161119, RHD4CSWL1B07D161118, RHD4CZ6RA01RD8100, RHD4CZ7RA05ICT2400, RHD4CZ9B36BF2000 | Earthing System for Sewer Lifting Station 1 [0.1 Item]; Unskilled Labor [489.19 h]; Electrician [36.26 h] | 1,233.8 | Z3 | CONS | ELEC |
| RHD4CSWL1B07D161121 |  | Earth Bars Installation for Copper Rods - (B7.26 05 26.01)-SWL1-B07-D16 | 2d | 2028-02-05 | 2028-02-06 | RHD4CSWL1B07D161120, RHD4CZ4CH5ST1320 | Earthing System for Sewer Lifting Station 1 [0.1 Item]; Unskilled Labor [772.45 h]; Electrician [57.17 h] | 1,233.8 | Z3 | CONS | ELEC |
| RHD4CSWL1B07D161122 |  | Copper Tape on Roof Installation for Copper Rods - (B7.26 05 26.01)-SWL1-B07-D16 | 3d | 2028-02-07 | 2028-02-09 | RHD4CSWL1B07D161121, RHD4CZ7L03MV5400, RHD4CZ6C052ICT2400, RHD4CZ5RA07RD9200 | Earthing System for Sewer Lifting Station 1 [0.4 Item]; Unskilled Labor [838.67 h]; Electrician [62.07 h] | 4,935.2 | Z3 | CONS | ELEC |
|  | 55 | **RHD4-02-002-SWL1-B07-Electrical Works-Indoor Lighting Fixtures** |  | 2028-02-07 | 2028-02-24 |  |  |  |  |  |  |
| RHD4CSWL1B07D161123 |  | Electrical Conduits and Pull Box Installation - 24.5 W for Lighting Fixtures - (Indoor Lighting Fixtures )-SWL1-B07-D16 | 3d | 2028-02-07 | 2028-02-09 | RHD4CSWL1B07D161122 SS, RHD4ENSWL1APPELE1300 | Indoor Lighting Fixtures - L1 lighting units of the (LED) type [0.4 nr]; Unskilled Labor [58.7 h]; Electrician [4.36 h] | 171.6 | Z3 | CONS | ELEC |
| RHD4CSWL1B07D161124 |  | LV Cable Pulling for Lighting Fixtures - (B7.26 51 00.01)-SWL1-B07-D16 | 3d | 2028-02-10 | 2028-02-13 | RHD4CSWL1B07D161123, RHD4CSWL1B07D161122, RHD4GNSLZ8FT1600, RHD4CZ1L101RW3000, RHD4GNLVZ7FT1500 | Indoor Lighting Fixtures - L1 lighting units of the (LED) type [0.4 nr]; Unskilled Labor [29.4 h]; Electrician [8.71 h] | 171.6 | Z3 | CONS | ELEC |
| RHD4CSWL1B07D161126 |  | Electrical Conduits and Pull Box Installation - 8 W for Lighting Fixtures - (B7.26 51 00.02)-SWL1-B07-D16 | 3d | 2028-02-10 | 2028-02-13 | RHD4CSWL1B07D161123 | Indoor Lighting Fixtures - LE lighting units of the (LED) type, Exit sign [0.2 nr]; Unskilled Labor [29.4 h]; Electrician [2.18 h] | 132.4 | Z3 | CONS | ELEC |
| RHD4CSWL1B07D161125 |  | Lighting Fixture Installation for Lighting Fixtures - (B7.26 51 00.01)-SWL1-B07-D16 | 4d | 2028-02-14 | 2028-02-17 | RHD4CSWL1B07D161124, RHD4PRSHLDOSLFS2700, RHD4PRSHLSTAGLFS2700, RHD4CZ3C083RD5100, RHD4CZ9L02CCTV1500 | Indoor Lighting Fixtures - L1 lighting units of the (LED) type [1.2 nr]; Unskilled Labor [29.4 h]; Electrician [8.71 h] | 514.8 | Z3 | CONS | ELEC |
| RHD4CSWL1B07D161127 |  | LV Cable Pulling for Lighting Fixtures - (B7.26 51 00.02)-SWL1-B07-D16 | 4d | 2028-02-14 | 2028-02-17 | RHD4CSWL1B07D161126 | Indoor Lighting Fixtures - LE lighting units of the (LED) type, Exit sign [0.2 nr]; Unskilled Labor [14.7 h]; Electrician [4.36 h] | 132.4 | Z3 | CONS | ELEC |
| RHD4CSWL1B07D161128 |  | Lighting Fixture Installation for Lighting Fixtures - (B7.26 51 00.02)-SWL1-B07-D16 | 5d | 2028-02-19 | 2028-02-24 | RHD4CSWL1B07D161127, RHD4PRSHLDOSLFS2700, RHD4CSWL1B07D161125, RHD4PRSHLSTAGLFS2700, RHD4CZ5L08RD7100 | Indoor Lighting Fixtures - LE lighting units of the (LED) type, Exit sign [0.6 nr]; Unskilled Labor [14.7 h]; Electrician [4.36 h] | 397.2 | Z3 | CONS | ELEC |
|  | 56 | **RHD4-02-002-SWL1-B07-Electrical Works-Outdoor Lighting Fixtures** |  | 2028-02-20 | 2028-03-14 |  |  |  |  |  |  |
| RHD4CSWL1B07D161129 |  | Electrical Conduits and Pull Box Installation - 7 W for Lighting Fixtures - (Outdoor Lighting Fixtures )-SWL1-B07-D16 | 4d | 2028-02-20 | 2028-02-24 | RHD4CSWL1B07D161128 SS, RHD4ENSWL1APPELE1300, RHD4CSWL1B07D161126, RHD4CSWL1B07D151092 | Outdoor Lighting Fixtures - L3 lighting units of the (LED) type [0.2 nr]; Unskilled Labor [29.4 h]; Electrician [2.18 h] | 78 | Z3 | CONS | ELEC |
| RHD4CSWL1B07D161130 |  | LV Cable Pulling for Lighting Fixtures - (B7.26 56 00.01)-SWL1-B07-D16 | 3d | 2028-02-26 | 2028-03-02 | RHD4CSWL1B07D161129 | Outdoor Lighting Fixtures - L3 lighting units of the (LED) type [0.2 nr]; Unskilled Labor [14.7 h]; Electrician [4.36 h] | 78 | Z3 | CONS | ELEC |
| RHD4CSWL1B07D161132 |  | Electrical Conduits and Pull Box Installation - 42.5 W for Lighting Fixtures - (B7.26 56 00.02)-SWL1-B07-D16 | 4d | 2028-02-26 | 2028-03-04 | RHD4CSWL1B07D161129 | Outdoor Lighting Fixtures - L4 lighting units of the (LED) type [0.6 nr]; Unskilled Labor [58.7 h]; Electrician [6.53 h] | 277.2 | Z3 | CONS | ELEC |
| RHD4CSWL1B07D161131 |  | Lighting Fixture Installation for Lighting Fixtures - (B7.26 56 00.01)-SWL1-B07-D16 | 3d | 2028-03-04 | 2028-03-06 | RHD4CSWL1B07D161130, RHD4ENSWL1APPELE1300, RHD4PRSHLDOSLFS2700, RHD4PRSHLSTAGLFS2700 | Outdoor Lighting Fixtures - L3 lighting units of the (LED) type [0.6 nr]; Unskilled Labor [9.8 h]; Electrician [4.36 h] | 234 | Z3 | CONS | ELEC |
| RHD4CSWL1B07D161133 |  | LV Cable Pulling for Lighting Fixtures - (B7.26 56 00.02)-SWL1-B07-D16 | 5d | 2028-03-05 | 2028-03-09 | RHD4CSWL1B07D161132 | Outdoor Lighting Fixtures - L4 lighting units of the (LED) type [0.6 nr]; Unskilled Labor [29.4 h]; Electrician [13.07 h] | 277.2 | Z3 | CONS | ELEC |
| RHD4CSWL1B07D161134 |  | Lighting Fixture Installation for Lighting Fixtures - (B7.26 56 00.02)-SWL1-B07-D16 | 4d | 2028-03-11 | 2028-03-14 | RHD4CSWL1B07D161133, RHD4ENSWL1APPELE1300, RHD4PRSHLDOSLFS2700, RHD4CSWL1B07D161131, RHD4PRSHLSTAGLFS2700 | Outdoor Lighting Fixtures - L4 lighting units of the (LED) type [1.8 nr]; Unskilled Labor [29.4 h]; Electrician [13.07 h] | 831.6 | Z3 | CONS | ELEC |

| ID | WBS | Activity | Duration | Start | Finish | Predecessors | Resources | Cost | RDH4-01-001-Zones-1 | RDH4-01-001-Phases-1 | RDH4-01-001-Networks-1 |
| --- | --- | --- | --- | --- | --- | --- | --- | --- | --- | --- | --- |
|  | 57 | **RHD4-02-002-SWL1-B07-Electrical Works- Enclosed Switches and Circuit Breakers** |  | 2028-02-07 | 2028-02-19 |  |  |  |  |  |  |
| RHD4CSWL1B07D161135 |  | 25-amp single-pole disconnect switches for Lighting Fixtures - (B7.26 28 16.01)-SWL1-B07-D16 | 3d | 2028-02-07 | 2028-02-09 | RHD4CSWL1B07D161122 SS, RHD4ENSWL1APPELE1300, RHD4PRSHLDOSLFS2900, RHD4PRSHLSTAGLFS2900, RHD4CZ7L03MV3401, RHD4CZ7L03MV3400 | 25-amp single-pole disconnect/isolation switches, 60 Hz, IP65 [4 nr]; Unskilled Labor [293.49 h]; Electrician [21.78 h] | 2,308 | Z3 | CONS | ELEC |
| RHD4CSWL1B07D161136 |  | 25-amp three-pole disconnect switches for Lighting Fixtures - (B7.26 28 16.02)-SWL1-B07-D16 | 4d | 2028-02-10 | 2028-02-14 | RHD4CSWL1B07D161135, RHD4ENSWL1APPELE1300, RHD4PRSHLDOSLFS2900, RHD4PRSHLSTAGLFS2900, RHD4CZ2L011RD8100, RHD4CZ2L011RD7100, RHD4CZ6RA01RD9100 | 25-amp three-pole disconnect/isolation switches, 60 Hz, IP65 [1 nr]; Unskilled Labor [73.4 h]; Electrician [21.78 h] | 577 | Z3 | CONS | ELEC |
| RHD4CSWL1B07D161137 |  | 125-amp three-pole disconnect switches for Lighting Fixtures - (B7.26 28 16.03)-SWL1-B07-D16 | 4d | 2028-02-15 | 2028-02-19 | RHD4CSWL1B07D161136, RHD4ENSWL1APPELE1300, RHD4PRSHLDOSLFS2900, RHD4PRSHLSTAGLFS2900, RHD4CZ3L122ICT2400, RHD4CZ7RA05RD8100 | 125-amp three-pole disconnect/isolation switches, 60 Hz, IP65 [3 nr]; Unskilled Labor [73.4 h]; Electrician [21.78 h] | 4,836 | Z3 | CONS | ELEC |
|  | 58 | **RHD4-02-002-SWL1-B07-Electrical Works-Secondery Panel Boards** |  | 2028-02-15 | 2028-03-05 |  |  |  |  |  |  |
| RHD4CSWL1B07D161138 |  | Panel "DB-U3" Installation for Panelboards - (B7.26 24 16.01)-SWL1-B07-D16 | 2d | 2028-02-15 | 2028-02-16 | RHD4CSWL1B07D161137 SS, RHD4ENSWL1APPELE1300, RHD4PRSHLDOSLFS2400, RHD4PRSHLSTAGLFS2400 | DBU3 Panel: 32/100 A, 3P, IP66, 60Hz incomer MCCB, 6 Ways [0.8 nr]; Unskilled Labor [587.1 h]; Electrician [87.01 h] | 2,353.6 | Z3 | CONS | ELEC |
| RHD4CSWL1B07D161139 |  | Panel "DB-U3" Termination for Panelboards - (B7.26 24 16.01)-SWL1-B07-D16 | 4d | 2028-02-17 | 2028-02-21 | RHD4CSWL1B07D161138, RHD4CZ6A015RD7100 | DBU3 Panel: 32/100 A, 3P, IP66, 60Hz incomer MCCB, 6 Ways [0.2 nr]; Unskilled Labor [117.4 h]; Electrician [21.78 h] | 588.4 | Z3 | CONS | ELEC |
| RHD4CSWL1B07D161140 |  | Panel "LPP-UT-3" Installation for Panelboards - (B7.26 24 16.02)-SWL1-B07-D16 | 4d | 2028-02-23 | 2028-03-01 | RHD4CSWL1B07D161139, RHD4ENSWL1APPELE1300, RHD4PRSHLDOSLFS2400, RHD4PRSHLSTAGLFS2400, RHD4CZ7C013ICT2400, RHD4CZ9L05ICT2400, RHD4CZ4C012RD7100, RHD4CZ6C052RD7100, RHD4CZ7RA05RD7100, RHD4GNCCTVZ1FT2000 | DB-UT3 Panel: 32/100 A, 3P, IP66, 60Hz incomer MCCB, 12 Ways [0.8 nr]; Unskilled Labor [587.1 h]; Electrician [87.01 h] | 3,118.4 | Z3 | CONS | ELEC |
| RHD4CSWL1B07D161141 |  | Panel "DB-UT-3" Termination for Panelboards - (B7.26 24 16.02)-SWL1-B07-D16 | 3d | 2028-03-02 | 2028-03-05 | RHD4CSWL1B07D161140, RHD4CZ7C013RD7100, RHD4GNCCTVZ6FT2000, RHD4CZ7L03RD7100, RHD4CZ9L06RD7100, RHD4HOASZ4APPSL170 | DB-UT3 Panel: 32/100 A, 3P, IP66, 60Hz incomer MCCB, 12 Ways [0.2 nr]; Unskilled Labor [78.3 h]; Electrician [21.78 h] | 779.6 | Z3 | CONS | ELEC |
|  | 60 | **RHD4-02-002-SWL1-B07-Electrical Works-Addressable Fire-Alarm System** |  | 2028-03-02 | 2028-03-23 |  |  |  |  |  |  |
| RHD4CSWL1B07D161145 |  | 1 loop FACP with charger, battries and auto dialer for Fire Alarm - (B7.28 46 00.01)-SWL1-B07-D16 | 4d | 2028-03-02 | 2028-03-06 | RHD4CSWL1B07D161141 SS, RHD4ENSWL1APPELE1300, RHD4PRSHLDOSLFS3000, RHD4PRSHLSTAGLFS3000, RHD4CSWL1B07D161128 | 1 Loop Facp With Charger, Battries And Auto Dialer [1 nr]; Addressable Control Module. [2 nr]; Unskilled Labor [391.4 h]; Electrician [87.01 h] | 23,533 | Z3 | CONS | ELEC |
| RHD4CSWL1B07D161146 |  | Addressable type fire alarm Photoelectric smoke detector complete for Fire Alarm - (B7.28 46 00.05)-SWL1-B07-D16 | 4d | 2028-03-07 | 2028-03-11 | RHD4CSWL1B07D161145, RHD4CZ2L102RW3002 FF, RHD4CZ4L01RD7100, RHD4CZ8L04SL1500, RHD4CZ3C011SL6100 | Addressable Type Fire Alarm Photoelectric Smoke Detector Complete With Base [1 nr]; Unskilled Labor [391.4 h]; Electrician [87.01 h] | 613 | Z3 | CONS | ELEC |
| RHD4CSWL1B07D161147 |  | Addressable type fire alarm manual call station/pull station for Fire Alarm - (B7.28 46 00.06)-SWL1-B07-D16 | 3d | 2028-03-12 | 2028-03-14 | RHD4CSWL1B07D161146, RHD4CZ5RA07CCTV1500 FF, RHD4CZ3BZ3BF2001 | Addressable Type Fire Alarm Manual Call Station/pull Station [1 nr]; Unskilled Labor [19.6 h]; Electrician [4.36 h] | 662 | Z3 | CONS | ELEC |
| RHD4CSWL1B07D161148 |  | Conventional 24V DC fire alarm wall mounted 15cd flasher/strobe. for Fire Alarm - (B7.28 46 00.07)-SWL1-B07-D16 | 3d | 2028-03-15 | 2028-03-18 | RHD4CSWL1B07D161147, RHD4CZ8RA04CCTV6100, RHD4CZ5C061CCTV6100, RHD4CZ3C011SL1500 | Conventional 24v DC Fire Alarm Wall Mounted 15cd Flasher/strobe. [1 nr]; Unskilled Labor [48.9 h]; Electrician [21.78 h] | 674 | Z3 | CONS | ELEC |
| RHD4CSWL1B07D161149 |  | Conventional 24V DC fire alarm wall mounted 15cd flasher weather proof for Fire Alarm - (B7.28 46 00.08)-SWL1-B07-D16 | 3d | 2028-03-19 | 2028-03-21 | RHD4CSWL1B07D161148, RHD4GNSLZ7FT1600, RHD4CZ7RA03CCTV1500 | Conventional 24v DC Fire Alarm Wall Mounted 15cd Flasher/strobe Weather Proof [1 nr]; Unskilled Labor [32.56 h]; Electrician [21.78 h] | 858 | Z3 | CONS | ELEC |
| RHD4CSWL1B07D161150 |  | Short CCT Isolator. for Fire Alarm - (B7.28 46 00.09)-SWL1-B07-D16 | 2d | 2028-03-22 | 2028-03-23 | RHD4CSWL1B07D161149, RHD4CSWL1B07D161134 SS, RHD4CZ8C014RD7100 | Short CCT Isolator [1 nr]; Unskilled Labor [32.56 h]; Electrician [21.78 h] | 797 | Z3 | CONS | ELEC |
|  | 61 | **RHD4-02-002-SWL1-B07-Electrical Works-Main Motor Control Center (MCC)** |  | 2028-03-22 | 2028-03-28 |  |  |  |  |  |  |
| RHD4CSWL1B07D161151 |  | Installation for MCC-3 - (B7.26 29 00.01)-SWL1-B07-D16 | 4d | 2028-03-22 | 2028-03-26 | RHD4CSWL1B07D161150 SS, RHD4ENSWL1APPELE1300, RHD4PRSHLDOSLFS2300, RHD4PRSHLSTAGLFS2300, RHD4CZ8RA04RD3200 | Motor Control Center - MCC-3 - 300AT/300AF, 400V, 3PH, 60HZ [0.8 nr]; Unskilled Labor [521.87 h]; Electrician [130.47 h] | 71,679.2 | Z3 | CONS | ELEC |
| RHD4CSWL1B07D161152 |  | Termination for MCC-3 - (B7.26 29 00.01)-SWL1-B07-D16 | 2d | 2028-03-27 | 2028-03-28 | RHD4CSWL1B07D161151, RHD4ENSWL1APPELE1300, RHD4CSWL1B07D161134, RHD4CZ1C081CCTV1500 | Motor Control Center - MCC-3 - 300AT/300AF, 400V, 3PH, 60HZ [0.2 nr]; Unskilled Labor [521.87 h]; Electrician [130.47 h] | 17,919.8 | Z3 | CONS | ELEC |
|  | 62 | **RHD4-02-002-SWL1-B07-Electrical Works-Programmable Logic Controllers** |  | 2028-03-27 | 2028-04-03 |  |  |  |  |  |  |
| RHD4CSWL1B07D161153 |  | PLC System Installation for - (B7.40 63 43.01)-SWL1-B07-D16 | 3d | 2028-03-27 | 2028-03-29 | RHD4CSWL1B07D161152 SS, RHD4ENSWL1APPELE1300, RHD4PRLOLSTAGLFS1700, RHD4CZ1L101CCTV1500 | PLC system, serving the pumping station and all related utilities [1 Item]; Unskilled Labor [978.4 h]; Electrician [326.17 h] | 966,493 | Z3 | CONS | ELEC |
| RHD4CSWL1B07D161154 |  | Process Control Wiring Installation for - (B7.40 67 10.01)-SWL1-B07-D16 | 3d | 2028-03-27 | 2028-03-29 | RHD4CSWL1B07D161153 SS, RHD4ENSWL1APPELE1300, RHD4PRLOLSTAGLFS1700 | Supply, installation, testing and commissioning of all control, instrumentation [1 Item]; Unskilled Labor [434.85 h]; Electrician [144.95 h] | 61,285 | Z3 | CONS | ELEC |
| RHD4CSWL1B07D161155 |  | Instrumentation for Process Systems for - (B7.40 70 00.01)-SWL1-B07-D16 | 4d | 2028-03-30 | 2028-04-03 | RHD4CSWL1B07D161154, RHD4ENSWL1APPELE1300, RHD4PRLOLSTAGLFS1700, RHD4CZ9L05RD7100, RHD4CZ5C061RD7100, RHD4CZ5C061RD8100, RHD4CZ5RA07CCTV6100, RHD4CZ7L131RD7100 | Supply, installation, testing and commissioning of all field instruments such as hydrostatic level meter, level switches, etc.. [1 Item]; Unskilled Labor [434.85 h]; Electrician [144.95 h] | 367,710 | Z3 | CONS | ELEC |
|  | 5 | **RHD4-02-002-Sewage Lift Station 01-Wet Well Structure And Valve Chamber** |  | 2026-10-20 | 2027-12-07 |  |  |  |  |  |  |
|  | 16 | **RHD4-02-002-SWL1-B07-Pump Lifting System** |  | 2027-11-03 | 2027-12-07 |  |  |  |  |  |  |
|  | 17 | **RHD4-02-002-SWL1-B07-Ductile Pipe Connection and Fittings-Pipes, Fittings & Appurtenances** |  | 2027-11-03 | 2027-11-20 |  |  |  |  |  |  |
| RHD4CSWL1B07D151027 |  | Buried ductile iron pipes with diameter 400 mm Installation - (B7.22 11 13.03)-SWL1-B07-D15 | 4d | 2027-11-03 | 2027-11-07 | RHD4PRSHLDOSLFS1700, RHD4PRSHLSTAGLFS1700, RHD4PRLOLSTAGLFS1100, RHD4CSWL1B07D151023, RHD4ENSWL1APPMEC1200, RHD4GNPPSD1100, RHD4ENSDSWL1SUB3000, RHD4ENSDZ6SUBRD220, RHD4ENSDSTL1SUB3000 | Buried Ductile Iron Pipes With Diameter 400 Mm [2 m] | 1,838 | Z3 | CONS | MECH |
| RHD4CSWL1B07D151029 |  | Buried ductile iron pipes with diameter 250 mm Installation - (B7.22 11 13.05)-SWL1-B07-D15 | 5d | 2027-11-08 | 2027-11-13 | RHD4CTUN1Z5STG21390, RHD4CSWL1B07D151027 | Buried Ductile Iron Pipes With Diameter 250 Mm [35.8 m]; Unskilled Labor [53.8 h]; RIC Machine [33.65 h]; Concrete Mixer Truck [16.88 h]; Concrete Pump [16.88 h] | 24,558.8 | Z3 | CONS | MECH |
| RHD4CSWL1B07D151030 |  | Double flanged ductile iron pipe with diameter 250 mm Installation - (B7.22 11 13.06)-SWL1-B07-D15 | 6d | 2027-11-14 | 2027-11-20 | RHD4CSWL1B07D151029 | Double Flanged Ductile Iron Pipe With Diameter 250 Mm [26.4 m]; Carpenter [30.49 h]; Unskilled Labor [6.53 h] | 84,136.8 | Z3 | CONS | MECH |

| ID | WBS | Activity | Duration | Start | Finish | Predecessors | Complete | Resources | Cost | Actual cost | RDH4-01-001-Zones-1 | RDH4-01-001-Phases-1 | RDH4-01-001-Networks-1 |
| --- | --- | --- | --- | --- | --- | --- | --- | --- | --- | --- | --- | --- | --- |
|  | 18 | **RHD4-02-002-SWL1-B07-Ductile Pipe Connection and Fittings-Isolation Penstock** |  | 2027-11-21 | 2027-12-02 |  |  |  |  |  |  |  |  |
| RHD4CSWL1B07D151031 |  | Install Electrically operated penstock 500 * 500 mm - (B7.35 21 23.01)-SWL1-B07-D15 | 11d | 2027-11-21 | 2027-12-02 | RHD4PRLOLSTAGLFS2000, RHD4PRSHLDOSLFS1700, RHD4PRSHLSTAGLFS1700, RHD4PRLOLSTAGLFS1100, RHD4CSWL1B07D151030, RHD4ENSWL1APPMEC1200, RHD4GNPPSD1100, RHD4ENSDSWL1SUB3000, RHD4ENSDZ6SUBRD220, RHD4ENSDSTL1SUB3000 |  | Electrically operated penstock 500 * 500 mm [1 nr]; Carpenter [50.75 h]; Unskilled Labor [21.78 h] | 55,157 |  | Z3 | CONS | MECH |
|  | 19 | **RHD4-02-002-SWL1-B07-Ductile Pipe Connection and Fittings-JIB Crane** |  | 2027-12-04 | 2027-12-07 |  |  |  |  |  |  |  |  |
| RHD4CSWL1B07D151032 |  | Install JIB Crane For storm and sewer pumping Stations - (B7.41 22 10.01)-SWL1-B07-D15 | 4d | 2027-12-04 | 2027-12-07 | RHD4CSWL1B07D151031, RHD4CSWL1B07D151030, RHD4CTUN1Z5STG21380, RHD4PRLOLSTAGLFS1500, RHD4CSWL1B07D151023, RHD4PRSHLDOSLFS1800, RHD4PRSHLSTAGLFS1800, RHD4ENSWL1APPMEC1200, RHD4GNPPSD1100, RHD4ENSDSWL1SUB3000, RHD4ENSDZ6SUBRD220, RHD4ENSDSTL1SUB3000 |  | JIB Crane For storm and sewer pumping Stations [1 nr]; Carpenter [50.75 h]; Unskilled Labor [21.78 h] | 67,414 |  | Z3 | CONS | MECH |
|  | 6 | **RHD4-02-002-SWL1-B07-Wet Well Structure And Valve Chamber** |  | 2026-10-20 | 2027-11-02 |  |  |  |  |  |  |  |  |
|  | 10 | **RHD4-02-002-SWL1-B07-WET WELL-Metal Doors** |  | 2027-09-13 | 2027-09-19 |  |  |  |  |  |  |  |  |
| RHD4CSWL1B07D051014 |  | metal floor door size (1000x1000mm) for Wet well structure - (B7.08 31 13.04)-SWL1-B07-D05 | 6d | 2027-09-13 | 2027-09-19 | RHD4PRSHLDOSLFS1400, RHD4PRSHLSTAGLFS1400, RHD4CSWL1B07D091012, RHD4PRSHLDOSLFS1500, RHD4PRSHLSTAGLFS1500, RHD4ENSWL1APPARC1100, RHD4GNPPSD1100, RHD4ENSDSWL1SUB2000, RHD4ENSDZ6SUBRD220, RHD4ENSDSTL1SUB2000 |  | Access Doors and Frames - Metal floor door size (1000x1000mm) [4 nr]; Carpenter [101.5 h]; Unskilled Labor [28.97 h] | 4,412 |  | Z3 | CONS | ARC |
|  | 11 | **RHD4-02-002-SWL1-B07-WET WELL-Screening Container** |  | 2027-09-20 | 2027-09-27 |  |  |  |  |  |  |  |  |
| RHD4CSWL1B07D151016 |  | Steel Container Screening Installation - (B7.46 21 00.01)-SWL1-B07-D15 | 6d | 2027-09-20 | 2027-09-27 | RHD4PRLOLSTAGLFS1000, RHD4CSWL1B07D051014, RHD4PRSHLDOSLFS1400, RHD4PRSHLSTAGLFS1400, RHD4ENSWL1APPARC1100, RHD4GNPPSD1100, RHD4ENSDSWL1SUB2000, RHD4ENSDZ6SUBRD220, RHD4ENSDSTL1SUB2000, RHD4ENSWL1APPMEC1200, RHD4ENSDSWL1SUB3000, RHD4ENSDSTL1SUB3000 |  | Screening Container Constructed From Steel [0.5 nr]; Carpenter [25.37 h]; Unskilled Labor [7.3 h] | 9,193 |  | Z3 | CONS | MECH |
|  | 12 | **RHD4-02-002-SWL1-B07-WET WELL-Motorized basket screen** |  | 2027-09-28 | 2027-10-12 |  |  |  |  |  |  |  |  |
| RHD4CSWL1B07D151017 |  | Basket Screen Frame Mounting - (B7.46 21 00.01)-SWL1-B07-D15 | 4d | 2027-09-28 | 2027-10-02 | RHD4CSWL1B07D151016, RHD4PRSHLDOSLFS1900, RHD4PRSHLSTAGLFS1900 |  | Screening Container Constructed From Steel [0.5 nr]; Carpenter [25.37 h]; Unskilled Labor [7.3 h] | 9,193 |  | Z3 | CONS | MECH |
| RHD4CSWL1B07D151018 |  | Basket Screen Alignment - (B7.46 21 01.01)-SWL1-B07-D15 | 5d | 2027-10-03 | 2027-10-07 | RHD4CSWL1B07D151017, RHD4PRSHLDOSLFS1900, RHD4PRSHLSTAGLFS1900 |  | Basket screen [0.5 nr]; Unskilled Labor [3.59 h]; Steel Fixer [28.97 h] | 196,112 |  | Z3 | CONS | MECH |
| RHD4CSWL1B07D151019 |  | Motor and Drive System Installation - (B7.46 21 01.01)-SWL1-B07-D15 | 4d | 2027-10-09 | 2027-10-12 | RHD4CSWL1B07D151018 |  | Basket screen [0.5 nr]; Unskilled Labor [1.09 h]; RIC Machine [0.98 h]; Concrete Mixer Truck [0.54 h]; Concrete Pump [0.54 h] | 196,112 |  | Z3 | CONS | MECH |
|  | 13 | **RHD4-02-002-SWL1-B07-WET WELL-Pumps** |  | 2027-10-13 | 2027-10-24 |  |  |  |  |  |  |  |  |
| RHD4CSWL1B07D151021 |  | Constant Speed Submersible pump Installation - 53 lps - (B7. 22 14 29.16.02)-SWL1-B07-D15 | 10d | 2027-10-13 | 2027-10-24 | RHD4PRLOLSTAGLFS1100, RHD4CSWL1B07D151019, RHD4ENSWL1APPMEC1200, RHD4GNPPSD1100, RHD4ENSDSWL1SUB3000, RHD4ENSDZ6SUBRD220, RHD4ENSDSTL1SUB3000 |  | Submersible wet-installed pump for raw sewage water Capacity: 53, lps Head: 29.10 m [2 nr]; Unskilled Labor [108.69 h]; Plumber [108.69 h] | 312,636 |  | Z3 | CONS | MECH |
|  | 14 | **RHD4-02-002-SWL1-B07-WET WELL-Gate Valves** |  | 2027-10-25 | 2027-11-02 |  |  |  |  |  |  |  |  |
| RHD4CSWL1B07D151023 |  | Manually operated Gate Valve DN250 for - (B7.22 05 23.02)-SWL1-B07-D15 | 8d | 2027-10-25 | 2027-11-02 | RHD4PRSHLDOSLFS1800, RHD4PRSHLSTAGLFS1800, RHD4CSWL1B07D151021, RHD4ENSWL1APPMEC1200, RHD4GNPPSD1100, RHD4ENSDSWL1SUB3000, RHD4ENSDZ6SUBRD220, RHD4ENSDSTL1SUB3000 |  | Manually Operated Gate Valve DN250 [5 nr]; Unskilled Labor [326.17 h]; Plumber [326.17 h] | 35,915 |  | Z3 | CONS | MECH |
|  | 15 | **RHD4-02-002-SWL1-B07-WET WELL-Butterfly Valve.** |  |  |  |  |  |  |  |  |  |  |  |
|  | 7 | **RHD4-02-002-SWL1-B07-WET WELL-Concrete works** |  | 2026-10-20 | 2027-08-07 |  |  |  |  |  |  |  |  |
| RHD4CSWL1B07D021002 |  | Lean Concrete for Wet well structure - (B7.03 00 00 .01)-SWL1-B07-D02 | 4d | 2026-10-20 A | 2026-10-24 A | RHD4ENSWL1APPSTC1000, RHD4CZ6C062SW2200, RHD4CZ2L102ST8500, RHD4CZ4A013ST3501, RHD4CZ5L07ST2500, RHD4CZ5L08ST7500, RHD4CZ5L08ST3500, RHD4CZ5L08ST3502, RHD4CZ5C061SW5200, RHD4CZ6A02SW3500, RHD4CZ6A02ST7500, RHD4CZ6A02ST1500, RHD4CZ6A02ST3500, RHD4CZ6C052ST4600, RHD4CZ6C052ST8500, RHD4CZ6A015ST4600, RHD4ENMARAPPEW100, RHD4CTUN1Z5STG31240 | 100% | Supply and cast in place plain concrete 100 mm thickness lean concrete under the foundation for (Sewer and Storm Pump station) and (tunnels) [19.72 m2]; Carpenter [494.64 h]; Unskilled Labor [141.36 h] | 1,301.26 | 1,301.26 | Z3 | CONS | STR |
| RHD4CSWL1B07D021003 |  | Water proofing membrance for Wet well structure - (B7.07 13 13.01)-SWL1-B07-D02 | 2d | 2027-05-01 | 2027-05-02 | RHD4CSWL1B07D021002, RHD4PRSHLDOSLFS1200, RHD4PRSHLSTAGLFS1200, RHD4CZ5RA07PT3200, RHD4CZ5RA07SW2500, RHD4CZ5RA07SW3500, RHD4CZ5C051ST7500, RHD4CZ6C062ST2500 |  | Bituminous Sheet Waterproofing (2 layers of waterproofing bitumenous membrane 4mm below footings) [26 m2] | 2,236 |  | Z3 | CONS | ARC |
| RHD4CSWL1B07D021004 |  | Screed for Wet well structure - (B7.03 00 00 .04)-SWL1-B07-D02 | 4d | 2027-05-03 | 2027-05-06 | RHD4CSWL1B07D021003, RHD4CZ4A013ST1503, RHD4CZ6C052ST7500, RHD4CZ6C052ST2500 |  | Supply and cast in place screed concrete 50 mm thickness screed concrete for protecting waterproofing under the foundation for (Sewer and Storm Pump station) and (tunnels) [20.82 m2] | 666.24 |  | Z3 | CONS | STR |
| RHD4CSWL1B07D021005 |  | Steel Fixing for Wet well structure - (B7.03 00 00 .05)-SWL1-B07-D02 | 8d | 2027-07-18 | 2027-07-26 | RHD4CSWL1B07D021004, RHD4ENSWL1APPSTC1000, RHD4CZ3L122ST5400, RHD4CZ4L014ST2500, RHD4CZ4C031ST8500, RHD4CZ5A014ST2500, RHD4CZ5C061SW3501, RHD4CZ5RA07PT3203, RHD4CZ5RA07PT4500, RHD4CZ5RA07PT3202, RHD4CZ6A02LV2400, RHD4CZ6C062ST7500 |  | Supply and cast in place reinforced concrete with fc'=31 Mpa for the sub- structures for (Sewer and Storm Pump station) and (tunnels) for Footings [1.24 m3]; Unskilled Labor [16.8 h]; Steel Fixer [134.5 h] | 1,912.64 |  | Z3 | CONS | STR |
| RHD4CSWL1B07D021006 |  | Formwork for Wet well structure - (B7.03 00 00 .05)-SWL1-B07-D02 | 6d | 2027-07-27 | 2027-08-02 | RHD4CSWL1B07D021005, RHD4ENSWL1APPSTC1000, RHD4CZ1C081ST8500, RHD4CZ1C081ST3501, RHD4CZ7L015ST1402, RHD4CZ4L014ST3501, RHD4CZ4L01MV2400, RHD4CZ4L01PT4500, RHD4CZ5A014ST8500, RHD4CZ5L08PT3203, RHD4CZ5L08SW3500, RHD4CZ5C051PT3200, RHD4CZ5C051SW3500, RHD4CZ6C052SW3500, RHD4CZ6C052ST3500, RHD4CZ6C052ST3501, RHD4CZ6C062ST3501 |  | Supply and cast in place reinforced concrete with fc'=31 Mpa for the sub- structures for (Sewer and Storm Pump station) and (tunnels) for Footings [1.24 m3]; Unskilled Labor [5.01 h]; RIC Machine [4.8 h]; Concrete Mixer Truck [2.4 h]; Concrete Pump [2.4 h] | 1,912.64 |  | Z3 | CONS | STR |
| RHD4CSWL1B07D021007 |  | RC Casting for Wet well structure - (B7.03 00 00 .05)-SWL1-B07-D02 | 4d | 2027-08-03 | 2027-08-07 | RHD4CSWL1B07D021006, RHD4ENSWL1APPSTC1000, RHD4CZ1L101ST7500, RHD4CZ8L04ST1508, RHD4CZ4C031ST7500, RHD4CZ4C031ST3501, RHD4CZ4A013SL2400, RHD4CZ4L01SL2400, RHD4CZ4L01RD1100, RHD4CZ5L08SW6100, RHD4CZ5C061IRR1502, RHD4CZ5C061PT3202, RHD4CZ6A02PT4500, RHD4CZ6A02PT3200, RHD4CZ6C062IRR3200 |  | Supply and cast in place reinforced concrete with fc'=31 Mpa for the sub- structures for (Sewer and Storm Pump station) and (tunnels) for Footings [2.49 m3]; Carpenter [14.16 h]; Unskilled Labor [2.07 h] | 3,825.29 |  | Z3 | CONS | STR |

| ID | WBS | Activity | Duration | Start | Finish | Predecessors | Resources | Cost | RDH4-01-001-Zones-1 | RDH4-01-001-Phases-1 | RDH4-01-001-Networks-1 |
| --- | --- | --- | --- | --- | --- | --- | --- | --- | --- | --- | --- |
|  | 8 | **RHD4-02-002-SWL1-B07-WET WELL-Retaining Walls & Slab** |  | 2027-08-08 | 2027-09-06 |  |  |  |  |  |  |
| RHD4CSWL1B07D021008 |  | Steel Fixing for Wet well structure - (B7.03 00 00 .07)-SWL1-B07-D02 | 8d | 2027-08-08 | 2027-08-16 | RHD4CSWL1B07D021007 | Supply and cast in place reinforced concrete with fc'=31 Mpa for the sub- structures for (Sewer and Storm Pump station) and (tunnels) for Walls below ground level [7.81 m3]; Carpenter [1390.04 h]; Unskilled Labor [397.17 h] | 20,962.28 | Z3 | CONS | STR |
| RHD4CSWL1B07D021009 |  | Formwork for Wet well structure - (B7.03 00 00 .07)-SWL1-B07-D02 | 5d | 2027-08-17 | 2027-08-22 | RHD4CSWL1B07D021008 | Supply and cast in place reinforced concrete with fc'=31 Mpa for the sub- structures for (Sewer and Storm Pump station) and (tunnels) for Walls below ground level [5.86 m3]; Unskilled Labor [148.98 h]; Steel Fixer [1191.51 h] | 15,721.71 | Z3 | CONS | STR |
| RHD4CSWL1B07D021010 |  | RC Casting for Wet well structure - (B7.03 00 00 .07)-SWL1-B07-D02 | 9d | 2027-08-23 | 2027-09-01 | RHD4CSWL1B07D021009 | Supply and cast in place reinforced concrete with fc'=31 Mpa for the sub- structures for (Sewer and Storm Pump station) and (tunnels) for Walls below ground level [29.48 m3]; Unskilled Labor [193.6 h]; RIC Machine [181.87 h]; Concrete Mixer Truck [90.93 h]; Concrete Pump [90.93 h] | 79,094.84 | Z3 | CONS | STR |
| RHD4CSWL1B07D021011 |  | Water protection Board membrance for Wet well structure - (B7.07 13 13.02)-SWL1-B07-D02 | 4d | 2027-09-02 | 2027-09-06 | RHD4CSWL1B07D021010, RHD4PRSHLDOSLFS1200, RHD4PRSHLSTAGLFS1200 | Bituminous Sheet Waterproofing (2 layers of waterproofing bitumenous membrane 4mm including protection board for substructure vertical and top surfaces in contact with soil) [263.93 m2]; Carpenter [599.62 h]; Unskilled Labor [85.71 h] | 22,697.98 | Z3 | CONS | ARC |
|  | 9 | **RHD4-02-002-SWL1-B07-WET WELL-Finishes** |  | 2027-09-07 | 2027-09-12 |  |  |  |  |  |  |
| RHD4CSWL1B07D091012 |  | Epoxy Coating for Wet well structure - (B7.09 96 56.01)-SWL1-B07-D09 | 5d | 2027-09-07 | 2027-09-12 | RHD4CSWL1B07D021011, RHD4PRSHLDOSLFS1600, RHD4PRSHLSTAGLFS1600, RHD4ENSWL1APPARC1100, RHD4GNPPSD1100, RHD4ENSDSWL1SUB2000, RHD4ENSDZ6SUBRD220, RHD4ENSDSTL1SUB2000 | Epoxy coating two perpendicular layers for inner surfaces for Tank walls, footings and bottom of the roof and for room flooring [206.03 m2]; Carpenter [1910.06 h]; Unskilled Labor [545.72 h] | 16,482 | Z3 | CONS | ARC |
|  | 63 | **RHD4-02-002-Sewage Lift Station 01-Site Works** |  | 2028-01-03 | 2028-04-17 |  |  |  |  |  |  |
|  | 64 | **RHD4-02-002-SWL1-B07-FENCE & GATES** |  | 2028-01-03 | 2028-01-23 |  |  |  |  |  |  |
|  | 65 | **RHD4-02-002-SWL1-B07-FENCE & GATES-Perimeter Fencing** |  | 2028-01-03 | 2028-01-18 |  |  |  |  |  |  |
| RHD4CSWL1B07D101158 |  | Chain Link Fence - North Side Installation - (B1.32 31 00.01)-SWL1-B07-D10 | 3d | 2028-01-03 | 2028-01-05 | RHD4CSWL1B07D071076, RHD4PRSHLSTAGLFS3100, RHD4ENSWL1APPARC1100, RHD4GNPPSD1100, RHD4ENSDSWL1SUB2000, RHD4ENSDZ6SUBRD220, RHD4ENSDSTL1SUB2000 | Fences and Gates [64 m]; Skilled labor [7.73 h]; Unskilled Labor [46.4 h]; Excavator-Poclain [12.09 h]; Dump Truck [24.18 h] | 47,040 | Z3 | CONS | ARC |
| RHD4CSWL1B07D101159 |  | Chain Link Fence - South Side Installation - (B1.32 31 00.01)-SWL1-B07-D10 | 3d | 2028-01-06 | 2028-01-09 | RHD4CSWL1B07D101158, RHD4PRSHLSTAGLFS3100 | Fences and Gates [64 m]; Skilled labor [7.73 h]; Unskilled Labor [46.4 h]; Excavator-Poclain [12.09 h]; Dump Truck [24.18 h] | 47,040 | Z3 | CONS | ARC |
| RHD4CSWL1B07D101160 |  | Chain Link Fence - West Side Installation - (B1.32 31 00.01)-SWL1-B07-D10 | 4d | 2028-01-10 | 2028-01-13 | RHD4CSWL1B07D101159, RHD4PRSHLSTAGLFS3100 | Fences and Gates [64 m]; Skilled labor [7.73 h]; Unskilled Labor [46.4 h]; Excavator-Poclain [12.09 h]; Dump Truck [24.18 h] | 47,040 | Z3 | CONS | ARC |
| RHD4CSWL1B07D101161 |  | Chain Link Fence - East Side Installation - (B1.32 31 00.01)-SWL1-B07-D10 | 4d | 2028-01-15 | 2028-01-18 | RHD4CSWL1B07D101160, RHD4PRSHLSTAGLFS3100 | Fences and Gates [64 m]; Skilled labor [7.73 h]; Unskilled Labor [46.4 h]; Excavator-Poclain [12.09 h]; Dump Truck [24.18 h] | 47,040 | Z3 | CONS | ARC |
|  | 66 | **RHD4-02-002-SWL1-B07-FENCE & GATES-Entrance Gates** |  | 2028-01-19 | 2028-01-23 |  |  |  |  |  |  |
| RHD4CSWL1B07D101162 |  | Main Entrance Gate Installation - (B1.32 31 00.01)-SWL1-B07-D10 | 4d | 2028-01-19 | 2028-01-23 | RHD4CSWL1B07D101161 | Fences and Gates [64 m]; Skilled labor [1391.57 h]; Unskilled Labor [12523.7 h]; Excavator-Poclain [2178.07 h]; Dump Truck [4356.14 h] | 47,040 | Z3 | CONS | ARC |
|  | 67 | **RHD4-02-002-SWL1-B07-FLOW METER CHAMABER** |  | 2028-01-19 | 2028-04-09 |  |  |  |  |  |  |
|  | 68 | **RHD4-02-002-SWL1-B07-FLOW METER CHAMABER-Concrete works** |  | 2028-01-19 | 2028-02-09 |  |  |  |  |  |  |
| RHD4CSWL1B07D031165 |  | Lean Concrete 100mm - (B7.03 00 00 .01)-SWL1-B07-D03 | 3d | 2028-01-19 | 2028-01-22 | RHD4CSWL1B07D101162 SS | Supply and cast in place plain concrete 100 mm thickness lean concrete under the foundation for (Sewer and Storm Pump station) and (tunnels) [19.72 m2]; Skilled labor [2.4 h]; Unskilled Labor [14.16 h]; Excavator-Poclain [3.7 h]; RIC Machine [11.11 h]; Dump Truck [7.41 h] | 1,301.26 | Z3 | CONS | STR |
| RHD4CSWL1B07D031166 |  | Water proofing membrance Bituminous Sheet - (B7.07 13 13.01)-SWL1-B07-D03 | 4d | 2028-01-23 | 2028-01-26 | RHD4CSWL1B07D031165, RHD4PRSHLDOSLFS1200, RHD4PRSHLSTAGLFS1200 | Bituminous Sheet Waterproofing (2 layers of waterproofing bitumenous membrane 4mm below footings) [26 m2]; Skilled labor [5.77 h]; Unskilled Labor [34.74 h]; Excavator-Poclain [9.04 h]; RIC Machine [27.2 h]; Dump Truck [18.19 h] | 2,236 | Z3 | CONS | ARC |
| RHD4CSWL1B07D031167 |  | Screed 50mm - (B7.03 00 00 .04)-SWL1-B07-D03 | 4d | 2028-01-27 | 2028-01-31 | RHD4CSWL1B07D031166 | Supply and cast in place screed concrete 50 mm thickness screed concrete for protecting waterproofing under the foundation for (Sewer and Storm Pump station) and (tunnels) [20.82 m2]; Skilled labor [3.92 h]; Unskilled Labor [35.28 h]; Excavator-Poclain [6.1 h]; RIC Machine [18.4 h]; Dump Truck [12.31 h] | 666.24 | Z3 | CONS | STR |
| RHD4CSWL1B07D031168 |  | Steel Fixing - (B7.03 00 00 .05)-SWL1-B07-D03 | 3d | 2028-02-01 | 2028-02-03 | RHD4CSWL1B07D031167, RHD4ENSWL1APPSTC1000 | Supply and cast in place reinforced concrete with fc'=31 Mpa for the sub- structures for (Sewer and Storm Pump station) and (tunnels) for Footings [1.24 m3]; Skilled labor [0.54 h]; Unskilled Labor [5.01 h]; Excavator-Poclain [0.87 h]; RIC Machine [2.61 h]; Dump Truck [1.74 h] | 1,912.64 | Z3 | CONS | STR |
| RHD4CSWL1B07D031169 |  | Formwork - (B7.03 00 00 .05)-SWL1-B07-D03 | 3d | 2028-02-05 | 2028-02-07 | RHD4CSWL1B07D031168, RHD4ENSWL1APPSTC1000 | Supply and cast in place reinforced concrete with fc'=31 Mpa for the sub- structures for (Sewer and Storm Pump station) and (tunnels) for Footings [2.18 m3] | 3,347.12 | Z3 | CONS | STR |
| RHD4CSWL1B07D031170 |  | RC Casting Fluid-Applied - (B7.03 00 00 .05)-SWL1-B07-D03 | 2d | 2028-02-08 | 2028-02-09 | RHD4CSWL1B07D031169, RHD4ENSWL1APPSTC1000 | Supply and cast in place reinforced concrete with fc'=31 Mpa for the sub- structures for (Sewer and Storm Pump station) and (tunnels) for Footings [1.24 m3] | 1,912.64 | Z3 | CONS | STR |

| ID | WBS | Activity | Duration | Start | Finish | Predecessors | Resources | Cost | RDH4-01-001-Zones-1 | RDH4-01-001-Phases-1 | RDH4-01-001-Networks-1 |
| --- | --- | --- | --- | --- | --- | --- | --- | --- | --- | --- | --- |
|  | 69 | **RHD4-02-002-SWL1-B07-FLOW METER CHAMABER-Retaining Walls & Slab** |  | 2028-02-10 | 2028-03-01 |  |  |  |  |  |  |
| RHD4CSWL1B07D031171 |  | Steel Fixing - (B7.03 00 00 .07)-SWL1-B07-D03 | 3d | 2028-02-10 | 2028-02-13 | RHD4CSWL1B07D031170, RHD4ENSWL1APPSTC1000 | Supply and cast in place reinforced concrete with fc'=31 Mpa for the sub- structures for (Sewer and Storm Pump station) and (tunnels) for Walls below ground level [7.81 m3]; Skilled labor [6.64 h]; Unskilled Labor [89.41 h]; Excavator-Poclain [10.35 h]; RIC Machine [31.04 h]; Dump Truck [20.69 h] | 20,962.28 | Z3 | CONS | STR |
| RHD4CSWL1B07D031172 |  | Formwork - (B7.03 00 00 .07)-SWL1-B07-D03 | 3d | 2028-02-14 | 2028-02-16 | RHD4CSWL1B07D031171 | Supply and cast in place reinforced concrete with fc'=31 Mpa for the sub- structures for (Sewer and Storm Pump station) and (tunnels) for Walls below ground level [5.86 m3] | 15,721.71 | Z3 | CONS | STR |
| RHD4CSWL1B07D031173 |  | RC Casting - (B7.03 00 00 .07)-SWL1-B07-D03 | 4d | 2028-02-17 | 2028-02-21 | RHD4CSWL1B07D031172 | Supply and cast in place reinforced concrete with fc'=31 Mpa for the sub- structures for (Sewer and Storm Pump station) and (tunnels) for Walls below ground level [25.39 m3] | 68,127.41 | Z3 | CONS | STR |
| RHD4CSWL1B07D031174 |  | Water protection Board membrance Fluid-Applied - (B7.07 14 00.01)-SWL1-B07-D03 | 4d | 2028-02-23 | 2028-03-01 | RHD4CSWL1B07D031173, RHD4PRSHLDOSLFS1300, RHD4PRSHLSTAGLFS1300 | Fluid-Applied Waterproofing (2 coats of bitumen waterproofing paint for slab on grade and ground beams) [10.28 m2] | 154.17 | Z3 | CONS | ARC |
|  | 70 | **RHD4-02-002-SWL1-B07-FLOW METER CHAMABER-Magnetic type flowmeter Installation** |  | 2028-03-02 | 2028-03-19 |  |  |  |  |  |  |
| RHD4CSWL1B07D151175 |  | Flow meter installation 250mm - (B7.22 05 19.02)-SWL1-B07-D15 | 3d | 2028-03-02 | 2028-03-05 | RHD4CSWL1B07D031174, RHD4PRLOLSTAGLFS1200, RHD4ENSWL1APPMEC1200, RHD4GNPPSD1100, RHD4ENSDSWL1SUB3000, RHD4ENSDZ6SUBRD220, RHD4ENSDSTL1SUB3000 | Magnetic Type Flowmeter With Diameter 250mm [0.5 nr]; Skilled labor [0.22 h]; Unskilled Labor [1.6 h]; Excavator-Poclain [0.22 h]; RIC Machine [0.54 h]; Dump Truck [0.33 h] | 23,288.5 | Z3 | CONS | MECH |
| RHD4CSWL1B07D151176 |  | UPVC Conduits 1 inch UPVC - (B7.22 05 19.02)-SWL1-B07-D15 | 3d | 2028-03-06 | 2028-03-08 | RHD4CSWL1B07D151175 | Magnetic Type Flowmeter With Diameter 250mm [0.1 nr] | 4,657.7 | Z3 | CONS | MECH |
| RHD4CSWL1B07D151177 |  | Electrical power and cable connection - (B7.22 05 19.02)-SWL1-B07-D15 | 5d | 2028-03-09 | 2028-03-14 | RHD4CSWL1B07D151176 | Magnetic Type Flowmeter With Diameter 250mm [0.1 nr] | 4,657.7 | Z3 | CONS | MECH |
| RHD4CSWL1B07D151178 |  | Flow meter Panel Integration and connection - (B7.22 05 19.02)-SWL1-B07-D15 | 4d | 2028-03-15 | 2028-03-19 | RHD4CSWL1B07D151177 | Magnetic Type Flowmeter With Diameter 250mm [0.3 nr] | 13,973.1 | Z3 | CONS | MECH |
|  | 71 | **RHD4-02-002-SWL1-B07-FLOW METER CHAMABER-Non-Return Valve** |  | 2028-04-04 | 2028-04-09 |  |  |  |  |  |  |
| RHD4CSWL1B07D151180 |  | Check Valve with diameter 250mm. 250mm - (B7.22 05 24.02)-SWL1-B07-D15 | 5d | 2028-04-04 | 2028-04-09 | RHD4CSWL1B07D161155, RHD4PRSHLDOSLFS1800, RHD4PRSHLSTAGLFS1800, RHD4CSWL1B07D151178, RHD4CZ3C011LV4300, RHD4ENSWL1APPMEC1200, RHD4GNPPSD1100, RHD4ENSDSWL1SUB3000, RHD4ENSDZ6SUBRD220, RHD4ENSDSTL1SUB3000, RHD4CZ6CH6ST1130 | Check Valve With Diameter 250mm. [2 nr] | 20,984 | Z3 | CONS | MECH |
|  | 72 | **RHD4-02-002-SWL1-B07-GENERATOR FOUNDATION** |  | 2028-01-03 | 2028-02-01 |  |  |  |  |  |  |
|  | 73 | **RHD4-02-002-SWL1-B07-GENERATOR FOUNDATION-Concrete works** |  | 2028-01-03 | 2028-01-25 |  |  |  |  |  |  |
| RHD4CSWL1B07D031183 |  | Lean Concrete 100mm - (B7.03 00 00 .01)-SWL1-B07-D03 | 2d | 2028-01-03 | 2028-01-04 | RHD4CSWL1B07D101158 SS | Supply and cast in place plain concrete 100 mm thickness lean concrete under the foundation for (Sewer and Storm Pump station) and (tunnels) [19.72 m2]; Skilled labor [2.4 h]; Unskilled Labor [14.16 h]; Excavator-Poclain [3.7 h]; RIC Machine [11.11 h]; Dump Truck [7.41 h] | 1,301.26 | Z3 | CONS | STR |
| RHD4CSWL1B07D031184 |  | Water proofing membrance Bituminous Sheet - (B7.07 13 13.01)-SWL1-B07-D03 | 3d | 2028-01-05 | 2028-01-08 | RHD4CSWL1B07D031183, RHD4PRSHLDOSLFS1200, RHD4PRSHLSTAGLFS1200 | Bituminous Sheet Waterproofing (2 layers of waterproofing bitumenous membrane 4mm below footings) [26 m2]; Skilled labor [5.77 h]; Unskilled Labor [34.74 h]; Excavator-Poclain [9.04 h]; RIC Machine [27.2 h]; Dump Truck [18.19 h] | 2,236 | Z3 | CONS | ARC |
| RHD4CSWL1B07D031185 |  | Screed 50mm - (B7.03 00 00 .04)-SWL1-B07-D03 | 2d | 2028-01-09 | 2028-01-10 | RHD4CSWL1B07D031184 | Supply and cast in place screed concrete 50 mm thickness screed concrete for protecting waterproofing under the foundation for (Sewer and Storm Pump station) and (tunnels) [16.66 m2]; Skilled labor [3.16 h]; Unskilled Labor [18.84 h]; Excavator-Poclain [4.9 h]; RIC Machine [14.7 h]; Dump Truck [9.8 h] | 532.99 | Z3 | CONS | STR |
| RHD4CSWL1B07D031186 |  | Steel Fixing - (B7.03 00 00 .05)-SWL1-B07-D03 | 3d | 2028-01-11 | 2028-01-13 | RHD4CSWL1B07D031185, RHD4ENSWL1APPSTC1000 | Supply and cast in place reinforced concrete with fc'=31 Mpa for the sub- structures for (Sewer and Storm Pump station) and (tunnels) for Footings [1.24 m3]; Skilled labor [0.54 h]; Unskilled Labor [3.38 h]; Excavator-Poclain [0.87 h]; RIC Machine [2.61 h]; Dump Truck [1.74 h] | 1,912.64 | Z3 | CONS | STR |
| RHD4CSWL1B07D031187 |  | Formwork - (B7.03 00 00 .05)-SWL1-B07-D03 | 4d | 2028-01-15 | 2028-01-18 | RHD4CSWL1B07D031186, RHD4ENSWL1APPSTC1000 | Supply and cast in place reinforced concrete with fc'=31 Mpa for the sub- structures for (Sewer and Storm Pump station) and (tunnels) for Footings [2.49 m3] | 3,825.29 | Z3 | CONS | STR |
| RHD4CSWL1B07D031188 |  | RC Casting - (B7.03 00 00 .05)-SWL1-B07-D03 | 2d | 2028-01-19 | 2028-01-20 | RHD4CSWL1B07D031187 | Supply and cast in place reinforced concrete with fc'=31 Mpa for the sub- structures for (Sewer and Storm Pump station) and (tunnels) for Footings [1.24 m3] | 1,912.64 | Z3 | CONS | STR |
| RHD4CSWL1B07D031189 |  | Water protection Board membrance Fluid-Applied - (B7.07 14 00.01)-SWL1-B07-D03 | 4d | 2028-01-22 | 2028-01-25 | RHD4CSWL1B07D031188, RHD4PRSHLDOSLFS1300, RHD4PRSHLSTAGLFS1300 | Fluid-Applied Waterproofing (2 coats of bitumen waterproofing paint for slab on grade and ground beams) [10.28 m2] | 154.17 | Z3 | CONS | ARC |
|  | 74 | **RHD4-02-002-SWL1-B07-GENERATOR FOUNDATION-Standby Diesel Generator** |  | 2028-01-26 | 2028-02-01 |  |  |  |  |  |  |
| RHD4CSWL1B07D151190 |  | Standby Diesel Generator Set 150 KVA - Installation 150kva - (B7.26 32 12.01)-SWL1-B07-D15 | 3d | 2028-01-26 | 2028-01-29 | RHD4CSWL1B07D031189, RHD4PRLOLSTAGLFS1600 | Standby Diesel Generator Set 150 KVA, 400/230v, 3P, 60Hz in Sound Attenuated Enclosure [1 Item_set]; Skilled labor [0.22 h]; Unskilled Labor [2.18 h]; Excavator-Poclain [0.33 h]; RIC Machine [1.09 h]; Dump Truck [0.8 h] | 136,420 | Z3 | CONS | ELEC |
| RHD4CSWL1B07D151191 |  | Automatic Transfer Switch ATS panel 300A - Installation 300A - (B7.26 32 12.02)-SWL1-B07-D15 | 3d | 2028-01-30 | 2028-02-01 | RHD4CSWL1B07D151190 | Automatic Transfer Switch ATS panel 300A [1 nr]; Skilled labor [0.22 h]; Unskilled Labor [2.18 h]; Excavator-Poclain [0.33 h]; RIC Machine [1.09 h]; Dump Truck [0.8 h] | 67,414 | Z3 | CONS | ELEC |

| ID | WBS | Activity | Duration | Start | Finish | Predecessors | Resources | Cost | RDH4-01-001-Zones-1 | RDH4-01-001-Phases-1 | RDH4-01-001-Networks-1 |
| --- | --- | --- | --- | --- | --- | --- | --- | --- | --- | --- | --- |
|  | 75 | **RHD4-02-002-SWL1-B07-SURGE VESSEL** |  | 2028-02-02 | 2028-03-01 |  |  |  |  |  |  |
|  | 76 | **RHD4-02-002-SWL1-B07-SURGE VESSEL -Concrete works** |  | 2028-02-02 | 2028-03-01 |  |  |  |  |  |  |
| RHD4CSWL1B07D031194 |  | Lean Concrete 100mm - (B7.03 00 00 .01)-SWL1-B07-D03 | 2d | 2028-02-02 | 2028-02-03 | RHD4CSWL1B07D151191 | Supply and cast in place plain concrete 100 mm thickness lean concrete under the foundation for (Sewer and Storm Pump station) and (tunnels) [19.72 m2]; Skilled labor [2.4 h]; Unskilled Labor [21.24 h]; Excavator-Poclain [3.7 h]; RIC Machine [11.11 h]; Dump Truck [7.41 h] | 1,301.26 | Z3 | CONS | STR |
| RHD4CSWL1B07D031195 |  | Water proofing membrance Bituminous Sheet - (B7.07 13 13.01)-SWL1-B07-D03 | 3d | 2028-02-05 | 2028-02-07 | RHD4CSWL1B07D031194, RHD4PRSHLDOSLFS1200, RHD4PRSHLSTAGLFS1200 | Bituminous Sheet Waterproofing (2 layers of waterproofing bitumenous membrane 4mm below footings) [26 m2]; Skilled labor [5.77 h]; Unskilled Labor [52.16 h]; Excavator-Poclain [9.04 h]; RIC Machine [27.2 h]; Dump Truck [18.19 h] | 2,236 | Z3 | CONS | ARC |
| RHD4CSWL1B07D031196 |  | Screed 50mm - (B7.03 00 00 .04)-SWL1-B07-D03 | 3d | 2028-02-08 | 2028-02-10 | RHD4CSWL1B07D031195 | Supply and cast in place screed concrete 50 mm thickness screed concrete for protecting waterproofing under the foundation for (Sewer and Storm Pump station) and (tunnels) [12.49 m2]; Skilled labor [2.4 h]; Unskilled Labor [31.8 h]; Excavator-Poclain [3.7 h]; RIC Machine [11.11 h]; Dump Truck [7.41 h] | 399.74 | Z3 | CONS | STR |
| RHD4CSWL1B07D031197 |  | Steel Fixing - (B7.03 00 00 .05)-SWL1-B07-D03 | 4d | 2028-02-12 | 2028-02-15 | RHD4CSWL1B07D031196 | Supply and cast in place reinforced concrete with fc'=31 Mpa for the sub- structures for (Sewer and Storm Pump station) and (tunnels) for Footings [1.24 m3]; Skilled labor [0.54 h]; Unskilled Labor [7.51 h]; Excavator-Poclain [0.87 h]; RIC Machine [2.61 h]; Dump Truck [1.74 h] | 1,912.64 | Z3 | CONS | STR |
| RHD4CSWL1B07D031198 |  | Formwork - (B7.03 00 00 .05)-SWL1-B07-D03 | 4d | 2028-02-16 | 2028-02-20 | RHD4CSWL1B07D031197 | Supply and cast in place reinforced concrete with fc'=31 Mpa for the sub- structures for (Sewer and Storm Pump station) and (tunnels) for Footings [2.49 m3] | 3,825.29 | Z3 | CONS | STR |
| RHD4CSWL1B07D031199 |  | RC Casting - (B7.03 00 00 .05)-SWL1-B07-D03 | 2d | 2028-02-21 | 2028-02-23 | RHD4CSWL1B07D031198 | Supply and cast in place reinforced concrete with fc'=31 Mpa for the sub- structures for (Sewer and Storm Pump station) and (tunnels) for Footings [1.56 m3] | 2,390.8 | Z3 | CONS | STR |
| RHD4CSWL1B07D031200 |  | Water protection Board membrance Fluid-Applied - (B7.07 14 00.01)-SWL1-B07-D03 | 3d | 2028-02-24 | 2028-03-01 | RHD4CSWL1B07D031199, RHD4PRSHLDOSLFS1300, RHD4PRSHLSTAGLFS1300 | Fluid-Applied Waterproofing (2 coats of bitumen waterproofing paint for slab on grade and ground beams) [10.28 m2] | 154.17 | Z3 | CONS | ARC |
|  | 77 | **RHD4-02-002-SWL1-B07-SURGE VESSEL -Surge Tank** |  |  |  |  |  |  |  |  |  |
|  | 78 | **RHD4-02-002-SWL1-B07-ODOR UNIT** |  | 2028-01-03 | 2028-04-17 |  |  |  |  |  |  |
|  | 79 | **RHD4-02-002-SWL1-B07-ODOR UNIT-Concrete works** |  | 2028-01-03 | 2028-03-20 |  |  |  |  |  |  |
| RHD4CSWL1B07D031204 |  | Lean Concrete 100mm - (B7.03 00 00 .01)-SWL1-B07-D03 | 2d | 2028-01-03 | 2028-01-04 | RHD4CSWL1B07D031183 SS | Supply and cast in place plain concrete 100 mm thickness lean concrete under the foundation for (Sewer and Storm Pump station) and (tunnels) [13.14 m2]; Skilled labor [1.52 h]; Unskilled Labor [21.24 h]; Excavator-Poclain [2.5 h]; RIC Machine [7.41 h]; Dump Truck [4.9 h] | 867.5 | Z3 | CONS | STR |
| RHD4CSWL1B07D031205 |  | Water proofing membrance Bituminous Sheet - (B7.07 13 13.01)-SWL1-B07-D03 | 3d | 2028-01-05 | 2028-01-08 | RHD4CSWL1B07D031204, RHD4PRSHLDOSLFS1200, RHD4PRSHLSTAGLFS1200 | Bituminous Sheet Waterproofing (2 layers of waterproofing bitumenous membrane 4mm below footings) [26 m2]; Skilled labor [5.77 h]; Unskilled Labor [78.3 h]; Excavator-Poclain [9.04 h]; RIC Machine [27.2 h]; Dump Truck [18.19 h] | 2,236 | Z3 | CONS | ARC |
| RHD4CSWL1B07D031206 |  | Screed 50mm - (B7.03 00 00 .04)-SWL1-B07-D03 | 3d | 2028-03-02 | 2028-03-05 | RHD4CSWL1B07D031205, RHD4CSWL1B07D031200 | Supply and cast in place screed concrete 50 mm thickness screed concrete for protecting waterproofing under the foundation for (Sewer and Storm Pump station) and (tunnels) [12.49 m2]; Skilled labor [2.4 h]; Unskilled Labor [21.24 h]; Excavator-Poclain [3.7 h]; RIC Machine [11.11 h]; Dump Truck [7.41 h] | 399.74 | Z3 | CONS | STR |
| RHD4CSWL1B07D031207 |  | Steel Fixing - (B7.03 00 00 .05)-SWL1-B07-D03 | 4d | 2028-03-06 | 2028-03-09 | RHD4CSWL1B07D031206 | Supply and cast in place reinforced concrete with fc'=31 Mpa for the sub- structures for (Sewer and Storm Pump station) and (tunnels) for Footings [1.56 m3]; Skilled labor [0.65 h]; Unskilled Labor [6.32 h]; Excavator-Poclain [1.09 h]; RIC Machine [3.27 h]; Dump Truck [2.18 h] | 2,390.8 | Z3 | CONS | STR |
| RHD4CSWL1B07D031208 |  | Formwork - (B7.03 00 00 .05)-SWL1-B07-D03 | 4d | 2028-03-11 | 2028-03-14 | RHD4CSWL1B07D031207 | Supply and cast in place reinforced concrete with fc'=31 Mpa for the sub- structures for (Sewer and Storm Pump station) and (tunnels) for Footings [2.18 m3] | 3,347.12 | Z3 | CONS | STR |
| RHD4CSWL1B07D031209 |  | RC Casting - (B7.03 00 00 .05)-SWL1-B07-D03 | 2d | 2028-03-15 | 2028-03-16 | RHD4CSWL1B07D031208 | Supply and cast in place reinforced concrete with fc'=31 Mpa for the sub- structures for (Sewer and Storm Pump station) and (tunnels) for Footings [1.24 m3] | 1,912.64 | Z3 | CONS | STR |
| RHD4CSWL1B07D031210 |  | Water protection Board membrance Fluid-Applied - (B7.07 14 00.01)-SWL1-B07-D03 | 3d | 2028-03-18 | 2028-03-20 | RHD4CSWL1B07D031209, RHD4PRSHLDOSLFS1300, RHD4PRSHLSTAGLFS1300 | Fluid-Applied Waterproofing (2 coats of bitumen waterproofing paint for slab on grade and ground beams) [10.28 m2] | 154.17 | Z3 | CONS | ARC |
|  | 80 | **RHD4-02-002-SWL1-B07-ODOR UNIT-Odor Control Unit** |  | 2028-03-18 | 2028-04-17 |  |  |  |  |  |  |
| RHD4CSWL1B07D151211 |  | Carbon Filter Installation 1110 L/s - (B7.44 30 00.01)-SWL1-B07-D15 | 4d | 2028-03-18 | 2028-03-21 | RHD4CSWL1B07D031210 SS, RHD4PRLOLSTAGLFS1400, RHD4ENSWL1APPMEC1200, RHD4GNPPSD1100, RHD4ENSDSWL1SUB3000, RHD4ENSDZ6SUBRD220, RHD4ENSDSTL1SUB3000 | Odor Control Unit for land F lifting pumps station (Flow=390L/s) [0.25 Set]; Unskilled Labor [0.33 h]; Excavator-Poclain [0.22 h]; RIC Machine [0.33 h]; Dump Truck [0.22 h] | 70,477.75 | Z3 | CONS | MECH |
| RHD4CSWL1B07D151212 |  | Exhaust Fans Installation - (B7.44 30 00.01)-SWL1-B07-D15 | 4d | 2028-03-22 | 2028-03-26 | RHD4CSWL1B07D151211, RHD4PRLOLSTAGLFS1400, RHD4ENSWL1APPMEC1200, RHD4GNPPSD1100, RHD4ENSDSWL1SUB3000, RHD4ENSDZ6SUBRD220, RHD4ENSDSTL1SUB3000 | Odor Control Unit for land F lifting pumps station (Flow=390L/s) [0.25 Set] | 70,477.75 | Z3 | CONS | MECH |
| RHD4CSWL1B07D151213 |  | Chimeny Stack Installation - (B7.44 30 00.01)-SWL1-B07-D15 | 5d | 2028-04-04 | 2028-04-09 | RHD4CSWL1B07D151212, RHD4CSWL1B07D151180 SS, RHD4PRLOLSTAGLFS1400, RHD4CSWL1B07D031210, RHD4ENSWL1APPMEC1200, RHD4GNPPSD1100, RHD4ENSDSWL1SUB3000, RHD4ENSDZ6SUBRD220, RHD4ENSDSTL1SUB3000 | Odor Control Unit for land F lifting pumps station (Flow=390L/s) [0.25 Set] | 70,477.75 | Z3 | CONS | MECH |
| RHD4CSWL1B07D151214 |  | Piping Connection 1110 L/s - (B7.44 30 00.01)-SWL1-B07-D15 | 7d | 2028-04-10 | 2028-04-17 | RHD4CSWL1B07D151213, RHD4PRLOLSTAGLFS1400, RHD4CZ6A015CCTV6100, RHD4ENSWL1APPMEC1200, RHD4GNPPSD1100, RHD4ENSDSWL1SUB3000, RHD4ENSDZ6SUBRD220, RHD4ENSDSTL1SUB3000 | Odor Control Unit for land F lifting pumps station (Flow=390L/s) [0.25 Set]; Unskilled Labor [0.33 h]; Excavator-Poclain [0.22 h]; RIC Machine [0.33 h]; Dump Truck [0.22 h] | 70,477.75 | Z3 | CONS | MECH |

| ID | WBS | Activity | Duration | Start | Finish | Predecessors | Resources | Cost | RDH4-01-001-Road and Block Names-1 | RDH4-01-001-Zones-1 | RDH4-01-001-Phases-1 | RDH4-01-001-Networks-1 | RDH4-01-001-Work Method-1 | RDH4-01-001-MENEM |
| --- | --- | --- | --- | --- | --- | --- | --- | --- | --- | --- | --- | --- | --- | --- |
|  | 81 | **RHD4-02-002-SWL1-B07-CCTV INSTALLATION** |  |  |  |  |  |  |  |  |  |  |  |  |
|  | 315 | **Open Channels - CH** |  | 2027-05-26 | 2028-01-13 |  |  |  |  |  |  |  |  |  |
|  | 316 | **RHD4-02-002-Z1-Open Channels - CH-1** |  | 2027-05-26 | 2027-07-20 |  |  |  |  |  |  |  |  |  |
|  | 317 | **RHD4-02-002-Z1-Open Channel - ST** |  | 2027-05-26 | 2027-07-20 |  |  |  |  |  |  |  |  |  |
|  | 318 | **RHD4-02-002-CH1-(ST)-Open Drain Channel** |  | 2027-05-26 | 2027-07-20 |  |  |  |  |  |  |  |  |  |
| RHD4CZ1CH1ST1100 |  | Channels excavation for Open Channel - (B6.31 23 00.01)-Z1-CH1-ST | 21d | 2027-05-26 | 2027-06-19 | RHD4CZ4A013SL5200 | Unskilled Labor [131.34 h]; Equipment Opreator [394.01 h]; Excavator-Poclain [131.34 h]; Dump Truck [262.68 h]; Channels excavation in all type of soil for any depth [20504.5 m3] | 184,540.41 | B01 | Z1 | CONS | ST | Channels excavation | bef |
| RHD4CZ1CH1ST1300 |  | Loose riprap on the channels bed for Open Channel - (B6.31 37 00.01)-Z1-CH1-ST | 12d | 2027-06-20 | 2027-07-03 | RHD4CZ1CH1ST1100 | Mason [510.1 h]; Unskilled Labor [255.05 h]; Equipment Opreator [6.4 h]; Excavator-Poclain [6.4 h]; Loose riprap on the channels bed [3513.21 m2] | 235,385.07 | B01 | Z1 | CONS | ST | Channels Loose riprap on the channels bed | bef |
| RHD4CZ1CH1ST1200 |  | Grouted riprap on side slopes for Open Channel - (B6.31 37 00.02)-Z1-CH1-ST | 15d | 2027-07-04 | 2027-07-20 | RHD4PRSHLDOSST1400, RHD4PRSHLSTAGST1400, RHD4CZ1CH1ST1300 | Mason [612.15 h]; Unskilled Labor [306.13 h]; Equipment Opreator [15.36 h]; Excavator-Poclain [7.62 h]; Water Truck [7.62 h]; Grouted riprap on side slopes [3513.21 m2] | 235,385.07 | B01 | Z1 | CONS | ST | Grouted riprap on side slopes | bef |
|  | 319 | **RHD4-02-002-Z2-Open Channels - CH-4** |  | 2027-06-20 | 2027-07-05 |  |  |  |  |  |  |  |  |  |
|  | 320 | **RHD4-02-002-Z2-Open Channel - ST** |  | 2027-06-20 | 2027-07-05 |  |  |  |  |  |  |  |  |  |
|  | 321 | **RHD4-02-002-CH4-(ST)-Open Drain Channel Part 1** |  | 2027-06-20 | 2027-07-05 |  |  |  |  |  |  |  |  |  |
| RHD4CZ2CH4ST1100 |  | Channels excavation for Open Channel - (B6.31 23 00.01)-Z2-CH4-ST | 14d | 2027-06-20 | 2027-07-05 | RHD4CZ1CH1ST1100 | Skilled labor [73.95 h]; Unskilled Labor [73.95 h]; Equipment Opreator [295.89 h]; Excavator-Poclain [73.95 h]; Water Truck [73.95 h]; Dump Truck [147.89 h]; Channels excavation in all type of soil for any depth [11547 m3] | 103,923 | B04 | Z2 | CONS | ST | Channels excavation | bef |
|  | 322 | **RHD4-02-002-CH4-(ST)-Open Drain Channel Part 2** |  |  |  |  |  |  |  |  |  |  |  |  |
|  | 1 | **RHD4-02-002-Z3-Open Channels - CH-3** |  | 2027-07-06 | 2027-07-18 |  |  |  |  |  |  |  |  |  |
|  | 317 | **RHD4-02-002-Z3-Open Channel - ST** |  | 2027-07-06 | 2027-07-18 |  |  |  |  |  |  |  |  |  |
|  | 318 | **RHD4-02-002-CH3-(ST)-Open Drain Channel** |  | 2027-07-06 | 2027-07-18 |  |  |  |  |  |  |  |  |  |
| RHD4CZ3CH3ST1100 |  | Channels excavation for Open Channel - (B6.31 23 00.01)-Z3-CH3-ST | 11d | 2027-07-06 | 2027-07-18 | RHD4CZ2CH4ST1100 | Skilled labor [55.32 h]; Unskilled Labor [55.32 h]; Equipment Opreator [221.4 h]; Excavator-Poclain [55.32 h]; Water Truck [55.32 h]; Dump Truck [110.75 h]; Channels excavation in all type of soil for any depth [8641.11 m3] | 77,769.99 | BZ3 | Z3 | CONS | ST | Channels excavation | bef |
|  | 3 | **RHD4-02-002-Z4-Open Channels - CH-5** |  | 2027-07-19 | 2027-11-18 |  |  |  |  |  |  |  |  |  |
|  | 320 | **RHD4-02-002-Z4-Open Channel - ST** |  | 2027-07-19 | 2027-11-18 |  |  |  |  |  |  |  |  |  |
|  | 321 | **RHD4-02-002-CH5-(ST)-Open Drain Channel Part 1** |  | 2027-07-19 | 2027-09-30 |  |  |  |  |  |  |  |  |  |
| RHD4CZ4CH5ST1100 |  | Channels excavation for Open Channel - (B6.31 23 00.01)-Z4-CH5-ST | 21d | 2027-07-19 | 2027-08-11 | RHD4CZ3CH3ST1100 | Skilled labor [143.53 h]; Unskilled Labor [143.53 h]; Equipment Opreator [574.03 h]; Excavator-Poclain [143.53 h]; Water Truck [143.53 h]; Dump Truck [286.96 h]; Channels excavation in all type of soil for any depth [22401.1 m3] | 201,609.84 | B06 | Z4 | CONS | ST | Channels excavation | bef |
| RHD4CZ4CH5ST1200 |  | Grouted riprap on side slopes for Open Channel - (B6.31 37 00.02)-Z4-CH5-ST | 21d | 2027-08-12 | 2027-09-05 | RHD4CZ4CH5ST1100 | Skilled labor [129.27 h]; Unskilled Labor [258.4 h]; Equipment Opreator [387.7 h]; Water Truck [129.27 h]; Dump Truck [258.4 h]; Grouted riprap on side slopes [5933.7 m2] | 397,557.9 | B06 | Z4 | CONS | ST | Grouted riprap on side slopes | bef |
| RHD4CZ4CH5ST1300 |  | Loose riprap on the channels bed for Open Channel - (B6.31 37 00.01)-Z4-CH5-ST | 21d | 2027-09-06 | 2027-09-30 | RHD4CZ4CH5ST1200, RHD4CZ1CH1ST1200 FF | Skilled labor [115.11 h]; Unskilled Labor [230.33 h]; Equipment Opreator [345.44 h]; Water Truck [115.11 h]; Dump Truck [230.33 h]; Loose riprap on the channels bed [6343.7 m2] | 425,027.9 | B06 | Z4 | CONS | ST | Channels Loose riprap on the channels bed | bef |
|  | 322 | **RHD4-02-002-CH5-(ST)-Open Drain Channel Part 2** |  | 2027-08-12 | 2027-10-25 |  |  |  |  |  |  |  |  |  |
| RHD4CZ4CH5ST1110 |  | Channels excavation for Open Channel - (B6.31 23 00.01)-Z4-CH5-ST | 21d | 2027-08-12 | 2027-09-05 | RHD4CZ4CH5ST1100 | Skilled labor [143.53 h]; Unskilled Labor [143.53 h]; Equipment Opreator [574.03 h]; Excavator-Poclain [143.53 h]; Water Truck [143.53 h]; Dump Truck [286.96 h]; Channels excavation in all type of soil for any depth [22401.1 m3] | 201,609.84 | B06 | Z4 | CONS | ST | Channels excavation | bef |
| RHD4CZ4CH5ST1210 |  | Grouted riprap on side slopes for Open Channel - (B6.31 37 00.02)-Z4-CH5-ST | 21d | 2027-09-06 | 2027-09-30 | RHD4CZ4CH5ST1110 | Skilled labor [129.27 h]; Unskilled Labor [258.4 h]; Equipment Opreator [387.7 h]; Water Truck [129.27 h]; Dump Truck [258.4 h]; Grouted riprap on side slopes [5933.7 m2] | 397,557.9 | B06 | Z4 | CONS | ST | Grouted riprap on side slopes | bef |
| RHD4CZ4CH5ST1310 |  | Loose riprap on the channels bed for Open Channel - (B6.31 37 00.01)-Z4-CH5-ST | 21d | 2027-10-02 | 2027-10-25 | RHD4CZ4CH5ST1210 | Skilled labor [115.11 h]; Unskilled Labor [230.33 h]; Equipment Opreator [345.44 h]; Water Truck [115.11 h]; Dump Truck [230.33 h]; Loose riprap on the channels bed [6343.7 m2] | 425,027.9 | B06 | Z4 | CONS | ST | Channels Loose riprap on the channels bed | bef |

| ID | WBS | Activity | Duration | Start | Finish | Predecessors | Calendar | Resources | Cost | RDH4-01-001-Road and Block Names-1 | RDH4-01-001-Zones-1 | RDH4-01-001-Phases-1 | RDH4-01-001-Networks-1 | RDH4-01-001-Work Method-1 | RDH4-01-001-MENEM |
| --- | --- | --- | --- | --- | --- | --- | --- | --- | --- | --- | --- | --- | --- | --- | --- |
|  | 1 | **RHD4-02-002-CH5-(ST)-Open Drain Channel Part 3** |  | 2027-09-06 | 2027-11-18 |  |  |  |  |  |  |  |  |  |  |
| RHD4CZ4CH5ST1120 |  | Channels excavation for Open Channel - (B6.31 23 00.01)-Z4-CH5-ST | 21d | 2027-09-06 | 2027-09-30 | RHD4CZ4CH5ST1110 |  | Skilled labor [143.53 h]; Unskilled Labor [143.53 h]; Equipment Opreator [574.03 h]; Excavator-Poclain [143.53 h]; Water Truck [143.53 h]; Dump Truck [286.96 h]; Channels excavation in all type of soil for any depth [22401.1 m3] | 201,609.84 | B06 | Z4 | CONS | ST | Channels excavation | bef |
| RHD4CZ4CH5ST1220 |  | Grouted riprap on side slopes for Open Channel - (B6.31 37 00.02)-Z4-CH5-ST | 21d | 2027-10-02 | 2027-10-25 | RHD4CZ4CH5ST1120 |  | Skilled labor [129.27 h]; Unskilled Labor [258.4 h]; Equipment Opreator [387.7 h]; Water Truck [129.27 h]; Dump Truck [258.4 h]; Grouted riprap on side slopes [5933.7 m2] | 397,557.9 | B06 | Z4 | CONS | ST | Grouted riprap on side slopes | bef |
| RHD4CZ4CH5ST1320 |  | Loose riprap on the channels bed for Open Channel - (B6.31 37 00.01)-Z4-CH5-ST | 21d | 2027-10-26 | 2027-11-18 | RHD4CZ4CH5ST1220, RHD4CZ4CH5ST1300 FF, RHD4CZ4CH5ST1310 FF |  | Skilled labor [115.11 h]; Unskilled Labor [230.33 h]; Equipment Opreator [345.44 h]; Water Truck [115.11 h]; Dump Truck [230.33 h]; Loose riprap on the channels bed [6343.7 m2] | 425,027.9 | B06 | Z4 | CONS | ST | Channels Loose riprap on the channels bed | bef |
|  | 2 | **RHD4-02-002-Z5-Open Channels - CH-2** |  | 2027-10-02 | 2027-10-12 |  |  |  |  |  |  |  |  |  |  |
|  | 317 | **RHD4-02-002-Z5-Open Channel - ST** |  | 2027-10-02 | 2027-10-12 |  |  |  |  |  |  |  |  |  |  |
|  | 318 | **RHD4-02-002-CH2-(ST)-Open Drain Channel** |  | 2027-10-02 | 2027-10-12 |  |  |  |  |  |  |  |  |  |  |
| RHD4CZ5CH2ST1100 |  | Channels excavation for Open Channel - (B6.31 23 00.01)-Z5-CH2-ST | 10d | 2027-10-02 | 2027-10-12 | RHD4CZ4CH5ST1120 |  | Skilled labor [53.8 h]; Unskilled Labor [53.8 h]; Equipment Opreator [215.08 h]; Excavator-Poclain [53.8 h]; Water Truck [53.8 h]; Dump Truck [107.49 h]; Channels excavation in all type of soil for any depth [8391.8 m3] | 75,526.2 | B10 | Z5 | CONS | ST | Channels excavation | bef |
|  | 4 | **RHD4-02-002-Z6-Open Channels - CH-6** |  | 2027-10-13 | 2028-01-13 |  |  |  |  |  |  |  |  |  |  |
|  | 320 | **RHD4-02-002-Z6-Open Channel - ST** |  | 2027-10-13 | 2028-01-13 |  |  |  |  |  |  |  |  |  |  |
|  | 321 | **RHD4-02-002-CH6-(ST)-Open Drain Channel Part 1** |  | 2027-10-13 | 2027-11-04 |  |  |  |  |  |  |  |  |  |  |
| RHD4CZ6CH6ST1100 |  | Channels excavation for Open Channel - (B6.31 23 00.01)-Z6-CH6-ST | 20d | 2027-10-13 | 2027-11-04 | RHD4CZ5CH2ST1100 |  | Skilled labor [107.2 h]; Unskilled Labor [107.2 h]; Equipment Opreator [428.54 h]; Excavator-Poclain [107.2 h]; Water Truck [107.2 h]; Dump Truck [214.21 h]; Channels excavation in all type of soil for any depth [16723.1 m3] | 150,508.24 | B15 | Z6 | CONS | ST | Channels excavation | bef |
|  | 322 | **RHD4-02-002-CH6-(ST)-Open Drain Channel Part 2** |  | 2027-11-06 | 2027-11-28 |  |  |  |  |  |  |  |  |  |  |
| RHD4CZ6CH6ST1110 |  | Channels excavation for Open Channel - (B6.31 23 00.01)-Z6-CH6-ST | 20d | 2027-11-06 | 2027-11-28 | RHD4CZ6CH6ST1100 |  | Skilled labor [107.2 h]; Unskilled Labor [107.2 h]; Equipment Opreator [428.54 h]; Excavator-Poclain [107.2 h]; Water Truck [107.2 h]; Dump Truck [214.21 h]; Channels excavation in all type of soil for any depth [16723.1 m3] | 150,508.24 | B15 | Z6 | CONS | ST | Channels excavation | bef |
|  | 1 | **RHD4-02-002-CH6-(ST)-Open Drain Channel Part 3** |  | 2027-11-29 | 2027-12-21 |  |  |  |  |  |  |  |  |  |  |
| RHD4CZ6CH6ST1120 |  | Channels excavation for Open Channel - (B6.31 23 00.01)-Z6-CH6-ST | 20d | 2027-11-29 | 2027-12-21 | RHD4CZ6CH6ST1110 |  | Skilled labor [107.2 h]; Unskilled Labor [107.2 h]; Equipment Opreator [428.54 h]; Excavator-Poclain [107.2 h]; Water Truck [107.2 h]; Dump Truck [214.21 h]; Channels excavation in all type of soil for any depth [16723.1 m3] | 150,508.24 | B15 | Z6 | CONS | ST | Channels excavation | bef |
|  | 2 | **RHD4-02-002-CH6-(ST)-Open Drain Channel Part 4** |  | 2027-12-22 | 2028-01-13 |  |  |  |  |  |  |  |  |  |  |
| RHD4CZ6CH6ST1130 |  | Channels excavation for Open Channel - (B6.31 23 00.01)-Z6-CH6-ST | 20d | 2027-12-22 | 2028-01-13 | RHD4CZ6CH6ST1120 |  | Skilled labor [107.2 h]; Unskilled Labor [107.2 h]; Equipment Opreator [428.54 h]; Excavator-Poclain [107.2 h]; Water Truck [107.2 h]; Dump Truck [214.21 h]; Channels excavation in all type of soil for any depth [16723.1 m3] | 150,508.24 | B15 | Z6 | CONS | ST | Channels excavation | bef |
|  | 2 | **Provisional Sum** |  | 2029-01-15 | 2029-01-25 |  |  |  |  |  |  |  |  |  |  |
| A1000 |  | De-scoping | 11d | 2029-01-15 | 2029-01-25 | RHD4GNHODMOB1300 SS, RHD4HOASSTL1SUB1000, RHD4HOASSTL1SUB1100, RHD4HOASSTL1SUB1200, RHD4HOASSTL1SUB1300 | RHD4 - (7 Days - 8 Hours)-48 | Provisional Sum [92367056]; Document Control | 92,367,056.5 |  |  |  |  |  |  |
|  | 9216 | **RHD4-02-002-Final Testing and Commissioning - FT** |  | 2027-06-14 | 2028-11-04 |  |  |  |  |  |  |  |  |  |  |
|  | 9217 | **RHD4-02-002-Final Testing and Commissioning - FT-Z1** |  | 2027-10-09 | 2028-08-19 |  |  |  |  |  |  |  |  |  |  |
| RHD4GNLVZ1FT1500 |  | Final Testing and Commissioning for Low Voltage Network - FT-Z1-LV | 30d | 2027-10-09 | 2027-11-11 | RHD4CZ1L101LV3400, RHD4CZ1C081LV3400, RHD4GNLVZ2FT1500 SS |  | physical Testing [2400 h] |  |  | T&C | FT | LV |  |  |
| RHD4GNSLZ1FT1600 |  | Final Testing and Commissioning for Street Lighting Network - FT-Z1-SL | 30d | 2027-11-06 | 2027-12-09 | RHD4CZ1L101SL3400, RHD4CZ1C081SL3400, RHD4CZ1L101SL1500, RHD4CZ1C081SL1500, RHD4CZ1C081SL4300 |  | physical Testing [2400 h] |  |  | T&C | FT | SL |  |  |
| RHD4GNCCTVZ1FT2000 |  | Final Testing and Commissioning for Security "CCTV" Network - FT-Z1-CCTV | 30d | 2028-01-13 | 2028-02-16 | RHD4CZ1L101CCTV4200, RHD4CZ1C081CCTV4200, RHD4CZ1C081CCTV1500, RHD4CZ1L101CCTV1500, RHD4CZ1L101CCTV4100, RHD4CZ1C081CCTV4100 |  | physical Testing [4800 h] |  |  | T&C | FT | CCTV |  |  |
| RHD4GNTCZ1FT1800 |  | Final Testing and Commissioning for Telecommunications Network - FT-Z1-TC | 30d | 2028-04-26 | 2028-06-03 | RHD4CZ1C081TC2400, RHD4CZ1L101TC2400, RHD4GNTCZ5FT1800, RHD4HOASZ5APPSL170 |  | physical Testing [2400 h] |  |  | T&C | FT | TC |  |  |
| RHD4GNICTZ1FT1900 |  | Final Testing and Commissioning for ICT Network - FT-Z1-ICT | 30d | 2028-06-04 | 2028-07-08 | RHD4CZ1C081ICT2400, RHD4CZ1L101ICT2400, RHD4GNICTZ4FT1900 SS |  | physical Testing [2400 h] |  |  | T&C | FT | ICT |  |  |
| RHD4GNSTZ1FT1000 |  | Final Testing and Commissioning for Storm Network - FT-Z1-ST | 12d | 2028-06-04 | 2028-06-17 | RHD4CZ1L101ST3500, RHD4CZ1L101ST3501, RHD4CZ1L101ST7500, RHD4CZ1C081ST3501, RHD4CZ1C081ST8500, RHD4CZ1C081ST3500, RHD4CZ1C081ST7500, RHD4GNSTZ2FT1000 SS |  | physical Testing [960 h] |  |  | T&C | FT | ST |  |  |
| RHD4GNIRRZ1FT1300 |  | Final Testing and Commissioning for Irrigation Network - FT-Z1-IRR | 30d | 2028-06-18 | 2028-07-22 | RHD4CZ1C081IRR1404, RHD4CZ1C081IRR3200, RHD4CZ1L101IRR1404, RHD4CZ1L101IRR3200, RHD4GNIRRZ8FT1300 SS |  | physical Testing [2400 h] |  |  | T&C | FT | IRR |  |  |
| RHD4GNMVZ1FT1400 |  | Final Testing and Commissioning for Medium Voltage Network - FT-Z1-MV | 30d | 2028-06-18 | 2028-07-22 | RHD4CZ1C081MV3300, RHD4CZ1C081MV3400, RHD4CZ1C081MV3401, RHD4CZ1L101MV3300, RHD4GNMVZ4FT1400 SS |  | physical Testing [2400 h] |  |  | T&C | FT | MV |  |  |
| RHD4GNPTZ1FT1200 |  | Final Testing and Commissioning for Potable Water Network - FT-Z1-PT | 30d | 2028-06-18 | 2028-07-22 | RHD4CZ1C081PT1402, RHD4CZ1C081PT4500, RHD4CZ1C081PT3203, RHD4CZ1C081PT3200, RHD4CZ1C081PT4300, RHD4CZ1C081PT4200, RHD4CZ1L101PT1400, RHD4CZ1L101PT1401, RHD4GNPTZ6FT1200 SS |  | physical Testing [2400 h] |  |  | T&C | FT | PT |  |  |
| RHD4GNSWZ1FT1100 |  | Final Testing and Commissioning for Sewage Network - FT-Z1-SW | 30d | 2028-07-16 | 2028-08-19 | RHD4CZ1C081SW2400, RHD4CZ1C081SW3400, RHD4CZ1L101SW3400, RHD4CZ1L101SW2400, RHD4CZ1C081SW3500, RHD4GNSWZ2FT1100 SS |  | physical Testing [2400 h] |  |  | T&C | FT | SW |  |  |

| ID | WBS | Activity | Duration | Start | Finish | Predecessors | Resources | RDH4-01-001-Zones-1 | RDH4-01-001-Phases-1 | RDH4-01-001-Networks-1 |
| --- | --- | --- | --- | --- | --- | --- | --- | --- | --- | --- |
|  | 9218 | **RHD4-02-002-Final Testing and Commissioning - FT-Z2** |  | 2027-06-14 | 2028-07-29 |  |  |  |  |  |
| RHD4GNLVZ2FT1500 |  | Final Testing and Commissioning for Low Voltage Network - FT-Z2-LV | 30d | 2027-06-14 | 2027-07-18 | RHD4CZ2L011LV3400 | physical Testing [2400 h] | T&C | FT | LV |
| RHD4GNSLZ2FT1600 |  | Final Testing and Commissioning for Street Lighting Network - FT-Z2-SL | 30d | 2027-11-13 | 2027-12-16 | RHD4CZ2C082SL6100, RHD4CZ2L102SL6100, RHD4CZ2C082SL1500, RHD4CZ2L102SL1500, RHD4CZ2L011SL1500, RHD4CZ2C082SL3400, RHD4CZ2L102SL3400, RHD4CZ2L011SL3400, RHD4GNLVZ1FT1500 | physical Testing [2400 h] | T&C | FT | SL |
| RHD4GNCCTVZ2FT2000 |  | Final Testing and Commissioning for Security "CCTV" Network - FT-Z2-CCTV | 30d | 2028-02-10 | 2028-03-20 | RHD4CZ2C082CCTV1500, RHD4CZ2L102CCTV1500, RHD4CZ2C082CCTV4200, RHD4CZ2L102CCTV4200, RHD4CZ2C082CCTV4100, RHD4CZ2L102CCTV4100, RHD4CZ3C011CCTV2100, RHD4GNCCTVZ4FT2000 SS | physical Testing [4800 h] | T&C | FT | CCTV |
| RHD4GNICTZ2FT1900 |  | Final Testing and Commissioning for ICT Network - FT-Z2-ICT | 30d | 2028-06-04 | 2028-07-08 | RHD4CZ2C082ICT2400, RHD4CZ2L102ICT2400, RHD4CZ2L011ICT2400, RHD4GNICTZ4FT1900 SS | physical Testing [1760 h] | T&C | FT | ICT |
| RHD4GNSTZ2FT1000 |  | Final Testing and Commissioning for Storm Network - FT-Z2-ST | 12d | 2028-06-04 | 2028-06-17 | RHD4CZ2L102ST1406, RHD4CZ2C082ST1400, RHD4CZ2L102ST1400, RHD4CZ2L011ST1400, RHD4CZ2C082ST1401, RHD4CZ2C082ST1402, RHD4CZ2L102ST1402, RHD4CZ2C082ST1403, RHD4CZ2L102ST1403, RHD4CZ2L102ST1404, RHD4CZ2L102ST1405, RHD4CZ2C082ST2400, RHD4CZ2L102ST2400, RHD4CZ2L011ST2400, RHD4CZ2C082ST8400, RHD4CZ2L102ST8400, RHD4CZ2C082ST3400, RHD4CZ2L102ST3400, RHD4CZ2L011ST3400, RHD4CZ2C082ST3401, RHD4CZ2L102ST3401, RHD4CZ2L102ST3402, RHD4CZ2C082ST7400, RHD4CZ2L102ST7400, RHD4CZ2L011ST7400, RHD4CZ2C082ST8500, RHD4CZ2L102ST8500, RHD4CZ2C082ST7500, RHD4CZ2L102ST7500, RHD4CZ2L011ST7500, RHD4CZ2C082ST3500, RHD4CZ2L102ST3500, RHD4CZ2L011ST3500, RHD4CZ2C082ST3501, RHD4CZ2L102ST3501, RHD4CZ2L102ST3502, RHD4CZ2C082ST4600, RHD4CZ2L102ST4600, RHD4GNTCZ1FT1800 | physical Testing [960 h] | T&C | FT | ST |
| RHD4GNTCZ2FT1800 |  | Final Testing and Commissioning for Telecommunications Network - FT-Z2-TC | 30d | 2028-06-04 | 2028-07-08 | RHD4CZ2C082TC2400, RHD4CZ2L102TC2400, RHD4CZ2L011TC2400, RHD4GNTCZ8FT1800, RHD4GNTCZ1FT1800 | physical Testing [2400 h] | T&C | FT | TC |
| RHD4GNIRRZ2FT1300 |  | Final Testing and Commissioning for Irrigation Network - FT-Z2-IRR | 30d | 2028-06-18 | 2028-07-22 | RHD4CZ2C082IRR1404, RHD4CZ2L102IRR1404, RHD4CZ2C082IRR3200, RHD4CZ2L102IRR3200, RHD4GNIRRZ8FT1300 SS | physical Testing [2400 h] | T&C | FT | IRR |
| RHD4GNMVZ2FT1400 |  | Final Testing and Commissioning for Medium Voltage Network - FT-Z2-MV | 30d | 2028-06-18 | 2028-07-22 | RHD4CZ2L102MV4200, RHD4CZ2L102MV3401, RHD4CZ2L102MV3400, RHD4CZ2L102MV3300, RHD4CZ2L011MV3300, RHD4GNMVZ4FT1400 SS | physical Testing [2400 h] | T&C | FT | MV |
| RHD4GNPTZ2FT1200 |  | Final Testing and Commissioning for Potable Water Network - FT-Z2-PT | 30d | 2028-06-18 | 2028-07-22 | RHD4CZ2C082PT4400, RHD4CZ2L102PT4400, RHD4CZ2L011PT4400, RHD4CZ2L102PT1400, RHD4CZ2L102PT1401, RHD4CZ2L011PT1401, RHD4CZ2C082PT1402, RHD4CZ2C082PT4500, RHD4CZ2L102PT4500, RHD4CZ2L011PT4500, RHD4CZ2C082PT3203, RHD4CZ2L102PT3203, RHD4CZ2L011PT3203, RHD4CZ2C082PT3200, RHD4CZ2L102PT3200, RHD4CZ2L011PT3200, RHD4CZ2C082PT3202, RHD4CZ2L102PT3202, RHD4CZ2C082PT4300, RHD4CZ2L102PT4300, RHD4CZ2L011PT4300, RHD4CZ2C082PT4200, RHD4CZ2L102PT4200, RHD4CZ2L011PT4200, RHD4GNPTZ6FT1200 SS | physical Testing [2400 h] | T&C | FT | PT |
| RHD4GNSWZ2FT1100 |  | Final Testing and Commissioning for Sewage Network - FT-Z2-SW | 12d | 2028-07-16 | 2028-07-29 | RHD4CZ2L102SW3500, RHD4CZ2L102SW2400, RHD4CZ2L102SW3400, RHD4GNSWZ3FT1100 SS | physical Testing [960 h] | T&C | FT | SW |
|  | 9219 | **RHD4-02-002-Final Testing and Commissioning - FT-Z3** |  | 2027-12-16 | 2028-11-04 |  |  |  |  |  |
| RHD4GNLVZ3FT1500 |  | Final Testing and Commissioning for Low Voltage Network - FT-Z3-LV | 15d | 2027-12-16 | 2028-01-02 | RHD4CZ3C011LV3400, RHD4CZ3C083LV3400, RHD4CZ3L122LV3400, RHD4CZ3C011LV4300, RHD4CZ3L122LV4300, RHD4GNLVZ2FT1500 SS, RHD4CZ3L122LV5200 | physical Testing [1200 h] | T&C | FT | LV |
| RHD4GNSTZ3FT1000 |  | Final Testing and Commissioning for Storm Network - FT-Z3-ST | 12d | 2028-06-04 | 2028-06-17 | RHD4CZ3L122ST8500, RHD4CZ3C083ST7500, RHD4CZ3L122ST7500, RHD4CZ3C083ST3500, RHD4CZ3L122ST3500, RHD4CZ3L122ST3501, RHD4CZ3L122ST3502, RHD4CZ3C083ST1400, RHD4CZ3L122ST1400, RHD4CZ3L122ST1404, RHD4CZ3C083ST2400, RHD4CZ3L122ST2400, RHD4CZ3L122ST8400, RHD4CZ3C083ST3400, RHD4CZ3L122ST3400, RHD4CZ3L122ST3401, RHD4CZ3L122ST3402, RHD4CZ3C083ST7400, RHD4CZ3L122ST7400, RHD4GNSTZ2FT1000 SS | physical Testing [960 h] | T&C | FT | ST |
| RHD4GNIRRZ3FT1300 |  | Final Testing and Commissioning for Irrigation Network - FT-Z3-IRR | 30d | 2028-06-18 | 2028-07-22 | RHD4CZ3L122IRR1400, RHD4CZ3C083IRR1404, RHD4CZ3L122IRR1404, RHD4CZ3C011IRR3203, RHD4CZ3L122IRR3200, RHD4CZ3L122IRR3202, RHD4GNIRRZ8FT1300 SS | physical Testing [2400 h] | T&C | FT | IRR |
| RHD4GNMVZ3FT1400 |  | Final Testing and Commissioning for Medium Voltage Network - FT-Z3-MV | 30d | 2028-06-18 | 2028-07-22 | RHD4CZ3C011MV4200, RHD4CZ3C011MV3401, RHD4CZ3L122MV3401, RHD4CZ3C011MV3400, RHD4CZ3L122MV3400, RHD4CZ3C011MV3301, RHD4CZ3L122MV3301, RHD4CZ3C011MV3300, RHD4CZ3L122MV3300, RHD4CZ3C011MV5400, RHD4CZ3L122MV5400, RHD4GNMVZ4FT1400 SS | physical Testing [2400 h] | T&C | FT | MV |
| RHD4GNPTZ3FT1200 |  | Final Testing and Commissioning for Potable Water Network - FT-Z3-PT | 30d | 2028-06-18 | 2028-07-22 | RHD4CZ3C011PT3201, RHD4CZ3C011PT3202, RHD4CZ3C011PT3203, RHD4CZ3C011PT4300, RHD4CZ3C011PT4500, RHD4CZ3C011PT1403, RHD4CZ3C083PT1403, RHD4CZ3L122PT1403, RHD4CZ3C011PT1404, RHD4CZ3C011PT4500 FF, RHD4CZ3C083PT4500, RHD4CZ3L122PT4500, RHD4CZ3C011PT3203 FF, RHD4CZ3C083PT3203, RHD4CZ3L122PT3203, RHD4CZ3C011PT3201 FF, RHD4CZ3C011PT3202 FF, RHD4CZ3L122PT3202, RHD4CZ3C011PT4300 FF, RHD4CZ3C083PT4300, RHD4CZ3L122PT4300, RHD4GNPTZ6FT1200 SS | physical Testing [2400 h] | T&C | FT | PT |
| RHD4GNTCZ3FT1800 |  | Final Testing and Commissioning for Telecommunications Network - FT-Z3-TC | 30d | 2028-07-09 | 2028-08-12 | RHD4CZ3C011TC2400, RHD4CZ3C083TC2400, RHD4CZ3L122TC2400, RHD4GNTCZ9FT1800 | physical Testing [2400 h] | T&C | FT | TC |
| RHD4GNSLZ3FT1600 |  | Final Testing and Commissioning for Street Lighting Network - FT-Z3-SL | 30d | 2028-07-13 | 2028-08-16 | RHD4CZ3C011SL3400, RHD4CZ3C083SL3400, RHD4CZ3L122SL3400, RHD4CZ3C011SL1500, RHD4CZ3C083SL1500, RHD4CZ3L122SL1500, RHD4CZ3C011SL6100, RHD4CZ3C083SL6100, RHD4CZ3L122SL6100, RHD4CZ3C011SL4300, RHD4CZ3C083SL4300, RHD4GNICTZ2FT1900, RHD4GNICTZ7FT1900, RHD4GNICTZ8FT1900 | physical Testing [2400 h] | T&C | FT | SL |
| RHD4GNSWZ3FT1100 |  | Final Testing and Commissioning for Sewage Network - FT-Z3-SW | 12d | 2028-07-16 | 2028-07-29 | RHD4GNSWZ9FT1100 | physical Testing [960 h] | T&C | FT | SW |
| RHD4GNCCTVZ3FT2000 |  | Final Testing and Commissioning for Security "CCTV" Network - FT-Z3-CCTV | 30d | 2028-08-26 | 2028-09-30 | RHD4CZ3C083CCTV4100, RHD4CZ3L122CCTV4100, RHD4CZ3C083CCTV1500, RHD4CZ3L122CCTV1500, RHD4CZ3C083CCTV4200, RHD4CZ3L122CCTV4200, RHD4CZ3C083CCTV6100, RHD4CZ3L122CCTV6100, RHD4CZ3C083CCTV1400, RHD4CZ3L122CCTV1400, RHD4GNCCTVZ4FT2000 SS | physical Testing [4800 h] | T&C | FT | CCTV |
| RHD4GNICTZ3FT1900 |  | Final Testing and Commissioning for ICT Network - FT-Z3-ICT | 30d | 2028-10-01 | 2028-11-04 | RHD4CZ3C011ICT2400, RHD4CZ3C083ICT2400, RHD4CZ3L122ICT2400, RHD4GNICTZ4FT1900 SS, RHD4GNCCTVZ3FT2000 | physical Testing [2400 h] | T&C | FT | ICT |
|  | 9220 | **RHD4-02-002-Final Testing and Commissioning - FT-Z4** |  | 2027-10-09 | 2028-07-22 |  |  |  |  |  |
| RHD4GNLVZ4FT1500 |  | Final Testing and Commissioning for Low Voltage Network - FT-Z4-LV | 30d | 2027-10-09 | 2027-11-11 | RHD4CZ4C012LV3400, RHD4CZ4C031LV3400, RHD4CZ4L014LV3400, RHD4CZ4L09LV3400, RHD4CZ4L09LV4300, RHD4GNLVZ2FT1500 SS, RHD4CZ4A013LV5200 | physical Testing [2400 h] | T&C | FT | LV |
| RHD4GNSLZ4FT1600 |  | Final Testing and Commissioning for Street Lighting Network - FT-Z4-SL | 30d | 2027-11-16 | 2027-12-20 | RHD4CZ4A013SL3400, RHD4CZ4C012SL3400, RHD4CZ4C031SL3400, RHD4CZ4L014SL3400, RHD4CZ4L09SL3400, RHD4CZ4RA02SL3400, RHD4CZ4A013SL1500, RHD4CZ4C012SL1500, RHD4CZ4C031SL1500, RHD4CZ4L014SL1500, RHD4CZ4L09SL1500, RHD4CZ4RA02SL1500, RHD4CZ4A013SL6100, RHD4CZ4C031SL6100, RHD4CZ4L014SL6100, RHD4CZ4L09SL6100, RHD4CZ4L014SL5200, RHD4CZ4L09SL5200 | physical Testing [2400 h] | T&C | FT | SL |
| RHD4GNTCZ4FT1800 |  | Final Testing and Commissioning for Telecommunications Network - FT-Z4-TC | 30d | 2027-12-07 | 2028-01-10 | RHD4CZ4A013TC2400, RHD4CZ4C012TC2400, RHD4CZ4C031TC2400, RHD4CZ4L014TC2400, RHD4CZ4L09TC2400, RHD4GNLVZ4FT1500 | physical Testing [2400 h] | T&C | FT | TC |
| RHD4GNCCTVZ4FT2000 |  | Final Testing and Commissioning for Security "CCTV" Network - FT-Z4-CCTV | 30d | 2028-01-02 | 2028-02-05 | RHD4CZ4C031CCTV1500, RHD4CZ4L014CCTV1500, RHD4CZ4C031CCTV4200, RHD4CZ4C031CCTV4100, RHD4CZ4L014CCTV4100, RHD4CZ4RA02CCTV2100 | physical Testing [4800 h] | T&C | FT | CCTV |
| RHD4GNICTZ4FT1900 |  | Final Testing and Commissioning for ICT Network - FT-Z4-ICT | 30d | 2028-06-04 | 2028-07-08 | RHD4CZ4A013ICT2400, RHD4CZ4C012ICT2400, RHD4CZ4C031ICT2400, RHD4CZ4L014ICT2400, RHD4CZ4L09ICT2400, RHD4GNTCZ1FT1800 | physical Testing [2400 h] | T&C | FT | ICT |
| RHD4GNSTZ4FT1000 |  | Final Testing and Commissioning for Storm Network - FT-Z4-ST | 12d | 2028-06-04 | 2028-06-17 | RHD4CZ4A013ST8500, RHD4CZ4L014ST8500, RHD4CZ4A013ST7500, RHD4CZ4C031ST7500, RHD4CZ4L014ST7500, RHD4CZ4L09ST7500, RHD4CZ4C031ST3500, RHD4CZ4L014ST3500, RHD4CZ4L09ST3500, RHD4CZ4A013ST3501, RHD4CZ4C031ST3501, RHD4CZ4L014ST3501, RHD4CZ4L09ST3501, RHD4CZ4A013ST3502, RHD4CZ4L014ST3502, RHD4CZ4A013ST1406, RHD4CZ4L014ST1406, RHD4CZ4A013ST1407, RHD4CZ4L014ST1407, RHD4CZ4A013ST1408, RHD4CZ4C031ST1400, RHD4CZ4L014ST1400, RHD4CZ4L014ST1401, RHD4CZ4L09ST1402, RHD4CZ4A013ST1403, RHD4CZ4L09ST1403, RHD4CZ4L09ST1404, RHD4CZ4A013ST1405, RHD4CZ4C031ST1405, RHD4CZ4L014ST1405, RHD4CZ4L09ST1405, RHD4CZ4A013ST2400, RHD4CZ4C031ST2400, RHD4CZ4L014ST2400, RHD4CZ4L09ST2400, RHD4CZ4A013ST8400, RHD4CZ4L014ST8400, RHD4CZ4C031ST3400, RHD4CZ4L014ST3400, RHD4CZ4L09ST3400, RHD4CZ4A013ST3401, RHD4CZ4C031ST3401, RHD4CZ4L014ST3401, RHD4CZ4L09ST3401, RHD4CZ4A013ST3402, RHD4CZ4L014ST3402, RHD4CZ4A013ST7400, RHD4CZ4C031ST7400, RHD4CZ4L014ST7400, RHD4CZ4L09ST7400, RHD4GNSTZ2FT1000 SS | physical Testing [960 h] | T&C | FT | ST |
| RHD4GNSWZ4FT1100 |  | Final Testing and Commissioning for Sewage Network - FT-Z4-SW | 12d | 2028-06-04 | 2028-06-17 | RHD4CZ4L09SW3500, RHD4CZ4L014SW2400, RHD4CZ4L09SW2400, RHD4CZ4L09SW3400, RHD4GNSTZ1FT1000 SS | physical Testing [960 h] | T&C | FT | SW |
| RHD4GNIRRZ4FT1300 |  | Final Testing and Commissioning for Irrigation Network - FT-Z4-IRR | 30d | 2028-06-18 | 2028-07-22 | RHD4CZ4L014IRR1400, RHD4CZ4L09IRR1400, RHD4CZ4A013IRR1403, RHD4CZ4L014IRR1403, RHD4CZ4L014IRR3200, RHD4CZ4L09IRR3200, RHD4CZ4L09IRR3202, RHD4GNIRRZ8FT1300 SS, RHD4CZ4CH5ST1320 | physical Testing [2400 h] | T&C | FT | IRR |
| RHD4GNMVZ4FT1400 |  | Final Testing and Commissioning for Medium Voltage Network - FT-Z4-MV | 30d | 2028-06-18 | 2028-07-22 | RHD4CZ4L014MV4200, RHD4CZ4L09MV4200, RHD4CZ4L014MV3401, RHD4CZ4L09MV3401, RHD4CZ4L014MV3400, RHD4CZ4L09MV3400, RHD4CZ4L014MV3301, RHD4CZ4L09MV3301, RHD4CZ4A013MV3300, RHD4CZ4C012MV3300, RHD4CZ4C031MV3300, RHD4CZ4L014MV3300, RHD4CZ4L09MV3300, RHD4CZ4L014MV5400, RHD4CZ4L09MV5400, RHD4GNLVZ2FT1500 SS, RHD4GNSTZ4FT1000 | physical Testing [2400 h] | T&C | FT | MV |
| RHD4GNPTZ4FT1200 |  | Final Testing and Commissioning for Potable Water Network - FT-Z4-PT | 30d | 2028-06-18 | 2028-07-22 | RHD4CZ4A013PT4400, RHD4CZ4C031PT4400, RHD4CZ4L014PT4400, RHD4CZ4L09PT4400, RHD4CZ4L014PT1400, RHD4CZ4L09PT1400, RHD4CZ4L014PT1401, RHD4CZ4L09PT1401, RHD4CZ4A013PT1403, RHD4CZ4C031PT1403, RHD4CZ4L09PT1403, RHD4CZ4A013PT4500, RHD4CZ4C031PT4500, RHD4CZ4L014PT4500, RHD4CZ4L09PT4500, RHD4CZ4A013PT3203, RHD4CZ4L014PT3203, RHD4CZ4L09PT3203, RHD4CZ4A013PT3201, RHD4CZ4C031PT3201, RHD4CZ4L014PT3200, RHD4CZ4L09PT3200, RHD4CZ4A013PT3202, RHD4CZ4L014PT3202, RHD4CZ4A013PT4300, RHD4CZ4C031PT4300, RHD4CZ4L014PT4300, RHD4CZ4L09PT4300, RHD4GNPTZ6FT1200 SS | physical Testing [2400 h] | T&C | FT | PT |

| ID | WBS | Activity | Duration | Start | Finish | Predecessors | Resources | RDH4-01-001-Zones-1 | RDH4-01-001-Phases-1 | RDH4-01-001-Networks-1 |
| --- | --- | --- | --- | --- | --- | --- | --- | --- | --- | --- |
|  | 9221 | **RHD4-02-002-Final Testing and Commissioning - FT-Z5** |  | 2027-09-20 | 2028-07-22 |  |  |  |  |  |
| RHD4GNLVZ5FT1500 |  | Final Testing and Commissioning for Low Voltage Network - FT-Z5-LV | 30d | 2027-09-20 | 2027-10-25 | RHD4CZ5C051LV3400, RHD4CZ5C061LV3400, RHD4CZ5L016LV3400, RHD4CZ5L07LV3400, RHD4CZ5L08LV3400, RHD4CZ5RA07LV3400, RHD4CZ5C061LV4300, RHD4CZ5L07LV4300, RHD4CZ5RA07LV4300, RHD4GNLVZ2FT1500 SS | physical Testing [2400 h] | T&C | FT | LV |
| RHD4GNSLZ5FT1600 |  | Final Testing and Commissioning for Street Lighting Network - FT-Z5-SL | 30d | 2027-12-25 | 2028-01-27 | RHD4CZ5A014SL6100, RHD4CZ5C051SL6100, RHD4CZ5C061SL6100, RHD4CZ5L016SL6100, RHD4CZ5L07SL6100, RHD4CZ5RA07SL6100, RHD4CZ5A014SL1500, RHD4CZ5C051SL1500, RHD4CZ5C061SL1500, RHD4CZ5L016SL1500, RHD4CZ5L07SL1500, RHD4CZ5L08SL1500, RHD4CZ5RA07SL1500, RHD4CZ5A014SL3400, RHD4CZ5C051SL3400, RHD4CZ5C061SL3400, RHD4CZ5L016SL3400, RHD4CZ5L07SL3400, RHD4CZ5L08SL3400, RHD4CZ5RA07SL3400, RHD4CZ5L07SL2400 | physical Testing [2400 h] | T&C | FT | SL |
| RHD4GNTCZ5FT1800 |  | Final Testing and Commissioning for Telecommunications Network - FT-Z5-TC | 30d | 2028-03-22 | 2028-04-25 | RHD4CZ5A014TC2400, RHD4CZ5C051TC2400, RHD4CZ5C061TC2400, RHD4CZ5L016TC2400, RHD4CZ5L07TC2400, RHD4CZ5L08TC2400, RHD4CZ5RA07TC2400, RHD4GNTCZ4FT1800, RHD4CZ5C051TC3400, RHD4GNSLZ5FT1600, RHD4GNCCTVZ4FT2000 | physical Testing [2400 h] | T&C | FT | TC |
| RHD4GNICTZ5FT1900 |  | Final Testing and Commissioning for ICT Network - FT-Z5-ICT | 30d | 2028-06-04 | 2028-07-08 | RHD4CZ5A014ICT2400, RHD4CZ5C051ICT2400, RHD4CZ5C061ICT2400, RHD4CZ5L016ICT2400, RHD4CZ5L07ICT2400, RHD4CZ5L08ICT2400, RHD4CZ5RA07ICT2400, RHD4GNICTZ4FT1900 SS, RHD4CZ5C061ICT3400 | physical Testing [2400 h] | T&C | FT | ICT |
| RHD4GNSTZ5FT1000 |  | Final Testing and Commissioning for Storm Network - FT-Z5-ST | 12d | 2028-06-04 | 2028-06-17 | RHD4CZ5A014ST8500, RHD4CZ5L07ST8500, RHD4CZ5A014ST7500, RHD4CZ5C051ST7500, RHD4CZ5C061ST7500, RHD4CZ5L016ST7500, RHD4CZ5L07ST7500, RHD4CZ5L08ST7500, RHD4CZ5A014ST3500, RHD4CZ5C051ST3500, RHD4CZ5L016ST3500, RHD4CZ5L07ST3500, RHD4CZ5L08ST3500, RHD4CZ5A014ST3501, RHD4CZ5C051ST3501, RHD4CZ5C061ST3501, RHD4CZ5L016ST3501, RHD4CZ5L07ST3501, RHD4CZ5A014ST3502, RHD4CZ5L016ST3502, RHD4CZ5L07ST3502, RHD4CZ5L08ST3502, RHD4CZ5L07ST1406, RHD4CZ5L07ST1407, RHD4CZ5L07ST1408, RHD4CZ5A014ST1411, RHD4CZ5A014ST1400, RHD4CZ5L08ST1400, RHD4CZ5A014ST1401, RHD4CZ5L07ST1401, RHD4CZ5L08ST1401, RHD4CZ5A014ST1402, RHD4CZ5C051ST1402, RHD4CZ5L07ST1402, RHD4CZ5A014ST1403, RHD4CZ5C051ST1403, RHD4CZ5L016ST1403, RHD4CZ5L07ST1403, RHD4CZ5C061ST1404, RHD4CZ5A014ST9400, RHD4CZ5A014ST2400, RHD4CZ5C051ST2400, RHD4CZ5C061ST2400, RHD4CZ5L016ST2400, RHD4CZ5L07ST2400, RHD4CZ5L08ST2400, RHD4CZ5A014ST2401, RHD4CZ5L07ST2401, RHD4CZ5A014ST8400, RHD4CZ5L07ST8400, RHD4CZ5A014ST3400, RHD4CZ5C051ST3400, RHD4CZ5L016ST3400, RHD4CZ5L07ST3400, RHD4CZ5L08ST3400, RHD4CZ5A014ST3401, RHD4CZ5C051ST3401, RHD4CZ5C061ST3401, RHD4CZ5L016ST3401, RHD4CZ5L07ST3401, RHD4CZ5A014ST3402, RHD4CZ5L016ST3402, RHD4CZ5L07ST3402, RHD4CZ5L08ST3402, RHD4CZ5A014ST7400, RHD4CZ5C051ST7400, RHD4CZ5C061ST7400, RHD4CZ5L016ST7400, RHD4CZ5L07ST7400, RHD4CZ5L08ST7400, RHD4CZ5L08ST4500, RHD4CZ5L08ST4600, RHD4GNSTZ2FT1000 SS, RHD4CTUN1Z5STG21380, RHD4CTUN1Z5STG21900, RHD4CTUN1Z5STG21170 | physical Testing [960 h] | T&C | FT | ST |
| RHD4GNCCTVZ5FT2000 |  | Final Testing and Commissioning for Security "CCTV" Network - FT-Z5-CCTV | 30d | 2028-06-15 | 2028-07-19 | RHD4CZ5C061CCTV1500, RHD4CZ5L016CCTV1500, RHD4CZ5L07CCTV1500, RHD4CZ5RA07CCTV1500, RHD4CZ5C061CCTV4200, RHD4CZ5L016CCTV4200, RHD4CZ5L07CCTV4200, RHD4CZ5RA07CCTV4200, RHD4CZ5C061CCTV4100, RHD4CZ5L016CCTV4100, RHD4CZ5L07CCTV4100, RHD4CZ5RA07CCTV4100, RHD4CZ5C051CCTV2100, RHD4CZ5RA07CCTV6100, RHD4CZ5C061CCTV6100, RHD4GNCCTVZ4FT2000 SS, RHD4CZ5L07CCTV6100, RHD4CZ1C081DM2000 | physical Testing [4800 h] | T&C | FT | CCTV |
| RHD4GNIRRZ5FT1300 |  | Final Testing and Commissioning for Irrigation Network - FT-Z5-IRR | 30d | 2028-06-18 | 2028-07-22 | RHD4CZ5C051IRR1400, RHD4CZ5L07IRR1400, RHD4CZ5L08IRR1400, RHD4CZ5C061IRR1402, RHD4CZ5L016IRR1402, RHD4CZ5L08IRR1402, RHD4CZ5RA07IRR1402, RHD4CZ5A014IRR1403, RHD4CZ5L016IRR1404, RHD4CZ5C051IRR3203, RHD4CZ5C051IRR3200, RHD4CZ5L07IRR3200, RHD4CZ5L08IRR3200, RHD4CZ5RA07IRR3200, RHD4CZ5C051IRR3202, RHD4CZ5L07IRR3202, RHD4CZ5RA07IRR3202, RHD4GNIRRZ8FT1300 SS | physical Testing [2400 h] | T&C | FT | IRR |
| RHD4GNMVZ5FT1400 |  | Final Testing and Commissioning for Medium Voltage Network - FT-Z5-MV | 30d | 2028-06-18 | 2028-07-22 | RHD4CZ5C061MV5400, RHD4CZ5RA07MV5400, RHD4CZ5A014MV4200, RHD4CZ5L08MV4200, RHD4CZ5A014MV3401, RHD4CZ5C061MV3401, RHD4CZ5L08MV3401, RHD4CZ5RA07MV3401, RHD4CZ5A014MV3400, RHD4CZ5C061MV3400, RHD4CZ5L08MV3400, RHD4CZ5RA07MV3400, RHD4CZ5C061MV3301, RHD4CZ5RA07MV3301, RHD4CZ5A014MV3300, RHD4CZ5C051MV3300, RHD4CZ5C061MV3300, RHD4CZ5L016MV3300, RHD4CZ5L07MV3300, RHD4CZ5L08MV3300, RHD4CZ5RA07MV3300, RHD4GNMVZ4FT1400 SS, RHD4CZ5L016MV3401 | physical Testing [2400 h] | T&C | FT | MV |
| RHD4GNPTZ5FT1200 |  | Final Testing and Commissioning for Potable Water Network - FT-Z5-PT | 30d | 2028-06-18 | 2028-07-22 | RHD4CZ5A014PT4400, RHD4CZ5L016PT4400, RHD4CZ5L07PT4400, RHD4CZ5L08PT4400, RHD4CZ5C051PT1400, RHD4CZ5L016PT1400, RHD4CZ5L08PT1400, RHD4CZ5C051PT1401, RHD4CZ5C061PT1401, RHD4CZ5L016PT1401, RHD4CZ5L07PT1401, RHD4CZ5L08PT1401, RHD4CZ5RA07PT1401, RHD4CZ5A014PT1402, RHD4CZ5L016PT1402, RHD4CZ5L07PT1403, RHD4CZ5A014PT4500, RHD4CZ5L016PT4500, RHD4CZ5L07PT4500, RHD4CZ5L08PT4500, RHD4CZ5A014PT3203, RHD4CZ5L07PT3203, RHD4CZ5L08PT3203, RHD4CZ5L07PT3201, RHD4CZ5C051PT3200, RHD4CZ5C061PT3200, RHD4CZ5L016PT3200, RHD4CZ5L07PT3200, RHD4CZ5L08PT3200, RHD4CZ5RA07PT3200, RHD4CZ5A014PT3202, RHD4CZ5C061PT3202, RHD4CZ5L016PT3202, RHD4CZ5L07PT3202, RHD4CZ5RA07PT3202, RHD4CZ5A014PT4300, RHD4CZ5L016PT4300, RHD4CZ5L07PT4300, RHD4CZ5L08PT4300, RHD4CZ5A014PT4200, RHD4CZ5L016PT4200, RHD4CZ5L07PT4200, RHD4CZ5L08PT4200, RHD4GNPTZ6FT1200 SS | physical Testing [2400 h] | T&C | FT | PT |
| RHD4GNSWZ5FT1100 |  | Final Testing and Commissioning for Sewage Network - FT-Z5-SW | 12d | 2028-06-18 | 2028-07-01 | RHD4CZ5C061SW3500, RHD4CZ5C061SW3501, RHD4CZ5L016SW3500, RHD4CZ5L07SW3500, RHD4CZ5L08SW3500, RHD4CZ5RA07SW3500, RHD4CZ5C061SW1400, RHD4CZ5L016SW1400, RHD4CZ5L08SW1400, RHD4CZ5C061SW1401, RHD4CZ5L08SW2900, RHD4CZ5A014SW2400, RHD4CZ5C051SW2400, RHD4CZ5C061SW2400, RHD4CZ5L016SW2400, RHD4CZ5L07SW2400, RHD4CZ5L08SW2400, RHD4CZ5RA07SW2400, RHD4CZ5C061SW3400, RHD4CZ5C061SW3401, RHD4CZ5L016SW3400, RHD4CZ5L07SW3400, RHD4CZ5L08SW3400, RHD4CZ5RA07SW3400, RHD4GNSWZ4FT1100, RHD4CZ5L08SW6100 | physical Testing [960 h] | T&C | FT | SW |
|  | 9222 | **RHD4-02-002-Final Testing and Commissioning - FT-Z6** |  | 2027-10-02 | 2028-07-22 |  |  |  |  |  |
| RHD4GNLVZ6FT1500 |  | Final Testing and Commissioning for Low Voltage Network - FT-Z6-LV | 30d | 2027-10-02 | 2027-11-04 | RHD4CZ6A015LV3400, RHD4CZ6A02LV3400, RHD4CZ6C052LV3400, RHD4CZ6C062LV3400, RHD4GNLVZ2FT1500 SS | physical Testing [2400 h] | T&C | FT | LV |
| RHD4GNSLZ6FT1600 |  | Final Testing and Commissioning for Street Lighting Network - FT-Z6-SL | 30d | 2027-10-30 | 2027-12-02 | RHD4CZ6A015SL6100, RHD4CZ6A02SL6100, RHD4CZ6C052SL6100, RHD4CZ6C062SL6100, RHD4CZ6A015SL3400, RHD4CZ6A02SL3400, RHD4CZ6C052SL3400, RHD4CZ6C062SL3400, RHD4CZ6RA01SL3400, RHD4CZ6C062SL1500, RHD4CZ6A015SL1500, RHD4CZ6C052SL1500, RHD4CZ6A02SL1500, RHD4CZ6RA01SL1500 | physical Testing [2400 h] | T&C | FT | SL |
| RHD4GNTCZ6FT1800 |  | Final Testing and Commissioning for Telecommunications Network - FT-Z6-TC | 30d | 2027-11-23 | 2027-12-27 | RHD4CZ6A015TC2400, RHD4CZ6A02TC2400, RHD4CZ6C052TC2400, RHD4CZ6C062TC2400, RHD4CZ6RA01TC2400, RHD4GNLVZ6FT1500 | physical Testing [2400 h] | T&C | FT | TC |
| RHD4GNCCTVZ6FT2000 |  | Final Testing and Commissioning for Security "CCTV" Network - FT-Z6-CCTV | 30d | 2028-01-01 | 2028-02-03 | RHD4CZ6RA01CCTV4100, RHD4CZ6RA01CCTV1500, RHD4CZ6RA01CCTV4200, RHD4CZ6RA01CCTV5200, RHD4CZ6A015CCTV6100, RHD4CZ6A02CCTV6100 | physical Testing [4800 h] | T&C | FT | CCTV |
| RHD4GNICTZ6FT1900 |  | Final Testing and Commissioning for ICT Network - FT-Z6-ICT | 30d | 2028-06-04 | 2028-07-08 | RHD4CZ6A015ICT2400, RHD4CZ6A02ICT2400, RHD4CZ6C052ICT2400, RHD4CZ6C062ICT2400, RHD4GNICTZ4FT1900 SS | physical Testing [2400 h] | T&C | FT | ICT |
| RHD4GNSTZ6FT1000 |  | Final Testing and Commissioning for Storm Network - FT-Z6-ST | 12d | 2028-06-04 | 2028-06-17 | RHD4CZ6A015ST1400, RHD4CZ6A02ST1400, RHD4CZ6C052ST1400, RHD4CZ6C062ST1400, RHD4CZ6A015ST1401, RHD4CZ6A02ST1401, RHD4CZ6C052ST1401, RHD4CZ6C062ST1401, RHD4CZ6A015ST1402, RHD4CZ6C052ST1402, RHD4CZ6C062ST1402, RHD4CZ6A015ST1403, RHD4CZ6C062ST1403, RHD4CZ6C062ST1404, RHD4CZ6A015ST2400, RHD4CZ6A02ST2400, RHD4CZ6C052ST2400, RHD4CZ6C062ST2400, RHD4CZ6C052ST2401, RHD4CZ6C062ST2401, RHD4CZ6C052ST8400, RHD4CZ6C062ST8400, RHD4CZ6A015ST3400, RHD4CZ6A02ST3400, RHD4CZ6C052ST3400, RHD4CZ6C062ST3400, RHD4CZ6A015ST3401, RHD4CZ6C052ST3401, RHD4CZ6C062ST3401, RHD4CZ6A015ST7400, RHD4CZ6A02ST7400, RHD4CZ6C052ST7400, RHD4CZ6C062ST7400, RHD4CZ6C062ST3501, RHD4CZ6C062ST3500, RHD4CZ6C062ST7500, RHD4CZ6C062ST8500, RHD4CZ6A015ST3501, RHD4CZ6A015ST3500, RHD4CZ6C052ST3501, RHD4CZ6C052ST3500, RHD4CZ6C052ST7500, RHD4CZ6C052ST8500, RHD4CZ6A02ST7500, RHD4CZ6A02ST3500, RHD4CZ6A015ST7500, RHD4GNSTZ2FT1000 SS, RHD4CZ6A02ST1500, RHD4CZ6CH6ST1130 | physical Testing [960 h] | T&C | FT | ST |
| RHD4GNIRRZ6FT1300 |  | Final Testing and Commissioning for Irrigation Network - FT-Z6-IRR | 30d | 2028-06-18 | 2028-07-22 | RHD4CZ6A015IRR1400, RHD4CZ6C052IRR1400, RHD4CZ6C062IRR1400, RHD4CZ6A015IRR3203, RHD4CZ6C062IRR3203, RHD4CZ6A015IRR3200, RHD4CZ6C052IRR3200, RHD4CZ6A015IRR3202, RHD4GNIRRZ8FT1300 SS | physical Testing [2400 h] | T&C | FT | IRR |
| RHD4GNMVZ6FT1400 |  | Final Testing and Commissioning for Medium Voltage Network - FT-Z6-MV | 30d | 2028-06-18 | 2028-07-22 | RHD4CZ6C052MV4200, RHD4CZ6C052MV3401, RHD4CZ6C062MV3401, RHD4CZ6C052MV3400, RHD4CZ6C062MV3400, RHD4CZ6C052MV3300, RHD4CZ6C062MV3300, RHD4GNMVZ4FT1400 SS | physical Testing [2400 h] | T&C | FT | MV |
| RHD4GNPTZ6FT1200 |  | Final Testing and Commissioning for Potable Water Network - FT-Z6-PT | 18d | 2028-06-18 | 2028-07-08 | RHD4CZ6A015PT4400, RHD4CZ6C052PT4400, RHD4CZ6C062PT4400, RHD4CZ6C052PT1400, RHD4CZ6C062PT1400, RHD4CZ6C052PT1401, RHD4CZ6C062PT1401, RHD4CZ6A015PT1402, RHD4CZ6A015PT4500, RHD4CZ6C052PT4500, RHD4CZ6C062PT4500, RHD4CZ6A015PT3200, RHD4CZ6C052PT3200, RHD4CZ6C062PT3200, RHD4CZ6A015PT3202, RHD4CZ6C052PT3202, RHD4CZ6A015PT4300, RHD4CZ6C052PT4300, RHD4CZ6C062PT4300, RHD4GNSWZ4FT1100 | physical Testing [1440 h] | T&C | FT | PT |
| RHD4GNSWZ6FT1100 |  | Final Testing and Commissioning for Sewage Network - FT-Z6-SW | 12d | 2028-06-18 | 2028-07-01 | RHD4CZ6C052SW3500, RHD4CZ6C062SW3500, RHD4CZ6C052SW2400, RHD4CZ6C062SW2400, RHD4CZ6C052SW3400, RHD4CZ6C062SW3400, RHD4GNSWZ5FT1100 SS | physical Testing [960 h] | T&C | FT | SW |
|  | 9223 | **RHD4-02-002-Final Testing and Commissioning - FT-Z7** |  | 2027-12-08 | 2028-07-22 |  |  |  |  |  |
| RHD4GNLVZ7FT1500 |  | Final Testing and Commissioning for Low Voltage Network - FT-Z7-LV | 30d | 2027-12-08 | 2028-01-11 | RHD4CZ7A012LV3400, RHD4CZ7C02LV3400, RHD4CZ7C032LV3400, RHD4CZ7L131LV3400, RHD4CZ7L03LV3400, RHD4CZ7RA03LV3400, RHD4CZ7L03LV4300, RHD4CZ7RA03LV4300, RHD4GNLVZ2FT1500 SS | physical Testing [2400 h] | T&C | FT | LV |
| RHD4GNSLZ7FT1600 |  | Final Testing and Commissioning for Street Lighting Network - FT-Z7-SL | 30d | 2028-01-12 | 2028-02-15 | RHD4CZ7A012SL1500, RHD4CZ7C013SL1500, RHD4CZ7C02SL1500, RHD4CZ7C032SL1500, RHD4CZ7L131SL1500, RHD4CZ7L015SL1500, RHD4CZ7L03SL1500, RHD4CZ7RA03SL1500, RHD4CZ7RA05SL1500, RHD4CZ7A012SL3400, RHD4CZ7C013SL3400, RHD4CZ7C02SL3400, RHD4CZ7C032SL3400, RHD4CZ7L131SL3400, RHD4CZ7L015SL3400, RHD4CZ7L03SL3400, RHD4CZ7RA03SL3400, RHD4CZ7RA05SL3400 | physical Testing [1760 h] | T&C | FT | SL |
| RHD4GNTCZ7FT1800 |  | Final Testing and Commissioning for Telecommunications Network - FT-Z7-TC | 30d | 2028-04-26 | 2028-06-03 | RHD4CZ7A012TC2400, RHD4CZ7C013TC2400, RHD4CZ7C02TC2400, RHD4CZ7C032TC2400, RHD4CZ7L131TC2400, RHD4CZ7L015TC2400, RHD4CZ7L03TC2400, RHD4CZ7A012TC3400, RHD4CZ7C02TC3400, RHD4CZ7C032TC3400, RHD4CZ7L131TC3400, RHD4CZ7L015TC3400, RHD4CZ7L03TC3400, RHD4GNTCZ5FT1800 | physical Testing [2400 h] | T&C | FT | TC |
| RHD4GNCCTVZ7FT2000 |  | Final Testing and Commissioning for Security "CCTV" Network - FT-Z7-CCTV | 30d | 2028-04-30 | 2028-06-06 | RHD4CZ7C032CCTV1500, RHD4CZ7L03CCTV1500, RHD4CZ7RA03CCTV1500, RHD4CZ7C02CCTV4200, RHD4CZ7C032CCTV4200, RHD4CZ7L03CCTV4200, RHD4CZ7RA03CCTV4200, RHD4CZ7L131CCTV2100, RHD4CZ7L015CCTV2100, RHD4GNCCTVZ4FT2000 SS, RHD4CZ7C02CCTV1400 | physical Testing [4800 h] | T&C | FT | CCTV |
| RHD4GNICTZ7FT1900 |  | Final Testing and Commissioning for ICT Network - FT-Z7-ICT | 30d | 2028-06-04 | 2028-07-08 | RHD4CZ7A012ICT2400, RHD4CZ7C013ICT2400, RHD4CZ7C02ICT2400, RHD4CZ7C032ICT2400, RHD4CZ7L131ICT2400, RHD4CZ7L015ICT2400, RHD4CZ7L03ICT2400, RHD4CZ7RA03ICT2400, RHD4CZ7RA05ICT2400, RHD4GNICTZ4FT1900 SS | physical Testing [2400 h] | T&C | FT | ICT |
| RHD4GNSTZ7FT1000 |  | Final Testing and Commissioning for Storm Network - FT-Z7-ST | 12d | 2028-06-04 | 2028-06-17 | RHD4CZ7A012ST8500, RHD4CZ7C02ST8500, RHD4CZ7A012ST7500, RHD4CZ7C02ST7500, RHD4CZ7L131ST7500, RHD4CZ7L015ST7500, RHD4CZ7L03ST7500, RHD4CZ7C02ST3500, RHD4CZ7L015ST3500, RHD4CZ7C02ST3501, RHD4CZ7L131ST3501, RHD4CZ7L015ST3501, RHD4CZ7C02ST3502, RHD4CZ7L03ST3502, RHD4CZ7C02ST1408, RHD4CZ7C02ST1409, RHD4CZ7C02ST1400, RHD4CZ7C02ST1401, RHD4CZ7L131ST1403, RHD4CZ7L015ST1403, RHD4CZ7L131ST1404, RHD4CZ7L015ST1404, RHD4CZ7L131ST1405, RHD4CZ7A012ST2400, RHD4CZ7C02ST2400, RHD4CZ7L131ST2400, RHD4CZ7L015ST2400, RHD4CZ7L03ST2400, RHD4CZ7A012ST8400, RHD4CZ7C02ST8400, RHD4CZ7C02ST3400, RHD4CZ7L015ST3400, RHD4CZ7C02ST3401, RHD4CZ7L131ST3401, RHD4CZ7L015ST3401, RHD4CZ7C02ST3402, RHD4CZ7L03ST3402, RHD4CZ7A012ST7400, RHD4CZ7C02ST7400, RHD4CZ7L131ST7400, RHD4CZ7L015ST7400, RHD4CZ7L03ST7400, RHD4GNSTZ2FT1000 SS | physical Testing [960 h] | T&C | FT | ST |
| RHD4GNIRRZ7FT1300 |  | Final Testing and Commissioning for Irrigation Network - FT-Z7-IRR | 30d | 2028-06-18 | 2028-07-22 | RHD4CZ7C02IRR1400, RHD4CZ7L131IRR1400, RHD4CZ7L015IRR1400, RHD4CZ7L03IRR1400, RHD4CZ7A012IRR1403, RHD4CZ7C013IRR1404, RHD4CZ7C02IRR1404, RHD4CZ7L03IRR1404, RHD4CZ7L131IRR3203, RHD4CZ7L015IRR3203, RHD4CZ7L03IRR3203, RHD4CZ7C02IRR3201, RHD4CZ7L03IRR3201, RHD4CZ7C02IRR3200, RHD4CZ7L131IRR3200, RHD4CZ7L015IRR3200, RHD4CZ7L03IRR3200, RHD4CZ7L015IRR3202, RHD4GNIRRZ8FT1300 SS | physical Testing [2400 h] | T&C | FT | IRR |
| RHD4GNMVZ7FT1400 |  | Final Testing and Commissioning for Medium Voltage Network - FT-Z7-MV | 30d | 2028-06-18 | 2028-07-22 | RHD4CZ7L03MV4200, RHD4CZ7C02MV3401, RHD4CZ7L131MV3401, RHD4CZ7L03MV3401, RHD4CZ7C02MV3400, RHD4CZ7L131MV3400, RHD4CZ7L03MV3400, RHD4CZ7L03MV3301, RHD4CZ7RA03MV3301, RHD4CZ7A012MV3300, RHD4CZ7C013MV3300, RHD4CZ7C02MV3300, RHD4CZ7C032MV3300, RHD4CZ7L131MV3300, RHD4CZ7L015MV3300, RHD4CZ7L03MV3300, RHD4GNMVZ4FT1400 SS | physical Testing [2400 h] | T&C | FT | MV |
| RHD4GNPTZ7FT1200 |  | Final Testing and Commissioning for Potable Water Network - FT-Z7-PT | 30d | 2028-06-18 | 2028-07-22 | RHD4CZ7A012PT4400, RHD4CZ7C032PT4400, RHD4CZ7L131PT4400, RHD4CZ7L015PT4400, RHD4CZ7L03PT4400, RHD4CZ7L131PT1400, RHD4CZ7L015PT1400, RHD4CZ7L03PT1400, RHD4CZ7C02PT1401, RHD4CZ7C032PT1401, RHD4CZ7L131PT1401, RHD4CZ7L015PT1401, RHD4CZ7L03PT1401, RHD4CZ7C032PT1402, RHD4CZ7A012PT1403, RHD4CZ7A012PT4500, RHD4CZ7C032PT4500, RHD4CZ7L131PT4500, RHD4CZ7L015PT4500, RHD4CZ7L03PT4500, RHD4CZ7C02PT3203, RHD4CZ7L131PT3203, RHD4CZ7A012PT3201, RHD4CZ7C02PT3200, RHD4CZ7C032PT3200, RHD4CZ7L131PT3200, RHD4CZ7L015PT3200, RHD4CZ7C02PT3202, RHD4CZ7C032PT3202, RHD4CZ7L015PT3202, RHD4CZ7L03PT3202, RHD4CZ7A012PT4300, RHD4CZ7C032PT4300, RHD4CZ7L131PT4300, RHD4CZ7L015PT4300, RHD4CZ7L03PT4300, RHD4GNPTZ6FT1200 SS | physical Testing [2400 h] | T&C | FT | PT |
| RHD4GNSWZ7FT1100 |  | Final Testing and Commissioning for Sewage Network - FT-Z7-SW | 12d | 2028-07-02 | 2028-07-15 | RHD4CZ7L03SW1400, RHD4CZ7L03SW1401, RHD4CZ7L015SW2400, RHD4CZ7L03SW2400, RHD4CZ7L015SW3400, RHD4CZ7L03SW3400, RHD4CZ7L015SW3500, RHD4CZ7L03SW3500, RHD4GNSWZ6FT1100 | physical Testing [960 h] | T&C | FT | SW |

| ID | WBS | Activity | Duration | Start | Finish | Predecessors | Resources | RDH4-01-001-Zones-1 | RDH4-01-001-Phases-1 | RDH4-01-001-Networks-1 |
| --- | --- | --- | --- | --- | --- | --- | --- | --- | --- | --- |
|  | 9224 | **RHD4-02-002-Final Testing and Commissioning - FT-Z8** |  | 2027-09-14 | 2028-07-22 |  |  |  |  |  |
| RHD4GNLVZ8FT1500 |  | Final Testing and Commissioning for Low Voltage Network - FT-Z8-LV | 30d | 2027-09-14 | 2027-10-19 | RHD4CZ8A011LV3400, RHD4CZ8C014LV3400, RHD4CZ4L01LV3400, RHD4CZ8RA04LV3400, RHD4CZ8A011LV4300, RHD4CZ8C014LV4300, RHD4CZ8RA04LV4300, RHD4GNLVZ2FT1500 SS | physical Testing [2400 h] | T&C | FT | LV |
| RHD4GNSLZ8FT1600 |  | Final Testing and Commissioning for Street Lighting Network - FT-Z8-SL | 30d | 2027-10-30 | 2027-12-02 | RHD4CZ8A011SL1500, RHD4CZ8C014SL1500, RHD4CZ4L01SL1500, RHD4CZ8L04SL1500, RHD4CZ8RA04SL1500, RHD4CZ8A011SL3400, RHD4CZ8C014SL3400, RHD4CZ4L01SL3400, RHD4CZ8L04SL3400, RHD4CZ8RA04SL3400 | physical Testing [2400 h] | T&C | FT | SL |
| RHD4GNCCTVZ8FT2000 |  | Final Testing and Commissioning for Security "CCTV" Network - FT-Z8-CCTV | 30d | 2028-03-02 | 2028-04-05 | RHD4CZ8A011CCTV2100, RHD4CZ4L01CCTV2100, RHD4CZ8L04CCTV2100, RHD4CZ8RA04CCTV2100, RHD4CZ8A011CCTV1500, RHD4CZ8L04CCTV1500, RHD4CZ8RA04CCTV1500 | physical Testing [4800 h] | T&C | FT | CCTV |
| RHD4GNTCZ8FT1800 |  | Final Testing and Commissioning for Telecommunications Network - FT-Z8-TC | 30d | 2028-04-26 | 2028-06-03 | RHD4CZ8A011TC2400, RHD4CZ8C014TC2400, RHD4CZ4L01TC2400, RHD4CZ8L04TC2400, RHD4GNTCZ5FT1800 | physical Testing [2400 h] | T&C | FT | TC |
| RHD4GNICTZ8FT1900 |  | Final Testing and Commissioning for ICT Network - FT-Z8-ICT | 30d | 2028-06-04 | 2028-07-08 | RHD4CZ8A011ICT2400, RHD4CZ8C014ICT2400, RHD4CZ4L01ICT2400, RHD4CZ8L04ICT2400, RHD4CZ8RA04ICT2400, RHD4GNICTZ4FT1900 SS | physical Testing [2400 h] | T&C | FT | ICT |
| RHD4GNSTZ8FT1000 |  | Final Testing and Commissioning for Storm Network - FT-Z8-ST | 12d | 2028-06-04 | 2028-06-17 | RHD4CZ8A011ST7500, RHD4CZ8L04ST7500, RHD4CZ8A011ST3500, RHD4CZ8A011ST3501, RHD4CZ8L04ST3501, RHD4CZ8L04ST3502, RHD4CZ8A011ST1400, RHD4CZ8A011ST1401, RHD4CZ8A011ST1402, RHD4CZ8A011ST1403, RHD4CZ8A011ST1404, RHD4CZ8L04ST1404, RHD4CZ8L04ST1405, RHD4CZ8A011ST2400, RHD4CZ8L04ST2400, RHD4CZ8A011ST3400, RHD4CZ8A011ST3401, RHD4CZ8L04ST3401, RHD4CZ8L04ST3402, RHD4CZ8A011ST7400, RHD4CZ8L04ST7400, RHD4GNSTZ2FT1000 SS | physical Testing [960 h] | T&C | FT | ST |
| RHD4GNIRRZ8FT1300 |  | Final Testing and Commissioning for Irrigation Network - FT-Z8-IRR | 30d | 2028-06-18 | 2028-07-22 | RHD4CZ8L04IRR1400, RHD4CZ8L04IRR3200, RHD4GNPTZ6FT1200 SS | physical Testing [2400 h] | T&C | FT | IRR |
| RHD4GNMVZ8FT1400 |  | Final Testing and Commissioning for Medium Voltage Network - FT-Z8-MV | 30d | 2028-06-18 | 2028-07-22 | RHD4CZ8A011MV3401, RHD4CZ8C014MV3401, RHD4CZ8RA04MV3401, RHD4CZ8A011MV3400, RHD4CZ8C014MV3400, RHD4CZ8RA04MV3400, RHD4CZ8A011MV3301, RHD4CZ8C014MV3301, RHD4CZ8RA04MV3301, RHD4CZ8A011MV3300, RHD4CZ8C014MV3300, RHD4CZ4L01MV3300, RHD4CZ8L04MV3300, RHD4CZ8A011MV5400, RHD4CZ8C014MV5400, RHD4CZ8RA04MV5400, RHD4GNMVZ4FT1400 SS | physical Testing [2400 h] | T&C | FT | MV |
| RHD4GNPTZ8FT1200 |  | Final Testing and Commissioning for Potable Water Network - FT-Z8-PT | 30d | 2028-06-18 | 2028-07-22 | RHD4CZ8L04PT1400, RHD4CZ4L01PT1401, RHD4CZ8L04PT1401, RHD4CZ8A011PT1403, RHD4CZ8A011PT4500, RHD4CZ4L01PT4500, RHD4CZ8L04PT4500, RHD4CZ8A011PT3201, RHD4CZ4L01PT3200, RHD4CZ8L04PT3200, RHD4CZ8A011PT3202, RHD4CZ8A011PT4300, RHD4CZ4L01PT4300, RHD4CZ8L04PT4300, RHD4GNPTZ6FT1200 SS | physical Testing [2400 h] | T&C | FT | PT |
| RHD4GNSWZ8FT1100 |  | Final Testing and Commissioning for Sewage Network - FT-Z8-SW | 12d | 2028-07-02 | 2028-07-15 | RHD4GNSWZ7FT1100 SS | physical Testing [960 h] | T&C | FT | SW |
|  | 9225 | **RHD4-02-002-Final Testing and Commissioning - FT-Z9** |  | 2027-12-26 | 2028-08-21 |  |  |  |  |  |
| RHD4GNLVZ9FT1500 |  | Final Testing and Commissioning for Low Voltage Network - FT-Z9-LV | 30d | 2027-12-26 | 2028-01-29 | RHD4CZ9C071LV3400, RHD4CZ9L02LV3400, RHD4CZ9L05LV3400, RHD4CZ9L06LV3400, RHD4CZ9C071SL1500, RHD4CZ9L02SL1500, RHD4CZ9L05SL1500, RHD4CZ9L06SL1500, RHD4GNLVZ2FT1500 SS | physical Testing [2400 h] | T&C | FT | LV |
| RHD4GNSLZ9FT1600 |  | Final Testing and Commissioning for Street Lighting Network - FT-Z9-SL | 30d | 2027-12-28 | 2028-01-31 | RHD4CZ9C071SL1500, RHD4CZ9L02SL1500, RHD4CZ9L05SL1500, RHD4CZ9L06SL1500, RHD4CZ9C071SL6100, RHD4CZ9L02SL6100, RHD4CZ9L05SL6100, RHD4CZ9L06SL6100, RHD4CZ9L02SL4300 | physical Testing [2400 h] | T&C | FT | SL |
| RHD4GNTCZ9FT1800 |  | Final Testing and Commissioning for Telecommunications Network - FT-Z9-TC | 30d | 2028-03-11 | 2028-04-13 | RHD4CZ9C071TC2400, RHD4CZ9L02TC2400, RHD4CZ9L05TC2400, RHD4CZ9L06TC2400, RHD4GNTCZ6FT1800 | physical Testing [2400 h] | T&C | FT | TC |
| RHD4GNSTZ9FT1000 |  | Final Testing and Commissioning for Storm Network - FT-Z9-ST | 12d | 2028-06-04 | 2028-06-17 | RHD4CZ9C071ST7500, RHD4CZ9L02ST7500, RHD4CZ9L05ST7500, RHD4CZ9L06ST7500, RHD4CZ9C071ST3500, RHD4CZ9L02ST3500, RHD4CZ9L05ST3500, RHD4CZ9L06ST3500, RHD4CZ9C071ST3501, RHD4CZ9L02ST3501, RHD4CZ9L06ST3501, RHD4CZ9C071ST3502, RHD4CZ9L02ST3502, RHD4CZ9L06ST3502, RHD4CZ9C071ST1406, RHD4CZ9L02ST1406, RHD4CZ9L06ST1406, RHD4CZ9C071ST1407, RHD4CZ9L02ST1407, RHD4CZ9L02ST1408, RHD4CZ9C071ST1400, RHD4CZ9L06ST1400, RHD4CZ9C071ST1401, RHD4CZ9L02ST1401, RHD4CZ9L05ST1401, RHD4CZ9C071ST1402, RHD4CZ9L02ST1402, RHD4CZ9L05ST1402, RHD4CZ9L06ST1403, RHD4CZ9L02ST1404, RHD4CZ9L06ST1404, RHD4CZ9C071ST1405, RHD4CZ9L02ST1405, RHD4CZ9L06ST1405, RHD4CZ9C071ST2400, RHD4CZ9L02ST2400, RHD4CZ9L05ST2400, RHD4CZ9L06ST2400, RHD4CZ9C071ST3400, RHD4CZ9L02ST3400, RHD4CZ9L05ST3400, RHD4CZ9L06ST3400, RHD4CZ9C071ST3401, RHD4CZ9L02ST3401, RHD4CZ9L06ST3401, RHD4CZ9C071ST3402, RHD4CZ9L02ST3402, RHD4CZ9L06ST3402, RHD4CZ9C071ST7400, RHD4CZ9L02ST7400, RHD4CZ9L05ST7400, RHD4CZ9L06ST7400, RHD4GNSTZ2FT1000 SS | physical Testing [960 h] | T&C | FT | ST |
| RHD4GNIRRZ9FT1300 |  | Final Testing and Commissioning for Irrigation Network - FT-Z9-IRR | 30d | 2028-06-18 | 2028-07-22 | RHD4CZ9C071IRR1400, RHD4CZ9L02IRR1400, RHD4CZ9L06IRR1400, RHD4CZ9C071IRR1407, RHD4CZ9L02IRR1407, RHD4CZ9L05IRR1407, RHD4CZ9L02IRR3203, RHD4CZ9L02IRR3200, RHD4CZ9L06IRR3200, RHD4CZ9L02IRR3202, RHD4GNIRRZ8FT1300 SS, RHD4PRSHLDOSIRR1300, RHD4PRSHLSTAGIRR1300, RHD4PRSHLDOSIRR1100, RHD4PRSHLSTAGIRR1100, RHD4PRSHLDOSIRR1200, RHD4PRSHLDOSIRR1400, RHD4PRSHLSTAGIRR1200, RHD4PRSHLSTAGIRR1400, RHD4ENSDZ9APPIRR140, RHD4CZ9L06IRR1100 | physical Testing [2400 h] | T&C | FT | IRR |
| RHD4GNMVZ9FT1400 |  | Final Testing and Commissioning for Medium Voltage Network - FT-Z9-MV | 30d | 2028-06-18 | 2028-07-22 | RHD4CZ9L02MV4200, RHD4CZ9L06MV4200, RHD4CZ9L02MV3401, RHD4CZ9L06MV3401, RHD4CZ9L02MV3400, RHD4CZ9L06MV3400, RHD4CZ9L02MV3301, RHD4CZ9C071MV3300, RHD4CZ9L02MV3300, RHD4CZ9L05MV3300, RHD4CZ9L06MV3300, RHD4CZ9L02MV5100, RHD4GNMVZ4FT1400 SS | physical Testing [2400 h] | T&C | FT | MV |
| RHD4GNPTZ9FT1200 |  | Final Testing and Commissioning for Potable Water Network - FT-Z9-PT | 30d | 2028-06-18 | 2028-07-22 | RHD4CZ9L02PT1400, RHD4CZ9L06PT1400, RHD4CZ9C071PT1401, RHD4CZ9L02PT1401, RHD4CZ9L05PT1401, RHD4CZ9L06PT1401, RHD4CZ9C071PT1402, RHD4CZ9C071PT4500, RHD4CZ9L02PT4500, RHD4CZ9L05PT4500, RHD4CZ9L06PT4500, RHD4CZ9C071PT3203, RHD4CZ9L02PT3203, RHD4CZ9L05PT3203, RHD4CZ9L06PT3203, RHD4CZ9C071PT3200, RHD4CZ9L02PT3200, RHD4CZ9L05PT3200, RHD4CZ9L06PT3200, RHD4CZ9C071PT3202, RHD4CZ9C071PT4300, RHD4CZ9L02PT4300, RHD4CZ9L05PT4300, RHD4CZ9L06PT4300, RHD4GNPTZ6FT1200 SS | physical Testing [2400 h] | T&C | FT | PT |
| RHD4GNICTZ9FT1900 |  | Final Testing and Commissioning for ICT Network - FT-Z9-ICT | 30d | 2028-06-27 | 2028-07-31 | RHD4CZ9C071ICT2400, RHD4CZ9L02ICT2400, RHD4CZ9L05ICT2400, RHD4CZ9L06ICT2400, RHD4GNICTZ4FT1900 SS | physical Testing [2400 h] | T&C | FT | ICT |
| RHD4GNSWZ9FT1100 |  | Final Testing and Commissioning for Sewage Network - FT-Z9-SW | 12d | 2028-07-02 | 2028-07-15 | RHD4CZ9L02SW3500, RHD4CZ9L06SW3500, RHD4CZ9L02SW2400, RHD4CZ9L06SW2400, RHD4CZ9L02SW3400, RHD4CZ9L06SW3400, RHD4GNSWZ7FT1100 SS, RHD4PRSHLDOSSW1408, RHD4PRSHLSTAGSW1408, RHD4PRSHLDOSSW1308, RHD4PRSHLSTAGSW1308 | physical Testing [960 h] | T&C | FT | SW |
| RHD4GNCCTVZ9FT2000 |  | Final Testing and Commissioning for Security "CCTV" Network - FT-Z9-CCTV | 20d | 2028-07-30 | 2028-08-21 | RHD4CZ9C071CCTV4100, RHD4CZ9L02CCTV4100, RHD4CZ9C071CCTV1500, RHD4CZ9L02CCTV1500, RHD4CZ9C071CCTV3100, RHD4CZ9L02CCTV3100, RHD4GNCCTVZ4FT2000 SS, RHD4CZ9L06ICT2400, RHD4CZ9L06TC2400 | physical Testing [3200 h] | T&C | FT | CCTV |
|  | 1 | **RHD4-02-002-Final Testing and Commissioning - FT-LFTS** |  | 2028-04-18 | 2028-08-16 |  |  |  |  |  |
| RHD4GNSWL1LFTSFT1000 |  | Final Testing and Commissioning for Sewage Lift Station 1 - FT-LFTS-SWL1 | 30d | 2028-04-18 | 2028-05-25 | RHD4CSWL1B07D151214, RHD4CSWL1B07D151191, RHD4CSWL1B07D151180, RHD4CSWL1B07D151178, RHD4CSWL1B07D101162, RHD4CZ1B03EX1000 | physical Testing [2400 h] |  | FT | SWL1 |
| RHD4GNSTL1LFTSFT1200 |  | Final Testing and Commissioning for Storm Lift Station 1 - FT-LFTS-STL1 | 7d | 2028-08-09 | 2028-08-16 | RHD4CSTL1B07D151185, RHD4CSTL1B07D151178, RHD4CSTL1B07D151170, RHD4CSTL1B07D161155, RHD4CSTL1B07D161152, RHD4CSTL1B07D161133, RHD4GNSTZ5FT1000, RHD4CZ3C011RD9100, RHD4CZ1L101RD4100, RHD4CZ5RA07RD9200, RHD4CZ3C011RD7100, RHD4CZ1L101RD7100, RHD4CSTL1B07D161145 | physical Testing [560 h] |  | FT | STL1 |

| ID | WBS | Activity | Duration | Start | Finish | Predecessors | Resources | RDH4-01-001-Zones-1 | RDH4-01-001-Phases-1 | RDH4-01-001-Networks-1 |
| --- | --- | --- | --- | --- | --- | --- | --- | --- | --- | --- |
|  | 9226 | **RHD4-02-002-Close Out - HO** |  | 2027-10-26 | 2029-01-25 |  |  |  |  |  |
|  | 9227 | **RHD4-02-002-As Built Drawings - AS** |  | 2027-10-26 | 2029-01-24 |  |  |  |  |  |
|  | 9228 | **RHD4-02-002-As Built Drawing Submittals** |  | 2027-10-26 | 2029-01-15 |  |  |  |  |  |
|  | 9229 | **RHD4-02-002-As Built Drawing Submittals-Z1** |  | 2028-01-22 | 2028-12-18 |  |  |  |  |  |
| RHD4HOASZ1SUBLV160 |  | Prepare and Submit As-Built Drawings for Low Voltage Network for LV-Z1-SUB | 8d | 2028-01-22 | 2028-01-30 | RHD4HOASZ2SUBLV160, RHD4GNLVZ1FT1500 | Technical Office Engineer [26.14 h]; Document Control [2.72 h] | T&C | HO | LV |
| RHD4HOASZ1SUBST110 |  | Prepare and Submit As-Built Drawings for Storm Water Network for ST-Z1-SUB | 14d | 2028-07-16 | 2028-07-31 | RHD4GNSTZ9FT1000, RHD4HOASZ6SUBTC190, RHD4HOASZ2SUBST110, RHD4GNSTZ1FT1000 | Technical Office Engineer [26.14 h]; Document Control [2.72 h] | T&C | HO | ST |
| RHD4HOASZ1SUBTC190 |  | Prepare and Submit As-Built Drawings for Telecommunications Network for TC-Z1-SUB | 15d | 2028-08-31 | 2028-09-17 | RHD4HOASZ2SUBTC190, RHD4HOASZ6APPSW120, RHD4HOASSTL1APP1000, RHD4GNTCZ1FT1800 | Technical Office Engineer [26.14 h]; Document Control [2.72 h] | T&C | HO | TC |
| RHD4HOASZ1SUBIRR140 |  | Prepare and Submit As-Built Drawings for Irrigation Network for IRR-Z1-SUB | 10d | 2028-09-07 | 2028-09-18 | RHD4HOASZ2SUBIRR140, RHD4GNIRRZ1FT1300 | Technical Office Engineer [26.14 h]; Document Control [2.72 h] | T&C | HO | IRR |
| RHD4HOASZ1SUBMV150 |  | Prepare and Submit As-Built Drawings for Medium Voltage Network for MV-Z1-SUB | 8d | 2028-09-07 | 2028-09-16 | RHD4HOASZ2SUBMV150, RHD4GNMVZ1FT1400 | Technical Office Engineer [26.14 h]; Document Control [2.72 h] | T&C | HO | MV |
| RHD4HOASZ1SUBEW100 |  | Prepare and Submit As-Built Drawings for Road Plans and Profile for EW-Z1-SUB | 9d | 2028-09-09 | 2028-09-18 | RHD4CZ1C081RD4100, RHD4CZ1L101RD4100, RHD4CZ1C081RD8100, RHD4CZ1B03BF2000, RHD4HOASZ2SUBEW100 | Technical Office Engineer [26.14 h]; Document Control [2.72 h] | T&C | HO | RD |
| RHD4HOASZ1SUBPT130 |  | Prepare and Submit As-Built Drawings for Potable Water Network for PT-Z1-SUB | 8d | 2028-09-12 | 2028-09-20 | RHD4HOASZ2SUBPT130, RHD4GNPTZ1FT1200 | Technical Office Engineer [26.14 h]; Document Control [2.72 h] | T&C | HO | PT |
| RHD4HOASZ1SUBSW120 |  | Prepare and Submit As-Built Drawings for Sewage Network for SW-Z1-SUB | 8d | 2028-09-25 | 2028-10-03 | RHD4HOASZ2SUBSW120, RHD4GNSWZ1FT1100 | Technical Office Engineer [26.14 h]; Document Control [2.72 h] | T&C | HO | SW |
| RHD4HOASZ1SUBSL170 |  | Prepare and Submit As-Built Drawings for Street Lighting Network for SL-Z1-SUB | 15d | 2028-09-30 | 2028-10-16 | RHD4CZ1C081SL6100, RHD4CZ1L101SL6100, RHD4HOASZ2SUBSL170, RHD4GNSLZ1FT1600 | Technical Office Engineer [26.14 h]; Document Control [2.72 h] | T&C | HO | SL |
| RHD4HOASZ1SUBCCTV210 |  | Prepare and Submit As-Built Drawings for Security Network for CCTV-Z1-SUB | 8d | 2028-10-19 | 2028-10-28 | RHD4CZ1C081CCTV6100, RHD4CZ1L101CCTV6100, RHD4HOASZ2SUBCCTV210, RHD4GNCCTVZ1FT2000 | Technical Office Engineer [52.32 h]; Document Control [5.44 h] | T&C | HO | CCTV |
| RHD4HOASZ1SUBRD220 |  | Prepare and Submit As-Built Drawings for Road Works( KERBING AND PAVEMENT ) for RD-Z1-SUB | 6d | 2028-11-19 | 2028-11-25 | RHD4CZ1C081RD4100, RHD4CZ1L101RD4100, RHD4CZ1C081RD7100, RHD4CZ1L101RD7100, RHD4HOASZ2SUBRD220 | Technical Office Engineer [26.14 h]; Document Control [2.72 h] | T&C | HO | RD |
| RHD4HOASZ1SUBICT200 |  | Prepare and Submit As-Built Drawings for Information and Communication Technologies Network for ICT-Z1-SUB | 8d | 2028-12-10 | 2028-12-18 | RHD4CZ1L101ICT5200, RHD4HOASZ2SUBICT200, RHD4GNICTZ1FT1900 | Technical Office Engineer [26.14 h]; Document Control [2.72 h] | T&C | HO | ICT |
|  | 9230 | **RHD4-02-002-As Built Drawing Submittals-Z2** |  | 2028-01-12 | 2028-12-09 |  |  |  |  |  |
| RHD4HOASZ2SUBLV160 |  | Prepare and Submit As-Built Drawings for Low Voltage Network for LV-Z2-SUB | 8d | 2028-01-12 | 2028-01-20 | RHD4CZ2L102LV3400, RHD4HOASZ3SUBLV160, RHD4GNLVZ2FT1500 | Technical Office Engineer [26.14 h]; Document Control [2.72 h] | T&C | HO | LV |
| RHD4HOASZ2SUBST110 |  | Prepare and Submit As-Built Drawings for Storm Water Network for ST-Z2-SUB | 12d | 2028-07-02 | 2028-07-15 | RHD4CZ2L102ST4600, RHD4HOASZ3SUBST110, RHD4GNSTZ2FT1000 | Technical Office Engineer [26.14 h]; Document Control [2.72 h] | T&C | HO | ST |
| RHD4HOASZ2SUBTC190 |  | Prepare and Submit As-Built Drawings for Telecommunications Network for TC-Z2-SUB | 6d | 2028-08-24 | 2028-08-30 | RHD4HOASZ3SUBTC190, RHD4GNCCTVZ9FT2000, RHD4GNTCZ2FT1800 | Technical Office Engineer [26.14 h]; Document Control [2.72 h] | T&C | HO | TC |
| RHD4HOASZ2SUBEW100 |  | Prepare and Submit As-Built Drawings for Road Plans and Profile for EW-Z2-SUB | 10d | 2028-08-28 | 2028-09-07 | RHD4CZ2C082RD8100, RHD4CZ2B05EX1001, RHD4CZ2B05EX1000, RHD4HOASZ3SUBEW100 | Technical Office Engineer [26.14 h]; Document Control [2.72 h] | T&C | HO | RD |
| RHD4HOASZ2SUBIRR140 |  | Prepare and Submit As-Built Drawings for Irrigation Network for IRR-Z2-SUB | 8d | 2028-08-29 | 2028-09-06 | RHD4HOASZ3SUBIRR140, RHD4GNIRRZ2FT1300 | Technical Office Engineer [26.14 h]; Document Control [2.72 h] | T&C | HO | IRR |
| RHD4HOASZ2SUBMV150 |  | Prepare and Submit As-Built Drawings for Medium Voltage Network for MV-Z2-SUB | 8d | 2028-08-29 | 2028-09-06 | RHD4HOASZ3SUBMV150, RHD4GNMVZ2FT1400 | Technical Office Engineer [26.14 h]; Document Control [2.72 h] | T&C | HO | MV |
| RHD4HOASZ2SUBPT130 |  | Prepare and Submit As-Built Drawings for Potable Water Network for PT-Z2-SUB | 8d | 2028-09-03 | 2028-09-11 | RHD4HOASZ3SUBPT130, RHD4GNPTZ2FT1200 | Technical Office Engineer [26.14 h]; Document Control [2.72 h] | T&C | HO | PT |
| RHD4HOASZ2SUBSL170 |  | Prepare and Submit As-Built Drawings for Street Lighting Network for SL-Z2-SUB | 15d | 2028-09-11 | 2028-09-28 | RHD4HOASZ3SUBSL170, RHD4GNSWZ1FT1100, RHD4HOASZ9SUBRD220, RHD4HOASSTL1SUB1200, RHD4HOASSTL1SUB1300, RHD4GNSLZ2FT1600 | Technical Office Engineer [26.14 h]; Document Control [2.72 h] | T&C | HO | SL |
| RHD4HOASZ2SUBSW120 |  | Prepare and Submit As-Built Drawings for Sewage Network for SW-Z2-SUB | 6d | 2028-09-17 | 2028-09-24 | RHD4HOASZ3SUBSW120, RHD4GNSWZ2FT1100 | Technical Office Engineer [26.14 h]; Document Control [2.72 h] | T&C | HO | SW |
| RHD4HOASZ2SUBCCTV210 |  | Prepare and Submit As-Built Drawings for Security Network for CCTV-Z2-SUB | 8d | 2028-10-10 | 2028-10-18 | RHD4CZ2C082CCTV6100, RHD4CZ2L102CCTV6100, RHD4HOASZ3SUBCCTV210, RHD4GNCCTVZ2FT2000 | Technical Office Engineer [52.32 h]; Document Control [5.44 h] | T&C | HO | CCTV |
| RHD4HOASZ2SUBRD220 |  | Prepare and Submit As-Built Drawings for Road Works( KERBING AND PAVEMENT ) for RD-Z2-SUB | 6d | 2028-11-12 | 2028-11-18 | RHD4CZ2C082RD4100, RHD4CZ2L102RD4100, RHD4CZ2L011RD4100, RHD4CZ2C082RD7100 SS, RHD4CZ2L102RD7100, RHD4CZ2L011RD7100, RHD4HOASZ3SUBRD220 | Technical Office Engineer [26.14 h]; Document Control [2.72 h] | T&C | HO | RD |
| RHD4HOASZ2SUBICT200 |  | Prepare and Submit As-Built Drawings for Information and Communication Technologies Network for ICT-Z2-SUB | 14d | 2028-11-23 | 2028-12-09 | RHD4HOASZ3SUBICT200, RHD4GNICTZ2FT1900 | Technical Office Engineer [26.14 h]; Document Control [2.72 h] | T&C | HO | ICT |

| ID | WBS | Activity | Duration | Start | Finish | Predecessors | Resources | RDH4-01-001-Zones-1 | RDH4-01-001-Phases-1 | RDH4-01-001-Networks-1 |
| --- | --- | --- | --- | --- | --- | --- | --- | --- | --- | --- |
|  | 9231 | **RHD4-02-002-As Built Drawing Submittals-Z3** |  | 2028-01-03 | 2028-11-22 |  |  |  |  |  |
| RHD4HOASZ3SUBLV160 |  | Prepare and Submit As-Built Drawings for Low Voltage Network for LV-Z3-SUB | 8d | 2028-01-03 | 2028-01-11 | RHD4HOASZ4SUBLV160, RHD4GNLVZ3FT1500 | Technical Office Engineer [26.14 h]; Document Control [2.72 h] | T&C | HO | LV |
| RHD4HOASZ3SUBST110 |  | Prepare and Submit As-Built Drawings for Storm Water Network for ST-Z3-SUB | 12d | 2028-06-18 | 2028-07-01 | RHD4GNSTZ3FT1000 | Technical Office Engineer [26.14 h]; Document Control [2.72 h] | T&C | HO | ST |
| RHD4HOASZ3SUBEW100 |  | Prepare and Submit As-Built Drawings for Road Plans and Profile for EW-Z3-SUB | 16d | 2028-08-09 | 2028-08-27 | RHD4CZ3BZ3BF2001, RHD4HOASZ4SUBEW100 | Technical Office Engineer [26.14 h]; Document Control [2.72 h] | T&C | HO | RD |
| RHD4HOASZ3SUBSL170 |  | Prepare and Submit As-Built Drawings for Street Lighting Network for SL-Z3-SUB | 15d | 2028-08-17 | 2028-09-03 | RHD4HOASZ4SUBSL170, RHD4GNSLZ3FT1600 | Technical Office Engineer [26.14 h]; Document Control [2.72 h] | T&C | HO | SL |
| RHD4HOASZ3SUBTC190 |  | Prepare and Submit As-Built Drawings for Telecommunications Network for TC-Z3-SUB | 6d | 2028-08-17 | 2028-08-23 | RHD4HOASZ4SUBTC190, RHD4GNPTZ1FT1200, RHD4GNIRRZ1FT1300, RHD4GNMVZ1FT1400, RHD4GNPTZ2FT1200, RHD4GNIRRZ2FT1300, RHD4GNMVZ2FT1400, RHD4GNPTZ3FT1200, RHD4GNIRRZ3FT1300, RHD4GNMVZ3FT1400, RHD4GNPTZ7FT1200, RHD4GNIRRZ7FT1300, RHD4GNMVZ7FT1400, RHD4GNSWZ8FT1100, RHD4GNPTZ8FT1200, RHD4GNMVZ8FT1400, RHD4GNPTZ9FT1200, RHD4GNIRRZ9FT1300, RHD4GNMVZ9FT1400, RHD4HOASZ4APPTC190, RHD4CZ3C083RD7100, RHD4GNTCZ3FT1800 | Technical Office Engineer [26.14 h]; Document Control [2.72 h] | T&C | HO | TC |
| RHD4HOASZ3SUBIRR140 |  | Prepare and Submit As-Built Drawings for Irrigation Network for IRR-Z3-SUB | 8d | 2028-08-20 | 2028-08-28 | RHD4HOASZ4SUBIRR140, RHD4GNIRRZ3FT1300 | Technical Office Engineer [26.14 h]; Document Control [2.72 h] | T&C | HO | IRR |
| RHD4HOASZ3SUBMV150 |  | Prepare and Submit As-Built Drawings for Medium Voltage Network for MV-Z3-SUB | 8d | 2028-08-20 | 2028-08-28 | RHD4HOASZ4SUBMV150, RHD4GNMVZ3FT1400 | Technical Office Engineer [26.14 h]; Document Control [2.72 h] | T&C | HO | MV |
| RHD4HOASZ3SUBPT130 |  | Prepare and Submit As-Built Drawings for Potable Water Network for PT-Z3-SUB | 8d | 2028-08-24 | 2028-09-02 | RHD4HOASZ4SUBPT130, RHD4GNPTZ3FT1200 | Technical Office Engineer [26.14 h]; Document Control [2.72 h] | T&C | HO | PT |
| RHD4HOASZ3SUBSW120 |  | Prepare and Submit As-Built Drawings for Sewage Network for SW-Z3-SUB | 6d | 2028-09-10 | 2028-09-16 | RHD4HOASZ4SUBSW120, RHD4GNSWZ3FT1100 | Technical Office Engineer [26.14 h]; Document Control [2.72 h] | T&C | HO | SW |
| RHD4HOASZ3SUBCCTV210 |  | Prepare and Submit As-Built Drawings for Security Network for CCTV-Z3-SUB | 8d | 2028-10-01 | 2028-10-09 | RHD4HOASZ4SUBCCTV210, RHD4GNCCTVZ3FT2000 | Technical Office Engineer [52.32 h]; Document Control [5.44 h] | T&C | HO | CCTV |
| RHD4HOASZ3SUBICT200 |  | Prepare and Submit As-Built Drawings for Information and Communication Technologies Network for ICT-Z3-SUB | 16d | 2028-11-05 | 2028-11-22 | RHD4HOASZ4SUBICT200, RHD4GNICTZ3FT1900 | Technical Office Engineer [26.14 h]; Document Control [2.72 h] | T&C | HO | ICT |
| RHD4HOASZ3SUBRD220 |  | Prepare and Submit As-Built Drawings for Road Works( KERBING AND PAVEMENT ) for RD-Z3-SUB | 6d | 2028-11-05 | 2028-11-11 | RHD4CZ3C011RD4100, RHD4CZ3C083RD4100, RHD4CZ3L122RD4100, RHD4CZ3C011RD7100, RHD4CZ3C083RD7100, RHD4CZ3L122RD7100, RHD4HOASZ4SUBRD220 | Technical Office Engineer [26.14 h]; Document Control [2.72 h] | T&C | HO | RD |
|  | 9232 | **RHD4-02-002-As Built Drawing Submittals-Z4** |  | 2027-11-15 | 2028-09-09 |  |  |  |  |  |
| RHD4HOASZ4SUBLV160 |  | Prepare and Submit As-Built Drawings for Low Voltage Network for LV-Z4-SUB | 8d | 2027-11-15 | 2027-11-23 | RHD4HOASZ6SUBLV160, RHD4GNLVZ4FT1500 | Technical Office Engineer [26.14 h]; Document Control [2.72 h] | T&C | HO | LV |
| RHD4HOASZ4SUBSL170 |  | Prepare and Submit As-Built Drawings for Street Lighting Network for SL-Z4-SUB | 15d | 2027-12-21 | 2028-01-06 | RHD4HOASZ6SUBSL170, RHD4GNSLZ4FT1600 | Technical Office Engineer [26.14 h]; Document Control [2.72 h] | T&C | HO | SL |
| RHD4HOASZ4SUBTC190 |  | Prepare and Submit As-Built Drawings for Telecommunications Network for TC-Z4-SUB | 16d | 2028-06-04 | 2028-06-21 | RHD4HOASZ6SUBTC190, RHD4GNTCZ4FT1800 | Technical Office Engineer [26.14 h]; Document Control [2.72 h] | T&C | HO | TC |
| RHD4HOASZ4SUBEW100 |  | Prepare and Submit As-Built Drawings for Road Plans and Profile for EW-Z4-SUB | 6d | 2028-08-02 | 2028-08-08 | RHD4CZ4BZ4BF4001, RHD4CZ4B07BF4001, RHD4CZ4C012RD8100, RHD4CZ4A013RW1000, RHD4CZ4BZ4EX1001, RHD4HOASZ6SUBEW100 | Technical Office Engineer [26.14 h]; Document Control [2.72 h] | T&C | HO | RD |
| RHD4HOASZ4SUBCCTV210 |  | Prepare and Submit As-Built Drawings for Security Network for CCTV-Z4-SUB | 8d | 2028-08-08 | 2028-08-16 | RHD4CZ4C031CCTV6100, RHD4CZ4L014CCTV6100, RHD4HOASZ6SUBCCTV210, RHD4GNCCTVZ4FT2000 | Technical Office Engineer [52.32 h]; Document Control [5.44 h] | T&C | HO | CCTV |
| RHD4HOASZ4SUBIRR140 |  | Prepare and Submit As-Built Drawings for Irrigation Network for IRR-Z4-SUB | 8d | 2028-08-10 | 2028-08-19 | RHD4HOASZ6SUBIRR140, RHD4GNIRRZ4FT1300 | Technical Office Engineer [26.14 h]; Document Control [2.72 h] | T&C | HO | IRR |
| RHD4HOASZ4SUBMV150 |  | Prepare and Submit As-Built Drawings for Medium Voltage Network for MV-Z4-SUB | 8d | 2028-08-10 | 2028-08-19 | RHD4HOASZ6SUBMV150, RHD4GNMVZ4FT1400 | Technical Office Engineer [26.14 h]; Document Control [2.72 h] | T&C | HO | MV |
| RHD4HOASZ4SUBST110 |  | Prepare and Submit As-Built Drawings for Storm Water Network for ST-Z4-SUB | 12d | 2028-08-13 | 2028-08-26 | RHD4HOASZ5SUBST110, RHD4HOASZ3SUBST110, RHD4HOASZ6SUBST110, RHD4GNSTZ4FT1000 | Technical Office Engineer [26.14 h]; Document Control [2.72 h] | T&C | HO | ST |
| RHD4HOASZ4SUBICT200 |  | Prepare and Submit As-Built Drawings for Information and Communication Technologies Network for ICT-Z4-SUB | 16d | 2028-08-15 | 2028-09-02 | RHD4HOASZ6SUBICT200, RHD4GNICTZ4FT1900 | Technical Office Engineer [26.14 h]; Document Control [2.72 h] | T&C | HO | ICT |
| RHD4HOASZ4SUBPT130 |  | Prepare and Submit As-Built Drawings for Potable Water Network for PT-Z4-SUB | 8d | 2028-08-15 | 2028-08-23 | RHD4HOASZ6SUBPT130, RHD4GNPTZ4FT1200 | Technical Office Engineer [26.14 h]; Document Control [2.72 h] | T&C | HO | PT |
| RHD4HOASZ4SUBRD220 |  | Prepare and Submit As-Built Drawings for Road Works( KERBING AND PAVEMENT ) for RD-Z4-SUB | 8d | 2028-08-24 | 2028-09-02 | RHD4CZ4A013RD4100, RHD4CZ4C012RD4100, RHD4CZ4C031RD4100, RHD4CZ4L014RD4100, RHD4CZ4L09RD4100, RHD4CZ4RA02RD4100, RHD4CZ4A013RD7100, RHD4CZ4C012RD7100, RHD4CZ4C031RD7100, RHD4CZ4L014RD7100, RHD4CZ4L09RD7100, RHD4CZ4RA02RD7100, RHD4HOASZ6SUBRD220 | Technical Office Engineer [26.14 h]; Document Control [2.72 h] | T&C | HO | RD |
| RHD4HOASZ4SUBSW120 |  | Prepare and Submit As-Built Drawings for Sewage Network for SW-Z4-SUB | 12d | 2028-08-27 | 2028-09-09 | RHD4HOASZ4SUBST110, RHD4HOASZ6SUBSW120, RHD4GNSWZ4FT1100 | Technical Office Engineer [26.14 h]; Document Control [2.72 h] | T&C | HO | SW |

| ID | WBS | Activity | Duration | Start | Finish | Predecessors | Resources | RDH4-01-001-Zones-1 | RDH4-01-001-Phases-1 | RDH4-01-001-Networks-1 |
| --- | --- | --- | --- | --- | --- | --- | --- | --- | --- | --- |
|  | 9233 | **RHD4-02-002-As Built Drawing Submittals-Z5** |  | 2027-10-26 | 2028-08-15 |  |  |  |  |  |
| RHD4HOASZ5SUBLV160 |  | Prepare and Submit As-Built Drawings for Low Voltage Network for LV-Z5-SUB | 8d | 2027-10-26 | 2027-11-03 | RHD4GNLVZ5FT1500 | Technical Office Engineer [26.14 h]; Document Control [2.72 h] | T&C | HO | LV |
| RHD4HOASZ5SUBSL170 |  | Prepare and Submit As-Built Drawings for Street Lighting Network for SL-Z5-SUB | 15d | 2028-01-29 | 2028-02-14 | RHD4GNSLZ5FT1600 | Technical Office Engineer [26.14 h]; Document Control [2.72 h] | T&C | HO | SL |
| RHD4HOASZ5SUBTC190 |  | Prepare and Submit As-Built Drawings for Telecommunications Network for TC-Z5-SUB | 15d | 2028-04-26 | 2028-05-16 | RHD4GNTCZ5FT1800 | Technical Office Engineer [26.14 h]; Document Control [2.72 h] | T&C | HO | TC |
| RHD4HOASZ5SUBSW120 |  | Prepare and Submit As-Built Drawings for Sewage Network for SW-Z5-SUB | 12d | 2028-07-02 | 2028-07-15 | RHD4GNSWZ5FT1100 | Technical Office Engineer [26.14 h]; Document Control [2.72 h] | T&C | HO | SW |
| RHD4HOASZ5SUBICT200 |  | Prepare and Submit As-Built Drawings for Information and Communication Technologies Network for ICT-Z5-SUB | 16d | 2028-07-09 | 2028-07-26 | RHD4GNICTZ5FT1900 | Technical Office Engineer [26.14 h]; Document Control [2.72 h] | T&C | HO | ICT |
| RHD4HOASZ5SUBEW100 |  | Prepare and Submit As-Built Drawings for Road Plans and Profile for EW-Z5-SUB | 8d | 2028-07-15 | 2028-07-23 | RHD4CZ5C051RD7100, RHD4CZ5RA07RD9200, RHD4CZ5C061RD7100, RHD4CZ5L08RD7100, RHD4CZ5L016RD7100, RHD4CZ5A014RD7100, RHD4CZ5L07RD7100, RHD4CZ5A014RD8100 | Technical Office Engineer [26.14 h]; Document Control [2.72 h] | T&C | HO | RD |
| RHD4HOASZ5SUBST110 |  | Prepare and Submit As-Built Drawings for Storm Water Network for ST-Z5-SUB | 12d | 2028-07-16 | 2028-07-29 | RHD4CZ5L08ST4600, RHD4HOASZ2SUBST110, RHD4GNSTZ5FT1000 | Technical Office Engineer [26.14 h]; Document Control [2.72 h] | T&C | HO | ST |
| RHD4HOASZ5SUBCCTV210 |  | Prepare and Submit As-Built Drawings for Security Network for CCTV-Z5-SUB | 8d | 2028-07-20 | 2028-07-29 | RHD4CZ5L016CCTV6100, RHD4CZ5L07CCTV6100, RHD4GNCCTVZ5FT2000 | Technical Office Engineer [52.32 h]; Document Control [5.44 h] | T&C | HO | CCTV |
| RHD4HOASZ5SUBIRR140 |  | Prepare and Submit As-Built Drawings for Irrigation Network for IRR-Z5-SUB | 8d | 2028-07-23 | 2028-07-31 | RHD4GNIRRZ5FT1300 | Technical Office Engineer [26.14 h]; Document Control [2.72 h] | T&C | HO | IRR |
| RHD4HOASZ5SUBMV150 |  | Prepare and Submit As-Built Drawings for Medium Voltage Network for MV-Z5-SUB | 8d | 2028-07-23 | 2028-07-31 | RHD4GNMVZ5FT1400 | Technical Office Engineer [26.14 h]; Document Control [2.72 h] | T&C | HO | MV |
| RHD4HOASZ5SUBPT130 |  | Prepare and Submit As-Built Drawings for Potable Water Network for PT-Z5-SUB | 8d | 2028-07-23 | 2028-07-31 | RHD4GNPTZ5FT1200 | Technical Office Engineer [26.14 h]; Document Control [2.72 h] | T&C | HO | PT |
| RHD4HOASZ5SUBRD220 |  | Prepare and Submit As-Built Drawings for Road Works( KERBING AND PAVEMENT ) for RD-Z5-SUB | 6d | 2028-08-09 | 2028-08-15 | RHD4CZ5A014RD4100, RHD4CZ5C051RD4100, RHD4CZ5C061RD4100, RHD4CZ5L016RD4100, RHD4CZ5L07RD4100, RHD4CZ5L08RD4100, RHD4CZ5RA07RD4100, RHD4CZ5C051RD7100, RHD4CZ5RA07RD7100, RHD4CZ5C061RD7100, RHD4CZ5A014RD7100, RHD4CZ5L016RD7100, RHD4CZ5L07RD7100, RHD4CZ5L08RD7100, RHD4HOASZ4SUBEW100 | Technical Office Engineer [26.14 h]; Document Control [2.72 h] | T&C | HO | RD |
|  | 9234 | **RHD4-02-002-As Built Drawing Submittals-Z6** |  | 2027-11-06 | 2028-08-23 |  |  |  |  |  |
| RHD4HOASZ6SUBLV160 |  | Prepare and Submit As-Built Drawings for Low Voltage Network for LV-Z6-SUB | 8d | 2027-11-06 | 2027-11-14 | RHD4HOASZ5SUBLV160, RHD4GNLVZ6FT1500 | Technical Office Engineer [26.14 h]; Document Control [2.72 h] | T&C | HO | LV |
| RHD4HOASZ6SUBSL170 |  | Prepare and Submit As-Built Drawings for Street Lighting Network for SL-Z6-SUB | 15d | 2027-12-04 | 2027-12-20 | RHD4GNSLZ6FT1600 | Technical Office Engineer [26.14 h]; Document Control [2.72 h] | T&C | HO | SL |
| RHD4HOASZ6SUBTC190 |  | Prepare and Submit As-Built Drawings for Telecommunications Network for TC-Z6-SUB | 15d | 2028-05-17 | 2028-06-03 | RHD4HOASZ5SUBTC190, RHD4HOASZ5SUBTC190 FF, RHD4GNTCZ6FT1800 | Technical Office Engineer [26.14 h]; Document Control [2.72 h] | T&C | HO | TC |
| RHD4HOASZ6SUBSW120 |  | Prepare and Submit As-Built Drawings for Sewage Network for SW-Z6-SUB | 14d | 2028-07-16 | 2028-07-31 | RHD4HOASZ5SUBSW120, RHD4HOASZ5SUBSW120 FF, RHD4GNSWZ6FT1100 | Technical Office Engineer [26.14 h]; Document Control [2.72 h] | T&C | HO | SW |
| RHD4HOASZ6SUBEW100 |  | Prepare and Submit As-Built Drawings for Road Plans and Profile for EW-Z6-SUB | 8d | 2028-07-24 | 2028-08-01 | RHD4HOASTUN1APP1100 SS, RHD4HOASTUN1APP1200 SS, RHD4HOASZ5SUBEW100 | Technical Office Engineer [26.14 h]; Document Control [2.72 h] | T&C | HO | RD |
| RHD4HOASZ6SUBICT200 |  | Prepare and Submit As-Built Drawings for Information and Communication Technologies Network for ICT-Z6-SUB | 16d | 2028-07-27 | 2028-08-14 | RHD4HOASZ5SUBICT200, RHD4GNICTZ6FT1900 | Technical Office Engineer [26.14 h]; Document Control [2.72 h] | T&C | HO | ICT |
| RHD4HOASZ6SUBCCTV210 |  | Prepare and Submit As-Built Drawings for Security Network for CCTV-Z6-SUB | 8d | 2028-07-30 | 2028-08-07 | RHD4HOASZ5SUBCCTV210, RHD4GNCCTVZ6FT2000 | Technical Office Engineer [52.32 h]; Document Control [5.44 h] | T&C | HO | CCTV |
| RHD4HOASZ6SUBST110 |  | Prepare and Submit As-Built Drawings for Storm Water Network for ST-Z6-SUB | 12d | 2028-07-30 | 2028-08-12 | RHD4HOASZ5SUBST110, RHD4HOASZ5SUBST110 FF, RHD4GNSTZ6FT1000 | Technical Office Engineer [26.14 h]; Document Control [2.72 h] | T&C | HO | ST |
| RHD4HOASZ6SUBIRR140 |  | Prepare and Submit As-Built Drawings for Irrigation Network for IRR-Z6-SUB | 8d | 2028-08-01 | 2028-08-09 | RHD4HOASZ5SUBIRR140, RHD4GNIRRZ6FT1300 | Technical Office Engineer [26.14 h]; Document Control [2.72 h] | T&C | HO | IRR |
| RHD4HOASZ6SUBMV150 |  | Prepare and Submit As-Built Drawings for Medium Voltage Network for MV-Z6-SUB | 8d | 2028-08-01 | 2028-08-09 | RHD4HOASZ5SUBMV150, RHD4GNMVZ6FT1400 | Technical Office Engineer [26.14 h]; Document Control [2.72 h] | T&C | HO | MV |
| RHD4HOASZ6SUBPT130 |  | Prepare and Submit As-Built Drawings for Potable Water Network for PT-Z6-SUB | 12d | 2028-08-01 | 2028-08-14 | RHD4HOASZ6SUBSW120, RHD4HOASZ5SUBPT130, RHD4GNPTZ6FT1200 | Technical Office Engineer [26.14 h]; Document Control [2.72 h] | T&C | HO | PT |
| RHD4HOASZ6SUBRD220 |  | Prepare and Submit As-Built Drawings for Road Works( KERBING AND PAVEMENT ) for RD-Z6-SUB | 7d | 2028-08-16 | 2028-08-23 | RHD4CZ6A015RD4100, RHD4CZ6A02RD4100, RHD4CZ6C052RD4100, RHD4CZ6C062RD4100, RHD4CZ6RA01RD4100, RHD4CZ6A02RD7100, RHD4CZ6RA01RD7100, RHD4CZ6C062RD7100, RHD4CZ6A015RD7100, RHD4CZ6C052RD7100, RHD4HOASZ5SUBRD220 | Technical Office Engineer [26.14 h]; Document Control [2.72 h] | T&C | HO | RD |

| ID | WBS | Activity | Duration | Start | Finish | Predecessors | Resources | RDH4-01-001-Zones-1 | RDH4-01-001-Phases-1 | RDH4-01-001-Networks-1 |
| --- | --- | --- | --- | --- | --- | --- | --- | --- | --- | --- |
|  | 9235 | **RHD4-02-002-As Built Drawing Submittals-Z7** |  | 2028-01-31 | 2028-12-27 |  |  |  |  |  |
| RHD4HOASZ7SUBLV160 |  | Prepare and Submit As-Built Drawings for Low Voltage Network for LV-Z7-SUB | 8d | 2028-01-31 | 2028-02-08 | RHD4HOASZ1SUBLV160, RHD4GNLVZ7FT1500 | Technical Office Engineer [26.14 h]; Document Control [2.72 h] | T&C | HO | LV |
| RHD4HOASZ7SUBST110 |  | Prepare and Submit As-Built Drawings for Storm Water Network for ST-Z7-SUB | 12d | 2028-08-01 | 2028-08-14 | RHD4HOASZ5SUBST110, RHD4HOASZ1SUBST110, RHD4GNSTZ7FT1000 | Technical Office Engineer [26.14 h]; Document Control [2.72 h] | T&C | HO | ST |
| RHD4HOASZ7SUBMV150 |  | Prepare and Submit As-Built Drawings for Medium Voltage Network for MV-Z7-SUB | 10d | 2028-09-17 | 2028-09-28 | RHD4HOASZ1SUBMV150, RHD4GNMVZ7FT1400 | Technical Office Engineer [26.14 h]; Document Control [2.72 h] | T&C | HO | MV |
| RHD4HOASZ7SUBTC190 |  | Prepare and Submit As-Built Drawings for Telecommunications Network for TC-Z7-SUB | 15d | 2028-09-18 | 2028-10-05 | RHD4HOASZ1SUBTC190, RHD4GNTCZ7FT1800 | Technical Office Engineer [26.14 h]; Document Control [2.72 h] | T&C | HO | TC |
| RHD4HOASZ7SUBEW100 |  | Prepare and Submit As-Built Drawings for Road Plans and Profile for EW-Z7-SUB | 8d | 2028-09-19 | 2028-09-28 | RHD4CZ7C02RD8100, RHD4HOASZ1SUBEW100 | Technical Office Engineer [26.14 h]; Document Control [2.72 h] | T&C | HO | RD |
| RHD4HOASZ7SUBIRR140 |  | Prepare and Submit As-Built Drawings for Irrigation Network for IRR-Z7-SUB | 16d | 2028-09-19 | 2028-10-08 | RHD4CZ7A012IRR5100, RHD4HOASZ1SUBIRR140, RHD4GNIRRZ7FT1300 | Technical Office Engineer [26.14 h]; Document Control [2.72 h] | T&C | HO | IRR |
| RHD4HOASZ7SUBPT130 |  | Prepare and Submit As-Built Drawings for Potable Water Network for PT-Z7-SUB | 14d | 2028-09-21 | 2028-10-08 | RHD4HOASZ1SUBPT130, RHD4GNPTZ7FT1200 | Technical Office Engineer [26.14 h]; Document Control [2.72 h] | T&C | HO | PT |
| RHD4HOASZ7SUBSW120 |  | Prepare and Submit As-Built Drawings for Sewage Network for SW-Z7-SUB | 12d | 2028-10-04 | 2028-10-17 | RHD4HOASZ1SUBSW120, RHD4GNSWZ7FT1100 | Technical Office Engineer [26.14 h]; Document Control [2.72 h] | T&C | HO | SW |
| RHD4HOASZ7SUBSL170 |  | Prepare and Submit As-Built Drawings for Street Lighting Network for SL-Z7-SUB | 15d | 2028-10-17 | 2028-11-02 | RHD4CZ7C013SL6100, RHD4CZ7C02SL6100, RHD4CZ7RA03SL6100, RHD4HOASZ1SUBSL170, RHD4GNSLZ7FT1600 | Technical Office Engineer [26.14 h]; Document Control [2.72 h] | T&C | HO | SL |
| RHD4HOASZ7SUBCCTV210 |  | Prepare and Submit As-Built Drawings for Security Network for CCTV-Z7-SUB | 13d | 2028-10-29 | 2028-11-12 | RHD4CZ7L131CCTV2100, RHD4CZ7C02CCTV6100, RHD4CZ7C032CCTV6100, RHD4CZ7L03CCTV6100, RHD4CZ7RA03CCTV6100, RHD4HOASZ1SUBCCTV210, RHD4GNCCTVZ7FT2000 | Technical Office Engineer [52.32 h]; Document Control [5.44 h] | T&C | HO | CCTV |
| RHD4HOASZ7SUBRD220 |  | Prepare and Submit As-Built Drawings for Road Works( KERBING AND PAVEMENT ) for RD-Z7-SUB | 6d | 2028-11-26 | 2028-12-02 | RHD4CZ7A012RD4100, RHD4CZ7C013RD4100, RHD4CZ7C02RD4100, RHD4CZ7C032RD4100, RHD4CZ7L131RD4100, RHD4CZ7L015RD4100, RHD4CZ7L03RD4100, RHD4CZ7RA03RD4100, RHD4CZ7RA05RD4100, RHD4CZ7RA05RD9100, RHD4CZ7RA05RD7100, RHD4CZ7A012RD7100, RHD4CZ7C013RD7100, RHD4CZ7C02RD7100, RHD4CZ7C032RD7100, RHD4CZ7L131RD7100, RHD4CZ7L015RD7100, RHD4CZ7L03RD7100, RHD4CZ7RA03RD7100, RHD4HOASZ1SUBRD220 | Technical Office Engineer [26.14 h]; Document Control [2.72 h] | T&C | HO | RD |
| RHD4HOASZ7SUBICT200 |  | Prepare and Submit As-Built Drawings for Information and Communication Technologies Network for ICT-Z7-SUB | 8d | 2028-12-19 | 2028-12-27 | RHD4HOASZ1SUBICT200, RHD4GNICTZ7FT1900 | Technical Office Engineer [26.14 h]; Document Control [2.72 h] | T&C | HO | ICT |
|  | 9236 | **RHD4-02-002-As Built Drawing Submittals-Z8** |  | 2028-02-09 | 2029-01-06 |  |  |  |  |  |
| RHD4HOASZ8SUBLV160 |  | Prepare and Submit As-Built Drawings for Low Voltage Network for LV-Z8-SUB | 8d | 2028-02-09 | 2028-02-17 | RHD4HOASZ7SUBLV160, RHD4GNLVZ8FT1500 | Technical Office Engineer [26.14 h]; Document Control [2.72 h] | T&C | HO | LV |
| RHD4HOASZ8SUBST110 |  | Prepare and Submit As-Built Drawings for Storm Water Network for ST-Z8-SUB | 12d | 2028-08-15 | 2028-08-28 | RHD4HOASZ5SUBST110, RHD4HOASZ7SUBST110, RHD4GNSTZ8FT1000 | Technical Office Engineer [26.14 h]; Document Control [2.72 h] | T&C | HO | ST |
| RHD4HOASZ8SUBMV150 |  | Prepare and Submit As-Built Drawings for Medium Voltage Network for MV-Z8-SUB | 8d | 2028-09-30 | 2028-10-08 | RHD4HOASZ7SUBMV150, RHD4GNMVZ8FT1400 | Technical Office Engineer [26.14 h]; Document Control [2.72 h] | T&C | HO | MV |
| RHD4HOASZ8SUBTC190 |  | Prepare and Submit As-Built Drawings for Telecommunications Network for TC-Z8-SUB | 15d | 2028-10-07 | 2028-10-23 | RHD4HOASZ7SUBTC190, RHD4GNTCZ8FT1800 | Technical Office Engineer [26.14 h]; Document Control [2.72 h] | T&C | HO | TC |
| RHD4HOASZ8SUBIRR140 |  | Prepare and Submit As-Built Drawings for Irrigation Network for IRR-Z8-SUB | 16d | 2028-10-09 | 2028-10-26 | RHD4HOASZ7SUBIRR140, RHD4GNIRRZ8FT1300 | Technical Office Engineer [26.14 h]; Document Control [2.72 h] | T&C | HO | IRR |
| RHD4HOASZ8SUBPT130 |  | Prepare and Submit As-Built Drawings for Potable Water Network for PT-Z8-SUB | 16d | 2028-10-09 | 2028-10-26 | RHD4HOASZ7SUBPT130, RHD4GNPTZ8FT1200 | Technical Office Engineer [26.14 h]; Document Control [2.72 h] | T&C | HO | PT |
| RHD4HOASZ8SUBSW120 |  | Prepare and Submit As-Built Drawings for Sewage Network for SW-Z8-SUB | 12d | 2028-10-18 | 2028-10-31 | RHD4HOASZ7SUBSW120, RHD4HOASZ7SUBSW120 FF, RHD4GNSWZ8FT1100 | Technical Office Engineer [26.14 h]; Document Control [2.72 h] | T&C | HO | SW |
| RHD4HOASZ8SUBSL170 |  | Prepare and Submit As-Built Drawings for Street Lighting Network for SL-Z8-SUB | 15d | 2028-11-04 | 2028-11-20 | RHD4CZ8A011SL6100, RHD4CZ8C014SL6100, RHD4HOASZ7SUBSL170, RHD4GNSLZ8FT1600 | Technical Office Engineer [26.14 h]; Document Control [2.72 h] | T&C | HO | SL |
| RHD4HOASZ8SUBCCTV210 |  | Prepare and Submit As-Built Drawings for Security Network for CCTV-Z8-SUB | 16d | 2028-11-13 | 2028-11-30 | RHD4CZ7L015CCTV2100, RHD4CZ8A011CCTV6100, RHD4CZ8L04CCTV6100, RHD4CZ8RA04CCTV6100, RHD4HOASZ7SUBCCTV210, RHD4GNCCTVZ8FT2000 | Technical Office Engineer [52.32 h]; Document Control [5.44 h] | T&C | HO | CCTV |
| RHD4HOASZ8SUBEW100 |  | Prepare and Submit As-Built Drawings for Road Plans and Profile for EW-Z8-SUB | 8d | 2028-12-03 | 2028-12-11 | RHD4HOASZ8SUBRD220 SS, RHD4CZ8C014RD8100, RHD4CZ8A011RD8100, RHD4HOASZ7SUBEW100 | Technical Office Engineer [26.14 h]; Document Control [2.72 h] | T&C | HO | RD |
| RHD4HOASZ8SUBRD220 |  | Prepare and Submit As-Built Drawings for Road Works( KERBING AND PAVEMENT ) for RD-Z8-SUB | 6d | 2028-12-03 | 2028-12-09 | RHD4CZ8A011RD4100, RHD4CZ8C014RD4100, RHD4CZ4L01RD4100, RHD4CZ8L04RD4100, RHD4CZ8RA04RD4100, RHD4CZ8RA04RD9100, RHD4CZ8A011RD7100, RHD4CZ8C014RD7100, RHD4CZ4L01RD7100, RHD4CZ8L04RD7100, RHD4CZ8RA04RD7100, RHD4HOASZ7SUBRD220 | Technical Office Engineer [26.14 h]; Document Control [2.72 h] | T&C | HO | RD |
| RHD4HOASZ8SUBICT200 |  | Prepare and Submit As-Built Drawings for Information and Communication Technologies Network for ICT-Z8-SUB | 8d | 2028-12-28 | 2029-01-06 | RHD4HOASZ7SUBICT200, RHD4GNICTZ8FT1900 | Technical Office Engineer [26.14 h]; Document Control [2.72 h] | T&C | HO | ICT |

| ID | WBS | Activity | Duration | Start | Finish | Predecessors | Resources | RDH4-01-001-Zones-1 | RDH4-01-001-Phases-1 | RDH4-01-001-Networks-1 |
| --- | --- | --- | --- | --- | --- | --- | --- | --- | --- | --- |
|  | 9237 | **RHD4-02-002-As Built Drawing Submittals-Z9** |  | 2028-02-19 | 2029-01-15 |  |  |  |  |  |
| RHD4HOASZ9SUBLV160 |  | Prepare and Submit As-Built Drawings for Low Voltage Network for LV-Z9-SUB | 8d | 2028-02-19 | 2028-03-02 | RHD4HOASZ8SUBLV160, RHD4GNLVZ9FT1500 | Technical Office Engineer [26.14 h]; Document Control [2.72 h] | T&C | HO | LV |
| RHD4HOASZ9SUBST110 |  | Prepare and Submit As-Built Drawings for Storm Water Network for ST-Z9-SUB | 12d | 2028-08-29 | 2028-09-11 | RHD4HOASZ5SUBST110, RHD4HOASZ8SUBST110, RHD4GNSTZ9FT1000 | Technical Office Engineer [26.14 h]; Document Control [2.72 h] | T&C | HO | ST |
| RHD4HOASZ9SUBRD220 |  | Prepare and Submit As-Built Drawings for Road Works( KERBING AND PAVEMENT ) for RD-Z9-SUB | 6d | 2028-09-04 | 2028-09-10 | RHD4CZ9C071RD4100, RHD4CZ9L02RD4100, RHD4CZ9L05RD4100, RHD4CZ9L06RD4100, RHD4CZ9C071RD7100, RHD4CZ9L02RD7100, RHD4CZ9L05RD7100, RHD4CZ9L06RD7100 | Technical Office Engineer [26.14 h]; Document Control [2.72 h] | T&C | HO | RD |
| RHD4HOASZ9SUBMV150 |  | Prepare and Submit As-Built Drawings for Medium Voltage Network for MV-Z9-SUB | 8d | 2028-10-09 | 2028-10-17 | RHD4HOASZ8SUBMV150, RHD4GNMVZ9FT1400 | Technical Office Engineer [26.14 h]; Document Control [2.72 h] | T&C | HO | MV |
| RHD4HOASZ9SUBTC190 |  | Prepare and Submit As-Built Drawings for Telecommunications Network for TC-Z9-SUB | 10d | 2028-10-24 | 2028-11-04 | RHD4CZ9L02TC5200, RHD4HOASZ8SUBTC190, RHD4GNTCZ9FT1800 | Technical Office Engineer [26.14 h]; Document Control [2.72 h] | T&C | HO | TC |
| RHD4HOASZ9SUBIRR140 |  | Prepare and Submit As-Built Drawings for Irrigation Network for IRR-Z9-SUB | 16d | 2028-10-28 | 2028-11-14 | RHD4HOASZ8SUBIRR140, RHD4GNIRRZ9FT1300 | Technical Office Engineer [26.14 h]; Document Control [2.72 h] | T&C | HO | IRR |
| RHD4HOASZ9SUBPT130 |  | Prepare and Submit As-Built Drawings for Potable Water Network for PT-Z9-SUB | 16d | 2028-10-28 | 2028-11-14 | RHD4HOASZ8SUBPT130, RHD4GNPTZ9FT1200 | Technical Office Engineer [26.14 h]; Document Control [2.72 h] | T&C | HO | PT |
| RHD4HOASZ9SUBSW120 |  | Prepare and Submit As-Built Drawings for Sewage Network for SW-Z9-SUB | 12d | 2028-11-01 | 2028-11-14 | RHD4HOASZ8SUBSW120, RHD4HOASZ8SUBSW120 FF, RHD4GNSWZ9FT1100 | Technical Office Engineer [26.14 h]; Document Control [2.72 h] | T&C | HO | SW |
| RHD4HOASZ9SUBSL170 |  | Prepare and Submit As-Built Drawings for Street Lighting Network for SL-Z9-SUB | 15d | 2028-11-21 | 2028-12-07 | RHD4HOASZ8SUBSL170, RHD4GNSLZ9FT1600 | Technical Office Engineer [26.14 h]; Document Control [2.72 h] | T&C | HO | SL |
| RHD4HOASZ9SUBCCTV210 |  | Prepare and Submit As-Built Drawings for Security Network for CCTV-Z9-SUB | 16d | 2028-12-02 | 2028-12-19 | RHD4CZ9C071CCTV6100, RHD4CZ9L02CCTV6100, RHD4CZ9L06ICT2400, RHD4CZ9L06TC2400, RHD4HOASZ8SUBCCTV210, RHD4GNCCTVZ9FT2000 | Technical Office Engineer [52.32 h]; Document Control [5.44 h] | T&C | HO | CCTV |
| RHD4HOASZ9SUBEW100 |  | Prepare and Submit As-Built Drawings for Road Plans and Profile for EW-Z9-SUB | 8d | 2028-12-12 | 2028-12-20 | RHD4HOASZ8SUBRD220 SS, RHD4CZ9B36BF2000, RHD4HOASZ8SUBEW100 | Technical Office Engineer [26.14 h]; Document Control [2.72 h] | T&C | HO | RD |
| RHD4HOASZ9SUBICT200 |  | Prepare and Submit As-Built Drawings for Information and Communication Technologies Network for ICT-Z9-SUB | 8d | 2029-01-07 | 2029-01-15 | RHD4HOASZ8SUBICT200, RHD4GNICTZ9FT1900 | Technical Office Engineer [26.14 h]; Document Control [2.72 h] | T&C | HO | ICT |
|  | 9238 | **RHD4-02-002-As Built Drawing Submittals-Tunne 1 - TUN1** |  | 2028-05-02 | 2028-05-18 |  |  |  |  |  |
| RHD4HOASTUN1SUB1000 |  | Prepare and Submit As-Built Drawings for TUNNEL 1 (PLANS) -Z5 for -TUN1-SUB | 12d | 2028-05-02 | 2028-05-18 | RHD4HOASSWL1SUB1000 | Technical Office Engineer [26.14 h]; Document Control [2.72 h] | T&C | HO | TUN1 |
| RHD4HOASTUN1SUB1100 |  | Prepare and Submit As-Built Drawings for TUNNEL 1 (SECTIONS) -Z5 for -TUN1-SUB | 12d | 2028-05-02 | 2028-05-18 | RHD4CTUN1Z5STG31210, RHD4CTUN1Z5STG31060, RHD4CTUN1Z5STG21310, RHD4CTUN1Z5STG21270, RHD4CTUN1Z5STG21210, RHD4CTUN1Z5STG11060, RHD4CTUN1Z5STG11210, RHD4HOASSWL1SUB1000, RHD4ENMARAPPTU100, RHD4CTUN1Z5STG21060, RHD4CTUN1Z5STG21050, RHD4CTUN1Z5STG21030, RHD4ENMSTUN2010, RHD4CTUN1Z5STG21040 | Technical Office Engineer [26.14 h]; Document Control [2.72 h] | T&C | HO | TUN1 |
| RHD4HOASTUN1SUB1200 |  | Prepare and Submit As-Built Drawings for TUNNEL 1 (BBS) -Z5 for -TUN1-SUB | 12d | 2028-05-02 | 2028-05-18 | RHD4CTUN1Z5STG31210, RHD4CTUN1Z5STG31060, RHD4CTUN1Z5STG21310, RHD4CTUN1Z5STG21270, RHD4CTUN1Z5STG21210, RHD4CTUN1Z5STG11060, RHD4CTUN1Z5STG11210, RHD4HOASSWL1SUB1000, RHD4ENMARAPPTU100, RHD4CTUN1Z5STG21060, RHD4CTUN1Z5STG21050, RHD4CTUN1Z5STG21030, RHD4ENMSTUN2010, RHD4CTUN1Z5STG21040 | Technical Office Engineer [26.14 h]; Document Control [2.72 h] | T&C | HO | TUN1 |
|  | 9240 | **RHD4-02-002-As Built Drawing Submittals-Sewage Lift Station 1 - SWL1** |  | 2028-04-18 | 2028-06-15 |  |  |  |  |  |
| RHD4HOASSWL1SUB1000 |  | Prepare and Submit As-Built Drawings for Sewage Lift Station 1 - Z3 - Structure Package for -SWL1-SUB | 12d | 2028-04-18 | 2028-05-01 | RHD4CSWL1B07D021007, RHD4CSWL1B07D021010, RHD4CSWL1B07D031039, RHD4CSWL1B07D031043, RHD4CSWL1B07D031047, RHD4CSWL1B07D031054, RHD4CSWL1B07D031173, RHD4CSWL1B07D031170, RHD4CSWL1B07D031188, RHD4CSWL1B07D031199, RHD4CSWL1B07D031209, RHD4GNSWL1LFTSFT1000 SS | Technical Office Engineer [26.14 h]; Document Control [2.72 h] | T&C | HO | STR |
| RHD4HOASSWL1SUB1100 |  | Prepare and Submit As-Built Drawings for Sewage Lift Station 1 - Z3 - Architecture Package for -SWL1-SUB | 12d | 2028-05-02 | 2028-05-18 | RHD4CSWL1B07D091012, RHD4CSWL1B07D091070, RHD4CSWL1B07D071071, RHD4CSWL1B07D071072, RHD4CSWL1B07D071073, RHD4CSWL1B07D071074, RHD4CSWL1B07D071075, RHD4CSWL1B07D071076, RHD4CSWL1B07D091077, RHD4CSWL1B07D091079, RHD4CSWL1B07D091080, RHD4CSWL1B07D091086, RHD4CSWL1B07D091087, RHD4CSWL1B07D091088, RHD4CSWL1B07D101158, RHD4CSWL1B07D101159, RHD4CSWL1B07D101160, RHD4CSWL1B07D101161, RHD4CSWL1B07D101162, RHD4GNSWL1LFTSFT1000 SS, RHD4PRSHLDOSLFS1500, RHD4PRSHLSTAGLFS1500, RHD4CSWL1B07D091077 SS, RHD4HOASSWL1SUB1000, RHD4ENSWL1APPARC1100, RHD4GNPPSD1100, RHD4ENSDSWL1SUB2000, RHD4ENSDZ6SUBRD220, RHD4ENSDSTL1SUB2000 | Technical Office Engineer [26.14 h]; Document Control [2.72 h] | T&C | HO | ARC |
| RHD4HOASSWL1SUB1200 |  | Prepare and Submit As-Built Drawings for Sewage Lift Station 1 - Z3 - Mechanical Package for -SWL1-SUB | 12d | 2028-05-20 | 2028-06-01 | RHD4CSWL1B07D151032, RHD4CSWL1B07D151031, RHD4CSWL1B07D151030, RHD4CSWL1B07D151016, RHD4CSWL1B07D151017, RHD4CSWL1B07D151018, RHD4CSWL1B07D151019, RHD4CSWL1B07D151021, RHD4CSWL1B07D151023, RHD4CSWL1B07D151211, RHD4CSWL1B07D151212, RHD4CSWL1B07D151213, RHD4CSWL1B07D151214, RHD4CSWL1B07D151175, RHD4CSWL1B07D151180, RHD4CSWL1B07D151211 FF, RHD4CSWL1B07D151212 FF, RHD4CSWL1B07D151213 FF, RHD4CSWL1B07D151214 FF, RHD4CSWL1B07D151092, RHD4GNSWL1LFTSFT1000 SS, RHD4PRLOLSTAGLFS1100, RHD4PRSHLDOSLFS1800, RHD4PRSHLSTAGLFS1800, RHD4CSWL1B07D151178, RHD4HOASSWL1SUB1100, RHD4ENSWL1APPMEC1200, RHD4GNPPSD1100, RHD4ENSDSWL1SUB3000, RHD4ENSDZ6SUBRD220, RHD4ENSDSTL1SUB3000, RHD4GNCCTVZ2FT2000 | Technical Office Engineer [26.14 h]; Document Control [2.72 h] | T&C | HO | MECH |
| RHD4HOASSWL1SUB1300 |  | Prepare and Submit As-Built Drawings for Sewage Lift Station 1 - Z3 - Electrical Package for -SWL1-SUB | 12d | 2028-06-03 | 2028-06-15 | RHD4CSWL1B07D161153, RHD4CSWL1B07D161154, RHD4CSWL1B07D161155, RHD4CSWL1B07D161152, RHD4CSWL1B07D161145, RHD4CSWL1B07D161150, RHD4CSWL1B07D161141, RHD4CSWL1B07D161139, RHD4CSWL1B07D161137, RHD4CSWL1B07D161099, RHD4CSWL1B07D161103, RHD4CSWL1B07D161107, RHD4CSWL1B07D161111, RHD4CSWL1B07D161125, RHD4CSWL1B07D161131, RHD4GNSWL1LFTSFT1000, RHD4PRSHLDOSLFS2600, RHD4PRSHLSTAGLFS2600, RHD4ENSWL1APPELE1300, RHD4CSWL1B07D161108, RHD4HOASSWL1SUB1200 | Technical Office Engineer [26.14 h]; Document Control [2.72 h] | T&C | HO | ELEC |
|  | 9242 | **RHD4-02-002-As Built Drawing Submittals-Storm Lift Station 1 - STL1** |  | 2028-08-17 | 2028-10-07 |  |  |  |  |  |
| RHD4HOASSTL1SUB1000 |  | Prepare and Submit As-Built Drawings for Storm Lift Station 1 - Z5 - Structure Package for -STL1-SUB | 6d | 2028-08-17 | 2028-08-23 | RHD4CSTL1B07D021006, RHD4CSTL1B07D021012, RHD4CSTL1B07D021015, RHD4CSTL1B07D031037, RHD4CSTL1B07D031040, RHD4CSTL1B07D031044, RHD4CSTL1B07D031048, RHD4CSTL1B07D031055, RHD4CSTL1B07D031062, RHD4CSTL1B07D031066, RHD4CSTL1B07D031070, RHD4CSTL1B07D031161, RHD4CSTL1B07D031164, RHD4CSTL1B07D031176, RHD4CSTL1B07D151184, RHD4GNSTL1LFTSFT1200 | Technical Office Engineer [26.14 h]; Document Control [2.72 h] | T&C | HO | STR |
| RHD4HOASSTL1SUB1200 |  | Prepare and Submit As-Built Drawings for Storm Lift Station 1 - Z5 - Mechanical Package for -STL1-SUB | 16d | 2028-08-17 | 2028-09-04 | RHD4CSTL1B07D151023, RHD4CSTL1B07D151026, RHD4CSTL1B07D151027, RHD4CSTL1B07D151029, RHD4CSTL1B07D151030, RHD4CSTL1B07D151032, RHD4CSTL1B07D151033, RHD4CSTL1B07D151091, RHD4CSTL1B07D151092, RHD4CSTL1B07D151094, RHD4CSTL1B07D151093, RHD4CSTL1B07D151095, RHD4CSTL1B07D151096, RHD4CSTL1B07D151170, RHD4GNSTL1LFTSFT1200 | Technical Office Engineer [26.14 h]; Document Control [2.72 h] | T&C | HO | MECH |
| RHD4HOASSTL1SUB1300 |  | Prepare and Submit As-Built Drawings for Storm Lift Station 1 - Z5 - Electrical Package for -STL1-SUB | 14d | 2028-08-17 | 2028-09-02 | RHD4CSTL1B07D161100, RHD4CSTL1B07D161104, RHD4CSTL1B07D161108, RHD4CSTL1B07D161112, RHD4CSTL1B07D161115, RHD4CSTL1B07D161119, RHD4CSTL1B07D161125, RHD4CSTL1B07D161122, RHD4CSTL1B07D161131, RHD4CSTL1B07D161128, RHD4CSTL1B07D161133, RHD4CSTL1B07D161132, RHD4CSTL1B07D161137, RHD4CSTL1B07D161138, RHD4CSTL1B07D161152, RHD4CSTL1B07D161155, RHD4CSTL1B07D151178, RHD4CSTL1B07D151177, RHD4GNSTL1LFTSFT1200, RHD4ENSTL1APPELE1300, RHD4CSTL1B07D161133 SS, RHD4PRSHLDOSLFS2400, RHD4PRSHLSTAGLFS2400 | Technical Office Engineer [26.14 h]; Document Control [2.72 h] | T&C | HO | ELEC |
| RHD4HOASSTL1SUB1100 |  | Prepare and Submit As-Built Drawings for Storm Lift Station 1 - Z5 - Architecture Package for -STL1-SUB | 6d | 2028-10-01 | 2028-10-07 | RHD4CSTL1B07D021002, RHD4CSTL1B07D021008, RHD4CSTL1B07D021016, RHD4CSTL1B07D051022, RHD4CSTL1B07D031036, RHD4CSTL1B07D031051, RHD4CSTL1B07D071058, RHD4CSTL1B07D071059, RHD4CSTL1B07D091072, RHD4CSTL1B07D071078, RHD4CSTL1B07D091079, RHD4CSTL1B07D091082, RHD4CSTL1B07D091081, RHD4CSTL1B07D091088, RHD4CSTL1B07D091087, RHD4CSTL1B07D091090, RHD4CSTL1B07D031157, RHD4CSTL1B07D031165, RHD4CSTL1B07D021166, RHD4CSTL1B07D031172, RHD4CSTL1B07D151180, RHD4GNSTL1LFTSFT1200, RHD4GNMVZ1FT1400, RHD4GNLVZ1FT1500, RHD4GNCCTVZ1FT2000, RHD4GNMVZ2FT1400, RHD4GNLVZ2FT1500, RHD4GNCCTVZ2FT2000, RHD4GNMVZ3FT1400, RHD4GNLVZ3FT1500, RHD4GNCCTVZ3FT2000, RHD4GNMVZ4FT1400, RHD4GNLVZ4FT1500, RHD4GNCCTVZ4FT2000, RHD4GNMVZ5FT1400, RHD4GNLVZ5FT1500, RHD4GNCCTVZ5FT2000, RHD4GNMVZ6FT1400, RHD4GNLVZ6FT1500, RHD4GNCCTVZ6FT2000, RHD4GNMVZ7FT1400, RHD4GNLVZ7FT1500, RHD4GNCCTVZ7FT2000, RHD4GNMVZ8FT1400, RHD4GNLVZ8FT1500, RHD4GNCCTVZ8FT2000, RHD4GNMVZ9FT1400, RHD4GNLVZ9FT1500, RHD4GNCCTVZ9FT2000, RHD4GNTCZ2FT1800, RHD4GNTCZ3FT1800, RHD4GNPTZ1FT1200, RHD4GNIRRZ1FT1300, RHD4GNPTZ2FT1200, RHD4GNIRRZ2FT1300, RHD4GNPTZ3FT1200, RHD4GNIRRZ3FT1300, RHD4GNPTZ4FT1200, RHD4GNIRRZ4FT1300, RHD4GNPTZ5FT1200, RHD4GNIRRZ5FT1300, RHD4GNPTZ6FT1200, RHD4GNIRRZ6FT1300, RHD4GNPTZ7FT1200, RHD4GNIRRZ7FT1300, RHD4GNPTZ8FT1200, RHD4GNIRRZ8FT1300, RHD4GNPTZ9FT1200, RHD4GNIRRZ9FT1300, RHD4CSTL1B07D051085, RHD4CSTL1B07D091018, RHD4PRSHLDOSLFS1500, RHD4PRSHLSTAGLFS1500, RHD4ENSTL1APPARC1100, RHD4GNPPSD1100, RHD4ENSDZ6SUBRD220, RHD4ENSDSTL1SUB2000 | Technical Office Engineer [26.14 h]; Document Control [2.72 h] | T&C | HO | ARC |

| ID | WBS | Activity | Duration | Start | Finish | Predecessors | Resources | RDH4-01-001-Zones-1 | RDH4-01-001-Phases-1 | RDH4-01-001-Networks-1 |
| --- | --- | --- | --- | --- | --- | --- | --- | --- | --- | --- |
|  | 9244 | **RHD4-02-002-As Built Drawing Approvals** |  | 2027-11-04 | 2029-01-24 |  |  |  |  |  |
|  | 9245 | **RHD4-02-002-As Built Drawing Approvals-Z1** |  | 2028-01-31 | 2028-12-27 |  |  |  |  |  |
| RHD4HOASZ1APPLV160 |  | Review and Approval of As-Built Drawings for Low Voltage Network for LV-Z1-APP | 8d | 2028-01-31 | 2028-02-08 | RHD4HOASZ2APPLV160, RHD4HOASZ1SUBLV160 | Consultant Staff | T&C | HO | LV |
| RHD4HOASZ1APPMV150 |  | Review and Approval of As-Built Drawings for Medium Voltage Network for MV-Z1-APP | 10d | 2028-09-17 | 2028-09-28 | RHD4HOASZ2APPMV150, RHD4HOASZ1SUBMV150 | Consultant Staff | T&C | HO | MV |
| RHD4HOASZ1APPTC190 |  | Review and Approval of As-Built Drawings for Telecommunications Network for TC-Z1-APP | 15d | 2028-09-18 | 2028-10-05 | RHD4HOASZ2APPTC190, RHD4HOASZ1SUBTC190 | Consultant Staff | T&C | HO | TC |
| RHD4HOASZ1APPEW100 |  | Review and Approval of As-Built Drawings for Road Plans and Profile for EW-Z1-APP | 8d | 2028-09-19 | 2028-09-28 | RHD4HOASZ2APPEW100, RHD4HOASZ1SUBEW100 | Consultant Staff | T&C | HO | RD |
| RHD4HOASZ1APPST110 |  | Review and Approval of As-Built Drawings for Storm Water Network for ST-Z1-APP | 12d | 2028-10-09 | 2028-10-22 | RHD4HOASZ2APPST110, RHD4HOASZ1SUBST110 | Consultant Staff | T&C | HO | ST |
| RHD4HOASZ1APPIRR140 |  | Review and Approval of As-Built Drawings for Irrigation Network for IRR-Z1-APP | 12d | 2028-10-11 | 2028-10-24 | RHD4HOASZ2APPIRR140, RHD4HOASZ1SUBIRR140 | Consultant Staff | T&C | HO | IRR |
| RHD4HOASZ1APPPT130 |  | Review and Approval of As-Built Drawings for Potable Water Network for PT-Z1-APP | 12d | 2028-10-11 | 2028-10-24 | RHD4HOASZ2APPPT130, RHD4HOASZ1SUBPT130 | Consultant Staff | T&C | HO | PT |
| RHD4HOASZ1APPSL170 |  | Review and Approval of As-Built Drawings for Street Lighting Network for SL-Z1-APP | 15d | 2028-10-17 | 2028-11-02 | RHD4HOASZ2APPSL170, RHD4HOASZ2APPSL170 FF, RHD4HOASZ1SUBSL170 | Consultant Staff | T&C | HO | SL |
| RHD4HOASZ1APPSW120 |  | Review and Approval of As-Built Drawings for Sewage Network for SW-Z1-APP | 6d | 2028-10-21 | 2028-10-26 | RHD4HOASZ2APPSW120, RHD4HOASZ1SUBSW120 | Consultant Staff | T&C | HO | SW |
| RHD4HOASZ1APPCCTV210 |  | Review and Approval of As-Built Drawings for Security Network for CCTV-Z1-APP | 13d | 2028-10-29 | 2028-11-12 | RHD4HOASZ2APPCCTV210, RHD4HOASZ1SUBCCTV210 | Consultant Staff | T&C | HO | CCTV |
| RHD4HOASZ1APPRD220 |  | Review and Approval of As-Built Drawings for Road Works( KERBING AND PAVEMENT ) for RD-Z1-APP | 6d | 2028-11-30 | 2028-12-06 | RHD4HOASZ2APPRD220, RHD4HOASZ1SUBRD220 | Consultant Staff | T&C | HO | RD |
| RHD4HOASZ1APPICT200 |  | Review and Approval of As-Built Drawings for Information and Communication Technologies Network for ICT-Z1-APP | 8d | 2028-12-19 | 2028-12-27 | RHD4HOASZ2APPICT200, RHD4HOASZ1SUBICT200 | Consultant Staff | T&C | HO | ICT |
|  | 9246 | **RHD4-02-002-As Built Drawing Approvals-Z2** |  | 2028-01-22 | 2028-12-18 |  |  |  |  |  |
| RHD4HOASZ2APPLV160 |  | Review and Approval of As-Built Drawings for Low Voltage Network for LV-Z2-APP | 8d | 2028-01-22 | 2028-01-30 | RHD4HOASZ3APPLV160, RHD4HOASZ2SUBLV160 | Consultant Staff | T&C | HO | LV |
| RHD4HOASZ2APPTC190 |  | Review and Approval of As-Built Drawings for Telecommunications Network for TC-Z2-APP | 6d | 2028-08-31 | 2028-09-06 | RHD4HOASZ3APPTC190, RHD4HOASZ2SUBTC190 | Consultant Staff | T&C | HO | TC |
| RHD4HOASZ2APPMV150 |  | Review and Approval of As-Built Drawings for Medium Voltage Network for MV-Z2-APP | 8d | 2028-09-07 | 2028-09-16 | RHD4HOASZ3APPMV150, RHD4HOASZ2SUBMV150 | Consultant Staff | T&C | HO | MV |
| RHD4HOASZ2APPEW100 |  | Review and Approval of As-Built Drawings for Road Plans and Profile for EW-Z2-APP | 9d | 2028-09-09 | 2028-09-18 | RHD4HOASZ3APPEW100, RHD4HOASZ2SUBEW100 | Consultant Staff | T&C | HO | RD |
| RHD4HOASZ2APPST110 |  | Review and Approval of As-Built Drawings for Storm Water Network for ST-Z2-APP | 12d | 2028-09-25 | 2028-10-08 | RHD4HOASZ3APPST110, RHD4HOASZ2SUBST110 | Consultant Staff | T&C | HO | ST |
| RHD4HOASZ2APPIRR140 |  | Review and Approval of As-Built Drawings for Irrigation Network for IRR-Z2-APP | 12d | 2028-09-27 | 2028-10-10 | RHD4HOASZ3APPIRR140, RHD4HOASZ2SUBIRR140 | Consultant Staff | T&C | HO | IRR |
| RHD4HOASZ2APPPT130 |  | Review and Approval of As-Built Drawings for Potable Water Network for PT-Z2-APP | 12d | 2028-09-27 | 2028-10-10 | RHD4HOASZ3APPPT130, RHD4HOASZ2SUBPT130 | Consultant Staff | T&C | HO | PT |
| RHD4HOASZ2APPSL170 |  | Review and Approval of As-Built Drawings for Street Lighting Network for SL-Z2-APP | 15d | 2028-09-30 | 2028-10-16 | RHD4HOASZ3APPSL170, RHD4HOASZ3APPSL170 FF, RHD4HOASZ2SUBSL170 | Consultant Staff | T&C | HO | SL |
| RHD4HOASZ2APPSW120 |  | Review and Approval of As-Built Drawings for Sewage Network for SW-Z2-APP | 16d | 2028-10-02 | 2028-10-19 | RHD4HOASZ3APPSW120, RHD4HOASZ2SUBSW120 | Consultant Staff | T&C | HO | SW |
| RHD4HOASZ2APPCCTV210 |  | Review and Approval of As-Built Drawings for Security Network for CCTV-Z2-APP | 8d | 2028-10-19 | 2028-10-28 | RHD4HOASZ3APPCCTV210, RHD4HOASZ2SUBCCTV210 | Consultant Staff | T&C | HO | CCTV |
| RHD4HOASZ2APPRD220 |  | Review and Approval of As-Built Drawings for Road Works( KERBING AND PAVEMENT ) for RD-Z2-APP | 8d | 2028-11-21 | 2028-11-29 | RHD4HOASZ3APPRD220, RHD4HOASZ2SUBRD220 | Consultant Staff | T&C | HO | RD |
| RHD4HOASZ2APPICT200 |  | Review and Approval of As-Built Drawings for Information and Communication Technologies Network for ICT-Z2-APP | 8d | 2028-12-10 | 2028-12-18 | RHD4HOASZ3APPICT200, RHD4HOASZ2SUBICT200 | Consultant Staff | T&C | HO | ICT |

| ID | WBS | Activity | Duration | Start | Finish | Predecessors | Resources | RDH4-01-001-Zones-1 | RDH4-01-001-Phases-1 | RDH4-01-001-Networks-1 |
| --- | --- | --- | --- | --- | --- | --- | --- | --- | --- | --- |
|  | 9247 | **RHD4-02-002-As Built Drawing Approvals-Z3** |  | 2028-01-12 | 2028-12-09 |  |  |  |  |  |
| RHD4HOASZ3APPLV160 |  | Review and Approval of As-Built Drawings for Low Voltage Network for LV-Z3-APP | 8d | 2028-01-12 | 2028-01-20 | RHD4HOASZ4APPLV160, RHD4HOASZ3SUBLV160 | Consultant Staff | T&C | HO | LV |
| RHD4HOASZ3APPTC190 |  | Review and Approval of As-Built Drawings for Telecommunications Network for TC-Z3-APP | 6d | 2028-08-24 | 2028-08-30 | RHD4HOASZ4APPTC190, RHD4HOASZ3SUBTC190 | Consultant Staff | T&C | HO | TC |
| RHD4HOASZ3APPEW100 |  | Review and Approval of As-Built Drawings for Road Plans and Profile for EW-Z3-APP | 10d | 2028-08-28 | 2028-09-07 | RHD4HOASZ4APPEW100, RHD4HOASZ3SUBEW100 | Consultant Staff | T&C | HO | RD |
| RHD4HOASZ3APPMV150 |  | Review and Approval of As-Built Drawings for Medium Voltage Network for MV-Z3-APP | 8d | 2028-08-29 | 2028-09-06 | RHD4HOASZ4APPMV150, RHD4HOASZ3SUBMV150 | Consultant Staff | T&C | HO | MV |
| RHD4HOASZ3APPSL170 |  | Review and Approval of As-Built Drawings for Street Lighting Network for SL-Z3-APP | 15d | 2028-09-04 | 2028-09-20 | RHD4HOASZ4APPSL170, RHD4HOASZ3SUBSL170 | Consultant Staff | T&C | HO | SL |
| RHD4HOASZ3APPST110 |  | Review and Approval of As-Built Drawings for Storm Water Network for ST-Z3-APP | 12d | 2028-09-10 | 2028-09-24 | RHD4HOASZ4APPST110, RHD4HOASZ3SUBST110 | Consultant Staff | T&C | HO | ST |
| RHD4HOASZ3APPIRR140 |  | Review and Approval of As-Built Drawings for Irrigation Network for IRR-Z3-APP | 12d | 2028-09-12 | 2028-09-26 | RHD4HOASZ4APPIRR140, RHD4HOASZ3SUBIRR140 | Consultant Staff | T&C | HO | IRR |
| RHD4HOASZ3APPPT130 |  | Review and Approval of As-Built Drawings for Potable Water Network for PT-Z3-APP | 12d | 2028-09-12 | 2028-09-26 | RHD4HOASZ4APPPT130, RHD4HOASZ3SUBPT130 | Consultant Staff | T&C | HO | PT |
| RHD4HOASZ3APPSW120 |  | Review and Approval of As-Built Drawings for Sewage Network for SW-Z3-APP | 6d | 2028-09-25 | 2028-10-01 | RHD4HOASZ4APPSW120, RHD4HOASZ3SUBSW120 | Consultant Staff | T&C | HO | SW |
| RHD4HOASZ3APPCCTV210 |  | Review and Approval of As-Built Drawings for Security Network for CCTV-Z3-APP | 8d | 2028-10-10 | 2028-10-18 | RHD4HOASZ4APPCCTV210, RHD4HOASZ3SUBCCTV210 | Consultant Staff | T&C | HO | CCTV |
| RHD4HOASZ3APPRD220 |  | Review and Approval of As-Built Drawings for Road Works( KERBING AND PAVEMENT ) for RD-Z3-APP | 8d | 2028-11-12 | 2028-11-20 | RHD4HOASZ4APPRD220, RHD4HOASZ3SUBRD220 | Consultant Staff | T&C | HO | RD |
| RHD4HOASZ3APPICT200 |  | Review and Approval of As-Built Drawings for Information and Communication Technologies Network for ICT-Z3-APP | 14d | 2028-11-23 | 2028-12-09 | RHD4HOASZ4APPICT200, RHD4HOASZ3SUBICT200 | Consultant Staff | T&C | HO | ICT |
|  | 9248 | **RHD4-02-002-As Built Drawing Approvals-Z4** |  | 2027-11-24 | 2028-09-24 |  |  |  |  |  |
| RHD4HOASZ4APPLV160 |  | Review and Approval of As-Built Drawings for Low Voltage Network for LV-Z4-APP | 8d | 2027-11-24 | 2027-12-02 | RHD4HOASZ6APPLV160, RHD4HOASZ4SUBLV160 | Consultant Staff | T&C | HO | LV |
| RHD4HOASZ4APPSL170 |  | Review and Approval of As-Built Drawings for Street Lighting Network for SL-Z4-APP | 15d | 2028-01-08 | 2028-01-24 | RHD4HOASZ6APPSL170, RHD4HOASZ4SUBSL170 | Consultant Staff | T&C | HO | SL |
| RHD4HOASZ4APPTC190 |  | Review and Approval of As-Built Drawings for Telecommunications Network for TC-Z4-APP | 16d | 2028-06-22 | 2028-07-10 | RHD4HOASZ4APPSL170, RHD4HOASZ6SUBTC190, RHD4HOASZ6APPTC190, RHD4HOASZ4SUBTC190 | Consultant Staff | T&C | HO | TC |
| RHD4HOASZ4APPEW100 |  | Review and Approval of As-Built Drawings for Road Plans and Profile for EW-Z4-APP | 10d | 2028-08-16 | 2028-08-27 | RHD4HOASZ6APPEW100, RHD4HOASZ4SUBEW100 | Consultant Staff | T&C | HO | RD |
| RHD4HOASZ4APPCCTV210 |  | Review and Approval of As-Built Drawings for Security Network for CCTV-Z4-APP | 8d | 2028-08-17 | 2028-08-26 | RHD4HOASZ6APPCCTV210, RHD4HOASZ4SUBCCTV210 | Consultant Staff | T&C | HO | CCTV |
| RHD4HOASZ4APPMV150 |  | Review and Approval of As-Built Drawings for Medium Voltage Network for MV-Z4-APP | 8d | 2028-08-20 | 2028-08-28 | RHD4HOASZ6APPMV150, RHD4HOASZ4SUBMV150 | Consultant Staff | T&C | HO | MV |
| RHD4HOASZ4APPST110 |  | Review and Approval of As-Built Drawings for Storm Water Network for ST-Z4-APP | 12d | 2028-08-27 | 2028-09-09 | RHD4HOASZ6APPST110, RHD4HOASZ4SUBST110 | Consultant Staff | T&C | HO | ST |
| RHD4HOASZ4APPIRR140 |  | Review and Approval of As-Built Drawings for Irrigation Network for IRR-Z4-APP | 12d | 2028-08-29 | 2028-09-11 | RHD4HOASZ6APPIRR140, RHD4HOASZ4SUBIRR140 | Consultant Staff | T&C | HO | IRR |
| RHD4HOASZ4APPPT130 |  | Review and Approval of As-Built Drawings for Potable Water Network for PT-Z4-APP | 12d | 2028-08-29 | 2028-09-11 | RHD4HOASZ6APPPT130, RHD4HOASZ4SUBPT130 | Consultant Staff | T&C | HO | PT |
| RHD4HOASZ4APPICT200 |  | Review and Approval of As-Built Drawings for Information and Communication Technologies Network for ICT-Z4-APP | 16d | 2028-09-03 | 2028-09-20 | RHD4HOASZ6APPICT200, RHD4HOASZ4SUBICT200 | Consultant Staff | T&C | HO | ICT |
| RHD4HOASZ4APPRD220 |  | Review and Approval of As-Built Drawings for Road Works( KERBING AND PAVEMENT ) for RD-Z4-APP | 8d | 2028-09-03 | 2028-09-11 | RHD4HOASZ6APPRD220, RHD4HOASZ4SUBRD220 | Consultant Staff | T&C | HO | RD |
| RHD4HOASZ4APPSW120 |  | Review and Approval of As-Built Drawings for Sewage Network for SW-Z4-APP | 12d | 2028-09-10 | 2028-09-24 | RHD4HOASZ6APPSW120, RHD4HOASZ4SUBSW120 | Consultant Staff | T&C | HO | SW |

| ID | WBS | Activity | Duration | Start | Finish | Predecessors | Resources | RDH4-01-001-Zones-1 | RDH4-01-001-Phases-1 | RDH4-01-001-Networks-1 |
| --- | --- | --- | --- | --- | --- | --- | --- | --- | --- | --- |
|  | 9249 | **RHD4-02-002-As Built Drawing Approvals-Z5** |  | 2027-11-04 | 2028-08-23 |  |  |  |  |  |
| RHD4HOASZ5APPLV160 |  | Review and Approval of As-Built Drawings for Low Voltage Network for LV-Z5-APP | 8d | 2027-11-04 | 2027-11-13 | RHD4HOASZ5SUBLV160 | Consultant Staff | T&C | HO | LV |
| RHD4HOASZ5APPSL170 |  | Review and Approval of As-Built Drawings for Street Lighting Network for SL-Z5-APP | 15d | 2028-02-15 | 2028-03-07 | RHD4HOASZ5SUBSL170 | Consultant Staff | T&C | HO | SL |
| RHD4HOASZ5APPTC190 |  | Review and Approval of As-Built Drawings for Telecommunications Network for TC-Z5-APP | 15d | 2028-05-17 | 2028-06-03 | RHD4HOASZ5SUBTC190 | Consultant Staff | T&C | HO | TC |
| RHD4HOASZ5APPSW120 |  | Review and Approval of As-Built Drawings for Sewage Network for SW-Z5-APP | 12d | 2028-07-16 | 2028-07-29 | RHD4HOASZ5SUBSW120 | Consultant Staff | T&C | HO | SW |
| RHD4HOASZ5APPEW100 |  | Review and Approval of As-Built Drawings for Road Plans and Profile for EW-Z5-APP | 10d | 2028-07-24 | 2028-08-03 | RHD4HOASTUN1APP1000, RHD4HOASZ5SUBEW100 | Consultant Staff | T&C | HO | RD |
| RHD4HOASZ5APPICT200 |  | Review and Approval of As-Built Drawings for Information and Communication Technologies Network for ICT-Z5-APP | 16d | 2028-07-27 | 2028-08-14 | RHD4HOASZ5SUBICT200 | Consultant Staff | T&C | HO | ICT |
| RHD4HOASZ5APPCCTV210 |  | Review and Approval of As-Built Drawings for Security Network for CCTV-Z5-APP | 8d | 2028-07-30 | 2028-08-07 | RHD4HOASZ5SUBCCTV210 | Consultant Staff | T&C | HO | CCTV |
| RHD4HOASZ5APPST110 |  | Review and Approval of As-Built Drawings for Storm Water Network for ST-Z5-APP | 12d | 2028-07-30 | 2028-08-12 | RHD4HOASZ5SUBST110 | Consultant Staff | T&C | HO | ST |
| RHD4HOASZ5APPIRR140 |  | Review and Approval of As-Built Drawings for Irrigation Network for IRR-Z5-APP | 12d | 2028-08-01 | 2028-08-14 | RHD4HOASZ5SUBIRR140 | Consultant Staff | T&C | HO | IRR |
| RHD4HOASZ5APPMV150 |  | Review and Approval of As-Built Drawings for Medium Voltage Network for MV-Z5-APP | 8d | 2028-08-01 | 2028-08-09 | RHD4HOASZ5SUBMV150 | Consultant Staff | T&C | HO | MV |
| RHD4HOASZ5APPPT130 |  | Review and Approval of As-Built Drawings for Potable Water Network for PT-Z5-APP | 12d | 2028-08-01 | 2028-08-14 | RHD4HOASZ5SUBPT130 | Consultant Staff | T&C | HO | PT |
| RHD4HOASZ5APPRD220 |  | Review and Approval of As-Built Drawings for Road Works( KERBING AND PAVEMENT ) for RD-Z5-APP | 7d | 2028-08-16 | 2028-08-23 | RHD4HOASZ5SUBRD220 | Consultant Staff | T&C | HO | RD |
|  | 9250 | **RHD4-02-002-As Built Drawing Approvals-Z6** |  | 2027-11-15 | 2028-09-02 |  |  |  |  |  |
| RHD4HOASZ6APPLV160 |  | Review and Approval of As-Built Drawings for Low Voltage Network for LV-Z6-APP | 8d | 2027-11-15 | 2027-11-23 | RHD4HOASZ5APPLV160, RHD4HOASZ6SUBLV160 | Consultant Staff | T&C | HO | LV |
| RHD4HOASZ6APPSL170 |  | Review and Approval of As-Built Drawings for Street Lighting Network for SL-Z6-APP | 15d | 2027-12-21 | 2028-01-06 | RHD4HOASZ6SUBSL170 | Consultant Staff | T&C | HO | SL |
| RHD4HOASZ6APPTC190 |  | Review and Approval of As-Built Drawings for Telecommunications Network for TC-Z6-APP | 16d | 2028-06-04 | 2028-06-21 | RHD4HOASZ5APPTC190, RHD4HOASZ6SUBTC190 | Consultant Staff | T&C | HO | TC |
| RHD4HOASZ6APPSW120 |  | Review and Approval of As-Built Drawings for Sewage Network for SW-Z6-APP | 12d | 2028-08-01 | 2028-08-14 | RHD4HOASZ5APPSW120, RHD4HOASZ6SUBSW120 | Consultant Staff | T&C | HO | SW |
| RHD4HOASZ6APPEW100 |  | Review and Approval of As-Built Drawings for Road Plans and Profile for EW-Z6-APP | 10d | 2028-08-05 | 2028-08-15 | RHD4CZ6RA01RD9100, RHD4HOASZ5APPEW100, RHD4HOASZ6SUBEW100 | Consultant Staff | T&C | HO | RD |
| RHD4HOASZ6APPCCTV210 |  | Review and Approval of As-Built Drawings for Security Network for CCTV-Z6-APP | 8d | 2028-08-08 | 2028-08-16 | RHD4HOASZ5APPCCTV210, RHD4HOASZ6SUBCCTV210 | Consultant Staff | T&C | HO | CCTV |
| RHD4HOASZ6APPMV150 |  | Review and Approval of As-Built Drawings for Medium Voltage Network for MV-Z6-APP | 8d | 2028-08-10 | 2028-08-19 | RHD4HOASZ5APPMV150, RHD4HOASZ6SUBMV150 | Consultant Staff | T&C | HO | MV |
| RHD4HOASZ6APPST110 |  | Review and Approval of As-Built Drawings for Storm Water Network for ST-Z6-APP | 12d | 2028-08-13 | 2028-08-26 | RHD4CZ6A015ST4600, RHD4CZ6C052ST4600, RHD4HOASZ5APPST110, RHD4HOASZ6SUBST110 | Consultant Staff | T&C | HO | ST |
| RHD4HOASZ6APPICT200 |  | Review and Approval of As-Built Drawings for Information and Communication Technologies Network for ICT-Z6-APP | 16d | 2028-08-15 | 2028-09-02 | RHD4HOASZ5APPICT200, RHD4HOASZ6SUBICT200 | Consultant Staff | T&C | HO | ICT |
| RHD4HOASZ6APPIRR140 |  | Review and Approval of As-Built Drawings for Irrigation Network for IRR-Z6-APP | 12d | 2028-08-15 | 2028-08-28 | RHD4HOASZ5APPIRR140, RHD4HOASZ6SUBIRR140 | Consultant Staff | T&C | HO | IRR |
| RHD4HOASZ6APPPT130 |  | Review and Approval of As-Built Drawings for Potable Water Network for PT-Z6-APP | 12d | 2028-08-15 | 2028-08-28 | RHD4HOASZ5APPPT130, RHD4HOASZ6SUBPT130 | Consultant Staff | T&C | HO | PT |
| RHD4HOASZ6APPRD220 |  | Review and Approval of As-Built Drawings for Road Works( KERBING AND PAVEMENT ) for RD-Z6-APP | 8d | 2028-08-24 | 2028-09-02 | RHD4HOASZ5APPRD220, RHD4HOASZ6SUBRD220 | Consultant Staff | T&C | HO | RD |

| ID | WBS | Activity | Duration | Start | Finish | Predecessors | Resources | RDH4-01-001-Zones-1 | RDH4-01-001-Phases-1 | RDH4-01-001-Networks-1 |
| --- | --- | --- | --- | --- | --- | --- | --- | --- | --- | --- |
|  | 9251 | **RHD4-02-002-As Built Drawing Approvals-Z7** |  | 2028-02-09 | 2029-01-06 |  |  |  |  |  |
| RHD4HOASZ7APPLV160 |  | Review and Approval of As-Built Drawings for Low Voltage Network for LV-Z7-APP | 8d | 2028-02-09 | 2028-02-17 | RHD4HOASZ6APPSL170, RHD4HOASZ1APPLV160, RHD4HOASZ7SUBLV160 | Consultant Staff | T&C | HO | LV |
| RHD4HOASZ7APPEW100 |  | Review and Approval of As-Built Drawings for Road Plans and Profile for EW-Z7-APP | 10d | 2028-09-30 | 2028-10-10 | RHD4HOASZ1APPEW100, RHD4HOASZ7SUBEW100 | Consultant Staff | T&C | HO | RD |
| RHD4HOASZ7APPMV150 |  | Review and Approval of As-Built Drawings for Medium Voltage Network for MV-Z7-APP | 16d | 2028-09-30 | 2028-10-17 | RHD4HOASZ1APPMV150, RHD4HOASZ7SUBMV150 | Consultant Staff | T&C | HO | MV |
| RHD4HOASZ7APPTC190 |  | Review and Approval of As-Built Drawings for Telecommunications Network for TC-Z7-APP | 15d | 2028-10-07 | 2028-10-23 | RHD4HOASZ1APPTC190, RHD4HOASZ7SUBTC190 | Consultant Staff | T&C | HO | TC |
| RHD4HOASZ7APPST110 |  | Review and Approval of As-Built Drawings for Storm Water Network for ST-Z7-APP | 12d | 2028-10-23 | 2028-11-05 | RHD4HOASZ1APPST110, RHD4HOASZ7SUBST110 | Consultant Staff | T&C | HO | ST |
| RHD4HOASZ7APPIRR140 |  | Review and Approval of As-Built Drawings for Irrigation Network for IRR-Z7-APP | 10d | 2028-10-25 | 2028-11-05 | RHD4HOASZ1APPIRR140, RHD4HOASZ7SUBIRR140 | Consultant Staff | T&C | HO | IRR |
| RHD4HOASZ7APPPT130 |  | Review and Approval of As-Built Drawings for Potable Water Network for PT-Z7-APP | 10d | 2028-10-25 | 2028-11-05 | RHD4HOASZ1APPPT130, RHD4HOASZ7SUBPT130 | Consultant Staff | T&C | HO | PT |
| RHD4HOASZ7APPSW120 |  | Review and Approval of As-Built Drawings for Sewage Network for SW-Z7-APP | 8d | 2028-10-28 | 2028-11-05 | RHD4HOASZ1APPSW120, RHD4HOASZ7SUBSW120 | Consultant Staff | T&C | HO | SW |
| RHD4HOASZ7APPSL170 |  | Review and Approval of As-Built Drawings for Street Lighting Network for SL-Z7-APP | 15d | 2028-11-04 | 2028-11-20 | RHD4HOASZ1APPSL170, RHD4HOASZ7SUBSL170 | Consultant Staff | T&C | HO | SL |
| RHD4HOASZ7APPCCTV210 |  | Review and Approval of As-Built Drawings for Security Network for CCTV-Z7-APP | 16d | 2028-11-13 | 2028-11-30 | RHD4HOASZ1APPCCTV210, RHD4HOASZ7SUBCCTV210 | Consultant Staff | T&C | HO | CCTV |
| RHD4HOASZ7APPRD220 |  | Review and Approval of As-Built Drawings for Road Works( KERBING AND PAVEMENT ) for RD-Z7-APP | 6d | 2028-12-07 | 2028-12-13 | RHD4HOASZ1APPRD220, RHD4HOASZ7SUBRD220 | Consultant Staff | T&C | HO | RD |
| RHD4HOASZ7APPICT200 |  | Review and Approval of As-Built Drawings for Information and Communication Technologies Network for ICT-Z7-APP | 8d | 2028-12-28 | 2029-01-06 | RHD4HOASZ1APPICT200, RHD4HOASZ7SUBICT200 | Consultant Staff | T&C | HO | ICT |
|  | 9252 | **RHD4-02-002-As Built Drawing Approvals-Z8** |  | 2028-02-19 | 2029-01-15 |  |  |  |  |  |
| RHD4HOASZ8APPLV160 |  | Review and Approval of As-Built Drawings for Low Voltage Network for LV-Z8-APP | 8d | 2028-02-19 | 2028-03-02 | RHD4HOASZ7APPLV160, RHD4HOASZ8SUBLV160 | Consultant Staff | T&C | HO | LV |
| RHD4HOASZ8APPMV150 |  | Review and Approval of As-Built Drawings for Medium Voltage Network for MV-Z8-APP | 16d | 2028-10-18 | 2028-11-05 | RHD4HOASZ7APPMV150, RHD4HOASZ8SUBMV150 | Consultant Staff | T&C | HO | MV |
| RHD4HOASZ8APPTC190 |  | Review and Approval of As-Built Drawings for Telecommunications Network for TC-Z8-APP | 15d | 2028-10-24 | 2028-11-09 | RHD4HOASZ7APPTC190, RHD4HOASZ7APPTC190 FF, RHD4HOASZ8SUBTC190 | Consultant Staff | T&C | HO | TC |
| RHD4HOASZ8APPIRR140 |  | Review and Approval of As-Built Drawings for Irrigation Network for IRR-Z8-APP | 8d | 2028-11-06 | 2028-11-14 | RHD4HOASZ7APPIRR140, RHD4HOASZ8SUBIRR140 | Consultant Staff | T&C | HO | IRR |
| RHD4HOASZ8APPPT130 |  | Review and Approval of As-Built Drawings for Potable Water Network for PT-Z8-APP | 8d | 2028-11-06 | 2028-11-14 | RHD4HOASZ7APPPT130, RHD4HOASZ8SUBPT130 | Consultant Staff | T&C | HO | PT |
| RHD4HOASZ8APPST110 |  | Review and Approval of As-Built Drawings for Storm Water Network for ST-Z8-APP | 8d | 2028-11-06 | 2028-11-14 | RHD4HOASZ7APPST110, RHD4HOASZ8SUBST110 | Consultant Staff | T&C | HO | ST |
| RHD4HOASZ8APPSW120 |  | Review and Approval of As-Built Drawings for Sewage Network for SW-Z8-APP | 8d | 2028-11-06 | 2028-11-14 | RHD4HOASZ7APPSW120, RHD4HOASZ8SUBSW120 | Consultant Staff | T&C | HO | SW |
| RHD4HOASZ8APPSL170 |  | Review and Approval of As-Built Drawings for Street Lighting Network for SL-Z8-APP | 15d | 2028-11-21 | 2028-12-07 | RHD4HOASZ7APPSL170, RHD4HOASZ8SUBSL170 | Consultant Staff | T&C | HO | SL |
| RHD4HOASZ8APPCCTV210 |  | Review and Approval of As-Built Drawings for Security Network for CCTV-Z8-APP | 16d | 2028-12-02 | 2028-12-19 | RHD4HOASZ7APPCCTV210, RHD4HOASZ8SUBCCTV210 | Consultant Staff | T&C | HO | CCTV |
| RHD4HOASZ8APPEW100 |  | Review and Approval of As-Built Drawings for Road Plans and Profile for EW-Z8-APP | 8d | 2028-12-12 | 2028-12-20 | RHD4HOASZ7APPEW100, RHD4HOASZ8SUBEW100 | Consultant Staff | T&C | HO | RD |
| RHD4HOASZ8APPRD220 |  | Review and Approval of As-Built Drawings for Road Works( KERBING AND PAVEMENT ) for RD-Z8-APP | 12d | 2028-12-14 | 2028-12-27 | RHD4HOASZ8SUBRD220, RHD4HOASZ7APPRD220 | Consultant Staff | T&C | HO | RD |
| RHD4HOASZ8APPICT200 |  | Review and Approval of As-Built Drawings for Information and Communication Technologies Network for ICT-Z8-APP | 8d | 2029-01-07 | 2029-01-15 | RHD4HOASZ7APPICT200, RHD4HOASZ8SUBICT200 | Consultant Staff | T&C | HO | ICT |

| ID | WBS | Activity | Duration | Start | Finish | Predecessors | Resources | RDH4-01-001-Zones-1 | RDH4-01-001-Phases-1 | RDH4-01-001-Networks-1 |
| --- | --- | --- | --- | --- | --- | --- | --- | --- | --- | --- |
|  | 9253 | **RHD4-02-002-As Built Drawing Approvals-Z9** |  | 2028-03-04 | 2029-01-24 |  |  |  |  |  |
| RHD4HOASZ9APPLV160 |  | Review and Approval of As-Built Drawings for Low Voltage Network for LV-Z9-APP | 8d | 2028-03-04 | 2028-03-12 | RHD4HOASZ8APPLV160, RHD4HOASZ9SUBLV160 | Consultant Staff | T&C | HO | LV |
| RHD4HOASZ9APPMV150 |  | Review and Approval of As-Built Drawings for Medium Voltage Network for MV-Z9-APP | 16d | 2028-11-06 | 2028-11-23 | RHD4HOASZ8APPMV150, RHD4HOASZ9SUBMV150 | Consultant Staff | T&C | HO | MV |
| RHD4HOASZ9APPTC190 |  | Review and Approval of As-Built Drawings for Telecommunications Network for TC-Z9-APP | 15d | 2028-11-11 | 2028-11-27 | RHD4HOASZ8APPTC190, RHD4HOASZ8APPTC190 FF, RHD4HOASZ9SUBTC190 | Consultant Staff | T&C | HO | TC |
| RHD4HOASZ9APPIRR140 |  | Review and Approval of As-Built Drawings for Irrigation Network for IRR-Z9-APP | 8d | 2028-11-15 | 2028-11-23 | RHD4HOASZ8APPIRR140, RHD4HOASZ9SUBIRR140 | Consultant Staff | T&C | HO | IRR |
| RHD4HOASZ9APPPT130 |  | Review and Approval of As-Built Drawings for Potable Water Network for PT-Z9-APP | 8d | 2028-11-15 | 2028-11-23 | RHD4HOASZ8APPPT130, RHD4HOASZ9SUBPT130 | Consultant Staff | T&C | HO | PT |
| RHD4HOASZ9APPST110 |  | Review and Approval of As-Built Drawings for Storm Water Network for ST-Z9-APP | 8d | 2028-11-15 | 2028-11-23 | RHD4HOASZ8APPST110, RHD4HOASZ9SUBST110 | Consultant Staff | T&C | HO | ST |
| RHD4HOASZ9APPSW120 |  | Review and Approval of As-Built Drawings for Sewage Network for SW-Z9-APP | 8d | 2028-11-15 | 2028-11-23 | RHD4HOASZ8APPSW120, RHD4HOASZ9SUBSW120 | Consultant Staff | T&C | HO | SW |
| RHD4HOASZ9APPSL170 |  | Review and Approval of As-Built Drawings for Street Lighting Network for SL-Z9-APP | 15d | 2028-12-09 | 2028-12-25 | RHD4HOASZ8APPSL170, RHD4HOASZ9SUBSL170 | Consultant Staff | T&C | HO | SL |
| RHD4HOASZ9APPCCTV210 |  | Review and Approval of As-Built Drawings for Security Network for CCTV-Z9-APP | 16d | 2028-12-20 | 2029-01-07 | RHD4HOASZ8APPCCTV210, RHD4HOASZ9SUBCCTV210 | Consultant Staff | T&C | HO | CCTV |
| RHD4HOASZ9APPEW100 |  | Review and Approval of As-Built Drawings for Road Plans and Profile for EW-Z9-APP | 8d | 2028-12-21 | 2028-12-30 | RHD4HOASZ8APPEW100, RHD4HOASZ9SUBEW100 | Consultant Staff | T&C | HO | RD |
| RHD4HOASZ9APPRD220 |  | Review and Approval of As-Built Drawings for Road Works( KERBING AND PAVEMENT ) for RD-Z9-APP | 16d | 2028-12-28 | 2029-01-15 | RHD4HOASZ8APPRD220, RHD4HOASZ9SUBRD220 | Consultant Staff | T&C | HO | RD |
| RHD4HOASZ9APPICT200 |  | Review and Approval of As-Built Drawings for Information and Communication Technologies Network for ICT-Z9-APP | 8d | 2029-01-16 | 2029-01-24 | RHD4HOASZ8APPICT200, RHD4HOASZ9SUBICT200 | Consultant Staff | T&C | HO | ICT |
|  | 9254 | **RHD4-02-002-As Built Drawing Approvals-Tunne 1 - TUN1** |  | 2028-05-20 | 2028-06-29 |  |  |  |  |  |
| RHD4HOASTUN1APP1000 |  | Review and Approval of As-Built Drawings for TUNNEL 1 (PLANS) -Z5 for -TUN1-APP | 12d | 2028-05-20 | 2028-06-01 | RHD4HOASZ9APPLV160, RHD4HOASTUN1SUB1000 | Consultant Staff | T&C | HO | TUN1 |
| RHD4HOASTUN1APP1100 |  | Review and Approval of As-Built Drawings for TUNNEL 1 (SECTIONS) -Z5 for -TUN1-APP | 12d | 2028-06-03 | 2028-06-15 | RHD4HOASTUN1APP1000, RHD4HOASTUN1SUB1100 | Consultant Staff | T&C | HO | TUN1 |
| RHD4HOASTUN1APP1200 |  | Review and Approval of As-Built Drawings for TUNNEL 1 (BBS) -Z5 for -TUN1-APP | 12d | 2028-06-17 | 2028-06-29 | RHD4HOASTUN1APP1100, RHD4HOASTUN1SUB1200 | Consultant Staff | T&C | HO | TUN1 |
|  | 9256 | **RHD4-02-002-As Built Drawing Approvals-Sewage Lift Station 1 - SWL1** |  | 2028-05-02 | 2028-06-29 |  |  |  |  |  |
| RHD4HOASSWL1APP1000 |  | Review and Approval of As-Built Drawings for Sewage Lift Station 1 - Z3 - Structure Package for -SWL1-APP | 12d | 2028-05-02 | 2028-05-18 | RHD4HOASSWL1SUB1000 | Consultant Staff | T&C | HO | STR |
| RHD4HOASSWL1APP1100 |  | Review and Approval of As-Built Drawings for Sewage Lift Station 1 - Z3 - Architecture Package for -SWL1-APP | 12d | 2028-05-20 | 2028-06-01 | RHD4HOASSWL1APP1000, RHD4HOASSWL1SUB1100 | Consultant Staff | T&C | HO | ARC |
| RHD4HOASSWL1APP1200 |  | Review and Approval of As-Built Drawings for Sewage Lift Station 1 - Z3 - Mechanical Package for -SWL1-APP | 12d | 2028-06-03 | 2028-06-15 | RHD4HOASSWL1APP1100, RHD4HOASSWL1SUB1200 | Consultant Staff | T&C | HO | MECH |
| RHD4HOASSWL1APP1300 |  | Review and Approval of As-Built Drawings for Sewage Lift Station 1 - Z3 - Electrical Package for -SWL1-APP | 12d | 2028-06-17 | 2028-06-29 | RHD4HOASSWL1APP1200, RHD4GNCCTVZ7FT2000, RHD4GNCCTVZ8FT2000, RHD4CZ7L015RD6100, RHD4HOASSWL1SUB1300 | Consultant Staff | T&C | HO | ELEC |
|  | 9258 | **RHD4-02-002-As Built Drawing Approvals-Storm Lift Station 1 - STL1** |  | 2028-08-24 | 2028-10-24 |  |  |  |  |  |
| RHD4HOASSTL1APP1000 |  | Review and Approval of As-Built Drawings for Storm Lift Station 1 - Z5 - Structure Package for -STL1-APP | 5d | 2028-08-24 | 2028-08-29 | RHD4HOASSTL1SUB1000 | Consultant Staff | T&C | HO | STR |
| RHD4HOASSTL1APP1100 |  | Review and Approval of As-Built Drawings for Storm Lift Station 1 - Z5 - Architecture Package for -STL1-APP | 5d | 2028-10-08 | 2028-10-12 | RHD4HOASSTL1APP1000, RHD4HOASSTL1SUB1100 | Consultant Staff | T&C | HO | ARC |
| RHD4HOASSTL1APP1200 |  | Review and Approval of As-Built Drawings for Storm Lift Station 1 - Z5 - Mechanical Package for -STL1-APP | 5d | 2028-10-14 | 2028-10-18 | RHD4HOASSTL1APP1100, RHD4HOASSTL1SUB1200 | Consultant Staff | T&C | HO | MECH |
| RHD4HOASSTL1APP1300 |  | Review and Approval of As-Built Drawings for Storm Lift Station 1 - Z5 - Electrical Package for -STL1-APP | 5d | 2028-10-19 | 2028-10-24 | RHD4HOASSTL1APP1200, RHD4HOASSTL1SUB1300 | Consultant Staff | T&C | HO | ELEC |

| ID | WBS | Activity | Duration | Start | Finish | Predecessors | RDH4-01-001-Zones-1 | RDH4-01-001-Phases-1 | RDH4-01-001-Networks-1 |
| --- | --- | --- | --- | --- | --- | --- | --- | --- | --- |
|  | 9260 | **RHD4-02-002-Operational Spares - OS** |  | 2028-11-04 | 2028-11-09 |  |  |  |  |
| RHD4GNHOOS1214 |  | Supply Operational Spares - OS | 6d | 2028-11-04 | 2028-11-09 | RHD4GNHOFM1217 | T&C | HO | DMOB |
|  | 9261 | **RHD4-02-002-Warranties and Guarantees - WG** |  | 2028-11-11 | 2028-11-23 |  |  |  |  |
| RHD4GNHOWG1215 |  | Warranties and Guarantess - WG | 12d | 2028-11-11 | 2028-11-23 | RHD4GNHOOS1214 | T&C | HO | DMOB |
|  | 9262 | **RHD4-02-002-Training and Manuals** |  | 2028-10-25 | 2028-11-27 |  |  |  |  |
|  | 9263 | **RHD4-02-002-Training** |  | 2028-11-25 | 2028-11-27 |  |  |  |  |
| RHD4GNHOFM1216 |  | Training - FM | 3d | 2028-11-25 | 2028-11-27 | RHD4GNHOWG1215 | T&C | HO | DMOB |
|  | 9264 | **RHD4-02-002-Manuals** |  | 2028-10-25 | 2028-11-02 |  |  |  |  |
| RHD4GNHOFM1217 |  | Manuals - FM | 8d | 2028-10-25 | 2028-11-02 | RHD4HOASSTL1APP1300, RHD4HOASZ9SUBST110 | T&C | HO | DMOB |
|  | 9265 | **RHD4-02-002-Demobilization** |  | 2028-12-31 | 2029-01-25 |  |  |  |  |
|  | 9266 | **RHD4-02-002-Demobilization of Manpoer** |  | 2028-12-31 | 2029-01-03 |  |  |  |  |
| RHD4GNHODMOB1000 |  | Demobilize Manpower - DMOB | 4d | 2028-12-31 | 2029-01-03 | RHD4GNHOFM1217 SS, RHD4GNHOFM1216 SS, RHD4HOASZ2APPRD220, RHD4HOASZ2APPEW100, RHD4HOASZ2APPPT130, RHD4HOASZ2APPIRR140, RHD4HOASZ2APPICT200, RHD4HOASZ2APPSW120, RHD4HOASZ2APPST110, RHD4HOASZ1APPICT200, RHD4HOASZ1APPIRR140, RHD4HOASZ1APPPT130, RHD4HOASZ1APPEW100, RHD4HOASZ3APPRD220, RHD4HOASZ3APPEW100, RHD4HOASZ4APPRD220, RHD4HOASZ4APPEW100, RHD4HOASZ5APPEW100, RHD4HOASZ9APPEW100, RHD4HOASZ8APPRD220, RHD4HOASZ8APPEW100, RHD4HOASZ6SUBTC190 | T&C | HO | DMOB |
|  | 9267 | **RHD4-02-002-Removal of Euipment from the Site** |  | 2029-01-04 | 2029-01-08 |  |  |  |  |
| RHD4GNHODMOB1100 |  | Removal Equipments from The site - DMOB | 4d | 2029-01-04 | 2029-01-08 | RHD4GNHODMOB1000 | T&C | HO | DMOB |
|  | 9268 | **RHD4-02-002-Site Clean - up** |  | 2029-01-09 | 2029-01-14 |  |  |  |  |
| RHD4GNHODMOB1200 |  | Site Clean Up - DMOB | 5d | 2029-01-09 | 2029-01-14 | RHD4GNHODMOB1100, RHD4GNHOWG1215 | T&C | HO | DMOB |
|  | 9269 | **RHD4-02-002-Removal of Site Offices and Structure** |  | 2029-01-15 | 2029-01-18 |  |  |  |  |
| RHD4GNHODMOB1300 |  | Removal of Site Offices and Structures - DMOB | 4d | 2029-01-15 | 2029-01-18 | RHD4GNHODMOB1200 | T&C | HO | DMOB |
|  | 9270 | **RHD4-02-002-Restoration of Ground Surfaces** |  | 2029-01-20 | 2029-01-25 |  |  |  |  |
| RHD4GNHODMOB1400 |  | Restoration of Ground Surface - DMOB | 6d | 2029-01-20 | 2029-01-25 | RHD4GNHODMOB1300 | T&C | HO | DMOB |

## Activity codes

| Code | Value | Meaning |
| --- | --- | --- |
| RDH4-01-001-Blocks-1 | B01 | BLOCK-01 |
| RDH4-01-001-Blocks-1 | B02 | BLOCK-02 |
| RDH4-01-001-Blocks-1 | B03 | BLOCK-03 |
| RDH4-01-001-Blocks-1 | B04 | BLOCK-04 |
| RDH4-01-001-Blocks-1 | B05 | BLOCK-05 |
| RDH4-01-001-Blocks-1 | B06 | BLOCK-06 |
| RDH4-01-001-Blocks-1 | B07 | BLOCK-07 |
| RDH4-01-001-Blocks-1 | B08 | BLOCK-08 |
| RDH4-01-001-Blocks-1 | B09 | BLOCK-09 |
| RDH4-01-001-Blocks-1 | B10 | BLOCK-10 |
| RDH4-01-001-Blocks-1 | B11 | BLOCK-11 |
| RDH4-01-001-Blocks-1 | B12 | BLOCK-12 |
| RDH4-01-001-Blocks-1 | B13 | BLOCK-13 |
| RDH4-01-001-Blocks-1 | B14 | BLOCK-14 |
| RDH4-01-001-Blocks-1 | B15 | BLOCK-15 |
| RDH4-01-001-Blocks-1 | B16 | BLOCK-16 |
| RDH4-01-001-Blocks-1 | B17 | BLOCK-17 |
| RDH4-01-001-Blocks-1 | B18 | BLOCK-18 |
| RDH4-01-001-Blocks-1 | B19 | BLOCK-19 |
| RDH4-01-001-Blocks-1 | B20 | BLOCK-20 |
| RDH4-01-001-Blocks-1 | B21 | BLOCK-21 |
| RDH4-01-001-Blocks-1 | B22 | BLOCK-22 |
| RDH4-01-001-Blocks-1 | B23 | BLOCK-23 |
| RDH4-01-001-Blocks-1 | B24 | BLOCK-24 |
| RDH4-01-001-Blocks-1 | B25 | BLOCK-25 |
| RDH4-01-001-Blocks-1 | B26 | BLOCK-26 |
| RDH4-01-001-Blocks-1 | B27 | BLOCK-27 |
| RDH4-01-001-Blocks-1 | B28 | BLOCK-28 |
| RDH4-01-001-Blocks-1 | B29 | BLOCK-29 |
| RDH4-01-001-Blocks-1 | B30 | BLOCK-30 |
| RDH4-01-001-Blocks-1 | B31 | BLOCK-31 |
| RDH4-01-001-Blocks-1 | B32 | BLOCK-32 |
| RDH4-01-001-Blocks-1 | B33 | BLOCK-33 |
| RDH4-01-001-Blocks-1 | B34 | BLOCK-34 |
| RDH4-01-001-Blocks-1 | B35 | BLOCK-35 |
| RDH4-01-001-Blocks-1 | B36 | BLOCK-36 |
| RDH4-01-001-Blocks-1 | BZ3 | BLOCK-Z3 |
| RDH4-01-001-Blocks-1 | BZ4 | BLOCK-Z4 |
| RDH4-01-001-Blocks-1 | BZ6 | BLOCK-Z6 |
| RDH4-01-001-MENEM | AFT | After Asphatl |
| RDH4-01-001-MENEM | bef | Before Asphatl |
| RDH4-01-001-Networks-1 | ARC | Architecture Package |
| RDH4-01-001-Networks-1 | BF | Backfill |
| RDH4-01-001-Networks-1 | CCTV | Security Network |
| RDH4-01-001-Networks-1 | DM | Demolition |
| RDH4-01-001-Networks-1 | DMOB | Demobilization |
| RDH4-01-001-Networks-1 | ELEC | Electrical Package |
| RDH4-01-001-Networks-1 | EW | Earthwork |
| RDH4-01-001-Networks-1 | EX | Excavation |
| RDH4-01-001-Networks-1 | GN | General |
| RDH4-01-001-Networks-1 | ICT | Information and Communication Technologies |
| RDH4-01-001-Networks-1 | IRR | Irrigation Network |
| RDH4-01-001-Networks-1 | LV | Low Voltage Network |
| RDH4-01-001-Networks-1 | MAT | Materials |
| RDH4-01-001-Networks-1 | MECH | Mechanical Package |
| RDH4-01-001-Networks-1 | MV | Medium Voltage Network |
| RDH4-01-001-Networks-1 | PT | Potable Water Network |
| RDH4-01-001-Networks-1 | RA | Roundabout Earthwork |
| RDH4-01-001-Networks-1 | RD | Road Network |
| RDH4-01-001-Networks-1 | RW | Road Earthwork |
| RDH4-01-001-Networks-1 | SL | Street Lighting Network |
| RDH4-01-001-Networks-1 | ST | Storm Network |
| RDH4-01-001-Networks-1 | STL1 | Storm Lift Station 1 |
| RDH4-01-001-Networks-1 | STR | Structure Package |
| RDH4-01-001-Networks-1 | SW | Sewage Network |
| RDH4-01-001-Networks-1 | SWL1 | Sewage Lift Station 1 |
| RDH4-01-001-Networks-1 | TC | Telecom Network |
| RDH4-01-001-Networks-1 | TUN | Tunnels |
| RDH4-01-001-Networks-1 | TUN1 | Tunnel 1 |
| RDH4-01-001-Phases-1 | CONS | Construction |
| RDH4-01-001-Phases-1 | ENGG | Engineering |
| RDH4-01-001-Phases-1 | FT | Testing and Commissioning |
| RDH4-01-001-Phases-1 | GN | General |
| RDH4-01-001-Phases-1 | HO | Close out |
| RDH4-01-001-Phases-1 | PROC | Procurement |
| RDH4-01-001-Road and Block Names-1 | A011 | RD-A-1 /1 |
| RDH4-01-001-Road and Block Names-1 | A012 | RD-A-1 /2 |
| RDH4-01-001-Road and Block Names-1 | A013 | RD-A-1 /3 |
| RDH4-01-001-Road and Block Names-1 | A014 | RD-A-1 /4 |
| RDH4-01-001-Road and Block Names-1 | A015 | RD-A-1 /5 |
| RDH4-01-001-Road and Block Names-1 | A02 | RD-A-2 |
| RDH4-01-001-Road and Block Names-1 | B01 | BLOCK-01 |
| RDH4-01-001-Road and Block Names-1 | B02 | BLOCK-02 |
| RDH4-01-001-Road and Block Names-1 | B03 | BLOCK-03 |
| RDH4-01-001-Road and Block Names-1 | B04 | BLOCK-04 |
| RDH4-01-001-Road and Block Names-1 | B05 | BLOCK-05 |
| RDH4-01-001-Road and Block Names-1 | B06 | BLOCK-06 |
| RDH4-01-001-Road and Block Names-1 | B07 | BLOCK-07 |
| RDH4-01-001-Road and Block Names-1 | B08 | BLOCK-08 |
| RDH4-01-001-Road and Block Names-1 | B09 | BLOCK-09 |
| RDH4-01-001-Road and Block Names-1 | B10 | BLOCK-10 |
| RDH4-01-001-Road and Block Names-1 | B11 | BLOCK-11 |
| RDH4-01-001-Road and Block Names-1 | B12 | BLOCK-12 |
| RDH4-01-001-Road and Block Names-1 | B13 | BLOCK-13 |
| RDH4-01-001-Road and Block Names-1 | B14 | BLOCK-14 |
| RDH4-01-001-Road and Block Names-1 | B15 | BLOCK-15 |
| RDH4-01-001-Road and Block Names-1 | B16 | BLOCK-16 |
| RDH4-01-001-Road and Block Names-1 | B17 | BLOCK-17 |
| RDH4-01-001-Road and Block Names-1 | B18 | BLOCK-18 |
| RDH4-01-001-Road and Block Names-1 | B19 | BLOCK-19 |
| RDH4-01-001-Road and Block Names-1 | B20 | BLOCK-20 |
| RDH4-01-001-Road and Block Names-1 | B21 | BLOCK-21 |
| RDH4-01-001-Road and Block Names-1 | B22 | BLOCK-22 |
| RDH4-01-001-Road and Block Names-1 | B23 | BLOCK-23 |
| RDH4-01-001-Road and Block Names-1 | B24 | BLOCK-24 |
| RDH4-01-001-Road and Block Names-1 | B25 | BLOCK-25 |
| RDH4-01-001-Road and Block Names-1 | B26 | BLOCK-26 |
| RDH4-01-001-Road and Block Names-1 | B27 | BLOCK-27 |
| RDH4-01-001-Road and Block Names-1 | B28 | BLOCK-28 |
| RDH4-01-001-Road and Block Names-1 | B29 | BLOCK-29 |
| RDH4-01-001-Road and Block Names-1 | B30 | BLOCK-30 |
| RDH4-01-001-Road and Block Names-1 | B31 | BLOCK-31 |
| RDH4-01-001-Road and Block Names-1 | B32 | BLOCK-32 |
| RDH4-01-001-Road and Block Names-1 | B33 | BLOCK-33 |
| RDH4-01-001-Road and Block Names-1 | B34 | BLOCK-34 |
| RDH4-01-001-Road and Block Names-1 | B35 | BLOCK-35 |
| RDH4-01-001-Road and Block Names-1 | B36 | BLOCK-36 |
| RDH4-01-001-Road and Block Names-1 | BZ3 | BLOCK-Z3 |
| RDH4-01-001-Road and Block Names-1 | BZ4 | BLOCK-Z4 |
| RDH4-01-001-Road and Block Names-1 | BZ6 | BLOCK-Z6 |
| RDH4-01-001-Road and Block Names-1 | C011 | RD-C-1 /1 |
| RDH4-01-001-Road and Block Names-1 | C012 | RD-C-1 /2 |
| RDH4-01-001-Road and Block Names-1 | C013 | RD-C-1/3 |
| RDH4-01-001-Road and Block Names-1 | C014 | RD-C-1/4 |
| RDH4-01-001-Road and Block Names-1 | C02 | RD-C-2 |
| RDH4-01-001-Road and Block Names-1 | C031 | RD-C-3/1 |
| RDH4-01-001-Road and Block Names-1 | C032 | RD-C-3/2 |
| RDH4-01-001-Road and Block Names-1 | C051 | RD-C-5 /1 |
| RDH4-01-001-Road and Block Names-1 | C052 | RD-C-5 /2 |
| RDH4-01-001-Road and Block Names-1 | C061 | RD-C-6 /1 |
| RDH4-01-001-Road and Block Names-1 | C062 | RD-C-6 /2 |
| RDH4-01-001-Road and Block Names-1 | C071 | RD-C-7/1 |
| RDH4-01-001-Road and Block Names-1 | C081 | RD-C-8 /1 |
| RDH4-01-001-Road and Block Names-1 | C082 | RD-C-8 /2 |
| RDH4-01-001-Road and Block Names-1 | C083 | RD-C-8 /3 |
| RDH4-01-001-Road and Block Names-1 | L01 | RD-L-1 |
| RDH4-01-001-Road and Block Names-1 | L011 | RD-L-11 |
| RDH4-01-001-Road and Block Names-1 | L014 | RD-L-14 |
| RDH4-01-001-Road and Block Names-1 | L015 | RD-L-15 |
| RDH4-01-001-Road and Block Names-1 | L016 | RD-L-16 |
| RDH4-01-001-Road and Block Names-1 | L02 | RD-L-2 |
| RDH4-01-001-Road and Block Names-1 | L03 | RD-L-3 |
| RDH4-01-001-Road and Block Names-1 | L04 | RD-L-4 |
| RDH4-01-001-Road and Block Names-1 | L05 | RD-L-5 |
| RDH4-01-001-Road and Block Names-1 | L06 | RD-L-6 |
| RDH4-01-001-Road and Block Names-1 | L07 | RD-L-7 |
| RDH4-01-001-Road and Block Names-1 | L08 | RD-L-8 |
| RDH4-01-001-Road and Block Names-1 | L09 | RD-L-9 |
| RDH4-01-001-Road and Block Names-1 | L101 | RD-L-10/1 |
| RDH4-01-001-Road and Block Names-1 | L102 | RD-L-10/2 |
| RDH4-01-001-Road and Block Names-1 | L122 | RD-L-12/2 |
| RDH4-01-001-Road and Block Names-1 | L131 | RD-L-13/1 |
| RDH4-01-001-Road and Block Names-1 | RA01 | ROUND-01 |
| RDH4-01-001-Road and Block Names-1 | RA02 | ROUND-02 |
| RDH4-01-001-Road and Block Names-1 | RA03 | ROUND-03 |
| RDH4-01-001-Road and Block Names-1 | RA04 | ROUND-04 |
| RDH4-01-001-Road and Block Names-1 | RA05 | ROUND-05 |
| RDH4-01-001-Road and Block Names-1 | RA07 | ROUND-07 |
| RDH4-01-001-Zones-1 | STL1 | Storm Lift Station 1 |
| RDH4-01-001-Zones-1 | SWL1 | Sewage Lift Station 1 |
| RDH4-01-001-Zones-1 | T&C | Testing and Commissioning and Close out |
| RDH4-01-001-Zones-1 | TUN1 | Tunnel 1 |
| RDH4-01-001-Zones-1 | Z1 | Zone 1 |
| RDH4-01-001-Zones-1 | Z2 | Zone 2 |
| RDH4-01-001-Zones-1 | Z3 | Zone 3 |
| RDH4-01-001-Zones-1 | Z4 | Zone 4 |
| RDH4-01-001-Zones-1 | Z5 | Zone 5 |
| RDH4-01-001-Zones-1 | Z6 | Zone 6 |
| RDH4-01-001-Zones-1 | Z7 | Zone 7 |
| RDH4-01-001-Zones-1 | Z8 | Zone 8 |
| RDH4-01-001-Zones-1 | Z9 | Zone 9 |
