# Developing Infrastructure Networks in Riyadh's Fourth Industrial City-RVSD#01-REV01-1 baseline modif

Schedule from Primavera P6, 2025-11-30 to 2029-01-17, data date 2026-11-09, costs in USD, A marks actual dates.
Must finish by 2028-05-30

## Calendars

- RHD4 - (6 Days - 8 Hours)-103: Mon-Thu 08:00-16:00; Fri off; Sat-Sun 08:00-16:00. Exceptions (off unless hours are given): 2026-02-22, 2026-03-21 to 2026-03-22, 2026-05-26 to 2026-05-28, 2026-09-23, 2027-02-22, 2027-03-09 to 2027-03-11, 2027-05-15 to 2027-05-18, 2027-09-23, 2028-02-22, 2028-02-27 to 2028-02-29, 2028-05-04, 2028-05-06 to 2028-05-07, 2028-09-23.
- RHD4 - (7 Days - 8 Hours)-48: Mon-Sun 08:00-16:00.
- RHD4 - (5 Days - 8 Hours)-48: Mon-Thu 08:00-16:00; Fri-Sat off; Sun 08:00-16:00. Exceptions (off unless hours are given): 2026-02-22, 2026-03-21 to 2026-03-22, 2026-05-26 to 2026-05-28, 2026-09-23, 2027-02-22, 2027-03-09 to 2027-03-11, 2027-05-15 to 2027-05-18, 2027-09-23, 2028-02-22, 2028-02-27 to 2028-02-29, 2028-05-04, 2028-05-06 to 2028-05-07, 2028-09-23.

## Resources

| Resource | Group | Unit | Rate |
| --- | --- | --- | --- |
| Skilled labor | labor |  |  |
| Unskilled Labor | labor |  |  |
| Equipment Opreator | labor |  |  |
| Boom Truck | equipment |  |  |
| Manhole Type 1 - ICT | material | nr | 5393 |
| Manhole Type 2 - ICT | material | nr | 5393 |
| Excavator-Poclain | equipment |  |  |
| Dump Truck | equipment |  |  |
| Road crossing ducts, (2*50mm) HDPE -ICT | material | m | 38 |
| Carpenter | labor |  |  |
| Steel Fixer | labor |  |  |
| Concrete Mixer Truck | equipment |  |  |
| Concrete Pump | equipment |  |  |
| Electrician | labor |  |  |
| Water Truck | equipment |  |  |
| Roller compactor | equipment |  |  |
| Grader | equipment |  |  |
| Subgrade | material | m3 | 19 |
| Aggregate Base Courses | material | m3 | 57 |
| Bobcat | equipment |  |  |
| Asphalt Paver | equipment |  |  |
| Rubber Compactor | equipment |  |  |
| MC1/RC2 Sprinkler | equipment |  |  |
| Bituminous base course (Grading I - Class A), including Prime coat (MC1) & tack coate (RC2) | material | m3 | 478 |
| Bituminous concrete wearing course, (Grading I - Class A), including tack coat (RC2) | material | m3 | 543 |
| Mason | labor |  |  |
| Precast Concrete Curbstone, type K1 | material | m | 55 |
| Road Marking Machine | equipment |  |  |
| Retroreflective Thermoplastic White Traffic Markings | material | m2 | 31 |
| Retroreflective Thermoplastic Yellow, Traffic Markings | material | m2 | 31 |
| Rumble strip | material | m | 123 |
| Retroreflective raised pavement markers (cat eyes) | material | nr | 34 |
| Traffic signs, ground mounted, 1 Sheet Aluminium, (breakaway)Single post | material | nr | 1226 |
| HDPE (315mm Diameter) - TSE - Depth: less than 1.5m | material | m | 293 |
| HDPE (315mm Diameter) - TSE - Depth: more than 1.51m | material | m | 325 |
| Plumber | labor |  |  |
| Excavation for Trench size 60cm wide and 80cm deep ( for 2 cables) | material | m3 | 10 |
| Cable Laying Machine | equipment |  |  |
| Cable 13.8 kV 3Cx 500 mm² Al/XLPE,/LLDPE / Unarmored | material | m | 159 |
| Straight joints cables for 13.8 kv 3Cx 500 mm², Al /XLPE/LLDPE | material | Unit | 3248 |
| Cable, Copper 4x10mm2/ CU/XLPE/SWA/PVC + 1x10mm2 CU/PVC | material | m | 49 |
| Lighting polesdouble arms, height of ( 12 ) meters | material | Unit | 4572 |
| Street Lighting( LED) Luminaire of Output ?18553 lumen | material | Unit | 637 |
| Including lighting poles circuits - ER | material | Unit | 613 |
| (6*50mm) HDPE ducts -TC | material | m | 88 |
| Manhole Type 1 - TC | material | nr | 6741 |
| Manhole Type 2 - TC | material | nr | 6741 |
| (2*50mm) HDPE ducts -ICT | material | m | 38 |
| GRP (800mm Diameter) - ST - Depth less than 1.5 m | material | m | 653 |
| GRP (800mm Diameter) - ST - Depth: 1.51m - 2.5m | material | m | 702 |
| GRP (900mm Diameter) - ST - Depth less than 1.5 m | material | m | 749 |
| GRP (900mm Diameter) - ST - Depth: 1.51m - 2.5m | material | m | 797 |
| UPVC (300mm Diameter) - ST - Depth less than 1.5 | material | m | 303 |
| MH (1500mm Diameter) - ST - depth 1.50 - 2.5m | material | nr | 14586 |
| MH (2000mm Diameter) - ST - depth 2.51 - 3.5m | material | nr | 21847 |
| Pipe Encasement - ST | material | m3 | 506 |
| Single Catch basin - ST | material | nr | 3731 |
| HDPE (110mm Diameter) - PT - Depth: less than 1.5m | material | m | 85 |
| HDPE (160mm Diameter) - PT - Depth: less than 1.5m | material | m | 107 |
| HDPE (160mm Diameter) - PT - Depth: 1.51m - 2.5m | material | m | 142 |
| Gate valves dia 100 mm - PT | material | nr | 1109 |
| Gate valves dia 150 mm - PT | material | nr | 1580 |
| 3-outlet fire hydrant (2 x 2.5 inch and 1 x 4.5 inch) in the form of a separate dry vacuum cylinder | material | nr | 12620 |
| HDPE (160mm Diameter) - TSE - Depth: less than 1.5m | material | m | 123 |
| Gate valves dia 100 mm - TSE | material | nr | 1580 |
| Gate valves dia 250 mm - TSE | material | nr | 3175 |
| Duct bank for LV cables UPVC (4xø110mm) | material | m | 299 |
| Road Crossing Duct for Street Lighting cables UPVC (2x?110mm) | material | m | 202 |
| Road Crossing Duct for Street Lighting cables UPVC (4x?110mm) | material | m | 264 |
| Drawpit with medium duty steel cover, size600x600x900mm, | material | Unit | 2451 |
| Lighting poles single arms, height of ( 10 ) meters | material | Unit | 3407 |
| Street Lighting( LED) Luminaire of Output ?10898 lumen | material | Unit | 588 |
| Street Lighting Feeder pillars - ER | material | Unit | 1128 |
| (6*50mm+2*32mm) HDPE ducts -TC | material | m | 109 |
| (6*50mm+4*32mm) HDPE ducts -TC | material | m | 119 |
| (2*32mm) HDPE ducts -TC | material | m | 34 |
| (2*50mm+2*32mm) HDPE ducts -ICT | material | m | 72 |
| (2*50mm+4*32mm) HDPE ducts -ICT | material | m | 86 |
| (2*32mm) HDPE ducts -ICT | material | m | 34 |
| Civil works Digging, trenching, laying pipes Meter with supply and installation of Manholes and for power feeding sources related to all towers and poles – (from 35-meter pole to control room and from related UPS camersa distribution boards till overall 2 | material | m | 116 |
| 25 Meters pole for CCTV Cameras | material | nr | 140902 |
| Supply and Installation of minimum 4 Protection Post for each pole or tower with pipe ?220*6mm THK. | material | nr | 4903 |
| Outdoor Camera, 5MP resolution, day/night, fixed bullet camera providing Forensic WDR. | material | nr | 8463 |
| Outdoor PTZ with IR, HDTV 1080 and 31x optical, 12x digital, total 372x zoom, H264/265 with Motion JPEG. | material | nr | 27875 |
| Outdoor ready IP66-rated midspan for PTZ Camera (The outdoor- ready midspan should be IP66/IP67- and NEMA 4X-rated | material | nr | 2974 |
| 1.2KVA Industrial type UPS located at FEC remote poles | material | nr | 6129 |
| Pole mounted Filed Equipment cabinet (FEC) , with fan and ventilation, NEMEX 4X ,door, minimum size (600x600x400mm) , the cabinet/enclosurE | material | nr | 7183 |
| 8 Port Industrial PoE Switch 10/1000BaseT (-40 deg to +70 deg. Celsius) for remote poles and as specifiedin item 15. | material | nr | 10586 |
| UTP CAT6 Patch Cord , connect the industrial switch with the cameras, and radio wireless antenna | material | nr | 636 |
| Interlock 80 mm thick Pavers for parking including sand fill | material | m2 | 74 |
| Traffic signs, ground mounted, 1 Sheets Aluminium, (breakaway)Double post | material | nr | 1839 |
| Cable Termination for 13.8 kv 3Cx 500 mm², Al /XLPE/LLDPE | material | Unit | 2635 |
| Single Core Copper Cable 13.8 kV 3Cx 50 mm² Cu/XLPE/PVC / Unarmored | material | m | 112 |
| Unit Substation 13.8/0.4 K V, 500kVA ,Including concrete foundations and fencing, According to the specifications and standards of SEC | material | Unit | 49028 |
| Ring Main Unit RMU, 13.8KV, According to the specifications and standards of SEC | material | Unit | 73542 |
| Cable, Copper 4x185mm2/ CU/XLPE/PVC | material | m | 386 |
| Cable, Copper 4x50mm2/ CU/XLPE/PVC +1x25mm2 CU/PVC | material | m | 123 |
| Supply and installation of KWH meter mounting frame including concrete block wall for installation of KWH meter according to the standards and specifications of SEC | material | Unit | 4719 |
| 0.6/1 KV Steet Lighting Feeder Pillar | material | Unit | 22921 |
| GRP (400mm Diameter) - ST - Depth less than 1.5 m | material | m | 290 |
| GRP (400mm Diameter) - ST - Depth: 1.51m - 2.5 m | material | m | 327 |
| GRP (500mm Diameter) - ST - Depth less than 1.5 m | material | m | 355 |
| GRP (500mm Diameter) - ST - Depth: 1.51m - 2.5m | material | m | 395 |
| GRP (600mm Diameter) - ST - Depth less than 1.5 m | material | m | 431 |
| GRP (600mm Diameter) - ST - Depth: 1.51m - 2.5m | material | m | 465 |
| GRP (700mm Diameter) - ST - Depth less than 1.5 m | material | m | 554 |
| GRP (700mm Diameter) - ST - Depth: 1.51m - 2.5m | material | m | 597 |
| UPVC (300mm Diameter) - ST - Depth: 1.51m - 2.5m | material | m | 346 |
| MH (1200mm Diameter) - ST - depth 1.50 - 2.5m | material | nr | 10323 |
| MH (1500mm Diameter) - ST - depth 2.51 - 3.5m | material | nr | 16502 |
| HDPE (400mm Diameter) - PT - Depth: less than 1.5m | material | m | 340 |
| HDPE (400mm Diameter) - PT - Depth: 1.51m - 2.5m | material | m | 364 |
| Valve chambers - PT | material | nr | 12484 |
| Butterfly valves dia 400 - PT | material | nr | 30643 |
| Wash out chambers - PT | material | nr | 18745 |
| Wash out valve diameter 100 mm - PT | material | nr | 3748 |
| Excavation for Trench size 180cm wide and 80cm deep (for 6 cables) | material | m3 | 10 |
| Duct bank for MV cables UPVC (4xø150mm) | material | m | 398 |
| Duct bank for MV cables UPVC (8xø150mm) | material | m | 797 |
| Duct bank for LV cables UPVC (2xø110mm) | material | m | 202 |
| Drawpit with medium duty steel cover, size900x900x1000mm, | material | Unit | 3677 |
| Cable, Copper 4x70mm2/ CU/XLPE/PVC | material | m | 169 |
| Cable, Copper 3x10mm2/ CU/XLPE/SWA/PVC | material | m | 39 |
| Cable, Copper 4x16mm2/ CU/XLPE/SWA/PVC + 1x16mm2 CU/PVC | material | m | 67 |
| Street Lighting( LED) Luminaire of Output ?39018 lumen | material | Unit | 1042 |
| Road crossing ducts, (6*50mm) HDPE -TC | material | m | 38 |
| 0.6/1 KV Low Voltage Distribution Pillars with main breaker MCCB type and 5 Outgoing feeders MCCB type | material | Unit | 15873 |
| Traffic signs, ground mounted, 2 Sheets Aluminium, (breakaway)Single post | material | nr | 1839 |
| SPEED TABLE | material | m2 | 123 |
| GRP (1000mm Diameter) - ST - Depth: 1.51m - 2.5m | material | m | 916 |
| GRP (1100mm Diameter) - ST - Depth: 2.51m - 3.5m | material | m | 1397 |
| GRP (1200mm Diameter) - ST - Depth: 1.51m - 2.5m | material | m | 1178 |
| GRP (1200mm Diameter) - ST - Depth less than 1.5 m | material | m | 1129 |
| GRP (1200mm Diameter) - ST - Depth: 2.51m - 3.5m | material | m | 1421 |
| MH (1200mm Diameter) - ST - depth 2.51 - 3.5m | material | nr | 11877 |
| UPVC (200mm Diameter) - SW - Depth: less than 1.5m | material | m | 180 |
| UPVC (200mm Diameter) - SW - Depth: 1.51m - 2.5m | material | m | 217 |
| UPVC (200mm Diameter) - SW - Depth: 2.51m - 3.5m | material | m | 306 |
| MH (1200mm Diameter) - SW - depth 0 - 1.5m | material | nr | 8463 |
| MH (1200mm Diameter) - SW - depth 1.51 - 2.5m | material | nr | 9542 |
| MH (1200mm Diameter) - SW - depth 2.51 - 3.5m | material | nr | 11676 |
| MH (1200mm Diameter) - SW - depth 3.51 -4.5m | material | nr | 13320 |
| MH (1200mm Diameter) - SW - depth 4.51 -5.5m | material | nr | 15690 |
| HDPE (160mm Diameter) - PT - Depth: more than 2.5m | material | m | 201 |
| Air Valve chambers - PT | material | nr | 4772 |
| Air valve diameter 50 mm - PT | material | nr | 4919 |
| HDPE (160mm Diameter) - TSE - Depth: more than 1.51m | material | m | 151 |
| HDPE (500mm Diameter) - TSE - Depth: less than 1.5m | material | m | 646 |
| HDPE (500mm Diameter) - TSE - Depth: more than 1.51m | material | m | 685 |
| Wash out chambers - TSE | material | nr | 18745 |
| Wash out valve diameter 100 mm - TSE | material | nr | 3748 |
| Wash out valve diameter 150 mm - TSE | material | nr | 4165 |
| Air Valve chambers - TSE | material | nr | 4772 |
| Air valve diameter 50 mm - TSE | material | nr | 4919 |
| Excavation for Trench size 40cm wide and 80cm deep ( for 1 cables) | material | m3 | 10 |
| Excavation for Trench size 120cm wide and 80cm deep (for 4 cables) | material | m3 | 10 |
| Duct bank for MV cables UPVC (2xø150mm) | material | m | 206 |
| Normally Open Point 13.8 KV Outdoor type | material | Unit | 85799 |
| Unit Substation 13.8/0.4 K V, 1000kVA ,Including concrete foundations and fencing, According to the specifications and standards of SEC | material | Unit | 61285 |
| Cable, Copper 4x300mm2/ CU/XLPE/PVC | material | m | 594 |
| 0.6/1 KV Low Voltage Distribution Panels for Industrial UPS - Cameras | material | Unit | 14647 |
| Precast Flush concrete Curbstone K3 | material | m | 55 |
| GRP (900mm Diameter) - ST - Depth: 2.51m - 3.5m | material | m | 1054 |
| GRP (1000mm Diameter) - ST - Depth: 2.51m - 3.5m | material | m | 1204 |
| GRP (1100mm Diameter) - ST - Depth: 1.51m - 2.5m | material | m | 1058 |
| MH (1500mm Diameter) - ST - depth 3.51 - 4.5m | material | nr | 21094 |
| MH (2000mm Diameter) - ST - depth 3.51 -4.5m | material | nr | 22988 |
| HDPE (200mm Diameter) - PT - Depth: less than 1.5m | material | m | 140 |
| HDPE (200mm Diameter) - PT - Depth: more than 1.5m | material | m | 178 |
| Gate valves dia 200 mm - PT | material | nr | 2232 |
| Duct bank for MV cables UPVC (6xø150mm) | material | m | 597 |
| UPVC (200mm Diameter) - SW - Depth: 3.51m - 4.5m | material | m | 419 |
| Removal of curbstone | material | m | 18 |
| Removal of sidewalk | material | m2 | 18 |
| Removal of existing New Jersy | material | m | 37 |
| Relocation of existing Sewer manholes. | material | nr | 24514 |
| Relocation of existing Waterline | material | m | 245 |
| Relocation of existing light poles | material | nr | 3064 |
| Relocation of existing Medium tension Pole | material | nr | 24514 |
| Relocation of existing Electrical manhole | material | nr | 2451 |
| Relocation of existing Electrical cable | material | m | 123 |
| Relocation of existing Storm manholes. | material | nr | 24514 |
| Bulldozer/Dozer | equipment |  |  |
| Loader | equipment |  |  |
| Excavation in all types of soil to the required depth includes removal of waste material Including Excavation for Roads and Site | material | m3 | 6 |
| RIC Machine | equipment |  |  |
| Engineering fill using approved fill material placed in bulk and compacted by dynamic compaction method For Roads and Plots | material | m3 | 9 |
| DC Compactor | equipment |  |  |
| Soil improvement by means of dynamic compaction of the in-situ natural soil using the method of dropping heavy weights For Roads and below formation level | material | m2 | 17 |
| Engineering backfilling with improved and select fill material from the site or imported Including embankment in layers For Roads | material | m3 | 12 |
| Supply and cast in place plain concrete 100 mm thickness lean concrete under the foundation for (Sewer and Storm Pump station) and (tunnels) | material | m2 | 66 |
| Bituminous Sheet Waterproofing (2 layers of waterproofing bitumenous membrane 4mm below footings) | material | m2 | 86 |
| Supply and cast in place screed concrete 50 mm thickness screed concrete for protecting waterproofing under the foundation for (Sewer and Storm Pump station) and (tunnels) | material | m2 | 32 |
| Supply and cast in place reinforced concrete with fc'=50 Mpa for the sub- structures for (tunnels) for Footings | material | m3 | 1682 |
| Supply and cast in place reinforced concrete with fc'=50 Mpa for the sub- structures for (tunnels) for Walls below ground level | material | m3 | 2504 |
| Bituminous Sheet Waterproofing (2 layers of waterproofing bitumenous membrane 4mm including protection board for substructure vertical and top surfaces in contact with soil) | material | m2 | 86 |
| Supply and cast in place reinforced concrete with fc'=50 Mpa for the sub- structures for (tunnels) for Solid Slabs | material | m3 | 2596 |
| Outdoor Lighting Fixtures - L5 lighting units of the (LED) type | material | nr | 505 |
| Outdoor Lighting Fixtures - L6 lighting units of the (LED) type | material | nr | 1032 |
| DB-08 Panel: 100/100 A, 3P, IP66, 60Hz incomer MCCB, 54 Ways | material | nr | 7330 |
| SPN industrial type socket outlet, 25A, 230V, IP54 protection, single- phase, complete with mounting box and cover plate, wall-mounted | material | nr | 708 |
| DALI - based tunnel lighting control system | material | Item | 554828 |
| Centralized Firefighter Telephone Control Panel | material | nr | 79671 |
| Digital Linear Heat Detection System | material | Item | 55157 |
| Combination Fire Alarm Speaker/strobe Unit Wall Mounted, Ip-rated | material | nr | 858 |
| Addressable Output Control Module For Fire Alarm System | material | nr | 1152 |
| Addressable Manual Call Point Enclosed In IP65 - rated Nema Type 4 Box For Harsh Environments | material | nr | 1826 |
| Addressable Input Monitor Module For Signal Interface With Mechanical Systems | material | nr | 1704 |
| Firefighter Telephone Jack Point For Use With Fire Alarm System | material | nr | 1839 |
| IP dome camera, wall-mounted FOR Tunnel , IP67 - rated, vandal-resistant, with 5MP resolution | material | nr | 17221 |
| Supply and cast in place reinforced concrete with fc'=31 Mpa for the sub- structures for (Sewer and Storm Pump station) and (tunnels) for Footings | material | m3 | 1537 |
| Supply and cast in place reinforced concrete with fc'=31 Mpa for the sub- structures for (Sewer and Storm Pump station) and (tunnels) for Walls below ground level | material | m3 | 2683 |
| Epoxy coating two perpendicular layers for inner surfaces for Tank walls, footings and bottom of the roof and for room flooring | material | m2 | 80 |
| Access Doors and Frames - Metal floor door size (1000x1000mm) | material | nr | 1103 |
| Screening Container Constructed From Steel | material | nr | 18386 |
| Basket screen | material | nr | 392224 |
| Submersible wet-installed pump for raw sewage water Capacity: 53, lps Head: 29.10 m | material | nr | 156318 |
| Manually Operated Gate Valve DN250 | material | nr | 7183 |
| Buried Ductile Iron Pipes With Diameter 400 Mm | material | m | 919 |
| Buried Ductile Iron Pipes With Diameter 250 Mm | material | m | 686 |
| Double Flanged Ductile Iron Pipe With Diameter 250 Mm | material | m | 3187 |
| Electrically operated penstock 500 * 500 mm | material | nr | 55157 |
| JIB Crane For storm and sewer pumping Stations | material | nr | 67414 |
| Supply and cast in place reinforced concrete with fc'=31 Mpa for the sub- structures for (Sewer and Storm Pump station) and (tunnels) for Neck columns | material | m3 | 1587 |
| Supply and cast in place reinforced concrete with fc'=31 Mpa for the sub- structures for (Sewer and Storm Pump station) and (tunnels) for Ground beams | material | m3 | 1324 |
| Aggregate base course below slab on grade and ground beams for Sewer and Storm Pump station building | material | m3 | 25 |
| Supply and cast in place plain concrete 50 mm thickness lean concrete under slab on grade and gound beams for (Sewer and Storm Pump station building) | material | m2 | 25 |
| Supply and cast in place reinforced concrete with fc'=31 Mpa for the sub- structures for (Sewer and Storm Pump station) and (tunnels) for Slab on grade | material | m3 | 742 |
| Fluid-Applied Waterproofing (2 coats of bitumen waterproofing paint for slab on grade and ground beams) | material | m2 | 15 |
| Vapor Retarders (250 micron thk polyethylene sheet below slab on grade and ground beams) | material | m2 | 4 |
| Supply and cast in place reinforced concrete with fc'=31 Mpa for the Super- structures for (Sewer and Storm Pump station) for Columns | material | m3 | 1566 |
| Supply and cast in place reinforced concrete with fc'=31 Mpa for the Super- structures for (Sewer and Storm Pump station) for Beams | material | m3 | 1326 |
| Supply and cast in place reinforced concrete with fc'=31 Mpa for the Super- structures for (Sewer and Storm Pump station) for Solid Slabs | material | m3 | 1291 |
| Concrete masonry unit, hollow block 200mm thick | material | m2 | 61 |
| Roofs Waterproofing System (250 micron Polyethylene sheet) | material | m2 | 4 |
| Roofs Waterproofing System (50mm thik min. Foam concrete) | material | m2 | 31 |
| Roofs Waterproofing System (30mm thick Screed concrete (Fc' = 20 Mpa)) | material | m2 | 18 |
| Roofs Waterproofing System (4mm thick Water proofing Bitumenous Membrane) | material | m2 | 31 |
| Roofs Waterproofing System (Geotextile Membrane) | material | m2 | 7 |
| Roofs Waterproofing System (50mm thk gravel toppings) | material | m2 | 25 |
| Manufactured Copings (Supply and install Stone coping 40mm thickness) | material | m | 147 |
| Internal plastering to walls and columns min. 15mm thick with cement mortar | material | m2 | 49 |
| Internal plastering to walls and columns min. 20mm thick with cement mortar | material | m2 | 55 |
| Metal Ladder of Length 5.4m | material | nr | 4964 |
| Metal Ladder With cage, Length 4.3m | material | nr | 3953 |
| Supply and install Checkered plate | material | nr | 306 |
| 2 coats of paint at internal walls, columns and ceiling including one coat of primer and two coats of putty | material | m2 | 25 |
| External paint for external elevations | material | m2 | 31 |
| (FCU-01/ACCU-01) DX wall mounted Split/AC with nominal cooling capacity of 3.6 KW | material | nr | 10173 |
| Fire Extinguishers 6 KG, Powder fire extinguishers (EF-1) | material | nr | 552 |
| Fire Extinguishers 4.5 KG, CO2 fire extinguishers (EF-2) | material | nr | 490 |
| Scupper with Diameter 110mm | material | nr | 147 |
| UPVC pipes with Diameter 110mm. | material | m | 172 |
| UPVC pipes with Diameter 25mm. | material | m | 123 |
| LV Cables - 4Cx 185mm2 CU/XLPE/SWA/PVC | material | m | 395 |
| LV Lables - 4Cx 70mm2 + 1Cx35mm2 Cu/XLPE/PVC FROM MCC-3 TO LP-01 | material | m | 172 |
| LV Cables - 4Cx 6mm2 + 1Cx6mm2 Cu/XLPE/PVC | material | m | 67 |
| LV Cables - 4Cx 95mm2 + 1Cx50mm2 Cu/XLPE/PVC | material | m | 245 |
| Single socket outlet with a 13-amp switch, single-pole, 230 volts, with a grounding hole, mounted on the wall | material | nr | 235 |
| Double socket outlet with a 13-amp switch, mounted on the wall, fed from an uninterruptible power supply (UPS) | material | nr | 282 |
| 25-amp wall-mounted double-pole switch with an indicator light for powering the wall-mounted split air conditioning units | material | nr | 392 |
| Earthing System for Sewer Lifting Station 1 | material | Item | 12338 |
| Indoor Lighting Fixtures - L1 lighting units of the (LED) type | material | nr | 429 |
| Indoor Lighting Fixtures - LE lighting units of the (LED) type, Exit sign | material | nr | 662 |
| Outdoor Lighting Fixtures - L3 lighting units of the (LED) type | material | nr | 390 |
| Outdoor Lighting Fixtures - L4 lighting units of the (LED) type | material | nr | 462 |
| 25-amp single-pole disconnect/isolation switches, 60 Hz, IP65 | material | nr | 577 |
| 25-amp three-pole disconnect/isolation switches, 60 Hz, IP65 | material | nr | 577 |
| 125-amp three-pole disconnect/isolation switches, 60 Hz, IP65 | material | nr | 1612 |
| DBU3 Panel: 32/100 A, 3P, IP66, 60Hz incomer MCCB, 6 Ways | material | nr | 2942 |
| DB-UT3 Panel: 32/100 A, 3P, IP66, 60Hz incomer MCCB, 12 Ways | material | nr | 3898 |
| 1 Loop Facp With Charger, Battries And Auto Dialer | material | nr | 22063 |
| Addressable Control Module. | material | nr | 735 |
| Addressable Type Fire Alarm Photoelectric Smoke Detector Complete With Base | material | nr | 613 |
| Addressable Type Fire Alarm Manual Call Station/pull Station | material | nr | 662 |
| Conventional 24v DC Fire Alarm Wall Mounted 15cd Flasher/strobe. | material | nr | 674 |
| Conventional 24v DC Fire Alarm Wall Mounted 15cd Flasher/strobe Weather Proof | material | nr | 858 |
| Short CCT Isolator | material | nr | 797 |
| Motor Control Center - MCC-3 - 300AT/300AF, 400V, 3PH, 60HZ | material | nr | 89599 |
| PLC system, serving the pumping station and all related utilities | material | Item | 966493 |
| Supply, installation, testing and commissioning of all control, instrumentation | material | Item | 61285 |
| Supply, installation, testing and commissioning of all field instruments such as hydrostatic level meter, level switches, etc.. | material | Item | 367710 |
| Fences and Gates | material | m | 735 |
| Magnetic Type Flowmeter With Diameter 250mm | material | nr | 46577 |
| Check Valve With Diameter 250mm. | material | nr | 10492 |
| Standby Diesel Generator Set 150 KVA, 400/230v, 3P, 60Hz in Sound Attenuated Enclosure | material | Item_set | 136420 |
| Automatic Transfer Switch ATS panel 300A | material | nr | 67414 |
| Odor Control Unit for land F lifting pumps station (Flow=390L/s) | material | Set | 281911 |
| Submersible, wet-installed pump for stormwater Capacity: 20, lps Head: 16.50 m | material | nr | 61330 |
| Manually Operated Gate Valve DN150 | material | nr | 3248 |
| Check Valve With Diameter 150mm. | material | nr | 5271 |
| Double Flanged Ductile Iron Pipe With Diameter 150 Mm | material | m | 1961 |
| LV Cables - 4Cx 4mm2 + 1Cx4mm2 Cu/XLPE/PVC | material | m | 44 |
| Earthing System for Storm PS1 | material | Item | 12338 |
| 2 Loop Facp With Charger, Battries And Auto Dialer | material | nr | 22063 |
| Motor Control Center - MCC-8 - 160AT/160AF, 400V, 3PH, 60HZ | material | nr | 58037 |
| Access Doors and Frames - Metal floor door size (600x600mm) | material | nr | 919 |
| Magnetic Type Flowmeter With Diameter 150mm | material | nr | 33094 |
| physical Testing | labor |  |  |
| Technical Office Engineer | labor |  |  |
| Document Control | labor |  |  |
| Consultant Staff | labor |  |  |
| Procurement Engineer | labor |  |  |
| Store Keeper | labor |  |  |
| Store Keeper assistant | labor |  |  |
| Channels excavation in all type of soil for any depth | material | m3 | 9 |
| Grouted riprap on side slopes | material | m2 | 67 |
| Loose riprap on the channels bed | material | m2 | 67 |
| Excavation for culverts (all types of soil) including backfilling - ST | material | m3 | 18 |
| 100 mm thickness lean concrete under the base - ST | material | m2 | 39 |
| Supply and cast in place reinforced concrete for Box culverts - ST | material | m3 | 984 |
| Supply, placing, and fixing of high tensile reinforcement steel for Box culverts - ST | material | Ton | 3616 |
| Concrete chambers - ST - Size 1.8 x 2.0 m, depth 4.51-5.5 m | material | nr | 38708 |
| Removal of Trees | material | nr | 2451 |
| GRP (800mm Diameter) - ST - Depth: 2.51m - 3.5m | material | m | 923 |
| GRP (500mm Diameter) - ST - Depth: 2.51m - 3.5m | material | m | 545 |
| GRP (600mm Diameter) - ST - Depth: 2.51m - 3.5m | material | m | 630 |
| Double Catch basin - ST | material | nr | 13966 |
| GRP (700mm Diameter) - ST - Depth: 2.51m - 3.5m | material | m | 876 |
| GRP (1300mm Diameter) - ST - Depth less than 2.5 m | material | m | 1763 |
| GRP (1300mm Diameter) - ST - Depth: 2.51m - 3.5m | material | m | 1803 |
| GRP (1400mm Diameter) - ST - Depth less than 4.5 m | material | m | 2652 |
| GRP (1000mm Diameter) - ST - Depth less than 1.5 m | material | m | 873 |
| MH (2000mm Diameter) - ST - depth 1.50 - 2.5m | material | nr | 16921 |
| UPVC (400mm Diameter) - ST - Depth less than 1.5 | material | m | 452 |
| GRP (800mm Diameter) - ST - Depth: 3.51m - 4.5m | material | m | 1139 |
| MH (1200mm Diameter) - ST - depth less than 1.5 | material | nr | 8766 |
| GRP (1000mm Diameter) - ST - Depth: 3.51m - 4.5m | material | m | 1375 |
| GRP (300mm Diameter) - SW - Depth: 1.51m - 2.5m | material | m | 333 |
| GRP (300mm Diameter) - SW - Depth: 2.51m - 3.5m | material | m | 408 |
| GRP (300mm Diameter) - SW - Depth: 3.51m - 4.5m | material | m | 533 |
| Anti-Carbonated external paint for external elevations | material | m2 | 37 |
| MH (1200mm Diameter) - SW - depth 1.51- 2.5 m with back drop | material | nr | 13542 |
| MH (1200mm Diameter) - SW - depth 2.51- 3.5 m with back drop | material | nr | 16015 |
| MH (1200mm Diameter) - SW - depth 3.51 -4.5 m with back drop | material | nr | 17639 |
| MH (1200mm Diameter) - SW - depth 4.51-5.5 m with back drop | material | nr | 20034 |
| HDPE (250mm Diameter) - SW - in trenches depth:0- 1.5m | material | m | 199 |
| HDPE (250mm Diameter) - SW - in trenches depth: 1.51 than 2.5m | material | m | 266 |
| GRP (400mm Diameter) - SW - Depth: less than 2.5m | material | m | 450 |
| GRP (400mm Diameter) - SW - Depth: 2.51m - 3.5m | material | m | 484 |
| GRP (400mm Diameter) - SW - Depth: 3.51m - 4.5m | material | m | 617 |
| GRP (400mm Diameter) - SW - Depth: more than 4.5m | material | m | 718 |
| UPVC (200mm Diameter) - SW - Depth: 4.51m - 5.5m | material | m | 694 |
| MH (1200mm Diameter) - SW - depth 5.51-6.0 m | material | nr | 16958 |
| MH (1200mm Diameter) - SW - depth more than 6.0 m | material | nr | 18249 |
| GRP (300mm Diameter) - SW - Depth: 4.51m - 5.5m | material | m | 819 |
| GRP (300mm Diameter) - SW - Depth: more than 5.5m | material | m | 987 |
| MH (1200mm Diameter) - SW - depth more than 6.0 m with back drop | material | nr | 22734 |
| GRP (500mm Diameter) - SW - Depth: 3.51m - 4.5m | material | m | 659 |
| GRP (500mm Diameter) - SW - Depth: 2.51m - 3.5m | material | m | 574 |
| GRP (500mm Diameter) - SW - Depth: 4.51m - 5.5m | material | m | 923 |
| Valve chambers - TSE | material | nr | 14643 |
| Butterfly valves dia 315 - TSE | material | nr | 12506 |
| Air valve chamber - SW | material | nr | 4772 |
| Air valves with dia (50mm) - SW | material | nr | 4919 |
| Wash out chamber - SW | material | nr | 18745 |
| Wash out valve with dia (100mm) - SW | material | nr | 3748 |
| Discharge chamber, size 1500*2000 mm - SW | material | nr | 22472 |
| GRP (500mm Diameter) - ST - Depth: more than 3.5m | material | m | 727 |
| GRP (1300mm Diameter) - ST - Depth: 3.51m - 4.5m | material | m | 1976 |
| GRP (1100mm Diameter) - ST - Depth: 3.51m - 4.5m | material | m | 1525 |
| Gate valves dia 150 mm - TSE | material | nr | 2232 |
| Pipe Encasement - TSE | material | m3 | 1226 |
| Butterfly valves dia 500 - TSE | material | nr | 39638 |
| HDPE (180mm Diameter) - TSE - Depth: less than 1.5m | material | m | 146 |
| HDPE (180mm Diameter) - TSE - Depth: more than 1.51m | material | m | 186 |
| HDPE (250mm Diameter) - TSE - Depth: less than 1.5m | material | m | 217 |
| Air valve diameter 100 mm - TSE | material | nr | 7800 |
| HDPE (250mm Diameter) - TSE - Depth: more than 1.51m | material | m | 255 |
| Air valve diameter 65 mm - PT | material | nr | 5505 |
| Pipe Encasement - PT | material | m3 | 1226 |
| Provisional Sum | material |  | 1 |
| Short Range wireless point to point wireless bridge | material | nr | 14637 |
| HDPE (450mm Diameter) - PT - Depth: less than 1.5m | material | m | 380 |
| HDPE (450mm Diameter) - PT - Depth: more than 1.5m | material | m | 402 |
| GRP (900mm Diameter) - ST - Depth: 3.51m - 4.5m | material | m | 1318 |
| GRP (900mm Diameter) - ST - Depth: more than 4.5m | material | m | 1631 |
| Ceramic raised pavement markers | material | nr | 25 |
| Road Crossing Duct for Street Lighting cables UPVC (6x?110mm) | material | m | 387 |
| HDPE (400mm Diameter) - PT - Depth: more than 2.5m | material | m | 422 |
| Cable, Copper 4x25mm2/ CU/XLPE/SWA/PVC + 1x16mm2 CU/PVC | material | m | 86 |
| GRP (1200mm Diameter) - ST - Depth: 3.51m - 4.5m | material | m | 1691 |
| MH (2000mm Diameter) - ST - depth 4.51 -5.5m | material | nr | 25062 |
| Excavation for Trench size 240cm wide and 80cm deep (for 9 cables) | material | m3 | 10 |
| Excavation for Trench size 300cm wide and 80cm deep (for 10 cables) | material | m3 | 10 |
| Duct bank for MV cables UPVC (10ø?150mm) | material | m | 995 |
| UPVC (400mm Diameter) - ST - Depth: 1.51m - 2.5m | material | m | 500 |
| GRP (1500mm Diameter) - ST - Depth less than 2.5 m | material | m | 2143 |
| GRP (1500mm Diameter) - ST - Depth: 2.51m - 3.5m | material | m | 2188 |
| GRP (1500mm Diameter) - ST - Depth: 3.51m - 4.5m | material | m | 2336 |
| GRP (1500mm Diameter) - ST - Depth: 4.51m - 5.5m | material | m | 2511 |
| Discharge chamber, size 1500*2000mm - ST | material | nr | 17152 |
| HDPE (200mm Diameter) - ST - in trenches depth less than 1.5m | material | m | 183 |
| Duct bank for MV cables UPVC (12xø150mm) | material | m | 1194 |
| HDPE (200mm Diameter) - TSE - Depth: less than 1.5m | material | m | 186 |
| GRP (600mm Diameter) - ST - Depth: 3.51m - 4.5m | material | m | 798 |
| MH (1200mm Diameter) - ST - depth 3.51 - 4.5m | material | nr | 14832 |
| MH (1200mm Diameter) - ST - depth 4.51 - 5.5m | material | nr | 15658 |
| Wheel Stoppers | material | nr | 245 |
| HDPE (200mm Diameter) - TSE - Depth: more than 1.51m | material | m | 194 |
| GRP (400mm Diameter) - ST - Depth: 2.51m - 3.5 m | material | m | 449 |
| Pipe Encasement - SW | material | m3 | 1226 |
| 7 Meters pole for ANPR CCTV CameraS | material | nr | 14221 |
| 4.5-meter Hinged Type Arm, fixed on 7 meter for installing LANPR cameras | material | nr | 7387 |
| Fixed outdoor Camera for LPR, IP66/67 and IK10-rated 10 MP/ 4K, day/night, IR luminator | material | nr | 25394 |
| 8 Port Industrial PoE Switch 10/1000BaseT with 2X1G SFP UP-LINK(- 40 deg to +70 deg. Celsius) for remote poles and as specifiedin item 15 | material | nr | 16900 |
| PECD 110mm with 32mm 5sub ducts | material | m | 43 |
| 35 Meters mono pole main pole for all Wireless Devices | material | nr | 219340 |
| Power Distribution unit 12 outlets located at main pole cabinet . Main cabinet in control room and fed from UPS located at control room | material | nr | 686 |
| UPS 20KVA to power for all servers, monitors, and switch in the control, room | material | nr | 105410 |
| Single mode 12 fiber outdoor FO cable with splicing tray, patch cables, pigtails etc. to connect 35 meters pole to main data center | material | m | 18 |
| Professional joystick for accurate control of PTZ | material | nr | 7723 |
| Surveillance-optimized server for recording CCTV supports simultaneous cameras stream and recording at high resolution | material | nr | 170805 |
| Video analytics computing hardware with below specs: CPU: 1x 12 Cores/24 Threads @ 2.4G GPU: 2x NVIDIA A4000 RAM: 128 GB Storage: (0.5T + 8T) SSD OS: Ubuntu Linux | material | nr | 146573 |
| Video analytics license package all lifetime and for each camera connected to the system | material | nr | 1286710 |
| Video analytics license for ANPR for all lifetime and for each camera connected to the system and as specified in item 2. | material | nr | 272069 |
| Security Firewall with minimum 3x GE Ethernet Port , IPS 1Gbps, NGFW 800bps, Threat Protection 600Mpbs and as specified | material | nr | 52619 |
| supply and install Standalone Multiple biometric identification reader with Default verification mode Fingerprint & Face | material | nr | 10982 |
| Cameras Interlink License for overall cameras. | material | nr | 326526 |
| Workstation; Precision T5820/Intel® Xeon W-2223 3.6GHz, 3.9GHz Turbo, 4C/512GB SSD + 2TB 3.5" 7200 RPM/32GB (2x16GB) 2933MHz DDR4 RDIMM ECC/4GB NVIDIA T1000/8x DVD+/-RW, Slimline/950W/3yr BasicWarranty - Pro Support NBD/Windows 10 Pro 64-bit. | material | nr | 19001 |
| Professional LED screen 32 inch for workstations and as specified | material | nr | 3941 |
| videowall processor controller | material | nr | 153213 |
| Professional 55" video wall cube | material | nr | 14831 |
| supply and install magnetic lock at control room | material | nr | 797 |
| Floor mounted Filed Equipment cabinet (FEC) , with ventilation fan, NEMA 4X, door minimum size (800x600x600mm), the cabinet/enclosure | material | nr | 70478 |
| 48-Port switch 10/100/1000 with 2X10G SFP UP-LINK at floor FEC cabinet for main pole. and as specified | material | nr | 45087 |
| 24-Port switch 10/100/1000 with 2X10G SFP UP-LINK at main cabinet in control room and as specified in item 16. | material | nr | 26458 |
| 24-Port universal LC-SMOF fiber patch panel with splice tray and fiber fusion, pigtail at main pole cabinet & main cabinet at control room cabinet | material | nr | 6718 |
| 48-Port CAT6A UTP patch panel at main pole cabinet | material | nr | 3493 |
| 24-Port CAT6A UTP patch panel at main cabinet in control room | material | nr | 2157 |
| 47U main Cabinet in control Room with vertical cable management, front glass door and fan with thermostat.and as specified | material | nr | 11759 |
| D Ring horizontal cable management in main cabinets in control room and cabinet at main pole | material | nr | 613 |
| Excavation for Trench size 360cm wide and 80cm deep (for 12 cables) | material | m3 | 10 |

## Schedule

| ID | WBS | Activity | Type | Duration | Start | Finish | Predecessors | Complete | Planned start | Planned finish | Total float | Free float | Calendar | Resources | RDH4-01-001-Zones-1 | RDH4-01-001-Phases-1 | RDH4-01-001-Networks-1 |
| --- | --- | --- | --- | --- | --- | --- | --- | --- | --- | --- | --- | --- | --- | --- | --- | --- | --- |
|  | 19 | **RHD4-02-002-Authorities Permits & Approval - AT** |  |  | 2025-11-30 | 2026-01-08 |  |  |  |  |  |  |  |  |  |  |  |
| RHD4GNPERMITAT1000 |  | Electrical Network Authorities Permits & Approval - AT |  | 10d | 2025-11-30 A | 2025-12-11 A | RHD4GNPSMIS1000 SS | 100% |  |  |  |  | RHD4 - (5 Days - 8 Hours)-48 | Document Control [2.72 h] | General | GN | GN |
| RHD4GNPERMITAT2000 |  | Telecommunication System Authorities Permits & Approval - AT |  | 10d | 2025-11-30 A | 2025-12-11 A | RHD4GNPSMIS1000 SS, RHD4GNPERMITAT1000 | 100% | 2025-12-14 | 2025-12-25 |  |  | RHD4 - (5 Days - 8 Hours)-48 | Document Control [2.72 h] | General | GN | GN |
| RHD4GNPERMITENV3000 |  | Enviromental Permits & Aproval - ENV |  | 30d | 2025-11-30 A | 2026-01-08 A | RHD4GNPSMIS1000 SS | 100% |  |  |  |  | RHD4 - (5 Days - 8 Hours)-48 |  | General | GN | GN |
|  | 3 | **RHD4-02-002-Milestones - MIS** |  |  | 2025-11-30 | 2029-01-17 |  |  |  |  |  |  |  |  |  |  |  |
|  | 4 | **RHD4-02-002-Contractual Milestones** |  |  | 2025-11-30 | 2029-01-17 |  |  |  |  |  |  |  |  |  |  |  |
| RHD4GNPSMIS1000 |  | Project Start - MIS | milestone | 0d | 2025-11-30 A | 2025-11-30 A |  | 100% |  |  |  |  | RHD4 - (7 Days - 8 Hours)-48 |  | General | GN | GN |
| RHD4GNMOBMIS1100 |  | Mobilization Finish - MIS | milestone | 0d | 2025-12-29 A | 2025-12-29 A | RHD4GNMOB1300 FF, RHD4GNMOB1100 FF, RHD4GNMOB1500 FF, RHD4GNMOB1400 FF | 100% | 2026-01-03 | 2026-01-03 |  |  | RHD4 - (7 Days - 8 Hours)-48 |  | General | GN | GN |
| RHD4GNMRDMIS1200 |  | Submittal and Approval of Project Management Plan - MIS | milestone | 0d | 2026-11-23 | 2026-11-23 | RHD4GNPPPMP1100 FF, RHD4GNPPBL1100 FF, RHD4GNPPHSE1100 FF, RHD4GNPPLOG1100 FF, RHD4GNPPORG1100 FF |  |  |  | 554d | 786d | RHD4 - (7 Days - 8 Hours)-48 |  | General | GN | GN |
| RHD4GNENMIS1300 |  | Submittal and Approval of Shop Drawings and Material Approvals - MIS | milestone | 0d | 2026-12-07 | 2026-12-07 | RHD4ENSDZ1APPEW100 FF, RHD4ENSDZ1APPST110 FF, RHD4ENSDZ1APPSW120 FF, RHD4ENSDZ1APPPT130 FF, RHD4ENSDZ1APPIRR140 FF, RHD4ENSDZ1APPMV150 FF, RHD4ENSDZ1APPRD220 FF, RHD4ENSDZ1APPLV160 FF, RHD4ENSDZ1APPSL170 FF, RHD4ENSDZ1APPTC190 FF, RHD4ENSDZ1APPICT200 FF, RHD4ENSDZ1APPCCTV210 FF, RHD4ENSDZ2APPEW100 FF, RHD4ENSDZ2APPST110 FF, RHD4ENSDZ2APPSW120 FF, RHD4ENSDZ2APPPT130 FF, RHD4ENSDZ2APPIRR140 FF, RHD4ENSDZ2APPMV150 FF, RHD4ENSDZ2APPRD220 FF, RHD4ENSDZ2APPLV160 FF, RHD4ENSDZ2APPSL170 FF, RHD4ENSDZ2APPTC190 FF, RHD4ENSDZ2APPICT200 FF, RHD4ENSDZ2APPCCTV210 FF, RHD4ENSDZ3APPEW100 FF, RHD4ENSDZ3APPST110 FF, RHD4ENSDZ3APPSW120 FF, RHD4ENSDZ3APPPT130 FF, RHD4ENSDZ3APPIRR140 FF, RHD4ENSDZ3APPMV150 FF, RHD4ENSDZ3APPRD220 FF, RHD4ENSDZ3APPLV160 FF, RHD4ENSDZ3APPSL170 FF, RHD4ENSDZ3APPTC190 FF, RHD4ENSDZ3APPICT200 FF, RHD4ENSDZ3APPCCTV210 FF, RHD4ENSDZ4APPEW100 FF, RHD4ENSDZ4APPST110 FF, RHD4ENSDZ4APPSW120 FF, RHD4ENSDZ4APPPT130 FF, RHD4ENSDZ4APPIRR140 FF, RHD4ENSDZ4APPMV150 FF, RHD4ENSDZ4APPRD220 FF, RHD4ENSDZ4APPLV160 FF, RHD4ENSDZ4APPSL170 FF, RHD4ENSDZ4APPTC190 FF, RHD4ENSDZ4APPICT200 FF, RHD4ENSDZ4APPCCTV210 FF, RHD4ENSDZ5APPEW100 FF, RHD4ENSDZ5APPST110 FF, RHD4ENSDZ5APPSW120 FF, RHD4ENSDZ5APPPT130 FF, RHD4ENSDZ5APPIRR140 FF, RHD4ENSDZ5APPMV150 FF, RHD4ENSDZ5APPRD220 FF, RHD4ENSDZ5APPLV160 FF, RHD4ENSDZ5APPSL170 FF, RHD4ENSDZ5APPTC190 FF, RHD4ENSDZ5APPICT200 FF, RHD4ENSDZ5APPCCTV210 FF, RHD4ENSDZ6APPEW100 FF, RHD4ENSDZ6APPST110 FF, RHD4ENSDZ6APPSW120 FF, RHD4ENSDZ6APPPT130 FF, RHD4ENSDZ6APPIRR140 FF, RHD4ENSDZ6APPMV150 FF, RHD4ENSDZ6APPRD220 FF, RHD4ENSDZ6APPLV160 FF, RHD4ENSDZ6APPSL170 FF, RHD4ENSDZ6APPTC190 FF, RHD4ENSDZ6APPICT200 FF, RHD4ENSDZ6APPCCTV210 FF, RHD4ENSDZ7APPEW100 FF, RHD4ENSDZ7APPST110 FF, RHD4ENSDZ7APPSW120 FF, RHD4ENSDZ7APPPT130 FF, RHD4ENSDZ7APPIRR140 FF, RHD4ENSDZ7APPMV150 FF, RHD4ENSDZ7APPRD220 FF, RHD4ENSDZ7APPLV160 FF, RHD4ENSDZ7APPSL170 FF, RHD4ENSDZ7APPTC190 FF, RHD4ENSDZ7APPICT200 FF, RHD4ENSDZ7APPCCTV210 FF, RHD4ENSDZ8APPEW100 FF, RHD4ENSDZ8APPST110 FF, RHD4ENSDZ8APPSW120 FF, RHD4ENSDZ8APPPT130 FF, RHD4ENSDZ8APPIRR140 FF, RHD4ENSDZ8APPMV150 FF, RHD4ENSDZ8APPRD220 FF, RHD4ENSDZ8APPLV160 FF, RHD4ENSDZ8APPSL170 FF, RHD4ENSDZ8APPTC190 FF, RHD4ENSDZ8APPICT200 FF, RHD4ENSDZ8APPCCTV210 FF, RHD4ENSDZ9APPEW100 FF, RHD4ENSDZ9APPST110 FF, RHD4ENSDZ9APPSW120 FF, RHD4ENSDZ9APPPT130 FF, RHD4ENSDZ9APPIRR140 FF, RHD4ENSDZ9APPMV150 FF, RHD4ENSDZ9APPRD220 FF, RHD4ENSDZ9APPLV160 FF, RHD4ENSDZ9APPSL170 FF, RHD4ENSDZ9APPTC190 FF, RHD4ENSDZ9APPICT200 FF, RHD4ENSDZ9APPCCTV210 FF, RHD4ENTUN1APPSTC1000 FF, RHD4ENSWL1APPSTC1000 FF, RHD4ENSWL1APPELE1300 FF, RHD4ENSTL1APPSTC1000 FF, RHD4ENSTL1APPELE1300 FF, RHD4ENMSEW2000 FF, RHD4ENMSTUN2000 FF, RHD4ENMSASPH2000 FF, RHD4ENMSST2000 FF, RHD4ENMSSW2000 FF, RHD4ENMSPT2000 FF, RHD4ENMSRR2000 FF, RHD4ENMSMV2000 FF, RHD4ENMSLV2000 FF, RHD4ENMSSL2000 FF, RHD4ENMSER2000 FF, RHD4ENMSRD2000 FF, RHD4ENMSBC2000 FF, RHD4ENMSTUN2010 FF, RHD4ENMSASPH2010 FF, RHD4ENMSST2010 FF, RHD4ENMSSW2010 FF, RHD4ENMSPT2010 FF, RHD4ENMSRR2010 FF, RHD4ENMSMV2010 FF, RHD4ENMSLV2010 FF, RHD4ENMSSL2010 FF, RHD4ENMSER2010 FF, RHD4ENMSRD2010 FF, RHD4ENMSBC2010 FF, RHD4ENMARAPPEW100 FF, RHD4ENMARSUBEW100 FF, RHD4ENMARSUBST100 FF, RHD4ENMARSUBST200 FF, RHD4ENMARSUBST400 FF, RHD4ENMARSUBST300 FF, RHD4ENMARSUBST500 FF, RHD4ENMARSUBST600 FF, RHD4ENMARSUBST700 FF, RHD4ENMARSUBST800 FF, RHD4ENMARSUBSW200 FF, RHD4ENMARSUBSW100 FF, RHD4ENMARSUBSW300 FF, RHD4ENMARSUBSW400 FF, RHD4ENMARSUBSW500 FF, RHD4ENMARSUBSW600 FF, RHD4ENMARSUBPT100 FF, RHD4ENMARSUBPT200 FF, RHD4ENMARSUBPT500 FF, RHD4ENMARSUBPT300 FF, RHD4ENMARSUBPT400 FF, RHD4ENMARSUBIRR100 FF, RHD4ENMARSUBIRR200 FF, RHD4ENMARSUBIRR400 FF, RHD4ENMARSUBIRR300 FF, RHD4ENMARSUBMV100 FF, RHD4ENMARSUBMV600 FF, RHD4ENMARSUBMV700 FF, RHD4ENMARSUBMV200 FF, RHD4ENMARSUBMV300 FF, RHD4ENMARSUBMV400 FF, RHD4ENMARSUBMV500 FF, RHD4ENMARSUBLV100 FF, RHD4ENMARSUBLV500 FF, RHD4ENMARSUBLV200 FF, RHD4ENMARSUBLV300 FF, RHD4ENMARSUBLV400 FF, RHD4ENMARSUBLV600 FF, RHD4ENMARSUBSL100 FF, RHD4ENMARSUBSL500 FF, RHD4ENMARSUBSL300 FF, RHD4ENMARSUBSL200 FF, RHD4ENMARSUBSL400 FF, RHD4ENMARSUBTC100 FF, RHD4ENMARSUBTC200 FF, RHD4ENMARSUBTC300 FF, RHD4ENMARSUBICT100 FF, RHD4ENMARSUBICT200 FF, RHD4ENMARSUBICT300 FF, RHD4ENMARSUBCCTV100 FF, RHD4ENMARSUBCCTV300 FF, RHD4ENMARSUBCCTV400 FF, RHD4ENMARSUBCCTV200 FF, RHD4ENMARSUBCCTV500 FF, RHD4ENMARSUBRD100 FF, RHD4ENMARSUBRD200 FF, RHD4ENMARSUBRD300 FF, RHD4ENMARSUBRD700 FF, RHD4ENMARSUBRD400 FF, RHD4ENMARSUBRD500 FF, RHD4ENMARSUBRD600 FF, RHD4ENMARSUBLFS200 FF, RHD4ENMARSUBLFS2000 FF, RHD4ENMARSUBLFS300 FF, RHD4ENMARSUBLFS900 FF, RHD4ENMARSUBLFS2300 FF, RHD4ENMARSUBLFS2400 FF, RHD4ENMARSUBLFS400 FF, RHD4ENMARSUBLFS1000 FF, RHD4ENMARSUBLFS2100 FF, RHD4ENMARSUBLFS100 FF, RHD4ENMARSUBLFS1200 FF, RHD4ENMARSUBLFS2500 FF, RHD4ENMARSUBLFS500 FF, RHD4ENMARSUBLFS1300 FF, RHD4ENMARSUBLFS600 FF, RHD4ENMARSUBLFS1400 FF, RHD4ENMARSUBLFS1500 FF, RHD4ENMARSUBLFS2900 FF, RHD4ENMARSUBLFS700 FF, RHD4ENMARSUBLFS1600 FF, RHD4ENMARSUBLFS1700 FF, RHD4ENMARSUBLFS2600 FF, RHD4ENMARSUBLFS1900 FF, RHD4ENMARSUBLFS2700 FF, RHD4ENMARSUBLFS1800 FF, RHD4ENMARSUBLFS2200 FF, RHD4ENMARAPPST100 FF, RHD4ENMARAPPST200 FF, RHD4ENMARAPPST400 FF, RHD4ENMARAPPST300 FF, RHD4ENMARAPPST500 FF, RHD4ENMARAPPST600 FF, RHD4ENMARAPPST700 FF, RHD4ENMARAPPST800 FF, RHD4ENMARAPPPT100 FF, RHD4ENMARAPPPT200 FF, RHD4ENMARAPPPT500 FF, RHD4ENMARAPPPT300 FF, RHD4ENMARAPPPT400 FF, RHD4ENMARAPPPT600 FF, RHD4ENMARAPPIRR100 FF, RHD4ENMARAPPIRR200 FF, RHD4ENMARAPPIRR400 FF, RHD4ENMARAPPIRR300 FF, RHD4ENMARAPPIRR500 FF, RHD4ENMARAPPMV100 FF, RHD4ENMARAPPMV600 FF, RHD4ENMARAPPMV700 FF, RHD4ENMARAPPMV200 FF, RHD4ENMARAPPMV300 FF, RHD4ENMARAPPMV400 FF, RHD4ENMARAPPMV500 FF, RHD4ENMARAPPLV100 FF, RHD4ENMARAPPLV500 FF, RHD4ENMARAPPLV200 FF, RHD4ENMARAPPLV300 FF, RHD4ENMARAPPLV400 FF, RHD4ENMARAPPLV600 FF, RHD4ENMARAPPSL100 FF, RHD4ENMARAPPSL500 FF, RHD4ENMARAPPSL300 FF, RHD4ENMARAPPSL200 FF, RHD4ENMARAPPSL400 FF, RHD4ENMARAPPTC100 FF, RHD4ENMARAPPTC200 FF, RHD4ENMARAPPTC300 FF, RHD4ENMARAPPICT100 FF, RHD4ENMARAPPICT200 FF, RHD4ENMARAPPICT300 FF, RHD4ENMARAPPCCTV100 FF, RHD4ENMARAPPCCTV300 FF, RHD4ENMARAPPCCTV400 FF, RHD4ENMARAPPCCTV200 FF, RHD4ENMARAPPCCTV500 FF, RHD4ENMARAPPRD100 FF, RHD4ENMARAPPRD200 FF, RHD4ENMARAPPRD300 FF, RHD4ENMARAPPRD700 FF, RHD4ENMARAPPRD400 FF, RHD4ENMARAPPRD500 FF, RHD4ENMARAPPRD600 FF, RHD4ENMARAPPLFS200 FF, RHD4ENMARAPPLFS800 FF, RHD4ENMARAPPLFS2000 FF, RHD4ENMARAPPLFS3000 FF, RHD4ENMARAPPLFS300 FF, RHD4ENMARAPPLFS900 FF, RHD4ENMARAPPLFS2300 FF, RHD4ENMARAPPLFS2400 FF, RHD4ENMARAPPLFS400 FF, RHD4ENMARAPPLFS1000 FF, RHD4ENMARAPPLFS1100 FF, RHD4ENMARAPPLFS2100 FF, RHD4ENMARAPPLFS100 FF, RHD4ENMARAPPLFS1200 FF, RHD4ENMARAPPLFS2500 FF, RHD4ENMARAPPLFS500 FF, RHD4ENMARAPPLFS1300 FF, RHD4ENMARAPPLFS2800_R FF, RHD4ENMARAPPLFS600 FF, RHD4ENMARAPPLFS700 FF, RHD4ENMARAPPLFS1400 FF, RHD4ENMARAPPLFS1500 FF, RHD4ENMARAPPLFS1600 FF, RHD4ENMARAPPLFS1700 FF, RHD4ENMARAPPLFS1900 FF, RHD4ENMARAPPLFS2600 FF, RHD4ENMARAPPLFS2700 FF, RHD4ENMARAPPLFS2900 FF, RHD4ENMARAPPLFS1800 FF, RHD4ENMARAPPLFS2200 FF, RHD4ENMARAPPSW200 FF, RHD4ENMARAPPSW100 FF, RHD4ENMARAPPSW300 FF, RHD4ENMARAPPSW400 FF, RHD4ENMARAPPSW500 FF, RHD4ENMARAPPSW600 FF, RHD4ENMARAPPTU100 FF, RHD4GNPPMAT1100 FF, RHD4ENMARSUBSL400, RHD4GNPPSD1100 FF, RHD4ENSDZ9SUBCCTV210, RHD4ENSDZ8SUBCCTV210, RHD4ENSDZ7SUBCCTV210, RHD4ENSDZ6SUBCCTV210, RHD4ENSDZ5SUBCCTV210, RHD4ENSDZ4SUBCCTV210, RHD4ENSDZ3SUBCCTV210, RHD4ENSDZ2SUBCCTV210, RHD4ENSDZ1SUBCCTV210, RHD4ENSDZ6SUBRD220 FF, RHD4ENMARSUBLFS800 FF, RHD4ENMARSUBLFS1100 FF, RHD4ENMARSUBIRR500 FF, RHD4ENMARSUBPT600 FF, RHD4ENSWL1APPARC1100 FF, RHD4ENSDSWL1SUB2000 FF, RHD4ENSDSTL1SUB2000 FF, RHD4ENSWL1APPMEC1200 FF, RHD4ENSDSWL1SUB3000 FF, RHD4ENSDSTL1SUB3000 FF, RHD4ENSTL1APPARC1100 FF, RHD4ENSTL1APPMEC1200 FF, RHD4ENTUN1APPSTC1200 FF, RHD4ENSDTUN1SUB1200 FF, RHD4ENTUN1APPSTC1100 FF, RHD4ENSDTUN1SUB1100 FF, RHD4ENMARSUBLFS2800 FF |  |  |  | 540d | 772d | RHD4 - (7 Days - 8 Hours)-48 |  | General | GN | GN |
| RHD4GNPROMIS1400 |  | Completion of material Delivery - MIS - (PO Issuance) | milestone | 0d | 2026-12-23 | 2026-12-23 | RHD4PRSHLPOST1000 FF, RHD4PRSHLPOST1100 FF, RHD4PRSHLPOST1200 FF, RHD4PRSHLPOST1300 FF, RHD4PRSHLPOST1400 FF, RHD4PRSHLPOST1500 FF, RHD4PRSHLPOST1700 FF, RHD4PRSHLPOSW1000 FF, RHD4PRSHLPOSW1100 FF, RHD4PRSHLPOSW1200 FF, RHD4PRSHLPOSW1300 FF, RHD4PRSHLPOSW1400 FF, RHD4PRSHLPOPT1000 FF, RHD4PRSHLPOPT1100 FF, RHD4PRSHLPOPT1200 FF, RHD4PRSHLPOPT1300 FF, RHD4PRSHLPOPT1400 FF, RHD4PRSHLPOPT1500 FF, RHD4PRSHLPOIRR1000 FF, RHD4PRSHLPOIRR1100 FF, RHD4PRSHLPOIRR1200 FF, RHD4PRSHLPOIRR1300 FF, RHD4PRSHLPOIRR1400 FF, RHD4PRSHLPOMV1000 FF, RHD4PRSHLPOMV1100 FF, RHD4PRSHLPOMV1200 FF, RHD4PRSHLPOMV1300 FF, RHD4PRSHLPOMV1400 FF, RHD4PRLOLPOMV1500 FF, RHD4PRLOLPOMV1600 FF, RHD4PRSHLPOLV1000 FF, RHD4PRSHLPOLV1100 FF, RHD4PRSHLPOLV1200 FF, RHD4PRSHLPOLV1300 FF, RHD4PRSHLPOLV1400 FF, RHD4PRSHLPOLV1500 FF, RHD4PRSHLPOSL1000 FF, RHD4PRSHLPOSL1100 FF, RHD4PRSHLPOSL1200 FF, RHD4PRSHLPOSL1300 FF, RHD4PRSHLPOSL1400 FF, RHD4PRSHLPOTC1000 FF, RHD4PRSHLPOTC1100 FF, RHD4PRSHLPOTC1200 FF, RHD4PRSHLPOICT1000 FF, RHD4PRSHLPOICT1100 FF, RHD4PRSHLPOICT1200 FF, RHD4PRSHLPOCCTV1000 FF, RHD4PRSHLPOCCTV1100 FF, RHD4PRSHLPOCCTV1200 FF, RHD4PRSHLPOCCTV1300 FF, RHD4PRSHLPORD1000 FF, RHD4PRSHLPORD1100 FF, RHD4PRSHLPORD1200 FF, RHD4PRSHLPORD1300 FF, RHD4PRSHLPORD1400 FF, RHD4PRSHLPORD1500 FF, RHD4PRSHLPORD1600 FF, RHD4PRSHLPOLFS1000 FF, RHD4PRSHLPOLFS1100 FF, RHD4PRSHLPOLFS1200 FF, RHD4PRSHLPOLFS1300 FF, RHD4PRSHLPOLFS1400 FF, RHD4PRSHLPOLFS1500 FF, RHD4PRSHLPOLFS1600 FF, RHD4PRSHLPOLFS1700 FF, RHD4PRSHLPOLFS1800 FF, RHD4PRSHLPOLFS1900 FF, RHD4PRLOLPOLFS2000 FF, RHD4PRSHLPOLFS2100 FF, RHD4PRSHLPOLFS2200 FF, RHD4PRSHLPOLFS2300 FF, RHD4PRSHLPOLFS2400 FF, RHD4PRSHLPOLFS2500 FF, RHD4PRSHLPOLFS2600 FF, RHD4PRSHLPOLFS2700 FF, RHD4PRSHLPOLFS2800 FF, RHD4PRSHLPOLFS2900 FF, RHD4PRSHLPOLFS3000 FF, RHD4PRLOLPOCCTV1000 FF, RHD4PRLOLPOLFS1000 FF, RHD4PRLOLPOLFS1100 FF, RHD4PRLOLPOLFS1200 FF, RHD4PRLOLPOLFS1300 FF, RHD4PRLOLPOLFS1400 FF, RHD4PRLOLPOLFS1500 FF, RHD4PRLOLPOLFS1600 FF, RHD4PRLOLPOLFS1700 FF, RHD4PRSHLPOST1600 FF, RHD4PRSHLPOSL1300, RHD4GNPPMAT1100 FF, RHD4ENMARSUBSL400 FF |  |  |  | 524d | 756d | RHD4 - (7 Days - 8 Hours)-48 |  | General | GN | GN |
| RHD4GN10MMIS1500 |  | Roads Finish Milestone - MIS | milestone | 0d | 2027-04-21 | 2027-04-21 | RHD4CZ4L09RD3100 FF, RHD4CZ4L09RD3100, RHD4CZ8A011RD3100 FF, RHD4CZ7RA03RD3100 FF, RHD4CZ8C014RD3100 FF, RHD4CZ8RA04RD3100 FF, RHD4CZ7L03RD3100 FF, RHD4CZ9L06RD3100 FF, RHD4CZ9C071RD3100 FF, RHD4CZ7L131RD3100 FF, RHD4CZ7C032RD3100 FF, RHD4CZ7C02RD3100 FF, RHD4CZ8L04RD3100 FF, RHD4CZ7RA05RD3100 FF, RHD4CZ3C083RD3100 FF, RHD4CZ7C013RD3100 FF, RHD4CZ7A012RD3100 FF, RHD4CZ3C011RD3100 FF, RHD4CZ9L02RD3100 FF, RHD4CZ2C082RD3100 FF, RHD4CZ7L015RD3100 FF, RHD4CZ2L011RD3100 FF, RHD4CZ9L05RD3100 FF, RHD4CZ2L102RD3100 FF, RHD4CZ1C081RD3100 FF, RHD4CZ3L122RD3100 FF, RHD4CZ4C012RD3100 FF, RHD4CZ1L101RD3100 FF, RHD4CZ4L014RD3100 FF, RHD4CZ5L07RD3100 FF, RHD4CZ5L016RD3100 FF, RHD4CZ5RA07RD3100 FF, RHD4CZ5A014RD3100 FF, RHD4CZ5C061RD3100 FF, RHD4CZ6RA01RD3100 FF, RHD4CZ6C062RD3100 FF, RHD4CZ4A013RD3100 FF, RHD4CZ4C031RD3100 FF, RHD4CZ4RA02RD3100 FF, RHD4CZ6A015RD3100 FF, RHD4CZ5L08RD3100 FF, RHD4CZ4L01RD3100 FF, RHD4CZ6A02RD3100 FF, RHD4CZ6C052RD3100 FF, RHD4CZ5C051RD3100 FF |  |  |  | 405d | 637d | RHD4 - (7 Days - 8 Hours)-48 |  | General | GN | GN |
| RHD4GN10MMIS1510 |  | Medium Voltage Finish Milestone - MIS | milestone | 0d | 2027-11-04 | 2027-11-04 | RHD4CZ7L015MV3300 FF, RHD4CZ1L101MV3401 FF, RHD4CZ7L03MV2400 FF, RHD4CZ7L03MV3400 FF, RHD4CZ7C02MV2400 FF, RHD4CZ6C062MV2400 FF, RHD4CZ3L122MV2400 FF, RHD4CZ6C052MV2400 FF, RHD4CZ6C062MV2400, RHD4CZ6C062MV3400 FF, RHD4CZ6C052MV2400, RHD4CZ6C052MV3400 FF, RHD4CZ5C051MV2400 FF, RHD4CZ5RA07MV3400 FF, RHD4CZ5C061MV2400 FF, RHD4CZ5C061MV3400 FF, RHD4CZ5L08MV2400 FF, RHD4CZ5L08MV3400 FF, RHD4CZ5A014MV2400 FF, RHD4CZ5A014MV3400 FF, RHD4CZ5L07MV2400 FF, RHD4CZ4L01MV2400 FF, RHD4CZ4A013MV2400 FF, RHD4CZ4C031MV2400 FF, RHD4CZ4L014MV2400 FF, RHD4CZ4L014MV3400 FF, RHD4CZ4L09MV3400 FF, RHD4CZ8A011MV2400 FF, RHD4CZ8A011MV3400 FF, RHD4CZ8RA04MV3400 FF, RHD4CZ8C014MV3400 FF, RHD4CZ9C071MV2400 FF, RHD4CZ9L05MV2400 FF, RHD4CZ9L06MV2400 FF, RHD4CZ9L06MV3400 FF, RHD4CZ9L02MV2400 FF, RHD4CZ9L02MV3400 FF, RHD4CZ7C032MV2400 FF, RHD4CZ7L03MV2400, RHD4CZ7L03MV3400, RHD4CZ7L131MV3400 FF, RHD4CZ7L015MV2400 FF, RHD4CZ7A012MV2400 FF, RHD4CZ7C02MV2400, RHD4CZ7C02MV3400 FF, RHD4CZ2L102MV3400 FF, RHD4CZ2L011MV2400 FF, RHD4CZ1C081MV3400 FF, RHD4CZ3C011MV2400 FF, RHD4CZ3C011MV3400 FF, RHD4CZ3L122MV2400, RHD4CZ3L122MV3400 FF, RHD4CZ5L07MV3401 FF, RHD4CZ4A013MV3401 FF, RHD4CZ4L09MV5400 FF, RHD4CZ1C081MV4200 FF |  |  |  | 208d | 440d | RHD4 - (7 Days - 8 Hours)-48 |  |  |  |  |
| RHD4GN18MMIS1600 |  | Deep Network Finish Milestone - MIS | milestone | 0d | 2027-11-24 | 2027-11-24 | RHD4CZ7L015IRR2402 FF, RHD4CZ7L015IRR3203 FF, RHD4CZ7A012IRR1503 FF, RHD4CZ1L101IRR1504 FF, RHD4CZ1L101IRR3200 FF, RHD4CZ1C081IRR1504 FF, RHD4CZ1C081IRR3200 FF, RHD4CZ3C011IRR2402 FF, RHD4CZ3C011IRR3203 FF, RHD4CZ3L122IRR1500 FF, RHD4CZ3L122IRR1504 FF, RHD4CZ3L122IRR3200 FF, RHD4CZ3L122IRR2401 FF, RHD4CZ3L122IRR3202 FF, RHD4CZ3C083IRR1504 FF, RHD4CZ9C071PT1501 FF, RHD4CZ9C071PT1502 FF, RHD4CZ9L05PT1501 FF, RHD4CZ9L06PT1500 FF, RHD4CZ9L06PT1501 FF, RHD4CZ9L02PT1500 FF, RHD4CZ9L02PT1501 FF, RHD4CZ2L102PT1500 FF, RHD4CZ2L102PT1501 FF, RHD4CZ2L011PT1501 FF, RHD4CZ2C082PT1502 FF, RHD4CZ7C032PT1502 FF, RHD4CZ7C032PT1501 FF, RHD4CZ7L03PT1500 FF, RHD4CZ7L03PT1501 FF, RHD4CZ7L131PT1500 FF, RHD4CZ7L131PT1501 FF, RHD4CZ7L015PT1500 FF, RHD4CZ7L015PT1501 FF, RHD4CZ7A012PT1503 FF, RHD4CZ7C02PT1501 FF, RHD4CZ1L101PT1501 FF, RHD4CZ1L101PT1500 FF, RHD4CZ1C081PT1502 FF, RHD4CZ3C011PT1503 FF, RHD4CZ3C011PT1504 FF, RHD4CZ3L122PT1503 FF, RHD4CZ3C083PT1503 FF, RHD4CZ6C062IRR1500 FF, RHD4CZ6A015IRR1500 FF, RHD4CZ6C052IRR1500 FF, RHD4CZ5C051IRR1500 FF, RHD4CZ5RA07IRR1502 FF, RHD4CZ5C061IRR1502 FF, RHD4CZ5L08IRR1500 FF, RHD4CZ5L08IRR1502 FF, RHD4CZ5L016IRR1502 FF, RHD4CZ5L016IRR1504 FF, RHD4CZ5A014IRR1503 FF, RHD4CZ5L07IRR1500 FF, RHD4CZ4A013IRR1503 FF, RHD4CZ4L014IRR1500 FF, RHD4CZ4L014IRR1503 FF, RHD4CZ4L09IRR1500 FF, RHD4CZ8L04IRR1500 FF, RHD4CZ9C071IRR1500 FF, RHD4CZ9C071IRR1507 FF, RHD4CZ9L05IRR1507 FF, RHD4CZ9L06IRR1500 FF, RHD4CZ9L02IRR1500 FF, RHD4CZ9L02IRR1507 FF, RHD4CZ2L102IRR1504 FF, RHD4CZ2C082IRR1504 FF, RHD4CZ7L03IRR1500 FF, RHD4CZ7L03IRR1504 FF, RHD4CZ7L131IRR1500 FF, RHD4CZ7C013IRR1504 FF, RHD4CZ7L015IRR1500 FF, RHD4CZ7C02IRR1500 FF, RHD4CZ7C02IRR1504 FF, RHD4CZ6A015PT3202 FF, RHD4CZ6C052PT3202 FF, RHD4CZ5RA07PT3202 FF, RHD4CZ5C061PT3202 FF, RHD4CZ5L016PT3202 FF, RHD4CZ5A014PT3202 FF, RHD4CZ5L07PT3202 FF, RHD4CZ4A013PT3202 FF, RHD4CZ4L014PT3202 FF, RHD4CZ8A011PT3202 FF, RHD4CZ9C071PT3202 FF, RHD4CZ2L102PT3202 FF, RHD4CZ2C082PT3202 FF, RHD4CZ7C032PT3202 FF, RHD4CZ7L03PT3202 FF, RHD4CZ7L015PT3202 FF, RHD4CZ7C02PT3202 FF, RHD4CZ3C011PT3202 FF, RHD4CZ3L122PT3202 FF, RHD4CZ6A015PT4400 FF, RHD4CZ6C052PT4400 FF, RHD4CZ5L08PT4400 FF, RHD4CZ5L016PT4400 FF, RHD4CZ5A014PT4400 FF, RHD4CZ5L07PT4400 FF, RHD4CZ4A013PT4400 FF, RHD4CZ4C031PT4400 FF, RHD4CZ4L014PT4400 FF, RHD4CZ4L09PT4400 FF, RHD4CZ8A011PT4400 FF, RHD4CZ4L01PT4400 FF, RHD4CZ8L04PT4400 FF, RHD4CZ9C071PT4400 FF, RHD4CZ9L05PT4400 FF, RHD4CZ9L06PT4400 FF, RHD4CZ9L02PT4400 FF, RHD4CZ2L102PT4400 FF, RHD4CZ2L011PT4400 FF, RHD4CZ2C082PT4400 FF, RHD4CZ7C032PT4400 FF, RHD4CZ7L03PT4400 FF, RHD4CZ7L131PT4400 FF, RHD4CZ7L015PT4400 FF, RHD4CZ7A012PT4400 FF, RHD4CZ1C081PT4400 FF, RHD4CZ3C011PT4400 FF, RHD4CZ3L122PT4400 FF, RHD4CZ3C083PT4400 FF, RHD4CZ6A015IRR3200 FF, RHD4CZ6C052PT3200 FF, RHD4CZ6C052IRR3200 FF, RHD4CZ5RA07PT3200 FF, RHD4CZ5C061PT3200 FF, RHD4CZ5L08PT3200 FF, RHD4CZ5L08IRR3200 FF, RHD4CZ5L016PT3200 FF, RHD4CZ5L07PT3200 FF, RHD4CZ5L07IRR3200 FF, RHD4CZ4L014PT3200 FF, RHD4CZ4L014IRR3200 FF, RHD4CZ4L09PT3200 FF, RHD4CZ4L09IRR3200 FF, RHD4CZ4L01PT3200 FF, RHD4CZ8L04PT3200 FF, RHD4CZ8L04IRR3200 FF, RHD4CZ9C071PT3200 FF, RHD4CZ9L05PT3200 FF, RHD4CZ9L06PT3200 FF, RHD4CZ9L06IRR3200 FF, RHD4CZ9L02PT3200 FF, RHD4CZ9L02IRR3200 FF, RHD4CZ2L102PT3200 FF, RHD4CZ2L102IRR3200 FF, RHD4CZ2L011PT3200 FF, RHD4CZ2C082PT3200 FF, RHD4CZ2C082IRR3200 FF, RHD4CZ7L03IRR3200 FF, RHD4CZ7L131PT3200 FF, RHD4CZ7L131IRR3200 FF, RHD4CZ7L015PT3200 FF, RHD4CZ7L015IRR3200 FF, RHD4CZ7C02PT3200 FF, RHD4CZ7C02IRR3200 FF, RHD4CZ1C081PT3200 FF, RHD4CZ5L08PT3203 FF, RHD4CZ5A014PT3203 FF, RHD4CZ5L07PT3203 FF, RHD4CZ4A013PT3203 FF, RHD4CZ4L014PT3203 FF, RHD4CZ4L09PT3203 FF, RHD4CZ9C071PT3203 FF, RHD4CZ9L05PT3203 FF, RHD4CZ9L06PT3203 FF, RHD4CZ9L02PT3203 FF, RHD4CZ2L102PT3203 FF, RHD4CZ2L011PT3203 FF, RHD4CZ2C082PT3203 FF, RHD4CZ7L131PT3203 FF, RHD4CZ7C02PT3203 FF, RHD4CZ1C081PT3203 FF, RHD4CZ3C011PT3203 FF, RHD4CZ3L122PT3203 FF, RHD4CZ3C083PT3203 FF, RHD4CZ6A015IRR3203 FF, RHD4CZ5RA07IRR3202 FF, RHD4CZ5L07PT3201 FF, RHD4CZ5L07IRR3202 FF, RHD4CZ4A013PT3201 FF, RHD4CZ4C031PT3201 FF, RHD4CZ4L09IRR3202 FF, RHD4CZ8A011PT3201 FF, RHD4CZ9L02IRR3202 FF, RHD4CZ9L02IRR3203 FF, RHD4CZ7L03IRR3201 FF, RHD4CZ7L03IRR3203 FF, RHD4CZ7L131IRR3203 FF, RHD4CZ7L015IRR3202 FF, RHD4CZ7A012PT3201 FF, RHD4CZ7C02IRR3201 FF, RHD4CZ3C011PT3201 FF, RHD4CZ6C062SW3400 FF, RHD4CZ6C052SW3400 FF, RHD4CZ5RA07SW3400 FF, RHD4CZ5C061SW3400 FF, RHD4CZ5C061SW3401 FF, RHD4CZ5L08SW3400 FF, RHD4CZ5L016SW3400 FF, RHD4CZ5L07SW3400 FF, RHD4CZ4L09SW3400 FF, RHD4CZ9L06SW3400 FF, RHD4CZ9L02SW3400 FF, RHD4CZ2L102SW3400 FF, RHD4CZ7L03SW3400 FF, RHD4CZ7L015SW3400 FF, RHD4CZ1L101SW3400 FF, RHD4CZ1C081SW3400 FF, RHD4CZ6C062SW3500 FF, RHD4CZ6C052SW3500 FF, RHD4CZ5RA07SW3500 FF, RHD4CZ5C061SW3500 FF, RHD4CZ5C061SW3501 FF, RHD4CZ5L08SW3500 FF, RHD4CZ5L016SW3500 FF, RHD4CZ5L07SW3500 FF, RHD4CZ4L09SW3500 FF, RHD4CZ9L06SW3500 FF, RHD4CZ9L02SW3500 FF, RHD4CZ2L102SW3500 FF, RHD4CZ7L03SW3500 FF, RHD4CZ7L015SW3500 FF, RHD4CZ1L101SW3500 FF, RHD4CZ1C081SW3500 FF, RHD4CZ7L03ST7500 FF, RHD4CZ7L03ST3502 FF, RHD4CZ7L03PT4500 FF, RHD4CZ1L101IRR3201 FF, RHD4CZ8L04ST3500 FF, RHD4CZ4C012IRR3201 FF, RHD4CZ6A015RW3000 FF, RHD4CZ5L016ST8500 FF, RHD4CZ5A014IRR3203 FF, RHD4CZ1C081TC3400 FF, RHD4CZ3L122ST1507 FF, RHD4CZ7L03SL2400 FF, RHD4CZ7C013IRR3203 FF, RHD4CZ7C013IRR3200 FF, RHD4CZ6C052PT3203 FF, RHD4CZ7C032SL2400 FF, RHD4CZ7C02LV2400 FF, RHD4CZ9L06SL2400 FF, RHD4CZ6C052IRR3202 FF, RHD4CZ9C071ST1502 FF, RHD4CZ9C071ST1501 FF, RHD4CZ9C071ST1500 FF, RHD4CZ5L08SL2400 FF, RHD4CZ5L08SW3000 FF, RHD4CZ5L08SW2500 FF, RHD4CZ5L08PT1501 FF, RHD4CZ4A013LV2400 FF, RHD4CZ1C081IRR3203 FF, RHD4CZ4L09PT3202 FF, RHD4CZ2C082PT2401 FF, RHD4CZ4L09PT2401 FF, RHD4CZ4A013ST2500 FF, RHD4CZ5C061SL2400 FF, RHD4CZ4L014IRR3203 FF, RHD4CZ5L08IRR3202 FF, RHD4CZ4A013ICT3400 FF, RHD4CZ9L02SW2500 FF, RHD4CZ9L05SL2400 FF, RHD4CZ5L016IRR3203 FF, RHD4CZ5L016IRR3201 FF, RHD4CZ4RA02CCTV1500 FF, RHD4CZ4C012IRR1504 FF, RHD4CZ9L02IRR2401 FF, RHD4CZ8C014IRR3200 FF, RHD4CZ8C014IRR1501 FF, RHD4CZ8A011IRR3200 FF, RHD4CZ8C014IRR3202 FF, RHD4CZ9C071SW3500 FF, RHD4CZ7C032IRR3202 FF, RHD4CZ9C071IRR3201 FF, RHD4CZ7A012SW3500 FF, RHD4CZ8L04LV2400 FF, RHD4CZ7C032IRR3203 FF, RHD4CZ8RA04SL2400 FF, RHD4CZ7C032IRR3200 FF, RHD4CZ8L04SL2400 FF, RHD4CZ3C011IRR3200 FF, RHD4CZ4L01CCTV1500 FF, RHD4CZ4L01RD8100 FF, RHD4CZ3L122SL2400 FF, RHD4CZ4L01CCTV6100 FF, RHD4CZ9B36EX1000 FF, RHD4CZ9C071SL2400 FF, RHD4CZ5C061ST3401 FF, RHD4CZ1C081ST3500 FF, RHD4CZ1C081ST3501 FF, RHD4CZ1L101ST3500 FF, RHD4CZ1L101ST3501 FF, RHD4CZ2C082ST3500 FF, RHD4CZ2C082ST3501 FF, RHD4CZ2L011ST3500 FF, RHD4CZ2L102ST3500 FF, RHD4CZ2L102ST3501 FF, RHD4CZ2L102ST3502 FF, RHD4CZ3C083ST3500 FF, RHD4CZ3L122ST3500 FF, RHD4CZ3L122ST3501 FF, RHD4CZ3L122ST3502 FF, RHD4CZ4A013ST3501 FF, RHD4CZ4A013ST3502 FF, RHD4CZ4C031ST3500 FF, RHD4CZ4C031ST3501 FF, RHD4CZ4L014ST3500 FF, RHD4CZ4L014ST3501 FF, RHD4CZ4L014ST3502 FF, RHD4CZ4L09ST3500 FF, RHD4CZ4L09ST3501 FF, RHD4CZ5A014ST3500 FF, RHD4CZ5A014ST3501 FF, RHD4CZ5A014ST3502 FF, RHD4CZ5C051ST3500 FF, RHD4CZ5C051ST3501 FF, RHD4CZ5C061ST3501 FF, RHD4CZ5L016ST3500 FF, RHD4CZ5L016ST3501 FF, RHD4CZ5L016ST3502 FF, RHD4CZ5L07ST3500 FF, RHD4CZ5L07ST3501 FF, RHD4CZ5L07ST3502 FF, RHD4CZ5L08ST3500 FF, RHD4CZ5L08ST3502 FF, RHD4CZ6A015ST3500 FF, RHD4CZ6A015ST3501 FF, RHD4CZ6A02ST3500 FF, RHD4CZ6C052ST3500 FF, RHD4CZ6C052ST3501 FF, RHD4CZ6C062ST3500 FF, RHD4CZ6C062ST3501 FF, RHD4CZ7C02ST3500 FF, RHD4CZ7C02ST3501 FF, RHD4CZ7C02ST3502 FF, RHD4CZ7L015ST3500 FF, RHD4CZ7L015ST3501 FF, RHD4CZ7L131ST3501 FF, RHD4CZ8A011ST3500 FF, RHD4CZ8A011ST3501 FF, RHD4CZ8L04ST3501 FF, RHD4CZ8L04ST3502 FF, RHD4CZ9C071ST3500 FF, RHD4CZ9C071ST3501 FF, RHD4CZ9C071ST3502 FF, RHD4CZ9L02ST3500 FF, RHD4CZ9L02ST3501 FF, RHD4CZ9L02ST3502 FF, RHD4CZ9L05ST3500 FF, RHD4CZ9L06ST3500 FF, RHD4CZ9L06ST3501 FF, RHD4CZ9L06ST3502 FF, RHD4CZ1C081ST7500 FF, RHD4CZ1L101ST7500 FF, RHD4CZ2C082ST7500 FF, RHD4CZ2L011ST7500 FF, RHD4CZ2L102ST7500 FF, RHD4CZ3C083ST7500 FF, RHD4CZ3L122ST7500 FF, RHD4CZ4A013ST7500 FF, RHD4CZ4C031ST7500 FF, RHD4CZ4L014ST7500 FF, RHD4CZ4L09ST7500 FF, RHD4CZ5A014ST7500 FF, RHD4CZ5C051ST7500 FF, RHD4CZ5C061ST7500 FF, RHD4CZ5L016ST7500 FF, RHD4CZ5L07ST7500 FF, RHD4CZ5L08ST7500 FF, RHD4CZ6A015ST7500 FF, RHD4CZ6A02ST7500 FF, RHD4CZ6C052ST7500 FF, RHD4CZ6C062ST7500 FF, RHD4CZ7A012ST7500 FF, RHD4CZ7C02ST7500 FF, RHD4CZ7L015ST7500 FF, RHD4CZ7L03ST7500, RHD4CZ7L131ST7500 FF, RHD4CZ8A011ST7500 FF, RHD4CZ8L04ST7500 FF, RHD4CZ9C071ST7500 FF, RHD4CZ9L02ST7500 FF, RHD4CZ9L05ST7500 FF, RHD4CZ9L06ST7500 FF, RHD4CZ1C081ST8500 FF, RHD4CZ2C082ST8500 FF, RHD4CZ2L102ST8500 FF, RHD4CZ3L122ST8500 FF, RHD4CZ4A013ST8500 FF, RHD4CZ4L014ST8500 FF, RHD4CZ5A014ST8500 FF, RHD4CZ5L07ST8500 FF, RHD4CZ6C052ST8500 FF, RHD4CZ6C062ST8500 FF, RHD4CZ7A012ST8500 FF, RHD4CZ7C02ST8500 FF, RHD4CZ7L015PT4500 FF, RHD4CZ6C052PT4500 FF, RHD4CZ5A014PT4500 FF, RHD4CZ5C051IRR3202 FF, RHD4CZ5C051IRR3203 FF, RHD4CZ5C051IRR3202, RHD4CZ5L016PT4500 FF, RHD4CZ5L08PT4500 FF, RHD4CZ5RA07IRR3200 FF, RHD4CZ5L07PT4500 FF, RHD4CZ5C051PT3200 FF, RHD4CZ5C051IRR3200 FF, RHD4CZ8A011PT4500 FF, RHD4CZ4L01PT4500 FF, RHD4CZ8L04PT4500 FF, RHD4CZ9C071PT4500 FF, RHD4CZ9L05PT4500 FF, RHD4CZ9L06PT4500 FF, RHD4CZ7A012PT4500 FF, RHD4CZ4C031PT4500 FF, RHD4CZ4L014PT4500 FF, RHD4CZ4L09PT4500 FF, RHD4CZ3L122PT4500 FF, RHD4CZ1C081PT4500 FF, RHD4CZ2C082PT4500 FF, RHD4CZ2L102PT4500 FF, RHD4CZ2L011PT4500 FF, RHD4CZ5L08ST4600 FF, RHD4CZ2L102ST4600 FF, RHD4CZ9L05SW3500 FF, RHD4PRSHLDOSIRR1300 FF, RHD4PRSHLSTAGIRR1300 FF, RHD4PRSHLDOSIRR1100 FF, RHD4PRSHLSTAGIRR1100 FF, RHD4PRSHLDOSIRR1200 FF, RHD4PRSHLDOSIRR1400 FF, RHD4PRSHLSTAGIRR1200 FF, RHD4PRSHLSTAGIRR1400 FF, RHD4ENSDZ9APPIRR140 FF, RHD4CZ9L06IRR1100 FF, RHD4PRSHLDOSSW1408 FF, RHD4PRSHLSTAGSW1408 FF, RHD4PRSHLDOSSW1308 FF, RHD4PRSHLSTAGSW1308 FF, RHD4CZ9L06SW3501 FF, RHD4CZ5A014SW3500 FF, RHD4CZ5A014IRR3200 FF |  |  |  | 188.98d | 420.98d | RHD4 - (7 Days - 8 Hours)-48 |  | General | GN | GN |
| RHD4GN24MMIS1700 |  | All Network Finish Milestone - MIS | milestone | 0d | 2028-06-29 | 2028-06-29 | RHD4CZ6C062MV1200 FF, RHD4CZ6C052MV1200 FF, RHD4CZ5C051MV1200 FF, RHD4CZ5RA07MV1200 FF, RHD4CZ5C061MV1200 FF, RHD4CZ5L08MV1200 FF, RHD4CZ5L016MV1200 FF, RHD4CZ5A014MV1200 FF, RHD4CZ5L07MV1200 FF, RHD4CZ4A013MV1200 FF, RHD4CZ4C031MV1200 FF, RHD4CZ4L014MV1200 FF, RHD4CZ4L09MV1200 FF, RHD4CZ4C012MV1200 FF, RHD4CZ8A011MV1200 FF, RHD4CZ4L01MV1200 FF, RHD4CZ8L04MV1200 FF, RHD4CZ8C014MV1200 FF, RHD4CZ9C071MV1200 FF, RHD4CZ9L06MV1200 FF, RHD4CZ9L02MV1200 FF, RHD4CZ2L102MV1200 FF, RHD4CZ2L011MV1200 FF, RHD4CZ7C032MV1200 FF, RHD4CZ7L03MV1200 FF, RHD4CZ7L131MV1200 FF, RHD4CZ7C013MV1200 FF, RHD4CZ7L015MV1200 FF, RHD4CZ7A012MV1200 FF, RHD4CZ7C02MV1200 FF, RHD4CZ1L101MV1200 FF, RHD4CZ1C081MV1200 FF, RHD4CZ3C011MV1200 FF, RHD4CZ3L122MV1200 FF, RHD4CZ6C062MV3300 FF, RHD4CZ6C062LV3300 FF, RHD4CZ6C062LV3400 FF, RHD4CZ6C062SL3300 FF, RHD4CZ6C062SL3400 FF, RHD4CZ6A015LV3300 FF, RHD4CZ6A015LV3400 FF, RHD4CZ6A015SL3300 FF, RHD4CZ6A015SL3400 FF, RHD4CZ6C052MV3300 FF, RHD4CZ6C052LV3300 FF, RHD4CZ6C052LV3400 FF, RHD4CZ6C052SL3300 FF, RHD4CZ6C052SL3400 FF, RHD4CZ6A02LV3300 FF, RHD4CZ6A02LV3400 FF, RHD4CZ6A02SL3300 FF, RHD4CZ6A02SL3400 FF, RHD4CZ6RA01SL3300 FF, RHD4CZ6RA01SL3400 FF, RHD4CZ5C051MV3300 FF, RHD4CZ5C051LV3300 FF, RHD4CZ5C051LV3400 FF, RHD4CZ5C051SL3300 FF, RHD4CZ5C051SL3400 FF, RHD4CZ5RA07MV3300 FF, RHD4CZ5RA07MV3301 FF, RHD4CZ5RA07LV3300 FF, RHD4CZ5RA07LV3400 FF, RHD4CZ5RA07SL3300 FF, RHD4CZ5RA07SL3400 FF, RHD4CZ5C061MV3300 FF, RHD4CZ5C061MV3301 FF, RHD4CZ5C061LV3300 FF, RHD4CZ5C061LV3400 FF, RHD4CZ5C061SL3300 FF, RHD4CZ5C061SL3400 FF, RHD4CZ5L08MV3300 FF, RHD4CZ5L08LV3300 FF, RHD4CZ5L08LV3400 FF, RHD4CZ5L08SL3300 FF, RHD4CZ5L08SL3400 FF, RHD4CZ5L016MV3300 FF, RHD4CZ5L016LV3300 FF, RHD4CZ5L016LV3400 FF, RHD4CZ5L016SL3300 FF, RHD4CZ5L016SL3400 FF, RHD4CZ5A014MV3300 FF, RHD4CZ5A014SL3300 FF, RHD4CZ5A014SL3400 FF, RHD4CZ5L07MV3300 FF, RHD4CZ5L07LV3300 FF, RHD4CZ5L07LV3400 FF, RHD4CZ5L07SL3300 FF, RHD4CZ5L07SL3400 FF, RHD4CZ4A013MV3300 FF, RHD4CZ4A013SL3300 FF, RHD4CZ4A013SL3400 FF, RHD4CZ4RA02SL3300 FF, RHD4CZ4RA02SL3400 FF, RHD4CZ4C031MV3300 FF, RHD4CZ4C031LV3300 FF, RHD4CZ4C031LV3400 FF, RHD4CZ4C031SL3300 FF, RHD4CZ4C031SL3400 FF, RHD4CZ4L014MV3300 FF, RHD4CZ4L014MV3301 FF, RHD4CZ4L014LV3300 FF, RHD4CZ4L014LV3400 FF, RHD4CZ4L014SL3300 FF, RHD4CZ4L014SL3400 FF, RHD4CZ4L09MV3300 FF, RHD4CZ4L09MV3301 FF, RHD4CZ4L09LV3300 FF, RHD4CZ4L09LV3400 FF, RHD4CZ4L09SL3300 FF, RHD4CZ4L09SL3400 FF, RHD4CZ4C012MV3300 FF, RHD4CZ4C012LV3300 FF, RHD4CZ4C012LV3400 FF, RHD4CZ4C012SL3300 FF, RHD4CZ4C012SL3400 FF, RHD4CZ8A011MV3300 FF, RHD4CZ8A011MV3301 FF, RHD4CZ8A011LV3300 FF, RHD4CZ8A011LV3400 FF, RHD4CZ8A011SL3300 FF, RHD4CZ8A011SL3400 FF, RHD4CZ8RA04MV3301 FF, RHD4CZ8RA04LV3300 FF, RHD4CZ8RA04LV3400 FF, RHD4CZ8RA04SL3300 FF, RHD4CZ8RA04SL3400 FF, RHD4CZ4L01MV3300 FF, RHD4CZ4L01LV3300 FF, RHD4CZ4L01LV3400 FF, RHD4CZ4L01SL3300 FF, RHD4CZ4L01SL3400 FF, RHD4CZ8L04MV3300 FF, RHD4CZ8L04SL3300 FF, RHD4CZ8L04SL3400 FF, RHD4CZ8C014MV3300 FF, RHD4CZ8C014MV3301 FF, RHD4CZ8C014LV3300 FF, RHD4CZ8C014LV3400 FF, RHD4CZ8C014SL3300 FF, RHD4CZ8C014SL3400 FF, RHD4CZ9C071MV3300 FF, RHD4CZ9C071LV3300 FF, RHD4CZ9C071LV3400 FF, RHD4CZ9C071SL3300 FF, RHD4CZ9C071SL3400 FF, RHD4CZ9L05MV3300 FF, RHD4CZ9L05LV3300 FF, RHD4CZ9L05LV3400 FF, RHD4CZ9L05SL3300 FF, RHD4CZ9L05SL3400 FF, RHD4CZ9L06MV3300 FF, RHD4CZ9L06LV3300 FF, RHD4CZ9L06LV3400 FF, RHD4CZ9L06SL3300 FF, RHD4CZ9L06SL3400 FF, RHD4CZ9L02MV3300 FF, RHD4CZ9L02MV3301 FF, RHD4CZ9L02LV3300 FF, RHD4CZ9L02LV3400 FF, RHD4CZ9L02SL3300 FF, RHD4CZ9L02SL3400 FF, RHD4CZ2L102MV3300 FF, RHD4CZ2L102SL3300 FF, RHD4CZ2L102SL3400 FF, RHD4CZ2L011MV3300 FF, RHD4CZ2L011LV3300 FF, RHD4CZ2L011LV3400 FF, RHD4CZ2L011SL3300 FF, RHD4CZ2L011SL3400 FF, RHD4CZ2C082SL3300 FF, RHD4CZ2C082SL3400 FF, RHD4CZ7C032MV3300 FF, RHD4CZ7C032LV3300 FF, RHD4CZ7C032LV3400 FF, RHD4CZ7C032SL3300 FF, RHD4CZ7C032SL3400 FF, RHD4CZ7L03MV3300 FF, RHD4CZ7L03MV3301 FF, RHD4CZ7L03LV3300 FF, RHD4CZ7L03LV3400 FF, RHD4CZ7L03SL3300 FF, RHD4CZ7L03SL3400 FF, RHD4CZ7L131MV3300 FF, RHD4CZ7L131LV3300 FF, RHD4CZ7L131LV3400 FF, RHD4CZ7L131SL3300 FF, RHD4CZ7L131SL3400 FF, RHD4CZ7C013MV3300 FF, RHD4CZ7C013SL3300 FF, RHD4CZ7C013SL3400 FF, RHD4CZ7L015MV3300 FF, RHD4CZ7L015SL3300 FF, RHD4CZ7L015SL3400 FF, RHD4CZ7A012MV3300 FF, RHD4CZ7A012LV3300 FF, RHD4CZ7A012LV3400 FF, RHD4CZ7A012SL3300 FF, RHD4CZ7A012SL3400 FF, RHD4CZ7C02MV3300 FF, RHD4CZ7C02LV3300 FF, RHD4CZ7C02LV3400 FF, RHD4CZ7C02SL3300 FF, RHD4CZ7C02SL3400 FF, RHD4CZ7RA03MV3301 FF, RHD4CZ7RA03LV3300 FF, RHD4CZ7RA03LV3400 FF, RHD4CZ7RA03SL3300 FF, RHD4CZ7RA03SL3400 FF, RHD4CZ7RA05SL3300 FF, RHD4CZ7RA05SL3400 FF, RHD4CZ1L101MV3300 FF, RHD4CZ1L101LV3300 FF, RHD4CZ1L101LV3400 FF, RHD4CZ1L101SL3300 FF, RHD4CZ1L101SL3400 FF, RHD4CZ1C081MV3300 FF, RHD4CZ1C081LV3300 FF, RHD4CZ1C081LV3400 FF, RHD4CZ1C081SL3300 FF, RHD4CZ1C081SL3400 FF, RHD4CZ3C011MV3300 FF, RHD4CZ3C011MV3301 FF, RHD4CZ3C011LV3300 FF, RHD4CZ3C011LV3400 FF, RHD4CZ3C011SL3300 FF, RHD4CZ3C011SL3400 FF, RHD4CZ3L122MV3300 FF, RHD4CZ3L122MV3301 FF, RHD4CZ3L122LV3300 FF, RHD4CZ3L122LV3400 FF, RHD4CZ3L122SL3300 FF, RHD4CZ3L122SL3400 FF, RHD4CZ3C083LV3300 FF, RHD4CZ3C083LV3400 FF, RHD4CZ3C083SL3300 FF, RHD4CZ3C083SL3400 FF, RHD4CZ6C062SL6100 FF, RHD4CZ6A015SL6100 FF, RHD4CZ6C052SL6100 FF, RHD4CZ6A02SL6100 FF, RHD4CZ5C051SL6100 FF, RHD4CZ5RA07SL6100 FF, RHD4CZ5C061SL6100 FF, RHD4CZ5L016SL6100 FF, RHD4CZ5A014SL6100 FF, RHD4CZ5L07SL6100 FF, RHD4CZ4A013SL6100 FF, RHD4CZ4C031SL6100 FF, RHD4CZ4L014SL6100 FF, RHD4CZ4L09SL6100 FF, RHD4CZ8A011SL6100 FF, RHD4CZ8L04SL6100 FF, RHD4CZ8C014SL6100 FF, RHD4CZ9C071SL6100 FF, RHD4CZ9L05SL6100 FF, RHD4CZ9L06SL6100 FF, RHD4CZ9L02SL6100 FF, RHD4CZ2L102SL6100 FF, RHD4CZ2C082SL6100 FF, RHD4CZ7C032SL6100 FF, RHD4CZ7L03SL6100 FF, RHD4CZ7C013SL6100 FF, RHD4CZ7L015SL6100 FF, RHD4CZ7C02SL6100 FF, RHD4CZ7RA03SL6100 FF, RHD4CZ7RA05SL6100 FF, RHD4CZ1L101SL6100 FF, RHD4CZ1C081SL6100 FF, RHD4CZ3C011SL6100 FF, RHD4CZ3C083SL6100 FF, RHD4CZ6C062TC2400 FF, RHD4CZ6C062ICT2400 FF, RHD4CZ6A015TC2400 FF, RHD4CZ6A015ICT2400 FF, RHD4CZ6C052TC2400 FF, RHD4CZ6C052ICT2400 FF, RHD4CZ6A02TC2400 FF, RHD4CZ6A02ICT2400 FF, RHD4CZ6RA01TC2400 FF, RHD4CZ5C051TC2400 FF, RHD4CZ5C051ICT2400 FF, RHD4CZ5RA07TC2400 FF, RHD4CZ5RA07ICT2400 FF, RHD4CZ5C061TC2400 FF, RHD4CZ5C061ICT2400 FF, RHD4CZ5L08TC2400 FF, RHD4CZ5L08ICT2400 FF, RHD4CZ5L016TC2400 FF, RHD4CZ5L016ICT2400 FF, RHD4CZ5A014TC2400 FF, RHD4CZ5A014ICT2400 FF, RHD4CZ5L07TC2400 FF, RHD4CZ5L07ICT2400 FF, RHD4CZ4A013TC2400 FF, RHD4CZ4A013ICT2400 FF, RHD4CZ4C031TC2400 FF, RHD4CZ4C031ICT2400 FF, RHD4CZ4L014TC2400 FF, RHD4CZ4L014ICT2400 FF, RHD4CZ4L09TC2400 FF, RHD4CZ4L09ICT2400 FF, RHD4CZ4C012TC2400 FF, RHD4CZ4C012ICT2400 FF, RHD4CZ8A011TC2400 FF, RHD4CZ8A011ICT2400 FF, RHD4CZ8RA04ICT2400 FF, RHD4CZ4L01TC2400 FF, RHD4CZ4L01ICT2400 FF, RHD4CZ8L04TC2400 FF, RHD4CZ8L04ICT2400 FF, RHD4CZ8C014TC2400 FF, RHD4CZ8C014ICT2400 FF, RHD4CZ9C071TC2400 FF, RHD4CZ9C071ICT2400 FF, RHD4CZ9L05TC2400 FF, RHD4CZ9L05ICT2400 FF, RHD4CZ9L06TC2400 FF, RHD4CZ9L06ICT2400 FF, RHD4CZ9L02TC2400 FF, RHD4CZ9L02ICT2400 FF, RHD4CZ2L102TC2400 FF, RHD4CZ2L102ICT2400 FF, RHD4CZ2L011TC2400 FF, RHD4CZ2L011ICT2400 FF, RHD4CZ2C082TC2400 FF, RHD4CZ2C082ICT2400 FF, RHD4CZ7C032TC2400 FF, RHD4CZ7C032ICT2400 FF, RHD4CZ7L03TC2400 FF, RHD4CZ7L03ICT2400 FF, RHD4CZ7L131TC2400 FF, RHD4CZ7L131ICT2400 FF, RHD4CZ7C013TC2400 FF, RHD4CZ7C013ICT2400 FF, RHD4CZ7L015TC2400 FF, RHD4CZ7L015ICT2400 FF, RHD4CZ7A012TC2400 FF, RHD4CZ7A012ICT2400 FF, RHD4CZ7C02TC2400 FF, RHD4CZ7C02ICT2400 FF, RHD4CZ7RA03ICT2400 FF, RHD4CZ7RA05ICT2400 FF, RHD4CZ1L101TC2400 FF, RHD4CZ1L101ICT2400 FF, RHD4CZ1C081TC2400 FF, RHD4CZ1C081ICT2400 FF, RHD4CZ3C011ICT2400 FF, RHD4CZ3L122TC2400 FF, RHD4CZ3L122ICT2400 FF, RHD4CZ3C083TC2400 FF, RHD4CZ3C083ICT2400 FF, RHD4CZ6C062SL1500 FF, RHD4CZ6A015SL1500 FF, RHD4CZ6C052SL1500 FF, RHD4CZ6A02SL1500 FF, RHD4CZ6RA01SL1500 FF, RHD4CZ5C051SL1500 FF, RHD4CZ5RA07SL1500 FF, RHD4CZ5C061SL1500 FF, RHD4CZ5L08SL1500 FF, RHD4CZ5L016SL1500 FF, RHD4CZ5A014SL1500 FF, RHD4CZ5L07SL1500 FF, RHD4CZ4A013SL1500 FF, RHD4CZ4RA02SL1500 FF, RHD4CZ4C031SL1500 FF, RHD4CZ4L014SL1500 FF, RHD4CZ4L09SL1500 FF, RHD4CZ4C012SL1500 FF, RHD4CZ8A011SL1500 FF, RHD4CZ8RA04SL1500 FF, RHD4CZ4L01SL1500 FF, RHD4CZ8L04SL1500 FF, RHD4CZ8C014SL1500 FF, RHD4CZ9C071SL1500 FF, RHD4CZ9L05SL1500 FF, RHD4CZ9L06SL1500 FF, RHD4CZ9L02SL1500 FF, RHD4CZ2L102SL1500 FF, RHD4CZ2L011SL1500 FF, RHD4CZ2C082SL1500 FF, RHD4CZ7C032SL1500 FF, RHD4CZ7L03SL1500 FF, RHD4CZ7L131SL1500 FF, RHD4CZ7C013SL1500 FF, RHD4CZ7L015SL1500 FF, RHD4CZ7A012SL1500 FF, RHD4CZ7C02SL1500 FF, RHD4CZ7RA03SL1500 FF, RHD4CZ7RA05SL1500 FF, RHD4CZ1L101SL1500 FF, RHD4CZ1C081SL1500 FF, RHD4CZ3C011SL1500 FF, RHD4CZ3C083SL1500 FF, RHD4CZ6A015CCTV1400 FF, RHD4CZ6A015CCTV6100 FF, RHD4CZ6A02CCTV1400 FF, RHD4CZ6A02CCTV6100 FF, RHD4CZ6RA01CCTV1400 FF, RHD4CZ6RA01CCTV1500 FF, RHD4CZ6RA01CCTV6100 FF, RHD4CZ5RA07CCTV1400 FF, RHD4CZ5RA07CCTV1500 FF, RHD4CZ5RA07CCTV6100 FF, RHD4CZ5C061CCTV1400 FF, RHD4CZ5C061CCTV1500 FF, RHD4CZ5C061CCTV6100 FF, RHD4CZ5L016CCTV1400 FF, RHD4CZ5L016CCTV1500 FF, RHD4CZ5L016CCTV6100 FF, RHD4CZ5L07CCTV1400 FF, RHD4CZ5L07CCTV1500 FF, RHD4CZ5L07CCTV6100 FF, RHD4CZ4C031CCTV1400 FF, RHD4CZ4C031CCTV1500 FF, RHD4CZ4C031CCTV6100 FF, RHD4CZ4L014CCTV1400 FF, RHD4CZ4L014CCTV1500 FF, RHD4CZ4L014CCTV6100 FF, RHD4CZ8A011CCTV1400 FF, RHD4CZ8A011CCTV1500 FF, RHD4CZ8A011CCTV6100 FF, RHD4CZ8RA04CCTV1400 FF, RHD4CZ8RA04CCTV1500 FF, RHD4CZ8RA04CCTV6100 FF, RHD4CZ8L04CCTV1400 FF, RHD4CZ8L04CCTV1500 FF, RHD4CZ8L04CCTV6100 FF, RHD4CZ9L02CCTV1400 FF, RHD4CZ9L02CCTV1500 FF, RHD4CZ9L02CCTV6100 FF, RHD4CZ2L102CCTV1400 FF, RHD4CZ2L102CCTV1500 FF, RHD4CZ2L102CCTV6100 FF, RHD4CZ2C082CCTV1400 FF, RHD4CZ2C082CCTV1500 FF, RHD4CZ2C082CCTV6100 FF, RHD4CZ7C032CCTV1400 FF, RHD4CZ7C032CCTV1500 FF, RHD4CZ7C032CCTV6100 FF, RHD4CZ7L03CCTV1400 FF, RHD4CZ7L03CCTV1500 FF, RHD4CZ7L03CCTV6100 FF, RHD4CZ7C02CCTV1400 FF, RHD4CZ7C02CCTV6100 FF, RHD4CZ7RA03CCTV1400 FF, RHD4CZ7RA03CCTV1500 FF, RHD4CZ7RA03CCTV6100 FF, RHD4CZ1L101CCTV1400 FF, RHD4CZ1L101CCTV1500 FF, RHD4CZ1L101CCTV6100 FF, RHD4CZ1C081CCTV1400 FF, RHD4CZ1C081CCTV1500 FF, RHD4CZ1C081CCTV6100 FF, RHD4CZ3C083CCTV1400 FF, RHD4CZ3C083CCTV1500 FF, RHD4CZ3C083CCTV6100 FF, RHD4CZ4RA02CCTV2100 FF, RHD4CZ7L131CCTV2100 FF, RHD4CZ7L015CCTV2100 FF, RHD4CZ7L015CCTV1500 FF, RHD4CZ6C062MV3400 FF, RHD4CZ6C062MV3401 FF, RHD4CZ6RA01CCTV5200 FF, RHD4CZ6C052MV3400 FF, RHD4CZ6C052MV3401 FF, RHD4CZ5C061MV3401 FF, RHD4CZ5C061MV3400 FF, RHD4CZ5L08MV3401 FF, RHD4CZ5L08MV4200 FF, RHD4CZ5L08MV3401, RHD4CZ5L08MV3400 FF, RHD4CZ5RA07MV3400 FF, RHD4CZ5RA07MV3401 FF, RHD4CZ5RA07MV5400 FF, RHD4CZ5C051CCTV2100 FF, RHD4CZ8C014MV5400 FF, RHD4CZ8C014MV3401 FF, RHD4CZ8C014MV3400 FF, RHD4CZ4L01CCTV2100 FF, RHD4CZ3C011CCTV2100 FF, RHD4PRSHLSTAGLS1000 FF, RHD4PRSHLPOSL1300, RHD4GNPPMAT1100 FF, RHD4ENMARSUBSL400 FF, RHD4GNPPSD1100 FF, RHD4ENSDZ9SUBCCTV210, RHD4CZ1L101RW3000 FF, RHD4CZ1C081RW3000 FF, RHD4CZ1C081DM2000 FF, RHD4CZ2L102RW3002 FF, RHD4CZ2L011RW3000 FF, RHD4CZ2C082RW3000 FF, RHD4CZ4A013RW3003 FF, RHD4CZ4C031RW3000 FF, RHD4CZ4L014RW3000 FF, RHD4CZ4C012RW3000 FF, RHD4CZ3L122MV2400 FF, RHD4CZ5A014CCTV1500 FF, RHD4CZ5L08RW3000 FF |  |  |  | -30d | 202d | RHD4 - (7 Days - 8 Hours)-48 |  | General | GN | GN |
| RHD4GNPFMIS1800 |  | Project Finish - MIS | milestone | 0d | 2029-01-17 | 2029-01-17 | RHD4HOASZ4APPSW120, RHD4HOASZ4APPPT130, RHD4HOASZ4APPIRR140, RHD4HOASZ4APPMV150, RHD4HOASZ4APPLV160, RHD4HOASZ4APPSL170, RHD4HOASZ4APPTC190, RHD4HOASZ4APPICT200 FF, RHD4HOASZ4APPCCTV210, RHD4HOASZ4APPRD220, RHD4HOASZ5APPEW100, RHD4HOASZ5APPST110, RHD4HOASZ5APPSW120, RHD4HOASZ5APPPT130, RHD4HOASZ5APPIRR140, RHD4HOASZ5APPMV150, RHD4HOASZ5APPLV160, RHD4HOASZ5APPSL170, RHD4HOASZ5APPTC190, RHD4HOASZ5APPICT200 FF, RHD4HOASZ5APPCCTV210, RHD4HOASZ5APPRD220, RHD4HOASZ6APPEW100, RHD4HOASZ6APPST110, RHD4HOASZ6APPSW120, RHD4HOASZ6APPPT130, RHD4HOASZ6APPIRR140, RHD4HOASZ6APPMV150, RHD4HOASZ6APPLV160, RHD4HOASZ6APPSL170, RHD4HOASZ6APPTC190, RHD4HOASZ6APPICT200 FF, RHD4HOASZ6APPCCTV210, RHD4HOASZ6APPRD220, RHD4HOASZ7APPEW100, RHD4HOASZ7APPST110, RHD4HOASZ7APPSW120, RHD4HOASZ7APPPT130, RHD4HOASZ7APPIRR140, RHD4HOASZ7APPMV150, RHD4HOASZ7APPLV160, RHD4HOASZ7APPSL170, RHD4HOASZ7APPTC190, RHD4HOASZ7APPICT200 FF, RHD4HOASZ7APPCCTV210, RHD4HOASZ7APPRD220, RHD4HOASZ8APPEW100, RHD4HOASZ8APPST110, RHD4HOASZ8APPSW120, RHD4HOASZ8APPPT130, RHD4HOASZ8APPIRR140, RHD4HOASZ8APPMV150, RHD4HOASZ8APPLV160, RHD4HOASZ8APPSL170, RHD4HOASZ8APPTC190, RHD4HOASZ8APPICT200 FF, RHD4HOASZ8APPCCTV210, RHD4HOASZ8APPRD220, RHD4HOASZ9APPEW100, RHD4HOASZ9APPST110, RHD4HOASZ9APPSW120, RHD4HOASZ9APPPT130, RHD4HOASZ9APPIRR140, RHD4HOASZ9APPMV150, RHD4HOASZ9APPLV160, RHD4HOASZ9APPSL170, RHD4HOASZ9APPTC190, RHD4HOASZ9APPICT200 FF, RHD4HOASZ9APPCCTV210, RHD4HOASZ9APPRD220, RHD4HOASTUN1APP1000, RHD4HOASTUN1APP1100, RHD4HOASTUN1APP1200, RHD4HOASSWL1APP1000, RHD4HOASSWL1APP1100, RHD4HOASSWL1APP1200, RHD4HOASSWL1APP1300, RHD4HOASSTL1APP1000, RHD4HOASSTL1APP1100, RHD4HOASSTL1APP1200, RHD4HOASSTL1APP1300, RHD4GNHOOS1214, RHD4GNHOWG1215, RHD4GNHOFM1216, RHD4CZ6C062RD7100 FF, RHD4CZ6A015RD7100 FF, RHD4CZ6C052RD7100 FF, RHD4CZ5C051RD7100 FF, RHD4CZ5RA07RD7100 FF, RHD4CZ5C061RD7100 FF, RHD4CZ5L08RD7100 FF, RHD4CZ5L016RD7100 FF, RHD4CZ5A014RD7100 FF, RHD4CZ5L07RD7100 FF, RHD4CZ4A013RD7100 FF, RHD4CZ4RA02RD7100 FF, RHD4CZ4C031RD7100 FF, RHD4CZ4L014RD7100 FF, RHD4CZ4L09RD7100 FF, RHD4CZ4C012RD7100 FF, RHD4CZ8A011RD7100 FF, RHD4CZ8RA04RD7100 FF, RHD4CZ4L01RD7100 FF, RHD4CZ8L04RD7100 FF, RHD4CZ8C014RD7100 FF, RHD4CZ9C071RD7100 FF, RHD4CZ9L05RD7100 FF, RHD4CZ9L06RD7100 FF, RHD4CZ9L02RD7100 FF, RHD4CZ2L102RD7100 FF, RHD4CZ2L011RD7100 FF, RHD4CZ2C082RD7100 FF, RHD4CZ7C032RD7100 FF, RHD4CZ7L03RD7100 FF, RHD4CZ7L131RD7100 FF, RHD4CZ7C013RD7100 FF, RHD4CZ7L015RD7100 FF, RHD4CZ7A012RD7100 FF, RHD4CZ7C02RD7100 FF, RHD4CZ7RA03RD7100 FF, RHD4CZ1L101RD7100 FF, RHD4CZ1C081RD7100 FF, RHD4CZ3C011RD7100 FF, RHD4CZ3L122RD7100 FF, RHD4CZ3C083RD7100 FF, RHD4CZ3L122RD4100 FF, RHD4GNHOFM1217 FF, RHD4GNHODMOB1000 FF, RHD4GNHODMOB1100 FF, RHD4GNHODMOB1200 FF, RHD4GNHODMOB1300 FF, RHD4GNHODMOB1400 FF, RHD4GNHOOS1214 FF, RHD4GNHOWG1215 FF, RHD4CZ7RA05RD9100 FF, RHD4CZ7RA05RD7100 FF, RHD4GNMRDMIS1200 FF, RHD4GNMOBMIS1100 FF, RHD4GNENMIS1300 FF, RHD4GNPROMIS1400 FF, RHD4GN10MMIS1500 FF, RHD4GN18MMIS1600 FF, RHD4GN24MMIS1700 FF, RHD4CZ9L06ICT2400, RHD4CZ9L06TC2400, RHD4HOASZ6SUBTC190, RHD4PRSHLSTAGLS1000, RHD4PRSHLPOSL1300 SS, RHD4GNPPMAT1100, RHD4ENMARSUBSL400 SS, RHD4GNPPSD1100, RHD4ENSDZ9SUBCCTV210 SS, A1000, RHD4CZ8A011SW2500 FF, RHD4CZ8RA04RD8100 FF, RHD4CZ9L02IRR3201 FF, RHD4CZ7L03SW1500 FF, RHD4CZ7C02SW1500 FF, RHD4CZ7RA05RD8100 FF, RHD4HOASZ1APPEW100, RHD4HOASZ1APPST110, RHD4HOASZ1APPSW120, RHD4HOASZ1APPPT130, RHD4HOASZ1APPIRR140, RHD4HOASZ1APPMV150, RHD4HOASZ1APPLV160, RHD4HOASZ1APPSL170, RHD4HOASZ1APPTC190, RHD4HOASZ1APPICT200 FF, RHD4HOASZ1APPCCTV210, RHD4HOASZ1APPRD220, RHD4HOASZ2APPEW100, RHD4HOASZ2APPST110, RHD4HOASZ2APPSW120, RHD4HOASZ2APPPT130, RHD4HOASZ2APPIRR140, RHD4HOASZ2APPMV150, RHD4HOASZ2APPLV160, RHD4HOASZ2APPSL170, RHD4HOASZ2APPTC190, RHD4HOASZ2APPICT200 FF, RHD4HOASZ2APPCCTV210, RHD4HOASZ2APPRD220, RHD4HOASZ3APPEW100, RHD4HOASZ3APPST110, RHD4HOASZ3APPSW120, RHD4HOASZ3APPPT130, RHD4HOASZ3APPIRR140, RHD4HOASZ3APPMV150, RHD4HOASZ3APPLV160, RHD4HOASZ3APPSL170, RHD4HOASZ3APPTC190, RHD4HOASZ3APPICT200 FF, RHD4HOASZ3APPCCTV210, RHD4HOASZ3APPRD220, RHD4HOASZ4APPEW100, RHD4HOASZ4APPST110 |  |  |  | -232d | 0d | RHD4 - (7 Days - 8 Hours)-48 |  | General | GN | GN |
|  | 9 | **RHD4-02-002-Preliminaries - PP** |  |  | 2025-11-30 | 2026-11-23 |  |  |  |  |  |  |  |  |  |  |  |
|  | 10 | **RHD4-02-002-Soil Investigation** |  |  | 2025-11-30 | 2025-12-13 |  |  |  |  |  |  |  |  |  |  |  |
| RHD4GNPPSoL1000 |  | Prepare & Submit Soil Investigation - PP |  | 6d | 2025-11-30 A | 2025-12-06 A | RHD4GNPSMIS1000 SS | 100% |  |  |  |  |  | Document Control [2.72 h] | General | GN | GN |
| RHD4GNPPSoL1100 |  | Review & approval Soil Investigation - PP |  | 6d | 2025-12-07 A | 2025-12-13 A | RHD4GNPPSoL1000 | 100% |  |  |  |  |  | Consultant Staff [2.72 h] | General | GN | GN |
|  | 11 | **RHD4-02-002-Land Surveying Works** |  |  | 2025-11-30 | 2025-12-13 |  |  |  |  |  |  |  |  |  |  |  |
| RHD4GNPPSuv1000 |  | Prepare & Submit Land surveying works - PP |  | 6d | 2025-11-30 A | 2025-12-06 A | RHD4GNPSMIS1000 SS | 100% |  |  |  |  |  | Document Control [2.72 h] | General | GN | GN |
| RHD4GNPPSuv1100 |  | Review & approval Land surveying works - PP |  | 6d | 2025-12-07 A | 2025-12-13 A | RHD4GNPPSuv1000 | 100% |  |  |  |  |  | Consultant Staff [2.72 h] | General | GN | GN |
|  | 12 | **RHD4-02-002-Shop Drawings Submission Plan** |  |  | 2025-11-30 | 2026-07-07 |  |  |  |  |  |  |  |  |  |  |  |
| RHD4GNPPSD1000 |  | Prepare & Submit Shop Drawings Submission Plan - PP |  | 7d | 2025-11-30 A | 2026-07-01 A | RHD4GNPSMIS1000 SS | 100% | 2025-11-30 | 2025-12-07 |  |  |  | Document Control [2.72 h] | General | GN | GN |
| RHD4GNPPSD1100 |  | Review & approval Shop Drawings Submission Plan - PP |  | 6d | 2025-12-08 A | 2026-07-07 A | RHD4GNPPSD1000 | 100% | 2025-12-08 | 2025-12-14 |  |  |  | Consultant Staff [2.72 h] | General | GN | GN |

| ID | WBS | Activity | Duration | Start | Finish | Predecessors | Complete | Planned start | Planned finish | Total float | Free float | Resources | RDH4-01-001-Zones-1 | RDH4-01-001-Phases-1 | RDH4-01-001-Networks-1 |
| --- | --- | --- | --- | --- | --- | --- | --- | --- | --- | --- | --- | --- | --- | --- | --- |
|  | 13 | **RHD4-02-002-Material submittal plan** |  | 2025-11-30 | 2026-09-30 |  |  |  |  |  |  |  |  |  |  |
| RHD4GNPPMAT1000 |  | Prepare & Submit Material submittal plan - PP(Completed) | 7d | 2025-11-30 A | 2026-08-03 A | RHD4GNPSMIS1000 SS | 100% | 2025-11-30 | 2025-12-07 |  |  | Document Control [1.42 h] | General | GN | GN |
| RHD4GNPPMAT1100 |  | Review & approval Material submittal plan - PP | 4d | 2026-09-27 A | 2026-09-30 A | RHD4GNPSMIS1000 SS, RHD4GNPPMAT1000 | 100% |  |  |  |  | Consultant Staff [2.72 h] | General | GN | GN |
|  | 14 | **RHD4-02-002-Project Schedule** |  | 2025-11-30 | 2026-04-26 |  |  |  |  |  |  |  |  |  |  |
| RHD4GNPPBL1000 |  | Prepare & Submit Project Schedule - PP | 8d | 2025-11-30 A | 2026-04-16 A | RHD4GNPSMIS1000 | 100% | 2025-11-30 | 2025-12-08 |  |  | Document Control [2.72 h] | General | GN | GN |
| RHD4GNPPBL1100 |  | Review & approval Project Schedule - PP | 8d | 2025-12-09 A | 2026-04-26 A | RHD4GNPPBL1000 | 100% | 2025-12-09 | 2025-12-17 |  |  | Consultant Staff [2.72 h] | General | GN | GN |
|  | 15 | **RHD4-02-002-HSE (Health, Safety & Environment) Plan** |  | 2025-11-30 | 2026-01-31 |  |  |  |  |  |  |  |  |  |  |
| RHD4GNPPHSE1000 |  | Prepare & Submit HSE (Health, Safety & Environment) Plan - PP | 8d | 2025-11-30 A | 2026-01-31 A | RHD4GNPSMIS1000 SS | 100% | 2025-11-30 | 2025-12-08 |  |  | Document Control [2.72 h] | General | GN | GN |
| RHD4GNPPHSE1100 |  | Review & approval HSE (Health, Safety & Environment) Plan - PP | 8d | 2025-12-07 A | 2026-01-31 A | RHD4GNPPHSE1000 | 100% | 2025-12-09 | 2025-12-17 |  |  | Consultant Staff [2.72 h] | General | GN | GN |
|  | 16 | **RHD4-02-002-Logistic Plan-Site Mobilization Plan** |  | 2026-11-10 | 2026-11-14 |  |  |  |  |  |  |  |  |  |  |
| RHD4GNPPLOG1000 |  | Prepare & Submit Logistic Plan-Site Mobilization Plan - PP | 2d | 2026-11-10 | 2026-11-11 | RHD4GNPSMIS1000 SS |  |  |  | -168.02d | 0d | Document Control [2.72 h] | General | GN | GN |
| RHD4GNPPLOG1100 |  | Review & approval Logistic Plan-Site Mobilization Plan - PP | 2d | 2026-11-12 | 2026-11-14 | RHD4GNPPLOG1000 |  |  |  | -168.02d | 0d | Consultant Staff [2.72 h] | General | GN | GN |
|  | 17 | **RHD4-02-002-Organization chart and Recruitment plan** |  | 2025-11-30 | 2026-02-14 |  |  |  |  |  |  |  |  |  |  |
| RHD4GNPPORG1000 |  | Prepare & Submit Organization chart and Recruitment plan - PP | 12d | 2025-11-30 A | 2026-01-31 A | RHD4GNPSMIS1000 SS | 100% | 2025-11-30 | 2025-12-13 |  |  | Document Control [2.72 h] | General | GN | GN |
| RHD4GNPPORG1100 |  | Review & approval Organization chart and Recruitment plan - PP | 12d | 2025-12-14 A | 2026-02-14 A | RHD4GNPPORG1000 | 100% | 2025-12-14 | 2025-12-27 |  |  | Consultant Staff [2.72 h] | General | GN | GN |
|  | 18 | **RHD4-02-002-Project management plans** |  | 2025-11-30 | 2026-11-23 |  |  |  |  |  |  |  |  |  |  |
| RHD4GNPPPMP1000 |  | Prepare & Submit Project management plans - PP(Completed) | 13d | 2025-11-30 A | 2026-08-03 A | RHD4GNPSMIS1000 SS | 100% | 2025-11-30 | 2025-12-14 |  |  | Document Control [1.42 h] | General | GN | GN |
| RHD4GNPPPMP1100 |  | Review & approval Project management plans - PP | 12d | 2026-11-10 | 2026-11-23 | RHD4GNPSMIS1000 SS, RHD4GNPPPMP1000 |  |  |  | -176.02d | 0d | Consultant Staff [2.72 h] | General | GN | GN |
|  | 8 | **RHD4-02-002-Mobilization - MOB** |  | 2025-12-04 | 2025-12-29 |  |  |  |  |  |  |  |  |  |  |
| RHD4GNMOB1200 |  | Access Road works - MOB | 14d | 2025-12-04 A | 2025-12-17 A | RHD4GNPSMIS1000 | 100% | 2025-11-30 | 2025-12-15 |  |  |  | General | GN | GN |
| RHD4GNMOB1000 |  | Installing Of Offices - MOB | 10d | 2025-12-09 A | 2025-12-22 A | RHD4GNMOB1200 SS, RHD4GNMOB1200 FF | 100% | 2025-12-04 | 2025-12-15 |  |  |  | General | GN | GN |
| RHD4GNMOB1300 |  | Build up Project Store - MOB | 6d | 2025-12-18 A | 2025-12-24 A | RHD4GNMOB1200 | 100% | 2025-12-16 | 2025-12-22 |  |  |  | General | GN | GN |
| RHD4GNMOB1400 |  | Install of Project Signboard - MOB | 6d | 2025-12-18 A | 2025-12-24 A | RHD4GNMOB1200 | 100% | 2025-12-16 | 2025-12-22 |  |  |  | General | GN | GN |
| RHD4GNMOB1100 |  | Mobalization Of Equipment - MOB | 10d | 2025-12-25 A | 2025-12-29 A | RHD4GNMOB1000, RHD4GNMOB1300, RHD4GNMOB1400 | 100% | 2025-12-23 | 2026-01-03 |  |  |  | General | GN | GN |
| RHD4GNMOB1500 |  | Preparation Of Parking Area - MOB | 6d | 2025-12-25 A | 2025-12-29 A | RHD4GNMOB1000, RHD4GNMOB1300 | 100% | 2025-12-23 | 2025-12-29 |  |  |  | General | GN | GN |

| ID | WBS | Activity | Duration | Start | Finish | Predecessors | Complete | Planned start | Planned finish | Total float | Free float | Resources | RDH4-01-001-Zones-1 | RDH4-01-001-Phases-1 | RDH4-01-001-Networks-1 |
| --- | --- | --- | --- | --- | --- | --- | --- | --- | --- | --- | --- | --- | --- | --- | --- |
|  | 20 | **RHD4-02-002-Engineering - EN** |  | 2025-11-30 | 2026-12-07 |  |  |  |  |  |  |  |  |  |  |
|  | 83 | **RHD4-02-002-Method Statement - MS** |  | 2025-11-30 | 2026-11-23 |  |  |  |  |  |  |  |  |  |  |
|  | 84 | **RHD4-02-002-Earth Works (Excavation, Backfilling) - EW** |  | 2025-11-30 | 2026-01-04 |  |  |  |  |  |  |  |  |  |  |
| RHD4ENMSEW1000 |  | Prepare & Submit MS for Earth Works (Excavation, Backfilling) - EW- EW | 7d | 2025-11-30 A | 2025-12-28 A | RHD4GNPSMIS1000 SS | 100% | 2025-11-30 | 2025-12-07 |  |  | Technical Office Engineer [404.35 h]; Document Control [42.12 h] | General | ENGG | EW |
| RHD4ENMSEW2000 |  | Review & approval MS for Earth Works (Excavation, Backfilling) - EW- EW | 7d | 2025-12-06 A | 2026-01-04 A | RHD4ENMSEW1000 | 100% | 2025-12-08 | 2025-12-15 |  |  |  | General | ENGG | EW |
|  | 85 | **RHD4-02-002-Tunnel - TUN** |  | 2026-05-03 | 2026-05-11 |  |  |  |  |  |  |  |  |  |  |
| RHD4ENMSTUN1000 |  | Prepare & Submit MS for Tunnel - TUN- TUN | 5d | 2026-05-03 A | 2026-05-07 A | RHD4GNPSMIS1000 SS, RHD4ENMSEW1000 | 100% | 2025-12-08 | 2025-12-13 |  |  | Technical Office Engineer [404.35 h]; Document Control [42.12 h] | General | ENGG | ST |
| RHD4ENMSTUN2000 |  | Review & approval MS for Tunnel - TUN- TUN | 3d | 2026-05-08 A | 2026-05-11 A | RHD4ENMSTUN1000 | 100% | 2025-12-14 | 2025-12-16 |  |  |  | General | ENGG | ST |
|  | 86 | **RHD4-02-002-Asphalt Works - ASPH** |  | 2026-01-21 | 2026-04-14 |  |  |  |  |  |  |  |  |  |  |
| RHD4ENMSASPH1000 |  | Prepare & Submit MS for Asphalt Works - ASPH- ASPH | 68d | 2026-01-21 A | 2026-04-12 A | RHD4GNPSMIS1000 SS, RHD4ENMSTUN1000, RHD4ENMSST1000, RHD4ENMSTUN2000 | 100% | 2026-01-21 | 2026-04-13 |  |  | Technical Office Engineer [404.35 h]; Document Control [42.12 h] | General | ENGG | RD |
| RHD4ENMSASPH2000 |  | Review & approval MS for Asphalt Works - ASPH- ASPH | 2d | 2026-04-13 A | 2026-04-14 A | RHD4GNMOB1500, RHD4ENMSASPH1000 | 100% |  |  |  |  |  | General | ENGG | RD |
|  | 87 | **RHD4-02-002-Storm Network - ST** |  | 2026-04-11 | 2026-08-03 |  |  |  |  |  |  |  |  |  |  |
| RHD4ENMSST1000 |  | Prepare & Submit MS for Storm Network - ST- ST(Completed) | 12d | 2026-04-11 A | 2026-08-03 A | RHD4GNPSMIS1000 SS, RHD4ENMSTUN1000 | 100% | 2025-12-14 | 2025-12-27 |  |  | Technical Office Engineer [202.18 h]; Document Control [21.9 h] | General | ENGG | ST |
| RHD4ENMSST2000 |  | Review & approval MS for Storm Network - ST- ST | 8d | 2026-06-25 A | 2026-06-28 A | RHD4GNPSMIS1000 SS, RHD4ENMSTUN1000, RHD4ENMSST1000 | 100% | 2025-12-28 | 2026-01-05 |  |  |  | General | ENGG | ST |
|  | 88 | **RHD4-02-002-Sewage Network - SW** |  | 2025-12-17 | 2026-03-04 |  |  |  |  |  |  |  |  |  |  |
| RHD4ENMSSW1000 |  | Prepare & Submit MS for Sewage Network - SW- SW | 7d | 2025-12-17 A | 2026-03-01 A | RHD4GNPSMIS1000 SS, RHD4GNMOB1200 | 100% | 2025-12-16 | 2025-12-23 |  |  | Technical Office Engineer [404.35 h]; Document Control [42.12 h] | General | ENGG | SW |
| RHD4ENMSSW2000 |  | Review & approval MS for Sewage Network - SW- SW | 7d | 2025-12-24 A | 2026-03-04 A | RHD4ENMSSW1000 | 100% | 2025-12-24 | 2025-12-31 |  |  |  | General | ENGG | SW |
|  | 89 | **RHD4-02-002-Potable Network - PT** |  | 2025-12-24 | 2026-06-04 |  |  |  |  |  |  |  |  |  |  |
| RHD4ENMSPT1000 |  | Prepare & Submit MS for Potable Network - PT- PT | 6d | 2025-12-24 A | 2026-06-01 A | RHD4GNPSMIS1000 SS, RHD4ENMSSW1000 | 100% | 2025-12-24 | 2025-12-30 |  |  | Technical Office Engineer [404.35 h]; Document Control [42.12 h] | General | ENGG | PT |
| RHD4ENMSPT2000 |  | Review & approval MS for Potable Network - PT- PT | 3d | 2025-12-31 A | 2026-06-04 A | RHD4ENMSPT1000 | 100% | 2025-12-31 | 2026-01-03 |  |  |  | General | ENGG | PT |
|  | 90 | **RHD4-02-002-Irrigation Network - IRR** |  | 2025-12-31 | 2026-05-09 |  |  |  |  |  |  |  |  |  |  |
| RHD4ENMSRR1000 |  | Prepare & Submit MS for Irrigation Network - IRR- RR(Completed) | 12d | 2025-12-31 A | 2026-04-28 A | RHD4GNPSMIS1000 SS, RHD4ENMSPT1000 | 100% | 2025-12-31 | 2026-01-13 |  |  | Technical Office Engineer [202.18 h]; Document Control [21.9 h] | General | ENGG | IRR |
| RHD4ENMSRR2000 |  | Review & approval MS for Irrigation Network - IRR- RR | 10d | 2026-01-14 A | 2026-05-09 A | RHD4GNPSMIS1000 SS, RHD4ENMSPT1000, RHD4ENMSRR1000 | 100% | 2026-01-14 | 2026-01-25 |  |  |  | General | ENGG | IRR |
|  | 91 | **RHD4-02-002-Medium Voltage Cables - MV** |  | 2026-11-10 | 2026-11-23 |  |  |  |  |  |  |  |  |  |  |
| RHD4ENMSMV1000 |  | Prepare & Submit MS for Medium Voltage Cables - MV- MV | 6d | 2026-11-10 | 2026-11-16 | RHD4GNPSMIS1000 SS, RHD4ENMSASPH1000 |  |  |  | -189.02d | 0d | Technical Office Engineer [404.35 h]; Document Control [42.12 h] | General | ENGG | MV |
| RHD4ENMSMV2000 |  | Review & approval MS for Medium Voltage Cables - MV- MV | 6d | 2026-11-17 | 2026-11-23 | RHD4ENMSMV1000 |  |  |  | -189.02d | 0d |  | General | ENGG | MV |

| ID | WBS | Activity | Duration | Start | Finish | Predecessors | Complete | Planned start | Planned finish | Resources | RDH4-01-001-Zones-1 | RDH4-01-001-Phases-1 | RDH4-01-001-Networks-1 |
| --- | --- | --- | --- | --- | --- | --- | --- | --- | --- | --- | --- | --- | --- |
|  | 92 | **RHD4-02-002-Low Voltage Cables - LV** |  | 2025-11-30 | 2026-05-10 |  |  |  |  |  |  |  |  |
| RHD4ENMSLV1000 |  | Prepare & Submit MS for Low Voltage Cables - LV- LV | 13d | 2025-11-30 A | 2026-05-07 A | RHD4GNPSMIS1000 SS | 100% | 2025-11-30 | 2025-12-14 | Technical Office Engineer [404.35 h]; Document Control [42.12 h] | General | ENGG | LV |
| RHD4ENMSLV2000 |  | Review & approval MS for Low Voltage Cables - LV- LV | 2d | 2025-12-15 A | 2026-05-10 A | RHD4ENMSLV1000 | 100% | 2025-12-15 | 2025-12-16 |  | General | ENGG | LV |
|  | 93 | **RHD4-02-002-Street Lighting - SL** |  | 2025-11-30 | 2026-05-10 |  |  |  |  |  |  |  |  |
| RHD4ENMSSL1000 |  | Prepare & Submit MS for Street Lighting - SL- SL | 13d | 2025-11-30 A | 2026-05-07 A | RHD4GNPSMIS1000 SS | 100% | 2025-11-30 | 2025-12-14 | Technical Office Engineer [404.35 h]; Document Control [42.12 h] | General | ENGG | SL |
| RHD4ENMSSL2000 |  | Review & approval MS for Street Lighting - SL- SL | 2d | 2025-12-15 A | 2026-05-10 A | RHD4ENMSSL1000 | 100% | 2025-12-15 | 2025-12-16 |  | General | ENGG | SL |
|  | 94 | **RHD4-02-002-Earthing - ER** |  | 2026-01-11 | 2026-06-13 |  |  |  |  |  |  |  |  |
| RHD4ENMSER1000 |  | Prepare & Submit MS for Earthing - ER- ER | 6d | 2026-01-11 A | 2026-05-19 A | RHD4GNPSMIS1000 SS, RHD4ENMSMV1000, RHD4ENMSST2000 | 100% | 2026-01-11 | 2026-01-17 | Technical Office Engineer [404.35 h]; Document Control [42.12 h] | General | ENGG | LV |
| RHD4ENMSER2000 |  | Review & approval MS for Earthing - ER- ER | 6d | 2026-01-18 A | 2026-06-13 A | RHD4ENMSER1000 | 100% | 2026-01-18 | 2026-01-24 |  | General | ENGG | LV |
|  | 95 | **RHD4-02-002-Precast Concrete Curbstone, Interlocking - RD** |  | 2025-11-30 | 2026-06-28 |  |  |  |  |  |  |  |  |
| RHD4ENMSRD1000 |  | Prepare & Submit MS for Precast Concrete Curbstone, Interlocking - RD- RD(Completed) | 13d | 2025-11-30 A | 2026-04-16 A | RHD4GNPSMIS1000 SS | 100% | 2025-11-30 | 2025-12-14 | Technical Office Engineer [202.18 h]; Document Control [21.9 h] | General | ENGG | RD |
| RHD4ENMSRD2000 |  | Review & approval MS for Precast Concrete Curbstone, Interlocking - RD- RD | 2d | 2026-01-04 A | 2026-06-28 A | RHD4ENMSASPH1000, RHD4GNPSMIS1000 SS, RHD4ENMSRD1000 | 100% | 2026-01-04 | 2026-01-05 |  | General | ENGG | RD |
|  | 96 | **RHD4-02-002-Precast Box Culvert - BC** |  | 2026-05-03 | 2026-05-14 |  |  |  |  |  |  |  |  |
| RHD4ENMSBC1000 |  | Prepare & Submit MS for Precast Box Culvert - BC- BC | 5d | 2026-05-03 A | 2026-05-07 A | RHD4GNPSMIS1000 SS, RHD4ENMSTUN1000, RHD4ENMSST1000 | 100% | 2025-12-28 | 2026-01-01 | Technical Office Engineer [404.35 h]; Document Control [42.12 h] | General | ENGG | ST |
| RHD4ENMSBC2000 |  | Review & approval MS for Precast Box Culvert - BC- BC | 6d | 2026-05-09 A | 2026-05-14 A | RHD4ENMSBC1000 | 100% | 2026-01-03 | 2026-01-08 |  | General | ENGG | ST |
|  | 1 | **RHD4-02-002-MS Staging Time - STAG** |  | 2025-12-06 | 2026-12-01 |  |  |  |  |  |  |  |  |
|  | 84 | **RHD4-02-002-Earth Works (Excavation, Backfilling) - EW** |  | 2025-12-06 | 2025-12-13 |  |  |  |  |  |  |  |  |
| RHD4ENMSEW2010 |  | Staging Time for MS for Earth Works (Excavation, Backfilling) - EW- EW | 7d | 2025-12-06 A | 2025-12-13 A | RHD4ENMSEW2000 | 100% | 2025-12-16 | 2025-12-23 |  | General | ENGG | EW |
|  | 85 | **RHD4-02-002-Tunnel - TUN** |  | 2026-05-12 | 2026-05-19 |  |  |  |  |  |  |  |  |
| RHD4ENMSTUN2010 |  | Staging Time for MS for Tunnel - TUN- TUN | 7d | 2026-05-12 A | 2026-05-19 A | RHD4ENMSTUN2000 | 100% | 2025-12-17 | 2025-12-24 |  | General | ENGG | ST |
|  | 86 | **RHD4-02-002-Asphalt Works - ASPH** |  | 2026-09-01 | 2026-09-08 |  |  |  |  |  |  |  |  |
| RHD4ENMSASPH2010 |  | Staging Time for MS for Asphalt Works - ASPH- ASPH | 7d | 2026-09-01 A | 2026-09-08 A | RHD4ENMSASPH2000 | 100% |  |  |  | General | ENGG | RD |
|  | 87 | **RHD4-02-002-Storm Network - ST** |  | 2026-06-29 | 2026-07-06 |  |  |  |  |  |  |  |  |
| RHD4ENMSST2010 |  | Staging Time for MS for Storm Network - ST- ST | 7d | 2026-06-29 A | 2026-07-06 A | RHD4ENMSST2000 | 100% | 2026-01-06 | 2026-01-13 |  | General | ENGG | ST |

| ID | WBS | Activity | Duration | Start | Finish | Predecessors | Complete | Planned start | Planned finish | Total float | Free float | Resources | RDH4-01-001-Zones-1 | RDH4-01-001-Phases-1 | RDH4-01-001-Networks-1 |
| --- | --- | --- | --- | --- | --- | --- | --- | --- | --- | --- | --- | --- | --- | --- | --- |
|  | 88 | **RHD4-02-002-Sewage Network - SW** |  | 2026-01-03 | 2026-03-12 |  |  |  |  |  |  |  |  |  |  |
| RHD4ENMSSW2010 |  | Staging Time for MS for Sewage Network - SW- SW | 7d | 2026-01-03 A | 2026-03-12 A | RHD4ENMSSW2000 | 100% | 2026-01-01 | 2026-01-08 |  |  |  | General | ENGG | SW |
|  | 89 | **RHD4-02-002-Potable Network - PT** |  | 2026-01-04 | 2026-06-13 |  |  |  |  |  |  |  |  |  |  |
| RHD4ENMSPT2010 |  | Staging Time for MS for Potable Network - PT- PT | 7d | 2026-01-04 A | 2026-06-13 A | RHD4ENMSPT2000 | 100% | 2026-01-04 | 2026-01-11 |  |  |  | General | ENGG | PT |
|  | 90 | **RHD4-02-002-Irrigation Network - IRR** |  | 2026-01-26 | 2026-06-23 |  |  |  |  |  |  |  |  |  |  |
| RHD4ENMSRR2010 |  | Staging Time for MS for Irrigation Network - IRR- RR | 3d | 2026-01-26 A | 2026-06-23 A | RHD4ENMSRR2000, RHD4ENMSMV2010, RHD4ENMSTUN2010 | 100% | 2026-01-26 | 2026-01-28 |  |  |  | General | ENGG | IRR |
|  | 91 | **RHD4-02-002-Medium Voltage Cables - MV** |  | 2026-11-24 | 2026-12-01 |  |  |  |  |  |  |  |  |  |  |
| RHD4ENMSMV2010 |  | Staging Time for MS for Medium Voltage Cables - MV- MV | 7d | 2026-11-24 | 2026-12-01 | RHD4ENMSMV2000, RHD4ENMSPT2010, RHD4ENMSSW2010 |  |  |  | -189.02d | 0d |  | General | ENGG | MV |
|  | 92 | **RHD4-02-002-Low Voltage Cables - LV** |  | 2025-12-17 | 2026-05-14 |  |  |  |  |  |  |  |  |  |  |
| RHD4ENMSLV2010 |  | Staging Time for MS for Low Voltage Cables - LV- LV | 4d | 2025-12-17 A | 2026-05-14 A | RHD4ENMSLV2000 | 100% | 2025-12-17 | 2025-12-21 |  |  |  | General | ENGG | LV |
|  | 93 | **RHD4-02-002-Street Lighting - SL** |  | 2025-12-17 | 2026-05-14 |  |  |  |  |  |  |  |  |  |  |
| RHD4ENMSSL2010 |  | Staging Time for MS for Street Lighting - SL- SL | 4d | 2025-12-17 A | 2026-05-14 A | RHD4ENMSSL2000 | 100% | 2025-12-17 | 2025-12-21 |  |  |  | General | ENGG | SL |
|  | 94 | **RHD4-02-002-Earthing - ER** |  | 2026-01-25 | 2026-08-18 |  |  |  |  |  |  |  |  |  |  |
| RHD4ENMSER2010 |  | Staging Time for MS for Earthing - ER- ER | 4d | 2026-01-25 A | 2026-08-18 A | RHD4ENMSER2000, RHD4ENMSBC2010, RHD4ENMSRD2010, RHD4ENMSST2010 | 100% | 2026-01-25 | 2026-01-28 |  |  |  | General | ENGG | LV |
|  | 95 | **RHD4-02-002-Precast Concrete Curbstone, Interlocking - RD** |  | 2026-01-06 | 2026-07-06 |  |  |  |  |  |  |  |  |  |  |
| RHD4ENMSRD2010 |  | Staging Time for MS for Precast Concrete Curbstone, Interlocking - RD- RD | 7d | 2026-01-06 A | 2026-07-06 A | RHD4ENMSRD2000 | 100% | 2026-01-06 | 2026-01-13 |  |  |  | General | ENGG | RD |
|  | 96 | **RHD4-02-002-Precast Box Culvert - BC** |  | 2026-05-16 | 2026-05-23 |  |  |  |  |  |  |  |  |  |  |
| RHD4ENMSBC2010 |  | Staging Time for MS for Precast Box Culvert - BC- BC | 7d | 2026-05-16 A | 2026-05-23 A | RHD4ENMSBC2000 | 100% | 2026-01-10 | 2026-01-17 |  |  |  | General | ENGG | ST |
|  | 21 | **RHD4-02-002-Shop Drawings - SD** |  | 2025-12-04 | 2026-11-30 |  |  |  |  |  |  |  |  |  |  |
|  | 22 | **RHD4-02-002-Shop Drawing Submittals - SUB** |  | 2025-12-04 | 2026-11-16 |  |  |  |  |  |  |  |  |  |  |
|  | 23 | **RHD4-02-002-Shop Drawing Submittals - SUB-Z1** |  | 2025-12-14 | 2026-11-16 |  |  |  |  |  |  |  |  |  |  |
| RHD4ENSDZ1SUBSW120 |  | Prepare and Submit Shop Drawings for Sewage Network for SW-Z1-SUB | 6d | 2025-12-14 A | 2026-02-11 A | RHD4ENSDZ1SUBST110 SS | 100% | 2025-12-14 | 2025-12-20 |  |  | Technical Office Engineer [100 h]; Document Control [20 h] | Z1 | ENGG | SW |
| RHD4ENSDZ1SUBEW100 |  | Prepare and Submit Shop Drawings for Road Plans and Profile for EW-Z1-SUB | 6d | 2025-12-20 A | 2026-07-05 A | RHD4GNPPSoL1100, RHD4GNPPSuv1100, RHD4GNPPSD1100 FF | 100% | 2025-12-14 | 2025-12-20 |  |  | Technical Office Engineer [100 h]; Document Control [20 h] | Z1 | ENGG | RD |
| RHD4ENSDZ1SUBRD220 |  | Prepare and Submit Shop Drawings for Road Works( KERBING AND PAVEMENT ) for RD-Z1-SUB(Completed) | 7d | 2025-12-20 A | 2026-05-11 A | RHD4GNPPSD1100 FF, RHD4ENSDZ4SUBRD220 | 100% | 2026-01-04 | 2026-01-11 |  |  | Technical Office Engineer [100.14 h]; Document Control [19.86 h] | Z1 | ENGG | RD |
| RHD4ENSDZ1SUBPT130 |  | Prepare and Submit Shop Drawings for Potable Water Network for PT-Z1-SUB | 6d | 2025-12-21 A | 2026-02-12 A | RHD4ENSDZ1SUBSW120 | 100% | 2025-12-21 | 2025-12-27 |  |  | Technical Office Engineer [100 h]; Document Control [20 h] | Z1 | ENGG | PT |
| RHD4ENSDZ1SUBIRR140 |  | Prepare and Submit Shop Drawings for Irrigation Network for IRR-Z1-SUB | 6d | 2025-12-28 A | 2026-02-18 A | RHD4ENSDZ1SUBPT130 | 100% | 2025-12-28 | 2026-01-03 |  |  | Technical Office Engineer [100 h]; Document Control [20 h] | Z1 | ENGG | IRR |
| RHD4ENSDZ1SUBCCTV210 |  | Prepare and Submit Shop Drawings for Security Network for CCTV-Z1-SUB | 6d | 2026-01-04 A | 2026-03-03 A | RHD4ENSDZ1SUBICT200 SS | 100% | 2026-01-04 | 2026-01-10 |  |  | Technical Office Engineer [200 h]; Document Control [40 h] | Z1 | ENGG | CCTV |
| RHD4ENSDZ1SUBICT200 |  | Prepare and Submit Shop Drawings for Information and Communication Technologies Network for ICT-Z1-SUB | 6d | 2026-01-04 A | 2026-03-03 A | RHD4ENSDZ1SUBTC190 SS | 100% | 2026-01-04 | 2026-01-10 |  |  | Technical Office Engineer [100 h]; Document Control [20 h] | Z1 | ENGG | ICT |
| RHD4ENSDZ1SUBLV160 |  | Prepare and Submit Shop Drawings for Low Voltage Network for LV-Z1-SUB | 6d | 2026-01-04 A | 2026-02-26 A | RHD4ENSDZ1SUBSL170 SS | 100% | 2026-01-04 | 2026-01-10 |  |  | Technical Office Engineer [100 h]; Document Control [20 h] | Z1 | ENGG | LV |
| RHD4ENSDZ1SUBSL170 |  | Prepare and Submit Shop Drawings for Street Lighting Network for SL-Z1-SUB | 6d | 2026-01-04 A | 2026-03-01 A | RHD4ENSDZ1SUBRD220 SS | 100% | 2026-01-04 | 2026-01-10 |  |  | Technical Office Engineer [100 h]; Document Control [20 h] | Z1 | ENGG | SL |
| RHD4ENSDZ1SUBTC190 |  | Prepare and Submit Shop Drawings for Telecommunications Network for TC-Z1-SUB | 6d | 2026-01-04 A | 2026-02-25 A | RHD4ENSDZ1SUBLV160 SS | 100% | 2026-01-04 | 2026-01-10 |  |  | Technical Office Engineer [100 h]; Document Control [20 h] | Z1 | ENGG | TC |
| RHD4ENSDZ1SUBST110 |  | Prepare and Submit Shop Drawings for Storm Water Network for ST-Z1-SUB | 6d | 2026-01-27 A | 2026-02-02 A | RHD4ENSDZ1SUBEW100 SS | 100% | 2025-12-14 | 2025-12-20 |  |  | Technical Office Engineer [100 h]; Document Control [20 h] | Z1 | ENGG | ST |
| RHD4ENSDZ1SUBMV150 |  | Prepare and Submit Shop Drawings for Medium Voltage Network for MV-Z1-SUB | 6d | 2026-11-10 | 2026-11-16 | RHD4GNPPSD1100, RHD4ENSDZ1SUBIRR140 |  |  |  | -182.02d | 0d | Technical Office Engineer [100 h]; Document Control [20 h] | Z1 | ENGG | MV |

| ID | WBS | Activity | Duration | Start | Finish | Predecessors | Complete | Planned start | Planned finish | Total float | Free float | Resources | RDH4-01-001-Zones-1 | RDH4-01-001-Phases-1 | RDH4-01-001-Networks-1 |
| --- | --- | --- | --- | --- | --- | --- | --- | --- | --- | --- | --- | --- | --- | --- | --- |
|  | 24 | **RHD4-02-002-Shop Drawing Submittals - SUB-Z2** |  | 2025-12-20 | 2026-11-16 |  |  |  |  |  |  |  |  |  |  |
| RHD4ENSDZ2SUBEW100 |  | Prepare and Submit Shop Drawings for Road Plans and Profile for SUB-SD-Z2 | 7d | 2025-12-20 A | 2026-07-05 A | RHD4GNPPSoL1100, RHD4GNPPSuv1100, RHD4GNPPSD1100 FF | 100% | 2025-12-14 | 2025-12-21 |  |  | Technical Office Engineer [100 h]; Document Control [20 h] | Z2 | ENGG | EW |
| RHD4ENSDZ2SUBRD220 |  | Prepare and Submit Shop Drawings for Road Works( KERBING AND PAVEMENT ) for SUB-SD-Z2(Completed) | 7d | 2025-12-20 A | 2026-08-03 A | RHD4GNPPSD1100 FF, RHD4ENSDZ4SUBRD220, RHD4ENSDZ1SUBST110 | 100% | 2026-01-04 | 2026-01-11 |  |  | Technical Office Engineer [100.14 h]; Document Control [19.86 h] | Z2 | ENGG | RD |
| RHD4ENSDZ2SUBSW120 |  | Prepare and Submit Shop Drawings for Sewage Network for SUB-SD-Z2 | 7d | 2025-12-21 A | 2026-02-11 A | RHD4ENSDZ2SUBST110 SS | 100% | 2025-12-22 | 2025-12-29 |  |  | Technical Office Engineer [100 h]; Document Control [20 h] | Z2 | ENGG | SW |
| RHD4ENSDZ2SUBPT130 |  | Prepare and Submit Shop Drawings for Potable Water Network for SUB-SD-Z2 | 7d | 2025-12-22 A | 2026-02-12 A | RHD4ENSDZ2SUBSW120 SS | 100% | 2025-12-22 | 2025-12-29 |  |  | Technical Office Engineer [100 h]; Document Control [20 h] | Z2 | ENGG | PT |
| RHD4ENSDZ2SUBIRR140 |  | Prepare and Submit Shop Drawings for Irrigation Network for SUB-SD-Z2 | 7d | 2025-12-30 A | 2026-02-18 A | RHD4ENSDZ2SUBPT130 | 100% | 2025-12-30 | 2026-01-06 |  |  | Technical Office Engineer [100 h]; Document Control [20 h] | Z2 | ENGG | IRR |
| RHD4ENSDZ2SUBCCTV210 |  | Prepare and Submit Shop Drawings for Security Network for SUB-SD-Z2 | 7d | 2026-01-04 A | 2026-03-03 A | RHD4ENSDZ2SUBICT200 SS | 100% | 2026-01-04 | 2026-01-11 |  |  | Technical Office Engineer [200 h]; Document Control [40 h] | Z2 | ENGG | CCTV |
| RHD4ENSDZ2SUBICT200 |  | Prepare and Submit Shop Drawings for Information and Communication Technologies Network for SUB-SD-Z2 | 7d | 2026-01-04 A | 2026-03-03 A | RHD4ENSDZ2SUBTC190 SS | 100% | 2026-01-04 | 2026-01-11 |  |  | Technical Office Engineer [100 h]; Document Control [20 h] | Z2 | ENGG | ICT |
| RHD4ENSDZ2SUBLV160 |  | Prepare and Submit Shop Drawings for Low Voltage Network for SUB-SD-Z2 | 7d | 2026-01-04 A | 2026-02-26 A | RHD4ENSDZ2SUBSL170 SS | 100% | 2026-01-04 | 2026-01-11 |  |  | Technical Office Engineer [100 h]; Document Control [20 h] | Z2 | ENGG | LV |
| RHD4ENSDZ2SUBSL170 |  | Prepare and Submit Shop Drawings for Street Lighting Network for SUB-SD-Z2 | 7d | 2026-01-04 A | 2026-03-01 A | RHD4ENSDZ2SUBRD220 SS | 100% | 2026-01-04 | 2026-01-11 |  |  | Technical Office Engineer [100 h]; Document Control [20 h] | Z2 | ENGG | SL |
| RHD4ENSDZ2SUBTC190 |  | Prepare and Submit Shop Drawings for Telecommunications Network for SUB-SD-Z2 | 6d | 2026-01-04 A | 2026-03-04 A | RHD4ENSDZ2SUBLV160 SS | 100% | 2026-01-04 | 2026-01-10 |  |  | Technical Office Engineer [100 h]; Document Control [20 h] | Z2 | ENGG | TC |
| RHD4ENSDZ2SUBST110 |  | Prepare and Submit Shop Drawings for Storm Water Network for SUB-SD-Z2 | 6d | 2026-01-27 A | 2026-02-02 A | RHD4ENSDZ2SUBEW100 | 100% | 2025-12-22 | 2025-12-28 |  |  | Technical Office Engineer [100 h]; Document Control [20 h] | Z2 | ENGG | ST |
| RHD4ENSDZ2SUBMV150 |  | Prepare and Submit Shop Drawings for Medium Voltage Network for SUB-SD-Z2 | 6d | 2026-11-10 | 2026-11-16 | RHD4GNPPSD1100, RHD4ENSDZ2SUBIRR140 |  |  |  | -182.02d | 0d | Technical Office Engineer [100 h]; Document Control [20 h] | Z2 | ENGG | MV |
|  | 25 | **RHD4-02-002-Shop Drawing Submittals - SUB-Z3** |  | 2025-12-20 | 2026-11-16 |  |  |  |  |  |  |  |  |  |  |
| RHD4ENSDZ3SUBEW100 |  | Prepare and Submit Shop Drawings for Road Plans and Profile for SUB-SD-Z3 | 6d | 2025-12-20 A | 2026-07-08 A | RHD4GNPPSoL1100, RHD4GNPPSuv1100 | 100% | 2025-12-14 | 2025-12-20 |  |  | Technical Office Engineer [100 h]; Document Control [20 h] | Z3 | ENGG | EW |
| RHD4ENSDZ3SUBRD220 |  | Prepare and Submit Shop Drawings for Road Works( KERBING AND PAVEMENT ) for SUB-SD-Z3 | 6d | 2025-12-20 A | 2026-07-08 A | RHD4GNMOB1200 | 100% | 2025-12-16 | 2025-12-22 |  |  | Technical Office Engineer [100 h]; Document Control [20 h] | Z3 | ENGG | RD |
| RHD4ENSDZ3SUBPT130 |  | Prepare and Submit Shop Drawings for Potable Water Network for SUB-SD-Z3 | 6d | 2025-12-21 A | 2026-02-12 A | RHD4ENSDZ3SUBSW120 SS | 100% | 2025-12-21 | 2025-12-27 |  |  | Technical Office Engineer [100 h]; Document Control [20 h] | Z3 | ENGG | PT |
| RHD4ENSDZ3SUBSW120 |  | Prepare and Submit Shop Drawings for Sewage Network for SUB-SD-Z3 | 6d | 2025-12-21 A | 2026-02-11 A | RHD4ENSDZ3SUBST110 SS | 100% | 2025-12-21 | 2025-12-27 |  |  | Technical Office Engineer [100 h]; Document Control [20 h] | Z3 | ENGG | SW |
| RHD4ENSDZ3SUBCCTV210 |  | Prepare and Submit Shop Drawings for Security Network for SUB-SD-Z3 | 6d | 2025-12-23 A | 2026-03-03 A | RHD4ENSDZ3SUBICT200 SS | 100% | 2025-12-23 | 2025-12-29 |  |  | Technical Office Engineer [200 h]; Document Control [40 h] | Z3 | ENGG | CCTV |
| RHD4ENSDZ3SUBICT200 |  | Prepare and Submit Shop Drawings for Information and Communication Technologies Network for SUB-SD-Z3 | 6d | 2025-12-23 A | 2026-03-03 A | RHD4ENSDZ3SUBTC190 SS | 100% | 2025-12-23 | 2025-12-29 |  |  | Technical Office Engineer [100 h]; Document Control [20 h] | Z3 | ENGG | ICT |
| RHD4ENSDZ3SUBLV160 |  | Prepare and Submit Shop Drawings for Low Voltage Network for SUB-SD-Z3 | 6d | 2025-12-23 A | 2026-02-26 A | RHD4ENSDZ3SUBSL170 SS | 100% | 2025-12-23 | 2025-12-29 |  |  | Technical Office Engineer [100 h]; Document Control [20 h] | Z3 | ENGG | LV |
| RHD4ENSDZ3SUBSL170 |  | Prepare and Submit Shop Drawings for Street Lighting Network for SUB-SD-Z3 | 6d | 2025-12-23 A | 2026-03-01 A | RHD4ENSDZ3SUBRD220 | 100% | 2025-12-23 | 2025-12-29 |  |  | Technical Office Engineer [100 h]; Document Control [20 h] | Z3 | ENGG | SL |
| RHD4ENSDZ3SUBTC190 |  | Prepare and Submit Shop Drawings for Telecommunications Network for SUB-SD-Z3 | 6d | 2025-12-23 A | 2026-03-04 A | RHD4ENSDZ3SUBLV160 SS | 100% | 2025-12-23 | 2025-12-29 |  |  | Technical Office Engineer [100 h]; Document Control [20 h] | Z3 | ENGG | TC |
| RHD4ENSDZ3SUBIRR140 |  | Prepare and Submit Shop Drawings for Irrigation Network for SUB-SD-Z3 | 6d | 2025-12-28 A | 2026-02-18 A | RHD4ENSDZ3SUBPT130 | 100% | 2025-12-28 | 2026-01-03 |  |  | Technical Office Engineer [100 h]; Document Control [20 h] | Z3 | ENGG | IRR |
| RHD4ENSDZ3SUBST110 |  | Prepare and Submit Shop Drawings for Storm Water Network for SUB-SD-Z3 | 6d | 2026-01-27 A | 2026-02-02 A | RHD4ENSDZ3SUBEW100 | 100% | 2025-12-21 | 2025-12-27 |  |  | Technical Office Engineer [100 h]; Document Control [20 h] | Z3 | ENGG | ST |
| RHD4ENSDZ3SUBMV150 |  | Prepare and Submit Shop Drawings for Medium Voltage Network for SUB-SD-Z3 | 6d | 2026-11-10 | 2026-11-16 | RHD4GNPPSD1100, RHD4ENSDZ3SUBIRR140 |  |  |  | -182.02d | 0d | Technical Office Engineer [100 h]; Document Control [20 h] | Z3 | ENGG | MV |

| ID | WBS | Activity | Duration | Start | Finish | Predecessors | Complete | Planned start | Planned finish | Total float | Free float | Resources | RDH4-01-001-Zones-1 | RDH4-01-001-Phases-1 | RDH4-01-001-Networks-1 |
| --- | --- | --- | --- | --- | --- | --- | --- | --- | --- | --- | --- | --- | --- | --- | --- |
|  | 26 | **RHD4-02-002-Shop Drawing Submittals - SUB-Z4** |  | 2025-12-14 | 2026-11-16 |  |  |  |  |  |  |  |  |  |  |
| RHD4ENSDZ4SUBPT130 |  | Prepare and Submit Shop Drawings for Potable Water Network for SUB-SD-Z4 | 6d | 2025-12-14 A | 2026-02-12 A | RHD4ENSDZ4SUBSW120 SS | 100% | 2025-12-14 | 2025-12-20 |  |  | Technical Office Engineer [100 h]; Document Control [20 h] | Z4 | ENGG | PT |
| RHD4ENSDZ4SUBEW100 |  | Prepare and Submit Shop Drawings for Road Plans and Profile for SUB-SD-Z4 | 9d | 2025-12-20 A | 2026-02-02 A | RHD4GNPPSoL1100, RHD4GNPPSuv1100 | 100% | 2025-12-14 | 2025-12-23 |  |  | Technical Office Engineer [100 h]; Document Control [20 h] | Z4 | ENGG | EW |
| RHD4ENSDZ4SUBRD220 |  | Prepare and Submit Shop Drawings for Road Works( KERBING AND PAVEMENT ) for SUB-SD-Z4 | 9d | 2025-12-20 A | 2026-02-09 A | RHD4GNPPSD1100 FF, RHD4ENSDZ4SUBEW100, RHD4ENSDZ1SUBSW120 | 100% | 2025-12-24 | 2026-01-03 |  |  | Technical Office Engineer [100 h]; Document Control [20 h] | Z4 | ENGG | RD |
| RHD4ENSDZ4SUBIRR140 |  | Prepare and Submit Shop Drawings for Irrigation Network for SUB-SD-Z4 | 6d | 2025-12-21 A | 2026-02-18 A | RHD4ENSDZ4SUBPT130 | 100% | 2025-12-21 | 2025-12-27 |  |  | Technical Office Engineer [100 h]; Document Control [20 h] | Z4 | ENGG | IRR |
| RHD4ENSDZ4SUBSW120 |  | Prepare and Submit Shop Drawings for Sewage Network for SUB-SD-Z4 | 7d | 2025-12-21 A | 2026-02-11 A | RHD4ENSDZ4SUBST110 SS | 100% | 2025-12-14 | 2025-12-21 |  |  | Technical Office Engineer [100 h]; Document Control [20 h] | Z4 | ENGG | SW |
| RHD4ENSDZ4SUBCCTV210 |  | Prepare and Submit Shop Drawings for Security Network for SUB-SD-Z4 | 7d | 2025-12-24 A | 2026-03-03 A | RHD4ENSDZ4SUBICT200 SS | 100% | 2025-12-24 | 2025-12-31 |  |  | Technical Office Engineer [200 h]; Document Control [40 h] | Z4 | ENGG | CCTV |
| RHD4ENSDZ4SUBICT200 |  | Prepare and Submit Shop Drawings for Information and Communication Technologies Network for SUB-SD-Z4 | 7d | 2025-12-24 A | 2026-03-03 A | RHD4ENSDZ4SUBTC190 SS | 100% | 2025-12-24 | 2025-12-31 |  |  | Technical Office Engineer [100 h]; Document Control [20 h] | Z4 | ENGG | ICT |
| RHD4ENSDZ4SUBLV160 |  | Prepare and Submit Shop Drawings for Low Voltage Network for SUB-SD-Z4 | 7d | 2025-12-24 A | 2026-02-26 A | RHD4ENSDZ4SUBSL170 SS | 100% | 2025-12-24 | 2025-12-31 |  |  | Technical Office Engineer [100 h]; Document Control [20 h] | Z4 | ENGG | LV |
| RHD4ENSDZ4SUBSL170 |  | Prepare and Submit Shop Drawings for Street Lighting Network for SUB-SD-Z4 | 7d | 2025-12-24 A | 2026-03-01 A | RHD4ENSDZ4SUBRD220 SS | 100% | 2025-12-24 | 2025-12-31 |  |  | Technical Office Engineer [100 h]; Document Control [20 h] | Z4 | ENGG | SL |
| RHD4ENSDZ4SUBTC190 |  | Prepare and Submit Shop Drawings for Telecommunications Network for SUB-SD-Z4 | 6d | 2025-12-24 A | 2026-03-04 A | RHD4ENSDZ4SUBLV160 SS | 100% | 2025-12-24 | 2025-12-30 |  |  | Technical Office Engineer [100 h]; Document Control [20 h] | Z4 | ENGG | TC |
| RHD4ENSDZ4SUBST110 |  | Prepare and Submit Shop Drawings for Storm Water Network for SUB-SD-Z4 | 6d | 2026-01-27 A | 2026-02-02 A | RHD4ENSDZ4SUBEW100 SS | 100% | 2025-12-14 | 2025-12-20 |  |  | Technical Office Engineer [100 h]; Document Control [20 h] | Z4 | ENGG | ST |
| RHD4ENSDZ4SUBMV150 |  | Prepare and Submit Shop Drawings for Medium Voltage Network for SUB-SD-Z4 | 6d | 2026-11-10 | 2026-11-16 | RHD4GNPPSD1100, RHD4ENSDZ4SUBIRR140 |  |  |  | -182.02d | 0d | Technical Office Engineer [100 h]; Document Control [20 h] | Z4 | ENGG | MV |
|  | 27 | **RHD4-02-002-Shop Drawing Submittals - SUB-Z5** |  | 2025-12-14 | 2026-11-16 |  |  |  |  |  |  |  |  |  |  |
| RHD4ENSDZ5SUBPT130 |  | Prepare and Submit Shop Drawings for Potable Water Network for SUB-SD-Z5 | 6d | 2025-12-14 A | 2026-02-12 A | RHD4ENSDZ5SUBSW120 SS | 100% | 2025-12-14 | 2025-12-20 |  |  | Technical Office Engineer [100 h]; Document Control [20 h] | Z5 | ENGG | PT |
| RHD4ENSDZ5SUBCCTV210 |  | Prepare and Submit Shop Drawings for Security Network for SUB-SD-Z5 | 7d | 2025-12-15 A | 2026-03-03 A | RHD4ENSDZ5SUBICT200 SS | 100% | 2025-12-15 | 2025-12-22 |  |  | Technical Office Engineer [200 h]; Document Control [40 h] | Z5 | ENGG | CCTV |
| RHD4ENSDZ5SUBICT200 |  | Prepare and Submit Shop Drawings for Information and Communication Technologies Network for SUB-SD-Z5 | 7d | 2025-12-15 A | 2026-03-03 A | RHD4ENSDZ5SUBTC190 SS | 100% | 2025-12-15 | 2025-12-22 |  |  | Technical Office Engineer [100 h]; Document Control [20 h] | Z5 | ENGG | ICT |
| RHD4ENSDZ5SUBLV160 |  | Prepare and Submit Shop Drawings for Low Voltage Network for SUB-SD-Z5 | 7d | 2025-12-15 A | 2026-02-26 A | RHD4ENSDZ5SUBSL170 SS | 100% | 2025-12-15 | 2025-12-22 |  |  | Technical Office Engineer [100 h]; Document Control [20 h] | Z5 | ENGG | LV |
| RHD4ENSDZ5SUBSL170 |  | Prepare and Submit Shop Drawings for Street Lighting Network for SUB-SD-Z5 | 7d | 2025-12-15 A | 2026-03-01 A | RHD4ENSDZ5SUBRD220 SS | 100% | 2025-12-15 | 2025-12-22 |  |  | Technical Office Engineer [100 h]; Document Control [20 h] | Z5 | ENGG | SL |
| RHD4ENSDZ5SUBTC190 |  | Prepare and Submit Shop Drawings for Telecommunications Network for SUB-SD-Z5 | 6d | 2025-12-15 A | 2026-03-04 A | RHD4ENSDZ5SUBLV160 SS | 100% | 2025-12-15 | 2025-12-21 |  |  | Technical Office Engineer [100 h]; Document Control [20 h] | Z5 | ENGG | TC |
| RHD4ENSDZ5SUBEW100 |  | Prepare and Submit Shop Drawings for Road Plans and Profile for SUB-SD-Z5 | 6d | 2025-12-20 A | 2026-02-04 A | RHD4GNPPSoL1100, RHD4GNPPSuv1100, RHD4GNPPSD1100 FF | 100% | 2025-12-14 | 2025-12-20 |  |  | Technical Office Engineer [100 h]; Document Control [20 h] | Z5 | ENGG | EW |
| RHD4ENSDZ5SUBRD220 |  | Prepare and Submit Shop Drawings for Road Works( KERBING AND PAVEMENT ) for SUB-SD-Z5(Completed) | 7d | 2025-12-20 A | 2026-08-03 A | RHD4GNPPSD1100 FF, RHD4ENSDZ6SUBRD220 | 100% | 2025-12-15 | 2025-12-22 |  |  | Technical Office Engineer [100.14 h]; Document Control [19.86 h] | Z5 | ENGG | RD |
| RHD4ENSDZ5SUBIRR140 |  | Prepare and Submit Shop Drawings for Irrigation Network for SUB-SD-Z5 | 6d | 2025-12-21 A | 2026-02-18 A | RHD4ENSDZ5SUBPT130 | 100% | 2025-12-21 | 2025-12-27 |  |  | Technical Office Engineer [100 h]; Document Control [20 h] | Z5 | ENGG | IRR |
| RHD4ENSDZ5SUBSW120 |  | Prepare and Submit Shop Drawings for Sewage Network for SUB-SD-Z5 | 7d | 2025-12-21 A | 2026-02-11 A | RHD4ENSDZ5SUBST110 SS | 100% | 2025-12-14 | 2025-12-21 |  |  | Technical Office Engineer [100 h]; Document Control [20 h] | Z5 | ENGG | SW |
| RHD4ENSDZ5SUBST110 |  | Prepare and Submit Shop Drawings for Storm Water Network for SUB-SD-Z5 | 6d | 2026-01-27 A | 2026-02-02 A | RHD4ENSDZ5SUBEW100 SS | 100% | 2025-12-14 | 2025-12-20 |  |  | Technical Office Engineer [100 h]; Document Control [20 h] | Z5 | ENGG | ST |
| RHD4ENSDZ5SUBMV150 |  | Prepare and Submit Shop Drawings for Medium Voltage Network for SUB-SD-Z5 | 6d | 2026-11-10 | 2026-11-16 | RHD4GNPPSD1100, RHD4ENSDZ5SUBIRR140 |  |  |  | -188.02d | 0d | Technical Office Engineer [100 h]; Document Control [20 h] | Z5 | ENGG | MV |

| ID | WBS | Activity | Duration | Start | Finish | Predecessors | Complete | Planned start | Planned finish | Total float | Free float | Resources | RDH4-01-001-Zones-1 | RDH4-01-001-Phases-1 | RDH4-01-001-Networks-1 |
| --- | --- | --- | --- | --- | --- | --- | --- | --- | --- | --- | --- | --- | --- | --- | --- |
|  | 28 | **RHD4-02-002-Shop Drawing Submittals - SUB-Z6** |  | 2025-12-04 | 2026-11-16 |  |  |  |  |  |  |  |  |  |  |
| RHD4ENSDZ6SUBCCTV210 |  | Prepare and Submit Shop Drawings for Security Network for SUB-SD-Z6 | 7d | 2025-12-04 A | 2026-03-03 A | RHD4ENSDZ6SUBICT200 SS | 100% | 2025-12-04 | 2025-12-11 |  |  | Technical Office Engineer [200 h]; Document Control [40 h] | Z6 | ENGG | CCTV |
| RHD4ENSDZ6SUBICT200 |  | Prepare and Submit Shop Drawings for Information and Communication Technologies Network for SUB-SD-Z6 | 7d | 2025-12-04 A | 2026-03-03 A | RHD4ENSDZ6SUBTC190 SS | 100% | 2025-12-04 | 2025-12-11 |  |  | Technical Office Engineer [100 h]; Document Control [20 h] | Z6 | ENGG | ICT |
| RHD4ENSDZ6SUBLV160 |  | Prepare and Submit Shop Drawings for Low Voltage Network for SUB-SD-Z6 | 7d | 2025-12-04 A | 2026-02-26 A | RHD4ENSDZ6SUBSL170 SS | 100% | 2025-12-04 | 2025-12-11 |  |  | Technical Office Engineer [100 h]; Document Control [20 h] | Z6 | ENGG | LV |
| RHD4ENSDZ6SUBRD220 |  | Prepare and Submit Shop Drawings for Road Works( KERBING AND PAVEMENT ) for SUB-SD-Z6 | 9d | 2025-12-04 A | 2026-02-09 A | RHD4GNPSMIS1000 SS, RHD4GNPPSD1100 FF | 100% | 2025-12-04 | 2025-12-14 |  |  | Technical Office Engineer [100 h]; Document Control [20 h] | Z6 | ENGG | RD |
| RHD4ENSDZ6SUBSL170 |  | Prepare and Submit Shop Drawings for Street Lighting Network for SUB-SD-Z6 | 7d | 2025-12-04 A | 2026-03-01 A | RHD4ENSDZ6SUBRD220 SS | 100% | 2025-12-04 | 2025-12-11 |  |  | Technical Office Engineer [100 h]; Document Control [20 h] | Z6 | ENGG | SL |
| RHD4ENSDZ6SUBTC190 |  | Prepare and Submit Shop Drawings for Telecommunications Network for SUB-SD-Z6 | 6d | 2025-12-04 A | 2026-03-04 A | RHD4ENSDZ6SUBLV160 SS | 100% | 2025-12-04 | 2025-12-10 |  |  | Technical Office Engineer [100 h]; Document Control [20 h] | Z6 | ENGG | TC |
| RHD4ENSDZ6SUBPT130 |  | Prepare and Submit Shop Drawings for Potable Water Network for SUB-SD-Z6 | 6d | 2025-12-14 A | 2026-02-12 A | RHD4ENSDZ6SUBSW120 SS | 100% | 2025-12-14 | 2025-12-20 |  |  | Technical Office Engineer [100 h]; Document Control [20 h] | Z6 | ENGG | PT |
| RHD4ENSDZ6SUBEW100 |  | Prepare and Submit Shop Drawings for Road Plans and Profile for SUB-SD-Z6 | 7d | 2025-12-20 A | 2026-02-02 A | RHD4GNPPSoL1100, RHD4GNPPSuv1100, RHD4GNPPSD1100 FF | 100% | 2025-12-14 | 2025-12-21 |  |  | Technical Office Engineer [100 h]; Document Control [20 h] | Z6 | ENGG | EW |
| RHD4ENSDZ6SUBIRR140 |  | Prepare and Submit Shop Drawings for Irrigation Network for SUB-SD-Z6 | 6d | 2025-12-21 A | 2026-02-18 A | RHD4ENSDZ6SUBPT130 | 100% | 2025-12-21 | 2025-12-27 |  |  | Technical Office Engineer [100 h]; Document Control [20 h] | Z6 | ENGG | IRR |
| RHD4ENSDZ6SUBSW120 |  | Prepare and Submit Shop Drawings for Sewage Network for SUB-SD-Z6 | 7d | 2025-12-21 A | 2026-02-11 A | RHD4ENSDZ6SUBST110 SS | 100% | 2025-12-14 | 2025-12-21 |  |  | Technical Office Engineer [100 h]; Document Control [20 h] | Z6 | ENGG | SW |
| RHD4ENSDZ6SUBST110 |  | Prepare and Submit Shop Drawings for Storm Water Network for SUB-SD-Z6 | 6d | 2026-01-27 A | 2026-02-02 A | RHD4ENSDZ6SUBEW100 SS | 100% | 2025-12-14 | 2025-12-20 |  |  | Technical Office Engineer [100 h]; Document Control [20 h] | Z6 | ENGG | ST |
| RHD4ENSDZ6SUBMV150 |  | Prepare and Submit Shop Drawings for Medium Voltage Network for SUB-SD-Z6 | 6d | 2026-11-10 | 2026-11-16 | RHD4GNPPSD1100, RHD4ENSDZ6SUBIRR140 |  |  |  | -182.02d | 0d | Technical Office Engineer [100 h]; Document Control [20 h] | Z6 | ENGG | MV |
|  | 29 | **RHD4-02-002-Shop Drawing Submittals - SUB-Z7** |  | 2025-12-14 | 2026-11-16 |  |  |  |  |  |  |  |  |  |  |
| RHD4ENSDZ7SUBPT130 |  | Prepare and Submit Shop Drawings for Potable Water Network for SUB-SD-Z7 | 6d | 2025-12-14 A | 2026-02-12 A | RHD4ENSDZ7SUBSW120 SS | 100% | 2025-12-14 | 2025-12-20 |  |  | Technical Office Engineer [100 h]; Document Control [20 h] | Z7 | ENGG | PT |
| RHD4ENSDZ7SUBCCTV210 |  | Prepare and Submit Shop Drawings for Security Network for SUB-SD-Z7 | 7d | 2025-12-15 A | 2026-03-03 A | RHD4ENSDZ7SUBICT200 SS | 100% | 2025-12-15 | 2025-12-22 |  |  | Technical Office Engineer [200 h]; Document Control [40 h] | Z7 | ENGG | CCTV |
| RHD4ENSDZ7SUBICT200 |  | Prepare and Submit Shop Drawings for Information and Communication Technologies Network for SUB-SD-Z7 | 7d | 2025-12-15 A | 2026-03-03 A | RHD4ENSDZ7SUBTC190 SS | 100% | 2025-12-15 | 2025-12-22 |  |  | Technical Office Engineer [100 h]; Document Control [20 h] | Z7 | ENGG | ICT |
| RHD4ENSDZ7SUBLV160 |  | Prepare and Submit Shop Drawings for Low Voltage Network for SUB-SD-Z7 | 7d | 2025-12-15 A | 2026-02-26 A | RHD4ENSDZ7SUBSL170 SS | 100% | 2025-12-15 | 2025-12-22 |  |  | Technical Office Engineer [100 h]; Document Control [20 h] | Z7 | ENGG | LV |
| RHD4ENSDZ7SUBSL170 |  | Prepare and Submit Shop Drawings for Street Lighting Network for SUB-SD-Z7 | 7d | 2025-12-15 A | 2026-03-01 A | RHD4ENSDZ7SUBRD220 SS | 100% | 2025-12-15 | 2025-12-22 |  |  | Technical Office Engineer [100 h]; Document Control [20 h] | Z7 | ENGG | SL |
| RHD4ENSDZ7SUBTC190 |  | Prepare and Submit Shop Drawings for Telecommunications Network for SUB-SD-Z7 | 6d | 2025-12-15 A | 2026-03-04 A | RHD4ENSDZ7SUBLV160 SS | 100% | 2025-12-15 | 2025-12-21 |  |  | Technical Office Engineer [100 h]; Document Control [20 h] | Z7 | ENGG | TC |
| RHD4ENSDZ7SUBEW100 |  | Prepare and Submit Shop Drawings for Road Plans and Profile for SUB-SD-Z7 | 7d | 2025-12-20 A | 2026-02-02 A | RHD4GNPPSoL1100, RHD4GNPPSuv1100, RHD4GNPPSD1100 FF | 100% | 2025-12-14 | 2025-12-21 |  |  | Technical Office Engineer [100 h]; Document Control [20 h] | Z7 | ENGG | EW |
| RHD4ENSDZ7SUBRD220 |  | Prepare and Submit Shop Drawings for Road Works( KERBING AND PAVEMENT ) for SUB-SD-Z7(Completed) | 7d | 2025-12-20 A | 2026-08-03 A | RHD4GNPPSD1100 FF, RHD4ENSDZ6SUBRD220 | 100% | 2025-12-15 | 2025-12-22 |  |  | Technical Office Engineer [100.14 h]; Document Control [19.86 h] | Z7 | ENGG | RD |
| RHD4ENSDZ7SUBIRR140 |  | Prepare and Submit Shop Drawings for Irrigation Network for SUB-SD-Z7 | 6d | 2025-12-21 A | 2026-02-18 A | RHD4ENSDZ7SUBPT130 | 100% | 2025-12-21 | 2025-12-27 |  |  | Technical Office Engineer [100 h]; Document Control [20 h] | Z7 | ENGG | IRR |
| RHD4ENSDZ7SUBSW120 |  | Prepare and Submit Shop Drawings for Sewage Network for SUB-SD-Z7 | 7d | 2025-12-21 A | 2026-02-11 A | RHD4ENSDZ7SUBST110 SS | 100% | 2025-12-14 | 2025-12-21 |  |  | Technical Office Engineer [100 h]; Document Control [20 h] | Z7 | ENGG | SW |
| RHD4ENSDZ7SUBST110 |  | Prepare and Submit Shop Drawings for Storm Water Network for SUB-SD-Z7 | 6d | 2026-01-27 A | 2026-02-02 A | RHD4ENSDZ7SUBEW100 SS | 100% | 2025-12-14 | 2025-12-20 |  |  | Technical Office Engineer [100 h]; Document Control [20 h] | Z7 | ENGG | ST |
| RHD4ENSDZ7SUBMV150 |  | Prepare and Submit Shop Drawings for Medium Voltage Network for SUB-SD-Z7 | 6d | 2026-11-10 | 2026-11-16 | RHD4GNPPSD1100, RHD4ENSDZ7SUBIRR140 |  |  |  | -182.02d | 0d | Technical Office Engineer [100 h]; Document Control [20 h] | Z7 | ENGG | MV |

| ID | WBS | Activity | Duration | Start | Finish | Predecessors | Complete | Planned start | Planned finish | Total float | Free float | Resources | RDH4-01-001-Zones-1 | RDH4-01-001-Phases-1 | RDH4-01-001-Networks-1 |
| --- | --- | --- | --- | --- | --- | --- | --- | --- | --- | --- | --- | --- | --- | --- | --- |
|  | 30 | **RHD4-02-002-Shop Drawing Submittals - SUB-Z8** |  | 2025-12-20 | 2026-11-16 |  |  |  |  |  |  |  |  |  |  |
| RHD4ENSDZ8SUBEW100 |  | Prepare and Submit Shop Drawings for Road Plans and Profile for SUB-SD-Z8 | 7d | 2025-12-20 A | 2026-07-02 A | RHD4GNPPSoL1100, RHD4GNPPSuv1100 | 100% | 2025-12-14 | 2025-12-21 |  |  | Technical Office Engineer [100 h]; Document Control [20 h] | Z8 | ENGG | EW |
| RHD4ENSDZ8SUBRD220 |  | Prepare and Submit Shop Drawings for Road Works( KERBING AND PAVEMENT ) for SUB-SD-Z8 | 7d | 2025-12-20 A | 2026-07-02 A | RHD4ENSDZ3SUBRD220 | 100% | 2025-12-23 | 2025-12-30 |  |  | Technical Office Engineer [100 h]; Document Control [20 h] | Z8 | ENGG | RD |
| RHD4ENSDZ8SUBSW120 |  | Prepare and Submit Shop Drawings for Sewage Network for SUB-SD-Z8 | 7d | 2025-12-21 A | 2026-02-11 A | RHD4ENSDZ8SUBST110 SS | 100% | 2025-12-22 | 2025-12-29 |  |  | Technical Office Engineer [100 h]; Document Control [20 h] | Z8 | ENGG | SW |
| RHD4ENSDZ8SUBPT130 |  | Prepare and Submit Shop Drawings for Potable Water Network for SUB-SD-Z8 | 6d | 2025-12-22 A | 2026-02-12 A | RHD4ENSDZ8SUBSW120 SS | 100% | 2025-12-22 | 2025-12-28 |  |  | Technical Office Engineer [100 h]; Document Control [20 h] | Z8 | ENGG | PT |
| RHD4ENSDZ8SUBIRR140 |  | Prepare and Submit Shop Drawings for Irrigation Network for SUB-SD-Z8 | 6d | 2025-12-29 A | 2026-02-18 A | RHD4ENSDZ8SUBPT130 | 100% | 2025-12-29 | 2026-01-04 |  |  | Technical Office Engineer [100 h]; Document Control [20 h] | Z8 | ENGG | IRR |
| RHD4ENSDZ8SUBCCTV210 |  | Prepare and Submit Shop Drawings for Security Network for SUB-SD-Z8 | 7d | 2025-12-31 A | 2026-03-03 A | RHD4ENSDZ8SUBICT200 SS | 100% | 2025-12-31 | 2026-01-07 |  |  | Technical Office Engineer [200 h]; Document Control [40 h] | Z8 | ENGG | CCTV |
| RHD4ENSDZ8SUBICT200 |  | Prepare and Submit Shop Drawings for Information and Communication Technologies Network for SUB-SD-Z8 | 7d | 2025-12-31 A | 2026-03-03 A | RHD4ENSDZ8SUBTC190 SS | 100% | 2025-12-31 | 2026-01-07 |  |  | Technical Office Engineer [100 h]; Document Control [20 h] | Z8 | ENGG | ICT |
| RHD4ENSDZ8SUBLV160 |  | Prepare and Submit Shop Drawings for Low Voltage Network for SUB-SD-Z8 | 7d | 2025-12-31 A | 2026-02-26 A | RHD4ENSDZ8SUBSL170 SS | 100% | 2025-12-31 | 2026-01-07 |  |  | Technical Office Engineer [100 h]; Document Control [20 h] | Z8 | ENGG | LV |
| RHD4ENSDZ8SUBSL170 |  | Prepare and Submit Shop Drawings for Street Lighting Network for SUB-SD-Z8 | 7d | 2025-12-31 A | 2026-03-01 A | RHD4ENSDZ8SUBRD220 | 100% | 2025-12-31 | 2026-01-07 |  |  | Technical Office Engineer [100 h]; Document Control [20 h] | Z8 | ENGG | SL |
| RHD4ENSDZ8SUBTC190 |  | Prepare and Submit Shop Drawings for Telecommunications Network for SUB-SD-Z8 | 6d | 2025-12-31 A | 2026-03-04 A | RHD4ENSDZ8SUBLV160 SS | 100% | 2025-12-31 | 2026-01-06 |  |  | Technical Office Engineer [100 h]; Document Control [20 h] | Z8 | ENGG | TC |
| RHD4ENSDZ8SUBST110 |  | Prepare and Submit Shop Drawings for Storm Water Network for SUB-SD-Z8 | 6d | 2026-01-27 A | 2026-02-02 A | RHD4ENSDZ8SUBEW100 | 100% | 2025-12-22 | 2025-12-28 |  |  | Technical Office Engineer [100 h]; Document Control [20 h] | Z8 | ENGG | ST |
| RHD4ENSDZ8SUBMV150 |  | Prepare and Submit Shop Drawings for Medium Voltage Network for SUB-SD-Z8 | 6d | 2026-11-10 | 2026-11-16 | RHD4GNPPSD1100, RHD4ENSDZ8SUBIRR140 |  |  |  | -182.02d | 6d | Technical Office Engineer [100 h]; Document Control [20 h] | Z8 | ENGG | MV |
|  | 31 | **RHD4-02-002-Shop Drawing Submittals - SUB-Z9** |  | 2025-12-14 | 2026-11-16 |  |  |  |  |  |  |  |  |  |  |
| RHD4ENSDZ9SUBPT130 |  | Prepare and Submit Shop Drawings for Potable Water Network for SUB-SD-Z9 | 6d | 2025-12-14 A | 2026-02-12 A | RHD4ENSDZ9SUBSW120 SS | 100% | 2025-12-14 | 2025-12-20 |  |  | Technical Office Engineer [100 h]; Document Control [20 h] | Z9 | ENGG | PT |
| RHD4ENSDZ9SUBCCTV210 |  | Prepare and Submit Shop Drawings for Security Network for SUB-SD-Z9 | 7d | 2025-12-15 A | 2026-03-03 A | RHD4ENSDZ9SUBICT200 SS | 100% | 2025-12-15 | 2025-12-22 |  |  | Technical Office Engineer [200 h]; Document Control [40 h] | Z9 | ENGG | CCTV |
| RHD4ENSDZ9SUBICT200 |  | Prepare and Submit Shop Drawings for Information and Communication Technologies Network for SUB-SD-Z9 | 7d | 2025-12-15 A | 2026-03-03 A | RHD4ENSDZ9SUBTC190 SS | 100% | 2025-12-15 | 2025-12-22 |  |  | Technical Office Engineer [100 h]; Document Control [20 h] | Z9 | ENGG | ICT |
| RHD4ENSDZ9SUBLV160 |  | Prepare and Submit Shop Drawings for Low Voltage Network for SUB-SD-Z9 | 7d | 2025-12-15 A | 2026-02-26 A | RHD4ENSDZ9SUBSL170 SS | 100% | 2025-12-15 | 2025-12-22 |  |  | Technical Office Engineer [100 h]; Document Control [20 h] | Z9 | ENGG | LV |
| RHD4ENSDZ9SUBSL170 |  | Prepare and Submit Shop Drawings for Street Lighting Network for SUB-SD-Z9 | 7d | 2025-12-15 A | 2026-03-01 A | RHD4ENSDZ9SUBRD220 SS | 100% | 2025-12-15 | 2025-12-22 |  |  | Technical Office Engineer [100 h]; Document Control [20 h] | Z9 | ENGG | SL |
| RHD4ENSDZ9SUBTC190 |  | Prepare and Submit Shop Drawings for Telecommunications Network for SUB-SD-Z9 | 6d | 2025-12-15 A | 2026-03-04 A | RHD4ENSDZ9SUBLV160 SS | 100% | 2025-12-15 | 2025-12-21 |  |  | Technical Office Engineer [100 h]; Document Control [20 h] | Z9 | ENGG | TC |
| RHD4ENSDZ9SUBEW100 |  | Prepare and Submit Shop Drawings for Road Plans and Profile for SUB-SD-Z9 | 7d | 2025-12-20 A | 2026-02-02 A | RHD4GNPPSoL1100, RHD4GNPPSuv1100, RHD4GNPPSD1100 FF | 100% | 2025-12-14 | 2025-12-21 |  |  | Technical Office Engineer [100 h]; Document Control [20 h] | Z9 | ENGG | EW |
| RHD4ENSDZ9SUBRD220 |  | Prepare and Submit Shop Drawings for Road Works( KERBING AND PAVEMENT ) for SUB-SD-Z9(Completed) | 7d | 2025-12-20 A | 2026-08-03 A | RHD4GNPPSD1100 FF, RHD4ENSDZ6SUBRD220 | 100% | 2025-12-15 | 2025-12-22 |  |  | Technical Office Engineer [100.14 h]; Document Control [19.86 h] | Z9 | ENGG | RD |
| RHD4ENSDZ9SUBIRR140 |  | Prepare and Submit Shop Drawings for Irrigation Network for SUB-SD-Z9 | 6d | 2025-12-21 A | 2026-02-18 A | RHD4ENSDZ9SUBPT130 | 100% | 2025-12-21 | 2025-12-27 |  |  | Technical Office Engineer [100 h]; Document Control [20 h] | Z9 | ENGG | IRR |
| RHD4ENSDZ9SUBSW120 |  | Prepare and Submit Shop Drawings for Sewage Network for SUB-SD-Z9 | 7d | 2025-12-21 A | 2026-02-11 A | RHD4ENSDZ9SUBST110 SS | 100% | 2025-12-14 | 2025-12-21 |  |  | Technical Office Engineer [100 h]; Document Control [20 h] | Z9 | ENGG | SW |
| RHD4ENSDZ9SUBST110 |  | Prepare and Submit Shop Drawings for Storm Water Network for SUB-SD-Z9 | 6d | 2026-01-27 A | 2026-02-02 A | RHD4ENSDZ9SUBEW100 SS | 100% | 2025-12-14 | 2025-12-20 |  |  | Technical Office Engineer [100 h]; Document Control [20 h] | Z9 | ENGG | ST |
| RHD4ENSDZ9SUBMV150 |  | Prepare and Submit Shop Drawings for Medium Voltage Network for SUB-SD-Z9 | 6d | 2026-11-10 | 2026-11-16 | RHD4GNPPSD1100, RHD4ENSDZ9SUBIRR140 |  |  |  | -182.02d | 0d | Technical Office Engineer [100 h]; Document Control [20 h] | Z9 | ENGG | MV |

| ID | WBS | Activity | Duration | Start | Finish | Predecessors | Complete | Planned start | Planned finish | Total float | Free float | Resources | RDH4-01-001-Zones-1 | RDH4-01-001-Phases-1 | RDH4-01-001-Networks-1 |
| --- | --- | --- | --- | --- | --- | --- | --- | --- | --- | --- | --- | --- | --- | --- | --- |
|  | 32 | **RHD4-02-002-Shop Drawing Submittals - SUB-Tunne 1 - TUN1** |  | 2025-12-15 | 2026-08-03 |  |  |  |  |  |  |  |  |  |  |
| RHD4ENSDTUN1SUB1100 |  | Prepare and Submit Shop Drawings for TUNNEL 1 (SECTIONS) -Z5 for -TUN1-SUB(Completed) | 7d | 2025-12-15 A | 2026-08-03 A | RHD4GNPPSD1100 FF, RHD4ENSDZ6SUBRD220 | 100% | 2025-12-15 | 2025-12-22 |  |  | Technical Office Engineer [106.14 h]; Document Control [21.9 h] | TUN1 | ENGG | TUN1 |
| RHD4ENSDTUN1SUB1200 |  | Prepare and Submit Shop Drawings for TUNNEL 1 (BBS) -Z5 for -TUN1-SUB(Completed) | 7d | 2025-12-15 A | 2026-08-03 A | RHD4GNPPSD1100 FF, RHD4ENSDZ6SUBRD220 | 100% | 2025-12-15 | 2025-12-22 |  |  | Technical Office Engineer [106.14 h]; Document Control [21.9 h] | TUN1 | ENGG | TUN1 |
| RHD4ENSDTUN1SUB1000 |  | Prepare and Submit Shop Drawings for TUNNEL 1 (PLANS) -Z5 for -TUN1-SUB | 7d | 2025-12-25 A | 2026-01-07 A | RHD4ENSDZ8SUBRD220, RHD4GNPPHSE1100 | 100% | 2025-12-31 | 2026-01-07 |  |  | Technical Office Engineer [210.6 h]; Document Control [42.12 h] | TUN1 | ENGG | TUN1 |
|  | 36 | **RHD4-02-002-Shop Drawing Submittals - SUB-Storm Lift Station 1 - STL1** |  | 2026-01-31 | 2026-08-03 |  |  |  |  |  |  |  |  |  |  |
| RHD4ENSDSTL1SUB1000 |  | Prepare and Submit Shop Drawings for Storm Lift Station 1 - Z5 - Structure Package for SD-STL1-SUB | 12d | 2026-01-31 A | 2026-02-12 A | RHD4GNMOB1200 | 100% | 2025-12-16 | 2025-12-29 |  |  | Technical Office Engineer [210.6 h]; Document Control [42.12 h] | STL1 | ENGG | ST |
| RHD4ENSDSTL1SUB2000 |  | Prepare and Submit Shop Drawings for Storm Lift Station 1 - Z5 - Architecture Package for SD-STL1-SUB(Completed) | 7d | 2026-01-31 A | 2026-08-03 A | RHD4GNPPSD1100 FF, RHD4ENSDZ6SUBRD220 | 100% | 2025-12-15 | 2025-12-22 |  |  | Technical Office Engineer [200.49 h]; Document Control [40.44 h] | STL1 | ENGG | ST |
| RHD4ENSDSTL1SUB3000 |  | Prepare and Submit Shop Drawings for Storm Lift Station 1 - Z5 - Mechanical Package for SD-STL1-SUB(Completed) | 7d | 2026-03-01 A | 2026-08-03 A | RHD4GNPPSD1100 FF, RHD4ENSDZ6SUBRD220 | 100% | 2025-12-15 | 2025-12-22 |  |  | Technical Office Engineer [106.14 h]; Document Control [21.9 h] | STL1 | ENGG | ST |
| RHD4ENSDSTL1SUB4000 |  | Prepare and Submit Shop Drawings for Storm Lift Station 1 - Z5 - Electrical Package for SD-STL1-SUB | 12d | 2026-03-23 A | 2026-04-05 A | RHD4ENSDSTL1SUB1000 | 100% | 2025-12-30 | 2026-01-12 |  |  | Technical Office Engineer [210.6 h]; Document Control [42.12 h] | STL1 | ENGG | ST |
|  | 34 | **RHD4-02-002-Shop Drawing Submittals - SUB-Sewage Lift Station 1 - SWL1** |  | 2025-12-15 | 2026-08-03 |  |  |  |  |  |  |  |  |  |  |
| RHD4ENSDSWL1SUB2000 |  | Prepare and Submit Shop Drawings for Sewage Lift Station 1 - Z3 - Architecture Package for -SWL1-SUB(Completed) | 7d | 2025-12-15 A | 2026-08-03 A | RHD4ENSDSTL1SUB2000 SS, RHD4GNPPSD1100 FF | 100% | 2025-12-15 | 2025-12-22 |  |  | Technical Office Engineer [106.14 h]; Document Control [21.9 h] | SWL1 | ENGG | SWL1 |
| RHD4ENSDSWL1SUB3000 |  | Prepare and Submit Shop Drawings for Sewage Lift Station 1 - Z3 - Mechanical Package for -SWL1-SUB(Completed) | 7d | 2025-12-15 A | 2026-08-03 A | RHD4ENSDSTL1SUB3000 SS, RHD4GNPPSD1100 FF | 100% | 2025-12-15 | 2025-12-22 |  |  | Technical Office Engineer [64 h]; Document Control [13.48 h] | SWL1 | ENGG | SWL1 |
| RHD4ENSDSWL1SUB1000 |  | Prepare and Submit Shop Drawings for Sewage Lift Station 1 - Z3 - Structure Package for -SWL1-SUB | 14.3d | 2025-12-30 A | 2026-02-16 A | RHD4ENSDSTL1SUB1000 | 100% | 2025-12-30 | 2026-01-15 |  |  | Technical Office Engineer [210.6 h]; Document Control [42.12 h] | SWL1 | ENGG | SWL1 |
| RHD4ENSDSWL1SUB4000 |  | Prepare and Submit Shop Drawings for Sewage Lift Station 1 - Z3 - Electrical Package for -SWL1-SUB | 11d | 2026-01-13 A | 2026-04-05 A | RHD4ENSDSTL1SUB4000 | 100% | 2026-01-13 | 2026-01-25 |  |  | Technical Office Engineer [210.6 h]; Document Control [42.12 h] | SWL1 | ENGG | SWL1 |
|  | 38 | **RHD4-02-002-Shop Drawing Approvals - APP** |  | 2025-12-04 | 2026-11-30 |  |  |  |  |  |  |  |  |  |  |
|  | 39 | **RHD4-02-002-Shop Drawing Approvals - APP-Z1** |  | 2025-12-21 | 2026-11-23 |  |  |  |  |  |  |  |  |  |  |
| RHD4ENSDZ1APPSW120 |  | Review and Approval of Shop Drawings for Sewage Network for SW-Z1-APP | 7d | 2025-12-21 A | 2026-04-07 A | RHD4ENSDZ1SUBSW120 | 100% | 2025-12-21 | 2025-12-28 |  |  | Consultant Staff | Z1 | ENGG | SW |
| RHD4ENSDZ1APPPT130 |  | Review and Approval of Shop Drawings for Potable Water Network for PT-Z1-APP | 6d | 2025-12-28 A | 2026-08-10 A | RHD4ENSDZ1SUBPT130 | 100% | 2025-12-28 | 2026-01-03 |  |  | Consultant Staff | Z1 | ENGG | PT |
| RHD4ENSDZ1APPIRR140 |  | Review and Approval of Shop Drawings for Irrigation Network for IRR-Z1-APP | 7d | 2026-01-04 A | 2026-04-30 A | RHD4ENSDZ1SUBIRR140 | 100% | 2026-01-04 | 2026-01-11 |  |  | Consultant Staff | Z1 | ENGG | IRR |
| RHD4ENSDZ1APPRD220 |  | Review and Approval of Shop Drawings for Road Works( KERBING AND PAVEMENT ) for RD-Z1-APP | 7d | 2026-01-04 A | 2026-05-31 A | RHD4ENSDZ1SUBRD220 SS | 100% | 2026-01-04 | 2026-01-11 |  |  | Consultant Staff | Z1 | ENGG | RD |
| RHD4ENSDZ1APPCCTV210 |  | Review and Approval of Shop Drawings for Security Network for CCTV-Z1-APP | 7d | 2026-01-11 A | 2026-03-08 A | RHD4ENSDZ1SUBCCTV210 | 100% | 2026-01-11 | 2026-01-18 |  |  | Consultant Staff | Z1 | ENGG | CCTV |
| RHD4ENSDZ1APPICT200 |  | Review and Approval of Shop Drawings for Information and Communication Technologies Network for ICT-Z1-APP | 7d | 2026-01-11 A | 2026-03-08 A | RHD4ENSDZ1SUBICT200 | 100% | 2026-01-11 | 2026-01-18 |  |  | Consultant Staff | Z1 | ENGG | ICT |
| RHD4ENSDZ1APPLV160 |  | Review and Approval of Shop Drawings for Low Voltage Network for LV-Z1-APP | 7d | 2026-01-11 A | 2026-03-11 A | RHD4ENSDZ1SUBLV160 | 100% | 2026-01-11 | 2026-01-18 |  |  | Consultant Staff | Z1 | ENGG | LV |
| RHD4ENSDZ1APPSL170 |  | Review and Approval of Shop Drawings for Street Lighting Network for SL-Z1-APP | 7d | 2026-01-11 A | 2026-03-12 A | RHD4ENSDZ1SUBSL170 | 100% | 2026-01-11 | 2026-01-18 |  |  | Consultant Staff | Z1 | ENGG | SL |
| RHD4ENSDZ1APPTC190 |  | Review and Approval of Shop Drawings for Telecommunications Network for TC-Z1-APP | 7d | 2026-01-11 A | 2026-04-06 A | RHD4ENSDZ1APPPT130, RHD4ENSDZ1APPSW120, RHD4ENSDZ1APPST110, RHD4ENSDZ1SUBTC190 | 100% | 2026-01-11 | 2026-01-18 |  |  | Consultant Staff | Z1 | ENGG | TC |
| RHD4ENSDZ1APPEW100 |  | Review and Approval of Shop Drawings for Road Plans and Profile for EW-Z1-APP | 5d | 2026-01-12 A | 2026-02-14 A | RHD4ENSDZ1APPRD220, RHD4ENSDZ1SUBEW100, RHD4ENSDZ1APPRD220 FF | 100% | 2026-01-12 | 2026-01-17 |  |  | Consultant Staff | Z1 | ENGG | EW |
| RHD4ENSDZ1APPST110 |  | Review and Approval of Shop Drawings for Storm Water Network for ST-Z1-APP | 7d | 2026-02-03 A | 2026-04-30 A | RHD4ENSDZ1SUBST110 | 100% | 2025-12-21 | 2025-12-28 |  |  | Consultant Staff | Z1 | ENGG | ST |
| RHD4ENSDZ1APPMV150 |  | Review and Approval of Shop Drawings for Medium Voltage Network for MV-Z1-APP | 6d | 2026-11-17 | 2026-11-23 | RHD4GNPPSD1100, RHD4ENSDZ4SUBRD220, RHD4ENSDZ1SUBRD220, RHD4ENSDZ1APPIRR140, RHD4ENSDZ1SUBMV150 |  |  |  | -182.02d | 6d | Consultant Staff | Z1 | ENGG | MV |

| ID | WBS | Activity | Duration | Start | Finish | Predecessors | Complete | Planned start | Planned finish | Total float | Free float | Resources | RDH4-01-001-Zones-1 | RDH4-01-001-Phases-1 | RDH4-01-001-Networks-1 |
| --- | --- | --- | --- | --- | --- | --- | --- | --- | --- | --- | --- | --- | --- | --- | --- |
|  | 40 | **RHD4-02-002-Shop Drawing Approvals - APP-Z2** |  | 2025-12-30 | 2026-11-23 |  |  |  |  |  |  |  |  |  |  |
| RHD4ENSDZ2APPPT130 |  | Review and Approval of Shop Drawings for Potable Water Network for PT-Z2-APP | 6d | 2025-12-30 A | 2026-08-10 A | RHD4ENSDZ2SUBPT130 | 100% | 2025-12-30 | 2026-01-05 |  |  | Consultant Staff | Z2 | ENGG | PT |
| RHD4ENSDZ2APPSW120 |  | Review and Approval of Shop Drawings for Sewage Network for SW-Z2-APP | 7d | 2025-12-30 A | 2026-04-07 A | RHD4ENSDZ2SUBSW120 | 100% | 2025-12-30 | 2026-01-06 |  |  | Consultant Staff | Z2 | ENGG | SW |
| RHD4ENSDZ2APPRD220 |  | Review and Approval of Shop Drawings for Road Works( KERBING AND PAVEMENT ) for RD-Z2-APP | 7d | 2026-01-04 A | 2026-02-09 A | RHD4ENSDZ2SUBRD220 SS | 100% | 2026-01-04 | 2026-01-11 |  |  | Consultant Staff | Z2 | ENGG | RD |
| RHD4ENSDZ2APPIRR140 |  | Review and Approval of Shop Drawings for Irrigation Network for IRR-Z2-APP | 7d | 2026-01-07 A | 2026-04-30 A | RHD4ENSDZ2SUBIRR140 | 100% | 2026-01-07 | 2026-01-14 |  |  | Consultant Staff | Z2 | ENGG | IRR |
| RHD4ENSDZ2APPTC190 |  | Review and Approval of Shop Drawings for Telecommunications Network for TC-Z2-APP | 7d | 2026-01-11 A | 2026-04-06 A | RHD4ENSDZ2SUBTC190 | 100% | 2026-01-11 | 2026-01-18 |  |  | Consultant Staff | Z2 | ENGG | TC |
| RHD4ENSDZ2APPCCTV210 |  | Review and Approval of Shop Drawings for Security Network for CCTV-Z2-APP | 7d | 2026-01-12 A | 2026-03-10 A | RHD4ENSDZ2APPSW120, RHD4ENSDZ2SUBCCTV210 | 100% | 2026-01-12 | 2026-01-19 |  |  | Consultant Staff | Z2 | ENGG | CCTV |
| RHD4ENSDZ2APPEW100 |  | Review and Approval of Shop Drawings for Road Plans and Profile for EW-Z2-APP | 5d | 2026-01-12 A | 2026-02-14 A | RHD4ENSDZ2APPRD220, RHD4ENSDZ2SUBEW100 SS, RHD4ENSDZ2APPST110 | 100% | 2026-01-12 | 2026-01-17 |  |  | Consultant Staff | Z2 | ENGG | EW |
| RHD4ENSDZ2APPICT200 |  | Review and Approval of Shop Drawings for Information and Communication Technologies Network for ICT-Z2-APP | 7d | 2026-01-12 A | 2026-03-10 A | RHD4ENSDZ2APPPT130, RHD4ENSDZ2SUBICT200 | 100% | 2026-01-12 | 2026-01-19 |  |  | Consultant Staff | Z2 | ENGG | ICT |
| RHD4ENSDZ2APPLV160 |  | Review and Approval of Shop Drawings for Low Voltage Network for LV-Z2-APP | 7d | 2026-01-12 A | 2026-03-05 A | RHD4ENSDZ2SUBLV160 | 100% | 2026-01-12 | 2026-01-19 |  |  | Consultant Staff | Z2 | ENGG | LV |
| RHD4ENSDZ2APPSL170 |  | Review and Approval of Shop Drawings for Street Lighting Network for SL-Z2-APP | 7d | 2026-01-12 A | 2026-03-08 A | RHD4ENSDZ2SUBSL170 | 100% | 2026-01-12 | 2026-01-19 |  |  | Consultant Staff | Z2 | ENGG | SL |
| RHD4ENSDZ2APPST110 |  | Review and Approval of Shop Drawings for Storm Water Network for ST-Z2-APP | 7d | 2026-02-03 A | 2026-04-30 A | RHD4ENSDZ2SUBST110 | 100% | 2025-12-29 | 2026-01-05 |  |  | Consultant Staff | Z2 | ENGG | ST |
| RHD4ENSDZ2APPMV150 |  | Review and Approval of Shop Drawings for Medium Voltage Network for MV-Z2-APP | 6d | 2026-11-17 | 2026-11-23 | RHD4GNPPSD1100, RHD4ENSDZ4SUBRD220, RHD4ENSDZ2SUBRD220, RHD4ENSDZ2APPIRR140, RHD4ENSDZ2SUBMV150 |  |  |  | -182.02d | 6d | Consultant Staff | Z2 | ENGG | MV |
|  | 41 | **RHD4-02-002-Shop Drawing Approvals - APP-Z3** |  | 2025-12-23 | 2026-11-23 |  |  |  |  |  |  |  |  |  |  |
| RHD4ENSDZ3APPRD220 |  | Review and Approval of Shop Drawings for Road Works( KERBING AND PAVEMENT ) for RD-Z3-APP | 7d | 2025-12-23 A | 2026-02-09 A | RHD4ENSDZ3SUBRD220 | 100% | 2025-12-23 | 2025-12-30 |  |  | Consultant Staff | Z3 | ENGG | RD |
| RHD4ENSDZ3APPPT130 |  | Review and Approval of Shop Drawings for Potable Water Network for PT-Z3-APP | 6d | 2025-12-28 A | 2026-08-10 A | RHD4ENSDZ3SUBPT130 | 100% | 2025-12-28 | 2026-01-03 |  |  | Consultant Staff | Z3 | ENGG | PT |
| RHD4ENSDZ3APPSW120 |  | Review and Approval of Shop Drawings for Sewage Network for SW-Z3-APP | 7d | 2025-12-28 A | 2026-04-07 A | RHD4ENSDZ3SUBSW120 | 100% | 2025-12-28 | 2026-01-04 |  |  | Consultant Staff | Z3 | ENGG | SW |
| RHD4ENSDZ3APPCCTV210 |  | Review and Approval of Shop Drawings for Security Network for CCTV-Z3-APP | 7d | 2025-12-30 A | 2026-03-10 A | RHD4ENSDZ3SUBCCTV210 | 100% | 2025-12-30 | 2026-01-06 |  |  | Consultant Staff | Z3 | ENGG | CCTV |
| RHD4ENSDZ3APPICT200 |  | Review and Approval of Shop Drawings for Information and Communication Technologies Network for ICT-Z3-APP | 7d | 2025-12-30 A | 2026-03-10 A | RHD4ENSDZ3SUBICT200 | 100% | 2025-12-30 | 2026-01-06 |  |  | Consultant Staff | Z3 | ENGG | ICT |
| RHD4ENSDZ3APPLV160 |  | Review and Approval of Shop Drawings for Low Voltage Network for LV-Z3-APP | 7d | 2025-12-30 A | 2026-03-05 A | RHD4ENSDZ3SUBLV160 | 100% | 2025-12-30 | 2026-01-06 |  |  | Consultant Staff | Z3 | ENGG | LV |
| RHD4ENSDZ3APPSL170 |  | Review and Approval of Shop Drawings for Street Lighting Network for SL-Z3-APP | 7d | 2025-12-30 A | 2026-03-08 A | RHD4ENSDZ3SUBSL170 | 100% | 2025-12-30 | 2026-01-06 |  |  | Consultant Staff | Z3 | ENGG | SL |
| RHD4ENSDZ3APPTC190 |  | Review and Approval of Shop Drawings for Telecommunications Network for TC-Z3-APP | 7d | 2025-12-30 A | 2026-04-06 A | RHD4ENSDZ3SUBTC190 | 100% | 2025-12-30 | 2026-01-06 |  |  | Consultant Staff | Z3 | ENGG | TC |
| RHD4ENSDZ3APPEW100 |  | Review and Approval of Shop Drawings for Road Plans and Profile for EW-Z3-APP | 5d | 2025-12-31 A | 2026-02-14 A | RHD4ENSDZ3APPRD220, RHD4ENSDZ3SUBEW100 | 100% | 2025-12-31 | 2026-01-05 |  |  | Consultant Staff | Z3 | ENGG | EW |
| RHD4ENSDZ3APPIRR140 |  | Review and Approval of Shop Drawings for Irrigation Network for IRR-Z3-APP | 7d | 2026-01-04 A | 2026-04-30 A | RHD4ENSDZ3APPPT130, RHD4ENSDZ3SUBIRR140 | 100% | 2026-01-04 | 2026-01-11 |  |  | Consultant Staff | Z3 | ENGG | IRR |
| RHD4ENSDZ3APPST110 |  | Review and Approval of Shop Drawings for Storm Water Network for ST-Z3-APP | 7d | 2026-02-03 A | 2026-04-30 A | RHD4ENSDZ3SUBST110 | 100% | 2025-12-28 | 2026-01-04 |  |  | Consultant Staff | Z3 | ENGG | ST |
| RHD4ENSDZ3APPMV150 |  | Review and Approval of Shop Drawings for Medium Voltage Network for MV-Z3-APP | 6d | 2026-11-17 | 2026-11-23 | RHD4ENSDZ3APPEW100, RHD4ENSDZ3APPCCTV210, RHD4ENSDZ3APPICT200, RHD4ENSDZ3APPTC190, RHD4ENSDZ3APPSL170, RHD4ENSDZ3APPLV160, RHD4ENSDZ3APPSW120, RHD4ENSDZ3APPST110, RHD4ENSDZ3SUBMV150 |  |  |  | -182.02d | 6d | Consultant Staff | Z3 | ENGG | MV |

| ID | WBS | Activity | Duration | Start | Finish | Predecessors | Complete | Planned start | Planned finish | Total float | Free float | Resources | RDH4-01-001-Zones-1 | RDH4-01-001-Phases-1 | RDH4-01-001-Networks-1 |
| --- | --- | --- | --- | --- | --- | --- | --- | --- | --- | --- | --- | --- | --- | --- | --- |
|  | 42 | **RHD4-02-002-Shop Drawing Approvals - APP-Z4** |  | 2025-12-14 | 2026-11-23 |  |  |  |  |  |  |  |  |  |  |
| RHD4ENSDZ4APPEW100 |  | Review and Approval of Shop Drawings for Road Plans and Profile for EW-Z4-APP | 5d | 2025-12-14 A | 2026-02-14 A | RHD4ENSDZ4SUBEW100 SS | 100% | 2025-12-14 | 2025-12-18 |  |  | Consultant Staff | Z4 | ENGG | EW |
| RHD4ENSDZ4APPPT130 |  | Review and Approval of Shop Drawings for Potable Water Network for PT-Z4-APP | 6d | 2025-12-21 A | 2026-08-10 A | RHD4ENSDZ4SUBPT130 | 100% | 2025-12-21 | 2025-12-27 |  |  | Consultant Staff | Z4 | ENGG | PT |
| RHD4ENSDZ4APPSW120 |  | Review and Approval of Shop Drawings for Sewage Network for SW-Z4-APP | 7d | 2025-12-22 A | 2026-04-07 A | RHD4ENSDZ4SUBSW120 | 100% | 2025-12-22 | 2025-12-29 |  |  | Consultant Staff | Z4 | ENGG | SW |
| RHD4ENSDZ4APPRD220 |  | Review and Approval of Shop Drawings for Road Works( KERBING AND PAVEMENT ) for RD-Z4-APP | 7d | 2025-12-24 A | 2026-02-09 A | RHD4ENSDZ4SUBRD220 SS | 100% | 2025-12-24 | 2025-12-31 |  |  | Consultant Staff | Z4 | ENGG | RD |
| RHD4ENSDZ4APPIRR140 |  | Review and Approval of Shop Drawings for Irrigation Network for IRR-Z4-APP | 7d | 2025-12-28 A | 2026-04-30 A | RHD4ENSDZ4SUBIRR140 | 100% | 2025-12-28 | 2026-01-04 |  |  | Consultant Staff | Z4 | ENGG | IRR |
| RHD4ENSDZ4APPTC190 |  | Review and Approval of Shop Drawings for Telecommunications Network for TC-Z4-APP | 7d | 2025-12-31 A | 2026-04-06 A | RHD4ENSDZ4SUBTC190 | 100% | 2025-12-31 | 2026-01-07 |  |  | Consultant Staff | Z4 | ENGG | TC |
| RHD4ENSDZ4APPCCTV210 |  | Review and Approval of Shop Drawings for Security Network for CCTV-Z4-APP | 7d | 2026-01-01 A | 2026-03-10 A | RHD4ENSDZ4SUBCCTV210 | 100% | 2026-01-01 | 2026-01-08 |  |  | Consultant Staff | Z4 | ENGG | CCTV |
| RHD4ENSDZ4APPICT200 |  | Review and Approval of Shop Drawings for Information and Communication Technologies Network for ICT-Z4-APP | 7d | 2026-01-01 A | 2026-03-10 A | RHD4ENSDZ4SUBICT200 | 100% | 2026-01-01 | 2026-01-08 |  |  | Consultant Staff | Z4 | ENGG | ICT |
| RHD4ENSDZ4APPLV160 |  | Review and Approval of Shop Drawings for Low Voltage Network for LV-Z4-APP | 7d | 2026-01-01 A | 2026-03-05 A | RHD4ENSDZ4SUBLV160 | 100% | 2026-01-01 | 2026-01-08 |  |  | Consultant Staff | Z4 | ENGG | LV |
| RHD4ENSDZ4APPSL170 |  | Review and Approval of Shop Drawings for Street Lighting Network for SL-Z4-APP | 7d | 2026-01-01 A | 2026-03-08 A | RHD4ENSDZ4SUBSL170 | 100% | 2026-01-01 | 2026-01-08 |  |  | Consultant Staff | Z4 | ENGG | SL |
| RHD4ENSDZ4APPST110 |  | Review and Approval of Shop Drawings for Storm Water Network for ST-Z4-APP | 7d | 2026-02-03 A | 2026-04-30 A | RHD4ENSDZ4SUBST110 | 100% | 2025-12-21 | 2025-12-28 |  |  | Consultant Staff | Z4 | ENGG | ST |
| RHD4ENSDZ4APPMV150 |  | Review and Approval of Shop Drawings for Medium Voltage Network for MV-Z4-APP | 6d | 2026-11-17 | 2026-11-23 | RHD4ENSDZ4APPRD220, RHD4ENSDZ4APPSW120, RHD4ENSDZ4APPPT130, RHD4ENSDZ4APPST110, RHD4ENSDZ4SUBMV150 |  |  |  | -182.02d | 0d | Consultant Staff | Z4 | ENGG | MV |
|  | 43 | **RHD4-02-002-Shop Drawing Approvals - APP-Z5** |  | 2025-12-15 | 2026-11-23 |  |  |  |  |  |  |  |  |  |  |
| RHD4ENSDZ5APPRD220 |  | Review and Approval of Shop Drawings for Road Works( KERBING AND PAVEMENT ) for RD-Z5-APP | 7d | 2025-12-15 A | 2026-02-09 A | RHD4ENSDZ5SUBRD220 SS | 100% | 2025-12-15 | 2025-12-22 |  |  | Consultant Staff | Z5 | ENGG | RD |
| RHD4ENSDZ5APPEW100 |  | Review and Approval of Shop Drawings for Road Plans and Profile for EW-Z5-APP | 5d | 2025-12-21 A | 2026-02-14 A | RHD4ENSDZ5SUBEW100 | 100% | 2025-12-21 | 2025-12-25 |  |  | Consultant Staff | Z5 | ENGG | EW |
| RHD4ENSDZ5APPPT130 |  | Review and Approval of Shop Drawings for Potable Water Network for PT-Z5-APP | 6d | 2025-12-21 A | 2026-08-10 A | RHD4ENSDZ5SUBPT130 | 100% | 2025-12-21 | 2025-12-27 |  |  | Consultant Staff | Z5 | ENGG | PT |
| RHD4ENSDZ5APPSW120 |  | Review and Approval of Shop Drawings for Sewage Network for SW-Z5-APP | 7d | 2025-12-22 A | 2026-04-07 A | RHD4ENSDZ5SUBSW120 | 100% | 2025-12-22 | 2025-12-29 |  |  | Consultant Staff | Z5 | ENGG | SW |
| RHD4ENSDZ5APPTC190 |  | Review and Approval of Shop Drawings for Telecommunications Network for TC-Z5-APP | 7d | 2025-12-22 A | 2026-04-06 A | RHD4ENSDZ5SUBTC190 | 100% | 2025-12-22 | 2025-12-29 |  |  | Consultant Staff | Z5 | ENGG | TC |
| RHD4ENSDZ5APPCCTV210 |  | Review and Approval of Shop Drawings for Security Network for CCTV-Z5-APP | 7d | 2025-12-23 A | 2026-03-10 A | RHD4ENSDZ5SUBCCTV210 | 100% | 2025-12-23 | 2025-12-30 |  |  | Consultant Staff | Z5 | ENGG | CCTV |
| RHD4ENSDZ5APPICT200 |  | Review and Approval of Shop Drawings for Information and Communication Technologies Network for ICT-Z5-APP | 7d | 2025-12-23 A | 2026-03-10 A | RHD4ENSDZ5SUBICT200 | 100% | 2025-12-23 | 2025-12-30 |  |  | Consultant Staff | Z5 | ENGG | ICT |
| RHD4ENSDZ5APPLV160 |  | Review and Approval of Shop Drawings for Low Voltage Network for LV-Z5-APP | 7d | 2025-12-23 A | 2026-03-05 A | RHD4ENSDZ5SUBLV160 | 100% | 2025-12-23 | 2025-12-30 |  |  | Consultant Staff | Z5 | ENGG | LV |
| RHD4ENSDZ5APPSL170 |  | Review and Approval of Shop Drawings for Street Lighting Network for SL-Z5-APP | 7d | 2025-12-23 A | 2026-03-08 A | RHD4ENSDZ5SUBSL170 | 100% | 2025-12-23 | 2025-12-30 |  |  | Consultant Staff | Z5 | ENGG | SL |
| RHD4ENSDZ5APPIRR140 |  | Review and Approval of Shop Drawings for Irrigation Network for IRR-Z5-APP | 7d | 2025-12-28 A | 2026-04-30 A | RHD4ENSDZ5APPPT130, RHD4ENSDZ5SUBIRR140 | 100% | 2025-12-28 | 2026-01-04 |  |  | Consultant Staff | Z5 | ENGG | IRR |
| RHD4ENSDZ5APPST110 |  | Review and Approval of Shop Drawings for Storm Water Network for ST-Z5-APP | 7d | 2026-02-03 A | 2026-04-30 A | RHD4ENSDZ5SUBST110 | 100% | 2025-12-21 | 2025-12-28 |  |  | Consultant Staff | Z5 | ENGG | ST |
| RHD4ENSDZ5APPMV150 |  | Review and Approval of Shop Drawings for Medium Voltage Network for MV-Z5-APP | 6d | 2026-11-17 | 2026-11-23 | RHD4GNPPSD1100, RHD4ENSDZ6SUBRD220, RHD4ENSDZ5SUBRD220, RHD4ENSDZ5APPST110, RHD4ENSDZ5APPSW120, RHD4ENSDZ5APPTC190, RHD4ENSDZ5APPLV160, RHD4ENSDZ5APPSL170, RHD4ENSDZ5APPICT200, RHD4ENSDZ5APPCCTV210, RHD4ENSDZ5SUBMV150 |  |  |  | -188.02d | 0d | Consultant Staff | Z5 | ENGG | MV |

| ID | WBS | Activity | Duration | Start | Finish | Predecessors | Complete | Planned start | Planned finish | Total float | Free float | Resources | RDH4-01-001-Zones-1 | RDH4-01-001-Phases-1 | RDH4-01-001-Networks-1 |
| --- | --- | --- | --- | --- | --- | --- | --- | --- | --- | --- | --- | --- | --- | --- | --- |
|  | 44 | **RHD4-02-002-Shop Drawing Approvals - APP-Z6** |  | 2025-12-04 | 2026-11-23 |  |  |  |  |  |  |  |  |  |  |
| RHD4ENSDZ6APPRD220 |  | Review and Approval of Shop Drawings for Road Works( KERBING AND PAVEMENT ) for RD-Z6-APP | 7d | 2025-12-04 A | 2026-02-09 A | RHD4ENSDZ6SUBRD220 SS | 100% | 2025-12-04 | 2025-12-11 |  |  | Consultant Staff | Z6 | ENGG | RD |
| RHD4ENSDZ6APPTC190 |  | Review and Approval of Shop Drawings for Telecommunications Network for TC-Z6-APP | 7d | 2025-12-11 A | 2026-04-06 A | RHD4ENSDZ6SUBTC190 | 100% | 2025-12-11 | 2025-12-18 |  |  | Consultant Staff | Z6 | ENGG | TC |
| RHD4ENSDZ6APPCCTV210 |  | Review and Approval of Shop Drawings for Security Network for CCTV-Z6-APP | 7d | 2025-12-13 A | 2026-03-10 A | RHD4ENSDZ6SUBCCTV210 | 100% | 2025-12-13 | 2025-12-20 |  |  | Consultant Staff | Z6 | ENGG | CCTV |
| RHD4ENSDZ6APPICT200 |  | Review and Approval of Shop Drawings for Information and Communication Technologies Network for ICT-Z6-APP | 7d | 2025-12-13 A | 2026-03-10 A | RHD4ENSDZ6SUBICT200 | 100% | 2025-12-13 | 2025-12-20 |  |  | Consultant Staff | Z6 | ENGG | ICT |
| RHD4ENSDZ6APPLV160 |  | Review and Approval of Shop Drawings for Low Voltage Network for LV-Z6-APP | 7d | 2025-12-13 A | 2026-03-05 A | RHD4ENSDZ6SUBLV160 | 100% | 2025-12-13 | 2025-12-20 |  |  | Consultant Staff | Z6 | ENGG | LV |
| RHD4ENSDZ6APPSL170 |  | Review and Approval of Shop Drawings for Street Lighting Network for SL-Z6-APP | 7d | 2025-12-13 A | 2026-03-08 A | RHD4ENSDZ6SUBSL170 | 100% | 2025-12-13 | 2025-12-20 |  |  | Consultant Staff | Z6 | ENGG | SL |
| RHD4ENSDZ6APPPT130 |  | Review and Approval of Shop Drawings for Potable Water Network for PT-Z6-APP | 7d | 2025-12-21 A | 2026-08-10 A | RHD4ENSDZ6SUBPT130 | 100% | 2025-12-21 | 2025-12-28 |  |  | Consultant Staff | Z6 | ENGG | PT |
| RHD4ENSDZ6APPEW100 |  | Review and Approval of Shop Drawings for Road Plans and Profile for EW-Z6-APP | 7d | 2025-12-22 A | 2026-02-14 A | RHD4ENSDZ6APPRD220, RHD4ENSDZ6SUBEW100 | 100% | 2025-12-22 | 2025-12-29 |  |  | Consultant Staff | Z6 | ENGG | EW |
| RHD4ENSDZ6APPSW120 |  | Review and Approval of Shop Drawings for Sewage Network for SW-Z6-APP | 7d | 2025-12-22 A | 2026-04-07 A | RHD4ENSDZ6SUBSW120 | 100% | 2025-12-22 | 2025-12-29 |  |  | Consultant Staff | Z6 | ENGG | SW |
| RHD4ENSDZ6APPIRR140 |  | Review and Approval of Shop Drawings for Irrigation Network for IRR-Z6-APP | 7d | 2025-12-28 A | 2026-04-30 A | RHD4ENSDZ6SUBIRR140 | 100% | 2025-12-28 | 2026-01-04 |  |  | Consultant Staff | Z6 | ENGG | IRR |
| RHD4ENSDZ6APPST110 |  | Review and Approval of Shop Drawings for Storm Water Network for ST-Z6-APP | 7d | 2026-02-03 A | 2026-04-30 A | RHD4ENSDZ6SUBST110 | 100% | 2025-12-21 | 2025-12-28 |  |  | Consultant Staff | Z6 | ENGG | ST |
| RHD4ENSDZ6APPMV150 |  | Review and Approval of Shop Drawings for Medium Voltage Network for MV-Z6-APP | 6d | 2026-11-17 | 2026-11-23 | RHD4ENSDZ6APPSW120, RHD4ENSDZ6APPPT130, RHD4ENSDZ6APPST110, RHD4ENSDZ6SUBMV150 |  |  |  | -182.02d | 0d | Consultant Staff | Z6 | ENGG | MV |
|  | 45 | **RHD4-02-002-Shop Drawing Approvals - APP-Z7** |  | 2025-12-15 | 2026-11-23 |  |  |  |  |  |  |  |  |  |  |
| RHD4ENSDZ7APPRD220 |  | Review and Approval of Shop Drawings for Road Works( KERBING AND PAVEMENT ) for RD-Z7-APP | 7d | 2025-12-15 A | 2026-02-09 A | RHD4ENSDZ7SUBRD220 SS | 100% | 2025-12-15 | 2025-12-22 |  |  | Consultant Staff | Z7 | ENGG | RD |
| RHD4ENSDZ7APPPT130 |  | Review and Approval of Shop Drawings for Potable Water Network for PT-Z7-APP | 7d | 2025-12-21 A | 2026-08-10 A | RHD4ENSDZ7SUBPT130 | 100% | 2025-12-21 | 2025-12-28 |  |  | Consultant Staff | Z7 | ENGG | PT |
| RHD4ENSDZ7APPEW100 |  | Review and Approval of Shop Drawings for Road Plans and Profile for EW-Z7-APP | 7d | 2025-12-22 A | 2026-02-14 A | RHD4ENSDZ7SUBEW100 | 100% | 2025-12-22 | 2025-12-29 |  |  | Consultant Staff | Z7 | ENGG | EW |
| RHD4ENSDZ7APPSW120 |  | Review and Approval of Shop Drawings for Sewage Network for SW-Z7-APP | 7d | 2025-12-22 A | 2026-04-07 A | RHD4ENSDZ7SUBSW120 | 100% | 2025-12-22 | 2025-12-29 |  |  | Consultant Staff | Z7 | ENGG | SW |
| RHD4ENSDZ7APPTC190 |  | Review and Approval of Shop Drawings for Telecommunications Network for TC-Z7-APP | 7d | 2025-12-22 A | 2026-04-06 A | RHD4ENSDZ7SUBTC190 | 100% | 2025-12-22 | 2025-12-29 |  |  | Consultant Staff | Z7 | ENGG | TC |
| RHD4ENSDZ7APPCCTV210 |  | Review and Approval of Shop Drawings for Security Network for CCTV-Z7-APP | 7d | 2025-12-23 A | 2026-03-10 A | RHD4ENSDZ7SUBCCTV210 | 100% | 2025-12-23 | 2025-12-30 |  |  | Consultant Staff | Z7 | ENGG | CCTV |
| RHD4ENSDZ7APPICT200 |  | Review and Approval of Shop Drawings for Information and Communication Technologies Network for ICT-Z7-APP | 7d | 2025-12-23 A | 2026-03-10 A | RHD4ENSDZ7SUBICT200 | 100% | 2025-12-23 | 2025-12-30 |  |  | Consultant Staff | Z7 | ENGG | ICT |
| RHD4ENSDZ7APPLV160 |  | Review and Approval of Shop Drawings for Low Voltage Network for LV-Z7-APP | 7d | 2025-12-23 A | 2026-03-05 A | RHD4ENSDZ7SUBLV160 | 100% | 2025-12-23 | 2025-12-30 |  |  | Consultant Staff | Z7 | ENGG | LV |
| RHD4ENSDZ7APPSL170 |  | Review and Approval of Shop Drawings for Street Lighting Network for SL-Z7-APP | 7d | 2025-12-23 A | 2026-03-08 A | RHD4ENSDZ7SUBSL170 | 100% | 2025-12-23 | 2025-12-30 |  |  | Consultant Staff | Z7 | ENGG | SL |
| RHD4ENSDZ7APPIRR140 |  | Review and Approval of Shop Drawings for Irrigation Network for IRR-Z7-APP | 7d | 2025-12-28 A | 2026-04-30 A | RHD4ENSDZ7SUBIRR140 | 100% | 2025-12-28 | 2026-01-04 |  |  | Consultant Staff | Z7 | ENGG | IRR |
| RHD4ENSDZ7APPST110 |  | Review and Approval of Shop Drawings for Storm Water Network for ST-Z7-APP | 7d | 2026-02-03 A | 2026-04-30 A | RHD4ENSDZ7SUBST110 | 100% | 2025-12-21 | 2025-12-28 |  |  | Consultant Staff | Z7 | ENGG | ST |
| RHD4ENSDZ7APPMV150 |  | Review and Approval of Shop Drawings for Medium Voltage Network for MV-Z7-APP | 6d | 2026-11-17 | 2026-11-23 | RHD4GNPPSD1100, RHD4ENSDZ6SUBRD220, RHD4ENSDZ7SUBRD220, RHD4ENSDZ7APPST110, RHD4ENSDZ7APPPT130, RHD4ENSDZ7APPSW120, RHD4ENSDZ7APPTC190, RHD4ENSDZ7APPLV160, RHD4ENSDZ7APPSL170, RHD4ENSDZ7APPICT200, RHD4ENSDZ7APPCCTV210, RHD4ENSDZ7SUBMV150 |  |  |  | -182.02d | 0d | Consultant Staff | Z7 | ENGG | MV |

| ID | WBS | Activity | Duration | Start | Finish | Predecessors | Complete | Planned start | Planned finish | Total float | Free float | Resources | RDH4-01-001-Zones-1 | RDH4-01-001-Phases-1 | RDH4-01-001-Networks-1 |
| --- | --- | --- | --- | --- | --- | --- | --- | --- | --- | --- | --- | --- | --- | --- | --- |
|  | 46 | **RHD4-02-002-Shop Drawing Approvals - APP-Z8** |  | 2025-12-29 | 2026-11-30 |  |  |  |  |  |  |  |  |  |  |
| RHD4ENSDZ8APPPT130 |  | Review and Approval of Shop Drawings for Potable Water Network for PT-Z8-APP | 7d | 2025-12-29 A | 2026-08-10 A | RHD4ENSDZ8SUBPT130 | 100% | 2025-12-29 | 2026-01-05 |  |  | Consultant Staff | Z8 | ENGG | PT |
| RHD4ENSDZ8APPSW120 |  | Review and Approval of Shop Drawings for Sewage Network for SW-Z8-APP | 7d | 2025-12-30 A | 2026-04-07 A | RHD4ENSDZ8SUBSW120 | 100% | 2025-12-30 | 2026-01-06 |  |  | Consultant Staff | Z8 | ENGG | SW |
| RHD4ENSDZ8APPRD220 |  | Review and Approval of Shop Drawings for Road Works( KERBING AND PAVEMENT ) for RD-Z8-APP | 7d | 2025-12-31 A | 2026-02-09 A | RHD4ENSDZ8SUBRD220 | 100% | 2025-12-31 | 2026-01-07 |  |  | Consultant Staff | Z8 | ENGG | RD |
| RHD4ENSDZ8APPIRR140 |  | Review and Approval of Shop Drawings for Irrigation Network for IRR-Z8-APP | 7d | 2026-01-05 A | 2026-04-30 A | RHD4ENSDZ7APPIRR140, RHD4ENSDZ8SUBIRR140 | 100% | 2026-01-05 | 2026-01-12 |  |  | Consultant Staff | Z8 | ENGG | IRR |
| RHD4ENSDZ8APPTC190 |  | Review and Approval of Shop Drawings for Telecommunications Network for TC-Z8-APP | 7d | 2026-01-07 A | 2026-04-06 A | RHD4ENSDZ8SUBTC190 | 100% | 2026-01-07 | 2026-01-14 |  |  | Consultant Staff | Z8 | ENGG | TC |
| RHD4ENSDZ8APPEW100 |  | Review and Approval of Shop Drawings for Road Plans and Profile for EW-Z8-APP | 7d | 2026-01-08 A | 2026-02-14 A | RHD4ENSDZ8APPRD220, RHD4ENSDZ8APPSW120, RHD4ENSDZ8SUBEW100 | 100% | 2026-01-08 | 2026-01-15 |  |  | Consultant Staff | Z8 | ENGG | EW |
| RHD4ENSDZ8APPICT200 |  | Review and Approval of Shop Drawings for Information and Communication Technologies Network for ICT-Z8-APP | 7d | 2026-01-08 A | 2026-03-10 A | RHD4ENSDZ5APPIRR140, RHD4ENSDZ4APPTC190, RHD4ENSDZ8SUBICT200 | 100% | 2026-01-08 | 2026-01-15 |  |  | Consultant Staff | Z8 | ENGG | ICT |
| RHD4ENSDZ8APPLV160 |  | Review and Approval of Shop Drawings for Low Voltage Network for LV-Z8-APP | 7d | 2026-01-08 A | 2026-03-05 A | RHD4ENSDZ6APPIRR140, RHD4ENSDZ4APPIRR140, RHD4ENSDZ8SUBLV160 | 100% | 2026-01-08 | 2026-01-15 |  |  | Consultant Staff | Z8 | ENGG | LV |
| RHD4ENSDZ8APPSL170 |  | Review and Approval of Shop Drawings for Street Lighting Network for SL-Z8-APP | 7d | 2026-01-08 A | 2026-03-08 A | RHD4ENSDZ8SUBSL170 | 100% | 2026-01-08 | 2026-01-15 |  |  | Consultant Staff | Z8 | ENGG | SL |
| RHD4ENSDZ8APPCCTV210 |  | Review and Approval of Shop Drawings for Security Network for CCTV-Z8-APP | 7d | 2026-01-12 A | 2026-03-10 A | RHD4ENSDZ7APPMV150, RHD4ENSDZ6APPMV150, RHD4ENSDZ4APPMV150, RHD4ENSDZ4APPSL170, RHD4ENSDZ4APPLV160, RHD4ENSDZ3APPIRR140, RHD4ENSDZ8SUBCCTV210 | 100% | 2026-01-12 | 2026-01-19 |  |  | Consultant Staff | Z8 | ENGG | CCTV |
| RHD4ENSDZ8APPST110 |  | Review and Approval of Shop Drawings for Storm Water Network for ST-Z8-APP | 7d | 2026-02-03 A | 2026-04-30 A | RHD4ENSDZ8SUBST110 | 100% | 2025-12-29 | 2026-01-05 |  |  | Consultant Staff | Z8 | ENGG | ST |
| RHD4ENSDZ8APPMV150 |  | Review and Approval of Shop Drawings for Medium Voltage Network for MV-Z8-APP | 6d | 2026-11-24 | 2026-11-30 | RHD4ENSDZ8APPPT130, RHD4ENSDZ8APPST110, RHD4ENSDZ5APPMV150, RHD4ENSDZ4APPCCTV210, RHD4ENSDZ4APPICT200, RHD4ENSDZ8SUBMV150 |  |  |  | -188.02d | 0d | Consultant Staff | Z8 | ENGG | MV |
|  | 47 | **RHD4-02-002-Shop Drawing Approvals - APP-Z9** |  | 2025-12-15 | 2026-11-23 |  |  |  |  |  |  |  |  |  |  |
| RHD4ENSDZ9APPRD220 |  | Review and Approval of Shop Drawings for Road Works( KERBING AND PAVEMENT ) for RD-Z9-APP | 7d | 2025-12-15 A | 2026-02-09 A | RHD4ENSDZ9SUBRD220 SS | 100% | 2025-12-15 | 2025-12-22 |  |  | Consultant Staff | Z9 | ENGG | RD |
| RHD4ENSDZ9APPPT130 |  | Review and Approval of Shop Drawings for Potable Water Network for PT-Z9-APP | 7d | 2025-12-21 A | 2026-08-10 A | RHD4ENSDZ9SUBPT130 | 100% | 2025-12-21 | 2025-12-28 |  |  | Consultant Staff | Z9 | ENGG | PT |
| RHD4ENSDZ9APPEW100 |  | Review and Approval of Shop Drawings for Road Plans and Profile for EW-Z9-APP | 7d | 2025-12-22 A | 2026-02-14 A | RHD4ENSDZ9SUBEW100 | 100% | 2025-12-22 | 2025-12-29 |  |  | Consultant Staff | Z9 | ENGG | EW |
| RHD4ENSDZ9APPSW120 |  | Review and Approval of Shop Drawings for Sewage Network for SW-Z9-APP | 7d | 2025-12-22 A | 2026-04-07 A | RHD4ENSDZ9SUBSW120 | 100% | 2025-12-22 | 2025-12-29 |  |  | Consultant Staff | Z9 | ENGG | SW |
| RHD4ENSDZ9APPTC190 |  | Review and Approval of Shop Drawings for Telecommunications Network for TC-Z9-APP | 7d | 2025-12-22 A | 2026-04-06 A | RHD4ENSDZ9SUBTC190 | 100% | 2025-12-22 | 2025-12-29 |  |  | Consultant Staff | Z9 | ENGG | TC |
| RHD4ENSDZ9APPCCTV210 |  | Review and Approval of Shop Drawings for Security Network for CCTV-Z9-APP | 7d | 2025-12-23 A | 2026-03-10 A | RHD4ENSDZ9SUBCCTV210 | 100% | 2025-12-23 | 2025-12-30 |  |  | Consultant Staff | Z9 | ENGG | CCTV |
| RHD4ENSDZ9APPICT200 |  | Review and Approval of Shop Drawings for Information and Communication Technologies Network for ICT-Z9-APP | 7d | 2025-12-23 A | 2026-03-10 A | RHD4ENSDZ9SUBICT200 | 100% | 2025-12-23 | 2025-12-30 |  |  | Consultant Staff | Z9 | ENGG | ICT |
| RHD4ENSDZ9APPLV160 |  | Review and Approval of Shop Drawings for Low Voltage Network for LV-Z9-APP | 7d | 2025-12-23 A | 2026-03-05 A | RHD4ENSDZ9SUBLV160 | 100% | 2025-12-23 | 2025-12-30 |  |  | Consultant Staff | Z9 | ENGG | LV |
| RHD4ENSDZ9APPSL170 |  | Review and Approval of Shop Drawings for Street Lighting Network for SL-Z9-APP | 7d | 2025-12-23 A | 2026-03-08 A | RHD4ENSDZ9SUBSL170 | 100% | 2025-12-23 | 2025-12-30 |  |  | Consultant Staff | Z9 | ENGG | SL |
| RHD4ENSDZ9APPIRR140 |  | Review and Approval of Shop Drawings for Irrigation Network for IRR-Z9-APP | 7d | 2025-12-28 A | 2026-04-30 A | RHD4ENSDZ9SUBIRR140 | 100% | 2025-12-28 | 2026-01-04 |  |  | Consultant Staff | Z9 | ENGG | IRR |
| RHD4ENSDZ9APPST110 |  | Review and Approval of Shop Drawings for Storm Water Network for ST-Z9-APP | 7d | 2026-02-03 A | 2026-04-30 A | RHD4ENSDZ9SUBST110 | 100% | 2025-12-21 | 2025-12-28 |  |  | Consultant Staff | Z9 | ENGG | ST |
| RHD4ENSDZ9APPMV150 |  | Review and Approval of Shop Drawings for Medium Voltage Network for MV-Z9-APP | 6d | 2026-11-17 | 2026-11-23 | RHD4GNPPSD1100, RHD4ENSDZ6SUBRD220, RHD4ENSDZ9SUBRD220, RHD4ENSDZ9APPLV160, RHD4ENSDZ9APPTC190, RHD4ENSDZ9APPSW120, RHD4ENSDZ9APPPT130, RHD4ENSDZ9APPST110, RHD4ENSDZ9SUBMV150 |  |  |  | -182.02d | 0d | Consultant Staff | Z9 | ENGG | MV |

| ID | WBS | Activity | Duration | Start | Finish | Predecessors | Complete | Planned start | Planned finish | Resources | RDH4-01-001-Zones-1 | RDH4-01-001-Phases-1 | RDH4-01-001-Networks-1 |
| --- | --- | --- | --- | --- | --- | --- | --- | --- | --- | --- | --- | --- | --- |
|  | 48 | **RHD4-02-002-Shop Drawing Approvals - APP-Tunne 1 - TUN1** |  | 2025-12-15 | 2026-08-03 |  |  |  |  |  |  |  |  |
| RHD4ENTUN1APPSTC1100 |  | Review and Approval of Shop Drawings for TUNNEL 1 (SECTIONS) -Z5 for STC-TUN1-APP(Completed) | 7d | 2025-12-15 A | 2026-08-03 A | RHD4ENSDTUN1SUB1100 SS | 100% | 2025-12-15 | 2025-12-22 | Consultant Staff | TUN1 | ENGG | TUN1 |
| RHD4ENTUN1APPSTC1200 |  | Review and Approval of Shop Drawings for TUNNEL 1 (BBS) -Z5 for STC-TUN1-APP(Completed) | 7d | 2025-12-15 A | 2026-08-03 A | RHD4ENSDTUN1SUB1200 SS | 100% | 2025-12-15 | 2025-12-22 | Consultant Staff | TUN1 | ENGG | TUN1 |
| RHD4ENTUN1APPSTC1000 |  | Review and Approval of Shop Drawings for TUNNEL 1 (PLANS) -Z5 for STC-TUN1-APP | 7d | 2025-12-28 A | 2026-03-30 A | RHD4ENSDZ9APPICT200, RHD4ENSDTUN1SUB1000 | 100% | 2026-01-08 | 2026-01-15 | Consultant Staff | TUN1 | ENGG | TUN1 |
|  | 50 | **RHD4-02-002-Shop Drawing Approvals - APP-Sewage Lift Station 1 - SWL1** |  | 2025-12-15 | 2026-08-03 |  |  |  |  |  |  |  |  |
| RHD4ENSWL1APPARC1100 |  | Review and Approval of Shop Drawings for Sewage Lift Station 1 - Z3 - Architecture Package for ARC-SWL1-APP(Completed) | 7d | 2025-12-15 A | 2026-08-03 A | RHD4ENSDSWL1SUB2000 SS | 100% | 2025-12-15 | 2025-12-22 | Consultant Staff | SWL1 | ENGG | SWL1 |
| RHD4ENSWL1APPMEC1200 |  | Review and Approval of Shop Drawings for Sewage Lift Station 1 - Z3 - Mechanical Package for MEC-SWL1-APP(Completed) | 7d | 2025-12-15 A | 2026-08-03 A | RHD4ENSDSWL1SUB3000 SS | 100% | 2025-12-15 | 2025-12-22 | Consultant Staff | SWL1 | ENGG | SWL1 |
| RHD4ENSWL1APPSTC1000 |  | Review and Approval of Shop Drawings for Sewage Lift Station 1 - Z3 - Structure Package for STC-SWL1-APP | 7d | 2026-01-15 A | 2026-03-31 A | RHD4ENSDZ9APPMV150, RHD4ENSDZ9APPIRR140, RHD4ENSDZ9APPCCTV210, RHD4ENSDZ9APPSL170, RHD4ENSDZ8APPTC190, RHD4ENSDZ8APPIRR140, RHD4ENSDSWL1SUB1000 | 100% | 2026-01-15 | 2026-01-24 | Consultant Staff | SWL1 | ENGG | SWL1 |
| RHD4ENSWL1APPELE1300 |  | Review and Approval of Shop Drawings for Sewage Lift Station 1 - Z3 - Electrical Package for ELE-SWL1-APP | 3d | 2026-01-26 A | 2026-04-07 A | RHD4ENSWL1APPSTC1000, RHD4ENTUN1APPSTC1000, RHD4ENSDZ8APPMV150, RHD4ENSDZ8APPCCTV210, RHD4ENSDZ8APPICT200, RHD4ENSDZ8APPSL170, RHD4ENSDZ8APPLV160, RHD4ENSDZ3APPMV150, RHD4ENSDZ2APPMV150, RHD4ENSDZ2APPCCTV210, RHD4ENSDZ2APPICT200, RHD4ENSDZ2APPSL170, RHD4ENSDZ2APPLV160, RHD4ENSDZ2APPTC190, RHD4ENSDZ1APPMV150, RHD4ENSDZ1APPEW100, RHD4ENSDZ1APPCCTV210, RHD4ENSDZ1APPICT200, RHD4ENSDZ1APPTC190, RHD4ENSDZ1APPSL170, RHD4ENSDZ1APPLV160, RHD4ENSDSWL1SUB4000 | 100% | 2026-01-26 | 2026-01-28 | Consultant Staff | SWL1 | ENGG | SWL1 |
|  | 52 | **RHD4-02-002-Shop Drawing Approvals - APP-Storm Lift Station 1 - STL1** |  | 2025-12-30 | 2026-08-03 |  |  |  |  |  |  |  |  |
| RHD4ENSTL1APPSTC1000 |  | Review and Approval of Shop Drawings for Storm Lift Station 1 - Z5 - Structure Package for STC-STL1-APP | 7d | 2025-12-30 A | 2026-03-25 A | RHD4ENSDSTL1SUB1000 | 100% | 2025-12-30 | 2026-01-06 | Consultant Staff | STL1 | ENGG | STL1 |
| RHD4ENSTL1APPARC1100 |  | Review and Approval of Shop Drawings for Storm Lift Station 1 - Z5 - Architecture Package for ARC-STL1-APP(Completed) | 7d | 2026-02-14 A | 2026-08-03 A | RHD4ENSDSTL1SUB2000 SS | 100% | 2025-12-15 | 2025-12-22 | Consultant Staff | STL1 | ENGG | ST |
| RHD4ENSTL1APPMEC1200 |  | Review and Approval of Shop Drawings for Storm Lift Station 1 - Z5 - Mechanical Package for MEC-STL1-APP(Completed) | 7d | 2026-03-15 A | 2026-08-03 A | RHD4ENSDSTL1SUB3000 SS | 100% | 2025-12-15 | 2025-12-22 | Consultant Staff | STL1 | ENGG | ST |
| RHD4ENSTL1APPELE1300 |  | Review and Approval of Shop Drawings for Storm Lift Station 1 - Z5 - Electrical Package for ELE-STL1-APP | 3d | 2026-04-05 A | 2026-04-07 A | RHD4ENSTL1APPSTC1000, RHD4ENSDSTL1SUB4000 | 100% | 2026-01-13 | 2026-01-15 | Consultant Staff | STL1 | ENGG | ST |
|  | 54 | **RHD4-02-002-Prequalification and Material - MAR** |  | 2025-12-10 | 2026-12-07 |  |  |  |  |  |  |  |  |
|  | 55 | **RHD4-02-002-Submittals of Material and Prequalifications - SUB** |  | 2025-12-10 | 2026-11-30 |  |  |  |  |  |  |  |  |
|  | 1 | **RHD4-02-002-Submittals of Material and Prequalifications - SUB-Earth works Material - EW** |  | 2026-01-10 | 2026-01-15 |  |  |  |  |  |  |  |  |
| RHD4ENMARSUBEW100 |  | Prepare Material Submittal for Earth work Materials - MAR-EW | 6d | 2026-01-10 A | 2026-01-15 A | RHD4ENSDSTL1SUB4000, RHD4GNPPPMP1100, RHD4GNPPORG1100, RHD4GNPPLOG1100, RHD4GNPPHSE1100 | 100% | 2026-01-13 | 2026-01-19 | Technical Office Engineer [100 h]; Document Control [20 h] |  | ENGG | BF |
|  | 56 | **RHD4-02-002-Submittals of Material and Prequalifications - SUB-Storm Network - ST** |  | 2025-12-10 | 2026-04-20 |  |  |  |  |  |  |  |  |
| RHD4ENMARSUBST100 |  | Prepare Material Submittal for GRP pipes - MAR-ST | 6d | 2025-12-10 A | 2026-02-02 A | RHD4ENMSEW2000, RHD4ENSDZ6SUBRD220, RHD4GNMOB1000, RHD4ENMSRD1000 | 100% | 2025-12-16 | 2025-12-22 | Technical Office Engineer [100 h]; Document Control [20 h] |  | ENGG | ST |
| RHD4ENMARSUBST200 |  | Prepare Material Submittal for UPVC pipes - MAR-ST | 7d | 2025-12-10 A | 2026-01-28 A | RHD4ENMARSUBST100 SS | 100% | 2025-12-16 | 2025-12-23 | Technical Office Engineer [100 h]; Document Control [20 h] |  | ENGG | ST |
| RHD4ENMARSUBST400 |  | Prepare Material Submittal for Catch basin - MAR-ST | 7d | 2025-12-17 A | 2026-03-18 A | RHD4ENMARSUBST200 | 100% | 2025-12-24 | 2025-12-31 | Technical Office Engineer [100 h]; Document Control [20 h] |  | ENGG | ST |
| RHD4ENMARSUBST300 |  | Prepare Material Submittal for HDPE pipes - MAR-ST | 7d | 2025-12-24 A | 2026-02-02 A | RHD4ENMARSUBST400 | 100% | 2026-01-01 | 2026-01-08 | Technical Office Engineer [100 h]; Document Control [20 h] |  | ENGG | ST |
| RHD4ENMARSUBST700 |  | Prepare Material Submittal for Precast Concrete - MAR-ST | 7d | 2026-01-07 A | 2026-03-26 A | RHD4ENMSASPH1000 | 100% | 2026-01-04 | 2026-01-11 | Technical Office Engineer [100 h]; Document Control [20 h] |  | ENGG | ST |
| RHD4ENMARSUBST800 |  | Prepare Material Submittal for Metal Works (Stairs - Manhole Covers) - MAR-ST | 4d | 2026-02-03 A | 2026-02-06 A | RHD4ENMARSUBST700 | 100% | 2026-01-12 | 2026-01-15 | Technical Office Engineer [100 h]; Document Control [20 h] |  | ENGG | ST |
| RHD4ENMARSUBST500 |  | Prepare Material Submittal for Grouted Riprap - MAR-ST | 3d | 2026-02-07 A | 2026-02-09 A | RHD4ENMARSUBST300 | 100% | 2026-01-10 | 2026-01-12 | Technical Office Engineer [100 h]; Document Control [20 h] |  | ENGG | ST |
| RHD4ENMARSUBST600 |  | Prepare Material Submittal for Tensile reinforcement steel - MAR-ST | 6d | 2026-04-14 A | 2026-04-20 A | RHD4ENMARSUBST500 SS | 100% | 2026-01-10 | 2026-01-15 | Technical Office Engineer [100 h]; Document Control [20 h] |  | ENGG | ST |

| ID | WBS | Activity | Duration | Start | Finish | Predecessors | Complete | Planned start | Planned finish | Total float | Free float | Resources | RDH4-01-001-Phases-1 | RDH4-01-001-Networks-1 |
| --- | --- | --- | --- | --- | --- | --- | --- | --- | --- | --- | --- | --- | --- | --- |
|  | 57 | **RHD4-02-002-Submittals of Material and Prequalifications - SUB-Sewage Network - SW** |  | 2025-12-17 | 2026-03-26 |  |  |  |  |  |  |  |  |  |
| RHD4ENMARSUBSW200 |  | Prepare Material Submittal for GRP pipes - MAR-SW | 6d | 2025-12-17 A | 2026-02-02 A | RHD4ENMARSUBST100 | 100% | 2025-12-23 | 2025-12-29 |  |  | Technical Office Engineer [100 h]; Document Control [20 h] | ENGG | SW |
| RHD4ENMARSUBSW100 |  | Prepare Material Submittal for UPVC pipes - MAR-SW | 7d | 2025-12-24 A | 2026-01-28 A | RHD4ENMARSUBSW200, RHD4GNPPBL1100, RHD4GNPPLOG1100 | 100% | 2025-12-30 | 2026-01-06 |  |  | Technical Office Engineer [100 h]; Document Control [20 h] | ENGG | SW |
| RHD4ENMARSUBSW300 |  | Prepare Material Submittal for Valves - MAR-SW | 6d | 2025-12-24 A | 2026-01-17 A | RHD4ENMARSUBSW200 | 100% | 2025-12-30 | 2026-01-05 |  |  | Technical Office Engineer [100 h]; Document Control [20 h] | ENGG | SW |
| RHD4ENMARSUBSW400 |  | Prepare Material Submittal for Precast Concrete - MAR-SW | 6d | 2025-12-31 A | 2026-03-26 A | RHD4ENMARSUBSW300 | 100% | 2026-01-06 | 2026-01-12 |  |  | Technical Office Engineer [100 h]; Document Control [20 h] | ENGG | SW |
| RHD4ENMARSUBSW600 |  | Prepare Material Submittal for HDPE pipes - MAR-SW | 6d | 2026-01-07 A | 2026-02-02 A | RHD4ENMARSUBSW400 | 100% | 2026-01-13 | 2026-01-19 |  |  | Technical Office Engineer [100 h]; Document Control [20 h] | ENGG | SW |
| RHD4ENMARSUBSW500 |  | Prepare Material Submittal for Metal Works (Stairs - Manhole Covers) - MAR-SW | 7d | 2026-01-13 A | 2026-02-09 A | RHD4ENMARSUBSW400 | 100% | 2026-01-13 | 2026-01-20 |  |  | Technical Office Engineer [100 h]; Document Control [20 h] | ENGG | SW |
|  | 58 | **RHD4-02-002-Submittals of Material and Prequalifications - SUB-Potable Water Network - PT** |  | 2025-12-16 | 2026-10-07 |  |  |  |  |  |  |  |  |  |
| RHD4ENMARSUBPT300 |  | Prepare Material Submittal for Fire Hydrants - MAR-PT | 6d | 2025-12-16 A | 2026-01-17 A | RHD4GNMOB1000 | 100% | 2025-12-16 | 2025-12-22 |  |  | Technical Office Engineer [100 h]; Document Control [20 h] | ENGG | PT |
| RHD4ENMARSUBPT400 |  | Prepare Material Submittal for Precast Concrete - MAR-PT | 6d | 2025-12-23 A | 2026-03-26 A | RHD4ENMARSUBPT300 | 100% | 2025-12-23 | 2025-12-29 |  |  | Technical Office Engineer [100 h]; Document Control [20 h] | ENGG | PT |
| RHD4ENMARSUBPT600 |  | Prepare Material Submittal for Metal Works (Chamber's Covers) - MAR-PT(Completed) | 6d | 2025-12-23 A | 2026-08-03 A | RHD4ENMARSUBPT400 SS | 100% | 2025-12-23 | 2025-12-29 |  |  | Technical Office Engineer [99.47 h]; Document Control [20.53 h] | ENGG | PT |
| RHD4ENMARSUBPT100 |  | Prepare Material Submittal for HDPE pipes - MAR-PT | 6d | 2025-12-24 A | 2026-02-02 A | RHD4ENMARSUBST300 SS | 100% | 2026-01-01 | 2026-01-07 |  |  | Technical Office Engineer [100 h]; Document Control [20 h] | ENGG | PT |
| RHD4ENMARSUBPT200 |  | Prepare Material Submittal for Valves - MAR-PT | 6d | 2025-12-31 A | 2026-02-11 A | RHD4ENMARSUBPT100 | 100% | 2026-01-08 | 2026-01-14 |  |  | Technical Office Engineer [100 h]; Document Control [20 h] | ENGG | PT |
| RHD4ENMARSUBPT500 |  | Prepare Material Submittal for Stem and Surface box - MAR-PT | 6d | 2026-10-01 A | 2026-10-07 A | RHD4GNPPMAT1100 SS, RHD4ENMARSUBPT200 SS | 100% |  |  |  |  | Technical Office Engineer [100 h]; Document Control [20 h] | ENGG | PT |
|  | 59 | **RHD4-02-002-Submittals of Material and Prequalifications - SUB-Irrigation Network - IRR** |  | 2025-12-16 | 2026-08-03 |  |  |  |  |  |  |  |  |  |
| RHD4ENMARSUBIRR300 |  | Prepare Material Submittal for Precast Concrete - MAR-IRR | 6d | 2025-12-16 A | 2026-03-26 A | RHD4GNMOB1200 | 100% | 2025-12-16 | 2025-12-22 |  |  | Technical Office Engineer [100 h]; Document Control [20 h] | ENGG | IRR |
| RHD4ENMARSUBIRR500 |  | Prepare Material Submittal for Metal Works (Chamber's Covers) - MAR-IRR(Completed) | 7d | 2025-12-23 A | 2026-08-03 A | RHD4ENMARSUBIRR300 | 100% | 2025-12-23 | 2025-12-30 |  |  | Technical Office Engineer [99.47 h]; Document Control [20.53 h] | ENGG | IRR |
| RHD4ENMARSUBIRR100 |  | Prepare Material Submittal for HDPE pipes - MAR-IRR | 7d | 2025-12-24 A | 2026-02-02 A | RHD4ENMARSUBPT100 SS | 100% | 2026-01-01 | 2026-01-08 |  |  | Technical Office Engineer [100 h]; Document Control [20 h] | ENGG | IRR |
| RHD4ENMARSUBIRR200 |  | Prepare Material Submittal for Valves - MAR-IRR | 7d | 2025-12-31 A | 2026-02-11 A | RHD4ENMARSUBIRR100 | 100% | 2026-01-10 | 2026-01-17 |  |  | Technical Office Engineer [100 h]; Document Control [20 h] | ENGG | IRR |
| RHD4ENMARSUBIRR400 |  | Prepare Material Submittal for Stem and Surface box - MAR-IRR | 6d | 2026-02-07 A | 2026-02-12 A | RHD4GNPPMAT1100, RHD4ENMARSUBIRR200 SS | 100% |  |  |  |  | Technical Office Engineer [100 h]; Document Control [20 h] | ENGG | IRR |
|  | 60 | **RHD4-02-002-Submittals of Material and Prequalifications - SUB-Medium Voltage - MV** |  | 2025-12-16 | 2026-11-23 |  |  |  |  |  |  |  |  |  |
| RHD4ENMARSUBMV100 |  | Prepare Material Submittal for UPVC Pipes for Duct Banks - MAR-MV | 7d | 2025-12-16 A | 2026-01-28 A | RHD4GNMOB1000 | 100% | 2025-12-16 | 2025-12-23 |  |  | Technical Office Engineer [100 h]; Document Control [20 h] | ENGG | MV |
| RHD4ENMARSUBMV600 |  | Prepare Material Submittal for Unit Substations - MAR-MV | 6d | 2026-11-10 | 2026-11-16 | RHD4GNPPMAT1100, RHD4ENMARSUBMV100 |  |  |  | -192d | 0d | Technical Office Engineer [100 h]; Document Control [20 h] | ENGG | MV |
| RHD4ENMARSUBMV700 |  | Prepare Material Submittal for Ring Main Unit (RMU) - MAR-MV | 6d | 2026-11-10 | 2026-11-16 | RHD4GNPPMAT1100, RHD4ENMARSUBMV600 SS |  |  |  | -192d | 0d | Technical Office Engineer [100 h]; Document Control [20 h] | ENGG | MV |
| RHD4ENMARSUBMV200 |  | Prepare Material Submittal for Medium Voltage Cable 3Cx500 mm2 - MAR-MV | 6d | 2026-11-17 | 2026-11-23 | RHD4GNPPMAT1100, RHD4ENMARSUBMV700 |  |  |  | -192d | 0d | Technical Office Engineer [100 h]; Document Control [20 h] | ENGG | MV |
| RHD4ENMARSUBMV300 |  | Prepare Material Submittal for Medium Voltage Cable 3Cx50 mm2 - MAR-MV | 6d | 2026-11-17 | 2026-11-23 | RHD4GNPPMAT1100, RHD4ENMARSUBMV200 SS |  |  |  | -192d | 0d | Technical Office Engineer [100 h]; Document Control [20 h] | ENGG | MV |
| RHD4ENMARSUBMV400 |  | Prepare Material Submittal for Straight Joints 3Cx50 mm2 - MAR-MV | 6d | 2026-11-17 | 2026-11-23 | RHD4GNPPMAT1100, RHD4ENMARSUBMV500 SS |  |  |  | -192d | 0d | Technical Office Engineer [100 h]; Document Control [20 h] | ENGG | MV |
| RHD4ENMARSUBMV500 |  | Prepare Material Submittal for Normally Open Points (Outdoor type) - MAR-MV | 6d | 2026-11-17 | 2026-11-23 | RHD4GNPPMAT1100, RHD4ENMARSUBMV300 SS |  |  |  | -192d | 0d | Technical Office Engineer [100 h]; Document Control [20 h] | ENGG | MV |

| ID | WBS | Activity | Duration | Start | Finish | Predecessors | Complete | Planned start | Planned finish | Total float | Free float | Resources | RDH4-01-001-Phases-1 | RDH4-01-001-Networks-1 |
| --- | --- | --- | --- | --- | --- | --- | --- | --- | --- | --- | --- | --- | --- | --- |
|  | 61 | **RHD4-02-002-Submittals of Material and Prequalifications - SUB-Low Voltage - LV** |  | 2025-12-16 | 2026-11-16 |  |  |  |  |  |  |  |  |  |
| RHD4ENMARSUBLV100 |  | Prepare Material Submittal for UPVC Pipes for Duct Banks - MAR-LV | 7d | 2025-12-16 A | 2026-01-28 A | RHD4ENMARSUBMV100 SS | 100% | 2025-12-16 | 2025-12-23 |  |  | Technical Office Engineer [100 h]; Document Control [20 h] | ENGG | LV |
| RHD4ENMARSUBLV200 |  | Prepare Material Submittal for Low voltage Cables - MAR-LV | 6d | 2025-12-23 A | 2026-04-08 A | RHD4ENMARSUBIRR300 | 100% | 2025-12-23 | 2025-12-29 |  |  | Technical Office Engineer [100 h]; Document Control [20 h] | ENGG | LV |
| RHD4ENMARSUBLV300 |  | Prepare Material Submittal for Distribution Pillars - MAR-LV | 6d | 2026-11-10 | 2026-11-16 | RHD4GNPPMAT1100, RHD4ENMARSUBLV200 |  |  |  | -186d | 0d | Technical Office Engineer [100 h]; Document Control [20 h] | ENGG | LV |
| RHD4ENMARSUBLV400 |  | Prepare Material Submittal for KWH Meter mounting Frame - MAR-LV | 6d | 2026-11-10 | 2026-11-16 | RHD4GNPPMAT1100, RHD4ENMARSUBLV300 SS |  |  |  | -186d | 0d | Technical Office Engineer [100 h]; Document Control [20 h] | ENGG | LV |
| RHD4ENMARSUBLV500 |  | Prepare Material Submittal for Low Voltage Drawpit - MAR-LV | 6d | 2026-11-10 | 2026-11-16 | RHD4GNPPMAT1100, RHD4ENMARSUBLV100 SS |  |  |  | -176d | 0d | Technical Office Engineer [100 h]; Document Control [20 h] | ENGG | LV |
| RHD4ENMARSUBLV600 |  | Prepare Material Submittal for Earthing for Pillars and Panels - MAR-LV | 6d | 2026-11-10 | 2026-11-16 | RHD4GNPPMAT1100, RHD4ENMARSUBLV400 SS |  |  |  | -182.02d | 0d | Technical Office Engineer [100 h]; Document Control [20 h] | ENGG | LV |
|  | 62 | **RHD4-02-002-Submittals of Material and Prequalifications - SUB-Street Lighting Network -SL** |  | 2025-12-24 | 2026-05-02 |  |  |  |  |  |  |  |  |  |
| RHD4ENMARSUBSL100 |  | Prepare Material Submittal for UPVC Pipes for Duct Banks - MAR-SL | 5d | 2025-12-24 A | 2026-01-28 A | RHD4ENMARSUBLV100 | 100% | 2025-12-24 | 2025-12-29 |  |  | Technical Office Engineer [210.6 h]; Document Control [42.12 h] | ENGG | SL |
| RHD4ENMARSUBSL300 |  | Prepare Material Submittal for Lighting Poles - MAR-SL | 6d | 2025-12-30 A | 2026-05-02 A | RHD4ENMARSUBLV200 | 100% | 2025-12-30 | 2026-01-05 |  |  | Technical Office Engineer [210.6 h]; Document Control [42.12 h] | ENGG | SL |
| RHD4ENMARSUBSL200 |  | Prepare Material Submittal for Street Lighting Cables - MAR-SL | 6d | 2026-01-06 A | 2026-04-07 A | RHD4ENMARSUBSL300 | 100% | 2026-01-06 | 2026-01-12 |  |  | Technical Office Engineer [210.6 h]; Document Control [42.12 h] | ENGG | SL |
| RHD4ENMARSUBSL400 |  | Prepare Material Submittal for Street Lighting Luminaire - MAR-SL | 6d | 2026-01-06 A | 2026-04-08 A | RHD4ENMARSUBSL200 SS | 100% | 2026-01-06 | 2026-01-12 |  |  | Technical Office Engineer [210.6 h]; Document Control [42.12 h] | ENGG | SL |
| RHD4ENMARSUBSL500 |  | Prepare Material Submittal for Street Lighting Drawpit - MAR-SL | 5d | 2026-03-23 A | 2026-04-29 A | RHD4GNPPMAT1100, RHD4ENMARSUBSL100 SS | 100% | 2026-03-23 | 2026-03-28 |  |  | Technical Office Engineer [210.6 h]; Document Control [42.12 h] | ENGG | SL |
|  | 63 | **RHD4-02-002-Submittals of Material and Prequalifications - SUB-Landscape Network - LS** |  |  |  |  |  |  |  |  |  |  |  |  |
|  | 64 | **RHD4-02-002-Submittals of Material and Prequalifications - SUB-Telecommunications Network - TC** |  | 2026-01-06 | 2026-05-31 |  |  |  |  |  |  |  |  |  |
| RHD4ENMARSUBTC100 |  | Prepare Material Submittal for HDPE Ducts - MAR-TC | 6d | 2026-01-06 A | 2026-03-18 A | RHD4ENMARSUBSL300 | 100% | 2026-01-06 | 2026-01-12 |  |  | Technical Office Engineer [210.6 h]; Document Control [42.12 h] | ENGG | TC |
| RHD4ENMARSUBTC200 |  | Prepare Material Submittal for HDPE Road Crossings Ducts - MAR-TC | 6d | 2026-01-06 A | 2026-03-18 A | RHD4ENMARSUBTC100 SS | 100% | 2026-01-06 | 2026-01-12 |  |  | Technical Office Engineer [210.6 h]; Document Control [42.12 h] | ENGG | TC |
| RHD4ENMARSUBTC300 |  | Prepare Material Submittal for Telecommunications Manhole - MAR-TC | 6d | 2026-01-13 A | 2026-05-31 A | RHD4ENMARSUBTC200 | 100% | 2026-01-13 | 2026-01-19 |  |  | Technical Office Engineer [210.6 h]; Document Control [42.12 h] | ENGG | TC |
|  | 65 | **RHD4-02-002-Submittals of Material and Prequalifications - SUB-Information and Communication Technol** |  | 2026-01-04 | 2026-05-25 |  |  |  |  |  |  |  |  |  |
| RHD4ENMARSUBICT300 |  | Prepare Material Submittal for Telecommunications Manhole - MAR-ICT | 4d | 2026-01-04 A | 2026-05-25 A | RHD4GNMOB1100 | 100% | 2026-01-04 | 2026-01-07 |  |  | Technical Office Engineer [210.6 h]; Document Control [42.12 h] | ENGG | ICT |
| RHD4ENMARSUBICT100 |  | Prepare Material Submittal for HDPE Ducts - MAR-ICT | 6d | 2026-01-13 A | 2026-03-18 A | RHD4ENMARSUBTC100 | 100% | 2026-01-13 | 2026-01-19 |  |  | Technical Office Engineer [210.6 h]; Document Control [42.12 h] | ENGG | ICT |
| RHD4ENMARSUBICT200 |  | Prepare Material Submittal for HDPE Road Crossings Ducts - MAR-ICT | 6d | 2026-01-13 A | 2026-03-18 A | RHD4ENMARSUBICT100 SS | 100% | 2026-01-13 | 2026-01-19 |  |  | Technical Office Engineer [210.6 h]; Document Control [42.12 h] | ENGG | ICT |
|  | 66 | **RHD4-02-002-Submittals of Material and Prequalifications - SUB-Security Network - CCTV** |  | 2026-10-01 | 2026-11-30 |  |  |  |  |  |  |  |  |  |
| RHD4ENMARSUBCCTV100 |  | Prepare Material Submittal for CCTV Network Poles - MAR-CCTV | 6d | 2026-10-01 A | 2026-10-07 A | RHD4GNPPMAT1100, RHD4ENMARSUBTC300, RHD4ENMARSUBICT300 | 100% |  |  |  |  | Technical Office Engineer [421.28 h]; Document Control [84.32 h] | ENGG | CCTV |
| RHD4ENMARSUBCCTV300 |  | Prepare Material Submittal for CCTV Panels and Panel's Components - MAR-CCTV | 6d | 2026-11-10 | 2026-11-16 | RHD4GNPPMAT1100 |  |  |  | -194.02d | 0d | Technical Office Engineer [421.28 h]; Document Control [84.32 h] | ENGG | CCTV |
| RHD4ENMARSUBCCTV400 |  | Prepare Material Submittal for CCTV Fiber Optic Cables - MAR-CCTV | 6d | 2026-11-17 | 2026-11-23 | RHD4GNPPMAT1100, RHD4ENMARSUBCCTV300 |  |  |  | -194.02d | 0d | Technical Office Engineer [421.28 h]; Document Control [84.32 h] | ENGG | CCTV |
| RHD4ENMARSUBCCTV200 |  | Prepare Material Submittal for CCTV Network Cameras - MAR-CCTV | 6d | 2026-11-24 | 2026-11-30 | RHD4GNPPMAT1100, RHD4ENMARSUBCCTV400 |  |  |  | -194.02d | 0d | Technical Office Engineer [421.28 h]; Document Control [84.32 h] | ENGG | CCTV |
| RHD4ENMARSUBCCTV500 |  | Prepare Material Submittal for CCTV Control Room Components - MAR-CCTV | 6d | 2026-11-24 | 2026-11-30 | RHD4GNPPMAT1100, RHD4ENMARSUBCCTV200 SS |  |  |  | -98d | 0d | Technical Office Engineer [421.28 h]; Document Control [84.32 h] | ENGG | CCTV |

| ID | WBS | Activity | Duration | Start | Finish | Predecessors | Complete | Planned start | Planned finish | Total float | Free float | Resources | RDH4-01-001-Phases-1 | RDH4-01-001-Networks-1 |
| --- | --- | --- | --- | --- | --- | --- | --- | --- | --- | --- | --- | --- | --- | --- |
|  | 67 | **RHD4-02-002-Submittals of Material and Prequalifications - SUB-Road Works - RD** |  | 2025-12-16 | 2026-06-17 |  |  |  |  |  |  |  |  |  |
| RHD4ENMARSUBRD100 |  | Prepare Material Submittal for Aggregate Base Courses - MAR-RD | 6d | 2025-12-16 A | 2026-06-17 A | RHD4GNMOB1000 | 100% | 2025-12-16 | 2025-12-22 |  |  | Technical Office Engineer [210.6 h]; Document Control [42.12 h] | ENGG | RD |
| RHD4ENMARSUBRD500 |  | Prepare Material Submittal for Wheel Stopper - MAR-RD | 6d | 2025-12-16 A | 2026-03-18 A | RHD4GNMOB1000 | 100% | 2025-12-16 | 2025-12-22 |  |  | Technical Office Engineer [210.6 h]; Document Control [42.12 h] | ENGG | RD |
| RHD4ENMARSUBRD600 |  | Prepare Material Submittal for Pavement Marking - MAR-RD | 6d | 2025-12-16 A | 2026-03-18 A | RHD4ENMARSUBRD500 SS | 100% | 2025-12-16 | 2025-12-22 |  |  | Technical Office Engineer [210.6 h]; Document Control [42.12 h] | ENGG | RD |
| RHD4ENMARSUBRD200 |  | Prepare Material Submittal for Bituminous Asphalt Layers - MAR-RD | 6d | 2025-12-23 A | 2026-06-17 A | RHD4ENMARSUBRD100 | 100% | 2025-12-23 | 2025-12-29 |  |  | Technical Office Engineer [210.6 h]; Document Control [42.12 h] | ENGG | RD |
| RHD4ENMARSUBRD300 |  | Prepare Material Submittal for Precast Concrete Curbstone - MAR-RD | 6d | 2025-12-24 A | 2026-02-12 A | RHD4ENMARSUBRD200 | 100% | 2025-12-30 | 2026-01-05 |  |  | Technical Office Engineer [210.6 h]; Document Control [42.12 h] | ENGG | RD |
| RHD4ENMARSUBRD700 |  | Prepare Material Submittal for Traffic Signage - MAR-RD | 6d | 2026-01-01 A | 2026-03-19 A | RHD4ENMARSUBRD300 | 100% | 2026-01-06 | 2026-01-12 |  |  | Technical Office Engineer [210.6 h]; Document Control [42.12 h] | ENGG | RD |
| RHD4ENMARSUBRD400 |  | Prepare Material Submittal for Interlock Precast Concrete Unit Paving - MAR-RD | 6d | 2026-01-08 A | 2026-02-12 A | RHD4ENMARSUBRD700 | 100% | 2026-01-13 | 2026-01-19 |  |  | Technical Office Engineer [210.6 h]; Document Control [42.12 h] | ENGG | RD |
|  | 68 | **RHD4-02-002-Submittals of Material and Prequalifications - SUB-Lift Stations - LFS** |  | 2025-12-13 | 2026-11-23 |  |  |  |  |  |  |  |  |  |
| RHD4ENMARSUBLFS2800 |  | Prepare Material Submittal for Programmable Logic Controllers and Instrumentation for Process Systems - MAR-LFS(Complete | 7d | 2025-12-13 A | 2026-08-03 A | RHD4GNPERMITAT1000 | 100% | 2025-12-13 | 2025-12-20 |  |  | Technical Office Engineer [99.47 h]; Document Control [20.53 h] | ENGG | MAT |
| RHD4ENMARSUBLFS2900 |  | Prepare Material Submittal for Fire Alarm System - MAR-LFS | 6d | 2025-12-13 A | 2026-05-03 A | RHD4ENMARSUBLFS2800 SS | 100% | 2025-12-13 | 2025-12-18 |  |  | Technical Office Engineer [100 h]; Document Control [20 h] | ENGG | MAT |
| RHD4ENMARSUBLFS800 |  | Prepare Material Submittal for Ductile Iron Pipes & Fittings - MAR-LFS(Completed) | 7d | 2025-12-15 A | 2026-08-03 A | RHD4ENSDZ6SUBRD220 | 100% | 2025-12-15 | 2025-12-22 |  |  | Technical Office Engineer [99.47 h]; Document Control [20.53 h] | ENGG | MAT |
| RHD4ENMARSUBLFS1800 |  | Prepare Material Submittal for UPVC Pipes for Sanitary Drain - MAR-LFS | 5d | 2025-12-16 A | 2026-03-05 A | RHD4GNMOB1000 | 100% | 2025-12-16 | 2025-12-21 |  |  | Technical Office Engineer [100 h]; Document Control [20 h] | ENGG | MAT |
| RHD4ENMARSUBLFS900 |  | Prepare Material Submittal for Sewage Lift Station Valves - MAR-LFS | 7d | 2025-12-17 A | 2026-02-11 A | RHD4ENMARSUBLFS800 SS | 100% | 2025-12-15 | 2025-12-22 |  |  | Technical Office Engineer [100 h]; Document Control [20 h] | ENGG | MAT |
| RHD4ENMARSUBLFS200 |  | Prepare Material Submittal for Roof Waterproofing System - MAR-LFS | 5d | 2025-12-22 A | 2026-05-03 A | RHD4ENMARSUBLFS1800 | 100% | 2025-12-22 | 2025-12-27 |  |  | Technical Office Engineer [100 h]; Document Control [20 h] | ENGG | MAT |
| RHD4ENMARSUBLFS1300 |  | Prepare Material Submittal for Surge Tank - MAR-LFS | 7d | 2025-12-28 A | 2026-03-24 A | RHD4ENMARSUBLFS200 | 100% | 2025-12-28 | 2026-01-04 |  |  | Technical Office Engineer [100 h]; Document Control [20 h] | ENGG | MAT |
| RHD4ENMARSUBLFS2000 |  | Prepare Material Submittal for Motor Control Center (MCC) - MAR-LFS | 4d | 2025-12-28 A | 2026-03-26 A | RHD4ENMARSUBLFS200 | 100% | 2025-12-28 | 2025-12-31 |  |  | Technical Office Engineer [100 h]; Document Control [20 h] | ENGG | MAT |
| RHD4ENMARSUBLFS300 |  | Prepare Material Submittal for Bituminous Sheet Waterproofing - MAR-LFS | 7d | 2025-12-28 A | 2026-05-03 A | RHD4ENMARSUBLFS200 | 100% | 2025-12-28 | 2026-01-04 |  |  | Technical Office Engineer [100 h]; Document Control [20 h] | ENGG | MAT |
| RHD4ENMARSUBLFS1200 |  | Prepare Material Submittal for Submersible pumps - MAR-LFS | 7d | 2025-12-31 A | 2026-03-15 A | RHD4ENMARSUBLFS1100 SS | 100% | 2026-01-13 | 2026-01-20 |  |  | Technical Office Engineer [100 h]; Document Control [20 h] | ENGG | MAT |
| RHD4ENMARSUBLFS2300 |  | Prepare Material Submittal for Standby Diesel Generator - MAR-LFS | 7d | 2026-01-01 A | 2026-04-13 A | RHD4ENMARSUBLFS2000 | 100% | 2026-01-01 | 2026-01-08 |  |  | Technical Office Engineer [100 h]; Document Control [20 h] | ENGG | MAT |
| RHD4ENMARSUBLFS2400 |  | Prepare Material Submittal for Low Voltage Cables - MAR-LFS | 6d | 2026-01-01 A | 2026-03-26 A | RHD4ENMARSUBLFS2300 SS | 100% | 2026-01-01 | 2026-01-07 |  |  | Technical Office Engineer [100 h]; Document Control [20 h] | ENGG | MAT |
| RHD4ENMARSUBLFS3000 |  | Prepare Material Submittal for Fence and Gates for Lift Stations - MAR-LFS | 6d | 2026-01-01 A | 2026-04-28 A | RHD4ENMARSUBLFS2000 | 100% | 2026-01-01 | 2026-01-07 |  |  | Technical Office Engineer [100 h]; Document Control [20 h] | ENGG | MAT |
| RHD4ENMARSUBLFS1400 |  | Prepare Material Submittal for Basket screen - MAR-LFS | 7d | 2026-01-05 A | 2026-03-12 A | RHD4ENMARSUBLFS1300 | 100% | 2026-01-05 | 2026-01-12 |  |  | Technical Office Engineer [100 h]; Document Control [20 h] | ENGG | MAT |
| RHD4ENMARSUBLFS1500 |  | Prepare Material Submittal for Isolation Penstock - MAR-LFS | 6d | 2026-01-05 A | 2026-04-09 A | RHD4ENMARSUBLFS1400 SS | 100% | 2026-01-05 | 2026-01-11 |  |  | Technical Office Engineer [100 h]; Document Control [20 h] | ENGG | MAT |
| RHD4ENMARSUBLFS1600 |  | Prepare Material Submittal for Odours scrubbing system - MAR-LFS | 7d | 2026-01-05 A | 2026-03-01 A | RHD4ENMARSUBLFS1500 SS | 100% | 2026-01-05 | 2026-01-12 |  |  | Technical Office Engineer [100 h]; Document Control [20 h] | ENGG | MAT |
| RHD4ENMARSUBLFS1700 |  | Prepare Material Submittal for JIB Crane - MAR-LFS | 7d | 2026-01-05 A | 2026-03-16 A | RHD4ENMARSUBLFS1600 SS | 100% | 2026-01-05 | 2026-01-12 |  |  | Technical Office Engineer [100 h]; Document Control [20 h] | ENGG | MAT |
| RHD4ENMARSUBLFS400 |  | Prepare Material Submittal for Fluid-Applied Waterproofing - MAR-LFS | 6d | 2026-01-05 A | 2026-04-25 A | RHD4ENMARSUBLFS300 | 100% | 2026-01-05 | 2026-01-11 |  |  | Technical Office Engineer [100 h]; Document Control [20 h] | ENGG | MAT |
| RHD4ENMARSUBLFS2100 |  | Prepare Material Submittal for lighting and power panel boards - MAR-LFS | 4d | 2026-01-08 A | 2026-03-26 A | RHD4ENMARSUBLFS2400 | 100% | 2026-01-08 | 2026-01-12 |  |  | Technical Office Engineer [100 h]; Document Control [20 h] | ENGG | MAT |
| RHD4ENMARSUBLFS700 |  | Prepare Material Submittal for Epoxy Coating - MAR-LFS | 6d | 2026-01-08 A | 2026-04-20 A | RHD4ENMARSUBLFS3000 | 100% | 2026-01-08 | 2026-01-14 |  |  | Technical Office Engineer [100 h]; Document Control [20 h] | ENGG | MAT |
| RHD4ENMARSUBLFS1100 |  | Prepare Material Submittal for Magnetic type flowmeter - MAR-LFS(Completed) | 7d | 2026-01-13 A | 2026-08-03 A | RHD4ENMARSUBRD700 | 100% | 2026-01-13 | 2026-01-20 |  |  | Technical Office Engineer [99.47 h]; Document Control [20.53 h] | ENGG | MAT |
| RHD4ENMARSUBLFS2500 |  | Prepare Material Submittal for Lighting Fixtures - MAR-LFS | 6d | 2026-01-13 A | 2026-04-08 A | RHD4ENMARSUBLFS2100 | 100% | 2026-01-13 | 2026-01-19 |  |  | Technical Office Engineer [100 h]; Document Control [20 h] | ENGG | MAT |
| RHD4ENMARSUBLFS1000 |  | Prepare Material Submittal for Screening Container - MAR-LFS | 7d | 2026-08-13 A | 2026-09-18 A | RHD4GNPPMAT1100, RHD4ENMARSUBLFS900 | 100% | 2025-12-23 | 2025-12-30 |  |  | Technical Office Engineer [100 h]; Document Control [20 h] | ENGG | MAT |
| RHD4ENMARSUBLFS2600 |  | Prepare Material Submittal for Wiring Devices - MAR-LFS | 6d | 2026-08-15 A | 2026-08-20 A | RHD4GNPPMAT1100, RHD4ENMARSUBLFS2900 SS | 100% |  |  |  |  | Technical Office Engineer [100 h]; Document Control [20 h] | ENGG | MAT |
| RHD4ENMARSUBLFS100 |  | Prepare Material Submittal for Metal Ladder and checkered Plate - MAR-LFS | 6d | 2026-11-10 | 2026-11-16 | RHD4GNPPMAT1100, RHD4ENMARSUBLFS400 |  |  |  | -182.02d | 0d | Technical Office Engineer [100 h]; Document Control [20 h] | ENGG | MAT |
| RHD4ENMARSUBLFS1900 |  | Prepare Material Submittal for wall mounted Split/AC - MAR-LFS | 6d | 2026-11-10 | 2026-11-16 | RHD4GNPPMAT1100, RHD4ENMARSUBLFS1700 SS |  |  |  | -186d | 0d | Technical Office Engineer [100 h]; Document Control [20 h] | ENGG | MAT |
| RHD4ENMARSUBLFS2700 |  | Prepare Material Submittal for Enclosed Switches and Circuit Breakers - MAR-LFS | 6d | 2026-11-10 | 2026-11-16 | RHD4GNPPMAT1100, RHD4ENMARSUBLFS2600 SS |  |  |  | -192d | 0d | Technical Office Engineer [100 h]; Document Control [20 h] | ENGG | MAT |
| RHD4ENMARSUBLFS500 |  | Prepare Material Submittal for Metal Doors and Access Doors and Frames - MAR-LFS | 6d | 2026-11-10 | 2026-11-16 | RHD4GNPPMAT1100 |  |  |  | -192d | 0d | Technical Office Engineer [100 h]; Document Control [20 h] | ENGG | MAT |
| RHD4ENMARSUBLFS2200 |  | Prepare Material Submittal for Earthing for Lift Stations - MAR-LFS | 6d | 2026-11-17 | 2026-11-23 | RHD4GNPPMAT1100, RHD4ENMARSUBLFS2700 |  |  |  | -192d | 0d | Technical Office Engineer [100 h]; Document Control [20 h] | ENGG | MAT |
| RHD4ENMARSUBLFS600 |  | Prepare Material Submittal for Painting - MAR-LFS | 6d | 2026-11-17 | 2026-11-23 | RHD4GNPPMAT1100, RHD4ENMARSUBLFS500 |  |  |  | -192d | 0d | Technical Office Engineer [100 h]; Document Control [20 h] | ENGG | MAT |

| ID | WBS | Activity | Duration | Start | Finish | Predecessors | Complete | Planned start | Planned finish | Total float | Free float | Resources | RDH4-01-001-Phases-1 | RDH4-01-001-Networks-1 |
| --- | --- | --- | --- | --- | --- | --- | --- | --- | --- | --- | --- | --- | --- | --- |
|  | 2 | **RHD4-02-002-Submittals of Material and Prequalifications - SUB-Tunnels - TUN** |  | 2026-01-15 | 2026-05-17 |  |  |  |  |  |  |  |  |  |
| RHD4ENMARSUBTU100 |  | Prepare Material Submittal for Concrete - MAR-TUN | 6d | 2026-01-15 A | 2026-05-17 A | RHD4ENMARSUBLFS700 | 100% | 2026-01-15 | 2026-01-21 |  |  | Technical Office Engineer [210.6 h]; Document Control [42.12 h] | ENGG | TUN |
|  | 69 | **RHD4-02-002-Approval of Material and Prequalifications - APP** |  | 2025-12-13 | 2026-12-07 |  |  |  |  |  |  |  |  |  |
|  | 1 | **RHD4-02-002-Approval of Material and Prequalifications - APP-Earth works Material - EW** |  | 2025-12-17 | 2026-02-21 |  |  |  |  |  |  |  |  |  |
| RHD4ENMARAPPEW100 |  | Approval of Material Submittal for Earth work Materials - MAR-EW | 7d | 2025-12-17 A | 2026-02-21 A | RHD4ENMARSUBEW100 | 100% | 2026-01-20 | 2026-01-27 |  |  | Consultant Staff | ENGG | BF |
|  | 70 | **RHD4-02-002-Approval of Material and Prequalifications - APP-Storm Network - ST** |  | 2025-12-17 | 2026-11-16 |  |  |  |  |  |  |  |  |  |
| RHD4ENMARAPPST100 |  | Approval of Material Submittal for GRP pipes - MAR-ST | 7d | 2025-12-17 A | 2026-02-05 A | RHD4ENSDZ6APPCCTV210, RHD4ENSDZ6APPSL170, RHD4ENSDZ6APPLV160, RHD4ENSDZ6APPICT200, RHD4ENMSSL2010, RHD4ENSDZ6APPTC190, RHD4ENMSLV2010, RHD4ENMARSUBST100 | 100% | 2025-12-23 | 2025-12-30 |  |  | Consultant Staff | ENGG | ST |
| RHD4ENMARAPPST200 |  | Approval of Material Submittal for UPVC pipes - MAR-ST | 7d | 2025-12-17 A | 2026-01-31 A | RHD4ENMARSUBST200 | 100% | 2025-12-24 | 2025-12-31 |  |  | Consultant Staff | ENGG | ST |
| RHD4ENMARAPPST400 |  | Approval of Material Submittal for Catch basin - MAR-ST | 7d | 2025-12-24 A | 2026-03-28 A | RHD4ENMARSUBST400 | 100% | 2026-01-01 | 2026-01-08 |  |  | Consultant Staff | ENGG | ST |
| RHD4ENMARAPPST300 |  | Approval of Material Submittal for HDPE pipes - MAR-ST | 7d | 2025-12-31 A | 2026-02-09 A | RHD4ENMARSUBST300 | 100% | 2026-01-10 | 2026-01-17 |  |  | Consultant Staff | ENGG | ST |
| RHD4ENMARAPPST700 |  | Approval of Material Submittal for Precast Concrete - MAR-ST | 7d | 2026-01-14 A | 2026-03-29 A | RHD4ENMARSUBST700 | 100% | 2026-01-12 | 2026-01-19 |  |  | Consultant Staff | ENGG | ST |
| RHD4ENMARAPPST600 |  | Approval of Material Submittal for Tensile reinforcement steel - MAR-ST | 7d | 2026-04-21 A | 2026-04-27 A | RHD4ENMARSUBST600 | 100% | 2026-01-17 | 2026-01-24 |  |  | Consultant Staff | ENGG | ST |
| RHD4ENMARAPPST800 |  | Approval of Material Submittal for Metal Works (Stairs - Manhole Covers) - MAR-ST | 7d | 2026-08-18 A | 2026-09-01 A | RHD4ENMARSUBST800 | 100% | 2026-01-17 | 2026-01-24 |  |  | Consultant Staff | ENGG | ST |
| RHD4ENMARAPPST500 |  | Approval of Material Submittal for Grouted Riprap - MAR-ST | 6d | 2026-11-10 | 2026-11-16 | RHD4ENMARSUBST500 |  |  |  | -170.02d | 0d | Consultant Staff | ENGG | ST |
|  | 72 | **RHD4-02-002-Approval of Material and Prequalifications - APP-Potable Water Network - PT** |  | 2025-12-23 | 2026-11-16 |  |  |  |  |  |  |  |  |  |
| RHD4ENMARAPPPT300 |  | Approval of Material Submittal for Fire Hydrants - MAR-PT | 2d | 2025-12-23 A | 2026-01-19 A | RHD4ENMARSUBPT300 | 100% | 2025-12-23 | 2025-12-24 |  |  | Consultant Staff | ENGG | PT |
| RHD4ENMARAPPPT400 |  | Approval of Material Submittal for Precast Concrete - MAR-PT | 6d | 2025-12-30 A | 2026-03-28 A | RHD4ENMARSUBPT400 | 100% | 2025-12-30 | 2026-01-05 |  |  | Consultant Staff | ENGG | PT |
| RHD4ENMARAPPPT100 |  | Approval of Material Submittal for HDPE pipes - MAR-PT | 7d | 2025-12-31 A | 2026-02-05 A | RHD4ENMARSUBPT100 | 100% | 2026-01-08 | 2026-01-15 |  |  | Consultant Staff | ENGG | PT |
| RHD4ENMARAPPPT200 |  | Approval of Material Submittal for Valves - MAR-PT | 7d | 2026-01-07 A | 2026-02-18 A | RHD4ENMARSUBPT200 | 100% | 2026-01-15 | 2026-01-22 |  |  | Consultant Staff | ENGG | PT |
| RHD4ENMARAPPPT500 |  | Approval of Material Submittal for Stem and Surface box - MAR-PT | 6d | 2026-10-08 A | 2026-10-14 A | RHD4ENMARSUBPT500 | 100% |  |  |  |  | Consultant Staff | ENGG | PT |
| RHD4ENMARAPPPT600 |  | Approval of Material Submittal for Metal Works (Chamber's Covers) - MAR-PT | 6d | 2026-11-10 | 2026-11-16 | RHD4GNPPMAT1100, RHD4ENMARSUBPT400 SS, RHD4ENMARSUBPT600 |  |  |  | -175.02d | 0d | Consultant Staff | ENGG | PT |
|  | 73 | **RHD4-02-002-Approval of Material and Prequalifications - APP-Irrigation Network - IRR** |  | 2025-12-23 | 2026-11-16 |  |  |  |  |  |  |  |  |  |
| RHD4ENMARAPPIRR300 |  | Approval of Material Submittal for Precast Concrete - MAR-IRR | 6d | 2025-12-23 A | 2026-03-28 A | RHD4ENMARSUBIRR300 | 100% | 2025-12-23 | 2025-12-29 |  |  | Consultant Staff | ENGG | IRR |
| RHD4ENMARAPPIRR100 |  | Approval of Material Submittal for HDPE pipes - MAR-IRR | 7d | 2025-12-31 A | 2026-02-05 A | RHD4ENMARSUBIRR100 | 100% | 2026-01-10 | 2026-01-17 |  |  | Consultant Staff | ENGG | IRR |
| RHD4ENMARAPPIRR200 |  | Approval of Material Submittal for Valves - MAR-IRR | 7d | 2026-01-07 A | 2026-02-18 A | RHD4ENMARSUBIRR200 | 100% | 2026-01-18 | 2026-01-25 |  |  | Consultant Staff | ENGG | IRR |
| RHD4ENMARAPPIRR400 |  | Approval of Material Submittal for Stem and Surface box - MAR-IRR | 6d | 2026-02-12 A | 2026-02-17 A | RHD4ENMARSUBIRR400 | 100% | 2026-02-12 | 2026-02-18 |  |  | Consultant Staff | ENGG | IRR |
| RHD4ENMARAPPIRR500 |  | Approval of Material Submittal for Metal Works (Chamber's Covers) - MAR-IRR | 6d | 2026-11-10 | 2026-11-16 | RHD4GNPPMAT1100, RHD4ENMARSUBIRR300, RHD4ENMARSUBIRR500 |  |  |  | -175.02d | 0d | Consultant Staff | ENGG | IRR |

| ID | WBS | Activity | Duration | Start | Finish | Predecessors | Complete | Planned start | Planned finish | Total float | Free float | Resources | RDH4-01-001-Phases-1 | RDH4-01-001-Networks-1 |
| --- | --- | --- | --- | --- | --- | --- | --- | --- | --- | --- | --- | --- | --- | --- |
|  | 74 | **RHD4-02-002-Approval of Material and Prequalifications - APP-Medium Voltage - MV** |  | 2025-12-24 | 2026-11-30 |  |  |  |  |  |  |  |  |  |
| RHD4ENMARAPPMV100 |  | Approval of Material Submittal for UPVC Pipes for Duct Banks - MAR-MV | 6d | 2025-12-24 A | 2026-02-04 A | RHD4ENMARSUBMV100 | 100% | 2025-12-24 | 2025-12-30 |  |  | Consultant Staff | ENGG | MV |
| RHD4ENMARAPPMV600 |  | Approval of Material Submittal for Unit Substations - MAR-MV | 6d | 2026-11-17 | 2026-11-23 | RHD4ENMARSUBMV600 |  |  |  | -85d | 0d | Consultant Staff | ENGG | MV |
| RHD4ENMARAPPMV700 |  | Approval of Material Submittal for Ring Main Unit (RMU) - MAR-MV | 6d | 2026-11-17 | 2026-11-23 | RHD4ENMARSUBMV700 |  |  |  | -85d | 0d | Consultant Staff | ENGG | MV |
| RHD4ENMARAPPMV200 |  | Approval of Material Submittal for Medium Voltage Cable 3Cx500 mm2 - MAR-MV | 6d | 2026-11-24 | 2026-11-30 | RHD4ENMARSUBMV200 |  |  |  | -192d | 0d | Consultant Staff | ENGG | MV |
| RHD4ENMARAPPMV300 |  | Approval of Material Submittal for Medium Voltage Cable 3Cx50 mm2 - MAR-MV | 6d | 2026-11-24 | 2026-11-30 | RHD4ENMARSUBMV300 |  |  |  | -192d | 0d | Consultant Staff | ENGG | MV |
| RHD4ENMARAPPMV400 |  | Approval of Material Submittal for Straight Joints 3Cx50 mm2 - MAR-MV | 6d | 2026-11-24 | 2026-11-30 | RHD4ENMARSUBMV400 |  |  |  | -192d | 0d | Consultant Staff | ENGG | MV |
| RHD4ENMARAPPMV500 |  | Approval of Material Submittal for Normally Open Points (Outdoor type) - MAR-MV | 6d | 2026-11-24 | 2026-11-30 | RHD4ENMARSUBMV500 |  |  |  | -192d | 0d | Consultant Staff | ENGG | MV |
|  | 75 | **RHD4-02-002-Approval of Material and Prequalifications - APP-Low Voltage - LV** |  | 2025-12-24 | 2026-11-23 |  |  |  |  |  |  |  |  |  |
| RHD4ENMARAPPLV100 |  | Approval of Material Submittal for UPVC Pipes for Duct Banks - MAR-LV | 7d | 2025-12-24 A | 2026-01-31 A | RHD4ENMARSUBLV100 | 100% | 2025-12-24 | 2025-12-31 |  |  | Consultant Staff | ENGG | LV |
| RHD4ENMARAPPLV200 |  | Approval of Material Submittal for Low voltage Cables - MAR-LV | 6d | 2025-12-30 A | 2026-04-15 A | RHD4ENMARSUBLV200 | 100% | 2025-12-30 | 2026-01-05 |  |  | Consultant Staff | ENGG | LV |
| RHD4ENMARAPPLV300 |  | Approval of Material Submittal for Distribution Pillars - MAR-LV | 6d | 2026-11-17 | 2026-11-23 | RHD4ENMARSUBLV300 |  |  |  | -186d | 0d | Consultant Staff | ENGG | LV |
| RHD4ENMARAPPLV400 |  | Approval of Material Submittal for KWH Meter mounting Frame - MAR-LV | 6d | 2026-11-17 | 2026-11-23 | RHD4ENMARSUBLV400 |  |  |  | -186d | 0d | Consultant Staff | ENGG | LV |
| RHD4ENMARAPPLV500 |  | Approval of Material Submittal for Low Voltage Drawpit - MAR-LV | 6d | 2026-11-17 | 2026-11-23 | RHD4ENMARSUBLV500 |  |  |  | -176d | 0d | Consultant Staff | ENGG | LV |
| RHD4ENMARAPPLV600 |  | Approval of Material Submittal for Earthing for Pillars and Panels - MAR-LV | 6d | 2026-11-17 | 2026-11-23 | RHD4ENMARSUBLV600 |  |  |  | -182.02d | 0d | Consultant Staff | ENGG | LV |
|  | 76 | **RHD4-02-002-Approval of Material and Prequalifications - APP-Street Lighting Network -SL** |  | 2025-12-30 | 2026-05-05 |  |  |  |  |  |  |  |  |  |
| RHD4ENMARAPPSL100 |  | Approval of Material Submittal for UPVC Pipes for Duct Banks - MAR-SL | 6d | 2025-12-30 A | 2026-02-04 A | RHD4ENMARSUBSL100 | 100% | 2025-12-30 | 2026-01-05 |  |  | Consultant Staff | ENGG | SL |
| RHD4ENMARAPPSL300 |  | Approval of Material Submittal for Lighting Poles - MAR-SL | 3d | 2026-01-06 A | 2026-05-05 A | RHD4ENMARSUBSL300 | 100% | 2026-01-06 | 2026-01-08 |  |  | Consultant Staff | ENGG | SL |
| RHD4ENMARAPPSL200 |  | Approval of Material Submittal for Street Lighting Cables - MAR-SL | 6d | 2026-01-13 A | 2026-04-15 A | RHD4ENMARSUBSL200 | 100% | 2026-01-13 | 2026-01-19 |  |  | Consultant Staff | ENGG | SL |
| RHD4ENMARAPPSL400 |  | Approval of Material Submittal for Street Lighting Luminaire - MAR-SL | 6d | 2026-01-13 A | 2026-04-15 A | RHD4ENMARSUBSL400 | 100% | 2026-01-13 | 2026-01-19 |  |  | Consultant Staff | ENGG | SL |
| RHD4ENMARAPPSL500 |  | Approval of Material Submittal for Street Lighting Drawpit - MAR-SL | 2d | 2026-04-29 A | 2026-04-30 A | RHD4ENMARSUBSL500 | 100% |  |  |  |  | Consultant Staff | ENGG | SL |
|  | 77 | **RHD4-02-002-Approval of Material and Prequalifications - APP-Landscape Network - LS** |  |  |  |  |  |  |  |  |  |  |  |  |
|  | 78 | **RHD4-02-002-Approval of Material and Prequalifications - APP-Telecommunications Network - TC** |  | 2026-01-13 | 2026-06-04 |  |  |  |  |  |  |  |  |  |
| RHD4ENMARAPPTC100 |  | Approval of Material Submittal for HDPE Ducts - MAR-TC | 4d | 2026-01-13 A | 2026-03-26 A | RHD4ENMARSUBTC100 | 100% | 2026-01-13 | 2026-01-17 |  |  | Consultant Staff | ENGG | TC |
| RHD4ENMARAPPTC200 |  | Approval of Material Submittal for HDPE Road Crossings Ducts - MAR-TC | 4d | 2026-01-13 A | 2026-03-26 A | RHD4ENMARSUBTC200 | 100% | 2026-01-13 | 2026-01-17 |  |  | Consultant Staff | ENGG | TC |
| RHD4ENMARAPPTC300 |  | Approval of Material Submittal for Telecommunications Manhole - MAR-TC | 6d | 2026-01-20 A | 2026-06-04 A | RHD4ENMARSUBTC300 | 100% | 2026-01-20 | 2026-01-26 |  |  | Consultant Staff | ENGG | TC |

| ID | WBS | Activity | Duration | Start | Finish | Predecessors | Complete | Planned start | Planned finish | Total float | Free float | Resources | RDH4-01-001-Phases-1 | RDH4-01-001-Networks-1 |
| --- | --- | --- | --- | --- | --- | --- | --- | --- | --- | --- | --- | --- | --- | --- |
|  | 79 | **RHD4-02-002-Approval of Material and Prequalifications - APP-Information and Communication Technolog** |  | 2026-01-08 | 2026-06-04 |  |  |  |  |  |  |  |  |  |
| RHD4ENMARAPPICT300 |  | Approval of Material Submittal for Telecommunications Manhole - MAR-ICT | 6d | 2026-01-08 A | 2026-06-04 A | RHD4ENMARSUBICT300 | 100% | 2026-01-08 | 2026-01-14 |  |  | Consultant Staff | ENGG | ICT |
| RHD4ENMARAPPICT100 |  | Approval of Material Submittal for HDPE Ducts - MAR-ICT | 4d | 2026-01-20 A | 2026-03-26 A | RHD4ENMARSUBICT100 | 100% | 2026-01-20 | 2026-01-24 |  |  | Consultant Staff | ENGG | ICT |
| RHD4ENMARAPPICT200 |  | Approval of Material Submittal for HDPE Road Crossings Ducts - MAR-ICT | 4d | 2026-01-20 A | 2026-03-26 A | RHD4ENMARSUBICT200 | 100% | 2026-01-20 | 2026-01-24 |  |  | Consultant Staff | ENGG | ICT |
|  | 80 | **RHD4-02-002-Approval of Material and Prequalifications - APP-Security Network - CCTV** |  | 2026-11-10 | 2026-12-07 |  |  |  |  |  |  |  |  |  |
| RHD4ENMARAPPCCTV100 |  | Approval of Material Submittal for CCTV Network Poles - MAR-CCTV | 6d | 2026-11-10 | 2026-11-16 | RHD4ENMARSUBCCTV100 |  |  |  | -194.02d | 0d | Consultant Staff | ENGG | CCTV |
| RHD4ENMARAPPCCTV300 |  | Approval of Material Submittal for CCTV Panels and Panel's Components - MAR-CCTV | 6d | 2026-11-17 | 2026-11-23 | RHD4ENMARSUBCCTV300 |  |  |  | -194.02d | 0d | Consultant Staff | ENGG | CCTV |
| RHD4ENMARAPPCCTV400 |  | Approval of Material Submittal for CCTV Fiber Optic Cables - MAR-CCTV | 6d | 2026-11-24 | 2026-11-30 | RHD4ENMARSUBCCTV400 |  |  |  | -194.02d | 0d | Consultant Staff | ENGG | CCTV |
| RHD4ENMARAPPCCTV200 |  | Approval of Material Submittal for CCTV Network Cameras - MAR-CCTV | 6d | 2026-12-01 | 2026-12-07 | RHD4ENMARSUBCCTV200 |  |  |  | -194.02d | 0d | Consultant Staff | ENGG | CCTV |
| RHD4ENMARAPPCCTV500 |  | Approval of Material Submittal for CCTV Control Room Components - MAR-CCTV | 6d | 2026-12-01 | 2026-12-07 | RHD4ENMARSUBCCTV500 |  |  |  | -98d | 0d | Consultant Staff | ENGG | CCTV |
|  | 81 | **RHD4-02-002-Approval of Material and Prequalifications - APP-Road Works - RD** |  | 2025-12-23 | 2026-11-16 |  |  |  |  |  |  |  |  |  |
| RHD4ENMARAPPRD100 |  | Approval of Material Submittal for Aggregate Base Courses - MAR-RD | 6d | 2025-12-23 A | 2026-05-24 A | RHD4ENMARSUBRD100 | 100% | 2025-12-23 | 2025-12-29 |  |  | Consultant Staff | ENGG | RD |
| RHD4ENMARAPPRD600 |  | Approval of Material Submittal for Pavement Marking - MAR-RD | 6d | 2025-12-23 A | 2026-03-28 A | RHD4ENMARSUBRD600 | 100% | 2025-12-23 | 2025-12-29 |  |  | Consultant Staff | ENGG | RD |
| RHD4ENMARAPPRD200 |  | Approval of Material Submittal for Bituminous Asphalt Layers - MAR-RD | 6d | 2025-12-30 A | 2026-05-24 A | RHD4ENMARSUBRD200 | 100% | 2025-12-30 | 2026-01-05 |  |  | Consultant Staff | ENGG | RD |
| RHD4ENMARAPPRD300 |  | Approval of Material Submittal for Precast Concrete Curbstone - MAR-RD | 6d | 2026-01-01 A | 2026-02-19 A | RHD4ENMARSUBRD300 | 100% | 2026-01-06 | 2026-01-12 |  |  | Consultant Staff | ENGG | RD |
| RHD4ENMARAPPRD700 |  | Approval of Material Submittal for Traffic Signage - MAR-RD | 6d | 2026-01-08 A | 2026-03-28 A | RHD4ENMARSUBRD700 | 100% | 2026-01-13 | 2026-01-19 |  |  | Consultant Staff | ENGG | RD |
| RHD4ENMARAPPRD400 |  | Approval of Material Submittal for Interlock Precast Concrete Unit Paving - MAR-RD | 7d | 2026-01-15 A | 2026-02-16 A | RHD4ENMARSUBRD400 | 100% | 2026-01-20 | 2026-01-27 |  |  | Consultant Staff | ENGG | RD |
| RHD4ENMARAPPRD500 |  | Approval of Material Submittal for Wheel Stopper - MAR-RD | 6d | 2026-11-10 | 2026-11-16 | RHD4ENMARSUBRD500 |  |  |  | -182.02d | 6d | Consultant Staff | ENGG | RD |
|  | 82 | **RHD4-02-002-Approval of Material and Prequalifications - APP-Lift Stations - LFS** |  | 2025-12-13 | 2026-11-30 |  |  |  |  |  |  |  |  |  |
| RHD4ENMARAPPLFS2800 |  | Approval of Material Submittal for Programmable Logic Controllers and Instrumentation for Process Systems - MAR-LFS(Comp | 6d | 2025-12-13 A | 2026-08-03 A | RHD4ENMARSUBLFS2800 SS | 100% | 2025-12-13 | 2025-12-18 |  |  | Consultant Staff | ENGG | MAT |
| RHD4ENMARAPPLFS2900 |  | Approval of Material Submittal for Fire Alarm System - MAR-LFS | 3d | 2025-12-20 A | 2026-05-06 A | RHD4ENMARSUBLFS2900 | 100% | 2025-12-20 | 2025-12-22 |  |  | Consultant Staff | ENGG | MAT |
| RHD4ENMARAPPLFS1800 |  | Approval of Material Submittal for UPVC Pipes for Sanitary Drain - MAR-LFS | 7d | 2025-12-22 A | 2026-03-08 A | RHD4ENMARSUBLFS1800 | 100% | 2025-12-22 | 2025-12-29 |  |  | Consultant Staff | ENGG | MAT |
| RHD4ENMARAPPLFS900 |  | Approval of Material Submittal for Sewage Lift Station Valves - MAR-LFS | 6d | 2025-12-24 A | 2026-02-17 A | RHD4ENMARSUBLFS900 | 100% | 2025-12-23 | 2025-12-29 |  |  | Consultant Staff | ENGG | MAT |
| RHD4ENMARAPPLFS200 |  | Approval of Material Submittal for Roof Waterproofing System - MAR-LFS | 3d | 2025-12-28 A | 2026-05-06 A | RHD4ENMARSUBLFS200 | 100% | 2025-12-28 | 2025-12-30 |  |  | Consultant Staff | ENGG | MAT |
| RHD4ENMARAPPLFS2000 |  | Approval of Material Submittal for Motor Control Center (MCC) - MAR-LFS | 2d | 2026-01-01 A | 2026-03-29 A | RHD4ENMARSUBLFS2000 | 100% | 2026-01-01 | 2026-01-03 |  |  | Consultant Staff | ENGG | MAT |
| RHD4ENMARAPPLFS1600 |  | Approval of Material Submittal for Odours scrubbing system - MAR-LFS | 6d | 2026-01-03 A | 2026-01-08 A | RHD4ENMARSUBLFS1600 | 100% | 2026-01-13 | 2026-01-19 |  |  | Consultant Staff | ENGG | MAT |
| RHD4ENMARAPPLFS1300 |  | Approval of Material Submittal for Surge Tank - MAR-LFS | 6d | 2026-01-05 A | 2026-04-01 A | RHD4ENMARSUBLFS1300 | 100% | 2026-01-05 | 2026-01-11 |  |  | Consultant Staff | ENGG | MAT |
| RHD4ENMARAPPLFS300 |  | Approval of Material Submittal for Bituminous Sheet Waterproofing - MAR-LFS | 3d | 2026-01-05 A | 2026-05-06 A | RHD4ENMARAPPLFS2000, RHD4ENMARSUBLFS300 | 100% | 2026-01-05 | 2026-01-07 |  |  | Consultant Staff | ENGG | MAT |
| RHD4ENMARAPPLFS1200 |  | Approval of Material Submittal for Submersible pumps - MAR-LFS | 6d | 2026-01-07 A | 2026-03-18 A | RHD4ENMARSUBLFS1200 | 100% | 2026-01-21 | 2026-01-27 |  |  | Consultant Staff | ENGG | MAT |
| RHD4ENMARAPPLFS2400 |  | Approval of Material Submittal for Low Voltage Cables - MAR-LFS | 3d | 2026-01-08 A | 2026-03-30 A | RHD4ENMARSUBLFS2400 | 100% | 2026-01-08 | 2026-01-11 |  |  | Consultant Staff | ENGG | MAT |
| RHD4ENMARAPPLFS3000 |  | Approval of Material Submittal for Fences and Gates - MAR-LFS | 2d | 2026-01-08 A | 2026-04-30 A | RHD4ENMARSUBLFS3000 | 100% | 2026-01-08 | 2026-01-10 |  |  | Consultant Staff | ENGG | MAT |
| RHD4ENMARAPPLFS2300 |  | Approval of Material Submittal for Standby Diesel Generator - MAR-LFS | 6d | 2026-01-10 A | 2026-04-20 A | RHD4ENMARSUBLFS2300 | 100% | 2026-01-10 | 2026-01-15 |  |  | Consultant Staff | ENGG | MAT |
| RHD4ENMARAPPLFS1500 |  | Approval of Material Submittal for Isolation Penstock - MAR-LFS | 6d | 2026-01-12 A | 2026-04-16 A | RHD4ENMARSUBLFS1500 | 100% | 2026-01-12 | 2026-01-18 |  |  | Consultant Staff | ENGG | MAT |
| RHD4ENMARAPPLFS1400 |  | Approval of Material Submittal for Basket screen - MAR-LFS | 7d | 2026-01-13 A | 2026-03-15 A | RHD4ENMARSUBLFS1400 | 100% | 2026-01-13 | 2026-01-20 |  |  | Consultant Staff | ENGG | MAT |
| RHD4ENMARAPPLFS1700 |  | Approval of Material Submittal for JIB Crane - MAR-LFS | 7d | 2026-01-13 A | 2026-03-18 A | RHD4ENMARSUBLFS1700 | 100% | 2026-01-13 | 2026-01-20 |  |  | Consultant Staff | ENGG | MAT |
| RHD4ENMARAPPLFS2100 |  | Approval of Material Submittal for lighting and power panel boards - MAR-LFS | 2d | 2026-01-13 A | 2026-03-29 A | RHD4ENMARSUBLFS2100 | 100% | 2026-01-13 | 2026-01-14 |  |  | Consultant Staff | ENGG | MAT |
| RHD4ENMARAPPLFS700 |  | Approval of Material Submittal for Epoxy Coating - MAR-LFS | 2d | 2026-01-15 A | 2026-04-22 A | RHD4ENMARSUBLFS700 | 100% | 2026-01-15 | 2026-01-17 |  |  | Consultant Staff | ENGG | MAT |
| RHD4ENMARAPPLFS400 |  | Approval of Material Submittal for Fluid-Applied Waterproofing - MAR-LFS | 3d | 2026-01-17 A | 2026-04-28 A | RHD4ENMARAPPLFS2300, RHD4ENMARSUBLFS400 | 100% | 2026-01-17 | 2026-01-19 |  |  | Consultant Staff | ENGG | MAT |
| RHD4ENMARAPPLFS2500 |  | Approval of Material Submittal for Lighting Fixtures - MAR-LFS | 6d | 2026-01-20 A | 2026-04-14 A | RHD4ENMARSUBLFS2500 | 100% | 2026-01-20 | 2026-01-26 |  |  | Consultant Staff | ENGG | MAT |
| RHD4ENMARAPPLFS800 |  | Approval of Material Submittal for Ductile Iron Pipes & Fittings - MAR-LFS | 6d | 2026-08-04 A | 2026-08-10 A | RHD4GNPPMAT1100, RHD4ENSDZ6SUBRD220, RHD4ENMARSUBLFS800 | 100% |  |  |  |  | Consultant Staff | ENGG | MAT |
| RHD4ENMARAPPLFS1100 |  | Approval of Material Submittal for Magnetic type flowmeter - MAR-LFS | 6d | 2026-09-19 A | 2026-09-26 A | RHD4GNPPMAT1100, RHD4ENMARSUBLFS1000, RHD4ENMARSUBLFS1100 | 100% |  |  |  |  | Consultant Staff | ENGG | MAT |
| RHD4ENMARAPPLFS1000 |  | Approval of Material Submittal for Screening Container - MAR-LFS | 6d | 2026-10-01 A | 2026-10-07 A | RHD4ENMARAPPLFS2400, RHD4ENMARSUBLFS1000 | 100% |  |  |  |  | Consultant Staff | ENGG | MAT |
| RHD4ENMARAPPLFS2600 |  | Approval of Material Submittal for Wiring Devices - MAR-LFS | 6d | 2026-11-10 | 2026-11-16 | RHD4ENMARSUBLFS2600 |  |  |  | -180d | 0d | Consultant Staff | ENGG | MAT |
| RHD4ENMARAPPLFS2800_R |  | Approval of Material Submittal for Programmable Logic Controllers and Instrumentation for Process Systems - MAR-LFS(Rema | 6d | 2026-11-10 | 2026-11-16 | RHD4ENMARAPPLFS2800, RHD4GNPPMAT1100, RHD4ENMARSUBLFS2500, RHD4ENMARSUBLFS2800 |  |  |  | -70d | 0d | Consultant Staff | ENGG | MAT |
| RHD4ENMARAPPLFS100 |  | Approval of Material Submittal for Metal Ladder and checkered Plate - MAR-LFS | 6d | 2026-11-17 | 2026-11-23 | RHD4ENMARSUBLFS100 |  |  |  | -182.02d | 0d | Consultant Staff | ENGG | MAT |
| RHD4ENMARAPPLFS1900 |  | Approval of Material Submittal for wall mounted Split/AC - MAR-LFS | 6d | 2026-11-17 | 2026-11-23 | RHD4ENMARSUBLFS1900 |  |  |  | -186d | 0d | Consultant Staff | ENGG | MAT |
| RHD4ENMARAPPLFS2700 |  | Approval of Material Submittal for Enclosed Switches and Circuit Breakers - MAR-LFS | 6d | 2026-11-17 | 2026-11-23 | RHD4ENMARSUBLFS2700 |  |  |  | -192d | 0d | Consultant Staff | ENGG | MAT |
| RHD4ENMARAPPLFS500 |  | Approval of Material Submittal for Metal Doors and Access Doors and Frames - MAR-LFS | 6d | 2026-11-17 | 2026-11-23 | RHD4ENMARSUBLFS500 |  |  |  | -186d | 0d | Consultant Staff | ENGG | MAT |
| RHD4ENMARAPPLFS2200 |  | Approval of Material Submittal for Earthing for Lift Stations - MAR-LFS | 6d | 2026-11-24 | 2026-11-30 | RHD4ENMARSUBLFS2200 |  |  |  | -192d | 0d | Consultant Staff | ENGG | MAT |
| RHD4ENMARAPPLFS600 |  | Approval of Material Submittal for Painting - MAR-LFS | 6d | 2026-11-24 | 2026-11-30 | RHD4ENMARSUBLFS600 |  |  |  | -192d | 0d | Consultant Staff | ENGG | MAT |

| ID | WBS | Activity | Duration | Start | Finish | Predecessors | Complete | Planned start | Planned finish | Total float | Free float | Resources | RDH4-01-001-Phases-1 | RDH4-01-001-Networks-1 |
| --- | --- | --- | --- | --- | --- | --- | --- | --- | --- | --- | --- | --- | --- | --- |
|  | 71 | **RHD4-02-002-Approval of Material and Prequalifications - APP-Sewage Network - SW** |  | 2025-12-24 | 2026-03-29 |  |  |  |  |  |  |  |  |  |
| RHD4ENMARAPPSW200 |  | Approval of Material Submittal for GRP pipes - MAR-SW | 7d | 2025-12-24 A | 2026-02-04 A | RHD4ENMARSUBSW200 | 100% | 2025-12-30 | 2026-01-06 |  |  | Consultant Staff | ENGG | SW |
| RHD4ENMARAPPSW100 |  | Approval of Material Submittal for UPVC pipes - MAR-SW | 7d | 2025-12-31 A | 2026-01-31 A | RHD4ENMARSUBSW100 | 100% | 2026-01-07 | 2026-01-14 |  |  | Consultant Staff | ENGG | SW |
| RHD4ENMARAPPSW300 |  | Approval of Material Submittal for Valves - MAR-SW | 7d | 2025-12-31 A | 2026-01-19 A | RHD4ENMARSUBSW300 | 100% | 2026-01-06 | 2026-01-13 |  |  | Consultant Staff | ENGG | SW |
| RHD4ENMARAPPSW400 |  | Approval of Material Submittal for Precast Concrete - MAR-SW | 6d | 2026-01-07 A | 2026-03-29 A | RHD4ENMARSUBSW400 | 100% | 2026-01-13 | 2026-01-19 |  |  | Consultant Staff | ENGG | SW |
| RHD4ENMARAPPSW600 |  | Approval of Material Submittal for HDPE pipes - MAR-SW | 7d | 2026-01-14 A | 2026-02-05 A | RHD4ENMARSUBSW600 | 100% | 2026-01-20 | 2026-01-27 |  |  | Consultant Staff | ENGG | SW |
| RHD4ENMARAPPSW500 |  | Approval of Material Submittal for Metal Works (Stairs - Manhole Covers) - MAR-SW | 2d | 2026-01-21 A | 2026-02-11 A | RHD4ENMARSUBSW500 | 100% | 2026-01-21 | 2026-01-22 |  |  | Consultant Staff | ENGG | SW |
|  | 2 | **RHD4-02-002-Approval of Material and Prequalifications - APP-Tunnels - TUN** |  | 2026-01-22 | 2026-05-24 |  |  |  |  |  |  |  |  |  |
| RHD4ENMARAPPTU100 |  | Approval of Material Submittal for Concrete - MAR-TU | 6d | 2026-01-22 A | 2026-05-24 A | RHD4ENMARSUBTU100 | 100% | 2026-01-22 | 2026-01-28 |  |  | Consultant Staff | ENGG | TUN |
|  | 97 | **RHD4-02-002-Procurement - PR** |  | 2025-12-31 | 2027-04-28 |  |  |  |  |  |  |  |  |  |
|  | 127 | **RHD4-02-002-Long Lead Items -LOL** |  | 2026-01-20 | 2027-04-28 |  |  |  |  |  |  |  |  |  |
|  | 128 | **RHD4-02-002-Long Lead Items - LOL-Material Purchase Order - PO** |  | 2026-01-20 | 2026-12-23 |  |  |  |  |  |  |  |  |  |
|  | 104 | **RHD4-02-002-LOL-Material Purchase Order - PO-Medium Voltage - MV** |  | 2026-11-24 | 2026-12-09 |  |  |  |  |  |  |  |  |  |
| RHD4PRLOLPOMV1500 |  | Material Purchase Order for Unit Substations - LOL-MV | 14d | 2026-11-24 | 2026-12-09 | RHD4ENMARAPPMV600 |  |  |  | -85d | 0d | Procurement Engineer [165.6 h] | PROC | MV |
| RHD4PRLOLPOMV1600 |  | Material Purchase Order for Ring Main Unit (RMU) - LOL-MV | 14d | 2026-11-24 | 2026-12-09 | RHD4ENMARAPPMV700 |  |  |  | -85d | 0d | Procurement Engineer [165.6 h] | PROC | MV |
|  | 129 | **RHD4-02-002-LOL-Material Purchase Order - PO-Security Network - CCTV** |  | 2026-12-08 | 2026-12-23 |  |  |  |  |  |  |  |  |  |
| RHD4PRLOLPOCCTV1000 |  | Material Purchase Order for CCTV Control Room Components - LOL-CCTV | 14d | 2026-12-08 | 2026-12-23 | RHD4ENMARAPPCCTV500 |  |  |  | -98d | 0d | Procurement Engineer [331.2 h] | PROC | CCTV |
|  | 130 | **RHD4-02-002-LOL-Material Purchase Order - PO-Lift Stations - LFS** |  | 2026-01-20 | 2026-12-02 |  |  |  |  |  |  |  |  |  |
| RHD4PRLOLPOLFS1400 |  | Material Purchase Order for Odours scrubbing system - LOL-LFS | 4d | 2026-01-20 A | 2026-08-08 A | RHD4ENMARAPPLFS1600 | 100% | 2026-01-20 | 2026-01-24 |  |  | Procurement Engineer [165.6 h] | PROC | MAT |
| RHD4PRLOLPOLFS1200 |  | Material Purchase Order for Submersible pumps - LOL-PO | 7d | 2026-01-28 A | 2026-08-11 A | RHD4ENMARAPPLFS1200 | 100% | 2026-01-28 | 2026-02-04 |  |  | Procurement Engineer [165.6 h] | PROC | MAT |
| RHD4PRLOLPOLFS1300 |  | Material Purchase Order for Surge Tank - LOL-LFS | 14d | 2026-08-11 A | 2026-09-30 A | RHD4ENMARAPPLFS1300 | 100% | 2026-01-12 | 2026-01-27 |  |  | Procurement Engineer [165.6 h] | PROC | MAT |
| RHD4PRLOLPOLFS1500 |  | Material Purchase Order for JIB Crane - LOL-LFS | 14d | 2026-09-22 A | 2026-10-08 A | RHD4ENMARAPPLFS1700 | 100% |  |  |  |  | Procurement Engineer [165.6 h] | PROC | MAT |
| RHD4PRLOLPOLFS2000 |  | Material Purchase Order for Isolation Penstock - LOL-LFS | 14d | 2026-09-22 A | 2026-10-08 A | RHD4ENMARAPPLFS1500 | 100% |  |  |  |  | Procurement Engineer [165.6 h] | PROC | MAT |
| RHD4PRLOLPOLFS1000 |  | Material Purchase Order for Screening Container - LOL-LFS | 14d | 2026-09-26 A | 2026-10-11 A | RHD4ENMARAPPLFS1000 | 100% |  |  |  |  | Procurement Engineer [165.6 h] | PROC | MAT |
| RHD4PRLOLPOLFS1600 |  | Material Purchase Order for Standby Diesel Generator - LOL-LFS | 9d | 2026-10-01 A | 2026-10-11 A | RHD4ENMARAPPLFS2300 | 100% |  |  |  |  | Procurement Engineer [165.6 h] | PROC | MAT |
| RHD4PRLOLPOLFS1100 |  | Material Purchase Order for Magnetic type flowmeter - LOL-PO | 14d | 2026-11-10 | 2026-11-25 | RHD4ENMARAPPLFS1100 |  |  |  | -28d | 0d | Procurement Engineer [165.6 h] | PROC | MAT |
| RHD4PRLOLPOLFS1700 |  | Material Purchase Order for Programmable Logic Controllers and Instrumentation for Process Systems - LOL-LFS | 14d | 2026-11-17 | 2026-12-02 | RHD4ENMARAPPLFS2800_R |  |  |  | -70d | 0d | Procurement Engineer [165.6 h] | PROC | MAT |

| ID | WBS | Activity | Duration | Start | Finish | Predecessors | Total float | Free float | Calendar | RDH4-01-001-Phases-1 | RDH4-01-001-Networks-1 |
| --- | --- | --- | --- | --- | --- | --- | --- | --- | --- | --- | --- |
|  | 131 | **RHD4-02-002-Long Lead Items - LOL-Manufacturing - MAF** |  | 2026-11-10 | 2027-04-08 |  |  |  |  |  |  |
|  | 1 | **RHD4-02-002-LOL-Manufacturing - MAF-Medium Voltage Network - MV** |  | 2026-12-10 | 2027-04-08 |  |  |  |  |  |  |
| RHD4PRLOLMAFMV1500 |  | Material Fabrication for Unit Substations - LOL-MV | 120d | 2026-12-10 | 2027-04-08 | RHD4PRLOLPOMV1500 | -100d | 0d | RHD4 - (7 Days - 8 Hours)-48 | PROC | MV |
| RHD4PRLOLMAFMV1600 |  | Material Fabrication for Ring Main Unit (RMU) - LOL-MV | 120d | 2026-12-10 | 2027-04-08 | RHD4PRLOLPOMV1600 | -100d | 0d | RHD4 - (7 Days - 8 Hours)-48 | PROC | MV |
|  | 132 | **RHD4-02-002-LOL-Manufacturing - MAF-Security Network - CCTV** |  | 2026-12-24 | 2027-03-23 |  |  |  |  |  |  |
| RHD4PRLOLMAFCCTV1000 |  | Material Fabrication for CCTV Control Room Components - LOL-MAF | 90d | 2026-12-24 | 2027-03-23 | RHD4PRLOLPOCCTV1000 | -115d | 0d | RHD4 - (7 Days - 8 Hours)-48 | PROC | CCTV |
|  | 133 | **RHD4-02-002-LOL-Manufacturing - MAF-Lift Stations - LFS** |  | 2026-11-10 | 2027-04-01 |  |  |  |  |  |  |
| RHD4PRLOLMAFLFS1000 |  | Material Fabrication for Screening Container - LOL-MAF | 120d | 2026-11-10 | 2027-03-09 | RHD4PRLOLPOLFS1000 | -44d | 0d | RHD4 - (7 Days - 8 Hours)-48 | PROC | MAT |
| RHD4PRLOLMAFLFS1200 |  | Material Fabrication for Magnetic type flowmeter - LOL-MAF | 120d | 2026-11-10 | 2027-03-09 | RHD4PRLOLPOLFS1200 | -68d | 0d | RHD4 - (7 Days - 8 Hours)-48 | PROC | MAT |
| RHD4PRLOLMAFLFS1300 |  | Material Fabrication for Surge Tank - LOL-MAF | 120d | 2026-11-10 | 2027-03-09 | RHD4PRLOLPOLFS1300 | -68d | 0d | RHD4 - (7 Days - 8 Hours)-48 | PROC | MAT |
| RHD4PRLOLMAFLFS1400 |  | Material Fabrication for Odours scrubbing system - LOL-MAF | 120d | 2026-11-10 | 2027-03-09 | RHD4PRLOLPOLFS1400 | -68d | 0d | RHD4 - (7 Days - 8 Hours)-48 | PROC | MAT |
| RHD4PRLOLMAFLFS1500 |  | Material Fabrication for JIB Crane - LOL-MAF | 120d | 2026-11-10 | 2027-03-09 | RHD4PRLOLPOLFS1500 | -54d | 0d | RHD4 - (7 Days - 8 Hours)-48 | PROC | MAT |
| RHD4PRLOLMAFLFS1600 |  | Material Fabrication for Standby Diesel Generator - LOL-MAF | 120d | 2026-11-10 | 2027-03-09 | RHD4PRLOLPOLFS1600 | -62d | 0d | RHD4 - (7 Days - 8 Hours)-48 | PROC | MAT |
| RHD4PRLOLMAFLFS2000 |  | Material Fabrication for Isolation Penstock - LOL-DOS | 120d | 2026-11-10 | 2027-03-09 | RHD4PRLOLPOLFS2000 | -62d | 0d | RHD4 - (7 Days - 8 Hours)-48 | PROC | MAT |
| RHD4PRLOLMAFLFS1100 |  | Material Fabrication for Submersible pumps - LOL-MAF | 120d | 2026-11-26 | 2027-03-25 | RHD4PRLOLPOLFS1100 | -32d | 0d | RHD4 - (7 Days - 8 Hours)-48 | PROC | MAT |
| RHD4PRLOLMAFLFS1700 |  | Material Fabrication for Programmable Logic Controllers and Instrumentation for Process Systems - LOL-MAF | 120d | 2026-12-03 | 2027-04-01 | RHD4PRLOLPOLFS1700 | -83d | 0d | RHD4 - (7 Days - 8 Hours)-48 | PROC | MAT |
|  | 134 | **RHD4-02-002-Long Lead Items - LOL-Material Delivery on Site - DOS** |  | 2027-03-10 | 2027-04-22 |  |  |  |  |  |  |
|  | 1 | **RHD4-02-002-LOL-Material Delivery on Site - DOS -Medium Voltage Network - MV** |  | 2027-04-09 | 2027-04-22 |  |  |  |  |  |  |
| RHD4PRLOLDOSMV1500 |  | Delivery for Unit Substations - LOL-DOS | 14d | 2027-04-09 | 2027-04-22 | RHD4PRLOLMAFMV1500 | -100d | 0d | RHD4 - (7 Days - 8 Hours)-48 | PROC | MV |
| RHD4PRLOLDOSMV1600 |  | Delivery for Ring Main Unit (RMU) - LOL-DOS | 14d | 2027-04-09 | 2027-04-22 | RHD4PRLOLMAFMV1600 | -100d | 0d | RHD4 - (7 Days - 8 Hours)-48 | PROC | MV |
|  | 135 | **RHD4-02-002-LOL-Material Delivery on Site - DOS -Security Network - CCTV** |  | 2027-03-24 | 2027-04-06 |  |  |  |  |  |  |
| RHD4PRLOLDOSCCTV1000 |  | Delivery for CCTV Control Room Components - LOL-DOS | 14d | 2027-03-24 | 2027-04-06 | RHD4PRLOLMAFCCTV1000 | -115d | 0d | RHD4 - (7 Days - 8 Hours)-48 | PROC | CCTV |
|  | 136 | **RHD4-02-002-LOL-Material Delivery on Site - DOS -Lift Stations - LFS** |  | 2027-03-10 | 2027-04-15 |  |  |  |  |  |  |
| RHD4PRLOLDOSLFS1000 |  | Delivery for Screening Container - LOL-DOS | 14d | 2027-03-10 | 2027-03-23 | RHD4PRLOLMAFLFS1000 | -44d | 0d | RHD4 - (7 Days - 8 Hours)-48 | PROC | MAT |
| RHD4PRLOLDOSLFS1200 |  | Delivery for Magnetic type flowmeter - LOL-DOS | 14d | 2027-03-10 | 2027-03-23 | RHD4PRLOLMAFLFS1200 | -68d | 0d | RHD4 - (7 Days - 8 Hours)-48 | PROC | MAT |
| RHD4PRLOLDOSLFS1300 |  | Delivery for Surge Tank - LOL-DOS | 14d | 2027-03-10 | 2027-03-23 | RHD4PRLOLMAFLFS1300 | -68d | 0d | RHD4 - (7 Days - 8 Hours)-48 | PROC | MAT |
| RHD4PRLOLDOSLFS1400 |  | Delivery for Odours scrubbing system - LOL-DOS | 14d | 2027-03-10 | 2027-03-23 | RHD4PRLOLMAFLFS1400 | -68d | 0d | RHD4 - (7 Days - 8 Hours)-48 | PROC | MAT |
| RHD4PRLOLDOSLFS1500 |  | Delivery for JIB Crane - LOL-DOS | 14d | 2027-03-10 | 2027-03-23 | RHD4PRLOLMAFLFS1500 | -54d | 0d | RHD4 - (7 Days - 8 Hours)-48 | PROC | MAT |
| RHD4PRLOLDOSLFS1600 |  | Delivery for Standby Diesel Generator - LOL-DOS | 14d | 2027-03-10 | 2027-03-23 | RHD4PRLOLMAFLFS1600 | -62d | 0d | RHD4 - (7 Days - 8 Hours)-48 | PROC | MAT |
| RHD4PRLOLDOSLFS2000 |  | Delivery for Isolation Penstock - LOL-DOS | 14d | 2027-03-10 | 2027-03-23 | RHD4PRLOLMAFLFS2000 | -62d | 0d | RHD4 - (7 Days - 8 Hours)-48 | PROC | MAT |
| RHD4PRLOLDOSLFS1100 |  | Delivery for Submersible pumps - LOL-DOS | 14d | 2027-03-26 | 2027-04-08 | RHD4PRLOLMAFLFS1100 | -32d | 0d | RHD4 - (7 Days - 8 Hours)-48 | PROC | MAT |
| RHD4PRLOLDOSLFS1700 |  | Delivery for Programmable Logic Controllers and Instrumentation for Process Systems - LOL-DOS | 14d | 2027-04-02 | 2027-04-15 | RHD4PRLOLMAFLFS1700 | -83d | 0d | RHD4 - (7 Days - 8 Hours)-48 | PROC | MAT |

| ID | WBS | Activity | Duration | Start | Finish | Predecessors | Complete | Planned start | Planned finish | Total float | Free float | Calendar | Resources | RDH4-01-001-Phases-1 | RDH4-01-001-Networks-1 |
| --- | --- | --- | --- | --- | --- | --- | --- | --- | --- | --- | --- | --- | --- | --- | --- |
|  | 1 | **RHD4-02-002-Long Lead Items - LOL-Stageing Time - STAG** |  | 2027-03-24 | 2027-04-28 |  |  |  |  |  |  |  |  |  |  |
|  | 1 | **RHD4-02-002-LOL-Material Delivery on Site - DOS -Medium Voltage Network - MV** |  | 2027-04-23 | 2027-04-28 |  |  |  |  |  |  |  |  |  |  |
| RHD4PRLOLSTAGMV1601 |  | Staging time for Unit Substations - LOL-STAG | 6d | 2027-04-23 | 2027-04-28 | RHD4PRLOLMAFMV1500, RHD4PRLOLDOSMV1500 |  |  |  | -100d | 0d | RHD4 - (7 Days - 8 Hours)-48 | Store Keeper [529.7 h]; Store Keeper assistant [662.13 h] | PROC | MV |
| RHD4PRLOLSTAGMV1602 |  | Staging time for Ring Main Unit (RMU) - LOL-STAG | 6d | 2027-04-23 | 2027-04-28 | RHD4PRLOLMAFMV1600, RHD4PRLOLDOSMV1600 |  |  |  | -100d | 0d | RHD4 - (7 Days - 8 Hours)-48 | Store Keeper [529.7 h]; Store Keeper assistant [662.13 h] | PROC | MV |
|  | 135 | **RHD4-02-002-LOL-Material Delivery on Site - DOS -Security Network - CCTV** |  | 2027-04-07 | 2027-04-12 |  |  |  |  |  |  |  |  |  |  |
| RHD4PRLOLSTACCTV1001 |  | Staging time for CCTV Control Room Components - LOL-STAG | 6d | 2027-04-07 | 2027-04-12 | RHD4PRLOLMAFCCTV1000, RHD4PRLOLDOSCCTV1000 |  |  |  | -115d | 68.02d | RHD4 - (7 Days - 8 Hours)-48 | Store Keeper [1059.36 h]; Store Keeper assistant [1324.32 h] | PROC | CCTV |
|  | 136 | **RHD4-02-002-LOL-Material Delivery on Site - DOS -Lift Stations - LFS** |  | 2027-03-24 | 2027-04-21 |  |  |  |  |  |  |  |  |  |  |
| RHD4PRLOLSTAGLFS1000 |  | Staging time for Screening Container - LOL-STAG | 6d | 2027-03-24 | 2027-03-29 | RHD4PRLOLDOSLFS1000 |  |  |  | -44d | 132.02d | RHD4 - (7 Days - 8 Hours)-48 | Store Keeper [529.7 h]; Store Keeper assistant [662.13 h] | PROC | MAT |
| RHD4PRLOLSTAGLFS1200 |  | Staging time for Magnetic type flowmeter - LOL-STAG | 6d | 2027-03-24 | 2027-03-29 | RHD4PRLOLDOSLFS1200 |  |  |  | -68d | 168.02d | RHD4 - (7 Days - 8 Hours)-48 | Store Keeper [529.7 h]; Store Keeper assistant [662.13 h] | PROC | MAT |
| RHD4PRLOLSTAGLFS1300 |  | Staging time for Surge Tank - LOL-STAG | 6d | 2027-03-24 | 2027-03-29 | RHD4PRLOLDOSLFS1300 |  |  |  | -68d | 168.02d | RHD4 - (7 Days - 8 Hours)-48 | Store Keeper [529.7 h]; Store Keeper assistant [662.13 h] | PROC | MAT |
| RHD4PRLOLSTAGLFS1400 |  | Staging time for Odours scrubbing system - LOL-STAG | 6d | 2027-03-24 | 2027-03-29 | RHD4PRLOLDOSLFS1400 |  |  |  | -68d | 168.02d | RHD4 - (7 Days - 8 Hours)-48 | Store Keeper [529.7 h]; Store Keeper assistant [662.13 h] | PROC | MAT |
| RHD4PRLOLSTAGLFS1500 |  | Staging time for JIB Crane - LOL-STAG | 6d | 2027-03-24 | 2027-03-29 | RHD4PRLOLDOSLFS1500 |  |  |  | -54d | 124.02d | RHD4 - (7 Days - 8 Hours)-48 | Store Keeper [529.7 h]; Store Keeper assistant [662.13 h] | PROC | MAT |
| RHD4PRLOLSTAGLFS1600 |  | Staging time for Standby Diesel Generator - LOL-STAG | 6d | 2027-03-24 | 2027-03-29 | RHD4PRLOLDOSLFS1600 |  |  |  | -62d | 174.02d | RHD4 - (7 Days - 8 Hours)-48 | Store Keeper [529.7 h]; Store Keeper assistant [662.13 h] | PROC | MAT |
| RHD4PRLOLSTAGLFS2000 |  | Staging time for Isolation Penstock - LOL-STAG | 6d | 2027-03-24 | 2027-03-29 | RHD4PRLOLDOSLFS2000 |  |  |  | -62d | 174.02d | RHD4 - (7 Days - 8 Hours)-48 | Store Keeper [529.7 h]; Store Keeper assistant [662.13 h] | PROC | MAT |
| RHD4PRLOLSTAGLFS1100 |  | Staging time for Submersible pumps - LOL-STAG | 6d | 2027-04-09 | 2027-04-14 | RHD4PRLOLDOSLFS1100 |  |  |  | -32d | 139.02d | RHD4 - (7 Days - 8 Hours)-48 | Store Keeper [529.7 h]; Store Keeper assistant [662.13 h] | PROC | MAT |
| RHD4PRLOLSTAGLFS1700 |  | Staging time for Programmable Logic Controllers and Instrumentation for Process Systems - LOL-STAG | 6d | 2027-04-16 | 2027-04-21 | RHD4PRLOLDOSLFS1700 |  |  |  | -83d | 153.02d | RHD4 - (7 Days - 8 Hours)-48 | Store Keeper [529.7 h]; Store Keeper assistant [662.13 h] | PROC | MAT |
|  | 98 | **RHD4-02-002-Short Lead Items - SHL** |  | 2025-12-31 | 2027-02-19 |  |  |  |  |  |  |  |  |  |  |
|  | 99 | **RHD4-02-002-Short Lead Items - SHL-Material Purchase Order - PO** |  | 2025-12-31 | 2026-12-14 |  |  |  |  |  |  |  |  |  |  |
|  | 100 | **RHD4-02-002-SHL-Material Purchase Order - PO-Storm Network - ST** |  | 2026-01-28 | 2026-10-18 |  |  |  |  |  |  |  |  |  |  |
| RHD4PRSHLPOST1000 |  | Material Purchase Order for GRP pipes - SHL-ST | 11d | 2026-01-28 A | 2026-02-09 A | RHD4ENSWL1APPARC1100, RHD4ENSWL1APPMEC1200, RHD4ENSTL1APPARC1100, RHD4ENSTL1APPMEC1200, RHD4GNPERMITAT2000, RHD4ENTUN1APPSTC1100, RHD4ENTUN1APPSTC1200, RHD4ENSDZ9APPRD220, RHD4ENSDZ7APPRD220, RHD4ENSDZ5APPRD220, RHD4ENMARAPPST100 | 100% | 2025-12-31 | 2026-01-12 |  |  |  | Procurement Engineer [165.6 h] | PROC | ST |
| RHD4PRSHLPOST1100 |  | Material Purchase Order for UPVC pipes - SHL-ST | 3d | 2026-02-01 A | 2026-02-03 A | RHD4ENMARAPPST200 | 100% | 2026-01-01 | 2026-01-04 |  |  |  | Procurement Engineer [165.6 h] | PROC | ST |
| RHD4PRSHLPOST1200 |  | Material Purchase Order for HDPE pipes - SHL-ST | 6d | 2026-02-04 A | 2026-03-29 A | RHD4PRSHLPOST1100, RHD4PRSHLPOST1000, RHD4ENMARAPPST300 | 100% | 2026-01-18 | 2026-01-24 |  |  |  | Procurement Engineer [165.6 h] | PROC | ST |
| RHD4PRSHLPOST1300 |  | Material Purchase Order for Catch basin - SHL-ST | 6d | 2026-03-29 A | 2026-04-04 A | RHD4PRSHLPOST1100, RHD4PRSHLPOST1000, RHD4ENMARAPPST400 | 100% | 2026-01-13 | 2026-01-19 |  |  |  | Procurement Engineer [165.6 h] | PROC | ST |
| RHD4PRSHLPOST1500 |  | Material Purchase Order for Tensile reinforcement steel - SHL-ST | 6d | 2026-06-01 A | 2026-06-07 A | RHD4ENMARAPPST600 | 100% |  |  |  |  |  | Procurement Engineer [165.6 h] | PROC | ST |
| RHD4PRSHLPOST1600 |  | Material Purchase Order for Precast Concrete - SHL-ST | 6d | 2026-06-01 A | 2026-06-07 A | RHD4ENMARAPPST700 | 100% | 2026-01-20 | 2026-01-26 |  |  |  | Procurement Engineer [165.6 h] | PROC | ST |
| RHD4PRSHLPOST1700 |  | Material Purchase Order for Metal Works (Stairs - Manhole Covers) - SHL-ST | 6d | 2026-09-09 A | 2026-09-15 A | RHD4PRSHLPOST1300, RHD4ENMARAPPST800 | 100% | 2026-10-01 | 2026-10-07 |  |  |  | Procurement Engineer [165.6 h] | PROC | ST |
| RHD4PRSHLPOST1400 |  | Material Purchase Order for Grouted Riprap - SHL-ST | 6d | 2026-10-12 A | 2026-10-18 A | RHD4PRSHLPOST1700, RHD4ENMARAPPST500 | 100% |  |  |  |  |  | Procurement Engineer [165.6 h] | PROC | ST |

| ID | WBS | Activity | Duration | Start | Finish | Predecessors | Complete | Planned start | Planned finish | Total float | Free float | Resources | RDH4-01-001-Phases-1 | RDH4-01-001-Networks-1 |
| --- | --- | --- | --- | --- | --- | --- | --- | --- | --- | --- | --- | --- | --- | --- |
|  | 101 | **RHD4-02-002-SHL-Material Purchase Order - PO-Sewage Network - SW** |  | 2025-12-31 | 2026-10-07 |  |  |  |  |  |  |  |  |  |
| RHD4PRSHLPOSW1100 |  | Material Purchase Order for GRP pipes - SHL-SW | 6d | 2025-12-31 A | 2026-02-12 A | RHD4ENMARAPPSW200 | 100% | 2026-01-07 | 2026-01-13 |  |  | Procurement Engineer [165.6 h] | PROC | SW |
| RHD4PRSHLPOSW1000 |  | Material Purchase Order for UPVC pipes - SHL-SW | 6d | 2026-01-07 A | 2026-02-03 A | RHD4ENMARAPPSW100 | 100% | 2026-01-15 | 2026-01-21 |  |  | Procurement Engineer [165.6 h] | PROC | SW |
| RHD4PRSHLPOSW1200 |  | Material Purchase Order for Valves - SHL-SW | 6d | 2026-01-14 A | 2026-02-07 A | RHD4ENMARAPPSW300 | 100% | 2026-01-14 | 2026-01-20 |  |  | Procurement Engineer [165.6 h] | PROC | SW |
| RHD4PRSHLPOSW1500 |  | Material Purchase Order for HDPE pipes - SHL-SW | 6d | 2026-01-21 A | 2026-03-29 A | RHD4ENMARAPPSW600 | 100% | 2026-01-28 | 2026-02-03 |  |  | Procurement Engineer [165.6 h] | PROC | SW |
| RHD4PRSHLPOSW1300 |  | Material Purchase Order for Precast Concrete - SHL-SW | 6d | 2026-08-01 A | 2026-08-06 A | RHD4ENMARAPPSW400 | 100% |  |  |  |  | Procurement Engineer [165.6 h] | PROC | SW |
| RHD4PRSHLPOSW1400 |  | Material Purchase Order for Metal Works (Stairs - Manhole Covers) - SHL-SW | 6d | 2026-10-01 A | 2026-10-07 A | RHD4ENMARAPPSW500 | 100% |  |  |  |  | Procurement Engineer [165.6 h] | PROC | SW |
|  | 102 | **RHD4-02-002-SHL-Material Purchase Order - PO-Potable Water Network - PT** |  | 2026-01-07 | 2026-10-21 |  |  |  |  |  |  |  |  |  |
| RHD4PRSHLPOPT1000 |  | Material Purchase Order for HDPE pipes - SHL-PT | 6d | 2026-01-07 A | 2026-03-29 A | RHD4ENMARAPPPT100 | 100% | 2026-01-17 | 2026-01-22 |  |  | Procurement Engineer [165.6 h] | PROC | PT |
| RHD4PRSHLPOPT1100 |  | Material Purchase Order for Valves - SHL-PT | 6d | 2026-01-24 A | 2026-02-26 A | RHD4ENMARAPPPT200 | 100% | 2026-01-24 | 2026-01-29 |  |  | Procurement Engineer [165.6 h] | PROC | PT |
| RHD4PRSHLPOPT1500 |  | Material Purchase Order for Metal Works (Chamber's Covers) - SHL-PT | 6d | 2026-08-04 A | 2026-08-10 A | RHD4ENMARAPPPT600 | 100% |  |  |  |  | Procurement Engineer [165.6 h] | PROC | PT |
| RHD4PRSHLPOPT1300 |  | Material Purchase Order for Precast Concrete - SHL-PT | 6d | 2026-08-20 A | 2026-08-26 A | RHD4ENMARAPPPT400 | 100% |  |  |  |  | Procurement Engineer [165.6 h] | PROC | PT |
| RHD4PRSHLPOPT1200 |  | Material Purchase Order for Fire Hydrants - SHL-PT | 6d | 2026-10-01 A | 2026-10-07 A | RHD4ENMARAPPPT300 | 100% |  |  |  |  | Procurement Engineer [165.6 h] | PROC | PT |
| RHD4PRSHLPOPT1400 |  | Material Purchase Order for Stem and Surface box - SHL-PT | 6d | 2026-10-15 A | 2026-10-21 A | RHD4ENMARAPPPT500 | 100% |  |  |  |  | Procurement Engineer [165.6 h] | PROC | PT |
|  | 103 | **RHD4-02-002-SHL-Material Purchase Order - PO-Irrigation Network - IRR** |  | 2026-01-07 | 2026-10-08 |  |  |  |  |  |  |  |  |  |
| RHD4PRSHLPOIRR1000 |  | Material Purchase Order for HDPE pipes - SHL-IRR | 6d | 2026-01-07 A | 2026-03-29 A | RHD4ENMARAPPIRR100 | 100% | 2026-01-18 | 2026-01-24 |  |  | Procurement Engineer [165.6 h] | PROC | IRR |
| RHD4PRSHLPOIRR1100 |  | Material Purchase Order for Valves - SHL-IRR | 6d | 2026-01-26 A | 2026-02-26 A | RHD4ENMARAPPIRR200 | 100% | 2026-01-26 | 2026-02-01 |  |  | Procurement Engineer [165.6 h] | PROC | IRR |
| RHD4PRSHLPOIRR1300 |  | Material Purchase Order for Stem and Surface box - SHL-IRR | 6d | 2026-07-18 A | 2026-07-23 A | RHD4ENMARAPPIRR400 | 100% | 2026-02-18 | 2026-02-25 |  |  | Procurement Engineer [165.6 h] | PROC | IRR |
| RHD4PRSHLPOIRR1200 |  | Material Purchase Order for Precast Concrete - SHL-IRR | 6d | 2026-08-20 A | 2026-08-26 A | RHD4ENMARAPPIRR300 | 100% |  |  |  |  | Procurement Engineer [165.6 h] | PROC | IRR |
| RHD4PRSHLPOIRR1400 |  | Material Purchase Order for Metal Works (Chamber's Covers) - SHL-IRR | 6d | 2026-10-03 A | 2026-10-08 A | RHD4ENMARAPPIRR500 | 100% |  |  |  |  | Procurement Engineer [165.6 h] | PROC | IRR |
|  | 104 | **RHD4-02-002-SHL-Material Purchase Order - PO-Medium Voltage - MV** |  | 2026-01-14 | 2026-12-07 |  |  |  |  |  |  |  |  |  |
| RHD4PRSHLPOMV1000 |  | Material Purchase Order for UPVC Pipes for Duct Banks - SHL-MV | 17d | 2026-01-14 A | 2026-02-02 A | RHD4ENMARAPPMV100 | 100% | 2025-12-31 | 2026-01-19 |  |  | Procurement Engineer [165.6 h] | PROC | MV |
| RHD4PRSHLPOMV1100 |  | Material Purchase Order for Medium Voltage Cable 3Cx500 mm2 - SHL-MV | 6d | 2026-12-01 | 2026-12-07 | RHD4ENMARAPPMV200 |  |  |  | -192d | 0d | Procurement Engineer [165.6 h] | PROC | MV |
| RHD4PRSHLPOMV1200 |  | Material Purchase Order for Medium Voltage Cable 3Cx50 mm2 - SHL-MV | 6d | 2026-12-01 | 2026-12-07 | RHD4ENMARAPPMV300 |  |  |  | -192d | 0d | Procurement Engineer [165.6 h] | PROC | MV |
| RHD4PRSHLPOMV1300 |  | Material Purchase Order for Straight Joints 3Cx50 mm2 - SHL-MV | 6d | 2026-12-01 | 2026-12-07 | RHD4ENMARAPPMV400 |  |  |  | -192d | 0d | Procurement Engineer [165.6 h] | PROC | MV |
| RHD4PRSHLPOMV1400 |  | Material Purchase Order for Normally Open Points (Outdoor type) - SHL-MV | 6d | 2026-12-01 | 2026-12-07 | RHD4ENMARAPPMV500 |  |  |  | -192d | 0d | Procurement Engineer [165.6 h] | PROC | MV |

| ID | WBS | Activity | Duration | Start | Finish | Predecessors | Complete | Planned start | Planned finish | Total float | Free float | Resources | RDH4-01-001-Phases-1 | RDH4-01-001-Networks-1 |
| --- | --- | --- | --- | --- | --- | --- | --- | --- | --- | --- | --- | --- | --- | --- |
|  | 105 | **RHD4-02-002-SHL-Material Purchase Order - PO-Low Voltage - LV** |  | 2026-01-14 | 2026-11-30 |  |  |  |  |  |  |  |  |  |
| RHD4PRSHLPOLV1000 |  | Material Purchase Order for UPVC Pipes for Duct Banks - SHL-LV | 17d | 2026-01-14 A | 2026-02-02 A | RHD4ENMARAPPLV100 | 100% | 2026-01-01 | 2026-01-20 |  |  | Procurement Engineer [165.6 h] | PROC | LV |
| RHD4PRSHLPOLV1100 |  | Material Purchase Order for Low voltage Cables - SHL-LV | 6d | 2026-08-27 A | 2026-09-02 A | RHD4ENMARAPPLV200 | 100% |  |  |  |  | Procurement Engineer [165.6 h] | PROC | LV |
| RHD4PRSHLPOLV1200 |  | Material Purchase Order for Distribution Pillars - SHL-LV | 6d | 2026-11-24 | 2026-11-30 | RHD4ENMARAPPLV300 |  |  |  | -186d | 0d | Procurement Engineer [165.6 h] | PROC | LV |
| RHD4PRSHLPOLV1300 |  | Material Purchase Order for KWH Meter mounting Frame - SHL-LV | 6d | 2026-11-24 | 2026-11-30 | RHD4ENMARAPPLV400 |  |  |  | -186d | 0d | Procurement Engineer [165.6 h] | PROC | LV |
| RHD4PRSHLPOLV1400 |  | Material Purchase Order for Low Voltage Drawpit - SHL-LV | 6d | 2026-11-24 | 2026-11-30 | RHD4ENMARAPPLV500 |  |  |  | -176d | 0d | Procurement Engineer [165.6 h] | PROC | LV |
| RHD4PRSHLPOLV1500 |  | Material Purchase Order for Earthing for Pillars and Panels - SHL-LV | 6d | 2026-11-24 | 2026-11-30 | RHD4ENMARAPPLV600 |  |  |  | -182.02d | 0d | Procurement Engineer [165.6 h] | PROC | LV |
|  | 106 | **RHD4-02-002-SHL-Material Purchase Order - PO-Street Lighting Network -SL** |  | 2026-01-15 | 2026-10-06 |  |  |  |  |  |  |  |  |  |
| RHD4PRSHLPOSL1000 |  | Material Purchase Order for UPVC Pipes for Duct Banks - SHL-SL | 16d | 2026-01-15 A | 2026-02-02 A | RHD4ENMARAPPSL100 | 100% | 2026-01-06 | 2026-01-24 |  |  | Procurement Engineer [165.6 h] | PROC | SL |
| RHD4PRSHLPOSL1200 |  | Material Purchase Order for Lighting Poles - SHL-SL | 6d | 2026-08-20 A | 2026-08-26 A | RHD4ENMARAPPSL300 | 100% |  |  |  |  | Procurement Engineer [165.6 h] | PROC | SL |
| RHD4PRSHLPOSL1400 |  | Material Purchase Order for Street Lighting Drawpit - SHL-SL | 6d | 2026-09-17 A | 2026-09-24 A | RHD4ENMSSL2000, RHD4ENMARAPPSL500 | 100% |  |  |  |  | Procurement Engineer [165.6 h] | PROC | SL |
| RHD4PRSHLPOSL1300 |  | Material Purchase Order for Street Lighting Luminaire - SHL-SL | 6d | 2026-09-27 A | 2026-10-03 A | RHD4ENMARAPPSL400 | 100% |  |  |  |  | Procurement Engineer [165.6 h] | PROC | SL |
| RHD4PRSHLPOSL1100 |  | Material Purchase Order for Street Lighting Cables - SHL-SL | 6d | 2026-09-30 A | 2026-10-06 A | RHD4ENMARAPPSL200 | 100% |  |  |  |  | Procurement Engineer [165.6 h] | PROC | SL |
|  | 107 | **RHD4-02-002-SHL-Material Purchase Order - PO-Landscape Network - LS** |  |  |  |  |  |  |  |  |  |  |  |  |
|  | 108 | **RHD4-02-002-SHL-Material Purchase Order - PO-Telecommunications Network - TC** |  | 2026-01-22 | 2026-09-07 |  |  |  |  |  |  |  |  |  |
| RHD4PRSHLPOTC1100 |  | Material Purchase Order for HDPE Road Crossings Ducts - SHL-TC | 11d | 2026-01-22 A | 2026-03-29 A | RHD4PRSHLPOSL1000, RHD4ENMARAPPTC200 | 100% | 2026-01-25 | 2026-02-05 |  |  | Procurement Engineer [165.6 h] | PROC | TC |
| RHD4PRSHLPOTC1000 |  | Material Purchase Order for HDPE Ducts - SHL-TC | 11d | 2026-01-29 A | 2026-03-29 A | RHD4PRSHLPOTC1100, RHD4ENMARAPPTC100 | 100% | 2026-02-07 | 2026-02-18 |  |  | Procurement Engineer [165.6 h] | PROC | TC |
| RHD4PRSHLPOTC1200 |  | Material Purchase Order for Telecommunications Manhole - SHL-TC | 6d | 2026-09-01 A | 2026-09-07 A | RHD4PRSHLPOTC1000, RHD4ENMARAPPTC300 | 100% |  |  |  |  | Procurement Engineer [165.6 h] | PROC | TC |
|  | 109 | **RHD4-02-002-SHL-Material Purchase Order - PO-Information and Communication Technologies - ICT** |  | 2026-01-22 | 2026-03-29 |  |  |  |  |  |  |  |  |  |
| RHD4PRSHLPOICT1100 |  | Material Purchase Order for HDPE Road Crossings Ducts - SHL-ICT | 7d | 2026-01-22 A | 2026-03-29 A | RHD4PRSHLPOSL1000, RHD4ENMARAPPICT200 | 100% | 2026-01-25 | 2026-02-01 |  |  | Procurement Engineer [165.6 h] | PROC | ICT |
| RHD4PRSHLPOICT1000 |  | Material Purchase Order for HDPE Ducts - SHL-ICT | 7d | 2026-01-29 A | 2026-03-29 A | RHD4PRSHLPOICT1100, RHD4ENMARAPPICT100 | 100% | 2026-02-02 | 2026-02-09 |  |  | Procurement Engineer [165.6 h] | PROC | ICT |
| RHD4PRSHLPOICT1200 |  | Material Purchase Order for Telecommunications Manhole - SHL-ICT | 7d | 2026-02-05 A | 2026-03-29 A | RHD4PRSHLPOICT1000, RHD4PRSHLPOSL1100, RHD4ENMARAPPICT300 | 100% | 2026-02-10 | 2026-02-17 |  |  | Procurement Engineer [165.6 h] | PROC | ICT |
|  | 110 | **RHD4-02-002-SHL-Material Purchase Order - PO-Security Network - CCTV** |  | 2026-11-17 | 2026-12-14 |  |  |  |  |  |  |  |  |  |
| RHD4PRSHLPOCCTV1000 |  | Material Purchase Order for CCTV Network Poles - SHL-CCTV | 6d | 2026-11-17 | 2026-11-23 | RHD4PRSHLPOLV1000, RHD4ENMARAPPCCTV100 |  |  |  | -194.02d | 0d | Procurement Engineer [331.2 h] | PROC | CCTV |
| RHD4PRSHLPOCCTV1200 |  | Material Purchase Order for CCTV Panels and Panel's Components - SHL-CCTV | 6d | 2026-11-24 | 2026-11-30 | RHD4PRSHLPOCCTV1000, RHD4ENMARAPPCCTV300 |  |  |  | -194.02d | 0d | Procurement Engineer [331.2 h] | PROC | CCTV |
| RHD4PRSHLPOCCTV1300 |  | Material Purchase Order for CCTV Fiber Optic Cables - SHL-CCTV | 6d | 2026-12-01 | 2026-12-07 | RHD4PRSHLPOCCTV1200, RHD4ENMARAPPCCTV400 |  |  |  | -194.02d | 0d | Procurement Engineer [331.2 h] | PROC | CCTV |
| RHD4PRSHLPOCCTV1100 |  | Material Purchase Order for CCTV Network Cameras - SHL-CCTV | 6d | 2026-12-08 | 2026-12-14 | RHD4PRSHLPOCCTV1300, RHD4ENMSRR2010, RHD4ENMSER2010, RHD4ENMSASPH2010, RHD4ENSWL1APPELE1300, RHD4ENMARAPPCCTV200 |  |  |  | -194.02d | 0d | Procurement Engineer [331.2 h] | PROC | CCTV |

| ID | WBS | Activity | Duration | Start | Finish | Predecessors | Complete | Total float | Free float | Resources | RDH4-01-001-Phases-1 | RDH4-01-001-Networks-1 |
| --- | --- | --- | --- | --- | --- | --- | --- | --- | --- | --- | --- | --- |
|  | 111 | **RHD4-02-002-SHL-Material Purchase Order - PO-Road Works - RD** |  | 2026-08-11 | 2026-12-07 |  |  |  |  |  |  |  |
| RHD4PRSHLPORD1100 |  | Material Purchase Order for Bituminous Asphalt Layers - SHL-RD | 6d | 2026-08-11 A | 2026-08-17 A | RHD4PRSHLPORD1000, RHD4ENMARAPPRD200 | 100% |  |  | Procurement Engineer [165.6 h] | PROC | RD |
| RHD4PRSHLPORD1000 |  | Material Purchase Order for Aggregate Base Courses - SHL-RD | 6d | 2026-08-20 A | 2026-08-26 A | RHD4ENMARAPPRD100 | 100% |  |  | Procurement Engineer [165.6 h] | PROC | RD |
| RHD4PRSHLPORD1200 |  | Material Purchase Order for Precast Concrete Curbstone - SHL-RD | 6d | 2026-10-01 A | 2026-10-07 A | RHD4PRSHLPORD1100, RHD4ENMARAPPRD300 | 100% |  |  | Procurement Engineer [165.6 h] | PROC | RD |
| RHD4PRSHLPORD1600 |  | Material Purchase Order for Traffic Signage - SHL-RD | 6d | 2026-11-10 | 2026-11-16 | RHD4PRSHLPORD1200, RHD4ENMARAPPRD700 |  | -188.02d | 0d | Procurement Engineer [165.6 h] | PROC | RD |
| RHD4PRSHLPORD1300 |  | Material Purchase Order for Interlock Precast Concrete Unit Paving - SHL-RD | 6d | 2026-11-17 | 2026-11-23 | RHD4PRSHLPORD1600, RHD4ENMARAPPRD400 |  | -188.02d | 0d | Procurement Engineer [165.6 h] | PROC | RD |
| RHD4PRSHLPORD1400 |  | Material Purchase Order for Wheel Stopper - SHL-RD | 6d | 2026-11-24 | 2026-11-30 | RHD4PRSHLPORD1300, RHD4ENMARAPPRD500 |  | -188.02d | 0d | Procurement Engineer [165.6 h] | PROC | RD |
| RHD4PRSHLPORD1500 |  | Material Purchase Order for Pavement Marking - SHL-RD | 6d | 2026-12-01 | 2026-12-07 | RHD4PRSHLPORD1400, RHD4ENMARAPPRD600 |  | -188.02d | 0d | Procurement Engineer [165.6 h] | PROC | RD |
|  | 112 | **RHD4-02-002-SHL-Material Purchase Order - PO-Lift Stations - LFS** |  | 2026-06-01 | 2026-12-07 |  |  |  |  |  |  |  |
| RHD4PRSHLPOLFS1200 |  | Material Purchase Order for Bituminous Sheet Waterproofing - SHL-LFS | 6d | 2026-06-01 A | 2026-06-07 A | RHD4PRSHLPOLFS1100, RHD4ENMARAPPLFS300 | 100% |  |  | Procurement Engineer [165.6 h] | PROC | MAT |
| RHD4PRSHLPOLFS1700 |  | Material Purchase Order for Ductile Iron Pipes & Fittings - SHL-LFS | 6d | 2026-08-11 A | 2026-08-17 A | RHD4ENMARAPPLFS800 | 100% |  |  | Procurement Engineer [165.6 h] | PROC | MAT |
| RHD4PRSHLPOLFS1800 |  | Material Purchase Order for Sewage Lift Station Valves - SHL-LFS | 6d | 2026-08-18 A | 2026-08-24 A | RHD4PRSHLPOLFS1700, RHD4ENMARAPPLFS900 | 100% |  |  | Procurement Engineer [165.6 h] | PROC | MAT |
| RHD4PRSHLPOLFS1900 |  | Material Purchase Order for Basket screen - SHL-LFS | 6d | 2026-09-27 A | 2026-10-03 A | RHD4ENMARAPPLFS1400 | 100% |  |  | Procurement Engineer [165.6 h] | PROC | MAT |
| RHD4PRSHLPOLFS2600 |  | Material Purchase Order for Low Voltage Cables - SHL-LFS | 6d | 2026-10-01 A | 2026-10-07 A | RHD4PRSHLPOLFS1800, RHD4ENMARAPPLFS2400 | 100% |  |  | Procurement Engineer [165.6 h] | PROC | MAT |
| RHD4PRSHLPOLFS2700 |  | Material Purchase Order for Lighting Fixtures - SHL-LFS | 6d | 2026-10-13 A | 2026-10-19 A | RHD4ENMARAPPLFS2500 | 100% |  |  | Procurement Engineer [165.6 h] | PROC | MAT |
| RHD4PRSHLPOLFS1100 |  | Material Purchase Order for Roof Waterproofing System - SHL-LFS | 6d | 2026-11-10 | 2026-11-16 | RHD4ENMARAPPLFS200 |  | -180d | 0d | Procurement Engineer [165.6 h] | PROC | MAT |
| RHD4PRSHLPOLFS1600 |  | Material Purchase Order for Epoxy Coating - SHL-LFS | 6d | 2026-11-10 | 2026-11-16 | RHD4ENMARAPPLFS700 |  | -174d | 0d | Procurement Engineer [165.6 h] | PROC | MAT |
| RHD4PRSHLPOLFS2100 |  | Material Purchase Order for UPVC Pipes for Sanitary Drain - SHL-LFS | 6d | 2026-11-10 | 2026-11-16 | RHD4ENMARAPPLFS1800 |  | -174d | 0d | Procurement Engineer [165.6 h] | PROC | MAT |
| RHD4PRSHLPOLFS2300 |  | Material Purchase Order for Motor Control Center (MCC) - SHL-LFS | 12d | 2026-11-10 | 2026-11-23 | RHD4ENMARAPPLFS2000 |  | -180d | 0d | Procurement Engineer [165.6 h] | PROC | MAT |
| RHD4PRSHLPOLFS2400 |  | Material Purchase Order for lighting and power panel boards - SHL-LFS | 6d | 2026-11-10 | 2026-11-16 | RHD4ENMARAPPLFS2100 |  | -174d | 0d | Procurement Engineer [165.6 h] | PROC | MAT |
| RHD4PRSHLPOLFS3000 |  | Material Purchase Order for Fire Alarm System - SHL-LFS | 6d | 2026-11-10 | 2026-11-16 | RHD4ENMARAPPLFS2900 |  | -174d | 0d | Procurement Engineer [165.6 h] | PROC | MAT |
| RHD4PRSHLPOLFS1300 |  | Material Purchase Order for Fluid-Applied Waterproofing - SHL-LFS | 6d | 2026-11-17 | 2026-11-23 | RHD4PRSHLPOLFS1200, RHD4ENSTL1APPELE1300, RHD4ENMARAPPLFS400 |  | -180d | 0d | Procurement Engineer [165.6 h] | PROC | MAT |
| RHD4PRSHLPOLFS2800 |  | Material Purchase Order for Wiring Devices - SHL-LFS | 6d | 2026-11-17 | 2026-11-23 | RHD4ENMARAPPLFS2600 |  | -180d | 0d | Procurement Engineer [165.6 h] | PROC | MAT |
| RHD4PRSHLPOLFS1000 |  | Material Purchase Order for Metal Ladder and checkered Plate - SHL-LFS | 6d | 2026-11-24 | 2026-11-30 | RHD4ENMARAPPLFS100 |  | -182.02d | 0d | Procurement Engineer [165.6 h] | PROC | MAT |
| RHD4PRSHLPOLFS1400 |  | Material Purchase Order for Metal Doors and Access Doors and Frames - SHL-LFS | 6d | 2026-11-24 | 2026-11-30 | RHD4ENMARAPPLFS500 |  | -186d | 0d | Procurement Engineer [165.6 h] | PROC | MAT |
| RHD4PRSHLPOLFS2200 |  | Material Purchase Order for wall mounted Split/AC - SHL-LFS | 6d | 2026-11-24 | 2026-11-30 | RHD4ENMARAPPLFS1900 |  | -186d | 0d | Procurement Engineer [165.6 h] | PROC | MAT |
| RHD4PRSHLPOLFS2900 |  | Material Purchase Order for Enclosed Switches and Circuit Breakers - SHL-LFS | 6d | 2026-11-24 | 2026-11-30 | RHD4ENMARAPPLFS2700 |  | -192d | 0d | Procurement Engineer [165.6 h] | PROC | MAT |
| RHD4PRSHLPOLFS1500 |  | Material Purchase Order for Painting - SHL-LFS | 6d | 2026-12-01 | 2026-12-07 | RHD4ENMARAPPLFS600 |  | -192d | 0d | Procurement Engineer [165.6 h] | PROC | MAT |
| RHD4PRSHLPOLFS2500 |  | Material Purchase Order for Earthing for Lift Stations - SHL-LFS | 6d | 2026-12-01 | 2026-12-07 | RHD4ENMARAPPLFS2200 |  | -192d | 0d | Procurement Engineer [165.6 h] | PROC | MAT |
| RHD4PRSHLPOLFS3100 |  | Material Purchase Order for Fences and Gates - SHL-LFS | 6d | 2026-12-01 | 2026-12-07 | RHD4ENMARAPPLFS3000, RHD4PRSHLPOLFS2900 |  | -192d | 0d | Procurement Engineer [165.6 h] | PROC | MAT |

| ID | WBS | Activity | Duration | Start | Finish | Predecessors | Complete | Planned start | Planned finish | Total float | Free float | Calendar | RDH4-01-001-Zones-1 | RDH4-01-001-Phases-1 | RDH4-01-001-Networks-1 |
| --- | --- | --- | --- | --- | --- | --- | --- | --- | --- | --- | --- | --- | --- | --- | --- |
|  | 113 | **RHD4-02-002-Short Lead Items - SHL-Material Delivery on Site - DOS** |  | 2026-01-14 | 2027-02-13 |  |  |  |  |  |  |  |  |  |  |
|  | 114 | **RHD4-02-002-SHL-Material Delivery on Site - DOS -Storm Network - ST** |  | 2026-02-16 | 2026-12-25 |  |  |  |  |  |  |  |  |  |  |
|  | 1 | **RHD4-02-002-SHL-Material Delivery on Site - DOS -Storm Network - ST - Zone 1** |  | 2026-03-01 | 2026-10-18 |  |  |  |  |  |  |  |  |  |  |
| RHD4PRSHLDOSST1000 |  | Delivery for GRP pipes Zone 1 - SHL-DOS(Completed) | 30d | 2026-03-01 A | 2026-08-03 A | RHD4PRSHLDOSST1306, RHD4PRSHLDOSST1001 SS, RHD4CZ6A015ST3501, RHD4CZ5A014ST3501, RHD4CZ3L122RW2000, RHD4PRSHLSTAGSL1100, RHD4PRSHLPOST1000 | 100% | 2026-07-18 | 2026-08-16 |  |  | RHD4 - (7 Days - 8 Hours)-48 | Z1 | PROC | ST |
| RHD4PRSHLDOSST1100 |  | Delivery for UPVC pipes Zone 1 - SHL-DOS | 6d | 2026-09-01 A | 2026-09-06 A | RHD4PRSHLDOSST1600, RHD4PRSHLPOST1100 | 100% |  |  |  |  | RHD4 - (7 Days - 8 Hours)-48 | Z1 | PROC | ST |
| RHD4PRSHLDOSST1300 |  | Delivery for Catch basin Zone 1 - SHL-DOS | 6d | 2026-09-18 A | 2026-09-23 A | RHD4PRSHLDOSST1600, RHD4PRSHLPOST1000, RHD4PRSHLDOSST1000, RHD4PRSHLPOST1300 | 100% |  |  |  |  | RHD4 - (7 Days - 8 Hours)-48 | Z1 | PROC | ST |
| RHD4PRSHLDOSST1600 |  | Delivery for Precast Concrete Zone 1 - SHL-DOS | 6d | 2026-09-22 A | 2026-09-27 A | RHD4PRSHLPOST1600 | 100% |  |  |  |  | RHD4 - (7 Days - 8 Hours)-48 | Z1 | PROC | ST |
| RHD4PRSHLDOSST1700 |  | Delivery for Metal Works (Stairs - Manhole Covers) Zone 1 - SHL-DOS | 6d | 2026-10-05 A | 2026-10-10 A | RHD4PRSHLPOST1700 | 100% | 2026-09-05 | 2026-09-10 |  |  | RHD4 - (7 Days - 8 Hours)-48 | Z1 | PROC | ST |
| RHD4PRSHLDOSST1400 |  | Delivery for Grouted Riprap Zone 1 - SHL-DOS | 6d | 2026-10-13 A | 2026-10-18 A | RHD4PRSHLPOST1400 | 100% |  |  |  |  | RHD4 - (7 Days - 8 Hours)-48 | Z1 | PROC | ST |
|  | 2 | **RHD4-02-002-SHL-Material Delivery on Site - DOS -Storm Network - ST - Zone 2** |  | 2026-02-16 | 2026-11-22 |  |  |  |  |  |  |  |  |  |  |
| RHD4PRSHLDOSST1001 |  | Delivery for GRP pipes Zone 2 - SHL-DOS(Completed) | 30d | 2026-02-16 A | 2026-08-03 A | RHD4PRSHLPOST1000, RHD4PRSHLSTAGST1003, RHD4PRSHLDOSST1702, RHD4PRSHLDOSST1302 | 100% | 2026-07-18 | 2026-08-16 |  |  | RHD4 - (7 Days - 8 Hours)-48 | Z2 | PROC | ST |
| RHD4PRSHLDOSST1501 |  | Delivery for Tensile reinforcement steel Zone 2 - SHL-DOS | 6d | 2026-06-08 A | 2026-06-13 A | RHD4PRSHLPOST1500 | 100% |  |  |  |  | RHD4 - (7 Days - 8 Hours)-48 | Z2 | PROC | ST |
| RHD4PRSHLDOSST1601 |  | Delivery for Precast Concrete Zone 2 - SHL-DOS | 6d | 2026-09-05 A | 2026-09-10 A | RHD4PRSHLPOST1600 | 100% | 2026-01-27 | 2026-02-01 |  |  | RHD4 - (7 Days - 8 Hours)-48 | Z2 | PROC | ST |
| RHD4PRSHLDOSST1101 |  | Delivery for UPVC pipes Zone 2 - SHL-DOS | 6d | 2026-09-30 A | 2026-10-05 A | RHD4PRSHLPOST1100 | 100% |  |  |  |  | RHD4 - (7 Days - 8 Hours)-48 | Z2 | PROC | ST |
| RHD4PRSHLDOSST1301 |  | Delivery for Catch basin Zone 2 - SHL-DOS | 6d | 2026-10-07 A | 2026-10-12 A | RHD4PRSHLPOST1300, RHD4PRSHLDOSST1101, RHD4PRSHLPOST1000, RHD4PRSHLDOSST1001 | 100% |  |  |  |  | RHD4 - (7 Days - 8 Hours)-48 | Z2 | PROC | ST |
| RHD4PRSHLDOSST1701 |  | Delivery for Metal Works (Stairs - Manhole Covers) Zone 2 - SHL-DOS | 6d | 2026-11-10 | 2026-11-15 | RHD4PRSHLPOST1700 |  |  |  | -196.02d | 0d | RHD4 - (7 Days - 8 Hours)-48 | Z2 | PROC | ST |
| RHD4PRSHLDOSST1401 |  | Delivery for Grouted Riprap Zone 2 - SHL-DOS | 6d | 2026-11-17 | 2026-11-22 | RHD4PRSHLPOST1400 |  |  |  | -203.02d | 0d | RHD4 - (7 Days - 8 Hours)-48 | Z2 | PROC | ST |
|  | 3 | **RHD4-02-002-SHL-Material Delivery on Site - DOS -Storm Network - ST - Zone 3** |  | 2026-09-03 | 2026-11-15 |  |  |  |  |  |  |  |  |  |  |
| RHD4PRSHLDOSST1602 |  | Delivery for Precast Concrete Zone 3 - SHL-DOS | 6d | 2026-09-03 A | 2026-09-08 A | RHD4PRSHLPOST1600 | 100% |  |  |  |  | RHD4 - (7 Days - 8 Hours)-48 | Z3 | PROC | ST |
| RHD4PRSHLDOSST1102 |  | Delivery for UPVC pipes Zone 3 - SHL-DOS | 6d | 2026-09-09 A | 2026-09-14 A | RHD4PRSHLPOST1100, RHD4PRSHLDOSST1602 | 100% |  |  |  |  | RHD4 - (7 Days - 8 Hours)-48 | Z3 | PROC | ST |
| RHD4PRSHLDOSST1302 |  | Delivery for Catch basin Zone 3 - SHL-DOS | 6d | 2026-09-12 A | 2026-09-17 A | RHD4PRSHLPOST1300, RHD4PRSHLDOSST1602, RHD4PRSHLPOST1000, RHD4PRSHLDOSST1008 SS, RHD4PRSHLDOSST1608, RHD4PRSHLDOSST1008, RHD4PRSHLDOSST1604, RHD4PRSHLDOSST1004, RHD4PRSHLDOSST1003 | 100% |  |  |  |  | RHD4 - (7 Days - 8 Hours)-48 | Z3 | PROC | ST |
| RHD4PRSHLDOSST1702 |  | Delivery for Metal Works (Stairs - Manhole Covers) Zone 3 - SHL-DOS | 6d | 2026-11-10 | 2026-11-15 | RHD4PRSHLPOST1700 |  |  |  | -196.02d | 0d | RHD4 - (7 Days - 8 Hours)-48 | Z3 | PROC | ST |
|  | 4 | **RHD4-02-002-SHL-Material Delivery on Site - DOS -Storm Network - ST - Zone 4** |  | 2026-02-16 | 2026-11-15 |  |  |  |  |  |  |  |  |  |  |
| RHD4PRSHLDOSST1003 |  | Delivery for GRP pipes Zone 4 - SHL-DOS(Completed) | 30d | 2026-02-16 A | 2026-08-03 A | RHD4PRSHLPOST1000, RHD4PRSHLDOSST1008 | 100% | 2026-06-12 | 2026-07-11 |  |  | RHD4 - (7 Days - 8 Hours)-48 | Z4 | PROC | ST |
| RHD4PRSHLDOSST1103 |  | Delivery for UPVC pipes Zone 4 - SHL-DOS | 6d | 2026-09-03 A | 2026-09-08 A | RHD4PRSHLPOST1100, RHD4PRSHLDOSST1603 | 100% |  |  |  |  | RHD4 - (7 Days - 8 Hours)-48 | Z4 | PROC | ST |
| RHD4PRSHLDOSST1303 |  | Delivery for Catch basin Zone 4 - SHL-DOS | 6d | 2026-09-03 A | 2026-09-08 A | RHD4PRSHLPOST1300 | 100% |  |  |  |  | RHD4 - (7 Days - 8 Hours)-48 | Z4 | PROC | ST |
| RHD4PRSHLDOSST1603 |  | Delivery for Precast Concrete Zone 4 - SHL-DOS | 6d | 2026-09-03 A | 2026-09-08 A | RHD4PRSHLPOST1600 | 100% |  |  |  |  | RHD4 - (7 Days - 8 Hours)-48 | Z4 | PROC | ST |
| RHD4PRSHLDOSST1703 |  | Delivery for Metal Works (Stairs - Manhole Covers) Zone 4 - SHL-DOS | 6d | 2026-11-10 | 2026-11-15 | RHD4PRSHLPOST1700, RHD4PRSHLDOSST1303 |  |  |  | -196.02d | 0d | RHD4 - (7 Days - 8 Hours)-48 | Z4 | PROC | ST |

| ID | WBS | Activity | Duration | Start | Finish | Predecessors | Complete | Remaining | Planned start | Planned finish | Total float | Free float | Calendar | RDH4-01-001-Zones-1 | RDH4-01-001-Phases-1 | RDH4-01-001-Networks-1 |
| --- | --- | --- | --- | --- | --- | --- | --- | --- | --- | --- | --- | --- | --- | --- | --- | --- |
|  | 5 | **RHD4-02-002-SHL-Material Delivery on Site - DOS -Storm Network - ST - Zone 5** |  | 2026-02-16 | 2026-12-25 |  |  |  |  |  |  |  |  |  |  |  |
| RHD4PRSHLDOSST1004 |  | Delivery for GRP pipes Zone 5 - SHL-DOS(Completed) | 30d | 2026-02-16 A | 2026-08-03 A | RHD4PRSHLPOST1000, RHD4PRSHLDOSST1005, RHD4PRSHLSTAGST1600, RHD4PRSHLSTAGST1101, RHD4PRSHLSTAGST1607, RHD4PRSHLSTAGSW1300, RHD4PRSHLSTAGSW1301, RHD4PRSHLSTAGSW1003, RHD4PRSHLSTAPTCr1000, RHD4PRSHLSTAGLFS1100, RHD4PRSHLSTAGLFS1300, RHD4PRSHLSTAGLFS1400, RHD4PRSHLSTAGLFS1500, RHD4PRSHLSTAGLFS1600, RHD4PRSHLSTAGLFS1700, RHD4PRSHLSTAGLFS1800, RHD4PRSHLSTAGLFS1900, RHD4PRSHLSTAGLFS2100, RHD4PRSHLSTAGLFS2200, RHD4PRSHLSTAGLFS2300, RHD4PRSHLSTAGLFS2500, RHD4PRSHLSTAGLFS2600, RHD4PRSHLSTAGLFS2800, RHD4PRSHLSTAGLFS2900, RHD4PRSHLSTAGLFS3100, RHD4PRSHLPOSL1200, RHD4PRSHLPOSL1400, RHD4PRSHLSTAGLS1000, RHD4PRSHLSTAGLFS2400, RHD4PRSHLSTAGLFS1200, RHD4PRSHLSTAGSW1407, RHD4PRSHLSTAGSW1404, RHD4PRSHLSTAGSW1308, RHD4PRSHLSTAGSW1408, RHD4PRSHLSTAGSW1401, RHD4PRSHLSTAGST1602, RHD4PRSHLSTAGST1603, RHD4PRSHLSTAGST1303, RHD4PRSHLSTAGST1606, RHD4PRSHLSTAIRRC1000, RHD4PRSHLSTAGST1601, RHD4PRSHLSTAGRD1600, RHD4PRSHLSTAGRD1200, RHD4CZ8L04RW3000, RHD4CZ9L06RW3000, RHD4CZ6RA01RA3000, RHD4PRSHLSTAGMV1000, RHD4PRSHLSTAGST1105, RHD4PRSHLSTAGMV1400, RHD4PRSHLSTAGPT1200, RHD4PRSHLSTAGLV1200, RHD4PRSHLSTAGLV1300, RHD4PRSHLSTAGLV1000, RHD4PRSHLSTAGSW1305, RHD4PRSHLSTAGLV1100, RHD4PRSHLSTAGST1305, RHD4PRSHLSTAGMV1300, RHD4PRSHLSTAGMV1100, RHD4PRSHLSTAGMV1200, RHD4PRSHLSTAGST1605, RHD4PRSHLSTAGRD1100, RHD4PRSHLSTAGRD1000, RHD4CZ6C062RW3000, RHD4PRSHLSTAGIRR1000, RHD4PRSHLSTAGST1104, RHD4PRSHLSTAGST1604 | 100% |  | 2026-02-12 | 2026-03-13 |  |  | RHD4 - (7 Days - 8 Hours)-48 | Z5 | PROC | ST |
| RHD4PRSHLDOSST1604 |  | Delivery for Precast Concrete Zone 5 - SHL-DOS | 6d | 2026-06-08 A | 2026-10-31 A | RHD4PRSHLPOST1600 | 100% |  | 2026-01-27 | 2026-02-01 |  |  | RHD4 - (7 Days - 8 Hours)-48 | Z5 | PROC | ST |
| RHD4PRSHLDOSST1504 |  | Delivery for Tensile reinforcement steel Zone 5 - SHL-DOS | 6d | 2026-06-15 A | 2026-06-20 A | RHD4PRSHLPOST1500, RHD4PRSHLDOSST1501 | 100% |  |  |  |  |  | RHD4 - (7 Days - 8 Hours)-48 | Z5 | PROC | ST |
| RHD4PRSHLDOSST1104 |  | Delivery for UPVC pipes Zone 5 - SHL-DOS | 6d | 2026-08-03 A | 2026-08-08 A | RHD4PRSHLPOST1100 | 100% |  |  |  |  |  | RHD4 - (7 Days - 8 Hours)-48 | Z5 | PROC | ST |
| RHD4PRSHLDOSST1304 |  | Delivery for Catch basin Zone 5 - SHL-DOS | 6d | 2026-08-05 A | 2026-12-25 | RHD4PRSHLPOST1300, RHD4PRSHLDOSST1104, RHD4PRSHLDOSST1604, RHD4PRSHLPOST1000, RHD4PRSHLDOSST1004 | 50% | 6d | 2026-03-14 | 2026-03-19 | -229d | 0d | RHD4 - (7 Days - 8 Hours)-48 | Z5 | PROC | ST |
| RHD4PRSHLDOSST1204 |  | Delivery for HDPE pipes Zone 5 - SHL-DOS | 6d | 2026-08-09 A | 2026-08-14 A | RHD4PRSHLPOST1200, RHD4PRSHLDOSST1104, RHD4PRSHLDOSST1604, RHD4PRSHLPOST1000, RHD4PRSHLDOSST1004 | 100% |  |  |  |  |  | RHD4 - (7 Days - 8 Hours)-48 | Z5 | PROC | ST |
| RHD4PRSHLDOSST1704 |  | Delivery for Metal Works (Stairs - Manhole Covers) Zone 5 - SHL-DOS | 6d | 2026-09-16 A | 2026-09-21 A | RHD4PRSHLPOST1700 | 100% |  | 2026-11-12 | 2026-11-17 |  |  | RHD4 - (7 Days - 8 Hours)-48 | Z5 | PROC | ST |
|  | 6 | **RHD4-02-002-SHL-Material Delivery on Site - DOS -Storm Network - ST - Zone 6** |  | 2026-02-16 | 2026-09-21 |  |  |  |  |  |  |  |  |  |  |  |
| RHD4PRSHLDOSST1005 |  | Delivery for GRP pipes Zone 6 - SHL-DOS(Completed) | 30d | 2026-02-16 A | 2026-08-03 A | RHD4PRSHLPOST1000, RHD4PRSHLSTAGLFS3000, RHD4PRSHLPOLV1400, RHD4GNPERMITENV3000, RHD4PRSHLPOPT1200 | 100% |  | 2026-01-13 | 2026-02-11 |  |  | RHD4 - (7 Days - 8 Hours)-48 | Z6 | PROC | ST |
| RHD4PRSHLDOSST1105 |  | Delivery for UPVC pipes Zone 6 - SHL-DOS | 6d | 2026-09-03 A | 2026-09-08 A | RHD4PRSHLPOST1100 | 100% |  |  |  |  |  | RHD4 - (7 Days - 8 Hours)-48 | Z6 | PROC | ST |
| RHD4PRSHLDOSST1305 |  | Delivery for Catch basin Zone 6 - SHL-DOS | 6d | 2026-09-03 A | 2026-09-08 A | RHD4PRSHLPOST1300 | 100% |  |  |  |  |  | RHD4 - (7 Days - 8 Hours)-48 | Z6 | PROC | ST |
| RHD4PRSHLDOSST1605 |  | Delivery for Precast Concrete Zone 6 - SHL-DOS | 6d | 2026-09-03 A | 2026-09-08 A | RHD4PRSHLPOST1600 | 100% |  |  |  |  |  | RHD4 - (7 Days - 8 Hours)-48 | Z6 | PROC | ST |
| RHD4PRSHLDOSST1705 |  | Delivery for Metal Works (Stairs - Manhole Covers) Zone 6 - SHL-DOS | 6d | 2026-09-16 A | 2026-09-21 A | RHD4PRSHLPOST1700 | 100% |  |  |  |  |  | RHD4 - (7 Days - 8 Hours)-48 | Z6 | PROC | ST |
|  | 8 | **RHD4-02-002-SHL-Material Delivery on Site - DOS -Storm Network - ST - Zone 7** |  | 2026-02-16 | 2026-09-27 |  |  |  |  |  |  |  |  |  |  |  |
| RHD4PRSHLDOSST1006 |  | Delivery for GRP pipes Zone 7 - SHL-DOS(Completed) | 30d | 2026-02-16 A | 2026-08-03 A | RHD4PRSHLPOST1000, RHD4PRSHLDOSST1005 SS, RHD4PRSHLDOSST1004, RHD4CZ9C071RW3000, RHD4CZ9L02RW3000, RHD4PRSHLSTAGST1100, RHD4PRSHLSTAGST1401, RHD4PRSHLSTAGST1102, RHD4PRSHLSTAGST1107, RHD4PRSHLSTAGST1707, RHD4PRSHLSTAGSW1000, RHD4PRSHLSTAGSW1400, RHD4PRSHLSTAGSW1001, RHD4PRSHLSTAGSW1007, RHD4PRSHLSTAGSW1008, RHD4PRSHLSTAGLFS1000, RHD4PRSHLSTAGLFS2700, RHD4PRSHLSTAGST1702, RHD4PRSHLSTAGSW1103, RHD4PRSHLSTAGSW1504, RHD4PRSHLSTAGSW1108, RHD4PRSHLSTAGLV1500, RHD4PRSHLSTAGSW1405, RHD4PRSHLSTAGST1706, RHD4PRSHLSTAGST1708, RHD4PRSHLSTAPTCr1300, RHD4PRSHLSTAGST1705, RHD4PRSHLSTAGST1701, RHD4PRSHLSTAGST1504, RHD4PRSHLSTAGST1306, RHD4CZ8RA04RA3000, RHD4PRSHLSTAGST1608, RHD4PRSHLSTAGST1703, RHD4PRSHLSTAGST1103, RHD4PRSHLSTAGSW1406, RHD4PRSHLSTAGSW1306, RHD4PRSHLSTAGRD1300, RHD4PRSHLSTAGRD1400, RHD4PRSHLSTAGRD1500, RHD4PRSHLSTAGST1106, RHD4PRSHLSTAGST1501, RHD4PRSHLSTACCTV1200, RHD4PRSHLSTACCTV1100, RHD4PRSHLSTACCTV1300, RHD4PRSHLSTAGST1400, RHD4PRSHLSTACCTV1000, RHD4CZ7C032RW3000, RHD4PRSHLSTAGICT1200, RHD4PRSHLSTAGST1700, RHD4PRSHLSTAGPT1500, RHD4PRSHLSTAGPT1400, RHD4PRSHLSTAGST1108, RHD4PRSHLSTAGST1005, RHD4PRSHLSTAGSW1005, RHD4PRSHLSTAGIRR1200, RHD4PRSHLSTAGIRR1100, RHD4PRSHLSTAGSW1104, RHD4PRSHLSTAGSW1004, RHD4PRSHLSTAGST1704 | 100% |  | 2026-03-14 | 2026-04-12 |  |  | RHD4 - (7 Days - 8 Hours)-48 | Z7 | PROC | ST |
| RHD4PRSHLDOSST1106 |  | Delivery for UPVC pipes Zone 7 - SHL-DOS | 6d | 2026-08-03 A | 2026-08-08 A | RHD4PRSHLPOST1100, RHD4PRSHLDOSST1606, RHD4PRSHLDOSST1105 | 100% |  |  |  |  |  | RHD4 - (7 Days - 8 Hours)-48 | Z7 | PROC | ST |
| RHD4PRSHLDOSST1206 |  | Delivery for HDPE pipes Zone 7 - SHL-DOS | 6d | 2026-08-03 A | 2026-08-08 A | RHD4PRSHLPOST1200, RHD4PRSHLDOSST1606 | 100% |  |  |  |  |  | RHD4 - (7 Days - 8 Hours)-48 | Z7 | PROC | ST |
| RHD4PRSHLDOSST1606 |  | Delivery for Precast Concrete Zone 7 - SHL-DOS | 6d | 2026-08-03 A | 2026-08-08 A | RHD4PRSHLPOST1600 | 100% |  |  |  |  |  | RHD4 - (7 Days - 8 Hours)-48 | Z7 | PROC | ST |
| RHD4PRSHLDOSST1306 |  | Delivery for Catch basin Zone 7 - SHL-DOS | 6d | 2026-08-18 A | 2026-08-23 A | RHD4PRSHLPOST1300, RHD4PRSHLDOSST1305, RHD4PRSHLDOSST1606, RHD4PRSHLPOST1000, RHD4PRSHLDOSST1006, RHD4PRSHLDOSST1605, RHD4PRSHLDOSST1005, RHD4CZ2C082RW2000, RHD4CZ7A012RW3000, RHD4CZ4RA02RA3000, RHD4CZ7L03RW3000, RHD4PRSHLSTAGST1304, RHD4CZ5RA07RA3000, RHD4PRSHLSTAGST1004 | 100% |  |  |  |  |  | RHD4 - (7 Days - 8 Hours)-48 | Z7 | PROC | ST |
| RHD4PRSHLDOSST1706 |  | Delivery for Metal Works (Stairs - Manhole Covers) Zone 7 - SHL-DOS | 6d | 2026-09-22 A | 2026-09-27 A | RHD4PRSHLPOST1700, RHD4PRSHLDOSST1705 | 100% |  |  |  |  |  | RHD4 - (7 Days - 8 Hours)-48 | Z7 | PROC | ST |
|  | 7 | **RHD4-02-002-SHL-Material Delivery on Site - DOS -Storm Network - ST - Zone 8** |  | 2026-06-26 | 2026-11-15 |  |  |  |  |  |  |  |  |  |  |  |
| RHD4PRSHLDOSST1007 |  | Delivery for GRP pipes Zone 8 - SHL-DOS(Completed) | 30d | 2026-06-26 A | 2026-08-03 A | RHD4PRSHLPOST1000, RHD4PRSHLDOSST1006 | 100% |  | 2026-04-13 | 2026-05-12 |  |  | RHD4 - (7 Days - 8 Hours)-48 | Z8 | PROC | ST |
| RHD4PRSHLDOSST1107 |  | Delivery for UPVC pipes Zone 8 - SHL-DOS | 6d | 2026-08-19 A | 2026-08-24 A | RHD4PRSHLPOST1100, RHD4PRSHLDOSST1607 | 100% |  |  |  |  |  | RHD4 - (7 Days - 8 Hours)-48 | Z8 | PROC | ST |
| RHD4PRSHLDOSST1307 |  | Delivery for Catch basin Zone 8 - SHL-DOS | 6d | 2026-08-19 A | 2026-08-24 A | RHD4PRSHLPOST1300, RHD4PRSHLDOSST1107, RHD4PRSHLDOSST1607, RHD4PRSHLPOST1000, RHD4PRSHLDOSST1007 | 100% |  |  |  |  |  | RHD4 - (7 Days - 8 Hours)-48 | Z8 | PROC | ST |
| RHD4PRSHLDOSST1607 |  | Delivery for Precast Concrete Zone 8 - SHL-DOS | 6d | 2026-08-19 A | 2026-08-24 A | RHD4PRSHLPOST1600 | 100% |  |  |  |  |  | RHD4 - (7 Days - 8 Hours)-48 | Z8 | PROC | ST |
| RHD4PRSHLDOSST1707 |  | Delivery for Metal Works (Stairs - Manhole Covers) Zone 8 - SHL-DOS | 6d | 2026-11-10 | 2026-11-15 | RHD4PRSHLPOST1700, RHD4PRSHLDOSST1704 |  |  |  |  | -196.02d | 0d | RHD4 - (7 Days - 8 Hours)-48 | Z8 | PROC | ST |

| ID | WBS | Activity | Duration | Start | Finish | Predecessors | Complete | Planned start | Planned finish | Total float | Free float | Calendar | RDH4-01-001-Zones-1 | RDH4-01-001-Phases-1 | RDH4-01-001-Networks-1 |
| --- | --- | --- | --- | --- | --- | --- | --- | --- | --- | --- | --- | --- | --- | --- | --- |
|  | 9 | **RHD4-02-002-SHL-Material Delivery on Site - DOS -Storm Network - ST - Zone 9** |  | 2026-02-16 | 2026-11-15 |  |  |  |  |  |  |  |  |  |  |
| RHD4PRSHLDOSST1008 |  | Delivery for GRP pipes Zone 9 - SHL-DOS(Completed) | 30d | 2026-02-16 A | 2026-08-03 A | RHD4PRSHLPOST1000, RHD4PRSHLDOSST1004 SS, RHD4PRSHLDOSST1007, RHD4CZ3C011RW2000, RHD4PRSHLSTAGSW1304, RHD4CZ1C081RW2000, RHD4CZ7C02ST4600 | 100% | 2026-05-13 | 2026-06-11 |  |  | RHD4 - (7 Days - 8 Hours)-48 | Z9 | PROC | ST |
| RHD4PRSHLDOSST1108 |  | Delivery for UPVC pipes Zone 9 - SHL-DOS | 6d | 2026-08-18 A | 2026-08-23 A | RHD4PRSHLPOST1100, RHD4PRSHLDOSST1608, RHD4PRSHLDOSST1104 | 100% |  |  |  |  | RHD4 - (7 Days - 8 Hours)-48 | Z9 | PROC | ST |
| RHD4PRSHLDOSST1308 |  | Delivery for Catch basin Zone 9 - SHL-DOS | 6d | 2026-08-18 A | 2026-08-23 A | RHD4PRSHLPOST1300, RHD4PRSHLDOSST1300 | 100% |  |  |  |  | RHD4 - (7 Days - 8 Hours)-48 | Z9 | PROC | ST |
| RHD4PRSHLDOSST1608 |  | Delivery for Precast Concrete Zone 9 - SHL-DOS | 6d | 2026-08-18 A | 2026-08-23 A | RHD4PRSHLPOST1600, RHD4PRSHLDOSST1604 | 100% |  |  |  |  | RHD4 - (7 Days - 8 Hours)-48 | Z9 | PROC | ST |
| RHD4PRSHLDOSST1708 |  | Delivery for Metal Works (Stairs - Manhole Covers) Zone 9 - SHL-DOS | 6d | 2026-11-10 | 2026-11-15 | RHD4PRSHLPOST1700 |  |  |  | -196.02d | 0d | RHD4 - (7 Days - 8 Hours)-48 | Z9 | PROC | ST |
|  | 115 | **RHD4-02-002-SHL-Material Delivery on Site - DOS -Sewage Network - SW** |  | 2026-01-14 | 2026-11-21 |  |  |  |  |  |  |  |  |  |  |
|  | 1 | **RHD4-02-002-SHL-Material Delivery on Site - DOS -Sewage Network - SW - Zone 1** |  | 2026-08-04 | 2026-11-20 |  |  |  |  |  |  |  |  |  |  |
| RHD4PRSHLDOSSW1000 |  | Delivery for UPVC pipes Zone 1 - SHL-DOS | 6d | 2026-08-04 A | 2026-08-09 A | RHD4PRSHLDOSSW1103, RHD4PRSHLPOSW1000 | 100% |  |  |  |  | RHD4 - (7 Days - 8 Hours)-48 | Z1 | PROC | SW |
| RHD4PRSHLDOSSW1300 |  | Delivery for Precast Concrete Zone 1 - SHL-DOS | 6d | 2026-08-08 A | 2026-08-13 A | RHD4PRSHLPOSW1300 | 100% |  |  |  |  | RHD4 - (7 Days - 8 Hours)-48 | Z1 | PROC | SW |
| RHD4PRSHLDOSSW1400 |  | Delivery for Metal Works (Stairs - Manhole Covers) Zone 1 - SHL-DOS | 6d | 2026-11-15 | 2026-11-20 | RHD4PRSHLDOSSW1000, RHD4PRSHLPOSW1400 |  |  |  | -201.02d | 0d | RHD4 - (7 Days - 8 Hours)-48 | Z1 | PROC | SW |
|  | 2 | **RHD4-02-002-SHL-Material Delivery on Site - DOS -Sewage Network - SW - Zone 2** |  | 2026-08-08 | 2026-11-15 |  |  |  |  |  |  |  |  |  |  |
| RHD4PRSHLDOSSW1301 |  | Delivery for Precast Concrete Zone 2 - SHL-DOS | 6d | 2026-08-08 A | 2026-08-13 A | RHD4PRSHLPOSW1300 | 100% |  |  |  |  | RHD4 - (7 Days - 8 Hours)-48 | Z2 | PROC | SW |
| RHD4PRSHLDOSSW1101 |  | Delivery for GRP pipes Zone 2 - SHL-DOS | 6d | 2026-08-15 A | 2026-08-20 A | RHD4PRSHLPOSW1100, RHD4PRSHLDOSSW1301 | 100% |  |  |  |  | RHD4 - (7 Days - 8 Hours)-48 | Z2 | PROC | SW |
| RHD4PRSHLDOSSW1001 |  | Delivery for UPVC pipes Zone 2 - SHL-DOS | 6d | 2026-08-22 A | 2026-08-27 A | RHD4PRSHLPOSW1000, RHD4PRSHLDOSSW1101 | 100% |  |  |  |  | RHD4 - (7 Days - 8 Hours)-48 | Z2 | PROC | SW |
| RHD4PRSHLDOSSW1401 |  | Delivery for Metal Works (Stairs - Manhole Covers) Zone 2 - SHL-DOS | 6d | 2026-11-10 | 2026-11-15 | RHD4PRSHLPOSW1400 |  |  |  | -201d | 0d | RHD4 - (7 Days - 8 Hours)-48 | Z2 | PROC | SW |
|  | 3 | **RHD4-02-002-SHL-Material Delivery on Site - DOS -Sewage Network - SW - Zone 3** |  | 2026-08-08 | 2026-11-15 |  |  |  |  |  |  |  |  |  |  |
| RHD4PRSHLDOSSW1302 |  | Delivery for Precast Concrete Zone 3 - SHL-DOS | 6d | 2026-08-08 A | 2026-08-13 A | RHD4PRSHLPOSW1300 | 100% |  |  |  |  | RHD4 - (7 Days - 8 Hours)-48 | Z3 | PROC | SW |
| RHD4PRSHLDOSSW1502 |  | Delivery for HDPE pipes Zone 3 - SHL-DOS | 6d | 2026-08-10 A | 2026-08-15 A | RHD4PRSHLPOSW1500 | 100% |  |  |  |  | RHD4 - (7 Days - 8 Hours)-48 | Z3 | PROC | SW |
| RHD4PRSHLDOSSW1102 |  | Delivery for GRP pipes Zone 3 - SHL-DOS | 6d | 2026-08-31 A | 2026-09-05 A | RHD4PRSHLPOSW1100 | 100% |  |  |  |  | RHD4 - (7 Days - 8 Hours)-48 | Z3 | PROC | SW |
| RHD4PRSHLDOSSW1202 |  | Delivery for Valves Zone 3 - SHL-DOS | 6d | 2026-11-10 | 2026-11-15 | RHD4PRSHLPOSW1200, RHD4PRSHLDOSSW1102 |  |  |  | -202.02d | 6d | RHD4 - (7 Days - 8 Hours)-48 | Z3 | PROC | SW |
| RHD4PRSHLDOSSW1402 |  | Delivery for Metal Works (Stairs - Manhole Covers) Zone 3 - SHL-DOS | 6d | 2026-11-10 | 2026-11-15 | RHD4PRSHLPOSW1400 |  |  |  | -196.02d | 0d | RHD4 - (7 Days - 8 Hours)-48 | Z3 | PROC | SW |
|  | 4 | **RHD4-02-002-SHL-Material Delivery on Site - DOS -Sewage Network - SW - Zone 4** |  | 2026-01-14 | 2026-11-20 |  |  |  |  |  |  |  |  |  |  |
| RHD4PRSHLDOSSW1103 |  | Delivery for GRP pipes Zone 4 - SHL-DOS(Completed) | 30d | 2026-01-14 A | 2026-08-03 A | RHD4PRSHLPOSW1100 | 100% | 2026-01-14 | 2026-02-12 |  |  | RHD4 - (7 Days - 8 Hours)-48 | Z4 | PROC | SW |
| RHD4PRSHLDOSSW1003 |  | Delivery for UPVC pipes Zone 4 - SHL-DOS | 6d | 2026-08-15 A | 2026-08-20 A | RHD4PRSHLPOSW1000 | 100% |  |  |  |  | RHD4 - (7 Days - 8 Hours)-48 | Z4 | PROC | SW |
| RHD4PRSHLDOSSW1303 |  | Delivery for Precast Concrete Zone 4 - SHL-DOS | 6d | 2026-08-15 A | 2026-08-20 A | RHD4PRSHLPOSW1300, RHD4PRSHLDOSSW1304 | 100% |  |  |  |  | RHD4 - (7 Days - 8 Hours)-48 | Z4 | PROC | SW |
| RHD4PRSHLDOSSW1203 |  | Delivery for Valves Zone 4 - SHL-DOS | 6d | 2026-11-10 | 2026-11-15 | RHD4PRSHLPOSW1200 |  |  |  | -202.02d | 0d | RHD4 - (7 Days - 8 Hours)-48 | Z4 | PROC | SW |
| RHD4PRSHLDOSSW1403 |  | Delivery for Metal Works (Stairs - Manhole Covers) Zone 4 - SHL-DOS | 6d | 2026-11-15 | 2026-11-20 | RHD4PRSHLPOSW1400, RHD4PRSHLDOSSW1003 |  |  |  | -201.02d | 1d | RHD4 - (7 Days - 8 Hours)-48 | Z4 | PROC | SW |

| ID | WBS | Activity | Duration | Start | Finish | Predecessors | Complete | Planned start | Planned finish | Total float | Free float | Calendar | RDH4-01-001-Zones-1 | RDH4-01-001-Phases-1 | RDH4-01-001-Networks-1 |
| --- | --- | --- | --- | --- | --- | --- | --- | --- | --- | --- | --- | --- | --- | --- | --- |
|  | 7 | **RHD4-02-002-SHL-Material Delivery on Site - DOS -Sewage Network - SW - Zone 5** |  | 2026-01-14 | 2026-10-08 |  |  |  |  |  |  |  |  |  |  |
| RHD4PRSHLDOSSW1104 |  | Delivery for GRP pipes Zone 5 - SHL-DOS(Completed) | 25d | 2026-01-14 A | 2026-08-03 A | RHD4PRSHLPOSW1100 | 100% | 2026-01-14 | 2026-02-07 |  |  | RHD4 - (7 Days - 8 Hours)-48 | Z5 | PROC | SW |
| RHD4PRSHLDOSSW1004 |  | Delivery for UPVC pipes Zone 5 - SHL-DOS(Completed) | 30d | 2026-01-22 A | 2026-08-03 A | RHD4PRSHLPOSW1000, RHD4PRSHLDOSSW1104 SS | 100% | 2026-01-22 | 2026-02-20 |  |  | RHD4 - (7 Days - 8 Hours)-48 | Z5 | PROC | SW |
| RHD4PRSHLDOSSW1504 |  | Delivery for HDPE pipes Zone 5 - SHL-DOS | 6d | 2026-07-11 A | 2026-07-16 A | RHD4PRSHLPOSW1500 | 100% |  |  |  |  | RHD4 - (7 Days - 8 Hours)-48 | Z5 | PROC | SW |
| RHD4PRSHLDOSSW1304 |  | Delivery for Precast Concrete Zone 5 - SHL-DOS | 6d | 2026-08-08 A | 2026-08-13 A | RHD4PRSHLPOSW1300 | 100% |  |  |  |  | RHD4 - (7 Days - 8 Hours)-48 | Z5 | PROC | SW |
| RHD4PRSHLDOSSW1204 |  | Delivery for Valves Zone 5 - SHL-DOS | 6d | 2026-08-23 A | 2026-08-28 A | RHD4PRSHLPOSW1200, RHD4PRSHLPOSW1000, RHD4PRSHLDOSSW1004, RHD4PRSHLDOSSW1304, RHD4PRSHLPOSW1100, RHD4PRSHLDOSSW1104 | 100% |  |  |  |  | RHD4 - (7 Days - 8 Hours)-48 | Z5 | PROC | SW |
| RHD4PRSHLDOSSW1404 |  | Delivery for Metal Works (Stairs - Manhole Covers) Zone 5 - SHL-DOS | 6d | 2026-10-03 A | 2026-10-08 A | RHD4PRSHLPOSW1400 | 100% |  |  |  |  | RHD4 - (7 Days - 8 Hours)-48 | Z5 | PROC | SW |
|  | 5 | **RHD4-02-002-SHL-Material Delivery on Site - DOS -Sewage Network - SW - Zone 6** |  | 2026-01-22 | 2026-11-21 |  |  |  |  |  |  |  |  |  |  |
| RHD4PRSHLDOSSW1005 |  | Delivery for UPVC pipes Zone 6 - SHL-DOS(Completed) | 30d | 2026-01-22 A | 2026-08-03 A | RHD4PRSHLPOSW1000, RHD4PRSHLDOSSW1004 SS | 100% | 2026-01-22 | 2026-02-20 |  |  | RHD4 - (7 Days - 8 Hours)-48 | Z6 | PROC | SW |
| RHD4PRSHLDOSSW1305 |  | Delivery for Precast Concrete Zone 6 - SHL-DOS | 6d | 2026-11-10 | 2026-11-15 | RHD4PRSHLPOSW1300 |  |  |  | -202.02d | 0d | RHD4 - (7 Days - 8 Hours)-48 | Z6 | PROC | SW |
| RHD4PRSHLDOSSW1405 |  | Delivery for Metal Works (Stairs - Manhole Covers) Zone 6 - SHL-DOS | 6d | 2026-11-16 | 2026-11-21 | RHD4PRSHLPOSW1400, RHD4PRSHLDOSSW1305, RHD4PRSHLPOSW1000, RHD4PRSHLDOSSW1005, RHD4PRSHLDOSSW1004, RHD4PRSHLDOSSW1304, RHD4PRSHLPOSW1100, RHD4PRSHLDOSSW1104 |  |  |  | -202.02d | 0d | RHD4 - (7 Days - 8 Hours)-48 | Z6 | PROC | SW |
|  | 8 | **RHD4-02-002-SHL-Material Delivery on Site - DOS -Sewage Network - SW - Zone 7** |  | 2026-02-16 | 2026-11-21 |  |  |  |  |  |  |  |  |  |  |
| RHD4PRSHLDOSSW1106 |  | Delivery for GRP pipes Zone 7 - SHL-DOS(Completed) | 30d | 2026-02-16 A | 2026-08-03 A | RHD4PRSHLPOSW1100, RHD4PRSHLDOSST1306 | 100% | 2026-04-19 | 2026-05-18 |  |  | RHD4 - (7 Days - 8 Hours)-48 | Z7 | PROC | SW |
| RHD4PRSHLDOSSW1006 |  | Delivery for UPVC pipes Zone 7 - SHL-DOS(Completed) | 30d | 2026-04-19 A | 2026-08-03 A | RHD4PRSHLPOSW1000, RHD4PRSHLDOSSW1106 SS, RHD4PRSHLDOSSW1004 SS | 100% | 2026-04-19 | 2026-05-18 |  |  | RHD4 - (7 Days - 8 Hours)-48 | Z7 | PROC | SW |
| RHD4PRSHLDOSSW1206 |  | Delivery for Valves Zone 7 - SHL-DOS | 6d | 2026-11-10 | 2026-11-15 | RHD4PRSHLPOSW1200 |  |  |  | -208.02d | 0d | RHD4 - (7 Days - 8 Hours)-48 | Z7 | PROC | SW |
| RHD4PRSHLDOSSW1306 |  | Delivery for Precast Concrete Zone 7 - SHL-DOS | 6d | 2026-11-10 | 2026-11-15 | RHD4PRSHLPOSW1300, RHD4PRSHLDOSSW1304 |  |  |  | -196.02d | 0d | RHD4 - (7 Days - 8 Hours)-48 | Z7 | PROC | SW |
| RHD4PRSHLDOSSW1506 |  | Delivery for HDPE pipes Zone 7 - SHL-DOS | 6d | 2026-11-10 | 2026-11-15 | RHD4PRSHLPOSW1500 |  |  |  | -202.02d | 0d | RHD4 - (7 Days - 8 Hours)-48 | Z7 | PROC | SW |
| RHD4PRSHLDOSSW1406 |  | Delivery for Metal Works (Stairs - Manhole Covers) Zone 7 - SHL-DOS | 6d | 2026-11-16 | 2026-11-21 | RHD4PRSHLPOSW1400, RHD4PRSHLDOSSW1206, RHD4PRSHLDOSSW1404 |  |  |  | -202.02d | 0d | RHD4 - (7 Days - 8 Hours)-48 | Z7 | PROC | SW |
|  | 6 | **RHD4-02-002-SHL-Material Delivery on Site - DOS -Sewage Network - SW - Zone 8** |  | 2026-01-14 | 2026-11-21 |  |  |  |  |  |  |  |  |  |  |
| RHD4PRSHLDOSSW1107 |  | Delivery for GRP pipes Zone 8 - SHL-DOS | 15d | 2026-01-14 A | 2026-03-02 A | RHD4PRSHLPOSW1100 | 100% | 2026-01-14 | 2026-01-28 |  |  | RHD4 - (7 Days - 8 Hours)-48 | Z8 | PROC | SW |
| RHD4PRSHLDOSSW1307 |  | Delivery for Precast Concrete Zone 8 - SHL-DOS | 6d | 2026-11-10 | 2026-11-15 | RHD4PRSHLPOSW1300 |  |  |  | -202.02d | 0d | RHD4 - (7 Days - 8 Hours)-48 | Z8 | PROC | SW |
| RHD4PRSHLDOSSW1407 |  | Delivery for Metal Works (Stairs - Manhole Covers) Zone 8 - SHL-DOS | 6d | 2026-11-10 | 2026-11-15 | RHD4PRSHLPOSW1400 |  |  |  | -201d | 0d | RHD4 - (7 Days - 8 Hours)-48 | Z8 | PROC | SW |
| RHD4PRSHLDOSSW1007 |  | Delivery for UPVC pipes Zone 8 - SHL-DOS | 6d | 2026-11-16 | 2026-11-21 | RHD4PRSHLPOSW1000, RHD4PRSHLDOSSW1107, RHD4PRSHLDOSSW1305, RHD4PRSHLDOSSW1005, RHD4PRSHLDOSSW1004, RHD4PRSHLDOSSW1304, RHD4PRSHLPOSW1100, RHD4PRSHLDOSSW1104 |  |  |  | -202.02d | 0d | RHD4 - (7 Days - 8 Hours)-48 | Z8 | PROC | SW |
|  | 9 | **RHD4-02-002-SHL-Material Delivery on Site - DOS -Sewage Network - SW - Zone 9** |  | 2026-02-16 | 2026-11-21 |  |  |  |  |  |  |  |  |  |  |
| RHD4PRSHLDOSSW1108 |  | Delivery for GRP pipes Zone 9 - SHL-DOS(Completed) | 40d | 2026-02-16 A | 2026-08-03 A | RHD4PRSHLPOSW1100 | 100% | 2026-01-14 | 2026-02-22 |  |  | RHD4 - (7 Days - 8 Hours)-48 | Z9 | PROC | SW |
| RHD4PRSHLDOSSW1308 |  | Delivery for Precast Concrete Zone 9 - SHL-DOS | 6d | 2026-11-10 | 2026-11-15 | RHD4PRSHLPOSW1300 |  |  |  | -202.02d | 0d | RHD4 - (7 Days - 8 Hours)-48 | Z9 | PROC | SW |
| RHD4PRSHLDOSSW1408 |  | Delivery for Metal Works (Stairs - Manhole Covers) Zone 9 - SHL-DOS | 6d | 2026-11-10 | 2026-11-15 | RHD4PRSHLPOSW1400 |  |  |  | -201d | 0d | RHD4 - (7 Days - 8 Hours)-48 | Z9 | PROC | SW |
| RHD4PRSHLDOSSW1008 |  | Delivery for UPVC pipes Zone 9 - SHL-DOS | 6d | 2026-11-16 | 2026-11-21 | RHD4PRSHLPOSW1000, RHD4PRSHLDOSSW1308, RHD4PRSHLPOSW1100, RHD4PRSHLDOSSW1108 |  |  |  | -202.02d | 0d | RHD4 - (7 Days - 8 Hours)-48 | Z9 | PROC | SW |

| ID | WBS | Activity | Duration | Start | Finish | Predecessors | Complete | Total float | Free float | Calendar | RDH4-01-001-Phases-1 | RDH4-01-001-Networks-1 |
| --- | --- | --- | --- | --- | --- | --- | --- | --- | --- | --- | --- | --- |
|  | 116 | **RHD4-02-002-SHL-Material Delivery on Site - DOS -Potable Water Network - PT** |  | 2026-09-01 | 2026-11-29 |  |  |  |  |  |  |  |
|  | 1 | **RHD4-02-002-SHL-Material Delivery on Site - DOS -Potable Water Network - PT - Crossings** |  | 2026-11-10 | 2026-11-22 |  |  |  |  |  |  |  |
| RHD4PRSHLDOSPTCr1000 |  | Delivery for HDPE pipes - PTCr - SHL-DOS | 6d | 2026-11-10 | 2026-11-15 | RHD4PRSHLPOPT1000 |  | -201d | 0d | RHD4 - (7 Days - 8 Hours)-48 | PROC | PT |
| RHD4PRSHLDOSPTCr1100 |  | Delivery for Precast Concrete - PTCr - SHL-DOS | 6d | 2026-11-10 | 2026-11-15 | RHD4PRSHLPOPT1300 |  | -208.02d | 6d | RHD4 - (7 Days - 8 Hours)-48 | PROC | PT |
| RHD4PRSHLDOSPTCr1200 |  | Delivery for Valves - PTCr - SHL-DOS | 6d | 2026-11-10 | 2026-11-15 | RHD4PRSHLPOPT1100 |  | -214.02d | 0d | RHD4 - (7 Days - 8 Hours)-48 | PROC | PT |
| RHD4PRSHLDOSPTCr1300 |  | Delivery for Stem and Surface box - PTCr - SHL-DOS | 6d | 2026-11-10 | 2026-11-15 | RHD4PRSHLPOPT1400 |  | -196.02d | 12d | RHD4 - (7 Days - 8 Hours)-48 | PROC | PT |
| RHD4PRSHLDOSPTCr1500 |  | Delivery for Fire Hydrants - PTCr - SHL-DOS | 6d | 2026-11-16 | 2026-11-21 | RHD4PRSHLDOSPTCr1200, RHD4PRSHLPOPT1200 |  | -208.02d | 0d | RHD4 - (7 Days - 8 Hours)-48 | PROC | PT |
| RHD4PRSHLDOSPTCr1400 |  | Delivery for Metal Works (Chamber's Covers) - PTCr - SHL-DOS | 6d | 2026-11-17 | 2026-11-22 | RHD4PRSHLPOPT1500 |  | -209.02d | 5d | RHD4 - (7 Days - 8 Hours)-48 | PROC | PT |
|  | 2 | **RHD4-02-002-SHL-Material Delivery on Site - DOS -Potable Water Network - PT - Network** |  | 2026-09-01 | 2026-11-29 |  |  |  |  |  |  |  |
| RHD4PRSHLDOSPT1000 |  | Delivery for HDPE pipes - PT - SHL-DOS | 6d | 2026-09-01 A | 2026-09-06 A | RHD4PRSHLSTAGST1007, RHD4PRSHLPOPT1000, RHD4PRSHLDOSSW1106, RHD4CZ6C062ST4700 | 100% |  |  | RHD4 - (7 Days - 8 Hours)-48 | PROC | PT |
| RHD4PRSHLDOSPT1100 |  | Delivery for Precast Concrete - PT - SHL-DOS | 6d | 2026-09-08 A | 2026-09-13 A | RHD4PRSHLDOSPT1000, RHD4CZ5L08RW2000 | 100% |  |  | RHD4 - (7 Days - 8 Hours)-48 | PROC | PT |
| RHD4PRSHLDOSPT1300 |  | Delivery for Stem and Surface box - PT - SHL-DOS | 6d | 2026-10-22 A | 2026-10-27 A | RHD4PRSHLDOSPT1100, RHD4PRSHLPOPT1400, RHD4PRSHLSTAGSW1006, RHD4PRSHLSTAGSW1106, RHD4PRSHLSTAGST1307 | 100% |  |  | RHD4 - (7 Days - 8 Hours)-48 | PROC | PT |
| RHD4PRSHLDOSPT1200 |  | Delivery for Valves - PT - SHL-DOS | 6d | 2026-11-10 | 2026-11-15 | RHD4PRSHLPOPT1100 |  | -202.02d | 0d | RHD4 - (7 Days - 8 Hours)-48 | PROC | PT |
| RHD4PRSHLDOSPT1400 |  | Delivery for Metal Works (Chamber's Covers) - PT - SHL-DOS | 6d | 2026-11-17 | 2026-11-22 | RHD4PRSHLPOPT1500, RHD4PRSHLDOSPT1200 |  | -203.02d | 0d | RHD4 - (7 Days - 8 Hours)-48 | PROC | PT |
| RHD4PRSHLDOSPT1500 |  | Delivery for Fire Hydrants - PT - SHL-DOS | 6d | 2026-11-24 | 2026-11-29 | RHD4PRSHLDOSPT1200, RHD4PRSHLPOPT1200, RHD4ENMARAPPEW100 |  | -210.02d | 0d | RHD4 - (7 Days - 8 Hours)-48 | PROC | PT |
|  | 117 | **RHD4-02-002-SHL-Material Delivery on Site - DOS -Irrigation Network - IRR** |  | 2026-08-17 | 2027-01-06 |  |  |  |  |  |  |  |
|  | 1 | **RHD4-02-002-SHL-Material Delivery on Site - DOS -Irrigation Network - IRR - Crossings** |  | 2026-11-10 | 2026-11-27 |  |  |  |  |  |  |  |
| RHD4PRSHLDOSIRRC1000 |  | Delivery for HDPE pipes - IRRC - SHL-DOS | 6d | 2026-11-10 | 2026-11-15 | RHD4PRSHLPOIRR1000 |  | -220.02d | 0d | RHD4 - (7 Days - 8 Hours)-48 | PROC | IRR |
| RHD4PRSHLDOSIRRC1100 |  | Delivery for Valves - IRRC - SHL-DOS | 6d | 2026-11-10 | 2026-11-15 | RHD4PRSHLPOIRR1100 |  | -220.02d | 0d | RHD4 - (7 Days - 8 Hours)-48 | PROC | IRR |
| RHD4PRSHLDOSIRRC1200 |  | Delivery for Precast Concrete - IRRC - SHL-DOS | 6d | 2026-11-16 | 2026-11-21 | RHD4PRSHLDOSIRRC1000, RHD4PRSHLPOIRR1200 |  | -220.02d | 0d | RHD4 - (7 Days - 8 Hours)-48 | PROC | IRR |
| RHD4PRSHLDOSIRRC1300 |  | Delivery for Stem and Surface box - IRRC - SHL-DOS | 6d | 2026-11-16 | 2026-11-21 | RHD4PRSHLDOSIRRC1100, RHD4PRSHLPOIRR1300 |  | -214.02d | 0d | RHD4 - (7 Days - 8 Hours)-48 | PROC | IRR |
| RHD4PRSHLDOSIRRC1400 |  | Delivery for Metal Works (Chamber's Covers) - IRRC - SHL-DOS | 6d | 2026-11-22 | 2026-11-27 | RHD4PRSHLDOSIRRC1300, RHD4PRSHLPOIRR1400 |  | -214.02d | 6d | RHD4 - (7 Days - 8 Hours)-48 | PROC | IRR |
|  | 2 | **RHD4-02-002-SHL-Material Delivery on Site - DOS -Irrigation Network - IRR - Network** |  | 2026-08-17 | 2027-01-06 |  |  |  |  |  |  |  |
| RHD4PRSHLDOSIRR1300 |  | Delivery for Stem and Surface box - IRR - SHL-DOS | 6d | 2026-08-17 A | 2026-08-22 A | RHD4PRSHLPOIRR1300, RHD4PRSHLDOSIRR1100, RHD4PRSHLDOSPT1300, RHD4CZ6A015ICT3100, RHD4PRSHLSTAGPT1000 | 100% |  |  | RHD4 - (7 Days - 8 Hours)-48 | PROC | IRR |
| RHD4PRSHLDOSIRR1000 |  | Delivery for HDPE pipes - IRR - SHL-DOS | 6d | 2026-11-10 | 2026-11-15 | RHD4PRSHLPOIRR1000 |  | -202.02d | 0d | RHD4 - (7 Days - 8 Hours)-48 | PROC | IRR |
| RHD4PRSHLDOSIRR1100 |  | Delivery for Valves - IRR - SHL-DOS | 6d | 2026-11-10 | 2026-11-15 | RHD4PRSHLPOIRR1100 |  | -196.02d | 0d | RHD4 - (7 Days - 8 Hours)-48 | PROC | IRR |
| RHD4PRSHLDOSIRR1200 |  | Delivery for Precast Concrete - IRR - SHL-DOS | 6d | 2026-11-16 | 2026-11-21 | RHD4PRSHLPOIRR1200, RHD4PRSHLDOSIRR1000 |  | -202.02d | 0d | RHD4 - (7 Days - 8 Hours)-48 | PROC | IRR |
| RHD4PRSHLDOSIRR1400 |  | Delivery for Metal Works (Chamber's Covers) - IRR - SHL-DOS | 6d | 2027-01-01 | 2027-01-06 | RHD4PRSHLPOIRR1400, RHD4PRSHLDOSPT1300 |  | -233d | 0d | RHD4 - (7 Days - 8 Hours)-48 | PROC | IRR |

| ID | WBS | Activity | Duration | Start | Finish | Predecessors | Complete | Total float | Free float | Calendar | RDH4-01-001-Phases-1 | RDH4-01-001-Networks-1 |
| --- | --- | --- | --- | --- | --- | --- | --- | --- | --- | --- | --- | --- |
|  | 118 | **RHD4-02-002-SHL-Material Delivery on Site - DOS -Medium Voltage - MV** |  | 2026-11-10 | 2026-12-13 |  |  |  |  |  |  |  |
| RHD4PRSHLDOSMV1000 |  | Delivery for UPVC Pipes for Duct Banks - SHL-DOS | 6d | 2026-11-10 | 2026-11-15 | RHD4PRSHLPOMV1000 |  | -201d | 0d | RHD4 - (7 Days - 8 Hours)-48 | PROC | MV |
| RHD4PRSHLDOSMV1100 |  | Delivery for Medium Voltage Cable 3Cx500 mm2 - SHL-DOS | 6d | 2026-12-08 | 2026-12-13 | RHD4PRSHLPOMV1100 |  | -229d | 0d | RHD4 - (7 Days - 8 Hours)-48 | PROC | MV |
| RHD4PRSHLDOSMV1200 |  | Delivery for Medium Voltage Cable 3Cx50 mm2 - SHL-DOS | 6d | 2026-12-08 | 2026-12-13 | RHD4PRSHLPOMV1200 |  | -229d | 0d | RHD4 - (7 Days - 8 Hours)-48 | PROC | MV |
| RHD4PRSHLDOSMV1300 |  | Delivery for Straight Joints 3Cx50 mm2 - SHL-DOS | 6d | 2026-12-08 | 2026-12-13 | RHD4PRSHLPOMV1300 |  | -229d | 0d | RHD4 - (7 Days - 8 Hours)-48 | PROC | MV |
| RHD4PRSHLDOSMV1400 |  | Delivery for Normally Open Points (Outdoor type) - SHL-DOS | 6d | 2026-12-08 | 2026-12-13 | RHD4PRSHLPOMV1400 |  | -229d | 0d | RHD4 - (7 Days - 8 Hours)-48 | PROC | MV |
|  | 119 | **RHD4-02-002-SHL-Material Delivery on Site - DOS -Low Voltage - LV** |  | 2026-11-10 | 2027-01-11 |  |  |  |  |  |  |  |
| RHD4PRSHLDOSLV1000 |  | Delivery for UPVC Pipes for Duct Banks - SHL-DOS | 6d | 2026-11-10 | 2026-11-15 | RHD4PRSHLPOLV1000 |  | -201d | 0d | RHD4 - (7 Days - 8 Hours)-48 | PROC | LV |
| RHD4PRSHLDOSLV1100 |  | Delivery for Low voltage Cables - SHL-DOS | 6d | 2026-11-10 | 2026-11-15 | RHD4PRSHLPOLV1100 |  | -201d | 0d | RHD4 - (7 Days - 8 Hours)-48 | PROC | LV |
| RHD4PRSHLDOSLV1200 |  | Delivery for Distribution Pillars - SHL-DOS | 6d | 2026-12-01 | 2026-12-06 | RHD4PRSHLPOLV1200 |  | -222d | 0d | RHD4 - (7 Days - 8 Hours)-48 | PROC | LV |
| RHD4PRSHLDOSLV1300 |  | Delivery for KWH Meter mounting Frame - SHL-DOS | 6d | 2026-12-01 | 2026-12-06 | RHD4PRSHLPOLV1300 |  | -222d | 0d | RHD4 - (7 Days - 8 Hours)-48 | PROC | LV |
| RHD4PRSHLDOSLV1500 |  | Delivery for Earthing for Pillars and Panels - SHL-DOS | 6d | 2026-12-01 | 2026-12-06 | RHD4PRSHLPOLV1500 |  | -217.02d | 0d | RHD4 - (7 Days - 8 Hours)-48 | PROC | LV |
| RHD4PRSHLDOSLV1400 |  | Delivery for Low Voltage Drawpit - SHL-DOS | 6d | 2027-01-05 | 2027-01-11 | RHD4PRSHLDOSLV1000, RHD4PRSHLDOSIRR1300, RHD4CZ6A015TC3400, RHD4PRSHLSTAGPT1100, RHD4PRSHLPOLV1400 |  | -231.02d | 0d | RHD4 - (7 Days - 8 Hours)-48 | PROC | LV |
|  | 120 | **RHD4-02-002-SHL-Material Delivery on Site - DOS -Street Lighting Network -SL** |  | 2026-09-08 | 2027-01-17 |  |  |  |  |  |  |  |
| RHD4PRSHLDOSSL1000 |  | Delivery for UPVC Pipes for Duct Banks - SHL-DOS | 6d | 2026-09-08 A | 2026-09-13 A | RHD4PRSHLDOSLV1000, RHD4PRSHLDOSSL1300, RHD4PRSHLPOSL1000 | 100% |  |  | RHD4 - (7 Days - 8 Hours)-48 | PROC | SL |
| RHD4PRSHLDOSSL1400 |  | Delivery for Street Lighting Drawpit - SHL-DOS | 6d | 2026-10-01 A | 2026-10-06 A | RHD4ENMSSL2000, RHD4PRSHLDOSLV1400, RHD4PRSHLDOSLV1400 FF, RHD4PRSHLPOSL1400 | 100% |  |  | RHD4 - (7 Days - 8 Hours)-48 | PROC | SL |
| RHD4PRSHLDOSSL1200 |  | Delivery for Lighting Poles - SHL-DOS | 6d | 2026-10-13 A | 2026-10-18 A | RHD4PRSHLDOSLV1100 SS, RHD4PRSHLDOSSL1400, RHD4CZ6A015ST7300, RHD4CZ4C012RW2000, RHD4PRSHLPOSL1200 | 100% |  |  | RHD4 - (7 Days - 8 Hours)-48 | PROC | SL |
| RHD4PRSHLDOSSL1300 |  | Delivery for Street Lighting Luminaire - SHL-DOS | 6d | 2026-10-21 A | 2026-10-26 A | RHD4PRSHLDOSSL1100, RHD4PRSHLPOSL1300 | 100% |  |  | RHD4 - (7 Days - 8 Hours)-48 | PROC | SL |
| RHD4PRSHLDOSSL1100 |  | Delivery for Street Lighting Cables - SHL-DOS | 6d | 2027-01-11 | 2027-01-17 | RHD4PRSHLDOSSL1200, RHD4PRSHLDOSSL1200 FF, RHD4PRSHLPOSL1100 |  | -229.02d | 0d | RHD4 - (7 Days - 8 Hours)-48 | PROC | SL |
|  | 121 | **RHD4-02-002-SHL-Material Delivery on Site - DOS -Landscape Network - LS** |  |  |  |  |  |  |  |  |  |  |
|  | 122 | **RHD4-02-002-SHL-Material Delivery on Site - DOS -Telecommunications Network - TC** |  | 2026-09-01 | 2026-09-06 |  |  |  |  |  |  |  |
| RHD4PRSHLDOSTC1000 |  | Delivery for HDPE Ducts - SHL-DOS | 6d | 2026-09-01 A | 2026-09-06 A | RHD4CTUN1Z5STG21170, RHD4PRSHLDOSTC1100, RHD4PRSHLPOTC1000 | 100% |  |  | RHD4 - (7 Days - 8 Hours)-48 | PROC | TC |
| RHD4PRSHLDOSTC1100 |  | Delivery for HDPE Road Crossings Ducts - SHL-DOS | 6d | 2026-09-01 A | 2026-09-06 A | RHD4PRSHLSTAGSL1300, RHD4PRSHLDOSSL1000, RHD4PRSHLPOTC1100 | 100% |  |  | RHD4 - (7 Days - 8 Hours)-48 | PROC | TC |
| RHD4PRSHLDOSTC1200 |  | Delivery for Telecommunications Manhole - SHL-DOS | 6d | 2026-09-01 A | 2026-09-06 A | RHD4PRSHLDOSTC1000, RHD4CZ6C062ST3502, RHD4PRSHLPOTC1200 | 100% |  |  | RHD4 - (7 Days - 8 Hours)-48 | PROC | TC |

| ID | WBS | Activity | Duration | Start | Finish | Predecessors | Total float | Free float | Calendar | RDH4-01-001-Phases-1 | RDH4-01-001-Networks-1 |
| --- | --- | --- | --- | --- | --- | --- | --- | --- | --- | --- | --- |
|  | 123 | **RHD4-02-002-SHL-Material Delivery on Site - DOS -Information and Communication Technologies - ICT** |  | 2026-11-10 | 2027-02-13 |  |  |  |  |  |  |
| RHD4PRSHLDOSICT1200 |  | Delivery for Telecommunications Manhole - SHL-DOS | 6d | 2026-11-10 | 2026-11-15 | RHD4PRSHLPOICT1200 | -196.02d | 0d | RHD4 - (7 Days - 8 Hours)-48 | PROC | ICT |
| RHD4PRSHLDOSICT1100 |  | Delivery for HDPE Road Crossings Ducts - SHL-DOS | 6d | 2027-02-02 | 2027-02-07 | RHD4PRSHLDOSTC1200, RHD4PRSHLPOICT1100 | -232d | 0d | RHD4 - (7 Days - 8 Hours)-48 | PROC | ICT |
| RHD4PRSHLDOSICT1000 |  | Delivery for HDPE Ducts - SHL-DOS | 6d | 2027-02-08 | 2027-02-13 | RHD4PRSHLDOSICT1100, RHD4CZ6A02SW3500, RHD4CZ5L016ST1503, RHD4PRSHLPOICT1000 | -230d | 0d | RHD4 - (7 Days - 8 Hours)-48 | PROC | ICT |
|  | 124 | **RHD4-02-002-SHL-Material Delivery on Site - DOS -Security Network - CCTV** |  | 2026-11-24 | 2026-12-20 |  |  |  |  |  |  |
| RHD4PRSHLDOSCCTV1000 |  | Delivery for CCTV Network Poles - SHL-DOS | 6d | 2026-11-24 | 2026-11-29 | RHD4PRSHLPOCCTV1000 | -210.02d | 0d | RHD4 - (7 Days - 8 Hours)-48 | PROC | CCTV |
| RHD4PRSHLDOSCCTV1200 |  | Delivery for CCTV Panels and Panel's Components - SHL-DOS | 6d | 2026-12-01 | 2026-12-06 | RHD4PRSHLPOCCTV1200 | -217.02d | 0d | RHD4 - (7 Days - 8 Hours)-48 | PROC | CCTV |
| RHD4PRSHLDOSCCTV1300 |  | Delivery for CCTV Fiber Optic Cables - SHL-DOS | 6d | 2026-12-08 | 2026-12-13 | RHD4PRSHLPOCCTV1300 | -224.02d | 0d | RHD4 - (7 Days - 8 Hours)-48 | PROC | CCTV |
| RHD4PRSHLDOSCCTV1100 |  | Delivery for CCTV Network Cameras - SHL-DOS | 6d | 2026-12-15 | 2026-12-20 | RHD4PRSHLPOTC1200, RHD4PRSHLPOCCTV1100 | -231.02d | 0d | RHD4 - (7 Days - 8 Hours)-48 | PROC | CCTV |
|  | 125 | **RHD4-02-002-SHL-Material Delivery on Site - DOS -Road Works - RD** |  | 2026-11-10 | 2026-12-13 |  |  |  |  |  |  |
| RHD4PRSHLDOSRD1000 |  | Delivery for Aggregate Base Courses - SHL-DOS | 6d | 2026-11-10 | 2026-11-15 | RHD4PRSHLPORD1000 | -201d | 0d | RHD4 - (7 Days - 8 Hours)-48 | PROC | RD |
| RHD4PRSHLDOSRD1100 |  | Delivery for Bituminous Asphalt Layers - SHL-DOS | 6d | 2026-11-10 | 2026-11-15 | RHD4PRSHLPORD1100 | -201d | 0d | RHD4 - (7 Days - 8 Hours)-48 | PROC | RD |
| RHD4PRSHLDOSRD1200 |  | Delivery for Precast Concrete Curbstone - SHL-DOS | 6d | 2026-11-10 | 2026-11-15 | RHD4PRSHLPORD1200 | -201d | 0d | RHD4 - (7 Days - 8 Hours)-48 | PROC | RD |
| RHD4PRSHLDOSRD1600 |  | Delivery for Traffic Signage - SHL-DOS | 6d | 2026-11-17 | 2026-11-22 | RHD4PRSHLPORD1600 | -208d | 0d | RHD4 - (7 Days - 8 Hours)-48 | PROC | RD |
| RHD4PRSHLDOSRD1300 |  | Delivery for Interlock Precast Concrete Unit Paving - SHL-DOS | 6d | 2026-11-24 | 2026-11-29 | RHD4PRSHLPORD1300 | -210.02d | 0d | RHD4 - (7 Days - 8 Hours)-48 | PROC | RD |
| RHD4PRSHLDOSRD1400 |  | Delivery for Wheel Stopper - SHL-DOS | 6d | 2026-12-01 | 2026-12-06 | RHD4PRSHLPORD1400 | -217.02d | 0d | RHD4 - (7 Days - 8 Hours)-48 | PROC | RD |
| RHD4PRSHLDOSRD1500 |  | Delivery for Pavement Marking - SHL-DOS | 6d | 2026-12-08 | 2026-12-13 | RHD4PRSHLPORD1500 | -224.02d | 0d | RHD4 - (7 Days - 8 Hours)-48 | PROC | RD |
|  | 126 | **RHD4-02-002-SHL-Material Delivery on Site - DOS -Lift Stations - LFS** |  | 2026-11-10 | 2026-12-13 |  |  |  |  |  |  |
| RHD4PRSHLDOSLFS1700 |  | Delivery for Ductile Iron Pipes & Fittings - SHL-DOS | 6d | 2026-11-10 | 2026-11-15 | RHD4PRSHLPOLFS1700 | -201d | 0d | RHD4 - (7 Days - 8 Hours)-48 | PROC | MAT |
| RHD4PRSHLDOSLFS1800 |  | Delivery for Sewage Lift Station Valves - SHL-DOS | 6d | 2026-11-10 | 2026-11-15 | RHD4PRSHLPOLFS1800 | -201d | 0d | RHD4 - (7 Days - 8 Hours)-48 | PROC | MAT |
| RHD4PRSHLDOSLFS1900 |  | Delivery for Basket screen - SHL-DOS | 6d | 2026-11-10 | 2026-11-15 | RHD4PRSHLPOLFS1900 | -201d | 0d | RHD4 - (7 Days - 8 Hours)-48 | PROC | MAT |
| RHD4PRSHLDOSLFS2600 |  | Delivery for Low Voltage Cables - SHL-DOS | 6d | 2026-11-10 | 2026-11-15 | RHD4PRSHLPOLFS2600 | -201d | 0d | RHD4 - (7 Days - 8 Hours)-48 | PROC | MAT |
| RHD4PRSHLDOSLFS2700 |  | Delivery for Lighting Fixtures - SHL-DOS | 6d | 2026-11-10 | 2026-11-15 | RHD4PRSHLPOLFS2700 | -196.02d | 0d | RHD4 - (7 Days - 8 Hours)-48 | PROC | MAT |
| RHD4PRSHLDOSLFS1100 |  | Delivery for Roof Waterproofing System - SHL-DOS | 6d | 2026-11-17 | 2026-11-22 | RHD4PRSHLPOLFS1100 | -208d | 0d | RHD4 - (7 Days - 8 Hours)-48 | PROC | MAT |
| RHD4PRSHLDOSLFS1200 |  | Delivery for Bituminous Sheet Waterproofing - SHL-DOS | 6d | 2026-11-17 | 2026-11-22 | RHD4PRSHLPOLFS1200 | -208d | 0d | RHD4 - (7 Days - 8 Hours)-48 | PROC | MAT |
| RHD4PRSHLDOSLFS1600 |  | Delivery for Epoxy Coating - SHL-DOS | 6d | 2026-11-17 | 2026-11-22 | RHD4PRSHLPOLFS1600 | -208d | 0d | RHD4 - (7 Days - 8 Hours)-48 | PROC | MAT |
| RHD4PRSHLDOSLFS2100 |  | Delivery for UPVC Pipes for Sanitary Drain - SHL-DOS | 6d | 2026-11-17 | 2026-11-22 | RHD4PRSHLPOLFS2100 | -208d | 0d | RHD4 - (7 Days - 8 Hours)-48 | PROC | MAT |
| RHD4PRSHLDOSLFS2400 |  | Delivery for lighting and power panel boards - SHL-DOS | 6d | 2026-11-17 | 2026-11-22 | RHD4PRSHLPOLFS2400 | -208d | 0d | RHD4 - (7 Days - 8 Hours)-48 | PROC | MAT |
| RHD4PRSHLDOSLFS3000 |  | Delivery for Fire Alarm System - SHL-DOS | 6d | 2026-11-17 | 2026-11-22 | RHD4PRSHLPOLFS3000 | -208d | 0d | RHD4 - (7 Days - 8 Hours)-48 | PROC | MAT |
| RHD4PRSHLDOSLFS1300 |  | Delivery for Fluid-Applied Waterproofing - SHL-DOS | 6d | 2026-11-24 | 2026-11-29 | RHD4PRSHLPOLFS1300 | -215d | 0d | RHD4 - (7 Days - 8 Hours)-48 | PROC | MAT |
| RHD4PRSHLDOSLFS2300 |  | Delivery for Motor Control Center (MCC) - SHL-DOS | 6d | 2026-11-24 | 2026-11-29 | RHD4PRSHLPOLFS2300 | -215d | 0d | RHD4 - (7 Days - 8 Hours)-48 | PROC | MAT |
| RHD4PRSHLDOSLFS2800 |  | Delivery for Wiring Devices - SHL-DOS | 6d | 2026-11-24 | 2026-11-29 | RHD4PRSHLPOLFS2800 | -215d | 0d | RHD4 - (7 Days - 8 Hours)-48 | PROC | MAT |
| RHD4PRSHLDOSLFS1000 |  | Delivery for Metal Ladder and checkered Plate - SHL-DOS | 6d | 2026-12-01 | 2026-12-06 | RHD4PRSHLPOLFS1000 | -217.02d | 0d | RHD4 - (7 Days - 8 Hours)-48 | PROC | MAT |
| RHD4PRSHLDOSLFS1400 |  | Delivery for Metal Doors and Access Doors and Frames - SHL-DOS | 6d | 2026-12-01 | 2026-12-06 | RHD4PRSHLPOLFS1400 | -222d | 0d | RHD4 - (7 Days - 8 Hours)-48 | PROC | MAT |
| RHD4PRSHLDOSLFS2200 |  | Delivery for wall mounted Split/AC - SHL-DOS | 6d | 2026-12-01 | 2026-12-06 | RHD4PRSHLPOLFS2200 | -222d | 0d | RHD4 - (7 Days - 8 Hours)-48 | PROC | MAT |
| RHD4PRSHLDOSLFS2900 |  | Delivery for Enclosed Switches and Circuit Breakers - SHL-DOS | 6d | 2026-12-01 | 2026-12-06 | RHD4PRSHLPOLFS2900 | -222d | 0d | RHD4 - (7 Days - 8 Hours)-48 | PROC | MAT |
| RHD4PRSHLDOSLFS1500 |  | Delivery for Painting - SHL-DOS | 6d | 2026-12-08 | 2026-12-13 | RHD4PRSHLPOLFS1500 | -229d | 0d | RHD4 - (7 Days - 8 Hours)-48 | PROC | MAT |
| RHD4PRSHLDOSLFS2500 |  | Delivery for Earthing for Lift Stations - SHL-DOS | 6d | 2026-12-08 | 2026-12-13 | RHD4PRSHLPOLFS2500 | -229d | 0d | RHD4 - (7 Days - 8 Hours)-48 | PROC | MAT |
| RHD4PRSHLDOSLFS3100 |  | Delivery for Fences and Gates - SHL-DOS | 6d | 2026-12-08 | 2026-12-13 | RHD4PRSHLPOLFS3100 | -229d | 0d | RHD4 - (7 Days - 8 Hours)-48 | PROC | MAT |

| ID | WBS | Activity | Duration | Start | Finish | Predecessors | Complete | Planned start | Planned finish | Total float | Free float | Calendar | Resources | RDH4-01-001-Zones-1 | RDH4-01-001-Phases-1 | RDH4-01-001-Networks-1 |
| --- | --- | --- | --- | --- | --- | --- | --- | --- | --- | --- | --- | --- | --- | --- | --- | --- |
|  | 1 | **RHD4-02-002-Short Lead Items - SHL-Staging Time - STAG** |  | 2026-06-14 | 2027-02-19 |  |  |  |  |  |  |  |  |  |  |  |
|  | 114 | **RHD4-02-002-SHL-Staging Time - STAG -Storm Network - ST** |  | 2026-06-14 | 2026-11-28 |  |  |  |  |  |  |  |  |  |  |  |
|  | 1 | **RHD4-02-002-SHL-Staging Time - STAG -Storm Network - ST - Zone 1** |  | 2026-08-05 | 2026-11-22 |  |  |  |  |  |  |  |  |  |  |  |
| RHD4PRSHLSTAGST1000 |  | Staging for GRP pipes Zone 1 - SHL-STAG | 6d | 2026-08-05 A | 2026-08-10 A | RHD4PRSHLDOSST1600, RHD4PRSHLPOST1000, RHD4PRSHLDOSST1000 | 100% |  |  |  |  | RHD4 - (7 Days - 8 Hours)-48 | Store Keeper [248.89 h]; Store Keeper assistant [311.11 h] | Z1 | PROC | ST |
| RHD4PRSHLSTAGST1100 |  | Staging for UPVC pipes Zone 1 - SHL-STAG | 6d | 2026-09-07 A | 2026-09-12 A | RHD4PRSHLDOSST1100 | 100% |  |  |  |  | RHD4 - (7 Days - 8 Hours)-48 | Store Keeper [248.89 h]; Store Keeper assistant [311.11 h] | Z1 | PROC | ST |
| RHD4PRSHLSTAGST1300 |  | Staging for Catch basin Zone 1 - SHL-STAG | 6d | 2026-09-24 A | 2026-09-29 A | RHD4PRSHLDOSST1300 | 100% |  |  |  |  | RHD4 - (7 Days - 8 Hours)-48 | Store Keeper [248.89 h]; Store Keeper assistant [311.11 h] | Z1 | PROC | ST |
| RHD4PRSHLSTAGST1600 |  | Staging for Precast Concrete Zone 1 - SHL-STAG | 6d | 2026-09-24 A | 2026-09-29 A | RHD4PRSHLDOSST1600 | 100% |  |  |  |  | RHD4 - (7 Days - 8 Hours)-48 | Store Keeper [248.89 h]; Store Keeper assistant [311.11 h] | Z1 | PROC | ST |
| RHD4PRSHLSTAGST1700 |  | Staging for Metal Works (Stairs - Manhole Covers) Zone 1 - SHL-STAG | 6d | 2026-10-11 A | 2026-10-16 A | RHD4PRSHLDOSST1700 | 100% |  |  |  |  | RHD4 - (7 Days - 8 Hours)-48 | Store Keeper [248.89 h]; Store Keeper assistant [311.11 h] | Z1 | PROC | ST |
| RHD4PRSHLSTAGST1400 |  | Staging for Grouted Riprap Zone 1 - SHL-STAG | 6d | 2026-11-17 | 2026-11-22 | RHD4PRSHLDOSST1400 |  |  |  | -197.02d | 34d | RHD4 - (7 Days - 8 Hours)-48 | Store Keeper [248.89 h]; Store Keeper assistant [311.11 h] | Z1 | PROC | ST |
|  | 2 | **RHD4-02-002-SHL-Staging Time - STAG -Storm Network - ST - Zone 2** |  | 2026-06-14 | 2026-11-28 |  |  |  |  |  |  |  |  |  |  |  |
| RHD4PRSHLSTAGST1501 |  | Staging for Tensile reinforcement steel Zone 2 - SHL-STAG | 6d | 2026-06-14 A | 2026-06-19 A | RHD4PRSHLDOSST1501 | 100% |  |  |  |  | RHD4 - (7 Days - 8 Hours)-48 | Store Keeper [248.89 h]; Store Keeper assistant [311.11 h] | Z2 | PROC | ST |
| RHD4PRSHLSTAGST1001 |  | Staging for GRP pipes Zone 2 - SHL-STAG | 6d | 2026-08-04 A | 2026-08-09 A | RHD4PRSHLPOST1000, RHD4PRSHLDOSST1001 | 100% |  |  |  |  | RHD4 - (7 Days - 8 Hours)-48 | Store Keeper [248.89 h]; Store Keeper assistant [311.11 h] | Z2 | PROC | ST |
| RHD4PRSHLSTAGST1101 |  | Staging for UPVC pipes Zone 2 - SHL-STAG | 6d | 2026-10-06 A | 2026-10-11 A | RHD4PRSHLDOSST1101 | 100% |  |  |  |  | RHD4 - (7 Days - 8 Hours)-48 | Store Keeper [248.89 h]; Store Keeper assistant [311.11 h] | Z2 | PROC | ST |
| RHD4PRSHLSTAGST1601 |  | Staging for Precast Concrete Zone 2 - SHL-STAG | 6d | 2026-10-07 A | 2026-10-12 A | RHD4PRSHLDOSST1601 | 100% |  |  |  |  | RHD4 - (7 Days - 8 Hours)-48 | Store Keeper [248.89 h]; Store Keeper assistant [311.11 h] | Z2 | PROC | ST |
| RHD4PRSHLSTAGST1301 |  | Staging for Catch basin Zone 2 - SHL-STAG | 6d | 2026-10-13 A | 2026-10-18 A | RHD4PRSHLDOSST1301 | 100% |  |  |  |  | RHD4 - (7 Days - 8 Hours)-48 | Store Keeper [248.89 h]; Store Keeper assistant [311.11 h] | Z2 | PROC | ST |
| RHD4PRSHLSTAGST1701 |  | Staging for Metal Works (Stairs - Manhole Covers) Zone 2 - SHL-STAG | 6d | 2026-11-16 | 2026-11-21 | RHD4PRSHLDOSST1701 |  |  |  | -196.02d | 35d | RHD4 - (7 Days - 8 Hours)-48 | Store Keeper [248.89 h]; Store Keeper assistant [311.11 h] | Z2 | PROC | ST |
| RHD4PRSHLSTAGST1401 |  | Staging for Grouted Riprap Zone 2 - SHL-STAG | 6d | 2026-11-23 | 2026-11-28 | RHD4PRSHLDOSST1401 |  |  |  | -203.02d | 28d | RHD4 - (7 Days - 8 Hours)-48 | Store Keeper [248.89 h]; Store Keeper assistant [311.11 h] | Z2 | PROC | ST |
|  | 3 | **RHD4-02-002-SHL-Staging Time - STAG -Storm Network - ST - Zone 3** |  | 2026-09-09 | 2026-11-21 |  |  |  |  |  |  |  |  |  |  |  |
| RHD4PRSHLSTAGST1002 |  | Staging for GRP pipes Zone 3 - SHL-STAG | 6d | 2026-09-09 A | 2026-09-14 A | RHD4PRSHLDOSST1602, RHD4PRSHLPOST1000, RHD4PRSHLDOSST1008 SS, RHD4PRSHLDOSST1608, RHD4PRSHLDOSST1008, RHD4PRSHLDOSST1604, RHD4PRSHLDOSST1004 | 100% |  |  |  |  | RHD4 - (7 Days - 8 Hours)-48 | Store Keeper [248.89 h]; Store Keeper assistant [311.11 h] | Z3 | PROC | ST |
| RHD4PRSHLSTAGST1602 |  | Staging for Precast Concrete Zone 3 - SHL-STAG | 6d | 2026-09-09 A | 2026-09-14 A | RHD4PRSHLDOSST1602 | 100% |  |  |  |  | RHD4 - (7 Days - 8 Hours)-48 | Store Keeper [248.89 h]; Store Keeper assistant [311.11 h] | Z3 | PROC | ST |
| RHD4PRSHLSTAGST1102 |  | Staging for UPVC pipes Zone 3 - SHL-STAG | 6d | 2026-09-15 A | 2026-09-20 A | RHD4PRSHLDOSST1102 | 100% |  |  |  |  | RHD4 - (7 Days - 8 Hours)-48 | Store Keeper [248.89 h]; Store Keeper assistant [311.11 h] | Z3 | PROC | ST |
| RHD4PRSHLSTAGST1302 |  | Staging for Catch basin Zone 3 - SHL-STAG | 6d | 2026-09-19 A | 2026-09-24 A | RHD4PRSHLDOSST1302 | 100% |  |  |  |  | RHD4 - (7 Days - 8 Hours)-48 | Store Keeper [248.89 h]; Store Keeper assistant [311.11 h] | Z3 | PROC | ST |
| RHD4PRSHLSTAGST1702 |  | Staging for Metal Works (Stairs - Manhole Covers) Zone 3 - SHL-STAG | 6d | 2026-11-16 | 2026-11-21 | RHD4PRSHLDOSST1702 |  |  |  | -196.02d | 35d | RHD4 - (7 Days - 8 Hours)-48 | Store Keeper [248.89 h]; Store Keeper assistant [311.11 h] | Z3 | PROC | ST |
|  | 4 | **RHD4-02-002-SHL-Staging Time - STAG -Storm Network - ST - Zone 4** |  | 2026-08-08 | 2026-11-21 |  |  |  |  |  |  |  |  |  |  |  |
| RHD4PRSHLSTAGST1003 |  | Staging for GRP pipes Zone 4 - SHL-STAG | 6d | 2026-08-08 A | 2026-08-26 A | RHD4PRSHLDOSST1603, RHD4PRSHLPOST1000, RHD4PRSHLDOSST1003 | 100% | 2026-07-12 | 2026-07-17 |  |  | RHD4 - (7 Days - 8 Hours)-48 | Store Keeper [248.89 h]; Store Keeper assistant [311.11 h] | Z4 | PROC | ST |
| RHD4PRSHLSTAGST1103 |  | Staging for UPVC pipes Zone 4 - SHL-STAG | 6d | 2026-09-09 A | 2026-09-14 A | RHD4PRSHLDOSST1103 | 100% |  |  |  |  | RHD4 - (7 Days - 8 Hours)-48 | Store Keeper [248.89 h]; Store Keeper assistant [311.11 h] | Z4 | PROC | ST |
| RHD4PRSHLSTAGST1303 |  | Staging for Catch basin Zone 4 - SHL-STAG | 6d | 2026-09-09 A | 2026-09-14 A | RHD4PRSHLDOSST1303 | 100% |  |  |  |  | RHD4 - (7 Days - 8 Hours)-48 | Store Keeper [248.89 h]; Store Keeper assistant [311.11 h] | Z4 | PROC | ST |
| RHD4PRSHLSTAGST1603 |  | Staging for Precast Concrete Zone 4 - SHL-STAG | 6d | 2026-09-09 A | 2026-09-14 A | RHD4PRSHLDOSST1603 | 100% |  |  |  |  | RHD4 - (7 Days - 8 Hours)-48 | Store Keeper [248.89 h]; Store Keeper assistant [311.11 h] | Z4 | PROC | ST |
| RHD4PRSHLSTAGST1703 |  | Staging for Metal Works (Stairs - Manhole Covers) Zone 4 - SHL-STAG | 6d | 2026-11-16 | 2026-11-21 | RHD4PRSHLDOSST1703 |  |  |  | -196.02d | 35d | RHD4 - (7 Days - 8 Hours)-48 | Store Keeper [248.89 h]; Store Keeper assistant [311.11 h] | Z4 | PROC | ST |

| ID | WBS | Activity | Duration | Start | Finish | Predecessors | Complete | Planned start | Planned finish | Total float | Free float | Calendar | Resources | RDH4-01-001-Zones-1 | RDH4-01-001-Phases-1 | RDH4-01-001-Networks-1 |
| --- | --- | --- | --- | --- | --- | --- | --- | --- | --- | --- | --- | --- | --- | --- | --- | --- |
|  | 5 | **RHD4-02-002-SHL-Staging Time - STAG -Storm Network - ST - Zone 5** |  | 2026-06-17 | 2026-09-27 |  |  |  |  |  |  |  |  |  |  |  |
| RHD4PRSHLSTAGST1604 |  | Staging for Precast Concrete Zone 5 - SHL-STAG | 7d | 2026-06-17 A | 2026-06-25 A | RHD4PRSHLDOSST1604 | 100% | 2026-02-02 | 2026-02-08 |  |  | RHD4 - (7 Days - 8 Hours)-48 | Store Keeper [248.89 h]; Store Keeper assistant [311.11 h] | Z5 | PROC | ST |
| RHD4PRSHLSTAGST1504 |  | Staging for Tensile reinforcement steel Zone 5 - SHL-STAG | 6d | 2026-06-21 A | 2026-06-26 A | RHD4PRSHLDOSST1504 | 100% |  |  |  |  | RHD4 - (7 Days - 8 Hours)-48 | Store Keeper [248.89 h]; Store Keeper assistant [311.11 h] | Z5 | PROC | ST |
| RHD4PRSHLSTAGST1004 |  | Staging for GRP pipes Zone 5 - SHL-STAG | 6d | 2026-08-04 A | 2026-08-09 A | RHD4PRSHLDOSST1604, RHD4PRSHLPOST1000, RHD4PRSHLDOSST1004 | 100% |  |  |  |  | RHD4 - (7 Days - 8 Hours)-48 | Store Keeper [248.89 h]; Store Keeper assistant [311.11 h] | Z5 | PROC | ST |
| RHD4PRSHLSTAGST1104 |  | Staging for UPVC pipes Zone 5 - SHL-STAG | 6d | 2026-08-09 A | 2026-08-14 A | RHD4PRSHLDOSST1104 | 100% |  |  |  |  | RHD4 - (7 Days - 8 Hours)-48 | Store Keeper [248.89 h]; Store Keeper assistant [311.11 h] | Z5 | PROC | ST |
| RHD4PRSHLSTAGST1204 |  | Staging for HDPE pipes Zone 5 - SHL-STAG | 6d | 2026-08-15 A | 2026-08-20 A | RHD4PRSHLDOSST1204, RHD4PRSHLSTAGST1504 | 100% |  |  |  |  | RHD4 - (7 Days - 8 Hours)-48 | Store Keeper [248.89 h]; Store Keeper assistant [311.11 h] | Z5 | PROC | ST |
| RHD4PRSHLSTAGST1304 |  | Staging for Catch basin Zone 5 - SHL-STAG | 6d | 2026-08-19 A | 2026-08-24 A | RHD4PRSHLDOSST1304 | 100% |  |  |  |  | RHD4 - (7 Days - 8 Hours)-48 | Store Keeper [248.89 h]; Store Keeper assistant [311.11 h] | Z5 | PROC | ST |
| RHD4PRSHLSTAGST1704 |  | Staging for Metal Works (Stairs - Manhole Covers) Zone 5 - SHL-STAG | 6d | 2026-09-22 A | 2026-09-27 A | RHD4PRSHLDOSST1704 | 100% | 2026-11-18 | 2026-11-23 |  |  | RHD4 - (7 Days - 8 Hours)-48 | Store Keeper [248.89 h]; Store Keeper assistant [311.11 h] | Z5 | PROC | ST |
|  | 6 | **RHD4-02-002-SHL-Staging Time - STAG -Storm Network - ST - Zone 6** |  | 2026-08-08 | 2026-09-27 |  |  |  |  |  |  |  |  |  |  |  |
| RHD4PRSHLSTAGST1005 |  | Staging for GRP pipes Zone 6 - SHL-STAG | 6d | 2026-08-08 A | 2026-08-20 A | RHD4PRSHLDOSST1605, RHD4PRSHLPOST1000, RHD4PRSHLDOSST1005 | 100% | 2026-02-12 | 2026-02-17 |  |  | RHD4 - (7 Days - 8 Hours)-48 | Store Keeper [248.89 h]; Store Keeper assistant [311.11 h] | Z6 | PROC | ST |
| RHD4PRSHLSTAGST1105 |  | Staging for UPVC pipes Zone 6 - SHL-STAG | 6d | 2026-09-09 A | 2026-09-14 A | RHD4PRSHLDOSST1105 | 100% |  |  |  |  | RHD4 - (7 Days - 8 Hours)-48 | Store Keeper [248.89 h]; Store Keeper assistant [311.11 h] | Z6 | PROC | ST |
| RHD4PRSHLSTAGST1305 |  | Staging for Catch basin Zone 6 - SHL-STAG | 6d | 2026-09-09 A | 2026-09-14 A | RHD4PRSHLDOSST1305 | 100% |  |  |  |  | RHD4 - (7 Days - 8 Hours)-48 | Store Keeper [248.89 h]; Store Keeper assistant [311.11 h] | Z6 | PROC | ST |
| RHD4PRSHLSTAGST1605 |  | Staging for Precast Concrete Zone 6 - SHL-STAG | 6d | 2026-09-09 A | 2026-09-14 A | RHD4PRSHLDOSST1605 | 100% |  |  |  |  | RHD4 - (7 Days - 8 Hours)-48 | Store Keeper [248.89 h]; Store Keeper assistant [311.11 h] | Z6 | PROC | ST |
| RHD4PRSHLSTAGST1705 |  | Staging for Metal Works (Stairs - Manhole Covers) Zone 6 - SHL-STAG | 6d | 2026-09-22 A | 2026-09-27 A | RHD4PRSHLDOSST1705 | 100% |  |  |  |  | RHD4 - (7 Days - 8 Hours)-48 | Store Keeper [248.89 h]; Store Keeper assistant [311.11 h] | Z6 | PROC | ST |
|  | 8 | **RHD4-02-002-SHL-Staging Time - STAG -Storm Network - ST - Zone 7** |  | 2026-08-04 | 2026-10-03 |  |  |  |  |  |  |  |  |  |  |  |
| RHD4PRSHLSTAGST1006 |  | Staging for GRP pipes Zone 7 - SHL-STAG | 6d | 2026-08-04 A | 2026-08-09 A | RHD4PRSHLDOSST1606, RHD4PRSHLPOST1000, RHD4PRSHLDOSST1006, RHD4PRSHLDOSST1605, RHD4PRSHLDOSST1005 | 100% |  |  |  |  | RHD4 - (7 Days - 8 Hours)-48 | Store Keeper [248.89 h]; Store Keeper assistant [311.11 h] | Z7 | PROC | ST |
| RHD4PRSHLSTAGST1106 |  | Staging for UPVC pipes Zone 7 - SHL-STAG | 6d | 2026-09-09 A | 2026-09-14 A | RHD4PRSHLDOSST1106 | 100% |  |  |  |  | RHD4 - (7 Days - 8 Hours)-48 | Store Keeper [248.89 h]; Store Keeper assistant [311.11 h] | Z7 | PROC | ST |
| RHD4PRSHLSTAGST1306 |  | Staging for Catch basin Zone 7 - SHL-STAG | 6d | 2026-09-09 A | 2026-09-14 A | RHD4PRSHLDOSST1206 | 100% |  |  |  |  | RHD4 - (7 Days - 8 Hours)-48 | Store Keeper [248.89 h]; Store Keeper assistant [311.11 h] | Z7 | PROC | ST |
| RHD4PRSHLSTAGST1606 |  | Staging for Precast Concrete Zone 7 - SHL-STAG | 6d | 2026-09-09 A | 2026-09-14 A | RHD4PRSHLDOSST1606 | 100% |  |  |  |  | RHD4 - (7 Days - 8 Hours)-48 | Store Keeper [248.89 h]; Store Keeper assistant [311.11 h] | Z7 | PROC | ST |
| RHD4PRSHLSTAGST1206 |  | Staging for HDPE pipes Zone 7 - SHL-STAG | 6d | 2026-09-24 A | 2026-09-29 A | RHD4PRSHLDOSST1306, RHD4PRSHLSTAGST1204, RHD4PRSHLSTAPTCr1300 | 100% |  |  |  |  | RHD4 - (7 Days - 8 Hours)-48 | Store Keeper [248.89 h]; Store Keeper assistant [311.11 h] | Z7 | PROC | ST |
| RHD4PRSHLSTAGST1706 |  | Staging for Metal Works (Stairs - Manhole Covers) Zone 7 - SHL-STAG | 6d | 2026-09-28 A | 2026-10-03 A | RHD4PRSHLDOSST1706 | 100% |  |  |  |  | RHD4 - (7 Days - 8 Hours)-48 | Store Keeper [248.89 h]; Store Keeper assistant [311.11 h] | Z7 | PROC | ST |
|  | 7 | **RHD4-02-002-SHL-Staging Time - STAG -Storm Network - ST - Zone 8** |  | 2026-08-04 | 2026-11-21 |  |  |  |  |  |  |  |  |  |  |  |
| RHD4PRSHLSTAGST1007 |  | Staging for GRP pipes Zone 8 - SHL-STAG | 6d | 2026-08-04 A | 2026-08-09 A | RHD4PRSHLDOSST1607, RHD4PRSHLPOST1000, RHD4PRSHLDOSST1007, RHD4PRSHLSTAGST1006 | 100% |  |  |  |  | RHD4 - (7 Days - 8 Hours)-48 | Store Keeper [248.89 h]; Store Keeper assistant [311.11 h] | Z8 | PROC | ST |
| RHD4PRSHLSTAGST1107 |  | Staging for UPVC pipes Zone 8 - SHL-STAG | 6d | 2026-08-25 A | 2026-08-30 A | RHD4PRSHLDOSST1107 | 100% |  |  |  |  | RHD4 - (7 Days - 8 Hours)-48 | Store Keeper [248.89 h]; Store Keeper assistant [311.11 h] | Z8 | PROC | ST |
| RHD4PRSHLSTAGST1307 |  | Staging for Catch basin Zone 8 - SHL-STAG | 6d | 2026-08-25 A | 2026-08-30 A | RHD4PRSHLDOSST1307 | 100% |  |  |  |  | RHD4 - (7 Days - 8 Hours)-48 | Store Keeper [248.89 h]; Store Keeper assistant [311.11 h] | Z8 | PROC | ST |
| RHD4PRSHLSTAGST1607 |  | Staging for Precast Concrete Zone 8 - SHL-STAG | 6d | 2026-08-25 A | 2026-08-30 A | RHD4PRSHLDOSST1607 | 100% |  |  |  |  | RHD4 - (7 Days - 8 Hours)-48 | Store Keeper [248.89 h]; Store Keeper assistant [311.11 h] | Z8 | PROC | ST |
| RHD4PRSHLSTAGST1707 |  | Staging for Metal Works (Stairs - Manhole Covers) Zone 8 - SHL-STAG | 6d | 2026-11-16 | 2026-11-21 | RHD4PRSHLDOSST1707 |  |  |  | -196.02d | 35d | RHD4 - (7 Days - 8 Hours)-48 | Store Keeper [248.89 h]; Store Keeper assistant [311.11 h] | Z8 | PROC | ST |

| ID | WBS | Activity | Duration | Start | Finish | Predecessors | Complete | Total float | Free float | Calendar | Resources | RDH4-01-001-Zones-1 | RDH4-01-001-Phases-1 | RDH4-01-001-Networks-1 |
| --- | --- | --- | --- | --- | --- | --- | --- | --- | --- | --- | --- | --- | --- | --- |
|  | 9 | **RHD4-02-002-SHL-Staging Time - STAG -Storm Network - ST - Zone 9** |  | 2026-08-24 | 2026-11-21 |  |  |  |  |  |  |  |  |  |
| RHD4PRSHLSTAGST1008 |  | Staging for GRP pipes Zone 9 - SHL-STAG | 6d | 2026-08-24 A | 2026-08-29 A | RHD4PRSHLDOSST1608, RHD4PRSHLPOST1000, RHD4PRSHLDOSST1008, RHD4PRSHLDOSST1604, RHD4PRSHLDOSST1004 | 100% |  |  | RHD4 - (7 Days - 8 Hours)-48 | Store Keeper [248.89 h]; Store Keeper assistant [311.11 h] | Z9 | PROC | ST |
| RHD4PRSHLSTAGST1108 |  | Staging for UPVC pipes Zone 9 - SHL-STAG | 6d | 2026-08-24 A | 2026-08-29 A | RHD4PRSHLDOSST1108 | 100% |  |  | RHD4 - (7 Days - 8 Hours)-48 | Store Keeper [248.89 h]; Store Keeper assistant [311.11 h] | Z9 | PROC | ST |
| RHD4PRSHLSTAGST1308 |  | Staging for Catch basin Zone 9 - SHL-STAG | 6d | 2026-08-24 A | 2026-08-29 A | RHD4PRSHLDOSST1308 | 100% |  |  | RHD4 - (7 Days - 8 Hours)-48 | Store Keeper [248.89 h]; Store Keeper assistant [311.11 h] | Z9 | PROC | ST |
| RHD4PRSHLSTAGST1608 |  | Staging for Precast Concrete Zone 9 - SHL-STAG | 6d | 2026-08-24 A | 2026-08-29 A | RHD4PRSHLDOSST1608 | 100% |  |  | RHD4 - (7 Days - 8 Hours)-48 | Store Keeper [248.89 h]; Store Keeper assistant [311.11 h] | Z9 | PROC | ST |
| RHD4PRSHLSTAGST1708 |  | Staging for Metal Works (Stairs - Manhole Covers) Zone 9 - SHL-STAG | 6d | 2026-11-16 | 2026-11-21 | RHD4PRSHLDOSST1708 |  | -196.02d | 35d | RHD4 - (7 Days - 8 Hours)-48 | Store Keeper [248.89 h]; Store Keeper assistant [311.11 h] | Z9 | PROC | ST |
|  | 115 | **RHD4-02-002-SHL-Staging Time - STAG -Sewage Network - SW** |  | 2026-08-04 | 2026-12-03 |  |  |  |  |  |  |  |  |  |
|  | 1 | **RHD4-02-002-SHL-Staging Time - STAG -Sewage Network - SW - Zone 1** |  | 2026-08-10 | 2026-11-26 |  |  |  |  |  |  |  |  |  |
| RHD4PRSHLSTAGSW1000 |  | Staging for UPVC pipes Zone 1 - SHL-DOS | 6d | 2026-08-10 A | 2026-08-15 A | RHD4PRSHLDOSSW1000 | 100% |  |  | RHD4 - (7 Days - 8 Hours)-48 | Store Keeper [320 h]; Store Keeper assistant [400 h] | Z1 |  |  |
| RHD4PRSHLSTAGSW1300 |  | Staging for Precast Concrete Zone 1 - SHL-DOS | 6d | 2026-08-15 A | 2026-08-20 A | RHD4PRSHLDOSSW1300 | 100% |  |  | RHD4 - (7 Days - 8 Hours)-48 | Store Keeper [320 h]; Store Keeper assistant [400 h] | Z1 |  |  |
| RHD4PRSHLSTAGSW1400 |  | Staging for Metal Works (Stairs - Manhole Covers) Zone 1 - SHL-DOS | 6d | 2026-11-21 | 2026-11-26 | RHD4PRSHLDOSSW1400 |  | -201.02d | 30d | RHD4 - (7 Days - 8 Hours)-48 | Store Keeper [320 h]; Store Keeper assistant [400 h] | Z1 |  |  |
|  | 2 | **RHD4-02-002-SHL-Staging Time - STAG -Sewage Network - SW - Zone 2** |  | 2026-08-15 | 2026-11-21 |  |  |  |  |  |  |  |  |  |
| RHD4PRSHLSTAGSW1301 |  | Staging for Precast Concrete Zone 2 - SHL-DOS | 6d | 2026-08-15 A | 2026-08-20 A | RHD4PRSHLDOSSW1301 | 100% |  |  | RHD4 - (7 Days - 8 Hours)-48 | Store Keeper [320 h]; Store Keeper assistant [400 h] | Z2 |  |  |
| RHD4PRSHLSTAGSW1101 |  | Staging for GRP pipes Zone 2 - SHL-DOS | 6d | 2026-08-22 A | 2026-08-27 A | RHD4PRSHLDOSSW1101, RHD4PRSHLSTAGSW1202 | 100% |  |  | RHD4 - (7 Days - 8 Hours)-48 | Store Keeper [320 h]; Store Keeper assistant [400 h] | Z2 |  |  |
| RHD4PRSHLSTAGSW1001 |  | Staging for UPVC pipes Zone 2 - SHL-DOS | 6d | 2026-08-28 A | 2026-09-02 A | RHD4PRSHLDOSSW1001 | 100% |  |  | RHD4 - (7 Days - 8 Hours)-48 | Store Keeper [320 h]; Store Keeper assistant [400 h] | Z2 |  |  |
| RHD4PRSHLSTAGSW1401 |  | Staging for Metal Works (Stairs - Manhole Covers) Zone 2 - SHL-DOS | 6d | 2026-11-16 | 2026-11-21 | RHD4PRSHLDOSSW1401 |  | -201d | 28d | RHD4 - (7 Days - 8 Hours)-48 | Store Keeper [320 h]; Store Keeper assistant [400 h] | Z2 |  |  |
|  | 3 | **RHD4-02-002-SHL-Staging Time - STAG -Sewage Network - SW - Zone 3** |  | 2026-08-15 | 2026-11-27 |  |  |  |  |  |  |  |  |  |
| RHD4PRSHLSTAGSW1302 |  | Staging for Precast Concrete Zone 3 - SHL-DOS | 6d | 2026-08-15 A | 2026-08-20 A | RHD4PRSHLDOSSW1302, RHD4PRSHLSTAGSW1506 | 100% |  |  | RHD4 - (7 Days - 8 Hours)-48 | Store Keeper [320 h]; Store Keeper assistant [400 h] | Z3 |  |  |
| RHD4PRSHLSTAGSW1502 |  | Staging for HDPE pipes Zone 3 - SHL-DOS | 6d | 2026-08-16 A | 2026-08-21 A | RHD4PRSHLDOSSW1502 | 100% |  |  | RHD4 - (7 Days - 8 Hours)-48 | Store Keeper [320 h]; Store Keeper assistant [400 h] | Z3 |  |  |
| RHD4PRSHLSTAGSW1102 |  | Staging for GRP pipes Zone 3 - SHL-DOS | 6d | 2026-09-06 A | 2026-09-11 A | RHD4PRSHLDOSSW1102 | 100% |  |  | RHD4 - (7 Days - 8 Hours)-48 | Store Keeper [320 h]; Store Keeper assistant [400 h] | Z3 |  |  |
| RHD4PRSHLSTAGSW1402 |  | Staging for Metal Works (Stairs - Manhole Covers) Zone 3 - SHL-DOS | 6d | 2026-11-16 | 2026-11-21 | RHD4PRSHLDOSSW1402, RHD4PRSHLSTAGSW1502 |  | -196.02d | 6d | RHD4 - (7 Days - 8 Hours)-48 | Store Keeper [320 h]; Store Keeper assistant [400 h] | Z3 |  |  |
| RHD4PRSHLSTAGSW1202 |  | Staging for Valves Zone 3 - SHL-DOS | 6d | 2026-11-22 | 2026-11-27 | RHD4PRSHLDOSSW1202, RHD4PRSHLSTAGSW1102, RHD4PRSHLSTAGSW1206 |  | -208.02d | 0d | RHD4 - (7 Days - 8 Hours)-48 | Store Keeper [320 h]; Store Keeper assistant [400 h] | Z3 |  |  |
|  | 4 | **RHD4-02-002-SHL-Staging Time - STAG -Sewage Network - SW - Zone 4** |  | 2026-08-16 | 2026-11-27 |  |  |  |  |  |  |  |  |  |
| RHD4PRSHLSTAGSW1003 |  | Staging for UPVC pipes Zone 4 - SHL-DOS | 6d | 2026-08-16 A | 2026-08-21 A | RHD4PRSHLDOSSW1003 | 100% |  |  | RHD4 - (7 Days - 8 Hours)-48 | Store Keeper [320 h]; Store Keeper assistant [400 h] | Z4 |  |  |
| RHD4PRSHLSTAGSW1303 |  | Staging for Precast Concrete Zone 4 - SHL-DOS | 6d | 2026-08-22 A | 2026-08-27 A | RHD4PRSHLDOSSW1303, RHD4PRSHLSTAGSW1403 | 100% |  |  | RHD4 - (7 Days - 8 Hours)-48 | Store Keeper [320 h]; Store Keeper assistant [400 h] | Z4 |  |  |
| RHD4PRSHLSTAGSW1103 |  | Staging for GRP pipes Zone 4 - SHL-DOS | 6d | 2026-08-29 A | 2026-09-03 A | RHD4PRSHLSTAGSW1303, RHD4PRSHLSTAGSW1402, RHD4PRSHLDOSSW1303, RHD4PRSHLPOSW1100, RHD4PRSHLDOSSW1103 | 100% |  |  | RHD4 - (7 Days - 8 Hours)-48 | Store Keeper [320 h]; Store Keeper assistant [400 h] | Z4 |  |  |
| RHD4PRSHLSTAGSW1203 |  | Staging for Valves Zone 4 - SHL-DOS | 6d | 2026-11-16 | 2026-11-21 | RHD4PRSHLDOSSW1203 |  | -202.02d | 0d | RHD4 - (7 Days - 8 Hours)-48 | Store Keeper [320 h]; Store Keeper assistant [400 h] | Z4 |  |  |
| RHD4PRSHLSTAGSW1403 |  | Staging for Metal Works (Stairs - Manhole Covers) Zone 4 - SHL-DOS | 6d | 2026-11-22 | 2026-11-27 | RHD4PRSHLDOSSW1403, RHD4PRSHLSTAGSW1203 |  | -202.02d | 0d | RHD4 - (7 Days - 8 Hours)-48 | Store Keeper [320 h]; Store Keeper assistant [400 h] | Z4 |  |  |

| ID | WBS | Activity | Duration | Start | Finish | Predecessors | Complete | Total float | Free float | Calendar | Resources | RDH4-01-001-Zones-1 |
| --- | --- | --- | --- | --- | --- | --- | --- | --- | --- | --- | --- | --- |
|  | 7 | **RHD4-02-002-SHL-Staging Time - STAG -Sewage Network - SW - Zone 5** |  | 2026-08-13 | 2026-11-20 |  |  |  |  |  |  |  |
| RHD4PRSHLSTAGSW1004 |  | Staging for UPVC pipes Zone 5 - SHL-DOS | 6d | 2026-08-13 A | 2026-08-18 A | RHD4PRSHLPOSW1000, RHD4PRSHLDOSSW1004, RHD4PRSHLDOSSW1304, RHD4PRSHLPOSW1100, RHD4PRSHLDOSSW1104 | 100% |  |  | RHD4 - (7 Days - 8 Hours)-48 | Store Keeper [320 h]; Store Keeper assistant [400 h] | Z5 |
| RHD4PRSHLSTAGSW1104 |  | Staging for GRP pipes Zone 5 - SHL-DOS | 6d | 2026-08-15 A | 2026-08-20 A | RHD4PRSHLDOSSW1304, RHD4PRSHLPOSW1100, RHD4PRSHLDOSSW1104 | 100% |  |  | RHD4 - (7 Days - 8 Hours)-48 | Store Keeper [320 h]; Store Keeper assistant [400 h] | Z5 |
| RHD4PRSHLSTAGSW1204 |  | Staging for Valves Zone 5 - SHL-DOS | 6d | 2026-08-29 A | 2026-09-03 A | RHD4PRSHLDOSSW1204 | 100% |  |  | RHD4 - (7 Days - 8 Hours)-48 | Store Keeper [320 h]; Store Keeper assistant [400 h] | Z5 |
| RHD4PRSHLSTAGSW1304 |  | Staging for Precast Concrete Zone 5 - SHL-DOS | 6d | 2026-09-01 A | 2026-09-06 A | RHD4PRSHLDOSSW1304, RHD4PRSHLSTAGSW1504, RHD4PRSHLSTAGSW1103, RHD4PRSHLSTAGSW1108, RHD4PRSHLSTAGSW1407, RHD4PRSHLSTAGST1206, RHD4PRSHLSTAGLV1500, RHD4GNPERMITAT2000 | 100% |  |  | RHD4 - (7 Days - 8 Hours)-48 | Store Keeper [320 h]; Store Keeper assistant [400 h] | Z5 |
| RHD4PRSHLSTAGSW1404 |  | Staging for Metal Works (Stairs - Manhole Covers) Zone 5 - SHL-DOS | 6d | 2026-11-10 | 2026-11-15 | RHD4PRSHLDOSSW1404 |  | -195d | 34d | RHD4 - (7 Days - 8 Hours)-48 | Store Keeper [320 h]; Store Keeper assistant [400 h] | Z5 |
| RHD4PRSHLSTAGSW1504 |  | Staging for HDPE pipes Zone 5 - SHL-DOS | 6d | 2026-11-15 | 2026-11-20 | RHD4PRSHLDOSSW1504, RHD4PRSHLSTAGSW1204 |  | -195.02d | 36d | RHD4 - (7 Days - 8 Hours)-48 | Store Keeper [320 h]; Store Keeper assistant [400 h] | Z5 |
|  | 5 | **RHD4-02-002-SHL-Staging Time - STAG -Sewage Network - SW - Zone 6** |  | 2026-11-16 | 2026-11-27 |  |  |  |  |  |  |  |
| RHD4PRSHLSTAGSW1005 |  | Staging for UPVC pipes Zone 6 - SHL-DOS | 6d | 2026-11-16 | 2026-11-21 | RHD4PRSHLDOSSW1305, RHD4PRSHLPOSW1000, RHD4PRSHLDOSSW1005, RHD4PRSHLDOSSW1004, RHD4PRSHLDOSSW1304, RHD4PRSHLPOSW1100, RHD4PRSHLDOSSW1104 |  | -196.02d | 35d | RHD4 - (7 Days - 8 Hours)-48 | Store Keeper [320 h]; Store Keeper assistant [400 h] | Z6 |
| RHD4PRSHLSTAGSW1305 |  | Staging for Precast Concrete Zone 6 - SHL-DOS | 6d | 2026-11-16 | 2026-11-21 | RHD4PRSHLDOSSW1305 |  | -201d | 28d | RHD4 - (7 Days - 8 Hours)-48 | Store Keeper [320 h]; Store Keeper assistant [400 h] | Z6 |
| RHD4PRSHLSTAGSW1405 |  | Staging for Metal Works (Stairs - Manhole Covers) Zone 6 - SHL-DOS | 6d | 2026-11-22 | 2026-11-27 | RHD4PRSHLDOSSW1405 |  | -202.02d | 29d | RHD4 - (7 Days - 8 Hours)-48 | Store Keeper [320 h]; Store Keeper assistant [400 h] | Z6 |
|  | 8 | **RHD4-02-002-SHL-Staging Time - STAG -Sewage Network - SW - Zone 7** |  | 2026-08-04 | 2026-11-27 |  |  |  |  |  |  |  |
| RHD4PRSHLSTAGSW1006 |  | Staging for UPVC pipes Zone 7 - SHL-DOS | 6d | 2026-08-04 A | 2026-08-09 A | RHD4PRSHLPOSW1000, RHD4PRSHLDOSSW1006, RHD4PRSHLDOSSW1306, RHD4PRSHLPOSW1100, RHD4PRSHLDOSSW1106, RHD4PRSHLDOSSW1004, RHD4PRSHLDOSSW1304, RHD4PRSHLDOSSW1104 | 100% |  |  | RHD4 - (7 Days - 8 Hours)-48 | Store Keeper [320 h]; Store Keeper assistant [400 h] | Z7 |
| RHD4PRSHLSTAGSW1106 |  | Staging for GRP pipes Zone 7 - SHL-DOS | 6d | 2026-08-04 A | 2026-08-09 A | RHD4PRSHLDOSSW1306, RHD4PRSHLPOSW1100, RHD4PRSHLDOSSW1106 | 100% |  |  | RHD4 - (7 Days - 8 Hours)-48 | Store Keeper [320 h]; Store Keeper assistant [400 h] | Z7 |
| RHD4PRSHLSTAGSW1206 |  | Staging for Valves Zone 7 - SHL-DOS | 6d | 2026-11-16 | 2026-11-21 | RHD4PRSHLDOSSW1206 |  | -208.02d | 0d | RHD4 - (7 Days - 8 Hours)-48 | Store Keeper [320 h]; Store Keeper assistant [400 h] | Z7 |
| RHD4PRSHLSTAGSW1306 |  | Staging for Precast Concrete Zone 7 - SHL-DOS | 6d | 2026-11-16 | 2026-11-21 | RHD4PRSHLDOSSW1306 |  | -196.02d | 35d | RHD4 - (7 Days - 8 Hours)-48 | Store Keeper [320 h]; Store Keeper assistant [400 h] | Z7 |
| RHD4PRSHLSTAGSW1506 |  | Staging for HDPE pipes Zone 7 - SHL-DOS | 6d | 2026-11-16 | 2026-11-21 | RHD4PRSHLDOSSW1506 |  | -202.02d | 0d | RHD4 - (7 Days - 8 Hours)-48 | Store Keeper [320 h]; Store Keeper assistant [400 h] | Z7 |
| RHD4PRSHLSTAGSW1406 |  | Staging for Metal Works (Stairs - Manhole Covers) Zone 7 - SHL-DOS | 6d | 2026-11-22 | 2026-11-27 | RHD4PRSHLDOSSW1406 |  | -202.02d | 29d | RHD4 - (7 Days - 8 Hours)-48 | Store Keeper [320 h]; Store Keeper assistant [400 h] | Z7 |
|  | 6 | **RHD4-02-002-SHL-Staging Time - STAG -Sewage Network - SW - Zone 8** |  | 2026-11-10 | 2026-11-27 |  |  |  |  |  |  |  |
| RHD4PRSHLSTAGSW1107 |  | Staging for GRP pipes Zone 8 - SHL-DOS | 6d | 2026-11-10 | 2026-11-15 | RHD4PRSHLDOSSW1107 |  | -202.02d | 0d | RHD4 - (7 Days - 8 Hours)-48 | Store Keeper [320 h]; Store Keeper assistant [400 h] | Z8 |
| RHD4PRSHLSTAGSW1307 |  | Staging for Precast Concrete Zone 8 - SHL-DOS | 6d | 2026-11-16 | 2026-11-21 | RHD4PRSHLDOSSW1307, RHD4PRSHLSTAGSW1107 |  | -202.02d | 6d | RHD4 - (7 Days - 8 Hours)-48 | Store Keeper [320 h]; Store Keeper assistant [400 h] | Z8 |
| RHD4PRSHLSTAGSW1407 |  | Staging for Metal Works (Stairs - Manhole Covers) Zone 8 - SHL-DOS | 6d | 2026-11-16 | 2026-11-21 | RHD4PRSHLDOSSW1407 |  | -201d | 28d | RHD4 - (7 Days - 8 Hours)-48 | Store Keeper [320 h]; Store Keeper assistant [400 h] | Z8 |
| RHD4PRSHLSTAGSW1007 |  | Staging for UPVC pipes Zone 8 - SHL-DOS | 6d | 2026-11-22 | 2026-11-27 | RHD4PRSHLDOSSW1007 |  | -202.02d | 29d | RHD4 - (7 Days - 8 Hours)-48 | Store Keeper [320 h]; Store Keeper assistant [400 h] | Z8 |
|  | 9 | **RHD4-02-002-SHL-Staging Time - STAG -Sewage Network - SW - Zone 9** |  | 2026-11-16 | 2026-12-03 |  |  |  |  |  |  |  |
| RHD4PRSHLSTAGSW1308 |  | Staging for Precast Concrete Zone 9 - SHL-DOS | 6d | 2026-11-16 | 2026-11-21 | RHD4PRSHLDOSSW1308 |  | -201d | 28d | RHD4 - (7 Days - 8 Hours)-48 | Store Keeper [320 h]; Store Keeper assistant [400 h] | Z9 |
| RHD4PRSHLSTAGSW1408 |  | Staging for Metal Works (Stairs - Manhole Covers) Zone 9 - SHL-DOS | 6d | 2026-11-16 | 2026-11-21 | RHD4PRSHLDOSSW1408 |  | -201d | 28d | RHD4 - (7 Days - 8 Hours)-48 | Store Keeper [320 h]; Store Keeper assistant [400 h] | Z9 |
| RHD4PRSHLSTAGSW1008 |  | Staging for UPVC pipes Zone 9 - SHL-DOS | 6d | 2026-11-22 | 2026-11-27 | RHD4PRSHLDOSSW1008 |  | -202.02d | 29d | RHD4 - (7 Days - 8 Hours)-48 | Store Keeper [320 h]; Store Keeper assistant [400 h] | Z9 |
| RHD4PRSHLSTAGSW1108 |  | Staging for GRP pipes Zone 9 - SHL-DOS | 6d | 2026-11-28 | 2026-12-03 | RHD4PRSHLSTAGSW1101, RHD4PRSHLSTAGSW1302, RHD4PRSHLSTAGSW1307, RHD4PRSHLDOSSW1308, RHD4PRSHLPOSW1100, RHD4PRSHLDOSSW1108 |  | -208.02d | 23d | RHD4 - (7 Days - 8 Hours)-48 | Store Keeper [320 h]; Store Keeper assistant [400 h] | Z9 |

| ID | WBS | Activity | Duration | Start | Finish | Predecessors | Complete | Total float | Free float | Calendar | Resources |
| --- | --- | --- | --- | --- | --- | --- | --- | --- | --- | --- | --- |
|  | 116 | **RHD4-02-002-SHL-Staging Time - STAG -Potable Water Network - PT** |  | 2026-09-07 | 2027-01-06 |  |  |  |  |  |  |
|  | 1 | **RHD4-02-002-SHL-Staging Time - STAG -Potable Water Network - PT - Crossings** |  | 2026-11-16 | 2026-12-03 |  |  |  |  |  |  |
| RHD4PRSHLSTAPTCr1000 |  | Staging for HDPE pipes - PTCr - SHL-STAG | 6d | 2026-11-16 | 2026-11-21 | RHD4PRSHLDOSPTCr1000 |  | -201d | 28d | RHD4 - (7 Days - 8 Hours)-48 | Store Keeper [320 h]; Store Keeper assistant [400 h] |
| RHD4PRSHLSTAPTCr1200 |  | Staging for Valves - PTCr - SHL-STAG | 6d | 2026-11-16 | 2026-11-21 | RHD4PRSHLDOSPTCr1200 |  | -214.02d | 0d | RHD4 - (7 Days - 8 Hours)-48 | Store Keeper [320 h]; Store Keeper assistant [400 h] |
| RHD4PRSHLSTAPTCr1100 |  | Staging for Precast Concrete - PTCr - SHL-STAG | 6d | 2026-11-22 | 2026-11-27 | RHD4PRSHLDOSPTCr1100, RHD4PRSHLSTAPTCr1200 |  | -214.02d | 0d | RHD4 - (7 Days - 8 Hours)-48 | Store Keeper [320 h]; Store Keeper assistant [400 h] |
| RHD4PRSHLSTAPTCr1500 |  | Staging for Fire Hydrants - PTCr - SHL-STAG | 6d | 2026-11-22 | 2026-11-27 | RHD4PRSHLDOSPTCr1500 |  | -208.02d | 0d | RHD4 - (7 Days - 8 Hours)-48 | Store Keeper [320 h]; Store Keeper assistant [400 h] |
| RHD4PRSHLSTAPTCr1300 |  | Staging for Stem and Surface box - PTCr - SHL-STAG | 6d | 2026-11-28 | 2026-12-03 | RHD4PRSHLDOSPTCr1300, RHD4PRSHLSTAPTCr1500 |  | -208.02d | 23d | RHD4 - (7 Days - 8 Hours)-48 | Store Keeper [320 h]; Store Keeper assistant [400 h] |
| RHD4PRSHLSTAPTCr1400 |  | Staging for Metal Works (Chamber's Covers) - PTCr - SHL-STAG | 6d | 2026-11-28 | 2026-12-03 | RHD4PRSHLDOSPTCr1400, RHD4PRSHLSTAPTCr1100 |  | -214.02d | 3d | RHD4 - (7 Days - 8 Hours)-48 | Store Keeper [320 h]; Store Keeper assistant [400 h] |
|  | 2 | **RHD4-02-002-SHL-Staging Time - STAG -Potable Water Network - PT - Network** |  | 2026-09-07 | 2027-01-06 |  |  |  |  |  |  |
| RHD4PRSHLSTAGPT1000 |  | Staging for HDPE pipes - PT - SHL-STAG | 6d | 2026-09-07 A | 2026-09-12 A | RHD4PRSHLDOSPT1000 | 100% |  |  | RHD4 - (7 Days - 8 Hours)-48 | Store Keeper [320 h]; Store Keeper assistant [400 h] |
| RHD4PRSHLSTAGPT1100 |  | Staging for Precast Concrete - PT - SHL-STAG | 6d | 2026-09-14 A | 2026-09-19 A | RHD4PRSHLDOSPT1100 | 100% |  |  | RHD4 - (7 Days - 8 Hours)-48 | Store Keeper [320 h]; Store Keeper assistant [400 h] |
| RHD4PRSHLSTAGPT1200 |  | Staging for Valves - PT - SHL-STAG | 6d | 2026-11-16 | 2026-11-21 | RHD4PRSHLDOSPT1200 |  | -201d | 28d | RHD4 - (7 Days - 8 Hours)-48 | Store Keeper [320 h]; Store Keeper assistant [400 h] |
| RHD4PRSHLSTAGPT1400 |  | Staging for Metal Works (Chamber's Covers) - PT - SHL-STAG | 6d | 2026-11-23 | 2026-11-28 | RHD4PRSHLDOSPT1400 |  | -203.02d | 28d | RHD4 - (7 Days - 8 Hours)-48 | Store Keeper [320 h]; Store Keeper assistant [400 h] |
| RHD4PRSHLSTAGPT1500 |  | Staging for Fire Hydrants - PT - SHL-STAG | 6d | 2026-11-30 | 2026-12-05 | RHD4PRSHLDOSPT1500 |  | -210.02d | 21d | RHD4 - (7 Days - 8 Hours)-48 | Store Keeper [320 h]; Store Keeper assistant [400 h] |
| RHD4PRSHLSTAGPT1300 |  | Staging for Stem and Surface box - PT - SHL-STAG | 6d | 2027-01-01 | 2027-01-06 | RHD4PRSHLDOSPT1300 |  | -235d | 0d | RHD4 - (7 Days - 8 Hours)-48 | Store Keeper [320 h]; Store Keeper assistant [400 h] |
|  | 117 | **RHD4-02-002-SHL-Staging Time - STAG -Irrigation Network - IRR** |  | 2026-11-16 | 2027-01-12 |  |  |  |  |  |  |
|  | 1 | **RHD4-02-002-SHL-Staging Time - STAG -Irrigation Network - IRR - Crossings** |  | 2026-11-16 | 2026-12-09 |  |  |  |  |  |  |
| RHD4PRSHLSTAIRRC1000 |  | Staging for HDPE pipes - IRRC - SHL-STAG | 6d | 2026-11-16 | 2026-11-21 | RHD4PRSHLDOSIRRC1000 |  | -201d | 28d | RHD4 - (7 Days - 8 Hours)-48 | Store Keeper [320 h]; Store Keeper assistant [400 h] |
| RHD4PRSHLSTAIRRC1100 |  | Staging for Valves - IRRC - SHL-STAG | 6d | 2026-11-16 | 2026-11-21 | RHD4PRSHLDOSIRRC1100 |  | -220.02d | 0d | RHD4 - (7 Days - 8 Hours)-48 | Store Keeper [320 h]; Store Keeper assistant [400 h] |
| RHD4PRSHLSTAIRRC1200 |  | Staging for Precast Concrete - IRRC - SHL-STAG | 6d | 2026-11-22 | 2026-11-27 | RHD4PRSHLDOSIRRC1200, RHD4PRSHLSTAIRRC1100, RHD4PRSHLSTAIRRC1100 FF |  | -220.02d | 0d | RHD4 - (7 Days - 8 Hours)-48 | Store Keeper [320 h]; Store Keeper assistant [400 h] |
| RHD4PRSHLSTAIRRC1300 |  | Staging for Stem and Surface box - IRRC - SHL-STAG | 6d | 2026-11-28 | 2026-12-03 | RHD4PRSHLDOSIRRC1300, RHD4PRSHLSTAIRRC1200, RHD4PRSHLSTAIRRC1200 FF |  | -220.02d | 0d | RHD4 - (7 Days - 8 Hours)-48 | Store Keeper [320 h]; Store Keeper assistant [400 h] |
| RHD4PRSHLSTAIRRC1400 |  | Staging for Metal Works (Chamber's Covers) - IRRC - SHL-STAG | 6d | 2026-12-04 | 2026-12-09 | RHD4PRSHLDOSIRRC1400, RHD4PRSHLSTAIRRC1300, RHD4PRSHLSTAIRRC1300 FF |  | -220.02d | 4d | RHD4 - (7 Days - 8 Hours)-48 | Store Keeper [320 h]; Store Keeper assistant [400 h] |
|  | 2 | **RHD4-02-002-SHL-Staging Time - STAG -Irrigation Network - IRR - Network** |  | 2026-11-16 | 2027-01-12 |  |  |  |  |  |  |
| RHD4PRSHLSTAGIRR1000 |  | Staging for HDPE pipes - IRR - SHL-STAG | 6d | 2026-11-16 | 2026-11-21 | RHD4PRSHLDOSIRR1000 |  | -201d | 28d | RHD4 - (7 Days - 8 Hours)-48 | Store Keeper [320 h]; Store Keeper assistant [400 h] |
| RHD4PRSHLSTAGIRR1100 |  | Staging for Valves - IRR - SHL-STAG | 6d | 2026-11-16 | 2026-11-21 | RHD4PRSHLDOSIRR1100 |  | -196.02d | 35d | RHD4 - (7 Days - 8 Hours)-48 | Store Keeper [320 h]; Store Keeper assistant [400 h] |
| RHD4PRSHLSTAGIRR1200 |  | Staging for Precast Concrete - IRR - SHL-STAG | 6d | 2026-11-22 | 2026-11-27 | RHD4PRSHLDOSIRR1200 |  | -202.02d | 29d | RHD4 - (7 Days - 8 Hours)-48 | Store Keeper [320 h]; Store Keeper assistant [400 h] |
| RHD4PRSHLSTAGIRR1300 |  | Staging for Stem and Surface box - IRR - SHL-STAG | 6d | 2027-01-01 | 2027-01-06 | RHD4PRSHLDOSIRR1300 |  | -227d | 6d | RHD4 - (7 Days - 8 Hours)-48 | Store Keeper [320 h]; Store Keeper assistant [400 h] |
| RHD4PRSHLSTAGIRR1400 |  | Staging for Metal Works (Chamber's Covers) - IRR - SHL-STAG | 6d | 2027-01-07 | 2027-01-12 | RHD4PRSHLDOSIRR1400 |  | -233d | 0d | RHD4 - (7 Days - 8 Hours)-48 | Store Keeper [320 h]; Store Keeper assistant [400 h] |

| ID | WBS | Activity | Duration | Start | Finish | Predecessors | Complete | Total float | Free float | Calendar | Resources |
| --- | --- | --- | --- | --- | --- | --- | --- | --- | --- | --- | --- |
|  | 118 | **RHD4-02-002-SHL-Staging Time - STAG -Medium Voltage - MV** |  | 2026-11-16 | 2026-12-19 |  |  |  |  |  |  |
| RHD4PRSHLSTAGMV1000 |  | Staging for UPVC Pipes for Duct Banks - SHL-STAG | 6d | 2026-11-16 | 2026-11-21 | RHD4PRSHLDOSMV1000 |  | -201d | 28d | RHD4 - (7 Days - 8 Hours)-48 | Store Keeper [320 h]; Store Keeper assistant [400 h] |
| RHD4PRSHLSTAGMV1100 |  | Staging for Medium Voltage Cable 3Cx500 mm2 - SHL-STAG | 6d | 2026-12-14 | 2026-12-19 | RHD4PRSHLDOSMV1100 |  | -229d | 0d | RHD4 - (7 Days - 8 Hours)-48 | Store Keeper [320 h]; Store Keeper assistant [400 h] |
| RHD4PRSHLSTAGMV1200 |  | Staging for Medium Voltage Cable 3Cx50 mm2 - SHL-STAG | 6d | 2026-12-14 | 2026-12-19 | RHD4PRSHLDOSMV1200 |  | -229d | 0d | RHD4 - (7 Days - 8 Hours)-48 | Store Keeper [320 h]; Store Keeper assistant [400 h] |
| RHD4PRSHLSTAGMV1300 |  | Staging for Straight Joints 3Cx50 mm2 - SHL-STAG | 6d | 2026-12-14 | 2026-12-19 | RHD4PRSHLDOSMV1300 |  | -229d | 0d | RHD4 - (7 Days - 8 Hours)-48 | Store Keeper [320 h]; Store Keeper assistant [400 h] |
| RHD4PRSHLSTAGMV1400 |  | Staging for Normally Open Points (Outdoor type) - SHL-STAG | 6d | 2026-12-14 | 2026-12-19 | RHD4PRSHLDOSMV1400 |  | -229d | 0d | RHD4 - (7 Days - 8 Hours)-48 | Store Keeper [320 h]; Store Keeper assistant [400 h] |
|  | 119 | **RHD4-02-002-SHL-Staging Time - STAG -Low Voltage - LV** |  | 2026-11-16 | 2027-01-17 |  |  |  |  |  |  |
| RHD4PRSHLSTAGLV1000 |  | Staging for UPVC Pipes for Duct Banks - SHL-STAG | 6d | 2026-11-16 | 2026-11-21 | RHD4PRSHLDOSLV1000 |  | -201d | 28d | RHD4 - (7 Days - 8 Hours)-48 | Store Keeper [320 h]; Store Keeper assistant [400 h] |
| RHD4PRSHLSTAGLV1100 |  | Staging for Low voltage Cables - SHL-STAG | 6d | 2026-11-16 | 2026-11-21 | RHD4PRSHLDOSLV1100 |  | -201d | 28d | RHD4 - (7 Days - 8 Hours)-48 | Store Keeper [320 h]; Store Keeper assistant [400 h] |
| RHD4PRSHLSTAGLV1200 |  | Staging for Distribution Pillars - SHL-STAG | 6d | 2026-12-07 | 2026-12-12 | RHD4PRSHLDOSLV1200 |  | -222d | 7d | RHD4 - (7 Days - 8 Hours)-48 | Store Keeper [320 h]; Store Keeper assistant [400 h] |
| RHD4PRSHLSTAGLV1300 |  | Staging for KWH Meter mounting Frame - SHL-STAG | 6d | 2026-12-07 | 2026-12-12 | RHD4PRSHLDOSLV1300 |  | -222d | 7d | RHD4 - (7 Days - 8 Hours)-48 | Store Keeper [320 h]; Store Keeper assistant [400 h] |
| RHD4PRSHLSTAGLV1500 |  | Staging for Earthing for Pillars and Panels - SHL-STAG | 6d | 2026-12-07 | 2026-12-12 | RHD4PRSHLDOSLV1500, RHD4PRSHLSTAPTCr1400 |  | -217.02d | 14d | RHD4 - (7 Days - 8 Hours)-48 | Store Keeper [320 h]; Store Keeper assistant [400 h] |
| RHD4PRSHLSTAGLV1400 |  | Staging for Low Voltage Drawpit - SHL-STAG | 6d | 2027-01-11 | 2027-01-17 | RHD4PRSHLDOSLV1400 |  | -231.02d | 0d | RHD4 - (7 Days - 8 Hours)-48 | Store Keeper [320 h]; Store Keeper assistant [400 h] |
|  | 120 | **RHD4-02-002-SHL-Staging Time - STAG -Street Lighting Network -SL** |  | 2026-09-15 | 2027-01-23 |  |  |  |  |  |  |
| RHD4PRSHLSTAGSL1000 |  | Staging for UPVC Pipes for Duct Banks - SHL-STAG | 6d | 2026-09-15 A | 2026-09-20 A | RHD4PRSHLDOSSL1000 | 100% |  |  | RHD4 - (7 Days - 8 Hours)-48 | Store Keeper [320 h]; Store Keeper assistant [400 h] |
| RHD4PRSHLSTAGSL1400 |  | Staging for Street Lighting Drawpit - SHL-STAG | 6d | 2026-10-07 A | 2026-10-12 A | RHD4PRSHLDOSSL1400 | 100% |  |  | RHD4 - (7 Days - 8 Hours)-48 | Store Keeper [320 h]; Store Keeper assistant [400 h] |
| RHD4PRSHLSTAGSL1200 |  | Staging for Lighting Poles - SHL-STAG | 6d | 2026-10-17 A | 2026-10-22 A | RHD4PRSHLDOSSL1200 | 100% |  |  | RHD4 - (7 Days - 8 Hours)-48 | Store Keeper [320 h]; Store Keeper assistant [400 h] |
| RHD4PRSHLSTAGSL1300 |  | Staging for Street Lighting Luminaire - SHL-STAG | 6d | 2026-10-27 A | 2026-11-01 A | RHD4PRSHLDOSSL1300, RHD4PRSHLSTAGSL1200 | 100% |  |  | RHD4 - (7 Days - 8 Hours)-48 | Store Keeper [320 h]; Store Keeper assistant [400 h] |
| RHD4PRSHLSTAGSL1100 |  | Staging for Street Lighting Cables - SHL-STAG | 6d | 2027-01-17 | 2027-01-23 | RHD4PRSHLDOSSL1100 |  | -229.02d | 2.98d | RHD4 - (7 Days - 8 Hours)-48 | Store Keeper [320 h]; Store Keeper assistant [400 h] |
|  | 121 | **RHD4-02-002-SHL-Staging Time - STAG -Landscape Network - LS** |  | 2026-11-10 | 2026-11-15 |  |  |  |  |  |  |
| RHD4PRSHLSTAGLS1000 |  | Staging for Landscape Lighting (Bollard) - SHL-STAG | 6d | 2026-11-10 | 2026-11-15 | RHD4PRSHLPOSL1300 SS, RHD4GNPPMAT1100, RHD4ENMARSUBSL400 SS |  | -195d | 34d | RHD4 - (7 Days - 8 Hours)-48 | Store Keeper [320 h]; Store Keeper assistant [400 h] |
|  | 122 | **RHD4-02-002-SHL-Staging Time - STAG -Telecommunications Network - TC** |  | 2026-09-08 | 2027-02-07 |  |  |  |  |  |  |
| RHD4PRSHLSTAGTC1000 |  | Staging for HDPE Ducts - SHL-STAG | 6d | 2026-09-08 A | 2026-09-13 A | RHD4PRSHLDOSTC1000 | 100% |  |  | RHD4 - (7 Days - 8 Hours)-48 | Store Keeper [320 h]; Store Keeper assistant [400 h] |
| RHD4PRSHLSTAGTC1100 |  | Staging for HDPE Road Crossings Ducts - SHL-STAG | 6d | 2027-01-17 | 2027-01-23 | RHD4PRSHLDOSTC1100 |  | -213.02d | 0d | RHD4 - (7 Days - 8 Hours)-48 | Store Keeper [320 h]; Store Keeper assistant [400 h] |
| RHD4PRSHLSTAGTC1200 |  | Staging for Telecommunications Manhole - SHL-STAG | 6d | 2027-02-02 | 2027-02-07 | RHD4PRSHLDOSTC1200 |  | -93d | 90.02d | RHD4 - (7 Days - 8 Hours)-48 | Store Keeper [320 h]; Store Keeper assistant [400 h] |

| ID | WBS | Activity | Duration | Start | Finish | Predecessors | Total float | Free float | Calendar | Resources | RDH4-01-001-Phases-1 | RDH4-01-001-Networks-1 |
| --- | --- | --- | --- | --- | --- | --- | --- | --- | --- | --- | --- | --- |
|  | 123 | **RHD4-02-002-SHL-Staging Time - STAG -Information and Communication Technologies - ICT** |  | 2026-11-16 | 2027-02-19 |  |  |  |  |  |  |  |
| RHD4PRSHLSTAGICT1200 |  | Staging for Telecommunications Manhole - SHL-STAG | 6d | 2026-11-16 | 2026-11-21 | RHD4PRSHLDOSICT1200 | -196.02d | 35d | RHD4 - (7 Days - 8 Hours)-48 | Store Keeper [320 h]; Store Keeper assistant [400 h] |  |  |
| RHD4PRSHLSTAGICT1100 |  | Staging for HDPE Road Crossings Ducts - SHL-STAG | 6d | 2027-02-08 | 2027-02-13 | RHD4PRSHLDOSICT1100 | -232d | 0d | RHD4 - (7 Days - 8 Hours)-48 | Store Keeper [320 h]; Store Keeper assistant [400 h] |  |  |
| RHD4PRSHLSTAGICT1000 |  | Staging for HDPE Ducts - SHL-STAG | 6d | 2027-02-14 | 2027-02-19 | RHD4PRSHLDOSICT1000 | -201d | 17d | RHD4 - (7 Days - 8 Hours)-48 | Store Keeper [320 h]; Store Keeper assistant [400 h] |  |  |
|  | 124 | **RHD4-02-002-SHL-Staging Time - STAG -Security Network - CCTV** |  | 2026-11-30 | 2026-12-26 |  |  |  |  |  |  |  |
| RHD4PRSHLSTACCTV1000 |  | Staging for CCTV Network Poles - SHL-STAG | 6d | 2026-11-30 | 2026-12-05 | RHD4PRSHLDOSCCTV1000 | -210.02d | 21d | RHD4 - (7 Days - 8 Hours)-48 | Store Keeper [320 h]; Store Keeper assistant [400 h] |  |  |
| RHD4PRSHLSTACCTV1200 |  | Staging for CCTV Panels and Panel's Components - SHL-STAG | 6d | 2026-12-07 | 2026-12-12 | RHD4PRSHLDOSCCTV1200 | -217.02d | 14d | RHD4 - (7 Days - 8 Hours)-48 | Store Keeper [320 h]; Store Keeper assistant [400 h] |  |  |
| RHD4PRSHLSTACCTV1300 |  | Staging for CCTV Fiber Optic Cables - SHL-STAG | 6d | 2026-12-14 | 2026-12-19 | RHD4PRSHLDOSCCTV1300, RHD4PRSHLSTAIRRC1400 | -224.02d | 7d | RHD4 - (7 Days - 8 Hours)-48 | Store Keeper [320 h]; Store Keeper assistant [400 h] |  |  |
| RHD4PRSHLSTACCTV1100 |  | Staging for CCTV Network Cameras - SHL-STAG | 6d | 2026-12-21 | 2026-12-26 | RHD4PRSHLDOSCCTV1100 | -231.02d | 0d | RHD4 - (7 Days - 8 Hours)-48 | Store Keeper [320 h]; Store Keeper assistant [400 h] |  |  |
|  | 125 | **RHD4-02-002-SHL-Staging Time - STAG -Road Works - RD** |  | 2026-11-16 | 2026-12-19 |  |  |  |  |  |  |  |
| RHD4PRSHLSTAGRD1000 |  | Staging for Aggregate Base Courses - SHL-STAG | 6d | 2026-11-16 | 2026-11-21 | RHD4PRSHLDOSRD1000 | -201d | 28d | RHD4 - (7 Days - 8 Hours)-48 | Store Keeper [320 h]; Store Keeper assistant [400 h] |  |  |
| RHD4PRSHLSTAGRD1100 |  | Staging for Bituminous Asphalt Layers - SHL-STAG | 6d | 2026-11-16 | 2026-11-21 | RHD4PRSHLDOSRD1100 | -201d | 28d | RHD4 - (7 Days - 8 Hours)-48 | Store Keeper [320 h]; Store Keeper assistant [400 h] |  |  |
| RHD4PRSHLSTAGRD1200 |  | Staging for Precast Concrete Curbstone - SHL-STAG | 6d | 2026-11-16 | 2026-11-21 | RHD4PRSHLDOSRD1200 | -201d | 28d | RHD4 - (7 Days - 8 Hours)-48 | Store Keeper [320 h]; Store Keeper assistant [400 h] |  |  |
| RHD4PRSHLSTAGRD1600 |  | Staging for Traffic Signage - SHL-STAG | 6d | 2026-11-23 | 2026-11-28 | RHD4PRSHLDOSRD1600 | -208d | 21d | RHD4 - (7 Days - 8 Hours)-48 | Store Keeper [320 h]; Store Keeper assistant [400 h] |  |  |
| RHD4PRSHLSTAGRD1300 |  | Staging for Interlock Precast Concrete Unit Paving - SHL-STAG | 6d | 2026-11-30 | 2026-12-05 | RHD4PRSHLDOSRD1300 | -210.02d | 21d | RHD4 - (7 Days - 8 Hours)-48 | Store Keeper [320 h]; Store Keeper assistant [400 h] |  |  |
| RHD4PRSHLSTAGRD1400 |  | Staging for Wheel Stopper - SHL-STAG | 6d | 2026-12-07 | 2026-12-12 | RHD4PRSHLDOSRD1400 | -217.02d | 14d | RHD4 - (7 Days - 8 Hours)-48 | Store Keeper [320 h]; Store Keeper assistant [400 h] |  |  |
| RHD4PRSHLSTAGRD1500 |  | Staging for Pavement Marking - SHL-STAG | 6d | 2026-12-14 | 2026-12-19 | RHD4PRSHLDOSRD1500 | -224.02d | 7d | RHD4 - (7 Days - 8 Hours)-48 | Store Keeper [320 h]; Store Keeper assistant [400 h] |  |  |
|  | 1 | **RHD4-02-002-SHL-Staging Time - STAG -Lift Stations - LFS** |  | 2026-11-16 | 2026-12-19 |  |  |  |  |  |  |  |
| RHD4PRSHLSTAGLFS1700 |  | Staging Time for Ductile Iron Pipes & Fittings - SHL-STAG | 6d | 2026-11-16 | 2026-11-21 | RHD4PRSHLPOLFS1700, RHD4PRSHLDOSLFS1700 | -201d | 28d | RHD4 - (7 Days - 8 Hours)-48 | Store Keeper [529.7 h]; Store Keeper assistant [662.13 h] | PROC | MAT |
| RHD4PRSHLSTAGLFS1800 |  | Staging Time for Sewage Lift Station Valves - SHL-STAG | 6d | 2026-11-16 | 2026-11-21 | RHD4PRSHLPOLFS1800, RHD4PRSHLDOSLFS1800 | -201d | 28d | RHD4 - (7 Days - 8 Hours)-48 | Store Keeper [529.7 h]; Store Keeper assistant [662.13 h] | PROC | MAT |
| RHD4PRSHLSTAGLFS1900 |  | Staging Time for Basket screen - SHL-STAG | 6d | 2026-11-16 | 2026-11-21 | RHD4PRSHLPOLFS1900, RHD4PRSHLDOSLFS1900 | -201d | 28d | RHD4 - (7 Days - 8 Hours)-48 | Store Keeper [529.7 h]; Store Keeper assistant [662.13 h] | PROC | MAT |
| RHD4PRSHLSTAGLFS2600 |  | Staging Time for Low Voltage Cables - SHL-STAG | 6d | 2026-11-16 | 2026-11-21 | RHD4PRSHLPOLFS2600, RHD4PRSHLDOSLFS2600 | -201d | 28d | RHD4 - (7 Days - 8 Hours)-48 | Store Keeper [529.7 h]; Store Keeper assistant [662.13 h] | PROC | MAT |
| RHD4PRSHLSTAGLFS2700 |  | Staging Time for Lighting Fixtures - SHL-STAG | 6d | 2026-11-16 | 2026-11-21 | RHD4PRSHLPOLFS2700, RHD4PRSHLDOSLFS2700 | -196.02d | 35d | RHD4 - (7 Days - 8 Hours)-48 | Store Keeper [529.7 h]; Store Keeper assistant [662.13 h] | PROC | MAT |
| RHD4PRSHLSTAGLFS1100 |  | Staging Time for Roof Waterproofing System - SHL-STAG | 6d | 2026-11-23 | 2026-11-28 | RHD4PRSHLPOLFS1100, RHD4PRSHLDOSLFS1100 | -208d | 21d | RHD4 - (7 Days - 8 Hours)-48 | Store Keeper [529.7 h]; Store Keeper assistant [662.13 h] | PROC | MAT |
| RHD4PRSHLSTAGLFS1200 |  | Staging Time for Bituminous Sheet Waterproofing - SHL-STAG | 6d | 2026-11-23 | 2026-11-28 | RHD4PRSHLPOLFS1200, RHD4PRSHLDOSLFS1200 | -208d | 21d | RHD4 - (7 Days - 8 Hours)-48 | Store Keeper [529.7 h]; Store Keeper assistant [662.13 h] | PROC | MAT |
| RHD4PRSHLSTAGLFS1600 |  | Staging Time for Epoxy Coating - SHL-STAG | 6d | 2026-11-23 | 2026-11-28 | RHD4PRSHLPOLFS1600, RHD4PRSHLDOSLFS1600 | -208d | 21d | RHD4 - (7 Days - 8 Hours)-48 | Store Keeper [529.7 h]; Store Keeper assistant [662.13 h] | PROC | MAT |
| RHD4PRSHLSTAGLFS2100 |  | Staging Time for UPVC Pipes for Sanitary Drain - SHL-STAG | 6d | 2026-11-23 | 2026-11-28 | RHD4PRSHLPOLFS2100, RHD4PRSHLDOSLFS2100 | -208d | 21d | RHD4 - (7 Days - 8 Hours)-48 | Store Keeper [529.7 h]; Store Keeper assistant [662.13 h] | PROC | MAT |
| RHD4PRSHLSTAGLFS2400 |  | Staging Time for lighting and power panel boards - SHL-STAG | 6d | 2026-11-23 | 2026-11-28 | RHD4PRSHLPOLFS2400, RHD4PRSHLDOSLFS2400 | -208d | 21d | RHD4 - (7 Days - 8 Hours)-48 | Store Keeper [529.7 h]; Store Keeper assistant [662.13 h] | PROC | MAT |
| RHD4PRSHLSTAGLFS3000 |  | Staging Time for Fire Alarm System - SHL-STAG | 6d | 2026-11-23 | 2026-11-28 | RHD4PRSHLPOLFS3000, RHD4PRSHLDOSLFS3000 | -208d | 2d | RHD4 - (7 Days - 8 Hours)-48 | Store Keeper [529.7 h]; Store Keeper assistant [662.13 h] | PROC | MAT |
| RHD4PRSHLSTAGLFS1300 |  | Staging Time for Fluid-Applied Waterproofing - SHL-STAG | 6d | 2026-11-30 | 2026-12-05 | RHD4PRSHLPOLFS1300, RHD4PRSHLDOSLFS1300 | -215d | 14d | RHD4 - (7 Days - 8 Hours)-48 | Store Keeper [529.7 h]; Store Keeper assistant [662.13 h] | PROC | MAT |
| RHD4PRSHLSTAGLFS2300 |  | Staging Time for Motor Control Center (MCC) - SHL-STAG | 6d | 2026-11-30 | 2026-12-05 | RHD4PRSHLPOLFS2300, RHD4PRSHLDOSLFS2300 | -215d | 14d | RHD4 - (7 Days - 8 Hours)-48 | Store Keeper [529.7 h]; Store Keeper assistant [662.13 h] | PROC | MAT |
| RHD4PRSHLSTAGLFS2800 |  | Staging Time for Wiring Devices - SHL-STAG | 6d | 2026-11-30 | 2026-12-05 | RHD4PRSHLPOLFS2800, RHD4PRSHLDOSLFS2800 | -215d | 14d | RHD4 - (7 Days - 8 Hours)-48 | Store Keeper [529.7 h]; Store Keeper assistant [662.13 h] | PROC | MAT |
| RHD4PRSHLSTAGLFS1000 |  | Staging Time for Metal Ladder and checkered Plate - SHL-STAG | 6d | 2026-12-07 | 2026-12-12 | RHD4PRSHLPOLFS1000, RHD4PRSHLDOSLFS1000 | -217.02d | 14d | RHD4 - (7 Days - 8 Hours)-48 | Store Keeper [529.7 h]; Store Keeper assistant [662.13 h] | PROC | MAT |
| RHD4PRSHLSTAGLFS1400 |  | Staging Time for Metal Doors and Access Doors and Frames - SHL-STAG | 6d | 2026-12-07 | 2026-12-12 | RHD4PRSHLPOLFS1400, RHD4PRSHLDOSLFS1400 | -222d | 7d | RHD4 - (7 Days - 8 Hours)-48 | Store Keeper [529.7 h]; Store Keeper assistant [662.13 h] | PROC | MAT |
| RHD4PRSHLSTAGLFS2200 |  | Staging Time for wall mounted Split/AC - SHL-STAG | 6d | 2026-12-07 | 2026-12-12 | RHD4PRSHLPOLFS2200, RHD4PRSHLDOSLFS2200 | -222d | 7d | RHD4 - (7 Days - 8 Hours)-48 | Store Keeper [529.7 h]; Store Keeper assistant [662.13 h] | PROC | MAT |
| RHD4PRSHLSTAGLFS2900 |  | Staging Time for Enclosed Switches and Circuit Breakers - SHL-STAG | 6d | 2026-12-07 | 2026-12-12 | RHD4PRSHLPOLFS2900, RHD4PRSHLDOSLFS2900 | -222d | 7d | RHD4 - (7 Days - 8 Hours)-48 | Store Keeper [529.7 h]; Store Keeper assistant [662.13 h] | PROC | MAT |
| RHD4PRSHLSTAGLFS1500 |  | Staging Time for Painting - SHL-STAG | 6d | 2026-12-14 | 2026-12-19 | RHD4PRSHLPOLFS1500, RHD4PRSHLDOSLFS1500 | -229d | 0d | RHD4 - (7 Days - 8 Hours)-48 | Store Keeper [529.7 h]; Store Keeper assistant [662.13 h] | PROC | MAT |
| RHD4PRSHLSTAGLFS2500 |  | Staging Time for Earthing for Lift Stations - SHL-STAG | 6d | 2026-12-14 | 2026-12-19 | RHD4PRSHLPOLFS2500, RHD4PRSHLDOSLFS2500 | -229d | 0d | RHD4 - (7 Days - 8 Hours)-48 | Store Keeper [529.7 h]; Store Keeper assistant [662.13 h] | PROC | MAT |
| RHD4PRSHLSTAGLFS3100 |  | Staging Time for Fences and Gates - SHL-STAG | 6d | 2026-12-14 | 2026-12-19 | RHD4PRSHLDOSLFS3100 | -229d | 0d | RHD4 - (7 Days - 8 Hours)-48 | Store Keeper [529.7 h]; Store Keeper assistant [662.13 h] | PROC | MAT |

| ID | WBS | Activity | Duration | Start | Finish | Predecessors | Complete | Remaining | Planned start | Planned finish | Total float | Free float | Resources | Cost | Actual cost | RDH4-01-001-Road and Block Names-1 | RDH4-01-001-Zones-1 | RDH4-01-001-Phases-1 | RDH4-01-001-Networks-1 | RDH4-01-001-Work Method-1 |
| --- | --- | --- | --- | --- | --- | --- | --- | --- | --- | --- | --- | --- | --- | --- | --- | --- | --- | --- | --- | --- |
|  | 137 | **RHD4-02-002-Construction** |  | 2025-12-22 | 2028-11-02 |  |  |  |  |  |  |  |  |  |  |  |  |  |  |  |
|  | 138 | **Demolition - DM** |  | 2026-09-19 | 2028-03-21 |  |  |  |  |  |  |  |  |  |  |  |  |  |  |  |
|  | 139 | **RHD4-02-002-Demolition - DM** |  | 2026-09-19 | 2028-03-21 |  |  |  |  |  |  |  |  |  |  |  |  |  |  |  |
|  | 148 | **Z3** |  | 2026-09-19 | 2028-01-02 |  |  |  |  |  |  |  |  |  |  |  |  |  |  |  |
|  | 149 | **RHD4-02-002-Demolition - DM-Z3-(RD-C-1 /1)** |  |  |  |  |  |  |  |  |  |  |  |  |  |  |  |  |  |  |
|  | 150 | **RHD4-02-002-Demolition - DM-Z3-(RD-C-8 /3)** |  | 2026-09-19 | 2028-01-02 |  |  |  |  |  |  |  |  |  |  |  |  |  |  |  |
| RHD4CZ3C083DM1200 |  | Removal of Trees for Road (RD-C-8 /3) - (B1.02 41 00.03)-Z3-C083-DM | 4d | 2026-09-19 A | 2028-01-02 | RHD4ENSDZ3APPEW100, RHD4CZ3C083DM2000 | 82% | 2d | 2027-08-08 | 2027-08-11 | -82d | 0d | Skilled labor [35.39 h]; Unskilled Labor [70.79 h]; Equipment Opreator [35.39 h]; Dump Truck [35.39 h]; Removal of Trees [73 nr] | 178,923 | 147,056.81 | C083 | Z3 | CONS | DM | Removal of Trees |
| RHD4CZ3C083DM1000 |  | Removal of curbstone for Road (RD-C-8 /3) - (B1.02 41 00.01)-Z3-C083-DM | 3d | 2027-11-17 | 2027-11-20 | RHD4CZ4A013SL5200, RHD4CZ1C081RW3000 |  |  |  |  | -82d | 0d | Skilled labor [55 h]; Unskilled Labor [109.88 h]; Equipment Opreator [27.44 h]; Dump Truck [27.44 h]; Removal of curbstone [883 m] | 15,894 |  | C083 | Z3 | CONS | DM | Removal of curbstone |
| RHD4CZ3C083DM1100 |  | Removal of sidewalk for Road (RD-C-8 /3) - (B1.02 41 00.02)-Z3-C083-DM | 9d | 2027-11-21 | 2027-11-30 | RHD4CZ3C083DM1000 |  |  |  |  | -82d | 0d | Skilled labor [180.8 h]; Unskilled Labor [542.34 h]; Equipment Opreator [90.4 h]; Dump Truck [90.4 h]; Removal of sidewalk [1245 m2] | 22,410 |  | C083 | Z3 | CONS | DM | Removal of sidewalk |
| RHD4CZ3C083DM1300 |  | Removal of existing New Jersy for Road (RD-C-8 /3) - (B1.02 41 00.04)-Z3-C083-DM | 2d | 2027-12-01 | 2027-12-02 | RHD4GNPERMITENV3000, RHD4CZ3C083DM1100 |  |  |  |  | -82d | 0d | Skilled labor [19.71 h]; Unskilled Labor [39.53 h]; Equipment Opreator [118.49 h]; Boom Truck [39.53 h]; Dump Truck [78.96 h]; Removal of existing New Jersy [725 m] | 26,825 |  | C083 | Z3 | CONS | DM | Removal of existing New Jersy |
| RHD4CZ3C083DM1400 |  | Relocation of existing Electrical cable for Road (RD-C-8 /3) - (B1.02 41 00.09)-Z3-C083-DM | 7d | 2027-12-04 | 2027-12-11 | RHD4CZ3C083DM1300 |  |  |  |  | -82d | 0d | Skilled labor [73.73 h]; Unskilled Labor [294.8 h]; Equipment Opreator [73.73 h]; Excavator-Poclain [73.73 h]; Relocation of existing Electrical cable [1015 m] | 124,845 |  | C083 | Z3 | CONS | DM | Relocation of existing Electrical cable |
| RHD4CZ3C083DM1500 |  | Relocation of existing Electrical manhole for Road (RD-C-8 /3) - (B1.02 41 00.10)-Z3-C083-DM | 3d | 2027-12-12 | 2027-12-14 | RHD4CZ3C083DM1400 |  |  |  |  | -82d | 0d | Skilled labor [23.96 h]; Unskilled Labor [47.92 h]; Equipment Opreator [23.96 h]; Excavator-Poclain [23.96 h]; Relocation of existing Electrical manhole [11 nr] | 26,961 |  | C083 | Z3 | CONS | DM | Relocation of existing Electrical manhole |
| RHD4CZ3C083DM1600 |  | Relocation of existing Sewer manholes for Road (RD-C-8 /3) - (B1.02 41 00.11)-Z3-C083-DM | 2d | 2027-12-15 | 2027-12-16 | RHD4CZ3C083DM1500 |  |  |  |  | -82d | 0d | Skilled labor [2.18 h]; Unskilled Labor [4.36 h]; Equipment Opreator [2.18 h]; Excavator-Poclain [2.18 h]; Relocation of existing Sewer manholes. [1 nr] | 24,514 |  | C083 | Z3 | CONS | DM | Relocation of existing Sewer manholes |
| RHD4CZ3C083DM1700 |  | Relocation of existing Storm manholes for Road (RD-C-8 /3) - (B1.02 41 00.12)-Z3-C083-DM | 2d | 2027-12-18 | 2027-12-19 | RHD4CZ3C083DM1600 |  |  |  |  | -82d | 0d | Skilled labor [2.72 h]; Unskilled Labor [5.45 h]; Equipment Opreator [2.72 h]; Excavator-Poclain [2.72 h]; Relocation of existing Storm manholes. [2 nr] | 49,028 |  | C083 | Z3 | CONS | DM | Relocation of existing Storm manholes |
| RHD4CZ3C083DM1800 |  | Relocation of existing Waterline for Road (RD-C-8 /3) - (B1.02 41 00.13)-Z3-C083-DM | 6d | 2027-12-20 | 2027-12-26 | RHD4CZ3C083DM1700 |  |  |  |  | -82d | 0d | Unskilled Labor [252 h]; Plumber [62.95 h]; Equipment Opreator [126 h]; Excavator-Poclain [126 h]; Relocation of existing Waterline [1446 m] | 354,270 |  | C083 | Z3 | CONS | DM | Relocation of existing Waterline |
| RHD4CZ3C083DM2000 |  | Relocation of existing Medium tension Pole for Road (RD-C-8 /3) - (B1.02 41 00.15)-Z3-C083-DM | 4d | 2027-12-27 | 2027-12-30 | RHD4CZ3C083DM1800 |  |  |  |  | -82d | 0d | Unskilled Labor [80.59 h]; Electrician [40.29 h]; Equipment Opreator [80.59 h]; Boom Truck [40.29 h]; Dump Truck [40.29 h]; Relocation of existing Medium tension Pole [37 nr] | 907,018 |  | C083 | Z3 | CONS | DM | Relocation of existing Medium tension Pole |
|  | 143 | **Z2** |  | 2028-01-03 | 2028-02-05 |  |  |  |  |  |  |  |  |  |  |  |  |  |  |  |
|  | 144 | **RHD4-02-002-Demolition - DM-Z2-(RD-C-8 /2)** |  | 2028-01-03 | 2028-02-05 |  |  |  |  |  |  |  |  |  |  |  |  |  |  |  |
| RHD4CZ2C082DM1000 |  | Removal of curbstone for Road (RD-C-8 /2) - (B1.02 41 00.01)-Z2-C082-DM | 4d | 2028-01-03 | 2028-01-06 | RHD4CZ3C083DM1000, RHD4CZ3C083DM1200 |  |  |  |  | -82d | 0d | Skilled labor [85.27 h]; Unskilled Labor [170.65 h]; Equipment Opreator [42.69 h]; Dump Truck [42.69 h]; Removal of curbstone [1371 m] | 24,678 |  | C082 | Z2 | CONS | DM | Removal of curbstone |
| RHD4CZ2C082DM1100 |  | Removal of sidewalk for Road (RD-C-8 /2) - (B1.02 41 00.02)-Z2-C082-DM | 8d | 2028-01-08 | 2028-01-16 | RHD4CZ2C082DM1000 |  |  |  |  | -82d | 0d | Skilled labor [170 h]; Unskilled Labor [510.1 h]; Equipment Opreator [85.05 h]; Dump Truck [85.05 h]; Removal of sidewalk [1171 m2] | 21,078 |  | C082 | Z2 | CONS | DM | Removal of sidewalk |
| RHD4CZ2C082DM1300 |  | Removal of existing New Jersy for Road (RD-C-8 /2) - (B1.02 41 00.04)-Z2-C082-DM | 2d | 2028-01-17 | 2028-01-18 | RHD4GNPERMITENV3000, RHD4CZ2C082DM1100 |  |  |  |  | -82d | 0d | Skilled labor [14.81 h]; Unskilled Labor [29.73 h]; Equipment Opreator [89.08 h]; Boom Truck [29.73 h]; Dump Truck [59.35 h]; Removal of existing New Jersy [545 m] | 20,165 |  | C082 | Z2 | CONS | DM | Removal of existing New Jersy |
| RHD4CZ2C082DM1500 |  | Relocation of existing Electrical manhole for Road (RD-C-8 /2) - (B1.02 41 00.10)-Z2-C082-DM | 3d | 2028-01-19 | 2028-01-22 | RHD4CZ2C082DM1300 |  |  |  |  | -82d | 0d | Skilled labor [26.14 h]; Unskilled Labor [52.27 h]; Equipment Opreator [26.14 h]; Excavator-Poclain [26.14 h]; Relocation of existing Electrical manhole [12 nr] | 29,412 |  | C082 | Z2 | CONS | DM | Relocation of existing Electrical manhole |
| RHD4CZ2C082DM1800 |  | Relocation of existing Waterline for Road (RD-C-8 /2) - (B1.02 41 00.13)-Z2-C082-DM | 12d | 2028-01-23 | 2028-02-05 | RHD4CZ2C082DM1500, RHD4CZ3C083DM1200 FF |  |  |  |  | -82d | 0d | Unskilled Labor [507.38 h]; Plumber [126.87 h]; Equipment Opreator [253.75 h]; Excavator-Poclain [253.75 h]; Relocation of existing Waterline [2912 m] | 713,440 |  | C082 | Z2 | CONS | DM | Relocation of existing Waterline |
|  | 140 | **Z1** |  | 2028-02-06 | 2028-03-21 |  |  |  |  |  |  |  |  |  |  |  |  |  |  |  |
|  | 141 | **RHD4-02-002-Demolition - DM-Z1-(RD-C-8 /1)** |  | 2028-02-06 | 2028-03-21 |  |  |  |  |  |  |  |  |  |  |  |  |  |  |  |
| RHD4CZ1C081DM1000 |  | Removal of curbstone for Road (RD-C-8 /1) - (B1.02 41 00.01)-Z1-C081-DM | 5d | 2028-02-06 | 2028-02-10 | RHD4CZ2C082DM1000, RHD4CZ2C082DM1800 |  |  |  |  | -82d | 0d | Skilled labor [91.59 h]; Unskilled Labor [183.07 h]; Equipment Opreator [45.74 h]; Dump Truck [45.74 h]; Removal of curbstone [1471 m] | 26,478 |  | C081 | Z1 | CONS | DM | Removal of curbstone |
| RHD4CZ1C081DM1100 |  | Removal of sidewalk for Road (RD-C-8 /1) - (B1.02 41 00.02)-Z1-C081-DM | 8d | 2028-02-12 | 2028-02-20 | RHD4CZ1C081DM1000 |  |  |  |  | -82d | 0d | Skilled labor [159.54 h]; Unskilled Labor [478.74 h]; Equipment Opreator [79.83 h]; Dump Truck [79.83 h]; Removal of sidewalk [1099 m2] | 19,782 |  | C081 | Z1 | CONS | DM | Removal of sidewalk |
| RHD4CZ1C081DM1300 |  | Removal of existing New Jersy for Road (RD-C-8 /1) - (B1.02 41 00.04)-Z1-C081-DM | 4d | 2028-02-21 | 2028-02-26 | RHD4GNPERMITENV3000, RHD4CZ1C081DM1100 |  |  |  |  | -82d | 0d | Skilled labor [36.05 h]; Unskilled Labor [72.2 h]; Equipment Opreator [216.5 h]; Boom Truck [72.2 h]; Dump Truck [144.3 h]; Removal of existing New Jersy [1325 m] | 49,025 |  | C081 | Z1 | CONS | DM | Removal of existing New Jersy |
| RHD4CZ1C081DM1600 |  | Relocation of existing Sewer manholes for Road (RD-C-8 /1) - (B1.02 41 00.11)-Z1-C081-DM | 2d | 2028-03-01 | 2028-03-02 | RHD4CZ1C081DM1300 |  |  |  |  | -82d | 0d | Skilled labor [2.18 h]; Unskilled Labor [4.36 h]; Equipment Opreator [2.18 h]; Excavator-Poclain [2.18 h]; Relocation of existing Sewer manholes. [1 nr] | 24,514 |  | C081 | Z1 | CONS | DM | Relocation of existing Sewer manholes |
| RHD4CZ1C081DM1800 |  | Relocation of existing Waterline for Road (RD-C-8 /1) - (B1.02 41 00.13)-Z1-C081-DM | 11d | 2028-03-04 | 2028-03-15 | RHD4CZ1C081DM1600 |  |  |  |  | -82d | 0d | Unskilled Labor [461.42 h]; Plumber [115.33 h]; Equipment Opreator [230.66 h]; Excavator-Poclain [230.66 h]; Relocation of existing Waterline [2648 m] | 648,760 |  | C081 | Z1 | CONS | DM | Relocation of existing Waterline |
| RHD4CZ1C081DM1900 |  | Relocation of existing light poles for Road (RD-C-8 /1) - (B1.02 41 00.14)-Z1-C081-DM | 2d | 2028-03-16 | 2028-03-18 | RHD4CZ1C081DM1800 |  |  |  |  | -82d | 0d | Unskilled Labor [8.71 h]; Electrician [2.18 h]; Equipment Opreator [4.36 h]; Boom Truck [2.18 h]; Dump Truck [2.18 h]; Relocation of existing light poles [2 nr] | 6,128 |  | C081 | Z1 | CONS | DM | Relocation of existing light poles |
| RHD4CZ1C081DM2000 |  | Relocation of existing Medium tension Pole for Road (RD-C-8 /1) - (B1.02 41 00.15)-Z1-C081-DM | 3d | 2028-03-19 | 2028-03-21 | RHD4CZ1C081DM1900, RHD4CZ2C082DM1800 FF |  |  |  |  | -82d | 65d | Unskilled Labor [63.2 h]; Electrician [31.58 h]; Equipment Opreator [63.2 h]; Boom Truck [31.58 h]; Dump Truck [31.58 h]; Relocation of existing Medium tension Pole [29 nr] | 710,906 |  | C081 | Z1 | CONS | DM | Relocation of existing Medium tension Pole |

| ID | WBS | Activity | Duration | Start | Finish | Predecessors | Complete | Remaining | Planned start | Planned finish | Total float | Free float | Resources | Cost | Actual cost | RDH4-01-001-Road and Block Names-1 | RDH4-01-001-Zones-1 | RDH4-01-001-Phases-1 | RDH4-01-001-Blocks-1 | RDH4-01-001-Networks-1 | RDH4-01-001-Work Method-1 |
| --- | --- | --- | --- | --- | --- | --- | --- | --- | --- | --- | --- | --- | --- | --- | --- | --- | --- | --- | --- | --- | --- |
|  | 152 | **Earthworks - EW** |  | 2025-12-22 | 2028-02-10 |  |  |  |  |  |  |  |  |  |  |  |  |  |  |  |  |
|  | 153 | **RHD4-02-002-Block Works-EX** |  | 2026-02-16 | 2027-08-16 |  |  |  |  |  |  |  |  |  |  |  |  |  |  |  |  |
|  | 175 | **RHD4-02-002-Z6-Block Wokrs - Excavation** |  | 2026-02-17 | 2027-02-28 |  |  |  |  |  |  |  |  |  |  |  |  |  |  |  |  |
|  | 176 | **RHD4-02-002-Block Works-EX-Z6-BLOCK-15** |  | 2026-03-17 | 2026-09-30 |  |  |  |  |  |  |  |  |  |  |  |  |  |  |  |  |
| RHD4CZ6B15EX1000 |  | Excavation works for Block 15 - (B1.31 23 16.01)-Z6-B15-EX | 9d | 2026-03-17 A | 2026-09-30 A | RHD4ENMSEW2000, RHD4ENMSEW2010, RHD4ENSDZ6APPEW100 SS, RHD4PRSHLDOSST1008, RHD4PRSHLDOSST1300 | 100% |  | 2026-08-23 | 2026-09-01 |  |  | Skilled labor [672.64 h]; Unskilled Labor [1345.12 h]; Equipment Opreator [6053.28 h]; Excavator-Poclain [336.32 h]; Water Truck [336.32 h]; Bulldozer/Dozer [336.32 h]; Loader [672.56 h]; Dump Truck [1345.2 h]; Excavation in all types of soil to the required depth includes removal of waste material Including Excavation for Roads and Site [59746.1 m3] | 358,476.66 | 358,476.66 | B15 | Z6 | CONS | B15 | EX | Excavation |
|  | 179 | **RHD4-02-002-Block Works-EX-Z6-BLOCK-Z6** |  | 2026-03-15 | 2026-09-30 |  |  |  |  |  |  |  |  |  |  |  |  |  |  |  |  |
| RHD4CZ6BZ6EX1000 |  | Excavation works for Block BZ6 - (B1.31 23 16.01)-Z6-BZ6-EX | 9d | 2026-03-15 A | 2026-09-30 A | RHD4CZ6B15EX1000, RHD4ENMSEW2000, RHD4ENMSEW2010, RHD4ENSDZ6APPEW100 SS, RHD4CZ7C02ST1408 | 100% |  | 2026-09-02 | 2026-09-12 |  |  | Skilled labor [113.76 h]; Unskilled Labor [227.68 h]; Equipment Opreator [1023.84 h]; Excavator-Poclain [56.88 h]; Water Truck [56.88 h]; Bulldozer/Dozer [56.88 h]; Loader [113.84 h]; Dump Truck [227.52 h]; Excavation in all types of soil to the required depth includes removal of waste material Including Excavation for Roads and Site [2198.74 m3] | 13,192.44 | 13,192.44 | BZ6 | Z6 | CONS | BZ6 | EX | Excavation |
|  | 178 | **RHD4-02-002-Block Works-EX-Z6-BLOCK-17** |  | 2026-02-17 | 2027-02-28 |  |  |  |  |  |  |  |  |  |  |  |  |  |  |  |  |
| RHD4CZ6B17EX1000 |  | Excavation works for Block 17 - Stage 1 - (B1.31 23 16.01)-Z6-B17-EX | 9d | 2026-02-17 A | 2026-03-08 A | RHD4CZ6BZ6EX1000, RHD4ENMSEW2000, RHD4ENMSEW2010, RHD4ENSDZ6APPEW100 SS | 100% |  | 2026-09-13 | 2026-09-22 |  |  | Skilled labor [375.68 h]; Unskilled Labor [751.68 h]; Equipment Opreator [3382.4 h]; Excavator-Poclain [187.84 h]; Water Truck [187.84 h]; Bulldozer/Dozer [187.84 h]; Loader [375.84 h]; Dump Truck [751.68 h]; Excavation in all types of soil to the required depth includes removal of waste material Including Excavation for Roads and Site [46881.9 m3] | 281,291.34 | 281,291.34 | B17 | Z6 | CONS | B17 | EX | Excavation |
| RHD4CZ6B17EX1001 |  | Excavation works for Block 17 - Stage 2 - (B1.31 23 16.01)-Z6-B17-EX | 9d | 2026-03-09 A | 2026-03-29 A | RHD4CZ6B17EX1000, RHD4ENMSEW2000, RHD4ENMSEW2010, RHD4ENSDZ6APPEW100 SS | 100% |  | 2026-09-24 | 2026-10-04 |  |  | Skilled labor [375.68 h]; Unskilled Labor [751.68 h]; Equipment Opreator [3382.4 h]; Excavator-Poclain [187.84 h]; Water Truck [187.84 h]; Bulldozer/Dozer [187.84 h]; Loader [375.84 h]; Dump Truck [751.68 h]; Excavation in all types of soil to the required depth includes removal of waste material Including Excavation for Roads and Site [46881.9 m3] | 281,291.34 | 281,291.34 | B17 | Z6 | CONS | B17 | EX | Excavation |
| RHD4CZ6B17EX1002 |  | Excavation works for Block 17 - Stage 3 - (B1.31 23 16.01)-Z6-B17-EX(Completed) | 9d | 2026-08-04 A | 2027-02-28 | RHD4CZ6B17EX1001, RHD4ENMSEW2000, RHD4ENMSEW2010, RHD4ENSDZ6APPEW100 SS | 87% | 3d | 2026-10-05 | 2026-10-14 | -146.02d | 37.98d | Skilled labor [258.24 h]; Unskilled Labor [516.64 h]; Equipment Opreator [2325.28 h]; Excavator-Poclain [129.12 h]; Water Truck [129.12 h]; Bulldozer/Dozer [129.12 h]; Loader [258.32 h]; Dump Truck [516.72 h]; Excavation in all types of soil to the required depth includes removal of waste material Including Excavation for Roads and Site [46881.9 m3] | 281,291.34 | 245,595.47 | B17 | Z6 | CONS | B17 | EX | Excavation |
|  | 177 | **RHD4-02-002-Block Works-EX-Z6-BLOCK-16** |  | 2026-03-07 | 2026-08-03 |  |  |  |  |  |  |  |  |  |  |  |  |  |  |  |  |
| RHD4CZ6B16EX1000 |  | Excavation works for Block 16 - (B1.31 23 16.01)-Z6-B16-EX(Completed) | 9d | 2026-03-07 A | 2026-08-03 A | RHD4ENMSEW2000, RHD4CZ2L102SW2500, RHD4ENMSEW2010, RHD4ENSDZ6APPEW100 SS, RHD4CZ6B17EX1002 SS | 100% |  | 2026-12-06 | 2026-12-15 |  |  | Skilled labor [669.28 h]; Unskilled Labor [1338.88 h]; Equipment Opreator [6024.8 h]; Excavator-Poclain [334.64 h]; Water Truck [334.64 h]; Bulldozer/Dozer [334.64 h]; Loader [669.44 h]; Dump Truck [1338.88 h]; Excavation in all types of soil to the required depth includes removal of waste material Including Excavation for Roads and Site [88967.6 m3] | 533,805.78 | 533,805.78 | B16 | Z6 | CONS | B16 | EX | Excavation |
|  | 169 | **RHD4-02-002-Z5-Block Wokrs - Excavation** |  | 2026-02-16 | 2027-06-26 |  |  |  |  |  |  |  |  |  |  |  |  |  |  |  |  |
|  | 171 | **RHD4-02-002-Block Works-EX-Z5-BLOCK-11** |  | 2026-03-23 | 2026-07-30 |  |  |  |  |  |  |  |  |  |  |  |  |  |  |  |  |
| RHD4CZ5B11EX1000 |  | Excavation works for Block 11 - Stage 1 - (B1.31 23 16.01)-Z5-B11-EX | 12d | 2026-03-23 A | 2026-04-05 A | RHD4ENMSEW2000, RHD4ENMSEW2010, RHD4ENSDZ5APPEW100 SS, RHD4CZ5B12EX1003 | 100% |  | 2027-02-11 | 2027-02-25 |  |  | Skilled labor [731.04 h]; Unskilled Labor [1462.08 h]; Equipment Opreator [6579.52 h]; Excavator-Poclain [365.52 h]; Water Truck [365.52 h]; Bulldozer/Dozer [365.52 h]; Loader [731.04 h]; Dump Truck [1462.16 h]; Excavation in all types of soil to the required depth includes removal of waste material Including Excavation for Roads and Site [95296.6 m3] | 571,779.36 | 571,779.36 | B11 | Z5 | CONS | B11 | EX | Excavation |
| RHD4CZ5B11EX1001 |  | Excavation works for Block 11 - Stage 2 - (B1.31 23 16.01)-Z5-B11-EX | 7d | 2026-04-06 A | 2026-07-30 A | RHD4CZ5B11EX1000, RHD4ENMSEW2000, RHD4ENMSEW2010, RHD4ENSDZ5APPEW100 SS | 100% |  | 2027-02-27 | 2027-03-06 |  |  | Skilled labor [731.04 h]; Unskilled Labor [1462.08 h]; Equipment Opreator [6579.52 h]; Excavator-Poclain [365.52 h]; Water Truck [365.52 h]; Bulldozer/Dozer [365.52 h]; Loader [731.04 h]; Dump Truck [1462.16 h]; Excavation in all types of soil to the required depth includes removal of waste material Including Excavation for Roads and Site [95296.6 m3] | 571,779.36 | 571,779.36 | B11 | Z5 | CONS | B11 | EX | Excavation |
|  | 170 | **RHD4-02-002-Block Works-EX-Z5-BLOCK-10** |  | 2026-03-26 | 2027-06-22 |  |  |  |  |  |  |  |  |  |  |  |  |  |  |  |  |
| RHD4CZ5B10EX1000 |  | Excavation works for Block 10 - Stage 1 - (B1.31 23 16.01)-Z5-B10-EX | 9d | 2026-03-26 A | 2026-05-23 A | RHD4ENMSEW2000, RHD4ENMSEW2010, RHD4ENSDZ5APPEW100 SS, RHD4CZ6B16EX1000 | 100% |  | 2026-12-16 | 2026-12-26 |  |  | Skilled labor [553.92 h]; Unskilled Labor [1108 h]; Equipment Opreator [4985.6 h]; Excavator-Poclain [276.96 h]; Water Truck [276.96 h]; Bulldozer/Dozer [276.96 h]; Loader [554 h]; Dump Truck [1107.84 h]; Excavation in all types of soil to the required depth includes removal of waste material Including Excavation for Roads and Site [61875.2 m3] | 371,251.38 | 371,251.38 | B10 | Z5 | CONS | B10 | EX | Excavation |
| RHD4CZ5B10EX1001 |  | Excavation works for Block 10 - Stage 2 - (B1.31 23 16.01)-Z5-B10-EX | 9d | 2026-05-24 A | 2027-06-22 | RHD4CZ5B10EX1000, RHD4ENMSEW2000, RHD4ENMSEW2010, RHD4ENSDZ5APPEW100 SS | 52% | 3d | 2026-12-27 | 2027-01-05 | -101.96d | 0d | Skilled labor [553.92 h]; Unskilled Labor [1108 h]; Equipment Opreator [4985.6 h]; Excavator-Poclain [276.96 h]; Water Truck [276.96 h]; Bulldozer/Dozer [276.96 h]; Loader [554 h]; Dump Truck [1107.84 h]; Excavation in all types of soil to the required depth includes removal of waste material Including Excavation for Roads and Site [61875.2 m3] | 371,251.38 | 193,199.22 | B10 | Z5 | CONS | B10 | EX | Excavation |
|  | 172 | **RHD4-02-002-Block Works-EX-Z5-BLOCK-12** |  | 2026-02-17 | 2027-06-26 |  |  |  |  |  |  |  |  |  |  |  |  |  |  |  |  |
| RHD4CZ5B12EX1000 |  | Excavation works for Block 12 - Stage 1 - (B1.31 23 16.01)-Z5-B12-EX | 10d | 2026-02-17 A | 2026-03-01 A | RHD4ENMSEW2000, RHD4ENMSEW2010, RHD4ENSDZ5APPEW100 SS, RHD4CZ5B10EX1001 | 100% |  | 2027-01-06 | 2027-01-17 |  |  | Skilled labor [568 h]; Unskilled Labor [1136.16 h]; Equipment Opreator [5112.16 h]; Excavator-Poclain [284 h]; Water Truck [284 h]; Bulldozer/Dozer [284 h]; Loader [568.08 h]; Dump Truck [1136.08 h]; Excavation in all types of soil to the required depth includes removal of waste material Including Excavation for Roads and Site [78184.3 m3] | 469,105.74 | 469,105.74 | B12 | Z5 | CONS | B12 | EX | Excavation |
| RHD4CZ5B12EX1001 |  | Excavation works for Block 12 - Stage 2 - (B1.31 23 16.01)-Z5-B12-EX | 11d | 2026-03-02 A | 2026-03-13 A | RHD4CZ5B12EX1000, RHD4ENMSEW2000, RHD4ENMSEW2010, RHD4ENSDZ5APPEW100 SS | 100% |  | 2027-01-18 | 2027-01-30 |  |  | Skilled labor [568 h]; Unskilled Labor [1136.16 h]; Equipment Opreator [5112.16 h]; Excavator-Poclain [284 h]; Water Truck [284 h]; Bulldozer/Dozer [284 h]; Loader [568.08 h]; Dump Truck [1136.08 h]; Excavation in all types of soil to the required depth includes removal of waste material Including Excavation for Roads and Site [78184.3 m3] | 469,105.74 | 469,105.74 | B12 | Z5 | CONS | B12 | EX | Excavation |
| RHD4CZ5B12EX1002 |  | Excavation works for Block 12 - Stage 3 - (B1.31 23 16.01)-Z5-B12-EX | 5d | 2026-03-14 A | 2026-03-27 A | RHD4CZ5B12EX1001, RHD4ENMSEW2000, RHD4ENMSEW2010, RHD4ENSDZ5APPEW100 SS | 100% |  | 2027-01-31 | 2027-02-04 |  |  | Skilled labor [568 h]; Unskilled Labor [1136.16 h]; Equipment Opreator [5112.16 h]; Excavator-Poclain [284 h]; Water Truck [284 h]; Bulldozer/Dozer [284 h]; Loader [568.08 h]; Dump Truck [1136.08 h]; Excavation in all types of soil to the required depth includes removal of waste material Including Excavation for Roads and Site [78184.3 m3] | 469,105.74 | 469,105.74 | B12 | Z5 | CONS | B12 | EX | Excavation |
| RHD4CZ5B12EX1003 |  | Excavation works for Block 12 - Stage 4 - (B1.31 23 16.01)-Z5-B12-EX | 5d | 2026-03-28 A | 2027-06-26 | RHD4CZ5B12EX1002, RHD4ENMSEW2000, RHD4ENMSEW2010, RHD4ENSDZ5APPEW100 SS | 21% | 3.95d | 2027-02-06 | 2027-02-10 | -101.96d | 0d | Skilled labor [568 h]; Unskilled Labor [1136.16 h]; Equipment Opreator [5112.16 h]; Excavator-Poclain [284 h]; Water Truck [284 h]; Bulldozer/Dozer [284 h]; Loader [568.08 h]; Dump Truck [1136.08 h]; Excavation in all types of soil to the required depth includes removal of waste material Including Excavation for Roads and Site [78184.3 m3] | 469,105.74 | 98,903.13 | B12 | Z5 | CONS | B12 | EX | Excavation |

| ID | WBS | Activity | Duration | Start | Finish | Predecessors | Complete | Planned start | Planned finish | Total float | Free float | Resources | Cost | Actual cost | RDH4-01-001-Road and Block Names-1 | RDH4-01-001-Zones-1 | RDH4-01-001-Phases-1 | RDH4-01-001-Blocks-1 | RDH4-01-001-Networks-1 | RDH4-01-001-Work Method-1 |
| --- | --- | --- | --- | --- | --- | --- | --- | --- | --- | --- | --- | --- | --- | --- | --- | --- | --- | --- | --- | --- |
|  | 173 | **RHD4-02-002-Block Works-EX-Z5-BLOCK-13** |  | 2026-02-16 | 2026-02-19 |  |  |  |  |  |  |  |  |  |  |  |  |  |  |  |
| RHD4CZ5B13EX1000 |  | Excavation works for Block 13 - (B1.31 23 16.01)-Z5-B13-EX(Completed) | 15d | 2026-02-16 A | 2026-02-19 A | RHD4ENMSEW2000, RHD4ENMSEW2010, RHD4CZ5B12EX1000 SS, RHD4CZ5B12EX1000 FF, RHD4ENSDZ5APPEW100 SS | 100% | 2027-01-06 | 2027-01-23 |  |  | Skilled labor [354.56 h]; Unskilled Labor [709.12 h]; Equipment Opreator [3190.88 h]; Excavator-Poclain [177.28 h]; Water Truck [177.28 h]; Bulldozer/Dozer [177.28 h]; Loader [354.56 h]; Dump Truck [709.04 h]; Excavation in all types of soil to the required depth includes removal of waste material Including Excavation for Roads and Site [28201.6 m3] | 169,209.42 | 169,209.42 | B13 | Z5 | CONS | B13 | EX | Excavation |
|  | 174 | **RHD4-02-002-Block Works-EX-Z5-BLOCK-14** |  | 2026-03-08 | 2026-08-03 |  |  |  |  |  |  |  |  |  |  |  |  |  |  |  |
| RHD4CZ5B14EX1000 |  | Excavation works for Block 14 - Stage 1 - (B1.31 23 16.01)-Z5-B14-EX | 8d | 2026-03-08 A | 2026-03-25 A | RHD4ENMSEW2000, RHD4ENMSEW2010, RHD4ENSDZ5APPEW100 SS, RHD4CZ5B13EX1000 | 100% | 2027-01-24 | 2027-02-01 |  |  | Skilled labor [356.16 h]; Unskilled Labor [712.48 h]; Equipment Opreator [3205.76 h]; Excavator-Poclain [178.08 h]; Water Truck [178.08 h]; Bulldozer/Dozer [178.08 h]; Loader [356.24 h]; Dump Truck [712.32 h]; Excavation in all types of soil to the required depth includes removal of waste material Including Excavation for Roads and Site [39350 m3] | 236,099.82 | 236,099.82 | B14 | Z5 | CONS | B14 | EX | Excavation |
| RHD4CZ5B14EX1001 |  | Excavation works for Block 14 - Stage 2 - (B1.31 23 16.01)-Z5-B14-EX | 8d | 2026-03-26 A | 2026-04-11 A | RHD4CZ5B14EX1000, RHD4ENMSEW2000, RHD4ENMSEW2010, RHD4ENSDZ5APPEW100 SS | 100% | 2027-02-02 | 2027-02-10 |  |  | Skilled labor [356.16 h]; Unskilled Labor [712.48 h]; Equipment Opreator [3205.76 h]; Excavator-Poclain [178.08 h]; Water Truck [178.08 h]; Bulldozer/Dozer [178.08 h]; Loader [356.24 h]; Dump Truck [712.32 h]; Excavation in all types of soil to the required depth includes removal of waste material Including Excavation for Roads and Site [39350 m3] | 236,099.82 | 236,099.82 | B14 | Z5 | CONS | B14 | EX | Excavation |
| RHD4CZ5B14EX1002 |  | Excavation works for Block 14 - Stage 3 - (B1.31 23 16.01)-Z5-B14-EX | 14d | 2026-04-12 A | 2026-04-27 A | RHD4CZ5B14EX1001, RHD4ENMSEW2000, RHD4ENMSEW2010, RHD4ENSDZ5APPEW100 SS | 100% | 2027-02-11 | 2027-02-28 |  |  | Skilled labor [356.16 h]; Unskilled Labor [712.48 h]; Equipment Opreator [3205.76 h]; Excavator-Poclain [178.08 h]; Water Truck [178.08 h]; Bulldozer/Dozer [178.08 h]; Loader [356.24 h]; Dump Truck [712.32 h]; Excavation in all types of soil to the required depth includes removal of waste material Including Excavation for Roads and Site [39350 m3] | 236,099.82 | 236,099.82 | B14 | Z5 | CONS | B14 | EX | Excavation |
| RHD4CZ5B14EX1003 |  | Excavation works for Block 14 - Stage 4 - (B1.31 23 16.01)-Z5-B14-EX(Completed) | 11d | 2026-04-28 A | 2026-08-03 A | RHD4CZ5B14EX1002, RHD4ENMSEW2000, RHD4ENMSEW2010, RHD4ENSDZ5APPEW100 SS | 100% | 2027-03-01 | 2027-03-16 |  |  | Skilled labor [254.4 h]; Unskilled Labor [508.8 h]; Equipment Opreator [2289.76 h]; Excavator-Poclain [127.2 h]; Water Truck [127.2 h]; Bulldozer/Dozer [127.2 h]; Loader [254.4 h]; Dump Truck [508.8 h]; Excavation in all types of soil to the required depth includes removal of waste material Including Excavation for Roads and Site [39350 m3] | 236,099.82 | 236,099.82 | B14 | Z5 | CONS | B14 | EX | Excavation |
|  | 188 | **RHD4-02-002-Z8-Block Wokrs - Excavation** |  | 2026-07-18 | 2027-08-16 |  |  |  |  |  |  |  |  |  |  |  |  |  |  |  |
|  | 193 | **RHD4-02-002-Block Works-EX-Z8-BLOCK-29** |  | 2027-06-26 | 2027-07-06 |  |  |  |  |  |  |  |  |  |  |  |  |  |  |  |
| RHD4CZ8B29EX1000 |  | Excavation works for Block 29 - (B1.31 23 16.01)-Z8-B29-EX | 9d | 2027-06-26 | 2027-07-06 | RHD4ENSDZ8APPEW100, RHD4ENMSEW2000, RHD4ENMSEW2010, RHD4ENSDZ8APPEW100 SS, RHD4CZ8B25EX1000 |  |  |  | -98.96d | 0d | Skilled labor [177.28 h]; Unskilled Labor [354.56 h]; Equipment Opreator [1595.84 h]; Excavator-Poclain [88.64 h]; Water Truck [88.64 h]; Bulldozer/Dozer [88.64 h]; Loader [177.28 h]; Dump Truck [354.56 h]; Excavation in all types of soil to the required depth includes removal of waste material Including Excavation for Roads and Site [98.78 m3] | 592.68 |  | B29 | Z8 | CONS | B29 | EX | Excavation |
|  | 192 | **RHD4-02-002-Block Works-EX-Z8-BLOCK-28** |  | 2027-07-06 | 2027-07-31 |  |  |  |  |  |  |  |  |  |  |  |  |  |  |  |
| RHD4CZ8B28EX1000 |  | Excavation works for Block 28 - (B1.31 23 16.01)-Z8-B28-EX | 21d | 2027-07-06 | 2027-07-31 | RHD4ENSDZ8APPEW100, RHD4ENMSEW2000, RHD4ENMSEW2010, RHD4CZ8B29EX1000 |  |  |  | -98.96d | 0d | Skilled labor [558.4 h]; Unskilled Labor [1117.12 h]; Equipment Opreator [5027.04 h]; Excavator-Poclain [279.2 h]; Water Truck [279.2 h]; Bulldozer/Dozer [279.2 h]; Loader [558.56 h]; Dump Truck [1117.12 h]; Excavation in all types of soil to the required depth includes removal of waste material Including Excavation for Roads and Site [5504.35 m3] | 33,026.1 |  | B28 | Z8 | CONS | B28 | EX | Excavation |
|  | 191 | **RHD4-02-002-Block Works-EX-Z8-BLOCK-27** |  | 2027-07-31 | 2027-08-09 |  |  |  |  |  |  |  |  |  |  |  |  |  |  |  |
| RHD4CZ8B27EX1000 |  | Excavation works for Block 27 - (B1.31 23 16.01)-Z8-B27-EX | 8d | 2027-07-31 | 2027-08-09 | RHD4ENSDZ8APPEW100, RHD4ENMSEW2000, RHD4ENMSEW2010, RHD4CZ8B28EX1000 |  |  |  | -98.96d | 0d | Skilled labor [156.32 h]; Unskilled Labor [312.8 h]; Equipment Opreator [1407.52 h]; Excavator-Poclain [78.16 h]; Water Truck [78.16 h]; Bulldozer/Dozer [78.16 h]; Loader [156.4 h]; Dump Truck [312.8 h]; Excavation in all types of soil to the required depth includes removal of waste material Including Excavation for Roads and Site [104.97 m3] | 629.82 |  | B27 | Z8 | CONS | B27 | EX | Excavation |
|  | 190 | **RHD4-02-002-Block Works-EX-Z8-BLOCK-26** |  | 2027-08-09 | 2027-08-16 |  |  |  |  |  |  |  |  |  |  |  |  |  |  |  |
| RHD4CZ8B26EX1000 |  | Excavation works for Block 26 - (B1.31 23 16.01)-Z8-B26-EX | 6d | 2027-08-09 | 2027-08-16 | RHD4ENSDZ8APPEW100, RHD4ENMSEW2000, RHD4ENMSEW2010, RHD4CZ8B27EX1000 |  |  |  | -98.96d | 0d | Skilled labor [125.28 h]; Unskilled Labor [250.72 h]; Equipment Opreator [1128 h]; Excavator-Poclain [62.64 h]; Water Truck [62.64 h]; Bulldozer/Dozer [62.64 h]; Loader [125.36 h]; Dump Truck [250.72 h]; Excavation in all types of soil to the required depth includes removal of waste material Including Excavation for Roads and Site [4899.34 m3] | 29,396.04 |  | B26 | Z8 | CONS | B26 | EX | Excavation |
|  | 189 | **RHD4-02-002-Block Works-EX-Z8-BLOCK-25** |  | 2026-07-18 | 2026-08-03 |  |  |  |  |  |  |  |  |  |  |  |  |  |  |  |
| RHD4CZ8B25EX1000 |  | Excavation works for Block 25 - (B1.31 23 16.01)-Z8-B25-EX(Completed) | 15d | 2026-07-18 A | 2026-08-03 A | RHD4ENMSEW2000, RHD4ENMSEW2010, RHD4ENSDZ8APPEW100 SS, RHD4CZ5B12EX1003 | 100% | 2027-02-11 | 2027-03-01 |  |  | Skilled labor; Unskilled Labor; Equipment Opreator; Excavator-Poclain; Water Truck; Bulldozer/Dozer; Loader; Dump Truck; Excavation in all types of soil to the required depth includes removal of waste material Including Excavation for Roads and Site [32030.6 m3] | 192,183.48 | 192,183.48 | B25 | Z8 | CONS | B25 | EX | Excavation |
|  | 180 | **RHD4-02-002-Z7-Block Wokrs - Excavation** |  | 2026-03-30 | 2027-06-30 |  |  |  |  |  |  |  |  |  |  |  |  |  |  |  |
|  | 181 | **RHD4-02-002-Block Works-EX-Z7-BLOCK-18** |  | 2026-05-12 | 2026-07-18 |  |  |  |  |  |  |  |  |  |  |  |  |  |  |  |
| RHD4CZ7B18EX1000 |  | Excavation works for Block 18 - (B1.31 23 16.01)-Z7-B18-EX(Completed) | 15d | 2026-05-12 A | 2026-07-18 A | RHD4ENMSEW2000, RHD4ENMSEW2010, RHD4ENSDZ7APPEW100 SS, RHD4CZ8B25EX1000 | 100% | 2027-03-02 | 2027-03-22 |  |  | Skilled labor [655.84 h]; Unskilled Labor [1311.84 h]; Equipment Opreator [5902.72 h]; Excavator-Poclain [327.92 h]; Water Truck [327.92 h]; Bulldozer/Dozer [327.92 h]; Loader [655.92 h]; Dump Truck [1311.76 h]; Excavation in all types of soil to the required depth includes removal of waste material Including Excavation for Roads and Site [32710.2 m3] | 196,260.9 | 196,260.9 | B18 | Z7 | CONS | B18 | EX | Excavation |
|  | 182 | **RHD4-02-002-Block Works-EX-Z7-BLOCK-19** |  | 2026-04-15 | 2026-08-03 |  |  |  |  |  |  |  |  |  |  |  |  |  |  |  |
| RHD4CZ7B19EX1000 |  | Excavation works for Block 19 - (B1.31 23 16.01)-Z7-B19-EX(Completed) | 15d | 2026-04-15 A | 2026-08-03 A | RHD4ENMSEW2000, RHD4ENMSEW2010, RHD4ENSDZ7APPEW100 SS, RHD4CZ7B18EX1000 SS | 100% | 2027-03-02 | 2027-03-22 |  |  | Skilled labor [6.72 h]; Unskilled Labor [13.76 h]; Equipment Opreator [61.44 h]; Excavator-Poclain [3.36 h]; Water Truck [3.36 h]; Bulldozer/Dozer [3.36 h]; Loader [6.88 h]; Dump Truck [13.6 h]; Excavation in all types of soil to the required depth includes removal of waste material Including Excavation for Roads and Site [1315.04 m3] | 7,890.24 | 7,890.24 | B19 | Z7 | CONS | B19 | EX | Excavation |
|  | 183 | **RHD4-02-002-Block Works-EX-Z7-BLOCK-20** |  | 2026-03-30 | 2026-08-18 |  |  |  |  |  |  |  |  |  |  |  |  |  |  |  |
| RHD4CZ7B20EX1000 |  | Excavation works for Block 20 - Stage 1 - (B1.31 23 16.01)-Z7-B20-EX | 6d | 2026-03-30 A | 2026-04-07 A | RHD4ENMSEW2000, RHD4ENMSEW2010, RHD4ENSDZ7APPEW100 SS, RHD4CZ7B19EX1000 SS | 100% | 2027-03-02 | 2027-03-08 |  |  | Skilled labor [461.76 h]; Unskilled Labor [923.36 h]; Equipment Opreator [4154.88 h]; Excavator-Poclain [230.88 h]; Water Truck [230.88 h]; Bulldozer/Dozer [230.88 h]; Loader [461.68 h]; Dump Truck [923.28 h]; Excavation in all types of soil to the required depth includes removal of waste material Including Excavation for Roads and Site [50237 m3] | 301,421.88 | 301,421.88 | B20 | Z7 | CONS | B20 | EX | Excavation |
| RHD4CZ7B20EX1001 |  | Excavation works for Block 20 - stage 2 - (B1.31 23 16.01)-Z7-B20-EX | 7d | 2026-04-08 A | 2026-04-15 A | RHD4ENMSEW2000, RHD4ENMSEW2010, RHD4ENSDZ7APPEW100 SS, RHD4CZ7B20EX1000 | 100% | 2027-03-13 | 2027-03-20 |  |  | Skilled labor [461.76 h]; Unskilled Labor [923.36 h]; Equipment Opreator [4154.88 h]; Excavator-Poclain [230.88 h]; Water Truck [230.88 h]; Bulldozer/Dozer [230.88 h]; Loader [461.68 h]; Dump Truck [923.28 h]; Excavation in all types of soil to the required depth includes removal of waste material Including Excavation for Roads and Site [50237 m3] | 301,421.88 | 301,421.88 | B20 | Z7 | CONS | B20 | EX | Excavation |
| RHD4CZ7B20EX1002 |  | Excavation works for Block 20 - Stage 3 - (B1.31 23 16.01)-Z7-B20-EX | 7d | 2026-04-08 A | 2026-04-15 A | RHD4ENMSEW2000, RHD4ENMSEW2010, RHD4ENSDZ7APPEW100 SS, RHD4CZ7B20EX1001 | 100% | 2027-03-21 | 2027-03-28 |  |  | Skilled labor [461.76 h]; Unskilled Labor [923.36 h]; Equipment Opreator [4154.88 h]; Excavator-Poclain [230.88 h]; Water Truck [230.88 h]; Bulldozer/Dozer [230.88 h]; Loader [461.68 h]; Dump Truck [923.28 h]; Excavation in all types of soil to the required depth includes removal of waste material Including Excavation for Roads and Site [50237 m3] | 301,421.88 | 301,421.88 | B20 | Z7 | CONS | B20 | EX | Excavation |
| RHD4CZ7B20EX1003 |  | Excavation works for Block 20 - Stage 4 - (B1.31 23 16.01)-Z7-B20-EX | 6d | 2026-04-18 A | 2026-04-29 A | RHD4ENMSEW2000, RHD4ENMSEW2010, RHD4ENSDZ7APPEW100 SS, RHD4CZ7B20EX1002 | 100% | 2027-03-29 | 2027-04-04 |  |  | Skilled labor [461.76 h]; Unskilled Labor [923.36 h]; Equipment Opreator [4154.88 h]; Excavator-Poclain [230.88 h]; Water Truck [230.88 h]; Bulldozer/Dozer [230.88 h]; Loader [461.68 h]; Dump Truck [923.28 h]; Excavation in all types of soil to the required depth includes removal of waste material Including Excavation for Roads and Site [50237 m3] | 301,421.88 | 301,421.88 | B20 | Z7 | CONS | B20 | EX | Excavation |
| RHD4CZ7B20EX1004 |  | Excavation works for Block 20 - Stage 5 - (B1.31 23 16.01)-Z7-B20-EX(Completed) | 7d | 2026-08-04 A | 2026-08-18 A | RHD4ENMSEW2000, RHD4ENMSEW2010, RHD4ENSDZ7APPEW100 SS, RHD4CZ7B20EX1003 | 100% | 2027-04-05 | 2027-04-12 |  |  | Skilled labor [335.68 h]; Unskilled Labor [671.52 h]; Equipment Opreator [3021.6 h]; Excavator-Poclain [167.84 h]; Water Truck [167.84 h]; Bulldozer/Dozer [167.84 h]; Loader [335.76 h]; Dump Truck [671.52 h]; Excavation in all types of soil to the required depth includes removal of waste material Including Excavation for Roads and Site [50237 m3] | 301,421.88 | 301,421.88 | B20 | Z7 | CONS | B20 | EX | Excavation |

| ID | WBS | Activity | Duration | Start | Finish | Predecessors | Complete | Remaining | Planned start | Planned finish | Total float | Free float | Resources | Cost | Actual cost | RDH4-01-001-Road and Block Names-1 | RDH4-01-001-Zones-1 | RDH4-01-001-Phases-1 | RDH4-01-001-Blocks-1 | RDH4-01-001-Networks-1 | RDH4-01-001-Work Method-1 |
| --- | --- | --- | --- | --- | --- | --- | --- | --- | --- | --- | --- | --- | --- | --- | --- | --- | --- | --- | --- | --- | --- |
|  | 184 | **RHD4-02-002-Block Works-EX-Z7-BLOCK-21** |  | 2027-06-26 | 2027-06-30 |  |  |  |  |  |  |  |  |  |  |  |  |  |  |  |  |
| RHD4CZ7B21EX1000 |  | Excavation works for Block 21 - Stage 1 - (B1.31 23 16.01)-Z7-B21-EX | 2d | 2027-06-26 | 2027-06-28 | RHD4ENMSEW2000, RHD4ENMSEW2010, RHD4ENSDZ7APPEW100 SS, RHD4CZ7B20EX1003, RHD4CZ7B20EX1004 |  |  |  |  | 8.04d | 0d | Skilled labor [16.48 h]; Unskilled Labor [33.12 h]; Equipment Opreator [148.96 h]; Excavator-Poclain [8.24 h]; Water Truck [8.24 h]; Bulldozer/Dozer [8.24 h]; Loader [16.56 h]; Dump Truck [33.12 h]; Excavation in all types of soil to the required depth includes removal of waste material Including Excavation for Roads and Site |  |  | B21 | Z7 | CONS | B21 | EX | Excavation |
| RHD4CZ7B21EX1001 |  | Excavation works for Block 21 - stage 2 - (B1.31 23 16.01)-Z7-B21-EX | 2d | 2027-06-28 | 2027-06-30 | RHD4ENSDZ7APPEW100, RHD4ENMSEW2000, RHD4ENMSEW2010, RHD4CZ7B21EX1000 |  |  |  |  | 8.04d | 3.05d | Skilled labor [16.48 h]; Unskilled Labor [33.12 h]; Equipment Opreator [148.96 h]; Excavator-Poclain [8.24 h]; Water Truck [8.24 h]; Bulldozer/Dozer [8.24 h]; Loader [16.56 h]; Dump Truck [33.12 h]; Excavation in all types of soil to the required depth includes removal of waste material Including Excavation for Roads and Site |  |  | B21 | Z7 | CONS | B21 | EX | Excavation |
|  | 185 | **RHD4-02-002-Block Works-EX-Z7-BLOCK-22** |  | 2026-07-16 | 2026-08-03 |  |  |  |  |  |  |  |  |  |  |  |  |  |  |  |  |
| RHD4CZ7B22EX1000 |  | Excavation works for Block 22 - (B1.31 23 16.01)-Z7-B22-EX(Completed) | 16d | 2026-07-16 A | 2026-08-03 A | RHD4ENMSEW2000, RHD4ENMSEW2010, RHD4ENSDZ7APPEW100 SS, RHD4CZ8B25EX1000 | 100% |  | 2027-03-02 | 2027-03-23 |  |  | Skilled labor; Unskilled Labor; Equipment Opreator; Excavator-Poclain; Water Truck; Bulldozer/Dozer; Loader; Dump Truck; Excavation in all types of soil to the required depth includes removal of waste material Including Excavation for Roads and Site [16289.1 m3] | 97,734.84 | 97,734.84 | B22 | Z7 | CONS | B22 | EX | Excavation |
|  | 186 | **RHD4-02-002-Block Works-EX-Z7-BLOCK-23** |  | 2026-06-30 | 2027-06-28 |  |  |  |  |  |  |  |  |  |  |  |  |  |  |  |  |
| RHD4CZ7B23EX1000 |  | Excavation works for Block 23 - (B1.31 23 16.01)-Z7-B23-EX | 10d | 2026-06-30 A | 2027-06-28 | RHD4ENMSEW2000, RHD4ENMSEW2010, RHD4ENSDZ7APPEW100 SS, RHD4CZ7B22EX1000 SS, RHD4CZ7B20EX1000 | 81% | 1.89d | 2027-03-13 | 2027-03-23 | -76.85d | 0d | Skilled labor [626.88 h]; Unskilled Labor [1253.92 h]; Equipment Opreator [5642.24 h]; Excavator-Poclain [313.44 h]; Water Truck [313.44 h]; Bulldozer/Dozer [313.44 h]; Loader [626.96 h]; Dump Truck [1253.84 h]; Excavation in all types of soil to the required depth includes removal of waste material Including Excavation for Roads and Site [53021.2 m3] | 318,127.02 | 258,146.82 | B23 | Z7 | CONS | B23 | EX | Excavation |
|  | 187 | **RHD4-02-002-Block Works-EX-Z7-BLOCK-24** |  | 2026-07-18 | 2026-08-03 |  |  |  |  |  |  |  |  |  |  |  |  |  |  |  |  |
| RHD4CZ7B24EX1000 |  | Excavation works for Block 24 - (B1.31 23 16.01)-Z7-B24-EX(Completed) | 15d | 2026-07-18 A | 2026-08-03 A | RHD4ENMSEW2000, RHD4ENMSEW2010, RHD4ENSDZ7APPEW100 SS, RHD4CZ5B12EX1003, RHD4CZ7B23EX1000 | 100% |  | 2027-03-24 | 2027-04-10 |  |  | Skilled labor; Unskilled Labor; Equipment Opreator; Excavator-Poclain; Water Truck; Bulldozer/Dozer; Loader; Dump Truck; Excavation in all types of soil to the required depth includes removal of waste material Including Excavation for Roads and Site [3718.1 m3] | 22,308.6 | 22,308.6 | B24 | Z7 | CONS | B24 | EX | Excavation |
|  | 158 | **RHD4-02-002-Z2-Block Wokrs - Excavation** |  | 2026-06-30 | 2026-09-30 |  |  |  |  |  |  |  |  |  |  |  |  |  |  |  |  |
|  | 159 | **RHD4-02-002-Block Works-EX-Z2-BLOCK-04** |  | 2026-06-30 | 2026-09-18 |  |  |  |  |  |  |  |  |  |  |  |  |  |  |  |  |
| RHD4CZ2B04EX1000 |  | Excavation works for Block 04 - Stage 1 - (B1.31 23 16.01)-Z2-B04-EX(Completed) | 13d | 2026-06-30 A | 2026-08-03 A | RHD4ENMSEW2000, RHD4ENMSEW2010, RHD4CZ5B14EX1000 | 100% |  | 2027-02-02 | 2027-02-16 |  |  | Skilled labor [176.48 h]; Unskilled Labor [352.8 h]; Equipment Opreator [1587.52 h]; Excavator-Poclain [88.24 h]; Water Truck [88.24 h]; Bulldozer/Dozer [88.24 h]; Loader [176.4 h]; Dump Truck [352.72 h]; Excavation in all types of soil to the required depth includes removal of waste material Including Excavation for Roads and Site [29757.3 m3] | 178,543.98 | 178,543.98 | B04 | Z2 | CONS | B04 | EX | Excavation |
| RHD4CZ2B04EX1001 |  | Excavation works for Block 04 - Stage 2 - (B1.31 23 16.01)-Z2-B04-EX | 13d | 2026-08-08 A | 2026-09-03 A | RHD4ENMSEW2000, RHD4ENMSEW2010, RHD4ENMSEW2000 FF, RHD4ENMSEW2010 FF, RHD4CZ2B04EX1000, RHD4CZ2B04EX1000 FF | 100% |  | 2027-02-17 | 2027-03-04 |  |  | Skilled labor [282.24 h]; Unskilled Labor [564.48 h]; Equipment Opreator [2540 h]; Excavator-Poclain [141.12 h]; Water Truck [141.12 h]; Bulldozer/Dozer [141.12 h]; Loader [282.24 h]; Dump Truck [564.48 h]; Excavation in all types of soil to the required depth includes removal of waste material Including Excavation for Roads and Site [29757.3 m3] | 178,543.98 | 178,543.98 | B04 | Z2 | CONS | B04 | EX | Excavation |
| RHD4CZ2B04EX1002 |  | Excavation works for Block 04 - Stage 3 - (B1.31 23 16.01)-Z2-B04-EX | 13d | 2026-09-05 A | 2026-09-18 A | RHD4ENSDZ2APPEW100, RHD4ENMSEW2000, RHD4ENMSEW2010, RHD4CZ2B04EX1001, RHD4CZ2B04EX1001 FF | 100% |  | 2027-03-06 | 2027-03-23 |  |  | Skilled labor [282.24 h]; Unskilled Labor [564.48 h]; Equipment Opreator [2540 h]; Excavator-Poclain [141.12 h]; Water Truck [141.12 h]; Bulldozer/Dozer [141.12 h]; Loader [282.24 h]; Dump Truck [564.48 h]; Excavation in all types of soil to the required depth includes removal of waste material Including Excavation for Roads and Site [29757.3 m3] | 178,543.98 | 178,543.98 | B04 | Z2 | CONS | B04 | EX | Excavation |
|  | 160 | **RHD4-02-002-Block Works-EX-Z2-BLOCK-05** |  | 2026-08-29 | 2026-09-30 |  |  |  |  |  |  |  |  |  |  |  |  |  |  |  |  |
| RHD4CZ2B05EX1000 |  | Excavation works for Block 05 - Stage 1 - (B1.31 23 16.01)-Z2-B05-EX | 9d | 2026-08-29 A | 2026-09-19 A | RHD4ENMSEW2000, RHD4ENMSEW2010, RHD4CZ5B14EX1000, RHD4CZ2B04EX1002 | 100% |  | 2027-03-24 | 2027-04-03 |  |  | Skilled labor [192.48 h]; Unskilled Labor [385.12 h]; Equipment Opreator [1732.8 h]; Excavator-Poclain [96.24 h]; Water Truck [96.24 h]; Bulldozer/Dozer [96.24 h]; Loader [192.56 h]; Dump Truck [385.12 h]; Excavation in all types of soil to the required depth includes removal of waste material Including Excavation for Roads and Site [7074.39 m3] | 42,446.34 | 42,446.34 | B05 | Z2 | CONS | B05 | EX | Excavation |
| RHD4CZ2B05EX1001 |  | Excavation works for Block 05 - Stage 2 - (B1.31 23 16.01)-Z2-B05-EX | 9d | 2026-09-20 A | 2026-09-30 A | RHD4ENSDZ2APPEW100, RHD4ENMSEW2000, RHD4ENMSEW2010, RHD4CZ2B05EX1000 | 100% |  |  |  |  |  | Skilled labor [192.48 h]; Unskilled Labor [385.12 h]; Equipment Opreator [1732.8 h]; Excavator-Poclain [96.24 h]; Water Truck [96.24 h]; Bulldozer/Dozer [96.24 h]; Loader [192.56 h]; Dump Truck [385.12 h]; Excavation in all types of soil to the required depth includes removal of waste material Including Excavation for Roads and Site [7074.39 m3] | 42,446.34 | 42,446.34 | B05 | Z2 | CONS | B05 | EX | Excavation |
|  | 161 | **RHD4-02-002-Z3-Block Wokrs - Excavation** |  | 2026-06-02 | 2026-08-03 |  |  |  |  |  |  |  |  |  |  |  |  |  |  |  |  |
|  | 162 | **RHD4-02-002-Block Works-EX-Z3-BLOCK-Z3** |  | 2026-06-02 | 2026-08-03 |  |  |  |  |  |  |  |  |  |  |  |  |  |  |  |  |
| RHD4CZ3BZ3EX1000 |  | Excavation works for Block BZ3 - Stage 1 - (B1.31 23 16.01)-Z3-BZ3-EX | 5d | 2026-06-02 A | 2026-06-07 A | RHD4ENMSEW2000, RHD4ENMSEW2010, RHD4ENSDZ3APPEW100 SS, RHD4CZ2B04EX1002 | 100% |  | 2027-03-24 | 2027-03-29 |  |  | Skilled labor [1332.16 h]; Unskilled Labor [2664.16 h]; Equipment Opreator [11988.8 h]; Excavator-Poclain [666.08 h]; Water Truck [666.08 h]; Bulldozer/Dozer [666.08 h]; Loader [1332.08 h]; Dump Truck [2664.24 h]; Excavation in all types of soil to the required depth includes removal of waste material Including Excavation for Roads and Site [224225 m3] | 1,345,352.7 | 1,345,352.7 | BZ3 | Z3 | CONS | BZ3 | EX | Excavation |
| RHD4CZ3BZ3EX1001 |  | Excavation works for Block BZ3 - Stage 2 - (B1.31 23 16.01)-Z3-BZ3-EX | 14d | 2026-06-08 A | 2026-06-23 A | RHD4ENMSEW2000, RHD4ENMSEW2010, RHD4ENSDZ3APPEW100 SS, RHD4CZ3BZ3EX1000 | 100% |  | 2027-03-30 | 2027-04-14 |  |  | Skilled labor [1332.16 h]; Unskilled Labor [2664.16 h]; Equipment Opreator [11988.8 h]; Excavator-Poclain [666.08 h]; Water Truck [666.08 h]; Bulldozer/Dozer [666.08 h]; Loader [1332.08 h]; Dump Truck [2664.24 h]; Excavation in all types of soil to the required depth includes removal of waste material Including Excavation for Roads and Site [224225 m3] | 1,345,352.7 | 1,345,352.7 | BZ3 | Z3 | CONS | BZ3 | EX | Excavation |
| RHD4CZ3BZ3EX1002 |  | Excavation works for Block BZ3 - Stage 3 - (B1.31 23 16.01)-Z3-BZ3-EX(Completed) | 13d | 2026-06-24 A | 2026-08-03 A | RHD4ENSDZ3APPEW100 FF, RHD4ENMSEW2000, RHD4ENMSEW2010, RHD4ENSDZ3APPEW100 SS, RHD4CZ3BZ3EX1001 | 100% |  | 2027-04-15 | 2027-04-29 |  |  | Skilled labor; Unskilled Labor; Equipment Opreator; Excavator-Poclain; Water Truck; Bulldozer/Dozer; Loader; Dump Truck; Excavation in all types of soil to the required depth includes removal of waste material Including Excavation for Roads and Site [224225 m3] | 1,345,352.7 | 1,345,352.7 | BZ3 | Z3 | CONS | BZ3 | EX | Excavation |
|  | 194 | **RHD4-02-002-Z9-Block Wokrs - Excavation** |  | 2026-07-16 | 2027-07-07 |  |  |  |  |  |  |  |  |  |  |  |  |  |  |  |  |
|  | 196 | **RHD4-02-002-Block Works-EX-Z9-BLOCK-31** |  | 2026-07-16 | 2026-08-03 |  |  |  |  |  |  |  |  |  |  |  |  |  |  |  |  |
| RHD4CZ9B31EX1000 |  | Excavation works for Block 31 - Stage 1 - (B1.31 23 16.01)-Z9-B31-EX | 3d | 2026-07-16 A | 2026-07-19 A | RHD4ENMSEW2000, RHD4ENMSEW2010, RHD4ENSDZ9APPEW100 SS, RHD4CZ3BZ3EX1000 | 100% |  | 2027-03-30 | 2027-04-01 |  |  | Skilled labor [475.52 h]; Unskilled Labor [950.88 h]; Equipment Opreator [4279.52 h]; Excavator-Poclain [237.76 h]; Water Truck [237.76 h]; Bulldozer/Dozer [237.76 h]; Loader [475.44 h]; Dump Truck [950.96 h]; Excavation in all types of soil to the required depth includes removal of waste material Including Excavation for Roads and Site [51420.9 m3] | 308,525.22 | 308,525.22 | B31 | Z9 | CONS | B31 | EX | Excavation |
| RHD4CZ9B31EX1001 |  | Excavation works for Block 31 - stage 2 - (B1.31 23 16.01)-Z9-B31-EX | 3d | 2026-07-16 A | 2026-07-19 A | RHD4ENMSEW2000, RHD4ENMSEW2010, RHD4ENSDZ9APPEW100 SS, RHD4CZ9B31EX1000 | 100% |  | 2027-04-03 | 2027-04-05 |  |  | Skilled labor [475.52 h]; Unskilled Labor [950.88 h]; Equipment Opreator [4279.52 h]; Excavator-Poclain [237.76 h]; Water Truck [237.76 h]; Bulldozer/Dozer [237.76 h]; Loader [475.44 h]; Dump Truck [950.96 h]; Excavation in all types of soil to the required depth includes removal of waste material Including Excavation for Roads and Site [51420.9 m3] | 308,525.22 | 308,525.22 | B31 | Z9 | CONS | B31 | EX | Excavation |
| RHD4CZ9B31EX1002 |  | Excavation works for Block 31 - Stage 3 - (B1.31 23 16.01)-Z9-B31-EX(Completed) | 16d | 2026-07-16 A | 2026-08-03 A | RHD4ENMSEW2000, RHD4ENMSEW2010, RHD4ENSDZ9APPEW100 SS, RHD4CZ9B31EX1001 | 100% |  | 2027-04-06 | 2027-04-24 |  |  | Skilled labor; Unskilled Labor; Equipment Opreator; Excavator-Poclain; Water Truck; Bulldozer/Dozer; Loader; Dump Truck; Excavation in all types of soil to the required depth includes removal of waste material Including Excavation for Roads and Site [51420.9 m3] | 308,525.22 | 308,525.22 | B31 | Z9 | CONS | B31 | EX | Excavation |

| ID | WBS | Activity | Duration | Start | Finish | Predecessors | Complete | Remaining | Planned start | Planned finish | Total float | Free float | Resources | Cost | Actual cost | RDH4-01-001-Road and Block Names-1 | RDH4-01-001-Zones-1 | RDH4-01-001-Phases-1 | RDH4-01-001-Blocks-1 | RDH4-01-001-Networks-1 | RDH4-01-001-Work Method-1 |
| --- | --- | --- | --- | --- | --- | --- | --- | --- | --- | --- | --- | --- | --- | --- | --- | --- | --- | --- | --- | --- | --- |
|  | 198 | **RHD4-02-002-Block Works-EX-Z9-BLOCK-33** |  | 2026-07-16 | 2026-08-03 |  |  |  |  |  |  |  |  |  |  |  |  |  |  |  |  |
| RHD4CZ9B33EX1000 |  | Excavation works for Block 33 - (B1.31 23 16.01)-Z9-B33-EX(Completed) | 16d | 2026-07-16 A | 2026-08-03 A | RHD4ENMSEW2000, RHD4ENMSEW2010, RHD4ENSDZ9APPEW100 SS, RHD4CZ9B31EX1002 SS | 100% |  | 2027-04-06 | 2027-04-24 |  |  | Skilled labor; Unskilled Labor; Equipment Opreator; Excavator-Poclain; Water Truck; Bulldozer/Dozer; Loader; Dump Truck; Excavation in all types of soil to the required depth includes removal of waste material Including Excavation for Roads and Site [43364.9 m3] | 260,189.46 | 260,189.46 | B33 | Z9 | CONS | B33 | EX | Excavation |
|  | 197 | **RHD4-02-002-Block Works-EX-Z9-BLOCK-32** |  | 2026-07-18 | 2026-08-03 |  |  |  |  |  |  |  |  |  |  |  |  |  |  |  |  |
| RHD4CZ9B32EX1000 |  | Excavation works for Block 32 - (B1.31 23 16.01)-Z9-B32-EX(Completed) | 15d | 2026-07-18 A | 2026-08-03 A | RHD4ENMSEW2000, RHD4ENMSEW2010, RHD4ENSDZ9APPEW100 SS, RHD4CZ9B33EX1000 SS | 100% |  | 2027-04-06 | 2027-04-22 |  |  | Skilled labor [191.04 h]; Unskilled Labor [382.08 h]; Equipment Opreator [1719.52 h]; Excavator-Poclain [95.52 h]; Water Truck [95.52 h]; Bulldozer/Dozer [95.52 h]; Loader [191.04 h]; Dump Truck [382.16 h]; Excavation in all types of soil to the required depth includes removal of waste material Including Excavation for Roads and Site [17635.6 m3] | 105,813.48 | 105,813.48 | B32 | Z9 | CONS | B32 | EX | Excavation |
|  | 195 | **RHD4-02-002-Block Works-EX-Z9-BLOCK-30** |  | 2027-06-22 | 2027-07-03 |  |  |  |  |  |  |  |  |  |  |  |  |  |  |  |  |
| RHD4CZ9B30EX1000 |  | Excavation works for Block 30 - (B1.31 23 16.01)-Z9-B30-EX | 9d | 2027-06-22 | 2027-07-03 | RHD4ENMSEW2000, RHD4ENMSEW2010, RHD4ENSDZ9APPEW100 SS, RHD4CZ9B32EX1000, RHD4CZ9B33EX1000, RHD4CZ9B31EX1001, RHD4CZ9B31EX1002 |  |  |  |  | -42.02d | 0d | Skilled labor [191.68 h]; Unskilled Labor [383.36 h]; Equipment Opreator [1724.96 h]; Excavator-Poclain [95.84 h]; Water Truck [95.84 h]; Bulldozer/Dozer [95.84 h]; Loader [191.68 h]; Dump Truck [383.36 h]; Excavation in all types of soil to the required depth includes removal of waste material Including Excavation for Roads and Site [3512.81 m3] | 21,076.86 |  | B30 | Z9 | CONS | B30 | EX | Excavation |
|  | 199 | **RHD4-02-002-Block Works-EX-Z9-BLOCK-34** |  | 2026-07-18 | 2027-06-22 |  |  |  |  |  |  |  |  |  |  |  |  |  |  |  |  |
| RHD4CZ9B34EX1000 |  | Excavation works for Block 34 - (B1.31 23 16.01)-Z9-B34-EX(Completed) | 15d | 2026-07-18 A | 2027-06-22 | RHD4ENMSEW2000, RHD4ENMSEW2010, RHD4CZ3BZ3EX1000 | 79% | 0d | 2027-03-30 | 2027-04-15 | -92.02d | 0d | Skilled labor [152.64 h]; Unskilled Labor [305.6 h]; Equipment Opreator [1374.72 h]; Excavator-Poclain [76.32 h]; Water Truck [76.32 h]; Bulldozer/Dozer [76.32 h]; Loader [152.8 h]; Dump Truck [305.44 h]; Excavation in all types of soil to the required depth includes removal of waste material Including Excavation for Roads and Site [13179.3 m3] | 79,075.74 | 79,075.74 | B34 | Z9 | CONS | B34 | EX | Excavation |
|  | 200 | **RHD4-02-002-Block Works-EX-Z9-BLOCK-35** |  | 2026-07-18 | 2026-08-03 |  |  |  |  |  |  |  |  |  |  |  |  |  |  |  |  |
| RHD4CZ9B35EX1000 |  | Excavation works for Block 35 - (B1.31 23 16.01)-Z9-B35-EX(Completed) | 15d | 2026-07-18 A | 2026-08-03 A | RHD4ENMSEW2000, RHD4ENMSEW2010, RHD4CZ9B34EX1000 SS | 100% |  | 2027-03-30 | 2027-04-15 |  |  | Skilled labor; Unskilled Labor; Equipment Opreator; Excavator-Poclain; Water Truck; Bulldozer/Dozer; Loader; Dump Truck; Excavation in all types of soil to the required depth includes removal of waste material Including Excavation for Roads and Site [7765.91 m3] | 46,595.46 | 46,595.46 | B35 | Z9 | CONS | B35 | EX | Excavation |
|  | 201 | **RHD4-02-002-Block Works-EX-Z9-BLOCK-36** |  | 2027-07-03 | 2027-07-07 |  |  |  |  |  |  |  |  |  |  |  |  |  |  |  |  |
| RHD4CZ9B36EX1000 |  | Excavation works for Block 36 - (B1.31 23 16.01)-Z9-B36-EX | 4d | 2027-07-03 | 2027-07-07 | RHD4ENMSEW2000, RHD4ENMSEW2010, RHD4CZ9B35EX1000, RHD4CZ9B30EX1000, RHD4CZ9B34EX1000 |  |  |  |  | -42.02d | 60d | Skilled labor [86.24 h]; Unskilled Labor [172.48 h]; Equipment Opreator [776 h]; Excavator-Poclain [43.12 h]; Water Truck [43.12 h]; Bulldozer/Dozer [43.12 h]; Loader [86.24 h]; Dump Truck [172.48 h]; Excavation in all types of soil to the required depth includes removal of waste material Including Excavation for Roads and Site [334.76 m3] | 2,008.56 |  | B36 | Z9 | CONS | B36 | EX | Excavation |
|  | 163 | **RHD4-02-002-Z4-Block Wokrs - Excavation** |  | 2026-05-23 | 2027-08-09 |  |  |  |  |  |  |  |  |  |  |  |  |  |  |  |  |
|  | 167 | **RHD4-02-002-Block Works-EX-Z4-BLOCK-09** |  | 2026-05-23 | 2026-07-19 |  |  |  |  |  |  |  |  |  |  |  |  |  |  |  |  |
| RHD4CZ4B09EX1000 |  | Excavation works for Block 09 - (B1.31 23 16.01)-Z4-B09-EX(Completed) | 15d | 2026-05-23 A | 2026-07-19 A | RHD4ENMSEW2000, RHD4ENMSEW2010, RHD4ENSDZ4APPEW100 SS, RHD4CZ9B35EX1000 | 100% |  | 2027-04-17 | 2027-05-03 |  |  | Skilled labor [361.28 h]; Unskilled Labor [722.4 h]; Equipment Opreator [3251.68 h]; Excavator-Poclain [180.64 h]; Water Truck [180.64 h]; Bulldozer/Dozer [180.64 h]; Loader [361.2 h]; Dump Truck [722.56 h]; Excavation in all types of soil to the required depth includes removal of waste material Including Excavation for Roads and Site [9636.65 m3] | 57,819.9 | 57,819.9 | B09 | Z4 | CONS | B09 | EX | Excavation |
|  | 166 | **RHD4-02-002-Block Works-EX-Z4-BLOCK-08** |  | 2026-08-15 | 2027-07-25 |  |  |  |  |  |  |  |  |  |  |  |  |  |  |  |  |
| RHD4CZ4B08EX1000 |  | Excavation works for Block 08 - Stage 1 - (B1.31 23 16.01)-Z4-B08-EX | 15d | 2026-08-15 A | 2027-06-30 | RHD4ENMSEW2000, RHD4ENMSEW2010, RHD4CZ6B17EX1001, RHD4CZ2B04EX1002 | 63% | 7d | 2027-03-24 | 2027-04-10 | -91.02d | 0d | Skilled labor [623.52 h]; Unskilled Labor [1247.2 h]; Equipment Opreator [5612 h]; Excavator-Poclain [311.76 h]; Water Truck [311.76 h]; Bulldozer/Dozer [311.76 h]; Loader [623.6 h]; Dump Truck [1247.04 h]; Excavation in all types of soil to the required depth includes removal of waste material Including Excavation for Roads and Site [55926.7 m3] | 335,560.02 | 209,993.46 | B08 | Z4 | CONS | B08 | EX | Excavation |
| RHD4CZ4B08EX1001 |  | Excavation works for Block 08 - Stage 2 - (B1.31 23 16.01)-Z4-B08-EX | 21d | 2027-06-30 | 2027-07-25 | RHD4CZ4B08EX1000, RHD4ENSDZ4APPEW100, RHD4ENMSEW2000, RHD4ENMSEW2010 |  |  |  |  | -91.02d | 0d | Skilled labor [623.52 h]; Unskilled Labor [1247.2 h]; Equipment Opreator [5612 h]; Excavator-Poclain [311.76 h]; Water Truck [311.76 h]; Bulldozer/Dozer [311.76 h]; Loader [623.6 h]; Dump Truck [1247.04 h]; Excavation in all types of soil to the required depth includes removal of waste material Including Excavation for Roads and Site [55926.7 m3] | 335,560.02 |  | B08 | Z4 | CONS | B08 | EX | Excavation |
|  | 165 | **RHD4-02-002-Block Works-EX-Z4-BLOCK-07** |  | 2026-06-07 | 2027-07-17 |  |  |  |  |  |  |  |  |  |  |  |  |  |  |  |  |
| RHD4CZ4B07EX1000 |  | Excavation works for Block 07 - Stage 1 - (B1.31 23 16.01)-Z4-B07-EX(Completed) | 20d | 2026-06-07 A | 2026-08-03 A | RHD4ENMSEW2000, RHD4ENMSEW2010, RHD4ENSDZ4APPEW100 SS, RHD4CZ9B35EX1000 SS | 100% |  | 2027-03-30 | 2027-04-21 |  |  | Skilled labor [343.68 h]; Unskilled Labor [687.36 h]; Equipment Opreator [3093.28 h]; Excavator-Poclain [171.84 h]; Water Truck [171.84 h]; Bulldozer/Dozer [171.84 h]; Loader [343.68 h]; Dump Truck [687.36 h]; Excavation in all types of soil to the required depth includes removal of waste material Including Excavation for Roads and Site [174887 m3] | 1,049,322.84 | 1,049,322.84 | B07 | Z4 | CONS | B07 | EX | Excavation |
| RHD4CZ4B07EX1001 |  | Excavation works for Block 07 - Stage 2 - (B1.31 23 16.01)-Z4-B07-EX | 21d | 2027-06-22 | 2027-07-17 | RHD4ENSDZ4APPEW100, RHD4ENMSEW2000, RHD4ENMSEW2010, RHD4ENSDZ4APPEW100 SS, RHD4CZ4B07EX1000 |  |  |  |  | -68.02d | 26d | Skilled labor [1374.72 h]; Unskilled Labor [2749.6 h]; Equipment Opreator [12373.6 h]; Excavator-Poclain [687.36 h]; Water Truck [687.36 h]; Bulldozer/Dozer [687.36 h]; Loader [1374.8 h]; Dump Truck [2749.68 h]; Excavation in all types of soil to the required depth includes removal of waste material Including Excavation for Roads and Site [174887 m3] | 1,049,322.84 |  | B07 | Z4 | CONS | B07 | EX | Excavation |
|  | 164 | **RHD4-02-002-Block Works-EX-Z4-BLOCK-06** |  | 2027-06-22 | 2027-08-09 |  |  |  |  |  |  |  |  |  |  |  |  |  |  |  |  |
| RHD4CZ4B06EX1000 |  | Excavation works for Block 06 - Stage 1 - (B1.31 23 16.01)-Z4-B06-EX(Completed) | 20d | 2027-06-22 | 2027-07-15 | RHD4ENMSEW2000, RHD4ENMSEW2010, RHD4CZ9B35EX1000 SS |  |  |  |  | -92.02d | 0d | Skilled labor [364 h]; Unskilled Labor [727.68 h]; Equipment Opreator [3275.2 h]; Excavator-Poclain [182 h]; Water Truck [182 h]; Bulldozer/Dozer [182 h]; Loader [363.84 h]; Dump Truck [727.84 h]; Excavation in all types of soil to the required depth includes removal of waste material Including Excavation for Roads and Site [62718.9 m3] | 376,313.64 |  | B06 | Z4 | CONS | B06 | EX | Excavation |
| RHD4CZ4B06EX1001 |  | Excavation works for Block 06 - Stage 2 - (B1.31 23 16.01)-Z4-B06-EX | 21d | 2027-07-15 | 2027-08-09 | RHD4ENSDZ4APPEW100, RHD4ENMSEW2000, RHD4ENMSEW2010, RHD4CZ4B06EX1000 |  |  |  |  | -92.02d | 0d | Skilled labor [545.76 h]; Unskilled Labor [1091.68 h]; Equipment Opreator [4912.64 h]; Excavator-Poclain [272.88 h]; Water Truck [272.88 h]; Bulldozer/Dozer [272.88 h]; Loader [545.84 h]; Dump Truck [1091.68 h]; Excavation in all types of soil to the required depth includes removal of waste material Including Excavation for Roads and Site [62718.9 m3] | 376,313.64 |  | B06 | Z4 | CONS | B06 | EX | Excavation |

| ID | WBS | Activity | Duration | Start | Finish | Predecessors | Complete | Remaining | Planned start | Planned finish | Total float | Free float | Resources | Cost | Actual cost | RDH4-01-001-Road and Block Names-1 | RDH4-01-001-Zones-1 | RDH4-01-001-Phases-1 | RDH4-01-001-Blocks-1 | RDH4-01-001-Networks-1 | RDH4-01-001-Work Method-1 |
| --- | --- | --- | --- | --- | --- | --- | --- | --- | --- | --- | --- | --- | --- | --- | --- | --- | --- | --- | --- | --- | --- |
|  | 168 | **RHD4-02-002-Block Works-EX-Z4-BLOCK-Z4** |  | 2026-10-13 | 2027-08-01 |  |  |  |  |  |  |  |  |  |  |  |  |  |  |  |  |
| RHD4CZ4BZ4EX1000 |  | Excavation works for Block BZ4 - Stage 1 - (B1.31 23 16.01)-Z4-BZ4-EX | 21d | 2026-10-13 A | 2027-07-07 | RHD4ENSDZ4APPEW100, RHD4ENMSEW2000, RHD4ENMSEW2010, RHD4ENSDZ7APPEW100 SS, RHD4CZ7B18EX1000, RHD4ENSDZ8APPEW100 SS, RHD4CZ8B25EX1000 | 20% | 10d | 2026-10-13 | 2026-11-05 | -101.96d | 0d | Skilled labor [683.52 h]; Unskilled Labor [1366.72 h]; Equipment Opreator [6150.4 h]; Excavator-Poclain [341.76 h]; Water Truck [341.76 h]; Bulldozer/Dozer [341.76 h]; Loader [683.36 h]; Dump Truck [1366.72 h]; Excavation in all types of soil to the required depth includes removal of waste material Including Excavation for Roads and Site [84566.9 m3] | 507,401.58 | 101,378.84 | BZ4 | Z4 | CONS | BZ4 | EX | Excavation |
| RHD4CZ4BZ4EX1001 |  | Excavation works for Block BZ4 - Stage 2 - (B1.31 23 16.01)-Z4-BZ4-EX | 21d | 2027-07-07 | 2027-08-01 | RHD4CZ4BZ4EX1000, RHD4ENSDZ4APPEW100, RHD4ENMSEW2000, RHD4ENMSEW2010 |  |  |  |  | -101.96d | 96.04d | Skilled labor [683.52 h]; Unskilled Labor [1366.72 h]; Equipment Opreator [6150.4 h]; Excavator-Poclain [341.76 h]; Water Truck [341.76 h]; Bulldozer/Dozer [341.76 h]; Loader [683.36 h]; Dump Truck [1366.72 h]; Excavation in all types of soil to the required depth includes removal of waste material Including Excavation for Roads and Site [84566.9 m3] | 507,401.58 |  | BZ4 | Z4 | CONS | BZ4 | EX | Excavation |
|  | 154 | **RHD4-02-002-Z1-Block Wokrs - Excavation** |  | 2026-08-15 | 2027-07-04 |  |  |  |  |  |  |  |  |  |  |  |  |  |  |  |  |
|  | 155 | **RHD4-02-002-Block Works-EX-Z1-BLOCK-01** |  | 2026-08-15 | 2027-07-04 |  |  |  |  |  |  |  |  |  |  |  |  |  |  |  |  |
| RHD4CZ1B01EX1000 |  | Excavation works for Block 01 - (B1.31 23 16.01)-Z1-B01-EX | 21d | 2026-08-15 A | 2027-07-04 | RHD4ENMSEW2000, RHD4ENMSEW2010, RHD4CZ2B04EX1000 | 99% | 10d | 2027-02-17 | 2027-03-17 | -79.02d | 0d | Skilled labor [650.88 h]; Unskilled Labor [1301.44 h]; Equipment Opreator [5856.64 h]; Excavator-Poclain [325.44 h]; Water Truck [325.44 h]; Bulldozer/Dozer [325.44 h]; Loader [650.72 h]; Dump Truck [1301.52 h]; Excavation in all types of soil to the required depth includes removal of waste material Including Excavation for Roads and Site [54214.7 m3] | 325,288.2 | 322,360.61 | B01 | Z1 | CONS | B01 | EX | Excavation |
|  | 156 | **RHD4-02-002-Block Works-EX-Z1-BLOCK-02** |  | 2026-08-22 | 2026-10-10 |  |  |  |  |  |  |  |  |  |  |  |  |  |  |  |  |
| RHD4CZ1B02EX1000 |  | Excavation works for Block 02 - (B1.31 23 16.01)-Z1-B02-EX | 20d | 2026-08-22 A | 2026-10-10 A | RHD4ENMSEW2000, RHD4ENMSEW2010, RHD4CZ1B01EX1000 | 100% |  | 2027-03-18 | 2027-04-10 |  |  | Skilled labor [426.4 h]; Unskilled Labor [853.12 h]; Equipment Opreator [3838.88 h]; Excavator-Poclain [213.2 h]; Water Truck [213.2 h]; Bulldozer/Dozer [213.2 h]; Loader [426.56 h]; Dump Truck [853.12 h]; Excavation in all types of soil to the required depth includes removal of waste material Including Excavation for Roads and Site [26810.7 m3] | 160,864.14 | 160,864.14 | B02 | Z1 | CONS | B02 | EX | Excavation |
|  | 157 | **RHD4-02-002-Block Works-EX-Z1-BLOCK-03** |  | 2026-08-29 | 2026-09-08 |  |  |  |  |  |  |  |  |  |  |  |  |  |  |  |  |
| RHD4CZ1B03EX1000 |  | Excavation works for Block 03 - (B1.31 23 16.01)-Z1-B03-EX | 15d | 2026-08-29 A | 2026-09-08 A | RHD4ENMSEW2000, RHD4ENMSEW2010, RHD4CZ1B02EX1000 | 100% |  | 2027-04-11 | 2027-04-27 |  |  | Skilled labor [334.08 h]; Unskilled Labor [668 h]; Equipment Opreator [3006.24 h]; Excavator-Poclain [167.04 h]; Water Truck [167.04 h]; Bulldozer/Dozer [167.04 h]; Loader [334 h]; Dump Truck [668 h]; Excavation in all types of soil to the required depth includes removal of waste material Including Excavation for Roads and Site [13569.9 m3] | 81,419.16 | 81,419.16 | B03 | Z1 | CONS | B03 | EX | Excavation |
|  | 202 | **RHD4-02-002-Block Works - BF** |  | 2026-03-15 | 2027-09-28 |  |  |  |  |  |  |  |  |  |  |  |  |  |  |  |  |
|  | 224 | **RHD4-02-002-Z6-Block Works - Backfill** |  | 2026-03-17 | 2027-06-23 |  |  |  |  |  |  |  |  |  |  |  |  |  |  |  |  |
|  | 225 | **RHD4-02-002-Block Works - BF-Z6-BLOCK-15** |  | 2026-03-28 | 2026-05-03 |  |  |  |  |  |  |  |  |  |  |  |  |  |  |  |  |
| RHD4CZ6B15BF2000 |  | Backfill Layers works Using Dynamic Compaction Crane (RIC) for Block 15 - (B1.31 23 23.03)-Z6-B15-BF | 7d | 2026-03-28 A | 2026-05-03 A | RHD4CZ6B15EX1000, RHD4ENMARAPPEW100, RHD4CZ3BZ3EX1000 | 100% |  | 2027-03-30 | 2027-04-06 |  |  | Skilled labor [53.04 h]; Unskilled Labor [106.18 h]; Equipment Opreator [106.18 h]; RIC Machine [106.18 h]; Engineering fill using approved fill material placed in bulk and compacted by dynamic compaction method For Roads and Plots [44444.2 m3] | 399,998.15 | 399,998.15 | B15 | Z6 | CONS | B15 | BF | Backfill RIC |
|  | 226 | **RHD4-02-002-Block Works - BF-Z6-BLOCK-16** |  | 2026-03-17 | 2026-06-07 |  |  |  |  |  |  |  |  |  |  |  |  |  |  |  |  |
| RHD4CZ6B16BF2000 |  | Backfill Layers works Using Dynamic Compaction Crane (RIC) for Block 16 - (B1.31 23 23.03)-Z6-B16-BF | 8d | 2026-03-17 A | 2026-06-07 A | RHD4ENMARAPPEW100, RHD4CZ6B15BF2000 | 100% |  | 2027-04-07 | 2027-04-15 |  |  | Skilled labor [45.6 h]; Unskilled Labor [91.15 h]; Equipment Opreator [91.15 h]; RIC Machine [91.15 h]; Engineering fill using approved fill material placed in bulk and compacted by dynamic compaction method For Roads and Plots [41440.1 m3] | 372,961.1 | 372,961.1 | B16 | Z6 | CONS | B16 | BF | Backfill RIC |
|  | 227 | **RHD4-02-002-Block Works - BF-Z6-BLOCK-17** |  | 2026-03-17 | 2027-06-23 |  |  |  |  |  |  |  |  |  |  |  |  |  |  |  |  |
| RHD4CZ6B17BF2000 |  | Backfill Layers works Using Dynamic Compaction Crane (RIC) for Block 17 - (B1.31 23 23.03)-Z6-B17-BF(Completed) | 8d | 2026-03-17 A | 2027-06-23 | RHD4ENMARAPPEW100, RHD4CZ6B17EX1002 SS, RHD4CZ6B16BF2000 | 79% | 1.69d | 2027-04-17 | 2027-04-25 | -59.71d | 0d | Skilled labor [186.44 h]; Unskilled Labor [372.8 h]; Equipment Opreator [372.8 h]; RIC Machine [372.8 h]; Engineering fill using approved fill material placed in bulk and compacted by dynamic compaction method For Roads and Plots [206000 m3] | 1,853,999.45 | 1,461,473 | B17 | Z6 | CONS | B17 | BF | Backfill RIC |
|  | 228 | **RHD4-02-002-Block Works - BF-Z6-BLOCK-Z6** |  | 2026-03-23 | 2026-06-06 |  |  |  |  |  |  |  |  |  |  |  |  |  |  |  |  |
| RHD4CZ6BZ6BF2000 |  | Backfill Layers works Using Dynamic Compaction Crane (RIC) for Block BZ6 - (B1.31 23 23.03)-Z6-BZ6-BF | 20d | 2026-03-23 A | 2026-06-06 A | RHD4CZ6BZ6EX1000, RHD4ENMARAPPEW100, RHD4CZ3BZ3EX1001, RHD4CZ6B17BF2000 | 100% |  | 2027-04-26 | 2027-05-23 |  |  | Skilled labor [31.36 h]; Unskilled Labor [62.73 h]; Equipment Opreator [62.73 h]; RIC Machine [62.73 h]; Engineering fill using approved fill material placed in bulk and compacted by dynamic compaction method For Roads and Plots [28854.2 m3] | 259,687.56 | 259,687.56 | BZ6 | Z6 | CONS | BZ6 | BF | Backfill RIC |
|  | 237 | **RHD4-02-002-Z8-Block Works - Backfill** |  | 2026-09-21 | 2027-09-28 |  |  |  |  |  |  |  |  |  |  |  |  |  |  |  |  |
|  | 238 | **RHD4-02-002-Block Works - BF-Z8-BLOCK-25** |  | 2026-09-21 | 2027-07-12 |  |  |  |  |  |  |  |  |  |  |  |  |  |  |  |  |
| RHD4CZ8B25BF2000 |  | Backfill Layers works Using Dynamic Compaction Crane (RIC) for Block 25 - (B1.31 23 23.03)-Z8-B25-BF | 7d | 2026-09-21 A | 2027-07-12 | RHD4ENMARAPPEW100, RHD4CZ6B17BF2000, RHD4CZ6B17EX1001, RHD4ENMSEW2000, RHD4ENMSEW2010, RHD4ENSDZ6APPEW100 SS, RHD4CZ6B17EX1002, RHD4CZ1B02EX1000, RHD4CZ1B02EX1000 FF | 84% | 7d | 2026-09-21 | 2026-09-29 | -68.02d | 30.95d | Skilled labor [37.03 h]; Unskilled Labor [74.05 h]; Equipment Opreator [74.05 h]; RIC Machine [74.05 h]; Engineering fill using approved fill material placed in bulk and compacted by dynamic compaction method For Roads and Plots [27565.4 m3] | 248,088.68 | 208,766.63 | B25 | Z8 | CONS | B25 | BF | Backfill RIC |
|  | 239 | **RHD4-02-002-Block Works - BF-Z8-BLOCK-26** |  | 2027-08-16 | 2027-08-18 |  |  |  |  |  |  |  |  |  |  |  |  |  |  |  |  |
| RHD4CZ8B26BF2000 |  | Backfill Layers works Using Dynamic Compaction Crane (RIC) for Block 26 - (B1.31 23 23.03)-Z8-B26-BF | 2d | 2027-08-16 | 2027-08-18 | RHD4ENMARAPPEW100, RHD4CZ8B26EX1000, RHD4CZ8B25BF2000 |  |  |  |  | -98.96d | 0d | Skilled labor [9.69 h]; Unskilled Labor [19.38 h]; Equipment Opreator [19.38 h]; RIC Machine [19.38 h]; Engineering fill using approved fill material placed in bulk and compacted by dynamic compaction method For Roads and Plots [5012.33 m3] | 45,110.96 |  | B26 | Z8 | CONS | B26 | BF | Backfill RIC |

| ID | WBS | Activity | Duration | Start | Finish | Predecessors | Complete | Remaining | Planned start | Planned finish | Total float | Free float | Resources | Cost | Actual cost | RDH4-01-001-Road and Block Names-1 | RDH4-01-001-Zones-1 | RDH4-01-001-Phases-1 | RDH4-01-001-Blocks-1 | RDH4-01-001-Networks-1 | RDH4-01-001-Work Method-1 |
| --- | --- | --- | --- | --- | --- | --- | --- | --- | --- | --- | --- | --- | --- | --- | --- | --- | --- | --- | --- | --- | --- |
|  | 240 | **RHD4-02-002-Block Works - BF-Z8-BLOCK-27** |  | 2027-08-18 | 2027-08-28 |  |  |  |  |  |  |  |  |  |  |  |  |  |  |  |  |
| RHD4CZ8B27BF2000 |  | Backfill Layers works Using Dynamic Compaction Crane (RIC) for Block 27 - (B1.31 23 23.03)-Z8-B27-BF | 8d | 2027-08-18 | 2027-08-28 | RHD4ENMARAPPEW100, RHD4CZ8B27EX1000, RHD4CZ8B26BF2000 |  |  |  |  | -98.96d | 0d | Skilled labor [40.62 h]; Unskilled Labor [81.13 h]; Equipment Opreator [81.13 h]; RIC Machine [81.13 h]; Engineering fill using approved fill material placed in bulk and compacted by dynamic compaction method For Roads and Plots [31569.3 m3] | 284,123.42 |  | B27 | Z8 | CONS | B27 | BF | Backfill RIC |
|  | 241 | **RHD4-02-002-Block Works - BF-Z8-BLOCK-28** |  | 2027-08-28 | 2027-09-16 |  |  |  |  |  |  |  |  |  |  |  |  |  |  |  |  |
| RHD4CZ8B28BF2000 |  | Backfill Layers works Using Dynamic Compaction Crane (RIC) for Block 28 - (B1.31 23 23.03)-Z8-B28-BF | 17d | 2027-08-28 | 2027-09-16 | RHD4ENMARAPPEW100, RHD4CZ8B28EX1000, RHD4CZ8B27BF2000 |  |  |  |  | -98.96d | 0d | Skilled labor [91.59 h]; Unskilled Labor [183.28 h]; Equipment Opreator [183.28 h]; RIC Machine [183.28 h]; Engineering fill using approved fill material placed in bulk and compacted by dynamic compaction method For Roads and Plots [69931.6 m3] | 629,384.23 |  | B28 | Z8 | CONS | B28 | BF | Backfill RIC |
|  | 242 | **RHD4-02-002-Block Works - BF-Z8-BLOCK-29** |  | 2027-09-16 | 2027-09-28 |  |  |  |  |  |  |  |  |  |  |  |  |  |  |  |  |
| RHD4CZ8B29BF2000 |  | Backfill Layers works Using Dynamic Compaction Crane (RIC) for Block 29 - (B1.31 23 23.03)-Z8-B29-BF | 9d | 2027-09-16 | 2027-09-28 | RHD4ENMARAPPEW100, RHD4CZ8B29EX1000, RHD4CZ8B28BF2000 |  |  |  |  | -98.96d | 0d | Skilled labor [44.32 h]; Unskilled Labor [88.65 h]; Equipment Opreator [88.65 h]; RIC Machine [88.65 h]; Engineering fill using approved fill material placed in bulk and compacted by dynamic compaction method For Roads and Plots [75361.4 m3] | 678,252.67 |  | B29 | Z8 | CONS | B29 | BF | Backfill RIC |
|  | 243 | **RHD4-02-002-Z9-Block Works - Backfill** |  | 2026-08-04 | 2027-09-23 |  |  |  |  |  |  |  |  |  |  |  |  |  |  |  |  |
|  | 244 | **RHD4-02-002-Block Works - BF-Z9-BLOCK-30** |  | 2026-08-05 | 2027-07-07 |  |  |  |  |  |  |  |  |  |  |  |  |  |  |  |  |
| RHD4CZ9B30BF2000 |  | Backfill Layers works Using Dynamic Compaction Crane (RIC) for Block 30 - (B1.31 23 23.03)-Z9-B30-BF | 10d | 2026-08-05 A | 2027-07-07 | RHD4ENMARAPPEW100, RHD4CZ5B11BF2000, RHD4CZ5B12BF2000 | 12% | 10d | 2027-03-31 | 2027-04-11 | -56.96d | 0d | Skilled labor [54.23 h]; Unskilled Labor [108.47 h]; Equipment Opreator [108.47 h]; RIC Machine [108.47 h]; Engineering fill using approved fill material placed in bulk and compacted by dynamic compaction method For Roads and Plots [49741.9 m3] | 447,676.87 |  | B30 | Z9 | CONS | B30 | BF | Backfill RIC |
|  | 245 | **RHD4-02-002-Block Works - BF-Z9-BLOCK-31** |  | 2026-08-09 | 2027-07-10 |  |  |  |  |  |  |  |  |  |  |  |  |  |  |  |  |
| RHD4CZ9B31BF2000 |  | Backfill Layers works Using Dynamic Compaction Crane (RIC) for Block 31 - (B1.31 23 23.03)-Z9-B31-BF | 2d | 2026-08-09 A | 2027-07-10 | RHD4ENMARAPPEW100, RHD4CZ9B30BF2000 | 90% | 2d | 2027-04-12 | 2027-04-13 | -56.96d | 0d | Skilled labor [7.73 h]; Unskilled Labor [15.36 h]; Equipment Opreator [15.36 h]; RIC Machine [15.36 h]; Engineering fill using approved fill material placed in bulk and compacted by dynamic compaction method For Roads and Plots [13901 m3] | 125,108.56 | 112,597.71 | B31 | Z9 | CONS | B31 | BF | Backfill RIC |
|  | 246 | **RHD4-02-002-Block Works - BF-Z9-BLOCK-32** |  | 2026-08-11 | 2027-07-15 |  |  |  |  |  |  |  |  |  |  |  |  |  |  |  |  |
| RHD4CZ9B32BF2000 |  | Backfill Layers works Using Dynamic Compaction Crane (RIC) for Block 32 - (B1.31 23 23.03)-Z9-B32-BF | 5d | 2026-08-11 A | 2027-07-15 | RHD4ENMARAPPEW100, RHD4CZ9B31BF2000, RHD4ENMSEW2000, RHD4ENMSEW2010, RHD4ENSDZ9APPEW100 SS, RHD4CZ9B32EX1000, RHD4CZ9B33EX1000, RHD4CZ9B31EX1001, RHD4CZ9B31EX1002 | 90% | 5d | 2027-04-25 | 2027-04-29 | -56.96d | 0d | Skilled labor [25.48 h]; Unskilled Labor [50.97 h]; Equipment Opreator [50.97 h]; RIC Machine [50.97 h]; Engineering fill using approved fill material placed in bulk and compacted by dynamic compaction method For Roads and Plots [25250.9 m3] | 227,257.98 | 204,532.18 | B32 | Z9 | CONS | B32 | BF | Backfill RIC |
|  | 247 | **RHD4-02-002-Block Works - BF-Z9-BLOCK-33** |  | 2026-08-09 | 2026-09-30 |  |  |  |  |  |  |  |  |  |  |  |  |  |  |  |  |
| RHD4CZ9B33BF2000 |  | Backfill Layers works Using Dynamic Compaction Crane (RIC) for Block 33 - (B1.31 23 23.03)-Z9-B33-BF | 15d | 2026-08-09 A | 2026-09-30 A | RHD4ENMARAPPEW100, RHD4CZ9B31BF2000, RHD4CZ9B32BF2000 | 100% |  | 2027-05-01 | 2027-05-22 |  |  | Skilled labor [76.89 h]; Unskilled Labor [153.88 h]; Equipment Opreator [153.88 h]; RIC Machine [153.88 h]; Engineering fill using approved fill material placed in bulk and compacted by dynamic compaction method For Roads and Plots [72245.9 m3] | 650,212.91 | 650,212.91 | B33 | Z9 | CONS | B33 | BF | Backfill RIC |
|  | 248 | **RHD4-02-002-Block Works - BF-Z9-BLOCK-34** |  | 2026-08-08 | 2027-07-27 |  |  |  |  |  |  |  |  |  |  |  |  |  |  |  |  |
| RHD4CZ9B34BF2000 |  | Backfill Layers works Using Dynamic Compaction Crane (RIC) for Block 34 - (B1.31 23 23.03)-Z9-B34-BF | 10d | 2026-08-08 A | 2027-07-27 | RHD4ENMARAPPEW100, RHD4CZ9B33BF2000 | 26% | 10d | 2027-05-23 | 2027-06-02 | -56.96d | 0d | Skilled labor [50.75 h]; Unskilled Labor [101.5 h]; Equipment Opreator [101.5 h]; RIC Machine [101.5 h]; Engineering fill using approved fill material placed in bulk and compacted by dynamic compaction method For Roads and Plots [47768.4 m3] | 429,916.01 |  | B34 | Z9 | CONS | B34 | BF | Backfill RIC |
|  | 249 | **RHD4-02-002-Block Works - BF-Z9-BLOCK-35** |  | 2026-08-04 | 2027-08-09 |  |  |  |  |  |  |  |  |  |  |  |  |  |  |  |  |
| RHD4CZ9B35BF2000 |  | Backfill Layers works Using Dynamic Compaction Crane (RIC) for Block 35 - (B1.31 23 23.03)-Z9-B35-BF | 11d | 2026-08-04 A | 2027-08-09 | RHD4ENMARAPPEW100, RHD4CZ9B34BF2000 | 7% | 11d | 2027-06-03 | 2027-06-15 | -56.96d | 42d | Skilled labor [55.11 h]; Unskilled Labor [110.21 h]; Equipment Opreator [110.21 h]; RIC Machine [110.21 h]; Engineering fill using approved fill material placed in bulk and compacted by dynamic compaction method For Roads and Plots [45666 m3] | 410,994.19 |  | B35 | Z9 | CONS | B35 | BF | Backfill RIC |
|  | 250 | **RHD4-02-002-Block Works - BF-Z9-BLOCK-36** |  | 2026-08-04 | 2027-09-23 |  |  |  |  |  |  |  |  |  |  |  |  |  |  |  |  |
| RHD4CZ9B36BF2000 |  | Backfill Layers works Using Dynamic Compaction Crane (RIC) for Block 36 - (B1.31 23 23.03)-Z9-B36-BF | 6d | 2026-08-04 A | 2027-09-23 A | RHD4ENMARAPPEW100, RHD4CZ9B35BF2000, RHD4CZ8B29BF2000 | 100% |  | 2027-06-16 | 2027-06-22 |  |  | Skilled labor [28.31 h]; Unskilled Labor [56.52 h]; Equipment Opreator [56.52 h]; RIC Machine [56.52 h]; Engineering fill using approved fill material placed in bulk and compacted by dynamic compaction method For Roads and Plots [23976.3 m3] | 215,786.56 | 215,786.56 | B36 | Z9 | CONS | B36 | BF | Backfill RIC |
|  | 229 | **RHD4-02-002-Z7-Block Works - Backfill** |  | 2026-04-14 | 2027-07-22 |  |  |  |  |  |  |  |  |  |  |  |  |  |  |  |  |
|  | 230 | **RHD4-02-002-Block Works - BF-Z7-BLOCK-18** |  | 2026-05-02 | 2026-05-13 |  |  |  |  |  |  |  |  |  |  |  |  |  |  |  |  |
| RHD4CZ7B18BF2000 |  | Backfill Layers works Using Dynamic Compaction Crane (RIC) for Block 18 - (B1.31 23 23.03)-Z7-B18-BF | 11d | 2026-05-02 A | 2026-05-13 A | RHD4ENMARAPPEW100, RHD4CZ7B18EX1000 SS | 100% |  | 2027-03-02 | 2027-03-17 |  |  | Skilled labor [194.94 h]; Unskilled Labor [389.87 h]; Equipment Opreator [389.87 h]; RIC Machine [389.87 h]; Engineering fill using approved fill material placed in bulk and compacted by dynamic compaction method For Roads and Plots [196891 m3] | 1,772,020.65 | 1,772,020.65 | B18 | Z7 | CONS | B18 | BF | Backfill RIC |

| ID | WBS | Activity | Duration | Start | Finish | Predecessors | Complete | Remaining | Planned start | Planned finish | Total float | Free float | Resources | Cost | Actual cost | RDH4-01-001-Road and Block Names-1 | RDH4-01-001-Zones-1 | RDH4-01-001-Phases-1 | RDH4-01-001-Blocks-1 | RDH4-01-001-Networks-1 | RDH4-01-001-Work Method-1 |
| --- | --- | --- | --- | --- | --- | --- | --- | --- | --- | --- | --- | --- | --- | --- | --- | --- | --- | --- | --- | --- | --- |
|  | 231 | **RHD4-02-002-Block Works - BF-Z7-BLOCK-19** |  | 2026-04-23 | 2026-06-06 |  |  |  |  |  |  |  |  |  |  |  |  |  |  |  |  |
| RHD4CZ7B19BF2000 |  | Backfill Layers works Using Dynamic Compaction Crane (RIC) for Block 19 - (B1.31 23 23.03)-Z7-B19-BF | 21d | 2026-04-23 A | 2026-06-06 A | RHD4ENMARAPPEW100, RHD4CZ7B18BF2000, RHD4CZ7B19EX1000 SS | 100% |  | 2027-03-18 | 2027-04-11 |  |  | Skilled labor [89.85 h]; Unskilled Labor [179.58 h]; Equipment Opreator [179.58 h]; RIC Machine [179.58 h]; Engineering fill using approved fill material placed in bulk and compacted by dynamic compaction method For Roads and Plots [91459.1 m3] | 823,131.9 | 823,131.9 | B19 | Z7 | CONS | B19 | BF | Backfill RIC |
|  | 232 | **RHD4-02-002-Block Works - BF-Z7-BLOCK-20** |  | 2026-04-14 | 2026-07-04 |  |  |  |  |  |  |  |  |  |  |  |  |  |  |  |  |
| RHD4CZ7B20BF2000 |  | Backfill Layers works Using Dynamic Compaction Crane (RIC) for Block 20 - (B1.31 23 23.03)-Z7-B20-BF | 19d | 2026-04-14 A | 2026-07-04 A | RHD4ENMARAPPEW100, RHD4CZ7B20EX1004 SS, RHD4CZ7B19BF2000 | 100% |  | 2027-04-12 | 2027-05-03 |  |  | Skilled labor [66 h]; Unskilled Labor [132 h]; Equipment Opreator [132 h]; RIC Machine [132 h]; Engineering fill using approved fill material placed in bulk and compacted by dynamic compaction method For Roads and Plots [64145.4 m3] | 577,308.6 | 577,308.6 | B20 | Z7 | CONS | B20 | BF | Backfill RIC |
|  | 233 | **RHD4-02-002-Block Works - BF-Z7-BLOCK-21** |  | 2026-07-16 | 2026-08-03 |  |  |  |  |  |  |  |  |  |  |  |  |  |  |  |  |
| RHD4CZ7B21BF2000 |  | Backfill Layers works Using Dynamic Compaction Crane (RIC) for Block 21 - (B1.31 23 23.03)-Z7-B21-BF(Completed) | 16d | 2026-07-16 A | 2026-08-03 A | RHD4ENMARAPPEW100, RHD4CZ7B20BF2000 | 100% |  | 2027-05-04 | 2027-05-26 |  |  | Skilled labor; Unskilled Labor; Equipment Opreator; RIC Machine; Engineering fill using approved fill material placed in bulk and compacted by dynamic compaction method For Roads and Plots [27954 m3] | 251,586.23 | 251,586.23 | B21 | Z7 | CONS | B21 | BF | Backfill RIC |
|  | 234 | **RHD4-02-002-Block Works - BF-Z7-BLOCK-22** |  | 2026-09-20 | 2026-10-11 |  |  |  |  |  |  |  |  |  |  |  |  |  |  |  |  |
| RHD4CZ7B22BF2000 |  | Backfill Layers works Using Dynamic Compaction Crane (RIC) for Block 22 - (B1.31 23 23.03)-Z7-B22-BF | 18d | 2026-09-20 A | 2026-10-11 A | RHD4ENMARAPPEW100, RHD4CZ1B02BF2000, RHD4CZ7B21EX1001, RHD4CZ7B20BF2000, RHD4CZ7B21BF2000 | 100% |  |  |  |  |  | Skilled labor [94.31 h]; Unskilled Labor [188.62 h]; Equipment Opreator [188.62 h]; RIC Machine [188.62 h]; Engineering fill using approved fill material placed in bulk and compacted by dynamic compaction method For Roads and Plots [91474.6 m3] | 823,271.28 | 823,271.28 | B22 | Z7 | CONS | B22 | BF | Backfill RIC |
|  | 235 | **RHD4-02-002-Block Works - BF-Z7-BLOCK-23** |  | 2026-10-01 | 2027-07-05 |  |  |  |  |  |  |  |  |  |  |  |  |  |  |  |  |
| RHD4CZ7B23BF2000 |  | Backfill Layers works Using Dynamic Compaction Crane (RIC) for Block 23 - (B1.31 23 23.03)-Z7-B23-BF | 3d | 2026-10-01 A | 2027-07-05 | RHD4ENMARAPPEW100, RHD4CZ7B23EX1000, RHD4CZ7B22BF2000 FF | 67% | 3d | 2026-10-01 | 2026-10-04 | 4.98d | 0d | Skilled labor [14.27 h]; Unskilled Labor [28.53 h]; Equipment Opreator [28.53 h]; RIC Machine [28.53 h]; Engineering fill using approved fill material placed in bulk and compacted by dynamic compaction method For Roads and Plots [11901 m3] | 107,109.24 | 71,998.83 | B23 | Z7 | CONS | B23 | BF | Backfill RIC |
|  | 236 | **RHD4-02-002-Block Works - BF-Z7-BLOCK-24** |  | 2027-06-28 | 2027-07-22 |  |  |  |  |  |  |  |  |  |  |  |  |  |  |  |  |
| RHD4CZ7B24BF2000 |  | Backfill Layers works Using Dynamic Compaction Crane (RIC) for Block 24 - (B1.31 23 23.03)-Z7-B24-BF | 21d | 2027-06-28 | 2027-07-22 | RHD4ENMARAPPEW100, RHD4ENMSEW2000, RHD4ENMSEW2010, RHD4ENSDZ7APPEW100 SS, RHD4CZ5B12EX1003, RHD4CZ7B23EX1000, RHD4CZ7B24EX1000 |  |  |  |  | -76.85d | 20.17d | Skilled labor [128.07 h]; Unskilled Labor [256.14 h]; Equipment Opreator [256.14 h]; RIC Machine [256.14 h]; Engineering fill using approved fill material placed in bulk and compacted by dynamic compaction method For Roads and Plots [148100 m3] | 1,332,900.32 |  | B24 | Z7 | CONS | B24 | BF | Backfill RIC |
|  | 218 | **RHD4-02-002-Z5-Block Works - Backfill** |  | 2026-03-15 | 2027-06-24 |  |  |  |  |  |  |  |  |  |  |  |  |  |  |  |  |
|  | 219 | **RHD4-02-002-Block Works - BF-Z5-BLOCK-10** |  | 2026-03-23 | 2026-07-19 |  |  |  |  |  |  |  |  |  |  |  |  |  |  |  |  |
| RHD4CZ5B10BF2000 |  | Backfill Layers works Using Dynamic Compaction Crane (RIC) for Block 10 - (B1.31 23 23.03)-Z5-B10-BF | 9d | 2026-03-23 A | 2026-07-19 A | RHD4CZ5B10EX1001, RHD4ENMARAPPEW100, RHD4CZ6B15BF2000 | 100% |  | 2027-04-07 | 2027-04-17 |  |  | Skilled labor [6.86 h]; Unskilled Labor [13.6 h]; Equipment Opreator [13.6 h]; RIC Machine [13.6 h]; Engineering fill using approved fill material placed in bulk and compacted by dynamic compaction method For Roads and Plots [6616.97 m3] | 59,552.71 | 59,552.71 | B10 | Z5 | CONS | B10 | BF | Backfill RIC |
|  | 220 | **RHD4-02-002-Block Works - BF-Z5-BLOCK-11** |  | 2026-03-15 | 2026-07-18 |  |  |  |  |  |  |  |  |  |  |  |  |  |  |  |  |
| RHD4CZ5B11BF2000 |  | Backfill Layers works Using Dynamic Compaction Crane (RIC) for Block 11 - (B1.31 23 23.03)-Z5-B11-BF | 7d | 2026-03-15 A | 2026-07-18 A | RHD4CZ5B11EX1001, RHD4ENMARAPPEW100 | 100% |  | 2027-03-07 | 2027-03-17 |  |  | Skilled labor [157.69 h]; Unskilled Labor [315.28 h]; Equipment Opreator [315.28 h]; RIC Machine [315.28 h]; Engineering fill using approved fill material placed in bulk and compacted by dynamic compaction method For Roads and Plots [150836 m3] | 1,357,521.11 | 1,357,521.11 | B11 | Z5 | CONS | B11 | BF | Backfill RIC |
|  | 221 | **RHD4-02-002-Block Works - BF-Z5-BLOCK-12** |  | 2026-03-15 | 2026-08-04 |  |  |  |  |  |  |  |  |  |  |  |  |  |  |  |  |
| RHD4CZ5B12BF2000 |  | Backfill Layers works Using Dynamic Compaction Crane (RIC) for Block 12 - (B1.31 23 23.03)-Z5-B12-BF(Completed) | 11d | 2026-03-15 A | 2026-08-04 A | RHD4CZ5B11BF2000 | 100% |  | 2027-03-18 | 2027-03-30 |  |  | Skilled labor; Unskilled Labor; Equipment Opreator; RIC Machine; Engineering fill using approved fill material placed in bulk and compacted by dynamic compaction method For Roads and Plots [34228.3 m3] | 308,054.95 | 308,054.95 | B12 | Z5 | CONS | B12 | BF | Backfill RIC |
|  | 222 | **RHD4-02-002-Block Works - BF-Z5-BLOCK-13** |  | 2026-03-28 | 2026-07-19 |  |  |  |  |  |  |  |  |  |  |  |  |  |  |  |  |
| RHD4CZ5B13BF2000 |  | Backfill Layers works Using Dynamic Compaction Crane (RIC) for Block 13 - (B1.31 23 23.03)-Z5-B13-BF | 9d | 2026-03-28 A | 2026-07-19 A | RHD4ENMARAPPEW100, RHD4CZ5B13EX1000 SS, RHD4CZ5B10BF2000 | 100% |  | 2027-04-18 | 2027-04-27 |  |  | Skilled labor [98.56 h]; Unskilled Labor [197.12 h]; Equipment Opreator [197.12 h]; RIC Machine [197.12 h]; Engineering fill using approved fill material placed in bulk and compacted by dynamic compaction method For Roads and Plots [97358.9 m3] | 876,229.75 | 876,229.75 | B13 | Z5 | CONS | B13 | BF | Backfill RIC |
|  | 223 | **RHD4-02-002-Block Works - BF-Z5-BLOCK-14** |  | 2026-03-24 | 2027-06-24 |  |  |  |  |  |  |  |  |  |  |  |  |  |  |  |  |
| RHD4CZ5B14BF2000 |  | Backfill Layers works Using Dynamic Compaction Crane (RIC) for Block 14 - (B1.31 23 23.03)-Z5-B14-BF | 9d | 2026-03-24 A | 2027-06-24 | RHD4ENMARAPPEW100, RHD4CZ5B14EX1003 SS, RHD4CZ5B13EX1000 SS, RHD4CZ5B13BF2000 | 71% | 2.65d | 2027-04-28 | 2027-05-08 | -25.67d | 0d | Skilled labor [80.59 h]; Unskilled Labor [161.18 h]; Equipment Opreator [161.18 h]; RIC Machine [161.18 h]; Engineering fill using approved fill material placed in bulk and compacted by dynamic compaction method For Roads and Plots [84301.9 m3] | 758,716.93 | 535,492.57 | B14 | Z5 | CONS | B14 | BF | Backfill RIC |
|  | 207 | **RHD4-02-002-Z2-Block Works - Backfill** |  | 2026-08-09 | 2027-06-29 |  |  |  |  |  |  |  |  |  |  |  |  |  |  |  |  |
|  | 208 | **RHD4-02-002-Block Works - BF-Z2-BLOCK-04** |  | 2026-08-09 | 2027-06-29 |  |  |  |  |  |  |  |  |  |  |  |  |  |  |  |  |
| RHD4CZ2B04BF2000 |  | Backfill Layers works Using Dynamic Compaction Crane (RIC) for Block 04 - (B1.31 23 23.03)-Z2-B04-BF | 9d | 2026-08-09 A | 2027-06-29 | RHD4ENMARAPPEW100, RHD4CZ5B14BF2000, RHD4CZ2B04EX1002 | 65% | 4d | 2027-05-09 | 2027-05-23 | -25.67d | 0d | Skilled labor [65.67 h]; Unskilled Labor [131.45 h]; Equipment Opreator [131.45 h]; RIC Machine [131.45 h]; Engineering fill using approved fill material placed in bulk and compacted by dynamic compaction method For Roads and Plots [60209.7 m3] | 541,887.59 | 353,419.09 | B04 | Z2 | CONS | B04 | BF | Backfill RIC |

| ID | WBS | Activity | Duration | Start | Finish | Predecessors | Complete | Remaining | Planned start | Planned finish | Total float | Free float | Resources | Cost | Actual cost | RDH4-01-001-Road and Block Names-1 | RDH4-01-001-Zones-1 | RDH4-01-001-Phases-1 | RDH4-01-001-Blocks-1 | RDH4-01-001-Networks-1 | RDH4-01-001-Work Method-1 |
| --- | --- | --- | --- | --- | --- | --- | --- | --- | --- | --- | --- | --- | --- | --- | --- | --- | --- | --- | --- | --- | --- |
|  | 209 | **RHD4-02-002-Block Works - BF-Z2-BLOCK-05** |  | 2026-08-26 | 2026-09-28 |  |  |  |  |  |  |  |  |  |  |  |  |  |  |  |  |
| RHD4CZ2B05BF2000 |  | Backfill Layers works Using Dynamic Compaction Crane (RIC) for Block 05 - Stage 1 - (B1.31 23 23.03)-Z2-B05-BF | 5d | 2026-08-26 A | 2026-08-31 A | RHD4ENMARAPPEW100, RHD4CZ2B04BF2000 | 100% |  | 2027-05-24 | 2027-05-29 |  |  | Skilled labor [127.53 h]; Unskilled Labor [255.05 h]; Equipment Opreator [255.05 h]; RIC Machine [255.05 h]; Engineering fill using approved fill material placed in bulk and compacted by dynamic compaction method For Roads and Plots [129892 m3] | 1,169,032.21 | 1,169,032.21 | B05 | Z2 | CONS | B05 | BF | Backfill RIC |
| RHD4CZ2B05BF2001 |  | Backfill Layers works Using Dynamic Compaction Crane (RIC) for Block 05 - Stage 2 - (B1.31 23 23.03)-Z2-B05-BF | 21d | 2026-09-01 A | 2026-09-28 A | RHD4ENMARAPPEW100, RHD4CZ2B05BF2000 | 100% |  | 2027-05-30 | 2027-06-22 |  |  | Skilled labor [127.53 h]; Unskilled Labor [255.05 h]; Equipment Opreator [255.05 h]; RIC Machine [255.05 h]; Engineering fill using approved fill material placed in bulk and compacted by dynamic compaction method For Roads and Plots [129892 m3] | 1,169,032.21 | 1,169,032.21 | B05 | Z2 | CONS | B05 | BF | Backfill RIC |
|  | 212 | **RHD4-02-002-Z4-Block Works - Backfill** |  | 2026-05-24 | 2027-09-15 |  |  |  |  |  |  |  |  |  |  |  |  |  |  |  |  |
|  | 214 | **RHD4-02-002-Block Works - BF-Z4-BLOCK-07** |  | 2027-08-16 | 2027-09-12 |  |  |  |  |  |  |  |  |  |  |  |  |  |  |  |  |
| RHD4CZ4B07BF2000 |  | Backfill Layers works Using Dynamic Compaction Crane (RIC) for Block 07 - (B1.31 23 23.03)-Z4-B07-BF | 2d | 2027-08-16 | 2027-08-18 | RHD4ENMARAPPEW100, RHD4CZ2B04BF2000, RHD4CZ4B07EX1001, RHD4CZ4B08BF4000 SS, RHD4CZ4B08BF4000 FF, RHD4CZ2B05BF2001, RHD4CZ7B24BF2000 |  |  |  |  | 18.98d | 0d | Skilled labor [3.27 h]; Unskilled Labor [6.53 h]; Equipment Opreator [6.53 h]; RIC Machine [6.53 h]; Engineering fill using approved fill material placed in bulk and compacted by dynamic compaction method For Roads and Plots [2318.03 m3] | 20,862.31 |  | B07 | Z4 | CONS | B07 | BF | Backfill RIC |
| RHD4CZ4B07BF4000 |  | Soil improvement works by Dynamic Compaction (DC) for Block 07 - Stage 1 - (B1.31 23 23.23.01)-Z4-B07-BF | 21d | 2027-08-18 | 2027-09-12 | RHD4CZ4B07BF2000 |  |  |  |  | 18.98d | 0d | Skilled labor [127.2 h]; Unskilled Labor [254.51 h]; Equipment Opreator [1145.12 h]; Water Truck [127.2 h]; Dump Truck [763.41 h]; DC Compactor [254.51 h]; Soil improvement by means of dynamic compaction of the in-situ natural soil using the method of dropping heavy weights For Roads and below formation level [60773.1 m2] | 1,033,143.25 |  | B07 | Z4 | CONS | B07 | BF | Soil improvement |
| RHD4CZ4B07BF4001 |  | Soil improvement works by Dynamic Compaction (DC) for Block 07 - Stage 2 - (B1.31 23 23.23.01)-Z4-B07-BF | 21d | 2027-08-18 | 2027-09-12 | RHD4CZ4B07BF4000 SS, RHD4CZ4B07BF4000 FF |  |  |  |  | 18.98d | 119d | Skilled labor [127.2 h]; Unskilled Labor [254.51 h]; Equipment Opreator [1145.12 h]; Water Truck [127.2 h]; Dump Truck [763.41 h]; DC Compactor [254.51 h]; Soil improvement by means of dynamic compaction of the in-situ natural soil using the method of dropping heavy weights For Roads and below formation level [60773.1 m2] | 1,033,143.25 |  | B07 | Z4 | CONS | B07 | BF | Soil improvement |
|  | 215 | **RHD4-02-002-Block Works - BF-Z4-BLOCK-08** |  | 2026-09-26 | 2027-08-18 |  |  |  |  |  |  |  |  |  |  |  |  |  |  |  |  |
| RHD4CZ4B08BF2000 |  | Backfill Layers works Using Dynamic Compaction Crane (RIC) for Block 08 - (B1.31 23 23.03)-Z4-B08-BF | 19d | 2026-09-26 A | 2027-07-21 | RHD4ENMARAPPEW100, RHD4CZ4B09BF2001 | 53% | 19d | 2027-06-03 | 2027-06-24 | 21.33d | 2.35d | Skilled labor [101.93 h]; Unskilled Labor [203.87 h]; Equipment Opreator [203.87 h]; RIC Machine [203.87 h]; Engineering fill using approved fill material placed in bulk and compacted by dynamic compaction method For Roads and Plots [91092.7 m3] | 819,834.69 | 431,970.9 | B08 | Z4 | CONS | B08 | BF | Backfill RIC |
| RHD4CZ4B08BF4000 |  | Soil improvement works by Dynamic Compaction (DC) for Block 08 - Stage 1 - (B1.31 23 23.23.01)-Z4-B08-BF | 21d | 2027-07-25 | 2027-08-18 | RHD4CZ4B08BF2000, RHD4CZ4B08EX1001 |  |  |  |  | 18.98d | 0d | Skilled labor [136.67 h]; Unskilled Labor [273.35 h]; Equipment Opreator [1230.06 h]; Water Truck [136.67 h]; Dump Truck [820.04 h]; DC Compactor [273.35 h]; Soil improvement by means of dynamic compaction of the in-situ natural soil using the method of dropping heavy weights For Roads and below formation level [65279.4 m2] | 1,109,749.39 |  | B08 | Z4 | CONS | B08 | BF | Soil improvement |
|  | 216 | **RHD4-02-002-Block Works - BF-Z4-BLOCK-09** |  | 2026-05-24 | 2026-09-28 |  |  |  |  |  |  |  |  |  |  |  |  |  |  |  |  |
| RHD4CZ4B09BF2000 |  | Backfill Layers works Using Dynamic Compaction Crane (RIC) for Block 09 - Stage 1 - (B1.31 23 23.03)-Z4-B09-BF(Completed | 11d | 2026-05-24 A | 2026-08-03 A | RHD4ENMARAPPEW100, RHD4CZ4B09EX1000 SS | 100% |  | 2027-04-17 | 2027-04-28 |  |  | Skilled labor [66.32 h]; Unskilled Labor [132.75 h]; Equipment Opreator [132.75 h]; RIC Machine [132.75 h]; Engineering fill using approved fill material placed in bulk and compacted by dynamic compaction method For Roads and Plots [66646.2 m3] | 599,815.45 | 599,815.45 | B09 | Z4 | CONS | B09 | BF | Backfill RIC |
| RHD4CZ4B09BF2001 |  | Backfill Layers works Using Dynamic Compaction Crane (RIC) for Block 09 - Stage 2 - (B1.31 23 23.03)-Z4-B09-BF | 9d | 2026-08-13 A | 2026-09-28 A | RHD4ENMARAPPEW100, RHD4CZ2B04BF2000, RHD4CZ4B09BF2000, RHD4ENMSEW2000, RHD4ENMSEW2010, RHD4ENSDZ4APPEW100 SS, RHD4CZ4B09EX1000 | 100% |  | 2027-05-24 | 2027-06-02 |  |  | Skilled labor [72.42 h]; Unskilled Labor [144.84 h]; Equipment Opreator [144.84 h]; RIC Machine [144.84 h]; Engineering fill using approved fill material placed in bulk and compacted by dynamic compaction method For Roads and Plots [66646.2 m3] | 599,815.45 | 599,815.45 | B09 | Z4 | CONS | B09 | BF | Backfill RIC |
|  | 217 | **RHD4-02-002-Block Works - BF-Z4-BLOCK-Z4** |  | 2026-09-24 | 2027-09-15 |  |  |  |  |  |  |  |  |  |  |  |  |  |  |  |  |
| RHD4CZ4BZ4BF2000 |  | Backfill Layers works Using Dynamic Compaction Crane (RIC) for Block BZ4 - (B1.31 23 23.03)-Z4-BZ4-BF | 2d | 2026-09-24 A | 2026-10-08 A | RHD4ENMARAPPEW100, RHD4CZ4B06BF4000, RHD4CZ4B06EX1001 | 100% |  | 2027-05-10 | 2027-05-11 |  |  | Skilled labor [5.45 h]; Unskilled Labor [10.78 h]; Equipment Opreator [10.78 h]; RIC Machine [10.78 h]; Engineering fill using approved fill material placed in bulk and compacted by dynamic compaction method For Roads and Plots [10652.9 m3] | 95,875.62 | 95,875.62 | BZ4 | Z4 | CONS | BZ4 | BF | Backfill RIC |
| RHD4CZ4BZ4BF4000 |  | Soil improvement works by Dynamic Compaction (DC) for Block BZ4 - Stage 1 - (B1.31 23 23.23.01)-Z4-BZ4-BF | 16d | 2027-08-09 | 2027-08-28 | RHD4CZ4BZ4BF2000, RHD4CZ4B09EX1000 |  |  |  |  | -92.02d | 0d | Skilled labor [83.75 h]; Unskilled Labor [167.6 h]; Equipment Opreator [754.05 h]; Water Truck [83.75 h]; Dump Truck [502.7 h]; DC Compactor [167.6 h]; Soil improvement by means of dynamic compaction of the in-situ natural soil using the method of dropping heavy weights For Roads and below formation level [40016.4 m2] | 680,279.22 |  | BZ4 | Z4 | CONS | BZ4 | BF | Soil improvement |
| RHD4CZ4BZ4BF4001 |  | Soil improvement works by Dynamic Compaction (DC) for Block BZ4 - Stage 2 - (B1.31 23 23.23.01)-Z4-BZ4-BF | 16d | 2027-08-28 | 2027-09-15 | RHD4CZ4BZ4BF4000 |  |  |  |  | -92.02d | 105.98d | Skilled labor [83.75 h]; Unskilled Labor [167.6 h]; Equipment Opreator [754.05 h]; Water Truck [83.75 h]; Dump Truck [502.7 h]; DC Compactor [167.6 h]; Soil improvement by means of dynamic compaction of the in-situ natural soil using the method of dropping heavy weights For Roads and below formation level [40016.4 m2] | 680,279.22 |  | BZ4 | Z4 | CONS | BZ4 | BF | Soil improvement |
|  | 1 | **RHD4-02-002-Block Works - BF-Z4-BLOCK-06** |  | 2027-07-05 | 2027-07-25 |  |  |  |  |  |  |  |  |  |  |  |  |  |  |  |  |
| RHD4CZ4B06BF4000 |  | Soil improvement works by Dynamic Compaction (DC) for Block 06 - Stage 1 - (B1.31 23 23.23.01)-Z4-B06-BF | 17d | 2027-07-05 | 2027-07-25 | RHD4CZ1B02BF2000 |  |  |  |  | -79.02d | 13d | Skilled labor [91.48 h]; Unskilled Labor [182.96 h]; Equipment Opreator [823.42 h]; Water Truck [91.48 h]; Dump Truck [548.98 h]; DC Compactor [182.96 h]; Soil improvement by means of dynamic compaction of the in-situ natural soil using the method of dropping heavy weights For Roads and below formation level [43701.1 m2] | 742,919.45 |  | B06 | Z4 | CONS | B06 | BF | Soil improvement |
|  | 203 | **RHD4-02-002-Z1-Block Works - Backfill** |  | 2026-08-25 | 2027-07-07 |  |  |  |  |  |  |  |  |  |  |  |  |  |  |  |  |
|  | 204 | **RHD4-02-002-Block Works - BF-Z1-BLOCK-01** |  | 2026-08-25 | 2027-07-07 |  |  |  |  |  |  |  |  |  |  |  |  |  |  |  |  |
| RHD4CZ1B01BF2000 |  | Backfill Layers works Using Dynamic Compaction Crane (RIC) for Block 01 - (B1.31 23 23.03)-Z1-B01-BF | 21d | 2026-08-25 A | 2027-07-07 | RHD4ENMARAPPEW100, RHD4CZ1B02BF2000 | 67% | 2d | 2027-04-20 | 2027-05-13 | -42.02d | 0d | Skilled labor [122.84 h]; Unskilled Labor [245.69 h]; Equipment Opreator [245.69 h]; RIC Machine [245.69 h]; Engineering fill using approved fill material placed in bulk and compacted by dynamic compaction method For Roads and Plots [148741 m3] | 1,338,667.37 | 899,986.07 | B01 | Z1 | CONS | B01 | BF | Backfill RIC |
|  | 205 | **RHD4-02-002-Block Works - BF-Z1-BLOCK-02** |  | 2026-08-29 | 2027-07-05 |  |  |  |  |  |  |  |  |  |  |  |  |  |  |  |  |
| RHD4CZ1B02BF2000 |  | Backfill Layers works Using Dynamic Compaction Crane (RIC) for Block 02 - (B1.31 23 23.03)-Z1-B02-BF | 8d | 2026-08-29 A | 2027-07-05 | RHD4ENMARAPPEW100, RHD4CZ1B03EX1000 SS | 75% | 1d | 2027-04-11 | 2027-04-19 | -79.02d | 0d | Skilled labor [41.71 h]; Unskilled Labor [83.53 h]; Equipment Opreator [83.53 h]; RIC Machine [83.53 h]; Engineering fill using approved fill material placed in bulk and compacted by dynamic compaction method For Roads and Plots [36377.4 m3] | 327,396.67 | 286,472.09 | B02 | Z1 | CONS | B02 | BF | Backfill RIC |

| ID | WBS | Activity | Duration | Start | Finish | Predecessors | Complete | Planned start | Planned finish | Total float | Free float | Resources | Cost | Actual cost | RDH4-01-001-Road and Block Names-1 | RDH4-01-001-Zones-1 | RDH4-01-001-Phases-1 | RDH4-01-001-Blocks-1 | RDH4-01-001-Networks-1 | RDH4-01-001-Work Method-1 | RDH4-01-001-MENEM |
| --- | --- | --- | --- | --- | --- | --- | --- | --- | --- | --- | --- | --- | --- | --- | --- | --- | --- | --- | --- | --- | --- |
|  | 206 | **RHD4-02-002-Block Works - BF-Z1-BLOCK-03** |  | 2026-08-31 | 2026-09-05 |  |  |  |  |  |  |  |  |  |  |  |  |  |  |  |  |
| RHD4CZ1B03BF2000 |  | Backfill Layers works Using Dynamic Compaction Crane (RIC) for Block 03 - (B1.31 23 23.03)-Z1-B03-BF | 21d | 2026-08-31 A | 2026-09-05 A | RHD4ENMARAPPEW100, RHD4CZ1B01BF2000 | 100% | 2027-05-19 | 2027-06-12 |  |  | Skilled labor [120 h]; Unskilled Labor [239.91 h]; Equipment Opreator [239.91 h]; RIC Machine [239.91 h]; Engineering fill using approved fill material placed in bulk and compacted by dynamic compaction method For Roads and Plots [123923 m3] | 1,115,311.44 | 1,115,311.44 | B03 | Z1 | CONS | B03 | BF | Backfill RIC |  |
|  | 210 | **RHD4-02-002-Z3-Block Works - Backfill** |  | 2026-06-04 | 2026-08-13 |  |  |  |  |  |  |  |  |  |  |  |  |  |  |  |  |
|  | 211 | **RHD4-02-002-Block Works - BF-Z3-BLOCK-Z3** |  | 2026-06-04 | 2026-08-13 |  |  |  |  |  |  |  |  |  |  |  |  |  |  |  |  |
| RHD4CZ3BZ3BF2000 |  | Backfill Layers works Using Dynamic Compaction Crane (RIC) for Block BZ3 - Stage 1 - (B1.31 23 23.03)-Z3-BZ3-BF | 15d | 2026-06-04 A | 2026-07-20 A | RHD4ENMARAPPEW100, RHD4CZ6BZ6BF2000, RHD4CZ7B23BF2000 | 100% | 2027-06-17 | 2027-07-04 |  |  | Skilled labor [102.15 h]; Unskilled Labor [204.41 h]; Equipment Opreator [204.41 h]; RIC Machine [204.41 h]; Engineering fill using approved fill material placed in bulk and compacted by dynamic compaction method For Roads and Plots [161159 m3] | 1,450,432.47 | 1,450,432.47 | BZ3 | Z3 | CONS | BZ3 | BF | Backfill RIC |  |
| RHD4CZ3BZ3BF2001 |  | Backfill Layers works Using Dynamic Compaction Crane (RIC) for Block BZ3 - Stage 2 - (B1.31 23 23.03)-Z3-BZ3-BF | 19d | 2026-07-23 A | 2026-08-13 A | RHD4ENMARAPPEW100, RHD4CZ3BZ3BF2000, RHD4ENSDZ3APPEW100, RHD4ENMSEW2000, RHD4ENMSEW2010, RHD4ENSDZ3APPEW100 SS, RHD4CZ3BZ3EX1002 | 100% | 2027-07-05 | 2027-07-26 |  |  | Skilled labor [102.15 h]; Unskilled Labor [204.41 h]; Equipment Opreator [204.41 h]; RIC Machine [204.41 h]; Engineering fill using approved fill material placed in bulk and compacted by dynamic compaction method For Roads and Plots [161159 m3] | 1,450,432.47 | 1,450,432.47 | BZ3 | Z3 | CONS | BZ3 | BF | Backfill RIC |  |
|  | 251 | **RHD4-02-002-Road Works - RW** |  | 2025-12-24 | 2028-02-10 |  |  |  |  |  |  |  |  |  |  |  |  |  |  |  |  |
|  | 270 | **RHD4-02-002-Z5-Road Works** |  | 2025-12-28 | 2027-01-18 |  |  |  |  |  |  |  |  |  |  |  |  |  |  |  |  |
|  | 271 | **RHD4-02-002-Road Works - RW-Z5-(RD-A-1 /4)** |  | 2025-12-28 | 2026-12-02 |  |  |  |  |  |  |  |  |  |  |  |  |  |  |  |  |
| RHD4CZ5A014RW1000 |  | Excavation works for Road (RD-A-1 /4) - (B1.31 23 16.01)-Z5-A014-RW- Stage 1 | 8d | 2025-12-28 A | 2026-02-15 A | RHD4ENMSEW2000, RHD4ENMSEW2010, RHD4ENSDZ5APPEW100 SS | 100% | 2025-12-24 | 2026-01-01 |  |  | Skilled labor [75.69 h]; Unskilled Labor [151.27 h]; Equipment Opreator [1361.84 h]; Excavator-Poclain [151.27 h]; Water Truck [151.27 h]; Bulldozer/Dozer [151.27 h]; Loader [302.64 h]; Dump Truck [605.29 h]; Excavation in all types of soil to the required depth includes removal of waste material Including Excavation for Roads and Site [20266.3 m3] | 121,598.12 | 121,598.12 | A014 | Z5 | CONS |  | RW | Excavation | bef |
| RHD4CZ5A014RW2000 |  | Backfill Layers works Using Dynamic Compaction Crane (RIC) for Road (RD-A-1 /4) - Stage 1 - (B1.31 23 23.03)-Z5-A014-RW | 11d | 2026-01-03 A | 2026-04-17 A | RHD4CZ5A014RW1000 | 100% | 2026-01-03 | 2026-01-14 |  |  | Skilled labor [55.2 h]; Unskilled Labor [110.54 h]; Equipment Opreator [110.54 h]; RIC Machine [110.54 h]; Engineering fill using approved fill material placed in bulk and compacted by dynamic compaction method For Roads and Plots [40507.3 m3] | 364,566.04 | 364,566.04 | A014 | Z5 | CONS |  | RW | Backfill RIC | bef |
| RHD4CZ5A014RW1001 |  | Excavation works for Road (RD-A-1 /4) - (B1.31 23 16.01)-Z5-A014-RW- Stage 2 | 17d | 2026-01-27 A | 2026-02-10 A | RHD4CZ5A014RW1000, RHD4ENMSEW2000, RHD4ENMSEW2010, RHD4ENSDZ5APPEW100 SS | 100% | 2026-01-03 | 2026-01-21 |  |  | Skilled labor [75.69 h]; Unskilled Labor [151.27 h]; Equipment Opreator [1361.84 h]; Excavator-Poclain [151.27 h]; Water Truck [151.27 h]; Bulldozer/Dozer [151.27 h]; Loader [302.64 h]; Dump Truck [605.29 h]; Excavation in all types of soil to the required depth includes removal of waste material Including Excavation for Roads and Site [20266.3 m3] | 121,598.12 | 121,598.12 | A014 | Z5 | CONS |  | RW | Excavation | bef |
| RHD4CZ5A014RW2001 |  | Backfill Layers works Using Dynamic Compaction Crane (RIC) for Road (RD-A-1 /4) - Stage 2 - (B1.31 23 23.03)-Z5-A014-RW | 11d | 2026-02-16 A | 2026-02-19 A | RHD4CZ5A014RW2000, RHD4CZ5A014RW1001 | 100% | 2026-01-22 | 2026-02-03 |  |  | Skilled labor [55.2 h]; Unskilled Labor [110.54 h]; Equipment Opreator [110.54 h]; RIC Machine [110.54 h]; Engineering fill using approved fill material placed in bulk and compacted by dynamic compaction method For Roads and Plots [40507.3 m3] | 364,566.04 | 364,566.04 | A014 | Z5 | CONS |  | RW | Backfill RIC | bef |
| RHD4CZ5A014RW3000 |  | Backfill Layers works using Improved fill Material for Road (RD-A-1 /4) - Stage 1 - (B1.31 23 23.01)-Z5-A014-RW | 5d | 2026-11-10 | 2026-11-15 | RHD4CZ5A014RW2000 |  |  |  | -173d | 0d | Skilled labor [26.35 h]; Unskilled Labor [26.35 h]; Equipment Opreator [92.24 h]; Water Truck [13.18 h]; Grader [13.18 h]; Loader [13.18 h]; Dump Truck [52.71 h]; Engineering backfilling with improved and select fill material from the site or imported Including embankment in layers For Roads [1598.07 m3] | 19,176.84 |  | A014 | Z5 | CONS |  | RW | Backfilling | bef |
| RHD4CZ5A014RW3001 |  | Backfill Layers works using Improved fill Material for Road (RD-A-1 /4) - Stage 2 - (B1.31 23 23.01)-Z5-A014-RW | 5d | 2026-11-16 | 2026-11-21 | RHD4CZ5A014RW3000, RHD4CZ5A014RW2001 |  |  |  | -173d | 0d | Skilled labor [26.35 h]; Unskilled Labor [26.35 h]; Equipment Opreator [92.24 h]; Water Truck [13.18 h]; Grader [13.18 h]; Loader [13.18 h]; Dump Truck [52.71 h]; Engineering backfilling with improved and select fill material from the site or imported Including embankment in layers For Roads [1598.07 m3] | 19,176.84 |  | A014 | Z5 | CONS |  | RW | Backfilling | bef |
| RHD4CZ5A014RW3002 |  | Backfill Layers works using Improved fill Material for Road (RD-A-1 /4) - Stage 3 - (B1.31 23 23.01)-Z5-A014-RW | 5d | 2026-11-22 | 2026-11-26 | RHD4CZ5A014RW3001 |  |  |  | -173d | 0d | Skilled labor [26.35 h]; Unskilled Labor [26.35 h]; Equipment Opreator [92.24 h]; Water Truck [13.18 h]; Grader [13.18 h]; Loader [13.18 h]; Dump Truck [52.71 h]; Engineering backfilling with improved and select fill material from the site or imported Including embankment in layers For Roads [1598.07 m3] | 19,176.84 |  | A014 | Z5 | CONS |  | RW | Backfilling | bef |
| RHD4CZ5A014RW3003 |  | Backfill Layers works using Improved fill Material for Road (RD-A-1 /4) - Stage 4 - (B1.31 23 23.01)-Z5-A014-RW | 5d | 2026-11-28 | 2026-12-02 | RHD4CZ5A014RW3002 |  |  |  | -173d | 0d | Skilled labor [26.35 h]; Unskilled Labor [26.35 h]; Equipment Opreator [92.24 h]; Water Truck [13.18 h]; Grader [13.18 h]; Loader [13.18 h]; Dump Truck [52.71 h]; Engineering backfilling with improved and select fill material from the site or imported Including embankment in layers For Roads [1598.07 m3] | 19,176.84 |  | A014 | Z5 | CONS |  | RW | Backfilling | bef |
|  | 272 | **RHD4-02-002-Road Works - RW-Z5-(RD-C-5 /1)** |  | 2026-01-03 | 2026-11-23 |  |  |  |  |  |  |  |  |  |  |  |  |  |  |  |  |
| RHD4CZ5C051RW1000 |  | Excavation works for Road (RD-C-5 /1) - (B1.31 23 16.01)-Z5-C051-RW | 8d | 2026-01-03 A | 2026-02-23 A | RHD4CZ5A014RW1000, RHD4ENMSEW2000, RHD4ENMSEW2010, RHD4ENSDZ5APPEW100 SS | 100% | 2026-01-03 | 2026-01-11 |  |  | Skilled labor [45.74 h]; Unskilled Labor [91.37 h]; Equipment Opreator [822.66 h]; Excavator-Poclain [91.37 h]; Water Truck [91.37 h]; Bulldozer/Dozer [91.37 h]; Loader [182.85 h]; Dump Truck [365.6 h]; Excavation in all types of soil to the required depth includes removal of waste material Including Excavation for Roads and Site [23484.2 m3] | 140,905.05 | 140,905.05 | C051 | Z5 | CONS |  | RW | Excavation | bef |
| RHD4CZ5C051RW2000 |  | Backfill Layers works Using Dynamic Compaction Crane (RIC) for Road (RD-C-5 /1) - (B1.31 23 23.03)-Z5-C051-RW | 2d | 2026-02-04 A | 2026-08-22 A | RHD4CZ5C051RW1000, RHD4CZ5A014RW2001 | 100% | 2026-02-04 | 2026-02-05 |  |  | Skilled labor [3.59 h]; Unskilled Labor [7.2 h]; Equipment Opreator [7.2 h]; RIC Machine [7.2 h]; Engineering fill using approved fill material placed in bulk and compacted by dynamic compaction method For Roads and Plots [2004.5 m3] | 18,040.5 | 18,040.5 | C051 | Z5 | CONS |  | RW | Backfill RIC | bef |
| RHD4CZ5C051RW3000 |  | Backfill Layers works using Improved fill Material for Road (RD-C-5 /1) - (B1.31 23 23.01)-Z5-C051-RW | 12d | 2026-11-10 | 2026-11-23 | RHD4CZ5C051RW2000 |  |  |  | -198d | 0d | Skilled labor [18.19 h]; Unskilled Labor [18.19 h]; Equipment Opreator [63.49 h]; Water Truck [9.04 h]; Grader [9.04 h]; Loader [9.04 h]; Dump Truck [36.26 h]; Engineering backfilling with improved and select fill material from the site or imported Including embankment in layers For Roads [2802.42 m3] | 33,628.99 |  | C051 | Z5 | CONS |  | RW | Backfilling | bef |
|  | 273 | **RHD4-02-002-Road Works - RW-Z5-(RD-C-6 /1)** |  | 2026-02-10 | 2026-12-26 |  |  |  |  |  |  |  |  |  |  |  |  |  |  |  |  |
| RHD4CZ5C061RW1000 |  | Excavation works for Road (RD-C-6 /1) - (B1.31 23 16.01)-Z5-C061-RW | 2d | 2026-02-10 A | 2026-02-19 A | RHD4CZ5C051RW1000, RHD4ENMSEW2000, RHD4ENMSEW2010, RHD4ENSDZ5APPEW100 SS | 100% | 2026-01-12 | 2026-01-13 |  |  | Skilled labor [8.28 h]; Unskilled Labor [16.55 h]; Equipment Opreator [149.09 h]; Excavator-Poclain [16.55 h]; Water Truck [16.55 h]; Bulldozer/Dozer [16.55 h]; Loader [33.11 h]; Dump Truck [66.32 h]; Excavation in all types of soil to the required depth includes removal of waste material Including Excavation for Roads and Site [2382.99 m3] | 14,297.92 | 14,297.92 | C061 | Z5 | CONS |  | RW | Excavation | bef |
| RHD4CZ5C061RW2000 |  | Backfill Layers works Using Dynamic Compaction Crane (RIC) for Road (RD-C-6 /1) - (B1.31 23 23.03)-Z5-C061-RW | 3d | 2026-02-12 A | 2026-02-19 A | RHD4CZ5C061RW1000, RHD4CZ5C051RW2000 | 100% | 2026-02-07 | 2026-02-09 |  |  | Skilled labor [15.03 h]; Unskilled Labor [30.06 h]; Equipment Opreator [30.06 h]; RIC Machine [30.06 h]; Engineering fill using approved fill material placed in bulk and compacted by dynamic compaction method For Roads and Plots [8946.76 m3] | 80,520.81 | 80,520.81 | C061 | Z5 | CONS |  | RW | Backfill RIC | bef |
| RHD4CZ5C061RW3000 |  | Backfill Layers works using Improved fill Material for Road (RD-C-6 /1) - (B1.31 23 23.01)-Z5-C061-RW | 28d | 2026-11-24 | 2026-12-26 | RHD4CZ5C061RW2000, RHD4CZ5C051RW3000 |  |  |  | -198d | 0d | Skilled labor [35.72 h]; Unskilled Labor [35.72 h]; Equipment Opreator [125.02 h]; Water Truck [17.86 h]; Grader [17.86 h]; Loader [17.86 h]; Dump Truck [71.44 h]; Engineering backfilling with improved and select fill material from the site or imported Including embankment in layers For Roads [1339.64 m3] | 16,075.68 |  | C061 | Z5 | CONS |  | RW | Backfilling | bef |

| ID | WBS | Activity | Duration | Start | Finish | Predecessors | Complete | Remaining | Planned start | Planned finish | Total float | Free float | Resources | Cost | Actual cost | RDH4-01-001-Road and Block Names-1 | RDH4-01-001-Zones-1 | RDH4-01-001-Phases-1 | RDH4-01-001-Networks-1 | RDH4-01-001-Work Method-1 | RDH4-01-001-MENEM |
| --- | --- | --- | --- | --- | --- | --- | --- | --- | --- | --- | --- | --- | --- | --- | --- | --- | --- | --- | --- | --- | --- |
|  | 274 | **RHD4-02-002-Road Works - RW-Z5-(RD-L-16)** |  | 2026-01-14 | 2027-01-11 |  |  |  |  |  |  |  |  |  |  |  |  |  |  |  |  |
| RHD4CZ5L016RW1000 |  | Excavation works for Road (RD-L-16) - Stage 1 - (B1.31 23 16.01)-Z5-L016-RW | 42d | 2026-01-14 A | 2026-04-27 A | RHD4CZ5C061RW1000, RHD4ENMSEW2000, RHD4ENMSEW2010, RHD4ENSDZ5APPEW100 SS | 100% |  | 2026-01-14 | 2026-03-04 |  |  | Skilled labor [71.88 h]; Unskilled Labor [143.86 h]; Equipment Opreator [1294.64 h]; Excavator-Poclain [143.86 h]; Water Truck [143.86 h]; Bulldozer/Dozer [143.86 h]; Loader [287.72 h]; Dump Truck [575.45 h]; Excavation in all types of soil to the required depth includes removal of waste material Including Excavation for Roads and Site [28942.3 m3] | 173,653.75 | 173,653.75 | L016 | Z5 | CONS | RW | Excavation | bef |
| RHD4CZ5L016RW1001 |  | Excavation works for Road (RD-L-16) - Stage 2 - (B1.31 23 16.01)-Z5-L016-RW | 8d | 2026-03-08 A | 2026-03-18 A | RHD4CZ5L016RW1000, RHD4ENMSEW2000, RHD4ENMSEW2010, RHD4ENSDZ5APPEW100 SS | 100% |  | 2026-03-05 | 2026-03-14 |  |  | Skilled labor [71.88 h]; Unskilled Labor [143.86 h]; Equipment Opreator [1294.64 h]; Excavator-Poclain [143.86 h]; Water Truck [143.86 h]; Bulldozer/Dozer [143.86 h]; Loader [287.72 h]; Dump Truck [575.45 h]; Excavation in all types of soil to the required depth includes removal of waste material Including Excavation for Roads and Site [28942.3 m3] | 173,653.75 | 173,653.75 | L016 | Z5 | CONS | RW | Excavation | bef |
| RHD4CZ5L016RW2000 |  | Backfill Layers works Using Dynamic Compaction Crane (RIC) for Road (RD-L-16) - (B1.31 23 23.03)-Z5-L016-RW | 3d | 2026-03-15 A | 2026-11-10 | RHD4CZ5L016RW1001, RHD4CZ5A014RW2001 | 78% | 0d | 2026-03-15 | 2026-03-17 | -153d | 20d | Skilled labor [13.6 h]; Unskilled Labor [27.2 h]; Equipment Opreator [27.2 h]; RIC Machine [27.2 h]; Engineering fill using approved fill material placed in bulk and compacted by dynamic compaction method For Roads and Plots [12970.3 m3] | 116,732.39 | 116,651.32 | L016 | Z5 | CONS | RW | Backfill RIC | bef |
| RHD4CZ5L016RW3000 |  | Backfill Layers works using Improved fill Material for Road (RD-L-16) - (B1.31 23 23.01)-Z5-L016-RW | 14d | 2026-12-27 | 2027-01-11 | RHD4CZ5L016RW2000, RHD4CZ5C061RW3000 |  |  |  |  | -154d | 0d | Skilled labor [25.27 h]; Unskilled Labor [25.27 h]; Equipment Opreator [88.43 h]; Water Truck [12.63 h]; Grader [12.63 h]; Loader [12.63 h]; Dump Truck [50.53 h]; Engineering backfilling with improved and select fill material from the site or imported Including embankment in layers For Roads [1829.3 m3] | 21,951.6 |  | L016 | Z5 | CONS | RW | Backfilling | bef |
|  | 275 | **RHD4-02-002-Road Works - RW-Z5-(RD-L-7)** |  | 2026-03-11 | 2026-12-12 |  |  |  |  |  |  |  |  |  |  |  |  |  |  |  |  |
| RHD4CZ5L07RW1000 |  | Excavation works for Road (RD-L-7) - Stage 1 - (B1.31 23 16.01)-Z5-L07-RW | 18d | 2026-03-11 A | 2026-04-02 A | RHD4CZ5L016RW1000, RHD4ENMSEW2000, RHD4ENMSEW2010, RHD4ENSDZ5APPEW100 SS, RHD4CZ5A014RW3003 | 100% |  | 2026-03-05 | 2026-03-28 |  |  | Skilled labor [75.91 h]; Unskilled Labor [151.7 h]; Equipment Opreator [1365.43 h]; Excavator-Poclain [151.7 h]; Water Truck [151.7 h]; Bulldozer/Dozer [151.7 h]; Loader [303.41 h]; Dump Truck [606.81 h]; Excavation in all types of soil to the required depth includes removal of waste material Including Excavation for Roads and Site [14034.1 m3] | 84,204.76 | 84,204.76 | L07 | Z5 | CONS | RW | Excavation | bef |
| RHD4CZ5L07RW1001 |  | Excavation works for Road (RD-L-7) - Stage 2 - (B1.31 23 16.01)-Z5-L07-RW | 18d | 2026-03-11 A | 2026-12-03 | RHD4CZ5L07RW1000, RHD4ENMSEW2000, RHD4ENMSEW2010, RHD4ENSDZ5APPEW100 SS | 94% | 0d | 2026-03-29 | 2026-04-18 | -128d | 0d | Skilled labor [75.91 h]; Unskilled Labor [151.7 h]; Equipment Opreator [1365.43 h]; Excavator-Poclain [151.7 h]; Water Truck [151.7 h]; Bulldozer/Dozer [151.7 h]; Loader [303.41 h]; Dump Truck [606.81 h]; Excavation in all types of soil to the required depth includes removal of waste material Including Excavation for Roads and Site [14034.1 m3] | 84,204.76 | 84,204.76 | L07 | Z5 | CONS | RW | Excavation | bef |
| RHD4CZ5L07RW2000 |  | Backfill Layers works Using Dynamic Compaction Crane (RIC) for Road (RD-L-7) - (B1.31 23 23.03)-Z5-L07-RW | 8d | 2026-03-26 A | 2026-03-31 A | RHD4CZ5L016RW2000, RHD4CZ5L07RW1000 | 100% |  | 2026-03-29 | 2026-04-06 |  |  | Skilled labor [26.03 h]; Unskilled Labor [52.16 h]; Equipment Opreator [52.16 h]; RIC Machine [52.16 h]; Engineering fill using approved fill material placed in bulk and compacted by dynamic compaction method For Roads and Plots [30689.9 m3] | 276,209.45 | 276,209.45 | L07 | Z5 | CONS | RW | Backfill RIC | bef |
| RHD4CZ5L07RW3000 |  | Backfill Layers works using Improved fill Material for Road (RD-L-7) - (B1.31 23 23.01)-Z5-L07-RW | 8d | 2026-12-03 | 2026-12-12 | RHD4CZ5L07RW2000, RHD4CZ5L07RW1001, RHD4CZ5A014RW3003 |  |  |  |  | -128d | 26d | Skilled labor [25.27 h]; Unskilled Labor [25.27 h]; Equipment Opreator [88.54 h]; Water Truck [12.63 h]; Grader [12.63 h]; Loader [12.63 h]; Dump Truck [50.53 h]; Engineering backfilling with improved and select fill material from the site or imported Including embankment in layers For Roads [3661.53 m3] | 43,938.42 |  | L07 | Z5 | CONS | RW | Backfilling | bef |
|  | 276 | **RHD4-02-002-Road Works - RW-Z5-(RD-L-8)** |  | 2026-03-18 | 2027-01-18 |  |  |  |  |  |  |  |  |  |  |  |  |  |  |  |  |
| RHD4CZ5L08RW1000 |  | Excavation works for Road (RD-L-8) - (B1.31 23 16.01)-Z5-L08-RW | 38d | 2026-03-18 A | 2026-04-01 A | RHD4CZ5L07RW1000, RHD4ENMSEW2000, RHD4ENMSEW2010, RHD4ENSDZ5APPEW100 SS, RHD4CZ3L122RW1000 | 100% |  | 2026-03-29 | 2026-05-11 |  |  | Skilled labor [99.76 h]; Unskilled Labor [199.4 h]; Equipment Opreator [1794.95 h]; Excavator-Poclain [199.4 h]; Water Truck [199.4 h]; Bulldozer/Dozer [199.4 h]; Loader [398.91 h]; Dump Truck [797.72 h]; Excavation in all types of soil to the required depth includes removal of waste material Including Excavation for Roads and Site [67537 m3] | 405,222 | 405,222 | L08 | Z5 | CONS | RW | Excavation | bef |
| RHD4CZ5L08RW2000 |  | Backfill Layers works Using Dynamic Compaction Crane (RIC) for Road (RD-L-8) - (B1.31 23 23.03)-Z5-L08-RW | 6d | 2026-03-19 A | 2026-07-01 A | RHD4CZ5L08RW1000, RHD4CZ5L07RW2000 | 100% |  | 2026-05-12 | 2026-05-18 |  |  | Skilled labor [44.43 h]; Unskilled Labor [88.76 h]; Equipment Opreator [88.76 h]; RIC Machine [88.76 h]; Engineering fill using approved fill material placed in bulk and compacted by dynamic compaction method For Roads and Plots [47049.9 m3] | 423,449.47 | 423,449.47 | L08 | Z5 | CONS | RW | Backfill RIC | bef |
| RHD4CZ5L08RW3000 |  | Backfill Layers works using Improved fill Material for Road (RD-L-8) - (B1.31 23 23.01)-Z5-L08-RW | 6d | 2027-01-12 | 2027-01-18 | RHD4CZ5L08RW2000, RHD4CZ5L016RW3000, RHD4CZ5L07RW3000 |  |  |  |  | -154d | 0d | Skilled labor [57.94 h]; Unskilled Labor [57.94 h]; Equipment Opreator [202.89 h]; Water Truck [28.97 h]; Grader [28.97 h]; Loader [28.97 h]; Dump Truck [115.87 h]; Engineering backfilling with improved and select fill material from the site or imported Including embankment in layers For Roads [3080.5 m3] | 36,966 |  | L08 | Z5 | CONS | RW | Backfilling | bef |
|  | 277 | **RHD4-02-002-Z6-Road Works** |  | 2026-01-14 | 2027-01-06 |  |  |  |  |  |  |  |  |  |  |  |  |  |  |  |  |
|  | 278 | **RHD4-02-002-Road Works - RW-Z6-(RD-A-1 /5)** |  | 2026-02-19 | 2027-01-06 |  |  |  |  |  |  |  |  |  |  |  |  |  |  |  |  |
| RHD4CZ6A015RW1000 |  | Excavation works for Road (RD-A-1 /5) - (B1.31 23 16.01)-Z6-A015-RW | 8d | 2026-02-19 A | 2026-12-19 A | RHD4ENMSEW2000, RHD4ENMSEW2010, RHD4ENSDZ6APPEW100 SS, RHD4PRSHLDOSST1307 | 100% |  | 2026-05-19 | 2026-05-31 |  |  | Skilled labor [125.02 h]; Unskilled Labor [250.04 h]; Equipment Opreator [2249.95 h]; Excavator-Poclain [250.04 h]; Water Truck [250.04 h]; Bulldozer/Dozer [250.04 h]; Loader [500 h]; Dump Truck [999.95 h]; Excavation in all types of soil to the required depth includes removal of waste material Including Excavation for Roads and Site [39857 m3] | 239,141.8 | 239,141.8 | A015 | Z6 | CONS | RW | Excavation | bef |
| RHD4CZ6A015RW2000 |  | Backfill Layers works Using Dynamic Compaction Crane (RIC) for Road (RD-A-1 /5) - (B1.31 23 23.03)-Z6-A015-RW | 10d | 2026-03-01 A | 2026-08-22 A | RHD4CZ6A015RW1000 | 100% |  | 2026-06-01 | 2026-06-11 |  |  | Skilled labor [28.86 h]; Unskilled Labor [57.6 h]; Equipment Opreator [57.6 h]; RIC Machine [57.6 h]; Engineering fill using approved fill material placed in bulk and compacted by dynamic compaction method For Roads and Plots [21132 m3] | 190,188.43 | 190,188.43 | A015 | Z6 | CONS | RW | Backfill RIC | bef |
| RHD4CZ6A015RW3000 |  | Backfill Layers works using Improved fill Material for Road (RD-A-1 /5) - (B1.31 23 23.01)-Z6-A015-RW | 10d | 2026-12-27 | 2027-01-06 | RHD4CZ6A015RW2000 |  |  |  |  | -189d | 8.02d | Skilled labor [76.23 h]; Unskilled Labor [76.23 h]; Equipment Opreator [266.81 h]; Water Truck [38.12 h]; Grader [38.12 h]; Loader [38.12 h]; Dump Truck [152.46 h]; Engineering backfilling with improved and select fill material from the site or imported Including embankment in layers For Roads [7079.61 m3] | 84,955.34 |  | A015 | Z6 | CONS | RW | Backfilling | bef |
|  | 281 | **RHD4-02-002-Road Works - RW-Z6-(RD-C-6 /2)** |  | 2026-01-14 | 2026-11-28 |  |  |  |  |  |  |  |  |  |  |  |  |  |  |  |  |
| RHD4CZ6C062RW2000 |  | Backfill Layers works Using Dynamic Compaction Crane (RIC) for Road (RD-C-6 /2) - (B1.31 23 23.03)-Z6-C062-RW | 3d | 2026-01-14 A | 2026-08-22 A | RHD4CZ6C062RW1000 | 100% |  | 2026-01-14 | 2026-01-17 |  |  | Skilled labor [10.56 h]; Unskilled Labor [21.13 h]; Equipment Opreator [21.13 h]; RIC Machine [21.13 h]; Engineering fill using approved fill material placed in bulk and compacted by dynamic compaction method For Roads and Plots [6285.99 m3] | 56,573.93 | 56,573.93 | C062 | Z6 | CONS | RW | Backfill RIC | bef |
| RHD4CZ6C062RW1000 |  | Excavation works for Road (RD-C-6 /2) - (B1.31 23 16.01)-Z6-C062-RW | 18d | 2026-01-29 A | 2026-02-10 A | RHD4ENMSEW2000, RHD4ENMSEW2010, RHD4ENSDZ6APPEW100 SS | 100% |  | 2025-12-24 | 2026-01-13 |  |  | Skilled labor [86.8 h]; Unskilled Labor [173.6 h]; Equipment Opreator [1562.66 h]; Excavator-Poclain [173.6 h]; Water Truck [173.6 h]; Bulldozer/Dozer [173.6 h]; Loader [347.29 h]; Dump Truck [694.48 h]; Excavation in all types of soil to the required depth includes removal of waste material Including Excavation for Roads and Site [35576.7 m3] | 213,460.42 | 213,460.42 | C062 | Z6 | CONS | RW | Excavation | bef |
| RHD4CZ6C062RW3000 |  | Backfill Layers works using Improved fill Material for Road (RD-C-6 /2) - (B1.31 23 23.01)-Z6-C062-RW | 16d | 2026-11-10 | 2026-11-28 | RHD4CZ6C062RW2000 |  |  |  |  | -174d | 18d | Skilled labor [38.01 h]; Unskilled Labor [38.01 h]; Equipment Opreator [132.86 h]; Water Truck [18.95 h]; Grader [18.95 h]; Loader [18.95 h]; Dump Truck [75.91 h]; Engineering backfilling with improved and select fill material from the site or imported Including embankment in layers For Roads [4185.34 m3] | 50,224.14 |  | C062 | Z6 | CONS | RW | Backfilling | bef |
|  | 280 | **RHD4-02-002-Road Works - RW-Z6-(RD-C-5 /2)** |  | 2026-03-15 | 2027-01-05 |  |  |  |  |  |  |  |  |  |  |  |  |  |  |  |  |
| RHD4CZ6C052RW1000 |  | Excavation works for Road (RD-C-5 /2) - (B1.31 23 16.01)-Z6-C052-RW | 3d | 2026-03-15 A | 2026-12-27 | RHD4ENMSEW2000, RHD4ENMSEW2010, RHD4CZ6C062RW3000, RHD4CZ6A015RW1000, RHD4ENSDZ6APPEW100 SS | 91% | 0d | 2026-06-01 | 2026-06-03 | -184d | 0d | Skilled labor [62.95 h]; Unskilled Labor [125.89 h]; Equipment Opreator [1132.71 h]; Excavator-Poclain [125.89 h]; Water Truck [125.89 h]; Bulldozer/Dozer [125.89 h]; Loader [251.68 h]; Dump Truck [503.46 h]; Excavation in all types of soil to the required depth includes removal of waste material Including Excavation for Roads and Site [20641.2 m3] | 123,847.28 | 123,847.28 | C052 | Z6 | CONS | RW | Excavation | bef |
| RHD4CZ6C052RW2000 |  | Backfill Layers works Using Dynamic Compaction Crane (RIC) for Road (RD-C-5 /2) - (B1.31 23 23.03)-Z6-C052-RW | 2d | 2026-03-18 A | 2026-08-22 A | RHD4CZ6C052RW1000 | 100% |  | 2026-06-04 | 2026-06-06 |  |  | Skilled labor [4 h]; Unskilled Labor [8.06 h]; Equipment Opreator [8.06 h]; RIC Machine [8.06 h]; Engineering fill using approved fill material placed in bulk and compacted by dynamic compaction method For Roads and Plots [2247.11 m3] | 20,224.01 | 20,224.01 | C052 | Z6 | CONS | RW | Backfill RIC | bef |
| RHD4CZ6C052RW3000 |  | Backfill Layers works using Improved fill Material for Road (RD-C-5 /2) - (B1.31 23 23.01)-Z6-C052-RW | 9d | 2026-12-27 | 2027-01-05 | RHD4CZ6C052RW2000 |  |  |  |  | -184d | 0d | Skilled labor [16.99 h]; Unskilled Labor [16.99 h]; Equipment Opreator [59.24 h]; Water Truck [8.49 h]; Grader [8.49 h]; Loader [8.49 h]; Dump Truck [33.87 h]; Engineering backfilling with improved and select fill material from the site or imported Including embankment in layers For Roads [1400.88 m3] | 16,810.61 |  | C052 | Z6 | CONS | RW | Backfilling | bef |

| ID | WBS | Activity | Duration | Start | Finish | Predecessors | Complete | Remaining | Planned start | Planned finish | Total float | Free float | Resources | Cost | Actual cost | RDH4-01-001-Road and Block Names-1 | RDH4-01-001-Zones-1 | RDH4-01-001-Phases-1 | RDH4-01-001-Networks-1 | RDH4-01-001-Work Method-1 | RDH4-01-001-MENEM |
| --- | --- | --- | --- | --- | --- | --- | --- | --- | --- | --- | --- | --- | --- | --- | --- | --- | --- | --- | --- | --- | --- |
|  | 279 | **RHD4-02-002-Road Works - RW-Z6-(RD-A-2)** |  | 2026-02-25 | 2026-04-01 |  |  |  |  |  |  |  |  |  |  |  |  |  |  |  |  |
| RHD4CZ6A02RW1000 |  | Excavation works for Road (RD-A-2) - (B1.31 23 16.01)-Z6-A02-RW | 7d | 2026-02-25 A | 2026-04-01 A | RHD4ENMSEW2000, RHD4ENMSEW2010, RHD4CZ6C052RW3000, RHD4ENSDZ6APPEW100 SS | 100% |  | 2026-06-17 | 2026-06-24 |  |  | Skilled labor [56.63 h]; Unskilled Labor [113.26 h]; Equipment Opreator [1019.55 h]; Excavator-Poclain [113.26 h]; Water Truck [113.26 h]; Bulldozer/Dozer [113.26 h]; Loader [226.52 h]; Dump Truck [453.15 h]; Excavation in all types of soil to the required depth includes removal of waste material Including Excavation for Roads and Site [11457.6 m3] | 68,745.85 | 68,745.85 | A02 | Z6 | CONS | RW | Excavation | bef |
|  | 264 | **RHD4-02-002-Z4-Road Works** |  | 2026-01-08 | 2027-08-26 |  |  |  |  |  |  |  |  |  |  |  |  |  |  |  |  |
|  | 294 | **RHD4-02-002-Road Works - RW-Z4-(RD-L-1)** |  | 2026-01-08 | 2027-07-10 |  |  |  |  |  |  |  |  |  |  |  |  |  |  |  |  |
| RHD4CZ4L01RW1000 |  | Excavation works for Road (RD-L-1) - (B1.31 23 16.01)-Z4-L01-RW | 13d | 2026-01-08 A | 2026-07-29 A | RHD4ENMSEW2000, RHD4ENMSEW2010, RHD4ENSDZ8APPEW100 SS | 100% |  | 2026-01-08 | 2026-01-22 |  |  | Skilled labor [2.83 h]; Unskilled Labor [5.66 h]; Equipment Opreator [51.29 h]; Excavator-Poclain [5.66 h]; Water Truck [5.66 h]; Bulldozer/Dozer [5.66 h]; Loader [11.43 h]; Dump Truck [22.76 h]; Excavation in all types of soil to the required depth includes removal of waste material Including Excavation for Roads and Site |  |  | L01 | Z4 | CONS | RW | Excavation | bef |
| RHD4CZ4L01RW2000 |  | Backfill Layers works Using Dynamic Compaction Crane (RIC) for Road (RD-L-1) - (B1.31 23 23.03)-Z4-L01-RW | 7d | 2026-01-15 A | 2026-08-27 A | RHD4CZ4L01RW1000 SS, RHD4CZ4L01RW1000 FF | 100% |  | 2026-01-15 | 2026-01-22 |  |  | Skilled labor [9.26 h]; Unskilled Labor [18.51 h]; Equipment Opreator [18.51 h]; RIC Machine [18.51 h]; Engineering fill using approved fill material placed in bulk and compacted by dynamic compaction method For Roads and Plots [10796 m3] | 97,164.48 | 97,164.48 | L01 | Z4 | CONS | RW | Backfill RIC | bef |
| RHD4CZ4L01RW3000 |  | Backfill Layers works using Improved fill Material for Road (RD-L-1) - (B1.31 23 23.01)-Z4-L01-RW | 2d | 2027-07-08 | 2027-07-10 | RHD4CZ4L01RW1000, RHD4CZ4L01RW2000, RHD4CZ3C011RW3003 |  |  |  |  | -155d | 0d | Skilled labor [12.63 h]; Unskilled Labor [12.63 h]; Equipment Opreator [44.32 h]; Water Truck [6.32 h]; Grader [6.32 h]; Loader [6.32 h]; Dump Truck [25.27 h]; Engineering backfilling with improved and select fill material from the site or imported Including embankment in layers For Roads [934.68 m3] | 11,216.2 |  | L01 | Z4 | CONS | RW | Backfilling | bef |
|  | 265 | **RHD4-02-002-Road Works - RW-Z4-(RD-A-1 /3)** |  | 2026-01-24 | 2027-08-02 |  |  |  |  |  |  |  |  |  |  |  |  |  |  |  |  |
| RHD4CZ4A013RW1000 |  | Excavation works for Road (RD-A-1 /3) - Stage 1 - (B1.31 23 16.01)-Z4-A013-RW | 11d | 2026-01-24 A | 2026-07-07 A | RHD4ENMSEW2000, RHD4ENMSEW2010, RHD4ENSDZ4APPEW100 SS, RHD4CZ4L01RW2000 | 100% |  | 2026-01-24 | 2026-02-04 |  |  | Skilled labor [96.16 h]; Unskilled Labor [192.32 h]; Equipment Opreator [1730.69 h]; Excavator-Poclain [192.32 h]; Water Truck [192.32 h]; Bulldozer/Dozer [192.32 h]; Loader [384.65 h]; Dump Truck [769.19 h]; Excavation in all types of soil to the required depth includes removal of waste material Including Excavation for Roads and Site [20303.1 m3] | 121,818.4 | 121,818.4 | A013 | Z4 | CONS | RW | Excavation | bef |
| RHD4CZ4A013RW1001 |  | Excavation works for Road (RD-A-1 /3) - Stage 2 - (B1.31 23 16.01)-Z4-A013-RW | 15d | 2026-02-05 A | 2026-08-26 A | RHD4ENMSEW2000, RHD4ENMSEW2010, RHD4CZ4A013RW1000 | 100% |  | 2026-02-05 | 2026-02-23 |  |  | Skilled labor [96.16 h]; Unskilled Labor [192.32 h]; Equipment Opreator [1730.69 h]; Excavator-Poclain [192.32 h]; Water Truck [192.32 h]; Bulldozer/Dozer [192.32 h]; Loader [384.65 h]; Dump Truck [769.19 h]; Excavation in all types of soil to the required depth includes removal of waste material Including Excavation for Roads and Site [20303.1 m3] | 121,818.4 | 121,818.4 | A013 | Z4 | CONS | RW | Excavation | bef |
| RHD4CZ4A013RW2000 |  | Backfill Layers works Using Dynamic Compaction Crane (RIC) for Road (RD-A-1 /3) - (B1.31 23 23.03)-Z4-A013-RW | 15d | 2026-02-24 A | 2026-08-22 A | RHD4CZ4A013RW1001 | 100% |  | 2026-02-24 | 2026-03-12 |  |  | Skilled labor [59.79 h]; Unskilled Labor [119.58 h]; Equipment Opreator [119.58 h]; RIC Machine [119.58 h]; Engineering fill using approved fill material placed in bulk and compacted by dynamic compaction method For Roads and Plots [43839.7 m3] | 394,557.4 | 394,557.4 | A013 | Z4 | CONS | RW | Backfill RIC | bef |
| RHD4CZ4A013RW3000 |  | Backfill Layers works using Improved fill Material for Road (RD-A-1 /3) - Stage 1 - (B1.31 23 23.01)-Z4-A013-RW | 5d | 2027-07-11 | 2027-07-15 | RHD4CZ4A013RW2000, RHD4CZ4L01RW3000 |  |  |  |  | -155d | 0d | Skilled labor [37.46 h]; Unskilled Labor [37.46 h]; Equipment Opreator [131.12 h]; Water Truck [18.73 h]; Grader [18.73 h]; Loader [18.73 h]; Dump Truck [74.93 h]; Engineering backfilling with improved and select fill material from the site or imported Including embankment in layers For Roads [1894.78 m3] | 22,737.42 |  | A013 | Z4 | CONS | RW | Backfilling | bef |
| RHD4CZ4A013RW3001 |  | Backfill Layers works using Improved fill Material for Road (RD-A-1 /3) - Stage 2 - (B1.31 23 23.01)-Z4-A013-RW | 5d | 2027-07-17 | 2027-07-21 | RHD4CZ4A013RW3000 |  |  |  |  | -155d | 0d | Skilled labor [37.46 h]; Unskilled Labor [37.46 h]; Equipment Opreator [131.12 h]; Water Truck [18.73 h]; Grader [18.73 h]; Loader [18.73 h]; Dump Truck [74.93 h]; Engineering backfilling with improved and select fill material from the site or imported Including embankment in layers For Roads [1894.78 m3] | 22,737.42 |  | A013 | Z4 | CONS | RW | Backfilling | bef |
| RHD4CZ4A013RW3002 |  | Backfill Layers works using Improved fill Material for Road (RD-A-1 /3) - Stage 3 - (B1.31 23 23.01)-Z4-A013-RW | 5d | 2027-07-22 | 2027-07-27 | RHD4CZ4A013RW3001 |  |  |  |  | -155d | 0d | Skilled labor [37.46 h]; Unskilled Labor [37.46 h]; Equipment Opreator [131.12 h]; Water Truck [18.73 h]; Grader [18.73 h]; Loader [18.73 h]; Dump Truck [74.93 h]; Engineering backfilling with improved and select fill material from the site or imported Including embankment in layers For Roads [1894.78 m3] | 22,737.42 |  | A013 | Z4 | CONS | RW | Backfilling | bef |
| RHD4CZ4A013RW3003 |  | Backfill Layers works using Improved fill Material for Road (RD-A-1 /3) - Stage 4 - (B1.31 23 23.01)-Z4-A013-RW | 5d | 2027-07-28 | 2027-08-02 | RHD4CZ4A013RW3002 |  |  |  |  | -155d | 0d | Skilled labor [37.46 h]; Unskilled Labor [37.46 h]; Equipment Opreator [131.12 h]; Water Truck [18.73 h]; Grader [18.73 h]; Loader [18.73 h]; Dump Truck [74.93 h]; Engineering backfilling with improved and select fill material from the site or imported Including embankment in layers For Roads [1894.78 m3] | 22,737.42 |  | A013 | Z4 | CONS | RW | Backfilling | bef |
|  | 267 | **RHD4-02-002-Road Works - RW-Z4-(RD-C-3/1)** |  | 2026-03-14 | 2027-08-24 |  |  |  |  |  |  |  |  |  |  |  |  |  |  |  |  |
| RHD4CZ4C031RW1000 |  | Excavation works for Road (RD-C-3/1) - (B1.31 23 16.01)-Z4-C031-RW | 4d | 2026-03-14 A | 2026-05-10 A | RHD4ENMSEW2000, RHD4ENMSEW2010, RHD4ENSDZ4APPEW100 SS, RHD4CZ4A013RW2000 | 100% |  | 2026-03-14 | 2026-03-17 |  |  | Skilled labor [10.89 h]; Unskilled Labor [21.78 h]; Equipment Opreator [195.48 h]; Excavator-Poclain [21.78 h]; Water Truck [21.78 h]; Bulldozer/Dozer [21.78 h]; Loader [43.45 h]; Dump Truck [86.9 h]; Excavation in all types of soil to the required depth includes removal of waste material Including Excavation for Roads and Site [5528.77 m3] | 33,172.6 | 33,172.6 | C031 | Z4 | CONS | RW | Excavation | bef |
| RHD4CZ4C031RW2000 |  | Backfill Layers works Using Dynamic Compaction Crane (RIC) for Road (RD-C-3/1) - (B1.31 23 23.03)-Z4-C031-RW | 13d | 2026-03-26 A | 2026-05-25 A | RHD4CZ4C031RW1000, RHD4CZ4RA02RA2000 | 100% |  | 2026-03-26 | 2026-04-09 |  |  | Skilled labor; Unskilled Labor [0.11 h]; Equipment Opreator [0.11 h]; RIC Machine [0.11 h]; Engineering fill using approved fill material placed in bulk and compacted by dynamic compaction method For Roads and Plots [1478.61 m3] | 13,307.47 | 13,307.47 | C031 | Z4 | CONS | RW | Backfill RIC | bef |
| RHD4CZ4C031RW3000 |  | Backfill Layers works using Improved fill Material for Road (RD-C-3/1) - (B1.31 23 23.01)-Z4-C031-RW | 19d | 2027-08-03 | 2027-08-24 | RHD4CZ4C031RW2000, RHD4CZ4A013RW3003 |  |  |  |  | -155d | 40.02d | Skilled labor [0.54 h]; Unskilled Labor [0.54 h]; Equipment Opreator [1.85 h]; Water Truck [0.22 h]; Grader [0.22 h]; Loader [0.22 h]; Dump Truck [1.09 h]; Engineering backfilling with improved and select fill material from the site or imported Including embankment in layers For Roads [1949.52 m3] | 23,394.28 |  | C031 | Z4 | CONS | RW | Backfilling | bef |
|  | 268 | **RHD4-02-002-Road Works - RW-Z4-(RD-L-14)** |  | 2026-04-13 | 2027-08-17 |  |  |  |  |  |  |  |  |  |  |  |  |  |  |  |  |
| RHD4CZ4L014RW1000 |  | Excavation works for Road (RD-L-14) - (B1.31 23 16.01)-Z4-L014-RW | 11d | 2026-04-13 A | 2026-05-27 A | RHD4ENMSEW2000, RHD4ENMSEW2010, RHD4ENSDZ4APPEW100 SS, RHD4CZ4C031RW2000 | 100% |  | 2026-04-11 | 2026-04-22 |  |  | Skilled labor [42.15 h]; Unskilled Labor [84.4 h]; Equipment Opreator [759.2 h]; Excavator-Poclain [84.4 h]; Water Truck [84.4 h]; Bulldozer/Dozer [84.4 h]; Loader [168.69 h]; Dump Truck [337.38 h]; Excavation in all types of soil to the required depth includes removal of waste material Including Excavation for Roads and Site [1896.86 m3] | 11,381.16 | 11,381.16 | L014 | Z4 | CONS | RW | Excavation | bef |
| RHD4CZ4L014RW2000 |  | Backfill Layers works Using Dynamic Compaction Crane (RIC) for Road (RD-L-14) - (B1.31 23 23.03)-Z4-L014-RW | 14.84d | 2026-04-19 A | 2026-09-20 A | RHD4CZ4L014RW1000 SS | 100% |  | 2026-04-11 | 2026-04-27 |  |  | Skilled labor [48.46 h]; Unskilled Labor [96.92 h]; Equipment Opreator [96.92 h]; RIC Machine [96.92 h]; Engineering fill using approved fill material placed in bulk and compacted by dynamic compaction method For Roads and Plots [37840.1 m3] | 340,561.27 | 340,561.27 | L014 | Z4 | CONS | RW | Backfill RIC | bef |
| RHD4CZ4L014RW3000 |  | Backfill Layers works using Improved fill Material for Road (RD-L-14) - (B1.31 23 23.01)-Z4-L014-RW | 13d | 2027-08-03 | 2027-08-17 | RHD4CZ4L014RW2000, RHD4CZ4A013RW3003 |  |  |  |  | -154d | 0d | Skilled labor [138.96 h]; Unskilled Labor [138.96 h]; Equipment Opreator [486.47 h]; Water Truck [69.48 h]; Grader [69.48 h]; Loader [69.48 h]; Dump Truck [278.03 h]; Engineering backfilling with improved and select fill material from the site or imported Including embankment in layers For Roads [6273.64 m3] | 75,283.65 |  | L014 | Z4 | CONS | RW | Backfilling | bef |
|  | 269 | **RHD4-02-002-Road Works - RW-Z4-(RD-L-9)** |  | 2026-04-27 | 2027-08-24 |  |  |  |  |  |  |  |  |  |  |  |  |  |  |  |  |
| RHD4CZ4L09RW1000 |  | Excavation works for Road (RD-L-9) - Stage 1 - (B1.31 23 16.01)-Z4-L09-RW | 11d | 2026-04-27 A | 2026-09-09 A | RHD4ENMSEW2000, RHD4ENMSEW2010, RHD4ENSDZ4APPEW100 SS, RHD4CZ4L014RW2000 | 100% |  | 2026-04-27 | 2026-05-10 |  |  | Skilled labor [54.56 h]; Unskilled Labor [109.12 h]; Equipment Opreator [981.76 h]; Excavator-Poclain [109.12 h]; Water Truck [109.12 h]; Bulldozer/Dozer [109.12 h]; Loader [218.13 h]; Dump Truck [436.38 h]; Excavation in all types of soil to the required depth includes removal of waste material Including Excavation for Roads and Site [28427.4 m3] | 170,564.32 | 170,564.32 | L09 | Z4 | CONS | RW | Excavation | bef |
| RHD4CZ4L09RW1001 |  | Excavation works for Road (RD-L-9) - Stage 2 - (B1.31 23 16.01)-Z4-L09-RW | 5d | 2026-05-10 A | 2026-09-09 A | RHD4CZ4L09RW1000, RHD4ENMSEW2000, RHD4ENMSEW2010 | 100% |  | 2026-05-10 | 2026-05-16 |  |  | Skilled labor [54.56 h]; Unskilled Labor [109.12 h]; Equipment Opreator [981.76 h]; Excavator-Poclain [109.12 h]; Water Truck [109.12 h]; Bulldozer/Dozer [109.12 h]; Loader [218.13 h]; Dump Truck [436.38 h]; Excavation in all types of soil to the required depth includes removal of waste material Including Excavation for Roads and Site [28427.4 m3] | 170,564.32 | 170,564.32 | L09 | Z4 | CONS | RW | Excavation | bef |
| RHD4CZ4L09RW1002 |  | Excavation works for Road (RD-L-9) - Stage 3 - (B1.31 23 16.01)-Z4-L09-RW | 11d | 2026-09-05 A | 2026-10-20 A | RHD4CZ4L09RW1001, RHD4ENMSEW2000, RHD4ENMSEW2010 | 100% |  | 2026-05-16 | 2026-06-01 |  |  | Skilled labor [54.56 h]; Unskilled Labor [109.12 h]; Equipment Opreator [981.76 h]; Excavator-Poclain [109.12 h]; Water Truck [109.12 h]; Bulldozer/Dozer [109.12 h]; Loader [218.13 h]; Dump Truck [436.38 h]; Excavation in all types of soil to the required depth includes removal of waste material Including Excavation for Roads and Site [28427.4 m3] | 170,564.32 | 170,564.32 | L09 | Z4 | CONS | RW | Excavation | bef |
| RHD4CZ4L09RW1003 |  | Excavation works for Road (RD-L-9) - Stage 4 - (B1.31 23 16.01)-Z4-L09-RW | 11d | 2026-09-05 A | 2026-10-21 A | RHD4CZ4L09RW1002, RHD4ENMSEW2000, RHD4ENMSEW2010 | 100% |  | 2026-11-09 | 2026-11-21 |  |  | Skilled labor [54.56 h]; Unskilled Labor [109.12 h]; Equipment Opreator [981.76 h]; Excavator-Poclain [109.12 h]; Water Truck [109.12 h]; Bulldozer/Dozer [109.12 h]; Loader [218.13 h]; Dump Truck [436.38 h]; Excavation in all types of soil to the required depth includes removal of waste material Including Excavation for Roads and Site [28427.4 m3] | 170,564.32 | 170,564.32 | L09 | Z4 | CONS | RW | Excavation | bef |
| RHD4CZ4L09RW2000 |  | Backfill Layers works Using Dynamic Compaction Crane (RIC) for Road (RD-L-9) - (B1.31 23 23.03)-Z4-L09-RW | 2d | 2026-10-20 A | 2026-11-11 | RHD4CZ4L09RW1003 | 50% | 2d | 2026-10-20 | 2026-10-21 | -147d | 0d | Skilled labor [4.9 h]; Unskilled Labor [9.8 h]; Equipment Opreator [9.8 h]; RIC Machine [9.8 h]; Engineering fill using approved fill material placed in bulk and compacted by dynamic compaction method For Roads and Plots [6085.25 m3] | 54,767.26 | 27,383.63 | L09 | Z4 | CONS | RW | Backfill RIC | bef |
| RHD4CZ4L09RW4000 |  | Soil improvement works by Dynamic Compaction (DC) for Road (RD-L-9) - (B1.31 23 23.23.01)-Z4-L09-RW | 14d | 2026-10-20 A | 2026-11-15 | RHD4CZ4L09RW2000 | 80% | 3d | 2026-10-20 | 2026-11-04 | -116d | 73.02d | Skilled labor [74.49 h]; Unskilled Labor [148.98 h]; Equipment Opreator [670.3 h]; Water Truck [74.49 h]; Dump Truck [446.83 h]; DC Compactor [148.98 h]; Soil improvement by means of dynamic compaction of the in-situ natural soil using the method of dropping heavy weights For Roads and below formation level [39350.2 m2] | 668,954.25 | 535,163.4 | L09 | Z4 | CONS | RW | Soil improvement | bef |
| RHD4CZ4L09RW3000 |  | Backfill Layers works using Improved fill Material for Road (RD-L-9) - Stage 1 - (B1.31 23 23.01)-Z4-L09-RW | 2d | 2027-08-18 | 2027-08-19 | RHD4CZ4L09RW2000, RHD4CZ4L014RW3000 |  |  |  |  | -154d | 0d | Skilled labor [6.4 h]; Unskilled Labor [6.4 h]; Equipment Opreator [22.65 h]; Water Truck [3.27 h]; Grader [3.27 h]; Loader [3.27 h]; Dump Truck [12.96 h]; Engineering backfilling with improved and select fill material from the site or imported Including embankment in layers For Roads [1378.64 m3] | 16,543.69 |  | L09 | Z4 | CONS | RW | Backfilling | bef |
| RHD4CZ4L09RW3001 |  | Backfill Layers works using Improved fill Material for Road (RD-L-9) - Stage 2 - (B1.31 23 23.01)-Z4-L09-RW | 2d | 2027-08-21 | 2027-08-22 | RHD4CZ4L09RW3000 |  |  |  |  | -154d | 0d | Skilled labor [6.4 h]; Unskilled Labor [6.4 h]; Equipment Opreator [22.65 h]; Water Truck [3.27 h]; Grader [3.27 h]; Loader [3.27 h]; Dump Truck [12.96 h]; Engineering backfilling with improved and select fill material from the site or imported Including embankment in layers For Roads [1378.64 m3] | 16,543.69 |  | L09 | Z4 | CONS | RW | Backfilling | bef |
| RHD4CZ4L09RW3002 |  | Backfill Layers works using Improved fill Material for Road (RD-L-9) - Stage 3 - (B1.31 23 23.01)-Z4-L09-RW | 2d | 2027-08-23 | 2027-08-24 | RHD4CZ4L09RW3001 |  |  |  |  | -154d | 0d | Skilled labor [6.4 h]; Unskilled Labor [6.4 h]; Equipment Opreator [22.65 h]; Water Truck [3.27 h]; Grader [3.27 h]; Loader [3.27 h]; Dump Truck [12.96 h]; Engineering backfilling with improved and select fill material from the site or imported Including embankment in layers For Roads [1378.64 m3] | 16,543.69 |  | L09 | Z4 | CONS | RW | Backfilling | bef |

| ID | WBS | Activity | Duration | Start | Finish | Predecessors | Complete | Remaining | Planned start | Planned finish | Total float | Free float | Resources | Cost | Actual cost | RDH4-01-001-Road and Block Names-1 | RDH4-01-001-Zones-1 | RDH4-01-001-Phases-1 | RDH4-01-001-Networks-1 | RDH4-01-001-Work Method-1 | RDH4-01-001-MENEM |
| --- | --- | --- | --- | --- | --- | --- | --- | --- | --- | --- | --- | --- | --- | --- | --- | --- | --- | --- | --- | --- | --- |
|  | 266 | **RHD4-02-002-Road Works - RW-Z4-(RD-C-1 /2)** |  | 2026-09-01 | 2027-08-26 |  |  |  |  |  |  |  |  |  |  |  |  |  |  |  |  |
| RHD4CZ4C012RW1000 |  | Excavation works for Road (RD-C-1 /2) - (B1.31 23 16.01)-Z4-C012-RW | 2d | 2026-09-01 A | 2026-11-14 | RHD4ENSDZ4APPEW100, RHD4ENMSEW2000, RHD4ENMSEW2010, RHD4CZ4L09RW2000 | 50% | 2d | 2026-09-01 | 2026-09-02 | -147d | 0d | Skilled labor [9.6 h]; Unskilled Labor [19.06 h]; Equipment Opreator [171.52 h]; Excavator-Poclain [19.06 h]; Water Truck [19.06 h]; Bulldozer/Dozer [19.06 h]; Loader [38.12 h]; Dump Truck [76.23 h]; Excavation in all types of soil to the required depth includes removal of waste material Including Excavation for Roads and Site [1452.01 m3] | 8,712.05 | 4,356.02 | C012 | Z4 | CONS | RW | Excavation | bef |
| RHD4CZ4C012RW2000 |  | Backfill Layers works Using Dynamic Compaction Crane (RIC) for Road (RD-C-1 /2) - (B1.31 23 23.03)-Z4-C012-RW | 3d | 2026-09-10 A | 2026-11-17 | RHD4CZ4C012RW1000 | 50% | 3d | 2026-09-10 | 2026-09-13 | -147d | 46.02d | Skilled labor [13.4 h]; Unskilled Labor [26.79 h]; Equipment Opreator [26.79 h]; RIC Machine [26.79 h]; Engineering fill using approved fill material placed in bulk and compacted by dynamic compaction method For Roads and Plots [11749.5 m3] | 105,745.07 | 52,872.53 | C012 | Z4 | CONS | RW | Backfill RIC | bef |
| RHD4CZ4C012RW3000 |  | Backfill Layers works using Improved fill Material for Road (RD-C-1 /2) - (B1.31 23 23.01)-Z4-C012-RW | 2d | 2027-08-25 | 2027-08-26 | RHD4CZ4C012RW2000, RHD4CZ4L09RW3002 |  |  |  |  | -154d | 41.02d | Skilled labor [36.26 h]; Unskilled Labor [36.26 h]; Equipment Opreator [127.09 h]; Water Truck [18.19 h]; Grader [18.19 h]; Loader [18.19 h]; Dump Truck [72.64 h]; Engineering backfilling with improved and select fill material from the site or imported Including embankment in layers For Roads [1435.29 m3] | 17,223.5 |  | C012 | Z4 | CONS | RW | Backfilling | bef |
|  | 290 | **RHD4-02-002-Z8-Road Works** |  | 2026-01-08 | 2027-06-23 |  |  |  |  |  |  |  |  |  |  |  |  |  |  |  |  |
|  | 291 | **RHD4-02-002-Road Works - RW-Z8-(RD-A-1 /1)** |  | 2026-01-08 | 2026-11-15 |  |  |  |  |  |  |  |  |  |  |  |  |  |  |  |  |
| RHD4CZ8A011RW1000 |  | Excavation works for Road (RD-A-1 /1) - (B1.31 23 16.01)-Z8-A011-RW | 9d | 2026-01-08 A | 2026-07-13 A | RHD4ENMSEW2000, RHD4ENMSEW2010, RHD4ENSDZ8APPEW100 SS | 100% |  | 2026-01-08 | 2026-01-18 |  |  | Skilled labor [13.29 h]; Unskilled Labor [26.57 h]; Equipment Opreator [239.15 h]; Excavator-Poclain [26.57 h]; Water Truck [26.57 h]; Bulldozer/Dozer [26.57 h]; Loader [53.14 h]; Dump Truck [106.29 h]; Excavation in all types of soil to the required depth includes removal of waste material Including Excavation for Roads and Site [5633.08 m3] | 33,798.46 | 33,798.46 | A011 | Z8 | CONS | RW | Excavation | bef |
| RHD4CZ8A011RW2000 |  | Backfill Layers works Using Dynamic Compaction Crane (RIC) for Road (RD-A-1 /1) - (B1.31 23 23.03)-Z8-A011-RW | 9d | 2026-07-04 A | 2026-08-27 A | RHD4CZ8A011RW1000 | 100% |  | 2026-01-19 | 2026-01-28 |  |  | Skilled labor [25.81 h]; Unskilled Labor [51.51 h]; Equipment Opreator [51.51 h]; RIC Machine [51.51 h]; Engineering fill using approved fill material placed in bulk and compacted by dynamic compaction method For Roads and Plots [18879.8 m3] | 169,917.87 | 169,917.87 | A011 | Z8 | CONS | RW | Backfill RIC | bef |
| RHD4CZ8A011RW3000 |  | Backfill Layers works using Improved fill Material for Road (RD-A-1 /1) - (B1.31 23 23.01)-Z8-A011-RW | 5d | 2026-11-10 | 2026-11-15 | RHD4CZ8A011RW2000 |  |  |  |  | -164.02d | 0d | Skilled labor [59.03 h]; Unskilled Labor [59.03 h]; Equipment Opreator [206.7 h]; Water Truck [29.51 h]; Grader [29.51 h]; Loader [29.51 h]; Dump Truck [118.05 h]; Engineering backfilling with improved and select fill material from the site or imported Including embankment in layers For Roads [4663.56 m3] | 55,962.71 |  | A011 | Z8 | CONS | RW | Backfilling | bef |
|  | 293 | **RHD4-02-002-Road Works - RW-Z8-(RD-C-7/2)** |  |  |  |  |  |  |  |  |  |  |  |  |  |  |  |  |  |  |  |
|  | 295 | **RHD4-02-002-Road Works - RW-Z8-(RD-L-4)** |  | 2026-07-22 | 2026-11-11 |  |  |  |  |  |  |  |  |  |  |  |  |  |  |  |  |
| RHD4CZ8L04RW1000 |  | Excavation works for Road (RD-L-4) - (B1.31 23 16.01)-Z8-L04-RW | 7d | 2026-07-22 A | 2026-08-03 A | RHD4ENSDZ8APPEW100, RHD4ENMSEW2000, RHD4ENMSEW2010 | 100% |  | 2026-01-17 | 2026-01-24 |  |  | Skilled labor [36.26 h]; Unskilled Labor [72.53 h]; Equipment Opreator [652.55 h]; Excavator-Poclain [72.53 h]; Water Truck [72.53 h]; Bulldozer/Dozer [72.53 h]; Loader [145.06 h]; Dump Truck [290.01 h]; Excavation in all types of soil to the required depth includes removal of waste material Including Excavation for Roads and Site [4251.37 m3] | 25,508.22 | 25,508.22 | L04 | Z8 | CONS | RW | Excavation | bef |
| RHD4CZ8L04RW2000 |  | Backfill Layers works Using Dynamic Compaction Crane (RIC) for Road (RD-L-4) - (B1.31 23 23.03)-Z8-L04-RW | 3d | 2026-08-01 A | 2026-08-07 A | RHD4CZ8L04RW1000 | 100% |  | 2026-01-25 | 2026-01-27 |  |  | Skilled labor [14.48 h]; Unskilled Labor [29.08 h]; Equipment Opreator [29.08 h]; RIC Machine [29.08 h]; Engineering fill using approved fill material placed in bulk and compacted by dynamic compaction method For Roads and Plots [8983.85 m3] | 80,854.68 | 80,854.68 | L04 | Z8 | CONS | RW | Backfill RIC | bef |
| RHD4CZ8L04RW3000 |  | Backfill Layers works using Improved fill Material for Road (RD-L-4) - (B1.31 23 23.01)-Z8-L04-RW | 2d | 2026-11-10 | 2026-11-11 | RHD4CZ8L04RW2000 |  |  |  |  | -160d | 32d | Skilled labor [79.39 h]; Unskilled Labor [79.39 h]; Equipment Opreator [277.92 h]; Water Truck [39.75 h]; Grader [39.75 h]; Loader [39.75 h]; Dump Truck [158.78 h]; Engineering backfilling with improved and select fill material from the site or imported Including embankment in layers For Roads [3924.2 m3] | 47,090.4 |  | L04 | Z8 | CONS | RW | Backfilling | bef |
|  | 292 | **RHD4-02-002-Road Works - RW-Z8-(RD-C-1/4)** |  | 2027-06-12 | 2027-06-23 |  |  |  |  |  |  |  |  |  |  |  |  |  |  |  |  |
| RHD4CZ8C014RW1000 |  | Excavation works for Road (RD-C-1/4) - (B1.31 23 16.01)-Z8-C014-RW | 4d | 2027-06-12 | 2027-06-16 | RHD4ENSDZ8APPEW100, RHD4ENMSEW2000, RHD4ENMSEW2010, RHD4CZ8L04ST6100 |  |  |  |  | -143.02d | 0d | Skilled labor [17.97 h]; Unskilled Labor [35.94 h]; Equipment Opreator [323.55 h]; Excavator-Poclain [35.94 h]; Water Truck [35.94 h]; Bulldozer/Dozer [35.94 h]; Loader [71.88 h]; Dump Truck [143.75 h]; Excavation in all types of soil to the required depth includes removal of waste material Including Excavation for Roads and Site [2670.09 m3] | 16,020.55 |  | C014 | Z8 | CONS | RW | Excavation | bef |
| RHD4CZ8C014RW2000 |  | Backfill Layers works Using Dynamic Compaction Crane (RIC) for Road (RD-C-1/4) - (B1.31 23 23.03)-Z8-C014-RW | 4d | 2027-06-16 | 2027-06-21 | RHD4ENSDZ8SUBEW100, RHD4CZ8C014RW1000 |  |  |  |  | -143.02d | 0d | Skilled labor [19.38 h]; Unskilled Labor [38.77 h]; Equipment Opreator [38.77 h]; RIC Machine [38.77 h]; Engineering fill using approved fill material placed in bulk and compacted by dynamic compaction method For Roads and Plots [16994.8 m3] | 152,953.63 |  | C014 | Z8 | CONS | RW | Backfill RIC | bef |
| RHD4CZ8C014RW3000 |  | Backfill Layers works using Improved fill Material for Road (RD-C-1/4) - (B1.31 23 23.01)-Z8-C014-RW | 2d | 2027-06-21 | 2027-06-23 | RHD4CZ8C014RW2000 |  |  |  |  | -143.02d | 0d | Skilled labor [65.78 h]; Unskilled Labor [65.78 h]; Equipment Opreator [230.11 h]; Water Truck [32.89 h]; Grader [32.89 h]; Loader [32.89 h]; Dump Truck [131.56 h]; Engineering backfilling with improved and select fill material from the site or imported Including embankment in layers For Roads [2528.24 m3] | 30,338.92 |  | C014 | Z8 | CONS | RW | Backfilling | bef |
|  | 282 | **RHD4-02-002-Z7-Road Works** |  | 2025-12-24 | 2027-02-11 |  |  |  |  |  |  |  |  |  |  |  |  |  |  |  |  |
|  | 286 | **RHD4-02-002-Road Works - RW-Z7-(RD-C-3/2)** |  | 2025-12-24 | 2026-11-14 |  |  |  |  |  |  |  |  |  |  |  |  |  |  |  |  |
| RHD4CZ7C032RW1000 |  | Excavation works for Road (RD-C-3/2) - Stage 1 - (B1.31 23 16.01)-Z7-C032-RW | 6d | 2025-12-24 A | 2026-05-05 A | RHD4ENMSEW2000, RHD4ENMSEW2010, RHD4ENSDZ7APPEW100 SS | 100% |  | 2025-12-24 | 2025-12-30 |  |  | Skilled labor [95.94 h]; Unskilled Labor [191.89 h]; Equipment Opreator [1727.1 h]; Excavator-Poclain [191.89 h]; Water Truck [191.89 h]; Bulldozer/Dozer [191.89 h]; Loader [383.78 h]; Dump Truck [767.66 h]; Excavation in all types of soil to the required depth includes removal of waste material Including Excavation for Roads and Site [33594.8 m3] | 201,568.52 | 201,568.52 | C032 | Z7 | CONS | RW | Excavation | bef |
| RHD4CZ7C032RW1001 |  | Excavation works for Road (RD-C-3/2) - Stage 2 - (B1.31 23 16.01)-Z7-C032-RW | 17d | 2025-12-31 A | 2026-05-25 A | RHD4ENMSEW2000, RHD4ENMSEW2010, RHD4CZ7C032RW1000 | 100% |  | 2025-12-31 | 2026-01-19 |  |  | Skilled labor [95.94 h]; Unskilled Labor [191.89 h]; Equipment Opreator [1727.1 h]; Excavator-Poclain [191.89 h]; Water Truck [191.89 h]; Bulldozer/Dozer [191.89 h]; Loader [383.78 h]; Dump Truck [767.66 h]; Excavation in all types of soil to the required depth includes removal of waste material Including Excavation for Roads and Site [33594.8 m3] | 201,568.52 | 201,568.52 | C032 | Z7 | CONS | RW | Excavation | bef |
| RHD4CZ7C032RW1002 |  | Excavation works for Road (RD-C-3/2) - Stage 3 - (B1.31 23 16.01)-Z7-C032-RW | 13d | 2026-01-20 A | 2026-07-14 A | RHD4ENMSEW2000, RHD4ENMSEW2010, RHD4CZ7C032RW1001 | 100% |  | 2026-01-20 | 2026-02-03 |  |  | Skilled labor [95.94 h]; Unskilled Labor [191.89 h]; Equipment Opreator [1727.1 h]; Excavator-Poclain [191.89 h]; Water Truck [191.89 h]; Bulldozer/Dozer [191.89 h]; Loader [383.78 h]; Dump Truck [767.66 h]; Excavation in all types of soil to the required depth includes removal of waste material Including Excavation for Roads and Site [33594.8 m3] | 201,568.52 | 201,568.52 | C032 | Z7 | CONS | RW | Excavation | bef |
| RHD4CZ7C032RW1003 |  | Excavation works for Road (RD-C-3/2) - Stage 4 - (B1.31 23 16.01)-Z7-C032-RW(Completed) | 17d | 2026-02-04 A | 2026-08-03 A | RHD4ENMSEW2000, RHD4ENMSEW2010, RHD4CZ7C032RW1002 | 100% |  | 2026-02-04 | 2026-02-24 |  |  | Skilled labor [33.87 h]; Unskilled Labor [67.74 h]; Equipment Opreator [609.53 h]; Excavator-Poclain [67.74 h]; Water Truck [67.74 h]; Bulldozer/Dozer [67.74 h]; Loader [135.48 h]; Dump Truck [270.95 h]; Excavation in all types of soil to the required depth includes removal of waste material Including Excavation for Roads and Site [33594.8 m3] | 201,568.52 | 201,568.52 | C032 | Z7 | CONS | RW | Excavation | bef |
| RHD4CZ7C032RW2000 |  | Backfill Layers works Using Dynamic Compaction Crane (RIC) for Road (RD-C-3/2) - (B1.31 23 23.03)-Z7-C032-RW | 2d | 2026-11-10 | 2026-11-11 | RHD4ENMSEW2000, RHD4ENMSEW2010, RHD4CZ7C032RW1002, RHD4CZ7C032RW1003 |  |  |  |  | -158.02d | 0d | Skilled labor; Unskilled Labor; Equipment Opreator; RIC Machine; Engineering fill using approved fill material placed in bulk and compacted by dynamic compaction method For Roads and Plots [485.17 m3] | 4,366.51 |  | C032 | Z7 | CONS | RW | Backfill RIC | bef |
| RHD4CZ7C032RW3000 |  | Backfill Layers works using Improved fill Material for Road (RD-C-3/2) - (B1.31 23 23.01)-Z7-C032-RW | 2d | 2026-11-12 | 2026-11-14 | RHD4CZ7C032RW2000 |  |  |  |  | -158.02d | 36d | Skilled labor [0.11 h]; Unskilled Labor [0.11 h]; Equipment Opreator [0.44 h]; Water Truck [0.11 h]; Grader [0.11 h]; Loader [0.11 h]; Dump Truck [0.22 h]; Engineering backfilling with improved and select fill material from the site or imported Including embankment in layers For Roads [2035.93 m3] | 24,431.21 |  | C032 | Z7 | CONS | RW | Backfilling | bef |

| ID | WBS | Activity | Duration | Start | Finish | Predecessors | Complete | Remaining | Planned start | Planned finish | Total float | Free float | Resources | Cost | Actual cost | RDH4-01-001-Road and Block Names-1 | RDH4-01-001-Zones-1 | RDH4-01-001-Phases-1 | RDH4-01-001-Networks-1 | RDH4-01-001-Work Method-1 | RDH4-01-001-MENEM |
| --- | --- | --- | --- | --- | --- | --- | --- | --- | --- | --- | --- | --- | --- | --- | --- | --- | --- | --- | --- | --- | --- |
|  | 289 | **RHD4-02-002-Road Works - RW-Z7-(RD-L-3)** |  | 2026-04-05 | 2026-11-28 |  |  |  |  |  |  |  |  |  |  |  |  |  |  |  |  |
| RHD4CZ7L03RW1000 |  | Excavation works for Road (RD-L-3) - (B1.31 23 16.01)-Z7-L03-RW | 45d | 2026-04-05 A | 2026-05-27 A | RHD4ENMSEW2000, RHD4ENMSEW2010, RHD4ENSDZ7APPEW100 SS, RHD4CZ7C032RW1000 | 100% |  | 2025-12-31 | 2026-02-21 |  |  | Skilled labor [45.19 h]; Unskilled Labor [90.4 h]; Equipment Opreator [813.07 h]; Excavator-Poclain [90.4 h]; Water Truck [90.4 h]; Bulldozer/Dozer [90.4 h]; Loader [180.67 h]; Dump Truck [361.34 h]; Excavation in all types of soil to the required depth includes removal of waste material Including Excavation for Roads and Site [23442.7 m3] | 140,655.95 | 140,655.95 | L03 | Z7 | CONS | RW | Excavation | bef |
| RHD4CZ7L03RW2000 |  | Backfill Layers works Using Dynamic Compaction Crane (RIC) for Road (RD-L-3) - (B1.31 23 23.03)-Z7-L03-RW | 14d | 2026-04-08 A | 2026-05-20 A | RHD4CZ7L03RW1000 | 100% |  | 2026-02-23 | 2026-03-10 |  |  | Skilled labor [47.92 h]; Unskilled Labor [95.94 h]; Equipment Opreator [95.94 h]; RIC Machine [95.94 h]; Engineering fill using approved fill material placed in bulk and compacted by dynamic compaction method For Roads and Plots [44583.3 m3] | 401,250.17 | 401,250.17 | L03 | Z7 | CONS | RW | Backfill RIC | bef |
| RHD4CZ7L03RW3000 |  | Backfill Layers works using Improved fill Material for Road (RD-L-3) - (B1.31 23 23.01)-Z7-L03-RW | 16d | 2026-11-10 | 2026-11-28 | RHD4CZ7L03RW2000 |  |  |  |  | -169d | 29d | Skilled labor [76.89 h]; Unskilled Labor [76.89 h]; Equipment Opreator [269.1 h]; Water Truck [38.44 h]; Grader [38.44 h]; Loader [38.44 h]; Dump Truck [153.77 h]; Engineering backfilling with improved and select fill material from the site or imported Including embankment in layers For Roads [3449.81 m3] | 41,397.74 |  | L03 | Z7 | CONS | RW | Backfilling | bef |
|  | 287 | **RHD4-02-002-Road Works - RW-Z7-(RD-L-13/1)** |  | 2025-12-31 | 2026-11-29 |  |  |  |  |  |  |  |  |  |  |  |  |  |  |  |  |
| RHD4CZ7L131RW1000 |  | Excavation works for Road (RD-L-13/1) - (B1.31 23 16.01)-Z7-L131-RW | 17d | 2025-12-31 A | 2026-06-01 A | RHD4ENMSEW2000, RHD4ENMSEW2010, RHD4ENSDZ7APPEW100 SS, RHD4CZ7L03RW1000 SS | 100% |  | 2025-12-31 | 2026-01-19 |  |  | Skilled labor [12.31 h]; Unskilled Labor [24.5 h]; Equipment Opreator [220.53 h]; Excavator-Poclain [24.5 h]; Water Truck [24.5 h]; Bulldozer/Dozer [24.5 h]; Loader [49.01 h]; Dump Truck [98.01 h]; Excavation in all types of soil to the required depth includes removal of waste material Including Excavation for Roads and Site [378.36 m3] | 2,270.13 | 2,270.13 | L131 | Z7 | CONS | RW | Excavation | bef |
| RHD4CZ7L131RW2000 |  | Backfill Layers works Using Dynamic Compaction Crane (RIC) for Road (RD-L-13/1) - (B1.31 23 23.03)-Z7-L131-RW | 3d | 2025-12-31 A | 2026-08-22 A | RHD4CZ7L131RW1000 SS | 100% |  | 2025-12-31 | 2026-01-03 |  |  | Skilled labor [30.06 h]; Unskilled Labor [60.11 h]; Equipment Opreator [60.11 h]; RIC Machine [60.11 h]; Engineering fill using approved fill material placed in bulk and compacted by dynamic compaction method For Roads and Plots [26166.3 m3] | 235,496.9 | 235,496.9 | L131 | Z7 | CONS | RW | Backfill RIC | bef |
| RHD4CZ7L131RW3000 |  | Backfill Layers works using Improved fill Material for Road (RD-L-13/1) - (B1.31 23 23.01)-Z7-L131-RW | 17d | 2026-11-10 | 2026-11-29 | RHD4CZ7L131RW2000 |  |  |  |  | -166d | 0d | Skilled labor [63.2 h]; Unskilled Labor [63.2 h]; Equipment Opreator [220.86 h]; Water Truck [31.58 h]; Grader [31.58 h]; Loader [31.58 h]; Dump Truck [126.22 h]; Engineering backfilling with improved and select fill material from the site or imported Including embankment in layers For Roads [2448.42 m3] | 29,381.09 |  | L131 | Z7 | CONS | RW | Backfilling | bef |
|  | 284 | **RHD4-02-002-Road Works - RW-Z7-(RD-C-1/3)** |  | 2026-09-17 | 2027-02-11 |  |  |  |  |  |  |  |  |  |  |  |  |  |  |  |  |
| RHD4CZ7C013RW1000 |  | Excavation works for Road (RD-C-1/3) - (B1.31 23 16.01)-Z7-C013-RW | 2d | 2026-09-17 A | 2026-09-19 A | RHD4ENMSEW2000, RHD4ENMSEW2010, RHD4CZ7A012ST1106 | 100% |  |  |  |  |  | Skilled labor [7.41 h]; Unskilled Labor [14.7 h]; Equipment Opreator [132.32 h]; Excavator-Poclain [14.7 h]; Water Truck [14.7 h]; Bulldozer/Dozer [14.7 h]; Loader [29.4 h]; Dump Truck [58.81 h]; Excavation in all types of soil to the required depth includes removal of waste material Including Excavation for Roads and Site [1560.07 m3] | 9,360.44 | 9,360.44 | C013 | Z7 | CONS | RW | Excavation | bef |
| RHD4CZ7C013RW2000 |  | Backfill Layers works Using Dynamic Compaction Crane (RIC) for Road (RD-C-1/3) - (B1.31 23 23.03)-Z7-C013-RW | 3d | 2026-09-20 A | 2026-09-22 A | RHD4CZ7C013RW1000 | 100% |  |  |  |  |  | Skilled labor [15.03 h]; Unskilled Labor [30.17 h]; Equipment Opreator [30.17 h]; RIC Machine [30.17 h]; Engineering fill using approved fill material placed in bulk and compacted by dynamic compaction method For Roads and Plots [13218.1 m3] | 118,963.2 | 118,963.2 | C013 | Z7 | CONS | RW | Backfill RIC | bef |
| RHD4CZ7C013RW3000 |  | Backfill Layers works using Improved fill Material for Road (RD-C-1/3) - (B1.31 23 23.01)-Z7-C013-RW | 2d | 2027-02-09 | 2027-02-11 | RHD4CZ7C013RW2000, RHD4CZ7L03RW3000 |  |  |  |  | -174.02d | 0d | Skilled labor [24.18 h]; Unskilled Labor [24.18 h]; Equipment Opreator [84.73 h]; Water Truck [12.09 h]; Grader [12.09 h]; Loader [12.09 h]; Dump Truck [48.35 h]; Engineering backfilling with improved and select fill material from the site or imported Including embankment in layers For Roads [1469.34 m3] | 17,632.11 |  | C013 | Z7 | CONS | RW | Backfilling | bef |
|  | 288 | **RHD4-02-002-Road Works - RW-Z7-(RD-L-15)** |  | 2026-04-18 | 2026-11-19 |  |  |  |  |  |  |  |  |  |  |  |  |  |  |  |  |
| RHD4CZ7L015RW1000 |  | Excavation works for Road (RD-L-15) - (B1.31 23 16.01)-Z7-L015-RW | 29d | 2026-04-18 A | 2026-05-27 A | RHD4ENMSEW2000, RHD4ENMSEW2010, RHD4ENSDZ7APPEW100 SS, RHD4CZ7L131RW1000 SS | 100% |  | 2025-12-31 | 2026-02-02 |  |  | Skilled labor [38.12 h]; Unskilled Labor [76.23 h]; Equipment Opreator [685.98 h]; Excavator-Poclain [76.23 h]; Water Truck [76.23 h]; Bulldozer/Dozer [76.23 h]; Loader [152.46 h]; Dump Truck [304.8 h]; Excavation in all types of soil to the required depth includes removal of waste material Including Excavation for Roads and Site [9688.2 m3] | 58,129.2 | 58,129.2 | L015 | Z7 | CONS | RW | Excavation | bef |
| RHD4CZ7L015RW2000 |  | Backfill Layers works Using Dynamic Compaction Crane (RIC) for Road (RD-L-15) - (B1.31 23 23.03)-Z7-L015-RW | 45d | 2026-05-31 A | 2026-06-22 A | RHD4CZ7L131RW2000, RHD4CZ7L015RW1000 SS | 100% |  | 2026-01-04 | 2026-02-25 |  |  | Skilled labor [29.84 h]; Unskilled Labor [59.68 h]; Equipment Opreator [59.68 h]; RIC Machine [59.68 h]; Engineering fill using approved fill material placed in bulk and compacted by dynamic compaction method For Roads and Plots [32274.5 m3] | 290,470.99 | 290,470.99 | L015 | Z7 | CONS | RW | Backfill RIC | bef |
| RHD4CZ7L015RW3000 |  | Backfill Layers works using Improved fill Material for Road (RD-L-15) - (B1.31 23 23.01)-Z7-L015-RW | 9d | 2026-11-10 | 2026-11-19 | RHD4CZ7L015RW2000, RHD4CZ7L131RW3000 SS |  |  |  |  | -166d | 0d | Skilled labor [42.8 h]; Unskilled Labor [42.8 h]; Equipment Opreator [149.6 h]; Water Truck [21.35 h]; Grader [21.35 h]; Loader [21.35 h]; Dump Truck [85.49 h]; Engineering backfilling with improved and select fill material from the site or imported Including embankment in layers For Roads [2640.47 m3] | 31,685.59 |  | L015 | Z7 | CONS | RW | Backfilling | bef |
|  | 283 | **RHD4-02-002-Road Works - RW-Z7-(RD-A-1 /2)** |  | 2026-03-07 | 2026-11-24 |  |  |  |  |  |  |  |  |  |  |  |  |  |  |  |  |
| RHD4CZ7A012RW2000 |  | Backfill Layers works Using Dynamic Compaction Crane (RIC) for Road (RD-A-1 /2) - (B1.31 23 23.03)-Z7-A012-RW | 10d | 2026-03-07 A | 2026-06-22 A | RHD4CZ7L131RW2000, RHD4CZ7A012RW1000, RHD4CZ7L131RW3000 SS | 100% |  | 2026-03-07 | 2026-03-17 |  |  | Skilled labor [46.4 h]; Unskilled Labor [92.68 h]; Equipment Opreator [92.68 h]; RIC Machine [92.68 h]; Engineering fill using approved fill material placed in bulk and compacted by dynamic compaction method For Roads and Plots [33966.6 m3] | 305,699.64 | 305,699.64 | A012 | Z7 | CONS | RW | Backfill RIC | bef |
| RHD4CZ7A012RW1000 |  | Excavation works for Road (RD-A-1 /2) - (B1.31 23 16.01)-Z7-A012-RW | 26d | 2026-05-30 A | 2026-06-27 A | RHD4ENMSEW2000, RHD4ENMSEW2010, RHD4ENSDZ7APPEW100 SS, RHD4CZ7L131RW1000 SS, RHD4CZ7L015RW1000 | 100% |  | 2026-02-03 | 2026-03-05 |  |  | Skilled labor [112.17 h]; Unskilled Labor [224.23 h]; Equipment Opreator [2018.09 h]; Excavator-Poclain [224.23 h]; Water Truck [224.23 h]; Bulldozer/Dozer [224.23 h]; Loader [448.46 h]; Dump Truck [896.93 h]; Excavation in all types of soil to the required depth includes removal of waste material Including Excavation for Roads and Site [22986 m3] | 137,915.94 | 137,915.94 | A012 | Z7 | CONS | RW | Excavation | bef |
| RHD4CZ7A012RW3000 |  | Backfill Layers works using Improved fill Material for Road (RD-A-1 /2) - (B1.31 23 23.01)-Z7-A012-RW | 13d | 2026-11-10 | 2026-11-24 | RHD4CZ7A012RW2000, RHD4CZ7L015RW3000 SS |  |  |  |  | -166d | 32d | Skilled labor [105.6 h]; Unskilled Labor [105.6 h]; Equipment Opreator [369.84 h]; Water Truck [52.8 h]; Grader [52.8 h]; Loader [52.8 h]; Dump Truck [211.27 h]; Engineering backfilling with improved and select fill material from the site or imported Including embankment in layers For Roads [4524.13 m3] | 54,289.56 |  | A012 | Z7 | CONS | RW | Backfilling | bef |
|  | 285 | **RHD4-02-002-Road Works - RW-Z7-(RD-C-2)** |  | 2026-08-09 | 2027-01-12 |  |  |  |  |  |  |  |  |  |  |  |  |  |  |  |  |
| RHD4CZ7C02RW1000 |  | Excavation works for Road (RD-C-2) - (B1.31 23 16.01)-Z7-C02-RW(Completed) | 8d | 2026-08-09 A | 2026-08-30 A | RHD4ENMSEW2000, RHD4ENMSEW2010, RHD4ENSDZ7APPEW100 SS, RHD4CZ6A02RW1000 SS | 100% |  | 2026-06-17 | 2026-06-25 |  |  | Skilled labor [29.95 h]; Unskilled Labor [59.9 h]; Equipment Opreator [539.2 h]; Excavator-Poclain [59.9 h]; Water Truck [59.9 h]; Bulldozer/Dozer [59.9 h]; Loader [119.79 h]; Dump Truck [239.59 h]; Excavation in all types of soil to the required depth includes removal of waste material Including Excavation for Roads and Site [18790.4 m3] | 112,742.3 | 112,742.3 | C02 | Z7 | CONS | RW | Excavation | bef |
| RHD4CZ7C02RW2000 |  | Backfill Layers works Using Dynamic Compaction Crane (RIC) for Road (RD-C-2) - (B1.31 23 23.03)-Z7-C02-RW | 4d | 2026-08-30 A | 2027-01-10 | RHD4ENMSEW2000, RHD4ENMSEW2010, RHD4ENSDZ7APPEW100 SS, RHD4CZ6A02RW1000 SS, RHD4CZ7C02RW1000 | 88% | 4d | 2026-08-30 | 2026-09-02 | -184d | 0d | Skilled labor [19.28 h]; Unskilled Labor [38.66 h]; Equipment Opreator [38.66 h]; RIC Machine [38.66 h]; Engineering fill using approved fill material placed in bulk and compacted by dynamic compaction method For Roads and Plots [9063.09 m3] | 81,567.81 | 71,999.9 | C02 | Z7 | CONS | RW | Backfill RIC | bef |
| RHD4CZ7C02RW3000 |  | Backfill Layers works using Improved fill Material for Road (RD-C-2) - (B1.31 23 23.01)-Z7-C02-RW | 2d | 2027-01-11 | 2027-01-12 | RHD4CZ7C02RW2000 |  |  |  |  | -184d | 0d | Skilled labor [65.34 h]; Unskilled Labor [65.34 h]; Equipment Opreator [228.7 h]; Water Truck [32.67 h]; Grader [32.67 h]; Loader [32.67 h]; Dump Truck [130.68 h]; Engineering backfilling with improved and select fill material from the site or imported Including embankment in layers For Roads [5001.43 m3] | 60,017.14 |  | C02 | Z7 | CONS | RW | Backfilling | bef |

| ID | WBS | Activity | Duration | Start | Finish | Predecessors | Complete | Remaining | Planned start | Planned finish | Total float | Free float | Resources | Cost | Actual cost | RDH4-01-001-Road and Block Names-1 | RDH4-01-001-Zones-1 | RDH4-01-001-Phases-1 | RDH4-01-001-Networks-1 | RDH4-01-001-Work Method-1 | RDH4-01-001-MENEM |
| --- | --- | --- | --- | --- | --- | --- | --- | --- | --- | --- | --- | --- | --- | --- | --- | --- | --- | --- | --- | --- | --- |
|  | 296 | **RHD4-02-002-Z9-Road Works** |  | 2025-12-24 | 2026-11-22 |  |  |  |  |  |  |  |  |  |  |  |  |  |  |  |  |
|  | 297 | **RHD4-02-002-Road Works - RW-Z9-(RD-C-7/1)** |  | 2026-06-30 | 2026-11-22 |  |  |  |  |  |  |  |  |  |  |  |  |  |  |  |  |
| RHD4CZ9C071RW1000 |  | Excavation works for Road (RD-C-7/1) - (B1.31 23 16.01)-Z9-C071-RW | 11d | 2026-06-30 A | 2026-09-01 A | RHD4CZ5A014RW1001, RHD4ENMSEW2000, RHD4ENMSEW2010, RHD4ENSDZ9APPEW100 SS | 100% |  | 2026-01-22 | 2026-02-03 |  |  | Skilled labor [96.16 h]; Unskilled Labor [192.32 h]; Equipment Opreator [1730.69 h]; Excavator-Poclain [192.32 h]; Water Truck [192.32 h]; Bulldozer/Dozer [192.32 h]; Loader [384.65 h]; Dump Truck [769.19 h]; Excavation in all types of soil to the required depth includes removal of waste material Including Excavation for Roads and Site [1117.28 m3] | 6,703.67 | 6,703.67 | C071 | Z9 | CONS | RW | Excavation | bef |
| RHD4CZ9C071RW2000 |  | Backfill Layers works Using Dynamic Compaction Crane (RIC) for Road (RD-C-7/1) - (B1.31 23 23.03)-Z9-C071-RW | 3d | 2026-07-14 A | 2026-08-27 A | RHD4CZ5A014RW2001, RHD4CZ9C071RW1000 SS | 100% |  | 2026-02-04 | 2026-02-07 |  |  | Skilled labor [41.27 h]; Unskilled Labor [82.66 h]; Equipment Opreator [82.66 h]; RIC Machine [82.66 h]; Engineering fill using approved fill material placed in bulk and compacted by dynamic compaction method For Roads and Plots [28216.3 m3] | 253,946.95 | 253,946.95 | C071 | Z9 | CONS | RW | Backfill RIC | bef |
| RHD4CZ9C071RW3000 |  | Backfill Layers works using Improved fill Material for Road (RD-C-7/1) - (B1.31 23 23.01)-Z9-C071-RW | 11d | 2026-11-10 | 2026-11-22 | RHD4CZ9C071RW2000 |  |  |  |  | -165.02d | 29d | Skilled labor [97.36 h]; Unskilled Labor [97.36 h]; Equipment Opreator [340.76 h]; Water Truck [48.68 h]; Grader [48.68 h]; Loader [48.68 h]; Dump Truck [194.72 h]; Engineering backfilling with improved and select fill material from the site or imported Including embankment in layers For Roads [4449.69 m3] | 53,396.23 |  | C071 | Z9 | CONS | RW | Backfilling | bef |
|  | 299 | **RHD4-02-002-Road Works - RW-Z9-(RD-L-5)** |  | 2025-12-24 | 2026-11-11 |  |  |  |  |  |  |  |  |  |  |  |  |  |  |  |  |
| RHD4CZ9L05RW1000 |  | Excavation works for Road (RD-L-5) - (B1.31 23 16.01)-Z9-L05-RW | 2d | 2025-12-24 A | 2026-07-14 A | RHD4ENMSEW2000, RHD4ENMSEW2010 | 100% |  | 2025-12-24 | 2025-12-25 |  |  | Skilled labor [4.68 h]; Unskilled Labor [9.37 h]; Equipment Opreator [84.51 h]; Excavator-Poclain [9.37 h]; Water Truck [9.37 h]; Bulldozer/Dozer [9.37 h]; Loader [18.73 h]; Dump Truck [37.6 h]; Excavation in all types of soil to the required depth includes removal of waste material Including Excavation for Roads and Site |  |  | L05 | Z9 | CONS | RW | Excavation | bef |
| RHD4CZ9L05RW2000 |  | Backfill Layers works Using Dynamic Compaction Crane (RIC) for Road (RD-L-5) - (B1.31 23 23.03)-Z9-L05-RW | 2d | 2026-01-15 A | 2026-08-29 A | RHD4CZ5A014RW2000, RHD4CZ9L05RW1000 | 100% |  | 2026-01-15 | 2026-01-17 |  |  | Skilled labor [10.35 h]; Unskilled Labor [20.69 h]; Equipment Opreator [20.69 h]; RIC Machine [20.69 h]; Engineering fill using approved fill material placed in bulk and compacted by dynamic compaction method For Roads and Plots [13493.8 m3] | 121,443.98 | 121,443.98 | L05 | Z9 | CONS | RW | Backfill RIC | bef |
| RHD4CZ9L05RW3000 |  | Backfill Layers works using Improved fill Material for Road (RD-L-5) - (B1.31 23 23.01)-Z9-L05-RW | 2d | 2026-11-10 | 2026-11-11 | RHD4CZ9L05RW2000 |  |  |  |  | -164d | 0d | Skilled labor [20.91 h]; Unskilled Labor [20.91 h]; Equipment Opreator [72.97 h]; Water Truck [10.45 h]; Grader [10.45 h]; Loader [10.45 h]; Dump Truck [41.71 h]; Engineering backfilling with improved and select fill material from the site or imported Including embankment in layers For Roads [770.68 m3] | 9,248.18 |  | L05 | Z9 | CONS | RW | Backfilling | bef |
|  | 300 | **RHD4-02-002-Road Works - RW-Z9-(RD-L-6)** |  | 2025-12-24 | 2026-11-16 |  |  |  |  |  |  |  |  |  |  |  |  |  |  |  |  |
| RHD4CZ9L06RW1000 |  | Excavation works for Road (RD-L-6) - (B1.31 23 16.01)-Z9-L06-RW(Completed) | 22d | 2025-12-24 A | 2026-08-03 A | RHD4ENMSEW2000, RHD4ENMSEW2010, RHD4ENSDZ9APPEW100 SS, RHD4CZ9L05RW1000 FF | 100% |  | 2025-12-24 | 2026-01-18 |  |  | Skilled labor; Unskilled Labor; Equipment Opreator; Excavator-Poclain; Water Truck; Bulldozer/Dozer; Loader; Dump Truck; Excavation in all types of soil to the required depth includes removal of waste material Including Excavation for Roads and Site [4486.37 m3] | 26,918.24 | 26,918.24 | L06 | Z9 | CONS | RW | Excavation | bef |
| RHD4CZ9L06RW2000 |  | Backfill Layers works Using Dynamic Compaction Crane (RIC) for Road (RD-L-6) - (B1.31 23 23.03)-Z9-L06-RW | 6d | 2026-08-08 A | 2026-11-11 | RHD4CZ9L05RW2000, RHD4ENMSEW2000, RHD4ENMSEW2010, RHD4ENSDZ9APPEW100 SS, RHD4CZ9L05RW1000, RHD4CZ9L06RW1000 | 82% | 2d | 2026-01-19 | 2026-01-25 | -164d | 0d | Skilled labor [28.31 h]; Unskilled Labor [56.74 h]; Equipment Opreator [56.74 h]; RIC Machine [56.74 h]; Engineering fill using approved fill material placed in bulk and compacted by dynamic compaction method For Roads and Plots [21614.3 m3] | 194,528.7 | 158,949.4 | L06 | Z9 | CONS | RW | Backfill RIC | bef |
| RHD4CZ9L06RW3000 |  | Backfill Layers works using Improved fill Material for Road (RD-L-6) - (B1.31 23 23.01)-Z9-L06-RW | 4d | 2026-11-12 | 2026-11-16 | RHD4CZ9L06RW2000, RHD4CZ9L05RW3000 |  |  |  |  | -164d | 28d | Skilled labor [68.17 h]; Unskilled Labor [68.17 h]; Equipment Opreator [238.5 h]; Water Truck [34.09 h]; Grader [34.09 h]; Loader [34.09 h]; Dump Truck [136.35 h]; Engineering backfilling with improved and select fill material from the site or imported Including embankment in layers For Roads [2517.68 m3] | 30,212.14 |  | L06 | Z9 | CONS | RW | Backfilling | bef |
|  | 298 | **RHD4-02-002-Road Works - RW-Z9-(RD-L-2)** |  | 2026-02-04 | 2026-11-18 |  |  |  |  |  |  |  |  |  |  |  |  |  |  |  |  |
| RHD4CZ9L02RW2000 |  | Backfill Layers works Using Dynamic Compaction Crane (RIC) for Road (RD-L-2) - (B1.31 23 23.03)-Z9-L02-RW | 5d | 2026-02-04 A | 2026-11-11 | RHD4CZ9L02RW1000 SS, RHD4CZ9C071RW2000 SS | 65% | 1.76d | 2026-02-04 | 2026-02-09 | -161.78d | 0d | Skilled labor [18.19 h]; Unskilled Labor [36.37 h]; Equipment Opreator [36.37 h]; RIC Machine [36.37 h]; Engineering fill using approved fill material placed in bulk and compacted by dynamic compaction method For Roads and Plots [22554.5 m3] | 202,990.7 | 131,436.48 | L02 | Z9 | CONS | RW | Backfill RIC | bef |
| RHD4CZ9L02RW1000 |  | Excavation works for Road (RD-L-2) - (B1.31 23 16.01)-Z9-L02-RW | 10d | 2026-06-30 A | 2026-08-22 A | RHD4CZ5A014RW1001, RHD4ENMSEW2000, RHD4ENMSEW2010, RHD4ENSDZ9APPEW100 SS | 100% |  | 2026-01-22 | 2026-02-02 |  |  | Skilled labor [50.1 h]; Unskilled Labor [100.19 h]; Equipment Opreator [902.16 h]; Excavator-Poclain [100.19 h]; Water Truck [100.19 h]; Bulldozer/Dozer [100.19 h]; Loader [200.49 h]; Dump Truck [400.98 h]; Excavation in all types of soil to the required depth includes removal of waste material Including Excavation for Roads and Site [33189.5 m3] | 199,137.18 | 199,137.18 | L02 | Z9 | CONS | RW | Excavation | bef |
| RHD4CZ9L02RW3000 |  | Backfill Layers works using Improved fill Material for Road (RD-L-2) - (B1.31 23 23.01)-Z9-L02-RW | 6d | 2026-11-11 | 2026-11-18 | RHD4CZ9L02RW2000 |  |  |  |  | -161.78d | 32.24d | Skilled labor [62.18 h]; Unskilled Labor [62.18 h]; Equipment Opreator [217.48 h]; Water Truck [31.04 h]; Grader [31.04 h]; Loader [31.04 h]; Dump Truck [124.26 h]; Engineering backfilling with improved and select fill material from the site or imported Including embankment in layers For Roads [4828.17 m3] | 57,938.05 |  | L02 | Z9 | CONS | RW | Backfilling | bef |
|  | 260 | **RHD4-02-002-Z3-Road Works** |  | 2026-03-25 | 2027-07-07 |  |  |  |  |  |  |  |  |  |  |  |  |  |  |  |  |
|  | 261 | **RHD4-02-002-Road Works - RW-Z3-(RD-C-1 /1)** |  | 2026-03-25 | 2027-07-07 |  |  |  |  |  |  |  |  |  |  |  |  |  |  |  |  |
| RHD4CZ3C011RW1000 |  | Excavation works for Road (RD-C-1 /1) - Stage 1 - (B1.31 23 16.01)-Z3-C011-RW | 11d | 2026-03-25 A | 2026-08-06 A | RHD4ENMSEW2000, RHD4ENMSEW2010, RHD4CZ2L011RW1000 | 100% |  | 2026-03-25 | 2026-04-06 |  |  | Skilled labor [55.87 h]; Unskilled Labor [111.63 h]; Equipment Opreator [1004.74 h]; Excavator-Poclain [111.63 h]; Water Truck [111.63 h]; Bulldozer/Dozer [111.63 h]; Loader [223.25 h]; Dump Truck [446.61 h]; Excavation in all types of soil to the required depth includes removal of waste material Including Excavation for Roads and Site [10790.7 m3] | 64,744.2 | 64,744.2 | C011 | Z3 | CONS | RW | Excavation | bef |
| RHD4CZ3C011RW1001 |  | Excavation works for Road (RD-C-1 /1) - Stage 2 - (B1.31 23 16.01)-Z3-C011-RW | 3d | 2026-04-07 A | 2026-08-06 A | RHD4ENMSEW2000, RHD4ENMSEW2010, RHD4CZ3C011RW1000 | 100% |  | 2026-04-07 | 2026-04-09 |  |  | Skilled labor [55.87 h]; Unskilled Labor [111.63 h]; Equipment Opreator [1004.74 h]; Excavator-Poclain [111.63 h]; Water Truck [111.63 h]; Bulldozer/Dozer [111.63 h]; Loader [223.25 h]; Dump Truck [446.61 h]; Excavation in all types of soil to the required depth includes removal of waste material Including Excavation for Roads and Site [10790.7 m3] | 64,744.2 | 64,744.2 | C011 | Z3 | CONS | RW | Excavation | bef |
| RHD4CZ3C011RW1002 |  | Excavation works for Road (RD-C-1 /1) - Stage 3 - (B1.31 23 16.01)-Z3-C011-RW | 5d | 2026-04-11 A | 2026-08-12 A | RHD4ENMSEW2000, RHD4ENMSEW2010, RHD4CZ3C011RW1001 | 100% |  | 2026-04-11 | 2026-04-15 |  |  | Skilled labor [55.87 h]; Unskilled Labor [111.63 h]; Equipment Opreator [1004.74 h]; Excavator-Poclain [111.63 h]; Water Truck [111.63 h]; Bulldozer/Dozer [111.63 h]; Loader [223.25 h]; Dump Truck [446.61 h]; Excavation in all types of soil to the required depth includes removal of waste material Including Excavation for Roads and Site [10790.7 m3] | 64,744.2 | 64,744.2 | C011 | Z3 | CONS | RW | Excavation | bef |
| RHD4CZ3C011RW2000 |  | Backfill Layers works Using Dynamic Compaction Crane (RIC) for Road (RD-C-1 /1) - (B1.31 23 23.03)-Z3-C011-RW | 6d | 2026-08-05 A | 2026-08-22 A | RHD4CZ3C011RW1003 | 100% |  | 2026-04-29 | 2026-05-05 |  |  | Skilled labor [31.58 h]; Unskilled Labor [63.27 h]; Equipment Opreator [63.27 h]; RIC Machine [63.27 h]; Engineering fill using approved fill material placed in bulk and compacted by dynamic compaction method For Roads and Plots [27728 m3] | 249,551.75 | 249,551.75 | C011 | Z3 | CONS | RW | Backfill RIC | bef |
| RHD4CZ3C011RW1003 |  | Excavation works for Road (RD-C-1 /1) - Stage 4 - (B1.31 23 16.01)-Z3-C011-RW | 11d | 2026-09-01 A | 2026-09-13 A | RHD4ENMSEW2000, RHD4ENMSEW2010, RHD4CZ3C011RW1002 | 100% |  |  |  |  |  | Skilled labor [55.87 h]; Unskilled Labor [111.63 h]; Equipment Opreator [1004.74 h]; Excavator-Poclain [111.63 h]; Water Truck [111.63 h]; Bulldozer/Dozer [111.63 h]; Loader [223.25 h]; Dump Truck [446.61 h]; Excavation in all types of soil to the required depth includes removal of waste material Including Excavation for Roads and Site [10790.7 m3] | 64,744.2 | 64,744.2 | C011 | Z3 | CONS | RW | Excavation | bef |
| RHD4CZ3C011RW3000 |  | Backfill Layers works using Improved fill Material for Road (RD-C-1 /1) - Stage 1 - (B1.31 23 23.01)-Z3-C011-RW | 2d | 2027-06-29 | 2027-06-30 | RHD4CZ3C011RW2000, RHD4CZ2C082RW3000 |  |  |  |  | -155d | 0d | Skilled labor [25.05 h]; Unskilled Labor [25.05 h]; Equipment Opreator [87.67 h]; Water Truck [12.52 h]; Grader [12.52 h]; Loader [12.52 h]; Dump Truck [50.1 h]; Engineering backfilling with improved and select fill material from the site or imported Including embankment in layers For Roads [4088.1 m3] | 49,057.2 |  | C011 | Z3 | CONS | RW | Backfilling | bef |
| RHD4CZ3C011RW3001 |  | Backfill Layers works using Improved fill Material for Road (RD-C-1 /1) - Stage 2 - (B1.31 23 23.01)-Z3-C011-RW | 2d | 2027-07-01 | 2027-07-03 | RHD4CZ3C011RW3000 |  |  |  |  | -155d | 0d | Skilled labor [25.05 h]; Unskilled Labor [25.05 h]; Equipment Opreator [87.67 h]; Water Truck [12.52 h]; Grader [12.52 h]; Loader [12.52 h]; Dump Truck [50.1 h]; Engineering backfilling with improved and select fill material from the site or imported Including embankment in layers For Roads [4088.1 m3] | 49,057.2 |  | C011 | Z3 | CONS | RW | Backfilling | bef |
| RHD4CZ3C011RW3002 |  | Backfill Layers works using Improved fill Material for Road (RD-C-1 /1) - Stage 3 - (B1.31 23 23.01)-Z3-C011-RW | 2d | 2027-07-04 | 2027-07-05 | RHD4CZ3C011RW3001 |  |  |  |  | -155d | 0d | Skilled labor [25.05 h]; Unskilled Labor [25.05 h]; Equipment Opreator [87.67 h]; Water Truck [12.52 h]; Grader [12.52 h]; Loader [12.52 h]; Dump Truck [50.1 h]; Engineering backfilling with improved and select fill material from the site or imported Including embankment in layers For Roads [4088.1 m3] | 49,057.2 |  | C011 | Z3 | CONS | RW | Backfilling | bef |
| RHD4CZ3C011RW3003 |  | Backfill Layers works using Improved fill Material for Road (RD-C-1 /1) - Stage 4 - (B1.31 23 23.01)-Z3-C011-RW | 2d | 2027-07-06 | 2027-07-07 | RHD4CZ3C011RW3002 |  |  |  |  | -155d | 0d | Skilled labor [25.05 h]; Unskilled Labor [25.05 h]; Equipment Opreator [87.67 h]; Water Truck [12.52 h]; Grader [12.52 h]; Loader [12.52 h]; Dump Truck [50.1 h]; Engineering backfilling with improved and select fill material from the site or imported Including embankment in layers For Roads [4088.1 m3] | 49,057.2 |  | C011 | Z3 | CONS | RW | Backfilling | bef |

| ID | WBS | Activity | Duration | Start | Finish | Predecessors | Complete | Planned start | Planned finish | Total float | Free float | Resources | Cost | Actual cost | RDH4-01-001-Road and Block Names-1 | RDH4-01-001-Zones-1 | RDH4-01-001-Phases-1 | RDH4-01-001-Networks-1 | RDH4-01-001-Work Method-1 | RDH4-01-001-MENEM |
| --- | --- | --- | --- | --- | --- | --- | --- | --- | --- | --- | --- | --- | --- | --- | --- | --- | --- | --- | --- | --- |
|  | 263 | **RHD4-02-002-Road Works - RW-Z3-(RD-L-12/2)** |  | 2026-06-16 | 2027-07-03 |  |  |  |  |  |  |  |  |  |  |  |  |  |  |  |
| RHD4CZ3L122RW2000 |  | Backfill Layers works Using Dynamic Compaction Crane (RIC) for Road (RD-L-12/2) - (B1.31 23 23.03)-Z3-L122-RW | 25d | 2026-06-16 A | 2026-07-05 A | RHD4PRSHLDOSST1003 SS, RHD4PRSHLDOSST1007 SS, RHD4CZ3L122RW1000 | 100% | 2026-06-13 | 2026-07-11 |  |  | Skilled labor [58.81 h]; Unskilled Labor [117.51 h]; Equipment Opreator [117.51 h]; RIC Machine [117.51 h]; Engineering fill using approved fill material placed in bulk and compacted by dynamic compaction method For Roads and Plots [54093 m3] | 486,837.2 | 486,837.2 | L122 | Z3 | CONS | RW | Backfill RIC | bef |
| RHD4CZ3L122RW1000 |  | Excavation works for Road (RD-L-12/2) - (B1.31 23 16.01)-Z3-L122-RW | 13d | 2026-06-30 A | 2026-07-08 A | RHD4ENMSEW2000, RHD4ENMSEW2010, RHD4ENSDZ3APPEW100 SS, RHD4PRSHLDOSSW1007 | 100% | 2026-02-28 | 2026-03-14 |  |  | Skilled labor [109.12 h]; Unskilled Labor [218.13 h]; Equipment Opreator [1963.64 h]; Excavator-Poclain [218.13 h]; Water Truck [218.13 h]; Bulldozer/Dozer [218.13 h]; Loader [436.38 h]; Dump Truck [872.75 h]; Excavation in all types of soil to the required depth includes removal of waste material Including Excavation for Roads and Site [7517.5 m3] | 45,105 | 45,105 | L122 | Z3 | CONS | RW | Excavation | bef |
| RHD4CZ3L122RW3000 |  | Backfill Layers works using Improved fill Material for Road (RD-L-12/2) - Stage 1 - (B1.31 23 23.01)-Z3-L122-RW | 2d | 2027-06-27 | 2027-06-28 | RHD4CZ3L122RW2000, RHD4CZ5C051ST1501, RHD4CZ5L016ST1509, RHD4CZ5L016ST1503, RHD4CZ5L016ST3501, RHD4CZ5L016ST1502, RHD4CZ5L016ST1500, RHD4CZ5C061ST3501, RHD4CZ7RA03RA3000, RHD4CZ9L06RW3000, RHD4CZ7C032RW3000, RHD4CZ8L04RW3000, RHD4CZ2L011RW3000 |  |  |  | -149d | 0d | Skilled labor [37.24 h]; Unskilled Labor [37.24 h]; Equipment Opreator [130.14 h]; Water Truck [18.62 h]; Grader [18.62 h]; Loader [18.62 h]; Dump Truck [74.4 h]; Engineering backfilling with improved and select fill material from the site or imported Including embankment in layers For Roads |  |  | L122 | Z2 | CONS | RW | Backfilling | bef |
| RHD4CZ3L122RW3001 |  | Backfill Layers works using Improved fill Material for Road (RD-L-12/2) - Stage 2 - (B1.31 23 23.01)-Z3-L122-RW | 2d | 2027-06-29 | 2027-06-30 | RHD4CZ3L122RW3000, RHD4CZ1C081ST1504 |  |  |  | -149d | 0d | Skilled labor [37.24 h]; Unskilled Labor [37.24 h]; Equipment Opreator [130.14 h]; Water Truck [18.62 h]; Grader [18.62 h]; Loader [18.62 h]; Dump Truck [74.4 h]; Engineering backfilling with improved and select fill material from the site or imported Including embankment in layers For Roads |  |  | L122 | Z2 | CONS | RW | Backfilling | bef |
| RHD4CZ3L122RW3002 |  | Backfill Layers works using Improved fill Material for Road (RD-L-12/2) - Stage 3 - (B1.31 23 23.01)-Z3-L122-RW | 2d | 2027-07-01 | 2027-07-03 | RHD4CZ3L122RW3001, RHD4CZ5L07ST3502, RHD4CZ5A014ST3500, RHD4CZ5A014ST3400, RHD4CZ5A014ST3501, RHD4CZ5C061ST2500, RHD4CZ5C051SW3501, RHD4CZ5C051ST8500 |  |  |  | -149d | 45d | Skilled labor [37.24 h]; Unskilled Labor [37.24 h]; Equipment Opreator [130.14 h]; Water Truck [18.62 h]; Grader [18.62 h]; Loader [18.62 h]; Dump Truck [74.4 h]; Engineering backfilling with improved and select fill material from the site or imported Including embankment in layers For Roads [2037.65 m3] | 24,451.81 |  | L122 | Z3 | CONS | RW | Backfilling | bef |
|  | 262 | **RHD4-02-002-Road Works - RW-Z3-(RD-C-8 /3)** |  | 2027-01-17 | 2027-07-03 |  |  |  |  |  |  |  |  |  |  |  |  |  |  |  |
| RHD4CZ3C083RW1000 |  | Excavation works for Road (RD-C-8 /3) - (B1.31 23 16.01)-Z3-C083-RW | 21d | 2027-01-17 | 2027-02-09 | RHD4ENSDZ3APPEW100, RHD4ENMSEW2000, RHD4ENMSEW2010, RHD4CZ3L122RW1000, RHD4CZ3L122ST1501, RHD4CZ3C011RW1002 |  |  |  | -140d | 0d | Skilled labor [116.09 h]; Unskilled Labor [232.18 h]; Equipment Opreator [2089.75 h]; Excavator-Poclain [232.18 h]; Water Truck [232.18 h]; Bulldozer/Dozer [232.18 h]; Loader [464.36 h]; Dump Truck [928.73 h]; Excavation in all types of soil to the required depth includes removal of waste material Including Excavation for Roads and Site [17187.5 m3] | 103,124.69 |  | C083 | Z3 | CONS | RW | Excavation | bef |
| RHD4CZ3C083RW2000 |  | Backfill Layers works Using Dynamic Compaction Crane (RIC) for Road (RD-C-8 /3) - (B1.31 23 23.03)-Z3-C083-RW | 2d | 2027-02-10 | 2027-02-11 | RHD4CZ3C083RW1000, RHD4CZ3L122RW2000 |  |  |  | -140d | 38d | Skilled labor [8.17 h]; Unskilled Labor [16.23 h]; Equipment Opreator [16.23 h]; RIC Machine [16.23 h]; Engineering fill using approved fill material placed in bulk and compacted by dynamic compaction method For Roads and Plots [7729.63 m3] | 69,566.63 |  | C083 | Z3 | CONS | RW | Backfill RIC | bef |
| RHD4CZ2C083RW3000 |  | Backfill Layers works using Improved fill Material for Road (RD-C-8 /3) - Stage 1 - (B1.31 23 23.01)-Z2-C083-RW | 2d | 2027-06-29 | 2027-06-30 | RHD4CZ3C083RW2000, RHD4CZ2C082RW3000 |  |  |  | -149d | 0d | Skilled labor [11.87 h]; Unskilled Labor [11.87 h]; Equipment Opreator [41.38 h]; Water Truck [5.88 h]; Grader [5.88 h]; Loader [5.88 h]; Dump Truck [23.63 h]; Engineering backfilling with improved and select fill material from the site or imported Including embankment in layers For Roads [3770.75 m3] | 45,249 |  | C083 | Z2 | CONS | RW | Backfilling | bef |
| RHD4CZ3C083RW3001 |  | Backfill Layers works using Improved fill Material for Road (RD-C-8 /3) - Stage 2 - (B1.31 23 23.01)-Z3-C083-RW | 2d | 2027-07-01 | 2027-07-03 | RHD4CZ2C083RW3000 |  |  |  | -149d | 45d | Skilled labor [11.87 h]; Unskilled Labor [11.87 h]; Equipment Opreator [41.38 h]; Water Truck [5.88 h]; Grader [5.88 h]; Loader [5.88 h]; Dump Truck [23.63 h]; Engineering backfilling with improved and select fill material from the site or imported Including embankment in layers For Roads [3770.75 m3] | 45,249 |  | C083 | Z3 | CONS | RW | Backfilling | bef |
|  | 255 | **RHD4-02-002-Z2-Road Works** |  | 2026-02-28 | 2028-02-10 |  |  |  |  |  |  |  |  |  |  |  |  |  |  |  |
|  | 259 | **RHD4-02-002-Road Works - RW-Z2-(RD-L-12/1)** |  |  |  |  |  |  |  |  |  |  |  |  |  |  |  |  |  |  |
|  | 257 | **RHD4-02-002-Road Works - RW-Z2-(RD-L-10/2)** |  | 2026-02-28 | 2028-02-10 |  |  |  |  |  |  |  |  |  |  |  |  |  |  |  |
| RHD4CZ2L102RW1000 |  | Excavation works for Road (RD-L-10/2) - (B1.31 23 16.01)-Z2-L102-RW(Completed) | 18d | 2026-02-28 A | 2026-08-03 A | RHD4ENMSEW2000, RHD4ENMSEW2010, RHD4ENSDZ2APPEW100 SS, RHD4PRSHLDOSSW1007 | 100% | 2026-02-28 | 2026-03-19 |  |  | Skilled labor [13.94 h]; Unskilled Labor [27.88 h]; Equipment Opreator [250.48 h]; Excavator-Poclain [27.88 h]; Water Truck [27.88 h]; Bulldozer/Dozer [27.88 h]; Loader [55.65 h]; Dump Truck [111.3 h]; Excavation in all types of soil to the required depth includes removal of waste material Including Excavation for Roads and Site [9556.26 m3] | 57,337.57 | 57,337.57 | L102 | Z2 | CONS | RW | Excavation | bef |
| RHD4CZ2L102RW2000 |  | Backfill Layers works Using Dynamic Compaction Crane (RIC) for Road (RD-L-10/2) - (B1.31 23 23.03)-Z2-L102-RW(Completed) | 16d | 2026-02-28 A | 2026-08-03 A | RHD4CZ2L102RW1000 SS | 100% | 2026-02-28 | 2026-03-17 |  |  | Skilled labor; Unskilled Labor; Equipment Opreator; RIC Machine; Engineering fill using approved fill material placed in bulk and compacted by dynamic compaction method For Roads and Plots [21095.4 m3] | 189,858.31 | 189,858.31 | L102 | Z2 | CONS | RW | Backfill RIC | bef |
| RHD4CZ1L102RW3000 |  | Backfill Layers works using Improved fill Material for Road (RD-L-10/2) - Stage 1 - (B1.31 23 23.01)-Z1-L102-RW | 2d | 2028-02-03 | 2028-02-06 | RHD4CZ2L102RW2000, RHD4ENMSEW2000, RHD4ENMSEW2010, RHD4ENSDZ2APPEW100 SS, RHD4CZ2L102RW1000, RHD4CZ2L102CCTV6100, RHD4CZ2L102CCTV6100 FF |  |  |  | -183.02d | 0d | Skilled labor [30.6 h]; Unskilled Labor [30.6 h]; Equipment Opreator [107.27 h]; Water Truck [15.36 h]; Grader [15.36 h]; Loader [15.36 h]; Dump Truck [61.31 h]; Engineering backfilling with improved and select fill material from the site or imported Including embankment in layers For Roads [1347.87 m3] | 16,174.4 |  | L102 | Z1 | CONS | RW | Backfilling | bef |
| RHD4CZ2L102RW3001 |  | Backfill Layers works using Improved fill Material for Road (RD-L-10/2) - Stage 2 - (B1.31 23 23.01)-Z2-L102-RW | 2d | 2028-02-06 | 2028-02-08 | RHD4CZ1L102RW3000 |  |  |  | -183.02d | 0d | Skilled labor [30.6 h]; Unskilled Labor [30.6 h]; Equipment Opreator [107.27 h]; Water Truck [15.36 h]; Grader [15.36 h]; Loader [15.36 h]; Dump Truck [61.31 h]; Engineering backfilling with improved and select fill material from the site or imported Including embankment in layers For Roads [1347.87 m3] | 16,174.4 |  | L102 | Z2 | CONS | RW | Backfilling | bef |
| RHD4CZ2L102RW3002 |  | Backfill Layers works using Improved fill Material for Road (RD-L-10/2) - Stage 3 - (B1.31 23 23.01)-Z2-L102-RW | 2d | 2028-02-08 | 2028-02-10 | RHD4CZ2L102RW3001 |  |  |  | -183.02d | 14.98d | Skilled labor [30.6 h]; Unskilled Labor [30.6 h]; Equipment Opreator [107.27 h]; Water Truck [15.36 h]; Grader [15.36 h]; Loader [15.36 h]; Dump Truck [61.31 h]; Engineering backfilling with improved and select fill material from the site or imported Including embankment in layers For Roads [1347.87 m3] | 16,174.4 |  | L102 | Z2 | CONS | RW | Backfilling | bef |
|  | 258 | **RHD4-02-002-Road Works - RW-Z2-(RD-L-11)** |  | 2026-08-04 | 2027-06-26 |  |  |  |  |  |  |  |  |  |  |  |  |  |  |  |
| RHD4CZ2L011RW1000 |  | Excavation works for Road (RD-L-11) - (B1.31 23 16.01)-Z2-L011-RW | 2d | 2026-08-04 A | 2026-08-26 A | RHD4ENMSEW2000, RHD4ENMSEW2010, RHD4CZ2L102RW2000, RHD4ENSDZ2APPEW100 SS, RHD4CZ2L102RW1000 | 100% | 2026-03-23 | 2026-03-24 |  |  | Skilled labor [9.04 h]; Unskilled Labor [17.97 h]; Equipment Opreator [161.83 h]; Excavator-Poclain [17.97 h]; Water Truck [17.97 h]; Bulldozer/Dozer [17.97 h]; Loader [35.94 h]; Dump Truck [72 h]; Excavation in all types of soil to the required depth includes removal of waste material Including Excavation for Roads and Site [2010.87 m3] | 12,065.2 | 12,065.2 | L011 | Z2 | CONS | RW | Excavation | bef |
| RHD4CZ2L011RW2000 |  | Backfill Layers works Using Dynamic Compaction Crane (RIC) for Road (RD-L-11) - (B1.31 23 23.03)-Z2-L011-RW | 2d | 2026-08-05 A | 2026-08-25 A | RHD4CZ2L011RW1000 | 100% | 2026-03-25 | 2026-03-26 |  |  | Skilled labor [3.27 h]; Unskilled Labor [6.64 h]; Equipment Opreator [6.64 h]; RIC Machine [6.64 h]; Engineering fill using approved fill material placed in bulk and compacted by dynamic compaction method For Roads and Plots [3018.57 m3] | 27,167.12 | 27,167.12 | L011 | Z2 | CONS | RW | Backfill RIC | bef |
| RHD4CZ2L011RW3000 |  | Backfill Layers works using Improved fill Material for Road (RD-L-11) - (B1.31 23 23.01)-Z2-L011-RW | 2d | 2027-06-24 | 2027-06-26 | RHD4CZ2L011RW2000, RHD4CZ2L011ICT2400 |  |  |  | -155d | 0d | Skilled labor [11.43 h]; Unskilled Labor [11.43 h]; Equipment Opreator [40.08 h]; Water Truck [5.77 h]; Grader [5.77 h]; Loader [5.77 h]; Dump Truck [22.87 h]; Engineering backfilling with improved and select fill material from the site or imported Including embankment in layers For Roads [921.18 m3] | 11,054.16 |  | L011 | Z2 | CONS | RW | Backfilling | bef |
|  | 256 | **RHD4-02-002-Road Works - RW-Z2-(RD-C-8 /2)** |  | 2026-08-04 | 2027-06-28 |  |  |  |  |  |  |  |  |  |  |  |  |  |  |  |
| RHD4CZ2C082RW1000 |  | Excavation works for Road (RD-C-8 /2) - (B1.31 23 16.01)-Z2-C082-RW | 10d | 2026-08-04 A | 2026-08-19 A | RHD4ENMSEW2000, RHD4ENMSEW2010, RHD4CZ2L011RW2000 | 100% | 2026-03-28 | 2026-04-07 |  |  | Skilled labor [54.02 h]; Unskilled Labor [108 h]; Equipment Opreator [972.29 h]; Excavator-Poclain [108 h]; Water Truck [108 h]; Bulldozer/Dozer [108 h]; Loader [216.06 h]; Dump Truck [432.13 h]; Excavation in all types of soil to the required depth includes removal of waste material Including Excavation for Roads and Site [7392.74 m3] | 44,356.44 | 44,356.44 | C082 | Z2 | CONS | RW | Excavation | bef |
| RHD4CZ2C082RW2000 |  | Backfill Layers works Using Dynamic Compaction Crane (RIC) for Road (RD-C-8 /2) - (B1.31 23 23.03)-Z2-C082-RW | 2d | 2026-09-01 A | 2026-09-02 A | RHD4CZ2C082RW1000, RHD4CZ2L011RW2000 | 100% |  |  |  |  | Skilled labor [6.53 h]; Unskilled Labor [12.96 h]; Equipment Opreator [12.96 h]; RIC Machine [12.96 h]; Engineering fill using approved fill material placed in bulk and compacted by dynamic compaction method For Roads and Plots [6176.68 m3] | 55,590.1 | 55,590.1 | C082 | Z2 | CONS | RW | Backfill RIC | bef |
| RHD4CZ2C082RW3000 |  | Backfill Layers works using Improved fill Material for Road (RD-C-8 /2) - (B1.31 23 23.01)-Z2-C082-RW | 2d | 2027-06-27 | 2027-06-28 | RHD4CZ2C082RW2000, RHD4CZ2L011RW3000 |  |  |  | -155d | 0d | Skilled labor [22.22 h]; Unskilled Labor [22.22 h]; Equipment Opreator [77.97 h]; Water Truck [11.11 h]; Grader [11.11 h]; Loader [11.11 h]; Dump Truck [44.54 h]; Engineering backfilling with improved and select fill material from the site or imported Including embankment in layers For Roads [3020.67 m3] | 36,248.03 |  | C082 | Z2 | CONS | RW | Backfilling | bef |

| ID | WBS | Activity | Duration | Start | Finish | Predecessors | Complete | Remaining | Planned start | Planned finish | Total float | Free float | Resources | Cost | Actual cost | RDH4-01-001-Road and Block Names-1 | RDH4-01-001-Zones-1 | RDH4-01-001-Phases-1 | RDH4-01-001-Networks-1 | RDH4-01-001-Work Method-1 | RDH4-01-001-MENEM |
| --- | --- | --- | --- | --- | --- | --- | --- | --- | --- | --- | --- | --- | --- | --- | --- | --- | --- | --- | --- | --- | --- |
|  | 252 | **RHD4-02-002-Z1-Road Works** |  | 2026-04-22 | 2028-01-29 |  |  |  |  |  |  |  |  |  |  |  |  |  |  |  |  |
|  | 254 | **RHD4-02-002-Road Works - RW-Z1-(RD-L-10/1)** |  | 2026-08-04 | 2028-01-29 |  |  |  |  |  |  |  |  |  |  |  |  |  |  |  |  |
| RHD4CZ1L101RW1000 |  | Excavation works for Road (RD-L-10/1) - (B1.31 23 16.01)-Z1-L101-RW | 8d | 2026-08-04 A | 2026-11-30 | RHD4ENMSEW2000, RHD4ENMSEW2010, RHD4CZ2L011RW1000 | 46% | 8d | 2026-03-25 | 2026-04-02 | -167d | 0d | Skilled labor [40.8 h]; Unskilled Labor [81.68 h]; Equipment Opreator [735.1 h]; Excavator-Poclain [81.68 h]; Water Truck [81.68 h]; Bulldozer/Dozer [81.68 h]; Loader [163.36 h]; Dump Truck [326.71 h]; Excavation in all types of soil to the required depth includes removal of waste material Including Excavation for Roads and Site [7422.99 m3] | 44,537.95 |  | L101 | Z1 | CONS | RW | Excavation | bef |
| RHD4CZ1L101RW2000 |  | Backfill Layers works Using Dynamic Compaction Crane (RIC) for Road (RD-L-10/1) - (B1.31 23 23.03)-Z1-L101-RW | 4d | 2026-08-10 A | 2026-12-01 | RHD4CZ1L101RW1000 | 66% | 1d | 2026-04-04 | 2026-04-07 | -167d | 0d | Skilled labor [17.75 h]; Unskilled Labor [35.5 h]; Equipment Opreator [35.5 h]; RIC Machine [35.5 h]; Engineering fill using approved fill material placed in bulk and compacted by dynamic compaction method For Roads and Plots [13572.7 m3] | 122,154.66 | 91,616 | L101 | Z1 | CONS | RW | Backfill RIC | bef |
| RHD4CZ1L101RW3000 |  | Backfill Layers works using Improved fill Material for Road (RD-L-10/1) - (B1.31 23 23.01)-Z1-L101-RW | 2d | 2028-01-27 | 2028-01-29 | RHD4CZ1L101CCTV6100 |  |  |  |  | -193d | 3d | Skilled labor [6.1 h]; Unskilled Labor [6.1 h]; Equipment Opreator [21.13 h]; Water Truck [3.05 h]; Grader [3.05 h]; Loader [3.05 h]; Dump Truck [12.09 h]; Engineering backfilling with improved and select fill material from the site or imported Including embankment in layers For Roads [2007.16 m3] | 24,085.96 |  | L101 | Z1 | CONS | RW | Backfilling | bef |
|  | 253 | **RHD4-02-002-Road Works - RW-Z1-(RD-C-8 /1)** |  | 2026-04-22 | 2027-11-16 |  |  |  |  |  |  |  |  |  |  |  |  |  |  |  |  |
| RHD4CZ1C081RW2000 |  | Backfill Layers works Using Dynamic Compaction Crane (RIC) for Road (RD-C-8 /1) - (B1.31 23 23.03)-Z1-C081-RW | 12d | 2026-04-22 A | 2026-08-13 A | RHD4CZ1C081RW1000 | 100% |  | 2026-04-22 | 2026-05-05 |  |  | Skilled labor [5.12 h]; Unskilled Labor [10.24 h]; Equipment Opreator [10.24 h]; RIC Machine [10.24 h]; Engineering fill using approved fill material placed in bulk and compacted by dynamic compaction method For Roads and Plots [4899.85 m3] | 44,098.61 | 44,098.61 | C081 | Z1 | CONS | RW | Backfill RIC | bef |
| RHD4CZ1C081RW1000 |  | Excavation works for Road (RD-C-8 /1) - (B1.31 23 16.01)-Z1-C081-RW | 12d | 2026-08-04 A | 2026-08-25 A | RHD4ENMSEW2000, RHD4ENMSEW2010, RHD4ENSDZ2APPEW100 SS, RHD4CZ2L102RW1000, RHD4CZ1L101RW2000 | 100% |  | 2026-04-08 | 2026-04-21 |  |  | Skilled labor [64.91 h]; Unskilled Labor [129.81 h]; Equipment Opreator [1168.32 h]; Excavator-Poclain [129.81 h]; Water Truck [129.81 h]; Bulldozer/Dozer [129.81 h]; Loader [259.63 h]; Dump Truck [519.25 h]; Excavation in all types of soil to the required depth includes removal of waste material Including Excavation for Roads and Site [9256.63 m3] | 55,539.78 | 55,539.78 | C081 | Z1 | CONS | RW | Excavation | bef |
| RHD4CZ1C081RW3000 |  | Backfill Layers works using Improved fill Material for Road (RD-C-8 /1) - (B1.31 23 23.01)-Z1-C081-RW | 2d | 2027-11-15 | 2027-11-16 | RHD4CZ1C081CCTV6100 |  |  |  |  | -82d | 0d | Skilled labor [22.22 h]; Unskilled Labor [22.22 h]; Equipment Opreator [77.97 h]; Water Truck [11.11 h]; Grader [11.11 h]; Loader [11.11 h]; Dump Truck [44.54 h]; Engineering backfilling with improved and select fill material from the site or imported Including embankment in layers For Roads [4022.86 m3] | 48,274.35 |  | C081 | Z1 | CONS | RW | Backfilling | bef |
|  | 301 | **RHD4-02-002-Round About - RA** |  | 2025-12-22 | 2027-01-12 |  |  |  |  |  |  |  |  |  |  |  |  |  |  |  |  |
|  | 302 | **RHD4-02-002-Z3-Round Abouts** |  |  |  |  |  |  |  |  |  |  |  |  |  |  |  |  |  |  |  |
|  | 303 | **RHD4-02-002-Road Works - RW-Z3-(ROUND-06)** |  |  |  |  |  |  |  |  |  |  |  |  |  |  |  |  |  |  |  |
|  | 304 | **RHD4-02-002-Z4-Round Abouts** |  | 2026-02-05 | 2026-11-11 |  |  |  |  |  |  |  |  |  |  |  |  |  |  |  |  |
|  | 305 | **RHD4-02-002-Road Works - RW-Z4-(ROUND-02)** |  | 2026-02-05 | 2026-11-11 |  |  |  |  |  |  |  |  |  |  |  |  |  |  |  |  |
| RHD4CZ4RA02RA1000 |  | Excavation works for (ROUND-02) - (B1.31 23 16.01)-Z4-RA02-RA | 13d | 2026-02-05 A | 2026-06-30 A | RHD4CZ4A013RW1001 SS | 100% |  | 2026-02-05 | 2026-02-19 |  |  | Skilled labor [60.22 h]; Unskilled Labor [120.34 h]; Equipment Opreator [1083.48 h]; Excavator-Poclain [120.34 h]; Water Truck [120.34 h]; Bulldozer/Dozer [120.34 h]; Loader [240.8 h]; Dump Truck [481.6 h]; Excavation in all types of soil to the required depth includes removal of waste material Including Excavation for Roads and Site [18153.7 m3] | 108,922.03 | 108,922.03 | RA02 | Z4 | CONS | RA | Excavation | bef |
| RHD4CZ4RA02RA2000 |  | Backfill Layers works Using Dynamic Compaction Crane (RIC) for (ROUND-02) - (B1.31 23 23.03)-Z4-RA02-RA | 9d | 2026-03-14 A | 2026-07-11 A | RHD4CZ4RA02RA1000, RHD4CZ4A013RW2000 | 100% |  | 2026-03-14 | 2026-03-25 |  |  | Skilled labor [0.44 h]; Unskilled Labor [0.98 h]; Equipment Opreator [0.98 h]; RIC Machine [0.98 h]; Engineering fill using approved fill material placed in bulk and compacted by dynamic compaction method For Roads and Plots [449.67 m3] | 4,047.04 | 4,047.04 | RA02 | Z4 | CONS | RA | Backfill RIC | bef |
| RHD4CZ4RA02RA3000 |  | Backfill Layers works using Improved fill Material for (ROUND-02) - (B1.31 23 23.01)-Z4-RA02-RA | 2d | 2026-11-10 | 2026-11-11 | RHD4CZ4RA02RA2000 |  |  |  |  | -155d | 43d | Skilled labor [3.7 h]; Unskilled Labor [3.7 h]; Equipment Opreator [12.96 h]; Water Truck [1.85 h]; Grader [1.85 h]; Loader [1.85 h]; Dump Truck [7.41 h]; Engineering backfilling with improved and select fill material from the site or imported Including embankment in layers For Roads [136.79 m3] | 1,641.5 |  | RA02 | Z4 | CONS | RA | Backfilling | bef |
|  | 306 | **RHD4-02-002-Z5-Round Abouts** |  | 2026-03-01 | 2026-12-31 |  |  |  |  |  |  |  |  |  |  |  |  |  |  |  |  |
|  | 307 | **RHD4-02-002-Road Works - RW-Z5-(ROUND-07)** |  | 2026-03-01 | 2026-12-31 |  |  |  |  |  |  |  |  |  |  |  |  |  |  |  |  |
| RHD4CZ5RA07RA1000 |  | Excavation works for (ROUND-07) - (B1.31 23 16.01)-Z5-RA07-RA | 12d | 2026-03-01 A | 2026-03-18 A | RHD4CZ5A014RW1001, RHD4CZ5C061RW1000, RHD4CZ4RA02RA1000 | 100% |  | 2026-02-21 | 2026-03-07 |  |  | Skilled labor [57.17 h]; Unskilled Labor [114.35 h]; Equipment Opreator [1029.14 h]; Excavator-Poclain [114.35 h]; Water Truck [114.35 h]; Bulldozer/Dozer [114.35 h]; Loader [228.7 h]; Dump Truck [457.39 h]; Excavation in all types of soil to the required depth includes removal of waste material Including Excavation for Roads and Site [19070.5 m3] | 114,423.17 | 114,423.17 | RA07 | Z5 | CONS | RA | Excavation | bef |
| RHD4CZ5RA07RA2000 |  | Backfill Layers works Using Dynamic Compaction Crane (RIC) for (ROUND-07) - (B1.31 23 23.03)-Z5-RA07-RA | 2d | 2026-03-15 A | 2026-11-10 | RHD4CZ5RA07RA1000, RHD4CZ5A014RW2001, RHD4CZ5C061RW2000, RHD4CZ4RA02RA2000 SS | 81% | 0d | 2026-03-14 | 2026-03-15 | -158d | 40d | Skilled labor [8.71 h]; Unskilled Labor [17.42 h]; Equipment Opreator [17.42 h]; RIC Machine [17.42 h]; Engineering fill using approved fill material placed in bulk and compacted by dynamic compaction method For Roads and Plots [8428.5 m3] | 75,856.5 | 75,856.5 | RA07 | Z5 | CONS | RA | Backfill RIC | bef |
| RHD4CZ5RA07RA3000 |  | Backfill Layers works using Improved fill Material for (ROUND-07) - (B1.31 23 23.01)-Z5-RA07-RA | 5d | 2026-12-27 | 2026-12-31 | RHD4CZ5RA07RA2000, RHD4CZ5A014RW3001, RHD4CZ5C061RW3000 |  |  |  |  | -198d | 0d | Skilled labor [25.05 h]; Unskilled Labor [25.05 h]; Equipment Opreator [87.56 h]; Water Truck [12.52 h]; Grader [12.52 h]; Loader [12.52 h]; Dump Truck [50.1 h]; Engineering backfilling with improved and select fill material from the site or imported Including embankment in layers For Roads [1819.84 m3] | 21,838.11 |  | RA07 | Z5 | CONS | RA | Backfilling | bef |
|  | 308 | **RHD4-02-002-Z6-Round Abouts** |  | 2025-12-22 | 2026-11-16 |  |  |  |  |  |  |  |  |  |  |  |  |  |  |  |  |
|  | 309 | **RHD4-02-002-Road Works - RW-Z6-(ROUND-01)** |  | 2025-12-22 | 2026-11-16 |  |  |  |  |  |  |  |  |  |  |  |  |  |  |  |  |
| RHD4CZ6RA01RA1000 |  | Excavation works for (ROUND-01) - (B1.31 23 16.01)-Z6-RA01-RA | 13d | 2025-12-22 A | 2026-03-05 A | RHD4ENSDZ6APPEW100 SS | 100% |  | 2025-12-22 | 2026-01-05 |  |  | Skilled labor [65.23 h]; Unskilled Labor [130.47 h]; Equipment Opreator [1173.76 h]; Excavator-Poclain [130.47 h]; Water Truck [130.47 h]; Bulldozer/Dozer [130.47 h]; Loader [260.8 h]; Dump Truck [521.65 h]; Excavation in all types of soil to the required depth includes removal of waste material Including Excavation for Roads and Site [19665.4 m3] | 117,992.48 | 117,992.48 | RA01 | Z6 | CONS | RA | Excavation | bef |
| RHD4CZ6RA01RA2000 |  | Backfill Layers works Using Dynamic Compaction Crane (RIC) for (ROUND-01) - (B1.31 23 23.03)-Z6-RA01-RA | 2d | 2026-01-06 A | 2026-03-08 A | RHD4CZ6RA01RA1000 | 100% |  | 2026-01-06 | 2026-01-07 |  |  | Skilled labor [0.22 h]; Unskilled Labor [0.44 h]; Equipment Opreator [0.44 h]; RIC Machine [0.44 h]; Engineering fill using approved fill material placed in bulk and compacted by dynamic compaction method For Roads and Plots [195.62 m3] | 1,760.54 | 1,760.54 | RA01 | Z6 | CONS | RA | Backfill RIC | bef |
| RHD4CZ6RA01RA3000 |  | Backfill Layers works using Improved fill Material for (ROUND-01) - (B1.31 23 23.01)-Z6-RA01-RA | 6d | 2026-11-10 | 2026-11-16 | RHD4CZ6RA01RA2000 |  |  |  |  | -164d | 28d | Skilled labor [1.74 h]; Unskilled Labor [1.74 h]; Equipment Opreator [6.1 h]; Water Truck [0.87 h]; Grader [0.87 h]; Loader [0.87 h]; Dump Truck [3.48 h]; Engineering backfilling with improved and select fill material from the site or imported Including embankment in layers For Roads [64.82 m3] | 777.83 |  | RA01 | Z6 | CONS | RA | Backfilling | bef |

| ID | WBS | Activity | Duration | Start | Finish | Predecessors | Complete | Remaining | Planned start | Planned finish | Total float | Free float | Resources | Cost | Actual cost | RDH4-01-001-Road and Block Names-1 | RDH4-01-001-Zones-1 | RDH4-01-001-Phases-1 | RDH4-01-001-Networks-1 | RDH4-01-001-Work Method-1 | RDH4-01-001-MENEM |
| --- | --- | --- | --- | --- | --- | --- | --- | --- | --- | --- | --- | --- | --- | --- | --- | --- | --- | --- | --- | --- | --- |
|  | 310 | **RHD4-02-002-Z7-Round Abouts** |  | 2026-07-01 | 2027-01-12 |  |  |  |  |  |  |  |  |  |  |  |  |  |  |  |  |
|  | 311 | **RHD4-02-002-Road Works - RW-Z7-(ROUND-03)** |  | 2026-07-01 | 2027-01-12 |  |  |  |  |  |  |  |  |  |  |  |  |  |  |  |  |
| RHD4CZ7RA03RA1000 |  | Excavation works for (ROUND-03) - (B1.31 23 16.01)-Z7-RA03-RA(Completed) | 29d | 2026-07-01 A | 2026-08-03 A | RHD4CZ7C02RW1000 SS | 100% |  | 2026-06-17 | 2026-07-20 |  |  | Skilled labor [26.46 h]; Unskilled Labor [52.93 h]; Equipment Opreator [476.34 h]; Excavator-Poclain [52.93 h]; Water Truck [52.93 h]; Bulldozer/Dozer [52.93 h]; Loader [105.85 h]; Dump Truck [211.71 h]; Excavation in all types of soil to the required depth includes removal of waste material Including Excavation for Roads and Site [15961.3 m3] | 95,767.97 | 95,767.97 | RA03 | Z7 | CONS | RA | Excavation | bef |
| RHD4CZ7RA03RA2000 |  | Backfill Layers works Using Dynamic Compaction Crane (RIC) for (ROUND-03) - (B1.31 23 23.03)-Z7-RA03-RA(Completed) | 27d | 2026-07-03 A | 2026-08-03 A | RHD4CZ7RA03RA1000 SS | 100% |  | 2026-06-17 | 2026-07-18 |  |  | Skilled labor [7.2 h]; Unskilled Labor [14.4 h]; Equipment Opreator [14.4 h]; RIC Machine [14.4 h]; Engineering fill using approved fill material placed in bulk and compacted by dynamic compaction method For Roads and Plots [13971.5 m3] | 125,743.22 | 125,743.22 | RA03 | Z7 | CONS | RA | Backfill RIC | bef |
| RHD4CZ7RA03RA3000 |  | Backfill Layers works using Improved fill Material for (ROUND-03) - (B1.31 23 23.01)-Z7-RA03-RA | 2d | 2027-01-11 | 2027-01-12 | RHD4CZ7C02RW3000 FF, RHD4CZ6RA01RA3000, RHD4CZ7C02RW2000 FF, RHD4CZ7RA03RA2000 FF, RHD4CZ7RA03RA1000 FF, RHD4ENMSEW2000 FF, RHD4ENMSEW2010 FF, RHD4ENSDZ7APPEW100 SS, RHD4CZ6A02RW1000 FF, RHD4CZ7C02RW1000 FF |  |  |  |  | -184d | 11d | Skilled labor [31.26 h]; Unskilled Labor [31.26 h]; Equipment Opreator [109.45 h]; Water Truck [15.68 h]; Grader [15.68 h]; Loader [15.68 h]; Dump Truck [62.51 h]; Engineering backfilling with improved and select fill material from the site or imported Including embankment in layers For Roads [1155.58 m3] | 13,866.9 |  | RA03 | Z7 | CONS | RA | Backfilling | bef |
|  | 312 | **RHD4-02-002-Road Works - RW-Z7-(ROUND-05)** |  | 2026-08-04 | 2027-01-12 |  |  |  |  |  |  |  |  |  |  |  |  |  |  |  |  |
| RHD4CZ7RA05RA2000 |  | Backfill Layers works Using Dynamic Compaction Crane (RIC) for (ROUND-05) - (B1.31 23 23.03)-Z7-RA05-RA | 3d | 2026-08-04 A | 2027-01-10 | RHD4CZ7RA05RA1000 | 67% | 1d | 2026-07-25 | 2026-07-27 | -119d | 0d | Skilled labor [12.2 h]; Unskilled Labor [24.5 h]; Equipment Opreator [24.5 h]; RIC Machine [24.5 h]; Engineering fill using approved fill material placed in bulk and compacted by dynamic compaction method For Roads and Plots [11866 m3] | 106,793.71 | 71,195.81 | RA05 | Z7 | CONS | RA | Backfill RIC | bef |
| RHD4CZ7RA05RA1000 |  | Excavation works for (ROUND-05) - (B1.31 23 16.01)-Z7-RA05-RA | 3d | 2027-01-06 | 2027-01-09 | RHD4CZ7RA03RA1000, RHD4ENMSEW2000, RHD4ENMSEW2010, RHD4ENSDZ7APPEW100 SS, RHD4CZ6A02RW1000 SS, RHD4CZ7C02RW1000 |  |  |  |  | -119d | 0d | Skilled labor [11.11 h]; Unskilled Labor [22.22 h]; Equipment Opreator [200.27 h]; Excavator-Poclain [22.22 h]; Water Truck [22.22 h]; Bulldozer/Dozer [22.22 h]; Loader [44.54 h]; Dump Truck [88.97 h]; Excavation in all types of soil to the required depth includes removal of waste material Including Excavation for Roads and Site [3398.13 m3] | 20,388.76 |  | RA05 | Z7 | CONS | RA | Excavation | bef |
| RHD4CZ7RA05RA3000 |  | Backfill Layers works using Improved fill Material for (ROUND-05) - (B1.31 23 23.01)-Z7-RA05-RA | 2d | 2027-01-11 | 2027-01-12 | RHD4CZ7RA05RA2000 |  |  |  |  | -119d | 14d | Skilled labor [34.4 h]; Unskilled Labor [34.4 h]; Equipment Opreator [120.67 h]; Water Truck [17.21 h]; Grader [17.21 h]; Loader [17.21 h]; Dump Truck [68.94 h]; Engineering backfilling with improved and select fill material from the site or imported Including embankment in layers For Roads [1293.99 m3] | 15,527.94 |  | RA05 | Z7 | CONS | RA | Backfilling | bef |
|  | 313 | **RHD4-02-002-Z8-Round Abouts** |  | 2026-01-08 | 2026-11-21 |  |  |  |  |  |  |  |  |  |  |  |  |  |  |  |  |
|  | 314 | **RHD4-02-002-Road Works - RW-Z8-(ROUND-04)** |  | 2026-01-08 | 2026-11-21 |  |  |  |  |  |  |  |  |  |  |  |  |  |  |  |  |
| RHD4CZ8RA04RA1000 |  | Excavation works for (ROUND-04) - (B1.31 23 16.01)-Z8-RA04-RA | 5d | 2026-01-08 A | 2026-07-13 A | RHD4CZ8A011RW1000 SS | 100% |  | 2026-01-08 | 2026-01-13 |  |  | Skilled labor [14.81 h]; Unskilled Labor [29.6 h]; Equipment Opreator [266.16 h]; Excavator-Poclain [29.6 h]; Water Truck [29.6 h]; Bulldozer/Dozer [29.6 h]; Loader [59.13 h]; Dump Truck [118.27 h]; Excavation in all types of soil to the required depth includes removal of waste material Including Excavation for Roads and Site [4459.5 m3] | 26,757 | 26,757 | RA04 | Z8 | CONS | RA | Excavation | bef |
| RHD4CZ8RA04RA2000 |  | Backfill Layers works Using Dynamic Compaction Crane (RIC) for (ROUND-04) - (B1.31 23 23.03)-Z8-RA04-RA | 11d | 2026-01-19 A | 2026-07-12 A | RHD4CZ8RA04RA1000, RHD4CZ8A011RW2000 SS | 100% |  | 2026-01-19 | 2026-01-31 |  |  | Skilled labor [21.78 h]; Unskilled Labor [43.45 h]; Equipment Opreator [43.45 h]; RIC Machine [43.45 h]; Engineering fill using approved fill material placed in bulk and compacted by dynamic compaction method For Roads and Plots [21051.8 m3] | 189,465.88 | 189,465.88 | RA04 | Z8 | CONS | RA | Backfill RIC | bef |
| RHD4CZ8RA04RA3000 |  | Backfill Layers works using Improved fill Material for (ROUND-04) - (B1.31 23 23.01)-Z8-RA04-RA | 10d | 2026-11-10 | 2026-11-21 | RHD4CZ8RA04RA2000, RHD4CZ8A011RW3000 SS |  |  |  |  | -164.02d | 30d | Skilled labor [55.11 h]; Unskilled Labor [55.11 h]; Equipment Opreator [192.76 h]; Water Truck [27.55 h]; Grader [27.55 h]; Loader [27.55 h]; Dump Truck [110.1 h]; Engineering backfilling with improved and select fill material from the site or imported Including embankment in layers For Roads [2034.44 m3] | 24,413.26 |  | RA04 | Z8 | CONS | RA | Backfilling | bef |
|  | 4676 | **RHD4-02-002-Z6** |  | 2026-04-15 | 2028-02-01 |  |  |  |  |  |  |  |  |  |  |  |  |  |  |  |  |
|  | 5244 | **RHD4-02-002-Z6-C062** |  | 2026-05-02 | 2028-01-31 |  |  |  |  |  |  |  |  |  |  |  |  |  |  |  |  |
|  | 5275 | **RHD4-02-002-Z6-C062-Crossings Sewage Network - SWCr** |  |  |  |  |  |  |  |  |  |  |  |  |  |  |  |  |  |  |  |
|  | 5285 | **RHD4-02-002-C062-(SWCr)-MH Works - 1200 mm diameter** |  |  |  |  |  |  |  |  |  |  |  |  |  |  |  |  |  |  |  |
|  | 5286 | **RHD4-02-002-C062-(SWCr)-MH Works - 1200 mm diameter with Back drop** |  |  |  |  |  |  |  |  |  |  |  |  |  |  |  |  |  |  |  |
|  | 5281 | **RHD4-02-002-C062-(SWCr)-UPVC Pipes - 200 mm diameter** |  |  |  |  |  |  |  |  |  |  |  |  |  |  |  |  |  |  |  |
|  | 5319 | **RHD4-02-002-Z6-C062-Crossings Potable Network - PTCr** |  |  |  |  |  |  |  |  |  |  |  |  |  |  |  |  |  |  |  |
|  | 5321 | **RHD4-02-002-C062-(PTCr)-HDPE Pipes - 160 mm diameter** |  |  |  |  |  |  |  |  |  |  |  |  |  |  |  |  |  |  |  |
|  | 5320 | **RHD4-02-002-C062-(PTCr)-HDPE Pipes - 110 mm diameter** |  |  |  |  |  |  |  |  |  |  |  |  |  |  |  |  |  |  |  |
|  | 5325 | **RHD4-02-002-C062-(PTCr)-Gate Valves (Direct Buried)** |  |  |  |  |  |  |  |  |  |  |  |  |  |  |  |  |  |  |  |
|  | 5332 | **RHD4-02-002-C062-(PTCr)-Fire Hydrant** |  |  |  |  |  |  |  |  |  |  |  |  |  |  |  |  |  |  |  |
|  | 5366 | **RHD4-02-002-Z6-C062-Crossings Irrigation Network - IRRC** |  |  |  |  |  |  |  |  |  |  |  |  |  |  |  |  |  |  |  |
|  | 5367 | **RHD4-02-002-C062-(IRRC)-HDPE Pipes - 160 mm diameter** |  |  |  |  |  |  |  |  |  |  |  |  |  |  |  |  |  |  |  |
|  | 5375 | **RHD4-02-002-C062-(IRRC)-Gate Valves (Direct Buried)** |  |  |  |  |  |  |  |  |  |  |  |  |  |  |  |  |  |  |  |
|  | 5423 | **RHD4-02-002-Z6-C062-Road Works - RD** |  | 2026-05-02 | 2028-01-31 |  |  |  |  |  |  |  |  |  |  |  |  |  |  |  |  |
|  | 5424 | **RHD4-02-002-C062-(RD)-Subgrade** |  | 2026-05-02 | 2026-06-04 |  |  |  |  |  |  |  |  |  |  |  |  |  |  |  |  |
| RHD4CZ6C062RD1100 |  | Supply, lay and compaction subgrade compacted thickness 300 mm for Roads - (RD-C-6 /2)-Z6-C062-RD | 7d | 2026-05-02 A | 2026-06-04 A | RHD4ENSDZ6APPRD220, RHD4ENSDZ6APPEW100, RHD4CZ6C062ST3300, RHD4CZ6C062ST3302 | 100% |  | 2026-09-09 | 2026-09-16 |  |  | Skilled labor [65.34 h]; Unskilled Labor [130.68 h]; Electrician [65.34 h]; Equipment Opreator [446.29 h]; Water Truck [21.6 h]; Roller compactor [32.67 h]; Grader [65.34 h]; Dump Truck [326.71 h]; Subgrade [3142.69 m3] | 59,711.11 | 59,711.11 | C062 | Z6 | CONS | RD | Subgrade | bef |

| ID | WBS | Activity | Duration | Start | Finish | Predecessors | Complete | Planned start | Planned finish | Total float | Free float | Resources | Cost | Actual cost | RDH4-01-001-Road and Block Names-1 | RDH4-01-001-Zones-1 | RDH4-01-001-Phases-1 | RDH4-01-001-Networks-1 | RDH4-01-001-Work Method-1 | RDH4-01-001-MENEM |
| --- | --- | --- | --- | --- | --- | --- | --- | --- | --- | --- | --- | --- | --- | --- | --- | --- | --- | --- | --- | --- |
|  | 5425 | **RHD4-02-002-C062-(RD)-Aggregate Base Course** |  | 2027-01-31 | 2027-02-04 |  |  |  |  |  |  |  |  |  |  |  |  |  |  |  |
| RHD4CZ6C062RD2100 |  | Supply, lay and compaction Aggregate base course compacted thickness 300 mmfor Roads - (RD-C-6 /2)-Z6-C062-RD | 5d | 2027-01-31 | 2027-02-04 | RHD4CZ6C062RD1100 |  |  |  | -144d | 23d | Skilled labor [24.18 h]; Unskilled Labor [48.35 h]; Equipment Opreator [306.35 h]; Water Truck [16 h]; Roller compactor [48.35 h]; Grader [48.35 h]; Dump Truck [193.6 h]; Aggregate Base Courses [1973.92 m3] | 112,513.44 |  | C062 | Z6 | CONS | RD | ABC | bef |
|  | 5426 | **RHD4-02-002-C062-(RD)-Bituminous base course Two Layers, including (MC1)&(RC2)** |  | 2027-03-06 | 2028-01-12 |  |  |  |  |  |  |  |  |  |  |  |  |  |  |  |
| RHD4CZ6C062RD3100 |  | Supply, lay and Asphaltic base course including Prime Coat (MC1) for 1st Layer - (RD-C-6 /2)-Z6-C062-RD | 2d | 2027-03-06 | 2027-03-07 | RHD4CZ6C062RD2100, RHD4ENMSASPH2000, RHD4ENMSASPH2010, RHD4CZ7L03RD3100 |  |  |  | -167d | 0d | Skilled labor [19.2 h]; Unskilled Labor [115.33 h]; Equipment Opreator [288.27 h]; Bobcat [19.2 h]; Roller compactor [19.2 h]; Asphalt Paver [19.2 h]; Rubber Compactor [38.44 h]; MC1/RC2 Sprinkler [19.2 h]; Dump Truck [172.94 h]; Bituminous base course (Grading I - Class A), including Prime coat (MC1) & tack coate (RC2) [703.12 m3] | 336,091.36 |  | C062 | Z6 | CONS | RD | 150 mm | AFT |
| RHD4CZ6C062RD3200 |  | Supply, lay and Asphaltic base course including Tack Coat (RC2) for 2nd Layer - (RD-C-6 /2)-Z6-C062-RD | 2d | 2028-01-10 | 2028-01-12 | RHD4CZ6C062ICT2400 |  |  |  | -190.02d | 0d | Skilled labor [19.2 h]; Unskilled Labor [115.33 h]; Equipment Opreator [288.27 h]; Bobcat [19.2 h]; Roller compactor [19.2 h]; Asphalt Paver [19.2 h]; Rubber Compactor [38.44 h]; MC1/RC2 Sprinkler [19.2 h]; Dump Truck [172.94 h]; Bituminous base course (Grading I - Class A), including Prime coat (MC1) & tack coate (RC2) [703.12 m3] | 336,091.36 |  | C062 | Z6 | CONS | RD | 150 mm | AFT |
|  | 5428 | **RHD4-02-002-C062-(RD)-Precast Concrete Curb** |  | 2028-01-12 | 2028-01-19 |  |  |  |  |  |  |  |  |  |  |  |  |  |  |  |
| RHD4CZ6C062RD5100 |  | Supply and installation Precast Concrete Kerb for Roads - (RD-C-6 /2)-Z6-C062-RD | 6d | 2028-01-12 | 2028-01-19 | RHD4CZ6C062RD3200, RHD4ENMSRD2000, RHD4ENMSRD2010 |  |  |  | -190.02d | 0d | Mason [182.63 h]; Skilled labor [60.88 h]; Unskilled Labor [182.63 h]; Equipment Opreator [121.75 h]; Bobcat [60.88 h]; Concrete Mixer Truck [60.88 h]; Precast Concrete Curbstone, type K1 [2516 m] | 138,380 |  | C062 | Z6 | CONS | RD | Curbs | AFT |
|  | 5431 | **RHD4-02-002-C062-(RD)-Traffic Signage** |  | 2028-01-19 | 2028-01-27 |  |  |  |  |  |  |  |  |  |  |  |  |  |  |  |
| RHD4CZ6C062RD8100 |  | Installation of Traffic Signage for Road Network - (RD-C-6 /2)-Z6-C062-RD | 7d | 2028-01-19 | 2028-01-27 | RHD4CZ6C062RD5100 |  |  |  | -190.02d | 0d | Skilled labor [152.46 h]; Unskilled Labor [76.23 h]; Electrician [23.96 h]; Equipment Opreator [24.8 h]; Boom Truck [15.25 h]; Concrete Mixer Truck [9.6 h]; Traffic signs, ground mounted, 1 Sheet Aluminium, (breakaway)Single post [21 nr] | 25,746 |  | C062 | Z6 | CONS | RD | Traffic Signage | AFT |
|  | 5429 | **RHD4-02-002-C062-(RD)-Precast Interlocking Block Pavers** |  |  |  |  |  |  |  |  |  |  |  |  |  |  |  |  |  |  |
|  | 5427 | **RHD4-02-002-C062-(RD)-Bituminous concrete wearing course including tack coat (RC2)** |  | 2028-01-19 | 2028-01-22 |  |  |  |  |  |  |  |  |  |  |  |  |  |  |  |
| RHD4CZ6C062RD4100 |  | Supply, lay and compaction Asphaltic wearing course including tack Coat (RC2)for Road Network - (RD-C-6 /2)-Z6-C062-RD | 2d | 2028-01-19 | 2028-01-22 | RHD4CZ6C062RD5100 |  |  |  | -185.02d | 5d | Skilled labor [9.91 h]; Unskilled Labor [59.35 h]; Equipment Opreator [148.54 h]; Bobcat [9.91 h]; Roller compactor [9.91 h]; Asphalt Paver [9.91 h]; Rubber Compactor [19.82 h]; MC1/RC2 Sprinkler [9.91 h]; Dump Truck [89.08 h]; Bituminous concrete wearing course, (Grading I - Class A), including tack coat (RC2) [472.2 m3] | 256,404.6 |  | C062 | Z6 | CONS | RD | 50 mm | AFT |
|  | 5432 | **RHD4-02-002-C062-(RD)-Speed Table and Wheel Stopper** |  |  |  |  |  |  |  |  |  |  |  |  |  |  |  |  |  |  |
|  | 5430 | **RHD4-02-002-C062-(RD)-Pavement Marking** |  | 2028-01-27 | 2028-01-31 |  |  |  |  |  |  |  |  |  |  |  |  |  |  |  |
| RHD4CZ6C062RD7100 |  | Pavement Markings for Road Network - (RD-C-6 /2)-Z6-C062-RD | 3d | 2028-01-27 | 2028-01-31 | RHD4CZ6C062RD4100, RHD4CZ6C062RD8100 |  |  |  | -190.02d | 0d | Skilled labor [30.6 h]; Unskilled Labor [61.09 h]; Equipment Opreator [30.6 h]; Road Marking Machine [30.6 h]; Retroreflective Thermoplastic White Traffic Markings [193.18 m2]; Retroreflective Thermoplastic Yellow, Traffic Markings [215.35 m2]; Retroreflective raised pavement markers (cat eyes) [316 nr] | 23,408.43 |  | C062 | Z6 | CONS | RD | Pavement Marking | AFT |
|  | 5248 | **RHD4-02-002-Z6-C062-Storm Network - ST** |  | 2026-08-04 | 2027-04-24 |  |  |  |  |  |  |  |  |  |  |  |  |  |  |  |
|  | 4132 | **RHD4-02-002-C062-(ST)-MH Works - 2000 mm diameter** |  | 2026-08-04 | 2027-02-01 |  |  |  |  |  |  |  |  |  |  |  |  |  |  |  |
| RHD4CZ6C062ST3102 |  | Excavation and PC Blinding works for MH 2000 mm - (RD-C-6 /2)-Z6-C062-ST | 2d | 2026-08-04 A | 2026-08-05 A | RHD4CZ6C062RW3000, RHD4PRSHLDOSST1000 SS | 100% | 2026-07-18 | 2026-07-19 |  |  | Skilled labor [5.45 h]; Unskilled Labor [5.45 h]; Equipment Opreator [8.71 h]; Excavator-Poclain [5.45 h]; Water Truck [0.54 h]; Dump Truck [2.72 h]; MH (2000mm Diameter) - ST - depth 3.51 -4.5m [0.25 nr] | 5,747 | 5,747 | C052 | Z6 | CONS | ST | Excavation | bef |
| RHD4CZ6C062ST3202 |  | Installation of Base for MH 2000 mm - (RD-C-6 /2)-Z6-C062-ST | 2d | 2026-09-20 A | 2026-09-30 A | RHD4CZ6C062ST3102 | 100% | 2026-10-20 | 2026-10-21 |  |  | Skilled labor [5.45 h]; Unskilled Labor [5.45 h]; Equipment Opreator [2.18 h]; Boom Truck [1.09 h]; Concrete Mixer Truck [1.09 h]; MH (2000mm Diameter) - ST - depth 3.51 -4.5m [0.25 nr] | 5,747 | 5,747 | C052 | Z6 | CONS | ST | Installing Base | bef |
| RHD4CZ6C062ST3302 |  | MH Ring and C.Slab works and Backfilling works for MH 2000 mm - (RD-C-6 /2)-Z6-C062-ST | 2d | 2027-01-26 | 2027-01-27 | RHD4CZ6C062ST3202 |  |  |  | -198d | 0d | Skilled labor [5.45 h]; Unskilled Labor [5.45 h]; Equipment Opreator [3.81 h]; Boom Truck [2.18 h]; Concrete Mixer Truck [1.6 h]; MH (2000mm Diameter) - ST - depth 3.51 -4.5m [0.35 nr] | 8,045.8 |  | C052 | Z6 | CONS | ST | Installing Rings | bef |
| RHD4CZ6C062ST3402 |  | Steel Cover for MH 2000 mm - (RD-C-6 /2)-Z6-C062-ST | 2d | 2027-01-28 | 2027-01-30 | RHD4CZ6C062ST3302 |  |  |  | -198d | 0d | Skilled labor [3.59 h]; Unskilled Labor [7.3 h]; Equipment Opreator [0.8 h]; Boom Truck [0.8 h]; MH (2000mm Diameter) - ST - depth 3.51 -4.5m [0.05 nr] | 1,149.4 |  | C052 | Z6 | CONS | ST | Steel Cover | bef |
| RHD4CZ6C062ST3502 |  | Finishing, Benching, Testing works for MH 2000 mm - (RD-C-6 /2)-Z6-C062-ST | 2d | 2027-01-31 | 2027-02-01 | RHD4CZ6C062ST3402 |  |  |  | -198d | 0d | Skilled labor [5.45 h]; Unskilled Labor [10.89 h]; Plumber [5.45 h]; Equipment Opreator [1.09 h]; Water Truck [1.09 h]; MH (2000mm Diameter) - ST - depth 3.51 -4.5m [0.1 nr] | 2,298.8 |  | C052 | Z6 | CONS | ST | Benching | bef |
|  | 4120 | **RHD4-02-002-C062-(ST)-GRP Pipes - 1000 mm diameter** |  | 2026-08-04 | 2026-10-03 |  |  |  |  |  |  |  |  |  |  |  |  |  |  |  |
| RHD4CZ6C062ST1106 |  | Excavation works for GRP Pipe Line 1000 mm - (RD-C-6 /2)-Z6-C062-ST | 2d | 2026-08-04 A | 2026-08-05 A | RHD4ENMSST2000, RHD4CZ6C062ST3102, RHD4GNPSMIS1000 SS, RHD4ENMSTUN1000, RHD4ENMSST1000 | 100% | 2026-07-20 | 2026-07-21 |  |  | Skilled labor [9.15 h]; Unskilled Labor [9.15 h]; Equipment Opreator [11 h]; Excavator-Poclain [9.15 h]; Dump Truck [1.85 h]; GRP (1000mm Diameter) - ST - Depth: 2.51m - 3.5m [18.91 m]; GRP (1000mm Diameter) - ST - Depth: 3.51m - 4.5m [2.73 m] | 26,521.39 | 26,521.39 | C052 | Z6 | CONS | ST | Excavation | bef |
| RHD4CZ6C062ST1206 |  | Bedding works for GRP Pipe Line 1000 mm - (RD-C-6 /2)-Z6-C062-ST | 2d | 2026-08-06 A | 2026-08-08 A | RHD4CZ6C062ST1106 | 100% | 2026-07-22 | 2026-07-23 |  |  | Skilled labor [9.15 h]; Unskilled Labor [18.3 h]; Equipment Opreator [18.3 h]; Excavator-Poclain [9.15 h]; Dump Truck [9.15 h]; GRP (1000mm Diameter) - ST - Depth: 2.51m - 3.5m [6.3 m]; GRP (1000mm Diameter) - ST - Depth: 3.51m - 4.5m [0.91 m] | 8,836.45 | 8,836.45 | C052 | Z6 | CONS | ST | Bedding | bef |
| RHD4CZ6C062ST1306 |  | Installing for GRP Pipe Line 1000 mm - (RD-C-6 /2)-Z6-C062-ST | 2d | 2026-08-09 A | 2026-09-22 A | RHD4CZ6C062ST1206 | 100% | 2026-08-09 | 2026-08-10 |  |  | Unskilled Labor [11 h]; Plumber [5.45 h]; GRP (1000mm Diameter) - ST - Depth: 2.51m - 3.5m [50.43 m]; GRP (1000mm Diameter) - ST - Depth: 3.51m - 4.5m [7.27 m] | 70,713.97 | 70,713.97 | C052 | Z6 | CONS | ST | Installation | bef |
| RHD4CZ6C062ST1406 |  | Primary Test for GRP Pipe Line 1000 mm - (RD-C-6 /2)-Z6-C062-ST | 2d | 2026-08-11 A | 2026-08-12 A | RHD4CZ6C062ST1306 | 100% |  |  |  |  | Unskilled Labor [5.45 h]; Plumber [5.45 h]; Equipment Opreator [5.45 h]; Water Truck [5.45 h]; GRP (1000mm Diameter) - ST - Depth: 2.51m - 3.5m [25.21 m]; GRP (1000mm Diameter) - ST - Depth: 3.51m - 4.5m [3.63 m] | 35,344.09 | 35,344.09 | C052 | Z6 | CONS | ST | Primary Test | bef |
| RHD4CZ6C062ST1506 |  | Backfilling and warning tape works for GRP Pipe Line 1000 mm - (RD-C-6 /2)-Z6-C062-ST | 2d | 2026-08-16 A | 2026-10-03 A | RHD4CZ6C062ST1406 | 100% | 2026-08-16 | 2026-08-17 |  |  | Skilled labor [9.15 h]; Unskilled Labor [18.3 h]; Equipment Opreator [18.3 h]; Excavator-Poclain [9.15 h]; Dump Truck [9.15 h]; GRP (1000mm Diameter) - ST - Depth: 2.51m - 3.5m [25.21 m]; GRP (1000mm Diameter) - ST - Depth: 3.51m - 4.5m [3.63 m] | 35,344.09 | 35,344.09 | C052 | Z6 | CONS | ST | Backfilling | bef |

| ID | WBS | Activity | Duration | Start | Finish | Predecessors | Complete | Planned start | Planned finish | Total float | Free float | Resources | Cost | Actual cost | RDH4-01-001-Road and Block Names-1 | RDH4-01-001-Zones-1 | RDH4-01-001-Phases-1 | RDH4-01-001-Networks-1 | RDH4-01-001-Work Method-1 | RDH4-01-001-MENEM |
| --- | --- | --- | --- | --- | --- | --- | --- | --- | --- | --- | --- | --- | --- | --- | --- | --- | --- | --- | --- | --- |
|  | 5266 | **RHD4-02-002-C062-(ST)-MH Works - 1500 mm diameter** |  | 2026-08-04 | 2027-04-24 |  |  |  |  |  |  |  |  |  |  |  |  |  |  |  |
| RHD4CZ6C062ST3101 |  | Excavation and PC Blinding works for MH 1500 mm - (RD-C-6 /2)-Z6-C062-ST | 3d | 2026-08-04 A | 2026-08-06 A | RHD4ENSDZ6APPST110, RHD4ENMSST2000, RHD4PRSHLDOSST1300 | 100% | 2026-08-23 | 2026-08-25 |  |  | Skilled labor [32.67 h]; Unskilled Labor [32.67 h]; Equipment Opreator [52.27 h]; Excavator-Poclain [32.67 h]; Water Truck [3.27 h]; Dump Truck [16.34 h]; MH (1500mm Diameter) - ST - depth 1.50 - 2.5m [1.5 nr] | 21,879 | 21,879 | C062 | Z6 | CONS | ST | Excavation | bef |
| RHD4CZ6C062ST3201 |  | Installation of Base for MH 1500 mm - (RD-C-6 /2)-Z6-C062-ST | 3d | 2026-08-06 A | 2026-08-30 A | RHD4CZ6C062ST3101, RHD4PRSHLSTAGST1605 SS | 100% | 2026-08-26 | 2026-08-29 |  |  | Skilled labor [32.67 h]; Unskilled Labor [32.67 h]; Equipment Opreator [13.07 h]; Boom Truck [6.53 h]; Concrete Mixer Truck [6.53 h]; MH (1500mm Diameter) - ST - depth 1.50 - 2.5m [1.5 nr] | 21,879 | 21,879 | C062 | Z6 | CONS | ST | Installing Base | bef |
| RHD4CZ6C062ST3301 |  | MH Ring and C.Slab works and Backfilling works for MH 1500 mm - (RD-C-6 /2)-Z6-C062-ST | 3d | 2027-01-26 | 2027-01-28 | RHD4CZ6C062ST3201, RHD4PRSHLDOSST1605 |  |  |  | -113d | 56d | Skilled labor [32.67 h]; Unskilled Labor [32.67 h]; Equipment Opreator [22.87 h]; Boom Truck [13.07 h]; Concrete Mixer Truck [9.8 h]; MH (1500mm Diameter) - ST - depth 1.50 - 2.5m [2.1 nr] | 30,630.6 |  | C062 | Z6 | CONS | ST | Installing Rings | bef |
| RHD4CZ6C062ST3401 |  | Steel Cover for MH 1500 mm - (RD-C-6 /2)-Z6-C062-ST | 2d | 2027-04-10 | 2027-04-11 | RHD4CZ6C062ST3301, RHD4CZ6C062ST2501, RHD4CZ6C062ST1500, RHD4PRSHLDOSST1705, RHD4PRSHLSTAGST1705, RHD4CZ6C062ST3400 |  |  |  | -169d | 8d | Skilled labor [21.78 h]; Unskilled Labor [43.56 h]; Equipment Opreator [4.36 h]; Boom Truck [4.36 h]; MH (1500mm Diameter) - ST - depth 1.50 - 2.5m [0.3 nr] | 4,375.8 |  | C062 | Z6 | CONS | ST | Steel Cover | bef |
| RHD4CZ6C062ST3501 |  | Finishing, Benching, Testing works for MH 1500 mm - (RD-C-6 /2)-Z6-C062-ST | 3d | 2027-04-21 | 2027-04-24 | RHD4CZ6C062ST3401, RHD4CZ6C062ST2500, RHD4CZ6C062ST3500, RHD4CZ6C062ST3502 |  |  |  | -177d | 2d | Skilled labor [32.67 h]; Unskilled Labor [65.34 h]; Plumber [32.67 h]; Equipment Opreator [6.53 h]; Water Truck [6.53 h]; MH (1500mm Diameter) - ST - depth 1.50 - 2.5m [0.6 nr] | 8,751.6 |  | C062 | Z6 | CONS | ST | Benching | bef |
|  | 5265 | **RHD4-02-002-C062-(ST)-MH Works - 1200 mm diameter** |  | 2026-08-04 | 2027-04-20 |  |  |  |  |  |  |  |  |  |  |  |  |  |  |  |
| RHD4CZ6C062ST3100 |  | Excavation and PC Blinding works for MH 1200 mm - (RD-C-6 /2)-Z6-C062-ST | 4d | 2026-08-04 A | 2026-08-06 A | RHD4CZ6C062ST3101, RHD4ENSDZ6APPST110, RHD4ENMSST2000, RHD4ENMSST2010 | 100% | 2026-08-26 | 2026-08-30 |  |  | Skilled labor [43.56 h]; Unskilled Labor [43.56 h]; Equipment Opreator [69.7 h]; Excavator-Poclain [43.56 h]; Water Truck [4.36 h]; Dump Truck [21.78 h]; MH (1200mm Diameter) - ST - depth 1.50 - 2.5m [3 nr] | 30,969 | 30,969 | C062 | Z6 | CONS | ST | Excavation | bef |
| RHD4CZ6C062ST3200 |  | Installation of Base for MH 1200 mm - (RD-C-6 /2)-Z6-C062-ST | 4d | 2026-08-06 A | 2026-10-20 A | RHD4CZ6C062ST3100, RHD4PRSHLSTAGST1605 SS | 100% | 2026-08-31 | 2026-09-03 |  |  | Skilled labor [43.56 h]; Unskilled Labor [43.56 h]; Equipment Opreator [17.42 h]; Boom Truck [8.71 h]; Concrete Mixer Truck [8.71 h]; MH (1200mm Diameter) - ST - depth 1.50 - 2.5m [3 nr] | 30,969 | 30,969 | C062 | Z6 | CONS | ST | Installing Base | bef |
| RHD4CZ6C062ST3300 |  | MH Ring and C.Slab works and Backfilling works for MH 1200 mm - (RD-C-6 /2)-Z6-C062-ST | 4d | 2027-01-26 | 2027-01-30 | RHD4CZ6C062ST3200, RHD4PRSHLDOSST1605 |  |  |  | -144d | 0d | Skilled labor [43.56 h]; Unskilled Labor [43.56 h]; Equipment Opreator [30.49 h]; Boom Truck [17.42 h]; Concrete Mixer Truck [13.07 h]; MH (1200mm Diameter) - ST - depth 1.50 - 2.5m [4.2 nr] | 43,356.6 |  | C062 | Z6 | CONS | ST | Installing Rings | bef |
| RHD4CZ6C062ST3400 |  | Steel Cover for MH 1200 mm - (RD-C-6 /2)-Z6-C062-ST | 4d | 2027-04-05 | 2027-04-08 | RHD4CZ6C062ST3300, RHD4CZ6C062ST2501, RHD4CZ6C062ST2500, RHD4CZ6C062ST1500, RHD4PRSHLDOSST1705, RHD4PRSHLSTAGST1705, RHD4CZ6C062ST7400 |  |  |  | -171d | 0d | Skilled labor [43.56 h]; Unskilled Labor [87.12 h]; Equipment Opreator [8.71 h]; Boom Truck [8.71 h]; MH (1200mm Diameter) - ST - depth 1.50 - 2.5m [0.6 nr] | 6,193.8 |  | C062 | Z6 | CONS | ST | Steel Cover | bef |
| RHD4CZ6C062ST3500 |  | Finishing, Benching, Testing works for MH 1200 mm - (RD-C-6 /2)-Z6-C062-ST | 4d | 2027-04-17 | 2027-04-20 | RHD4CZ6C062ST3400, RHD4CZ6C062ST7500, RHD4CZ6C062ST1506 |  |  |  | -177d | 0d | Skilled labor [43.56 h]; Unskilled Labor [87.12 h]; Plumber [43.56 h]; Equipment Opreator [8.71 h]; Water Truck [8.71 h]; MH (1200mm Diameter) - ST - depth 1.50 - 2.5m [1.2 nr] | 12,387.6 |  | C062 | Z6 | CONS | ST | Benching | bef |
|  | 5254 | **RHD4-02-002-C062-(ST)-GRP Pipes - 900 mm diameter** |  |  |  |  |  |  |  |  |  |  |  |  |  |  |  |  |  |  |
|  | 5253 | **RHD4-02-002-C062-(ST)-GRP Pipes - 800 mm diameter** |  | 2026-08-05 | 2027-03-01 |  |  |  |  |  |  |  |  |  |  |  |  |  |  |  |
| RHD4CZ6C062ST1104 |  | Excavation works for GRP Pipe Line 800 mm - (RD-C-6 /2)-Z6-C062-ST | 2d | 2026-08-05 A | 2026-08-06 A | RHD4ENSDZ6APPST110, RHD4CZ5L08ST2500, RHD4CZ6C062ST3100 | 100% | 2026-08-31 | 2026-09-01 |  |  | Skilled labor [9.37 h]; Unskilled Labor [9.37 h]; Equipment Opreator [11.2 h]; Excavator-Poclain [9.37 h]; Dump Truck [1.85 h]; GRP (800mm Diameter) - ST - Depth less than 1.5 m [17.19 m]; GRP (800mm Diameter) - ST - Depth: 1.51m - 2.5m | 11,225.07 | 11,225.07 | C062 | Z6 | CONS | ST | Excavation | bef |
| RHD4CZ6C062ST1204 |  | Bedding works for GRP Pipe Line 800 mm - (RD-C-6 /2)-Z6-C062-ST | 2d | 2026-08-08 A | 2026-08-09 A | RHD4CZ6C062ST1104 | 100% | 2026-09-02 | 2026-09-03 |  |  | Skilled labor [9.37 h]; Unskilled Labor [18.73 h]; Equipment Opreator [18.73 h]; Excavator-Poclain [9.37 h]; Dump Truck [9.37 h]; GRP (800mm Diameter) - ST - Depth less than 1.5 m [8.59 m]; GRP (800mm Diameter) - ST - Depth: 1.51m - 2.5m | 5,609.27 | 5,609.27 | C062 | Z6 | CONS | ST | Bedding | bef |
| RHD4CZ6C062ST1304 |  | Installing for GRP Pipe Line 800 mm - (RD-C-6 /2)-Z6-C062-ST | 2d | 2026-08-09 A | 2026-08-10 A | RHD4CZ6C062ST1204, RHD4PRSHLSTAGST1005 SS, RHD4CZ5L016ST2500, RHD4PRSHLDOSST1605, RHD4PRSHLPOST1000, RHD4PRSHLDOSST1005 | 100% | 2026-09-05 | 2026-09-06 |  |  | Unskilled Labor [12.52 h]; Plumber [6.21 h]; GRP (800mm Diameter) - ST - Depth less than 1.5 m [77.35 m]; GRP (800mm Diameter) - ST - Depth: 1.51m - 2.5m | 50,509.55 | 50,509.55 | C062 | Z6 | CONS | ST | Installation | bef |
| RHD4CZ6C062ST1504 |  | Backfilling and warning tape works for GRP Pipe Line 800 mm - (RD-C-6 /2)-Z6-C062-ST | 2d | 2026-08-11 A | 2026-08-12 A | RHD4CZ6C062ST1404 | 100% | 2026-09-09 | 2026-09-10 |  |  | Skilled labor [9.37 h]; Unskilled Labor [18.73 h]; Equipment Opreator [18.73 h]; Excavator-Poclain [9.37 h]; Dump Truck [9.37 h]; GRP (800mm Diameter) - ST - Depth less than 1.5 m [34.38 m]; GRP (800mm Diameter) - ST - Depth: 1.51m - 2.5m | 22,450.14 | 22,450.14 | C062 | Z6 | CONS | ST | Backfilling | bef |
| RHD4CZ6C062ST1404 |  | Primary Test for GRP Pipe Line 800 mm - (RD-C-6 /2)-Z6-C062-ST | 2d | 2027-02-28 | 2027-03-01 | RHD4CZ6C062ST1304 |  |  |  | -145d | 0d | Unskilled Labor [4.68 h]; Plumber [4.68 h]; Equipment Opreator [4.68 h]; Water Truck [4.68 h]; GRP (800mm Diameter) - ST - Depth less than 1.5 m [34.38 m]; GRP (800mm Diameter) - ST - Depth: 1.51m - 2.5m | 22,450.14 |  | C062 | Z6 | CONS | ST | Primary Test | bef |
|  | 5252 | **RHD4-02-002-C062-(ST)-GRP Pipes - 700 mm diameter** |  | 2026-08-04 | 2027-03-01 |  |  |  |  |  |  |  |  |  |  |  |  |  |  |  |
| RHD4CZ6C062ST1103 |  | Excavation works for GRP Pipe Line 700 mm - (RD-C-6 /2)-Z6-C062-ST | 2d | 2026-08-04 A | 2026-08-05 A | RHD4CZ6C062ST1104 SS, RHD4ENSDZ6APPST110 | 100% | 2026-08-31 | 2026-09-01 |  |  | Skilled labor [7.62 h]; Unskilled Labor [7.62 h]; Equipment Opreator [9.15 h]; Excavator-Poclain [7.62 h]; Dump Truck [1.52 h]; GRP (700mm Diameter) - ST - Depth less than 1.5 m [15.42 m]; GRP (700mm Diameter) - ST - Depth: 1.51m - 2.5m | 8,542.68 | 8,542.68 | C062 | Z6 | CONS | ST | Excavation | bef |
| RHD4CZ6C062ST1203 |  | Bedding works for GRP Pipe Line 700 mm - (RD-C-6 /2)-Z6-C062-ST | 2d | 2026-08-06 A | 2026-08-08 A | RHD4CZ6C062ST1103 | 100% | 2026-09-02 | 2026-09-03 |  |  | Skilled labor [7.2 h]; Unskilled Labor [14.27 h]; Equipment Opreator [14.27 h]; Excavator-Poclain [7.2 h]; Dump Truck [7.2 h]; GRP (700mm Diameter) - ST - Depth less than 1.5 m [7.71 m]; GRP (700mm Diameter) - ST - Depth: 1.51m - 2.5m | 4,271.34 | 4,271.34 | C062 | Z6 | CONS | ST | Bedding | bef |
| RHD4CZ6C062ST1303 |  | Installing for GRP Pipe Line 700 mm - (RD-C-6 /2)-Z6-C062-ST | 2d | 2026-08-09 A | 2026-08-10 A | RHD4CZ6C062ST1203, RHD4PRSHLSTAGST1005, RHD4PRSHLDOSST1605, RHD4PRSHLPOST1000, RHD4PRSHLDOSST1005 | 100% | 2026-09-05 | 2026-09-06 |  |  | Unskilled Labor [7.95 h]; Plumber [4 h]; GRP (700mm Diameter) - ST - Depth less than 1.5 m [69.4 m]; GRP (700mm Diameter) - ST - Depth: 1.51m - 2.5m | 38,447.6 | 38,447.6 | C062 | Z6 | CONS | ST | Installation | bef |
| RHD4CZ6C062ST1503 |  | Backfilling and warning tape works for GRP Pipe Line 700 mm - (RD-C-6 /2)-Z6-C062-ST | 2d | 2026-08-11 A | 2026-08-12 A | RHD4CZ6C062ST1403, RHD4CZ6C062ST1504 | 100% | 2026-09-12 | 2026-09-13 |  |  | Skilled labor [8.39 h]; Unskilled Labor [16.8 h]; Equipment Opreator [16.8 h]; Excavator-Poclain [8.39 h]; Dump Truck [8.39 h]; GRP (700mm Diameter) - ST - Depth less than 1.5 m [30.84 m]; GRP (700mm Diameter) - ST - Depth: 1.51m - 2.5m | 17,085.36 | 17,085.36 | C062 | Z6 | CONS | ST | Backfilling | bef |
| RHD4CZ6C062ST1403 |  | Primary Test for GRP Pipe Line 700 mm - (RD-C-6 /2)-Z6-C062-ST | 2d | 2027-02-28 | 2027-03-01 | RHD4CZ6C062ST1303 |  |  |  | -145d | 0d | Unskilled Labor [4 h]; Plumber [4 h]; Equipment Opreator [4 h]; Water Truck [4 h]; GRP (700mm Diameter) - ST - Depth less than 1.5 m [30.84 m]; GRP (700mm Diameter) - ST - Depth: 1.51m - 2.5m | 17,085.36 |  | C062 | Z6 | CONS | ST | Primary Test | bef |

| ID | WBS | Activity | Duration | Start | Finish | Predecessors | Complete | Remaining | Planned start | Planned finish | Total float | Free float | Resources | Cost | Actual cost | RDH4-01-001-Road and Block Names-1 | RDH4-01-001-Zones-1 | RDH4-01-001-Phases-1 | RDH4-01-001-Networks-1 | RDH4-01-001-Work Method-1 | RDH4-01-001-MENEM |
| --- | --- | --- | --- | --- | --- | --- | --- | --- | --- | --- | --- | --- | --- | --- | --- | --- | --- | --- | --- | --- | --- |
|  | 5251 | **RHD4-02-002-C062-(ST)-GRP Pipes - 600 mm diameter** |  | 2026-08-04 | 2027-03-01 |  |  |  |  |  |  |  |  |  |  |  |  |  |  |  |  |
| RHD4CZ6C062ST1102 |  | Excavation works for GRP Pipe Line 600 mm - (RD-C-6 /2)-Z6-C062-ST | 2d | 2026-08-04 A | 2026-08-05 A | RHD4CZ6C062ST1103 SS, RHD4ENSDZ6APPST110 | 100% |  | 2026-08-31 | 2026-09-01 |  |  | Skilled labor [10.24 h]; Unskilled Labor [10.24 h]; Equipment Opreator [12.31 h]; Excavator-Poclain [10.24 h]; Dump Truck [2.07 h]; GRP (600mm Diameter) - ST - Depth less than 1.5 m [21.19 m]; GRP (600mm Diameter) - ST - Depth: 1.51m - 2.5m | 9,132.89 | 9,132.89 | C062 | Z6 | CONS | ST | Excavation | bef |
| RHD4CZ6C062ST1202 |  | Bedding works for GRP Pipe Line 600 mm - (RD-C-6 /2)-Z6-C062-ST | 2d | 2026-08-06 A | 2026-08-08 A | RHD4CZ6C062ST1102 | 100% |  | 2026-09-02 | 2026-09-03 |  |  | Skilled labor [9.37 h]; Unskilled Labor [18.84 h]; Equipment Opreator [18.84 h]; Excavator-Poclain [9.37 h]; Dump Truck [9.37 h]; GRP (600mm Diameter) - ST - Depth less than 1.5 m [10.6 m]; GRP (600mm Diameter) - ST - Depth: 1.51m - 2.5m | 4,568.6 | 4,568.6 | C062 | Z6 | CONS | ST | Bedding | bef |
| RHD4CZ6C062ST1302 |  | Installing for GRP Pipe Line 600 mm - (RD-C-6 /2)-Z6-C062-ST | 2d | 2026-08-09 A | 2026-08-10 A | RHD4CZ6C062ST1202, RHD4PRSHLSTAGST1005, RHD4PRSHLDOSST1605, RHD4PRSHLPOST1000, RHD4PRSHLDOSST1005 | 100% |  | 2026-09-05 | 2026-09-06 |  |  | Unskilled Labor [27.33 h]; Plumber [13.6 h]; GRP (600mm Diameter) - ST - Depth less than 1.5 m [95.36 m]; GRP (600mm Diameter) - ST - Depth: 1.51m - 2.5m | 41,100.16 | 41,100.16 | C062 | Z6 | CONS | ST | Installation | bef |
| RHD4CZ6C062ST1502 |  | Backfilling and warning tape works for GRP Pipe Line 600 mm - (RD-C-6 /2)-Z6-C062-ST | 2d | 2026-08-11 A | 2026-08-12 A | RHD4CZ6C062ST1402, RHD4CZ6C062ST1503 | 100% |  | 2026-09-14 | 2026-09-15 |  |  | Skilled labor [11.54 h]; Unskilled Labor [23.09 h]; Equipment Opreator [23.09 h]; Excavator-Poclain [11.54 h]; Dump Truck [11.54 h]; GRP (600mm Diameter) - ST - Depth less than 1.5 m [42.38 m]; GRP (600mm Diameter) - ST - Depth: 1.51m - 2.5m | 18,265.78 | 18,265.78 | C062 | Z6 | CONS | ST | Backfilling | bef |
| RHD4CZ6C062ST1402 |  | Primary Test for GRP Pipe Line 600 mm - (RD-C-6 /2)-Z6-C062-ST | 2d | 2027-02-28 | 2027-03-01 | RHD4CZ6C062ST1302 |  |  |  |  | -145d | 0d | Unskilled Labor [7.73 h]; Plumber [7.73 h]; Equipment Opreator [7.73 h]; Water Truck [7.73 h]; GRP (600mm Diameter) - ST - Depth less than 1.5 m [42.38 m]; GRP (600mm Diameter) - ST - Depth: 1.51m - 2.5m | 18,265.78 |  | C062 | Z6 | CONS | ST | Primary Test | bef |
|  | 5250 | **RHD4-02-002-C062-(ST)-GRP Pipes - 500 mm diameter** |  | 2026-08-04 | 2027-03-01 |  |  |  |  |  |  |  |  |  |  |  |  |  |  |  |  |
| RHD4CZ6C062ST1101 |  | Excavation works for GRP Pipe Line 500 mm - (RD-C-6 /2)-Z6-C062-ST | 2d | 2026-08-04 A | 2026-08-05 A | RHD4CZ6C062ST1102 SS, RHD4ENSDZ6APPST110 | 100% |  | 2026-08-31 | 2026-09-01 |  |  | Skilled labor [5.45 h]; Unskilled Labor [5.45 h]; Equipment Opreator [6.53 h]; Excavator-Poclain [5.45 h]; Dump Truck [1.09 h]; GRP (500mm Diameter) - ST - Depth less than 1.5 m [11.14 m]; GRP (500mm Diameter) - ST - Depth: 1.51m - 2.5m | 3,954.7 | 3,954.7 | C062 | Z6 | CONS | ST | Excavation | bef |
| RHD4CZ6C062ST1201 |  | Bedding works for GRP Pipe Line 500 mm - (RD-C-6 /2)-Z6-C062-ST | 2d | 2026-08-06 A | 2026-08-08 A | RHD4CZ6C062ST1101 | 100% |  | 2026-09-02 | 2026-09-03 |  |  | Skilled labor [5.01 h]; Unskilled Labor [10.02 h]; Equipment Opreator [10.02 h]; Excavator-Poclain [5.01 h]; Dump Truck [5.01 h]; GRP (500mm Diameter) - ST - Depth less than 1.5 m [5.57 m]; GRP (500mm Diameter) - ST - Depth: 1.51m - 2.5m | 1,977.35 | 1,977.35 | C062 | Z6 | CONS | ST | Bedding | bef |
| RHD4CZ6C062ST1301 |  | Installing for GRP Pipe Line 500 mm - (RD-C-6 /2)-Z6-C062-ST | 2d | 2026-08-09 A | 2026-08-10 A | RHD4CZ6C062ST1201, RHD4PRSHLSTAGST1005, RHD4PRSHLDOSST1605, RHD4PRSHLPOST1000, RHD4PRSHLDOSST1005 | 100% |  | 2026-09-05 | 2026-09-06 |  |  | Unskilled Labor [14.27 h]; Plumber [7.08 h]; GRP (500mm Diameter) - ST - Depth less than 1.5 m [50.11 m]; GRP (500mm Diameter) - ST - Depth: 1.51m - 2.5m | 17,789.05 | 17,789.05 | C062 | Z6 | CONS | ST | Installation | bef |
| RHD4CZ6C062ST1501 |  | Backfilling and warning tape works for GRP Pipe Line 500 mm - (RD-C-6 /2)-Z6-C062-ST | 2d | 2026-08-11 A | 2026-08-12 A | RHD4CZ6C062ST1401, RHD4CZ6C062ST1502 | 100% |  | 2026-09-16 | 2026-09-17 |  |  | Skilled labor [6.1 h]; Unskilled Labor [12.09 h]; Equipment Opreator [12.09 h]; Excavator-Poclain [6.1 h]; Dump Truck [6.1 h]; GRP (500mm Diameter) - ST - Depth less than 1.5 m [22.27 m]; GRP (500mm Diameter) - ST - Depth: 1.51m - 2.5m | 7,905.85 | 7,905.85 | C062 | Z6 | CONS | ST | Backfilling | bef |
| RHD4CZ6C062ST1401 |  | Primary Test for GRP Pipe Line 500 mm - (RD-C-6 /2)-Z6-C062-ST | 2d | 2027-02-28 | 2027-03-01 | RHD4CZ6C062ST1301 |  |  |  |  | -145d | 0d | Unskilled Labor [4.14 h]; Plumber [4.14 h]; Equipment Opreator [4.14 h]; Water Truck [4.14 h]; GRP (500mm Diameter) - ST - Depth less than 1.5 m [22.27 m]; GRP (500mm Diameter) - ST - Depth: 1.51m - 2.5m | 7,905.85 |  | C062 | Z6 | CONS | ST | Primary Test | bef |
|  | 5249 | **RHD4-02-002-C062-(ST)-GRP Pipes - 400 mm diameter** |  | 2026-08-04 | 2027-03-01 |  |  |  |  |  |  |  |  |  |  |  |  |  |  |  |  |
| RHD4CZ6C062ST1100 |  | Excavation works for GRP Pipe Line 400 mm - (RD-C-6 /2)-Z6-C062-ST | 2d | 2026-08-04 A | 2026-08-05 A | RHD4CZ6C062ST1101 SS, RHD4ENSDZ6APPST110 | 100% |  | 2026-08-31 | 2026-09-01 |  |  | Skilled labor [13.6 h]; Unskilled Labor [13.6 h]; Equipment Opreator [16.34 h]; Excavator-Poclain [13.6 h]; Dump Truck [2.72 h]; GRP (400mm Diameter) - ST - Depth less than 1.5 m [30.27 m]; GRP (400mm Diameter) - ST - Depth: 1.51m - 2.5 m | 8,778.3 | 8,778.3 | C062 | Z6 | CONS | ST | Excavation | bef |
| RHD4CZ6C062ST1200 |  | Bedding works for GRP Pipe Line 400 mm - (RD-C-6 /2)-Z6-C062-ST | 2d | 2026-08-06 A | 2026-08-08 A | RHD4CZ6C062ST1100 | 100% |  | 2026-09-02 | 2026-09-03 |  |  | Skilled labor [11.76 h]; Unskilled Labor [23.52 h]; Equipment Opreator [23.52 h]; Excavator-Poclain [11.76 h]; Dump Truck [11.76 h]; GRP (400mm Diameter) - ST - Depth less than 1.5 m [15.14 m]; GRP (400mm Diameter) - ST - Depth: 1.51m - 2.5 m | 4,390.6 | 4,390.6 | C062 | Z6 | CONS | ST | Bedding | bef |
| RHD4CZ6C062ST1300 |  | Installing for GRP Pipe Line 400 mm - (RD-C-6 /2)-Z6-C062-ST | 2d | 2026-08-09 A | 2026-08-10 A | RHD4CZ6C062ST1200, RHD4PRSHLSTAGST1005, RHD4PRSHLDOSST1605, RHD4PRSHLPOST1000, RHD4PRSHLDOSST1005 | 100% |  | 2026-09-05 | 2026-09-06 |  |  | Unskilled Labor [42.47 h]; Plumber [21.24 h]; GRP (400mm Diameter) - ST - Depth less than 1.5 m [136.22 m]; GRP (400mm Diameter) - ST - Depth: 1.51m - 2.5 m | 39,503.8 | 39,503.8 | C062 | Z6 | CONS | ST | Installation | bef |
| RHD4CZ6C062ST1500 |  | Backfilling and warning tape works for GRP Pipe Line 400 mm - (RD-C-6 /2)-Z6-C062-ST | 2d | 2026-08-11 A | 2026-08-12 A | RHD4CZ6C062ST1400, RHD4CZ6C062ST1501 | 100% |  | 2026-09-19 | 2026-09-20 |  |  | Skilled labor [16.44 h]; Unskilled Labor [33 h]; Equipment Opreator [33 h]; Excavator-Poclain [16.44 h]; Dump Truck [16.44 h]; GRP (400mm Diameter) - ST - Depth less than 1.5 m [60.54 m]; GRP (400mm Diameter) - ST - Depth: 1.51m - 2.5 m | 17,556.6 | 17,556.6 | C062 | Z6 | CONS | ST | Backfilling | bef |
| RHD4CZ6C062ST1400 |  | Primary Test for GRP Pipe Line 400 mm - (RD-C-6 /2)-Z6-C062-ST | 2d | 2027-02-28 | 2027-03-01 | RHD4CZ6C062ST1300 |  |  |  |  | -145d | 0d | Unskilled Labor [7.95 h]; Plumber [7.95 h]; Equipment Opreator [7.95 h]; Water Truck [7.95 h]; GRP (400mm Diameter) - ST - Depth less than 1.5 m [60.54 m]; GRP (400mm Diameter) - ST - Depth: 1.51m - 2.5 m | 17,556.6 |  | C062 | Z6 | CONS | ST | Primary Test | bef |
|  | 5272 | **RHD4-02-002-Z6-C062-Catch Basin - ST** |  | 2026-08-04 | 2027-04-15 |  |  |  |  |  |  |  |  |  |  |  |  |  |  |  |  |
|  | 5273 | **RHD4-02-002-C062-(ST)-Single Catch Basin Works** |  | 2026-08-04 | 2027-04-15 |  |  |  |  |  |  |  |  |  |  |  |  |  |  |  |  |
| RHD4CZ6C062ST7100 |  | Excavation works for Single Catch Basin - (RD-C-6 /2)-Z6-C062-ST | 6d | 2026-08-04 A | 2027-03-06 | RHD4ENSDZ6APPST110, RHD4CZ6C062RW3000, RHD4CZ6C062ST1100 | 88% | 6d | 2026-09-02 | 2026-09-08 | -177d | 0d | Skilled labor [62.07 h]; Unskilled Labor [124.15 h]; Equipment Opreator [93.11 h]; Excavator-Poclain [62.07 h]; Dump Truck [31.04 h]; Single Catch basin - ST [14.25 nr] | 53,166.75 |  | C062 | Z6 | CONS | ST | Excavation | bef |
| RHD4CZ6C062ST7200 |  | PC Blinding, Installation and Pipe connection for Single Catch Basin - (RD-C-6 /2)-Z6-C062-ST | 6d | 2026-08-06 A | 2027-03-16 | RHD4CZ6C062ST7100 | 82% | 6d | 2026-09-09 | 2026-09-15 | -177d | 0d | Skilled labor [62.07 h]; Unskilled Labor [124.15 h]; Plumber [31.04 h]; Equipment Opreator [12.41 h]; Boom Truck [12.41 h]; Single Catch basin - ST [11.4 nr] | 42,533.4 |  | C062 | Z6 | CONS | ST | Installation & Pipe Connection | bef |
| RHD4CZ6C062ST7300 |  | Rings & C.Slab & Final Backfill for Single Catch Basin - (RD-C-6 /2)-Z6-C062-ST | 8d | 2027-03-17 | 2027-03-25 | RHD4CZ6C062ST7200, RHD4PRSHLDOSST1305, RHD4PRSHLSTAGST1305 SS |  |  |  |  | -177d | 0d | Skilled labor [77.65 h]; Unskilled Labor [155.2 h]; Equipment Opreator [93.11 h]; Boom Truck [15.57 h]; Bobcat [77.65 h]; Single Catch basin - ST [19.95 nr] | 74,433.45 |  | C062 | Z6 | CONS | ST | Rings | bef |
| RHD4CZ6C062ST7400 |  | Steel Cover for Single Catch Basin - (RD-C-6 /2)-Z6-C062-ST | 6d | 2027-03-27 | 2027-04-01 | RHD4CZ6C062ST7300, RHD4PRSHLDOSST1705, RHD4CZ6C062ST8400 |  |  |  |  | -177d | 0d | Skilled labor [62.07 h]; Unskilled Labor [62.07 h]; Equipment Opreator [12.41 h]; Boom Truck [12.41 h]; Single Catch basin - ST [2.85 nr] | 10,633.35 |  | C062 | Z6 | CONS | ST | Steel Cover | bef |
| RHD4CZ6C062ST7500 |  | Finishing and Insulation works for Single Catch Basin - (RD-C-6 /2)-Z6-C062-ST | 12d | 2027-04-03 | 2027-04-15 | RHD4CZ6C062ST7400, RHD4CZ6C062ST8500 |  |  |  |  | -177d | 0d | Skilled labor [124.15 h]; Unskilled Labor [248.3 h]; Equipment Opreator [24.8 h]; Boom Truck [24.8 h]; Single Catch basin - ST [8.55 nr] | 31,900.05 |  | C062 | Z6 | CONS | ST | Insulation | bef |

| ID | WBS | Activity | Duration | Start | Finish | Predecessors | Complete | Remaining | Planned start | Planned finish | Total float | Free float | Resources | Cost | Actual cost | RDH4-01-001-Road and Block Names-1 | RDH4-01-001-Zones-1 | RDH4-01-001-Phases-1 | RDH4-01-001-Networks-1 | RDH4-01-001-Work Method-1 | RDH4-01-001-MENEM |
| --- | --- | --- | --- | --- | --- | --- | --- | --- | --- | --- | --- | --- | --- | --- | --- | --- | --- | --- | --- | --- | --- |
|  | 5274 | **RHD4-02-002-C062-(ST)-Double Catch Basin Works** |  | 2026-09-19 | 2027-03-21 |  |  |  |  |  |  |  |  |  |  |  |  |  |  |  |  |
| RHD4CZ6C062ST8100 |  | Excavation works for Double Catch Basin - (RD-C-6 /2)-Z6-C062-ST | 2d | 2026-09-19 A | 2027-03-08 | RHD4CZ6C062ST7100, RHD4ENSDZ6APPST110 | 50% | 2d | 2026-09-09 | 2026-09-10 | -171d | 0d | Skilled labor [4.36 h]; Unskilled Labor [8.71 h]; Equipment Opreator [6.53 h]; Excavator-Poclain [4.36 h]; Dump Truck [2.18 h]; Double Catch basin - ST [0.5 nr] | 6,983 |  | C062 | Z6 | CONS | ST | Excavation | bef |
| RHD4CZ6C062ST8200 |  | PC Blinding, Installation and Pipe connection for Double Catch Basin - (RD-C-6 /2)-Z6-C062-ST | 2d | 2026-09-21 A | 2027-03-14 | RHD4CZ6C062ST8100 | 50% | 2d | 2026-09-12 | 2026-09-13 | -171d | 0d | Skilled labor [4.36 h]; Unskilled Labor [8.71 h]; Plumber [2.18 h]; Equipment Opreator [0.87 h]; Boom Truck [0.87 h]; Double Catch basin - ST [0.4 nr] | 5,586.4 |  | C062 | Z6 | CONS | ST | Installation & Pipe Connection | bef |
| RHD4CZ6C062ST8300 |  | Rings & C.Slab & Final Backfillfor Double Catch Basin - (RD-C-6 /2)-Z6-C062-ST | 2d | 2027-03-15 | 2027-03-16 | RHD4CZ6C062ST8200, RHD4PRSHLDOSST1305, RHD4PRSHLSTAGST1305 |  |  |  |  | -171d | 0d | Skilled labor [5.45 h]; Unskilled Labor [10.89 h]; Equipment Opreator [6.53 h]; Boom Truck [1.09 h]; Bobcat [5.45 h]; Double Catch basin - ST [0.7 nr] | 9,776.2 |  | C062 | Z6 | CONS | ST | Rings | bef |
| RHD4CZ6C062ST8400 |  | Steel Cover for Double Catch Basin - (RD-C-6 /2)-Z6-C062-ST | 2d | 2027-03-17 | 2027-03-18 | RHD4CZ6C062ST8300, RHD4PRSHLDOSST1705 |  |  |  |  | -171d | 0d | Skilled labor [4.36 h]; Unskilled Labor [4.36 h]; Equipment Opreator [0.87 h]; Boom Truck [0.87 h]; Double Catch basin - ST [0.1 nr] | 1,396.6 |  | C062 | Z6 | CONS | ST | Steel Cover | bef |
| RHD4CZ6C062ST8500 |  | Finishing and Insulation works for Double Catch Basin - (RD-C-6 /2)-Z6-C062-ST | 2d | 2027-03-20 | 2027-03-21 | RHD4CZ6C062ST8400 |  |  |  |  | -167d | 10d | Skilled labor [10.89 h]; Unskilled Labor [21.78 h]; Equipment Opreator [2.18 h]; Boom Truck [2.18 h]; Double Catch basin - ST [0.3 nr] | 4,189.8 |  | C062 | Z6 | CONS | ST | Insulation | bef |
|  | 5264 | **RHD4-02-002-C062-(ST)-UPVC Pipes - 400 mm diameter** |  | 2027-03-07 | 2027-03-28 |  |  |  |  |  |  |  |  |  |  |  |  |  |  |  |  |
| RHD4CZ6C062ST2101 |  | Excavation works for UPVC Pipe Line 400 mm - (RD-C-6 /2)-Z6-C062-ST | 2d | 2027-03-07 | 2027-03-08 | RHD4ENSDZ6APPST110, RHD4CZ6C062ST7100 |  |  |  |  | -171d | 0d | Skilled labor [0.87 h]; Unskilled Labor [0.87 h]; Equipment Opreator [0.98 h]; Excavator-Poclain [0.87 h]; Dump Truck [0.22 h]; UPVC (400mm Diameter) - ST - Depth less than 1.5 [1.89 m] | 856.09 |  | C062 | Z6 | CONS | ST | Excavation | bef |
| RHD4CZ6C062ST2201 |  | Bedding works for UPVC Pipe Line 400 mm - (RD-C-6 /2)-Z6-C062-ST | 2d | 2027-03-13 | 2027-03-14 | RHD4CZ6C062ST2101 |  |  |  |  | -167d | 0d | Skilled labor [0.65 h]; Unskilled Labor [1.42 h]; Equipment Opreator [1.42 h]; Excavator-Poclain [0.65 h]; Dump Truck [0.65 h]; UPVC (400mm Diameter) - ST - Depth less than 1.5 [0.95 m] | 428.04 |  | C062 | Z6 | CONS | ST | Bedding | bef |
| RHD4CZ6C062ST2301 |  | Installing for UPVC Pipe Line 400 mm - (RD-C-6 /2)-Z6-C062-ST | 2d | 2027-03-15 | 2027-03-16 | RHD4CZ6C062ST2201, RHD4PRSHLDOSST1105, RHD4PRSHLSTAGST1105 SS |  |  |  |  | -167d | 0d | Unskilled Labor [2.72 h]; Plumber [1.42 h]; UPVC (400mm Diameter) - ST - Depth less than 1.5 [8.52 m] | 3,852.4 |  | C062 | Z6 | CONS | ST | Installation | bef |
| RHD4CZ6C062ST2401 |  | Primary Test for UPVC Pipe Line 400 mm - (RD-C-6 /2)-Z6-C062-ST | 2d | 2027-03-17 | 2027-03-18 | RHD4CZ6C062ST2301 |  |  |  |  | -164d | 6d | Unskilled Labor [0.44 h]; Plumber [0.44 h]; Equipment Opreator [0.44 h]; Water Truck [0.44 h]; UPVC (400mm Diameter) - ST - Depth less than 1.5 [3.79 m] | 1,712.18 |  | C062 | Z6 | CONS | ST | Primary Test | bef |
| RHD4CZ6C062ST2501 |  | Backfilling and warning tape works for UPVC Pipe Line 400 mm - (RD-C-6 /2)-Z6-C062-ST | 2d | 2027-03-27 | 2027-03-28 | RHD4CZ6C062ST2401, RHD4CZ6C062ST6100 |  |  |  |  | -170d | 1d | Skilled labor [0.98 h]; Unskilled Labor [2.07 h]; Equipment Opreator [2.07 h]; Excavator-Poclain [0.98 h]; Dump Truck [0.98 h]; UPVC (400mm Diameter) - ST - Depth less than 1.5 [3.79 m] | 1,712.18 |  | C062 | Z6 | CONS | ST | Backfilling | bef |
|  | 5263 | **RHD4-02-002-C062-(ST)-UPVC Pipes - 300 mm diameter** |  | 2026-08-04 | 2027-04-04 |  |  |  |  |  |  |  |  |  |  |  |  |  |  |  |  |
| RHD4CZ6C062ST2100 |  | Excavation works for UPVC Pipe Line 300 mm - (RD-C-6 /2)-Z6-C062-ST | 4d | 2026-08-04 A | 2027-03-16 | RHD4CZ6C062ST2101, RHD4ENSDZ6APPST110 | 71% | 4d | 2026-09-12 | 2026-09-15 | -171d | 0d | Skilled labor [41.06 h]; Unskilled Labor [41.06 h]; Equipment Opreator [49.33 h]; Excavator-Poclain [41.06 h]; Dump Truck [8.17 h]; UPVC (300mm Diameter) - ST - Depth less than 1.5 [91.35 m]; UPVC (300mm Diameter) - ST - Depth: 1.51m - 2.5m | 27,679.05 |  | C062 | Z6 | CONS | ST | Excavation | bef |
| RHD4CZ6C062ST2200 |  | Bedding works for UPVC Pipe Line 300 mm - (RD-C-6 /2)-Z6-C062-ST | 4d | 2026-08-06 A | 2027-03-21 | RHD4CZ6C062ST2100 | 71% | 4d | 2026-09-16 | 2026-09-20 | -171d | 0d | Skilled labor [35.28 h]; Unskilled Labor [70.68 h]; Equipment Opreator [70.68 h]; Excavator-Poclain [35.28 h]; Dump Truck [35.28 h]; UPVC (300mm Diameter) - ST - Depth less than 1.5 [45.67 m]; UPVC (300mm Diameter) - ST - Depth: 1.51m - 2.5m | 13,838.01 |  | C062 | Z6 | CONS | ST | Bedding | bef |
| RHD4CZ6C062ST2300 |  | Installing for UPVC Pipe Line 300 mm - (RD-C-6 /2)-Z6-C062-ST | 4d | 2026-08-09 A | 2027-03-25 | RHD4CZ6C062ST2200, RHD4CZ6C062ST2301, RHD4PRSHLDOSST1105, RHD4PRSHLSTAGST1105 | 65% | 4d | 2026-09-21 | 2026-09-26 | -171d | 0d | Unskilled Labor [82.22 h]; Plumber [41.06 h]; UPVC (300mm Diameter) - ST - Depth less than 1.5 [411.07 m]; UPVC (300mm Diameter) - ST - Depth: 1.51m - 2.5m | 124,554.21 |  | C062 | Z6 | CONS | ST | Installation | bef |
| RHD4CZ6C062ST2400 |  | Primary Test for UPVC Pipe Line 300 mm - (RD-C-6 /2)-Z6-C062-ST | 3d | 2027-03-27 | 2027-03-29 | RHD4CZ6C062ST2300 |  |  |  |  | -171d | 0d | Unskilled Labor [23.85 h]; Plumber [23.85 h]; Equipment Opreator [23.85 h]; Water Truck [23.85 h]; UPVC (300mm Diameter) - ST - Depth less than 1.5 [182.7 m]; UPVC (300mm Diameter) - ST - Depth: 1.51m - 2.5m | 55,358.1 |  | C062 | Z6 | CONS | ST | Primary Test | bef |
| RHD4CZ6C062ST2500 |  | Backfilling and warning tape works for UPVC Pipe Line 300 mm - (RD-C-6 /2)-Z6-C062-ST | 5d | 2027-03-30 | 2027-04-04 | RHD4CZ6C062ST2400, RHD4CZ6C062ST6100, RHD4CZ6C062ST2501 |  |  |  |  | -171d | 0d | Skilled labor [49.77 h]; Unskilled Labor [99.54 h]; Equipment Opreator [99.54 h]; Excavator-Poclain [49.77 h]; Dump Truck [49.77 h]; UPVC (300mm Diameter) - ST - Depth less than 1.5 [182.7 m]; UPVC (300mm Diameter) - ST - Depth: 1.51m - 2.5m | 55,358.1 |  | C062 | Z6 | CONS | ST | Backfilling | bef |
|  | 5271 | **RHD4-02-002-C062-(ST)-Concrete Encasement** |  | 2027-03-24 | 2027-03-25 |  |  |  |  |  |  |  |  |  |  |  |  |  |  |  |  |
| RHD4CZ6C062ST6100 |  | Pipe Encasement for Storm Pipelines - (RD-C-6 /2)-Z6-C062-ST | 2d | 2027-03-24 | 2027-03-25 | RHD4CZ6C062ST2301 SS, RHD4CZ6C062ST2300 SS, RHD4CZ6C062ST2300 FF, RHD4CZ6C062ST2301 FF, RHD4CZ6C062ST2201, RHD4CZ6C062ST2200 |  |  |  |  | -170d | 0d | Skilled labor [8.71 h]; Unskilled Labor [8.71 h]; Equipment Opreator [9.6 h]; Concrete Mixer Truck [0.87 h]; Dump Truck [8.71 h]; Pipe Encasement - ST [160.85 m3] | 81,390.1 |  | C062 | Z6 | CONS | ST | Pipe Encasement | bef |
|  | 4299 | **RHD4-02-002-Z6-C062-Concrete Box Culvert - ST** |  | 2026-06-11 | 2026-12-15 |  |  |  |  |  |  |  |  |  |  |  |  |  |  |  |  |
|  | 4300 | **RHD4-02-002-C062-(ST)-Concrete Box Culvert** |  | 2026-06-11 | 2026-12-15 |  |  |  |  |  |  |  |  |  |  |  |  |  |  |  |  |
| RHD4CZ6C062ST4100 |  | Excavation works for Box Culvert - (RD-C-6/2)-Z6-C062-ST(Completed) | 46d | 2026-06-11 A | 2026-07-16 A | RHD4CZ8RA04RA2000 | 100% |  | 2026-02-01 | 2026-03-29 |  |  | Skilled labor [227.93 h]; Unskilled Labor [227.93 h]; Equipment Opreator [683.91 h]; Excavator-Poclain [227.93 h]; Water Truck [227.93 h]; Dump Truck [227.93 h]; Excavation for culverts (all types of soil) including backfilling - ST [3417.62 m3] | 61,517.16 | 61,517.16 | C062 | Z6 | CONS | ST | Excavation | bef |
| RHD4CZ6C062ST4200 |  | PC works for Box Culvert - (RD-C-6/2)-Z6-C062-ST(Completed) | 43d | 2026-06-15 A | 2026-06-20 A | RHD4CZ6C062ST4100 SS | 100% |  | 2026-02-01 | 2026-03-25 |  |  | Skilled labor [3.16 h]; Unskilled Labor [3.16 h]; Equipment Opreator [3.16 h]; Concrete Mixer Truck [1.6 h]; Concrete Pump [1.6 h]; 100 mm thickness lean concrete under the base - ST [1166.55 m2] | 45,495.45 | 45,495.45 | C062 | Z6 | CONS | ST | PC | bef |
| RHD4CZ6C062ST4400 |  | Raft works for Box Culvert - (RD-C-6/2)-Z6-C062-ST(Completed) | 21d | 2026-07-17 A | 2026-07-23 A | RHD4CZ6C062ST4200 SS | 100% |  | 2026-02-01 | 2026-02-25 |  |  | Carpenter [21.45 h]; Skilled labor [26.14 h]; Steel Fixer [4.68 h]; Equipment Opreator [43.89 h]; Boom Truck [0.98 h]; Concrete Mixer Truck [21.45 h]; Concrete Pump [21.45 h]; Supply and cast in place reinforced concrete for Box culverts - ST [424.47 m3]; Supply, placing, and fixing of high tensile reinforcement steel for Box culverts - ST [92.45 Ton] | 751,977.68 | 751,977.68 | C062 | Z6 | CONS | ST | Raft Works | bef |
| RHD4CZ6C062ST4500 |  | Wall and slab works for Box Culvert - (RD-C-6/2)-Z6-C062-ST | 7d | 2026-08-04 A | 2026-09-23 A | RHD4CZ6C062ST4400, RHD4CZ6C062ST4200, RHD4CZ8RA04RA2000, RHD4CZ6C062ST4100 | 100% |  | 2026-03-30 | 2026-04-06 |  |  | Carpenter [57.83 h]; Skilled labor [70.35 h]; Steel Fixer [12.63 h]; Equipment Opreator [118.05 h]; Boom Truck [2.5 h]; Concrete Mixer Truck [57.83 h]; Concrete Pump [57.83 h]; Supply and cast in place reinforced concrete for Box culverts - ST [530.59 m3]; Supply, placing, and fixing of high tensile reinforcement steel for Box culverts - ST [138.67 Ton] | 1,023,531.28 | 1,023,531.28 | C062 | Z6 | CONS | ST | Wall and slab Works | bef |
| RHD4CZ6C062ST4600 |  | Insulation and Testing for Box Culvert - (RD-C-6/2)-Z6-C062-ST | 6d | 2026-09-19 A | 2026-12-05 | RHD4CZ6C062ST5400 | 80% | 6d | 2026-04-26 | 2026-05-02 | -184d | 0d | Skilled labor [57.83 h]; Unskilled Labor [115.55 h]; Equipment Opreator [57.83 h]; Water Truck [57.83 h]; Supply and cast in place reinforced concrete for Box culverts - ST [106.12 m3] | 104,422.08 |  | C062 | Z6 | CONS | ST | Insulation and Testing | bef |
| RHD4CZ6C062ST4700 |  | Backfilling works for Box Culvert - (RD-C-6/2)-Z6-C062-ST | 9d | 2026-12-06 | 2026-12-15 | RHD4CZ6C062ST4500, RHD4CZ6C062ST5300, RHD4CZ6C062ST4600 |  |  |  |  | -184d | 14d | Skilled labor [265.83 h]; Unskilled Labor [531.67 h]; Equipment Opreator [425.38 h]; Boom Truck [132.97 h]; Water Truck [26.57 h]; Dump Truck [265.83 h]; Excavation for culverts (all types of soil) including backfilling - ST [1464.7 m3] | 26,364.6 |  | C062 | Z6 | CONS | ST | Backfilling | bef |

| ID | WBS | Activity | Duration | Start | Finish | Predecessors | Complete | Remaining | Planned start | Planned finish | Total float | Free float | Resources | Cost | Actual cost | RDH4-01-001-Road and Block Names-1 | RDH4-01-001-Zones-1 | RDH4-01-001-Phases-1 | RDH4-01-001-Networks-1 | RDH4-01-001-Work Method-1 | RDH4-01-001-MENEM |
| --- | --- | --- | --- | --- | --- | --- | --- | --- | --- | --- | --- | --- | --- | --- | --- | --- | --- | --- | --- | --- | --- |
|  | 4301 | **RHD4-02-002-C062-(ST)-Concrete Chambers** |  | 2026-08-20 | 2026-11-28 |  |  |  |  |  |  |  |  |  |  |  |  |  |  |  |  |
| RHD4CZ6C062ST5100 |  | Excavation and Bedding for Concrete Chambers - for Box Culvert - (RD-C-6/2)-Z6-C062-ST | 4d | 2026-08-20 A | 2026-11-14 | RHD4CZ6C062ST4500 | 50% | 4d | 2026-04-07 | 2026-04-11 | -184d | 0d | Skilled labor [43.56 h]; Unskilled Labor [43.56 h]; Equipment Opreator [8.71 h]; Excavator-Poclain [4.36 h]; Dump Truck [4.36 h]; Concrete chambers - ST - Size 1.8 x 2.0 m, depth 4.51-5.5 m [0.6 nr] | 23,224.8 | 11,612.4 | C062 | Z6 | CONS | ST | Excavation & Bedding | bef |
| RHD4CZ6C062ST5200 |  | PC works for Concrete Chambers - for Box Culvert - (RD-C-6/2)-Z6-C062-ST | 4d | 2026-08-25 A | 2026-11-18 | RHD4CZ6C062ST5100 | 50% | 4d | 2026-04-12 | 2026-04-15 | -184d | 0d | Skilled labor [43.56 h]; Unskilled Labor [43.56 h]; Equipment Opreator [8.71 h]; Excavator-Poclain [4.36 h]; Dump Truck [4.36 h]; Concrete chambers - ST - Size 1.8 x 2.0 m, depth 4.51-5.5 m [0.4 nr] | 15,483.2 | 7,741.6 | C062 | Z6 | CONS | ST | PC Works | bef |
| RHD4CZ6C062ST5300 |  | Installation for Concrete Chambers - for Box Culvert - (RD-C-6/2)-Z6-C062-ST | 4d | 2026-08-30 A | 2026-11-23 | RHD4CZ6C062ST5200 | 50% | 4d | 2026-04-16 | 2026-04-20 | -184d | 0d | Skilled labor [43.56 h]; Unskilled Labor [43.56 h]; Equipment Opreator [8.71 h]; Excavator-Poclain [4.36 h]; Dump Truck [4.36 h]; Concrete chambers - ST - Size 1.8 x 2.0 m, depth 4.51-5.5 m [2.2 nr] | 85,157.6 | 42,578.8 | C062 | Z6 | CONS | ST | Installation | bef |
| RHD4CZ6C062ST5400 |  | Backfilling works for Concrete Chambers - for Box Culvert - (RD-C-6/2)-Z6-C062-ST | 4d | 2026-11-24 | 2026-11-28 | RHD4CZ6C062ST5300 |  |  |  |  | -184d | 0d | Skilled labor [43.56 h]; Unskilled Labor [43.56 h]; Equipment Opreator [8.71 h]; Excavator-Poclain [4.36 h]; Dump Truck [4.36 h]; Concrete chambers - ST - Size 1.8 x 2.0 m, depth 4.51-5.5 m [0.8 nr] | 30,966.4 |  | C062 | Z6 | CONS | ST | Backfilling Works | bef |
|  | 5297 | **RHD4-02-002-Z6-C062-Sewage Network - SW** |  | 2026-08-08 | 2027-05-27 |  |  |  |  |  |  |  |  |  |  |  |  |  |  |  |  |
|  | 4551 | **RHD4-02-002-C062-(SW)-MH Works - 1200 mm diameter with Back drop** |  | 2026-08-11 | 2027-04-27 |  |  |  |  |  |  |  |  |  |  |  |  |  |  |  |  |
| RHD4CZ6C062SW3101 |  | Excavation and PC Blinding works for MH 1200 mm - (RD-C-6 /2)-Z6-C062-SW | 2d | 2026-08-11 A | 2026-08-12 A | RHD4CZ6C062ST1500, RHD4CZ6C062ST3500 | 100% |  | 2026-10-22 | 2026-10-24 |  |  | Skilled labor [5.45 h]; Unskilled Labor [5.45 h]; Equipment Opreator [8.71 h]; Excavator-Poclain [5.45 h]; Water Truck [0.54 h]; Dump Truck [2.72 h]; MH (1200mm Diameter) - SW - depth 2.51- 3.5 m with back drop [0.25 nr] | 4,003.75 | 4,003.75 | C062 | Z6 | CONS | SW | Excavation | bef |
| RHD4CZ6C062SW3201 |  | Installation of Base for MH 1200 mm - (RD-C-6 /2)-Z6-C062-SW | 2d | 2026-09-20 A | 2026-09-22 A | RHD4CZ6C062SW3101 | 100% |  | 2026-10-25 | 2026-10-26 |  |  | Skilled labor [5.45 h]; Unskilled Labor [5.45 h]; Equipment Opreator [2.18 h]; Boom Truck [1.09 h]; Concrete Mixer Truck [1.09 h]; MH (1200mm Diameter) - SW - depth 2.51- 3.5 m with back drop [0.25 nr] | 4,003.75 | 4,003.75 | C062 | Z6 | CONS | SW | Installing Base | bef |
| RHD4CZ6C062SW3301 |  | MH Ring and C.Slab works and Backfilling works for MH 1200 mm - (RD-C-6 /2)-Z6-C062-SW | 2d | 2027-04-21 | 2027-04-22 | RHD4CZ6C062SW3201 |  |  |  |  | -154d | 0d | Skilled labor [5.45 h]; Unskilled Labor [5.45 h]; Equipment Opreator [3.81 h]; Boom Truck [2.18 h]; Concrete Mixer Truck [1.6 h]; MH (1200mm Diameter) - SW - depth 2.51- 3.5 m with back drop [0.35 nr] | 5,605.25 |  | C062 | Z6 | CONS | SW | Installing Rings | bef |
| RHD4CZ6C062SW3401 |  | Steel Cover for MH 1200 mm - (RD-C-6 /2)-Z6-C062-SW | 2d | 2027-04-24 | 2027-04-25 | RHD4CZ6C062ST4700, RHD4CZ6C062SW3301 |  |  |  |  | -154d | 0d | Skilled labor [3.59 h]; Unskilled Labor [7.3 h]; Equipment Opreator [0.8 h]; Boom Truck [0.8 h]; MH (1200mm Diameter) - SW - depth 2.51- 3.5 m with back drop [0.05 nr] | 800.75 |  | C062 | Z6 | CONS | SW | Steel Cover | bef |
| RHD4CZ6C062SW3501 |  | Finishing, Benching, Testing works for MH 1200 mm - (RD-C-6 /2)-Z6-C062-SW | 2d | 2027-04-26 | 2027-04-27 | RHD4CZ6C062SW3401 |  |  |  |  | -154d | 12d | Skilled labor [5.45 h]; Unskilled Labor [10.89 h]; Plumber [5.45 h]; Equipment Opreator [1.09 h]; Water Truck [1.09 h]; MH (1200mm Diameter) - SW - depth 2.51- 3.5 m with back drop [0.1 nr] | 1,601.5 |  | C062 | Z6 | CONS | SW | Benching | bef |
|  | 5307 | **RHD4-02-002-C062-(SW)-MH Works - 1200 mm diameter** |  | 2026-08-08 | 2027-05-27 |  |  |  |  |  |  |  |  |  |  |  |  |  |  |  |  |
| RHD4CZ6C062SW3100 |  | Excavation and PC Blinding works for MH 1200 mm - (RD-C-6 /2)-Z6-C062-SW | 6d | 2026-08-08 A | 2027-04-22 | RHD4ENSDZ6APPSW120, RHD4CZ6C062SW3101, RHD4CZ9L06MV1200 | 72% | 2d | 2026-10-31 | 2026-11-05 | -166d | 0d | Skilled labor [59.9 h]; Unskilled Labor [59.9 h]; Equipment Opreator [95.84 h]; Excavator-Poclain [59.9 h]; Water Truck [5.99 h]; Dump Truck [29.95 h]; MH (1200mm Diameter) - SW - depth 1.51 - 2.5m [0.5 nr]; MH (1200mm Diameter) - SW - depth 2.51 - 3.5m [2.25 nr] | 31,042 | 20,694.67 | C062 | Z6 | CONS | SW | Excavation | bef |
| RHD4CZ6C062SW3200 |  | Installation of Base for MH 1200 mm - (RD-C-6 /2)-Z6-C062-SW | 10d | 2026-08-10 A | 2027-04-25 | RHD4CZ6C062SW3100 | 70% | 2d | 2026-11-07 | 2026-11-17 | -166d | 0d | Skilled labor [108.9 h]; Unskilled Labor [108.9 h]; Equipment Opreator [43.56 h]; Boom Truck [21.78 h]; Concrete Mixer Truck [21.78 h]; MH (1200mm Diameter) - SW - depth 1.51 - 2.5m [0.5 nr]; MH (1200mm Diameter) - SW - depth 2.51 - 3.5m [2.25 nr] | 31,042 | 21,729.4 | C062 | Z6 | CONS | SW | Installing Base | bef |
| RHD4CZ6C062SW3300 |  | MH Ring and C.Slab works and Backfilling works for MH 1200 mm - (RD-C-6 /2)-Z6-C062-SW | 10d | 2027-04-26 | 2027-05-06 | RHD4CZ6C062SW3200, RHD4PRSHLDOSSW1305, RHD4PRSHLSTAGSW1305 |  |  |  |  | -166d | 0d | Skilled labor [108.9 h]; Unskilled Labor [108.9 h]; Equipment Opreator [76.23 h]; Boom Truck [43.56 h]; Concrete Mixer Truck [32.67 h]; MH (1200mm Diameter) - SW - depth 1.51 - 2.5m [0.7 nr]; MH (1200mm Diameter) - SW - depth 2.51 - 3.5m [3.15 nr] | 43,458.8 |  | C062 | Z6 | CONS | SW | Installing Rings | bef |
| RHD4CZ6C062SW3400 |  | Steel Cover for MH 1200 mm - (RD-C-6 /2)-Z6-C062-SW | 4d | 2027-05-08 | 2027-05-11 | RHD4CZ6C062SW3300, RHD4PRSHLDOSSW1405, RHD4PRSHLSTAGSW1405 |  |  |  |  | -166d | 0d | Skilled labor [40 h]; Unskilled Labor [79.83 h]; Equipment Opreator [7.95 h]; Boom Truck [7.95 h]; MH (1200mm Diameter) - SW - depth 1.51 - 2.5m [0.1 nr]; MH (1200mm Diameter) - SW - depth 2.51 - 3.5m [0.45 nr] | 6,208.4 |  | C062 | Z6 | CONS | SW | Steel Cover | bef |
| RHD4CZ6C062SW3500 |  | Finishing, Benching, Testing works for MH 1200 mm - (RD-C-6 /2)-Z6-C062-SW | 10d | 2027-05-12 | 2027-05-27 | RHD4CZ6C062SW3400, RHD4CZ6C062SW3501 |  |  |  |  | -166d | 0.02d | Skilled labor [108.9 h]; Unskilled Labor [217.81 h]; Plumber [108.9 h]; Equipment Opreator [21.78 h]; Water Truck [21.78 h]; MH (1200mm Diameter) - SW - depth 1.51 - 2.5m [0.2 nr]; MH (1200mm Diameter) - SW - depth 2.51 - 3.5m [0.9 nr] | 12,416.8 |  | C062 | Z6 | CONS | SW | Benching | bef |
|  | 5303 | **RHD4-02-002-C062-(SW)-UPVC Pipes - 200 mm diameter** |  | 2026-08-11 | 2027-04-26 |  |  |  |  |  |  |  |  |  |  |  |  |  |  |  |  |
| RHD4CZ6C062SW2100 |  | Excavation works for UPVC Pipe Line 200 mm - (RD-C-6 /2)-Z6-C062-SW | 4d | 2026-08-11 A | 2026-08-22 A | RHD4ENSDZ6APPSW120, RHD4CZ6C062SW3101, RHD4CZ6C062SW3100, RHD4CZ5L016SW5201, RHD4CZ5L08ST4600 | 100% |  | 2026-11-07 | 2026-11-10 |  |  | Skilled labor [37.14 h]; Unskilled Labor [37.14 h]; Equipment Opreator [44.54 h]; Excavator-Poclain [37.14 h]; Dump Truck [7.41 h]; UPVC (200mm Diameter) - SW - Depth: less than 1.5m; UPVC (200mm Diameter) - SW - Depth: 1.51m - 2.5m [76.13 m]; UPVC (200mm Diameter) - SW - Depth: 2.51m - 3.5m | 16,520.21 | 16,520.21 | C062 | Z6 | CONS | SW | Excavation | bef |
| RHD4CZ6C062SW2200 |  | Bedding works for UPVC Pipe Line 200 mm - (RD-C-6 /2)-Z6-C062-SW | 4d | 2026-08-12 A | 2026-08-23 A | RHD4CZ6C062SW2100 | 100% |  | 2026-11-11 | 2026-11-15 |  |  | Skilled labor [37.14 h]; Unskilled Labor [74.27 h]; Equipment Opreator [74.27 h]; Excavator-Poclain [37.14 h]; Dump Truck [37.14 h]; UPVC (200mm Diameter) - SW - Depth: less than 1.5m; UPVC (200mm Diameter) - SW - Depth: 1.51m - 2.5m [25.38 m]; UPVC (200mm Diameter) - SW - Depth: 2.51m - 3.5m | 5,507.46 | 5,507.46 | C062 | Z6 | CONS | SW | Bedding | bef |
| RHD4CZ6C062SW2300 |  | Installing for UPVC Pipe Line 200 mm - (RD-C-6 /2)-Z6-C062-SW | 4d | 2026-08-15 A | 2026-09-17 A | RHD4CZ6C062SW2200, RHD4PRSHLSTAGSW1005, RHD4PRSHLDOSSW1305, RHD4PRSHLPOSW1000, RHD4PRSHLDOSSW1005, RHD4PRSHLDOSSW1004, RHD4PRSHLDOSSW1304, RHD4PRSHLPOSW1100, RHD4PRSHLDOSSW1104 | 100% |  | 2026-11-16 | 2026-11-19 |  |  | Unskilled Labor [74.27 h]; Plumber [37.14 h]; Equipment Opreator [37.14 h]; Boom Truck [37.14 h]; UPVC (200mm Diameter) - SW - Depth: less than 1.5m; UPVC (200mm Diameter) - SW - Depth: 1.51m - 2.5m [203.01 m]; UPVC (200mm Diameter) - SW - Depth: 2.51m - 3.5m | 44,053.17 | 44,053.17 | C062 | Z6 | CONS | SW | Installation | bef |
| RHD4CZ6C062SW2500 |  | Backfilling and warning tape works for UPVC Pipe Line 200 mm - (RD-C-6 /2)-Z6-C062-SW | 4d | 2026-08-17 A | 2026-09-19 A | RHD4CZ6C062SW2400 | 100% |  | 2026-11-24 | 2026-11-28 |  |  | Skilled labor [37.14 h]; Unskilled Labor [74.27 h]; Equipment Opreator [74.27 h]; Excavator-Poclain [37.14 h]; Dump Truck [37.14 h]; UPVC (200mm Diameter) - SW - Depth: less than 1.5m; UPVC (200mm Diameter) - SW - Depth: 1.51m - 2.5m [101.5 m]; UPVC (200mm Diameter) - SW - Depth: 2.51m - 3.5m | 22,025.5 | 22,025.5 | C062 | Z6 | CONS | SW | Backfilling | bef |
| RHD4CZ6C062SW2400 |  | Primary Test for UPVC Pipe Line 200 mm - (RD-C-6 /2)-Z6-C062-SW | 3d | 2027-04-24 | 2027-04-26 | RHD4CZ6C062SW2300 |  |  |  |  | -146d | 0d | Unskilled Labor [26.14 h]; Plumber [26.14 h]; Equipment Opreator [26.14 h]; Water Truck [26.14 h]; UPVC (200mm Diameter) - SW - Depth: less than 1.5m; UPVC (200mm Diameter) - SW - Depth: 1.51m - 2.5m [101.5 m]; UPVC (200mm Diameter) - SW - Depth: 2.51m - 3.5m | 22,025.5 |  | C062 | Z6 | CONS | SW | Primary Test | bef |

| ID | WBS | Activity | Duration | Start | Finish | Predecessors | Complete | Remaining | Planned start | Planned finish | Total float | Free float | Resources | Cost | RDH4-01-001-Road and Block Names-1 | RDH4-01-001-Zones-1 | RDH4-01-001-Phases-1 | RDH4-01-001-Networks-1 | RDH4-01-001-Work Method-1 | RDH4-01-001-MENEM |
| --- | --- | --- | --- | --- | --- | --- | --- | --- | --- | --- | --- | --- | --- | --- | --- | --- | --- | --- | --- | --- |
|  | 5306 | **RHD4-02-002-C062-(SW)-Concrete Encasement** |  |  |  |  |  |  |  |  |  |  |  |  |  |  |  |  |  |  |
|  | 5334 | **RHD4-02-002-Z6-C062-Potable Network - PT** |  | 2026-08-04 | 2027-07-27 |  |  |  |  |  |  |  |  |  |  |  |  |  |  |  |
|  | 5335 | **RHD4-02-002-C062-(PT)-HDPE Pipes - 110 mm diameter** |  | 2026-08-04 | 2027-05-08 |  |  |  |  |  |  |  |  |  |  |  |  |  |  |  |
| RHD4CZ6C062PT1100 |  | Excavation works for HDPE Pipline 110 mm - (RD-C-6 /2)-Z6-C062-PT | 2d | 2026-08-04 A | 2027-04-28 | RHD4ENSDZ6APPPT130, RHD4ENMSPT2000, RHD4CZ6C062SW2500, RHD4ENMSEW2000, RHD4ENMSEW2010 | 50% | 2d | 2026-11-29 | 2026-11-30 | -141d | 0d | Skilled labor [4.47 h]; Unskilled Labor [4.47 h]; Equipment Opreator [5.34 h]; Excavator-Poclain [4.47 h]; Dump Truck [0.87 h]; HDPE (110mm Diameter) - PT - Depth: less than 1.5m [10.26 m] | 872.1 | C062 | Z6 | CONS | PT | Excavation | bef |
| RHD4CZ6C062PT1200 |  | Bedding works for HDPE Pipline 110 mm - (RD-C-6 /2)-Z6-C062-PT | 2d | 2026-08-06 A | 2027-05-01 | RHD4CZ6C062PT1100 |  | 2d | 2026-12-01 | 2026-12-02 | -141d | 0d | Skilled labor [3.7 h]; Unskilled Labor [7.41 h]; Equipment Opreator [7.41 h]; Excavator-Poclain [3.7 h]; Dump Truck [3.7 h]; HDPE (110mm Diameter) - PT - Depth: less than 1.5m [5.13 m] | 436.05 | C062 | Z6 | CONS | PT | Bedding | bef |
| RHD4CZ6C062PT1300 |  | Installing for HDPE Pipline 110 mm - (RD-C-6 /2)-Z6-C062-PT | 2d | 2026-08-08 A | 2027-05-03 | RHD4CZ6C062PT1200 |  | 2d | 2026-12-03 | 2026-12-05 | -141d | 0d | Unskilled Labor [14.92 h]; Plumber [7.41 h]; Equipment Opreator [7.41 h]; Boom Truck [7.41 h]; HDPE (110mm Diameter) - PT - Depth: less than 1.5m [46.17 m] | 3,924.45 | C062 | Z6 | CONS | PT | Installation | bef |
| RHD4CZ6C062PT1400 |  | Primary Test for HDPE Pipline 110 mm - (RD-C-6 /2)-Z6-C062-PT | 2d | 2027-05-04 | 2027-05-05 | RHD4CZ6C062PT1300 |  |  |  |  | -139d | 0d | Unskilled Labor [2.29 h]; Plumber [2.29 h]; Equipment Opreator [2.29 h]; Water Truck [2.29 h]; HDPE (110mm Diameter) - PT - Depth: less than 1.5m [20.52 m] | 1,744.2 | C062 | Z6 | CONS | PT | Primary Test | bef |
| RHD4CZ6C062PT1500 |  | Backfilling and warning tape works for HDPE Pipline 110 mm - (RD-C-6 /2)-Z6-C062-PT | 2d | 2027-05-06 | 2027-05-08 | RHD4CZ6C062PT1400 |  |  |  |  | -139d | 13.02d | Skilled labor [5.55 h]; Unskilled Labor [11.2 h]; Equipment Opreator [11.2 h]; Excavator-Poclain [5.55 h]; Dump Truck [5.55 h]; HDPE (110mm Diameter) - PT - Depth: less than 1.5m [20.52 m] | 1,744.2 | C062 | Z6 | CONS | PT | Backfilling | bef |
|  | 5336 | **RHD4-02-002-C062-(PT)-HDPE Pipes - 160 mm diameter** |  | 2026-08-04 | 2027-05-29 |  |  |  |  |  |  |  |  |  |  |  |  |  |  |  |
| RHD4CZ6C062PT1101 |  | Excavation works for HDPE Pipline 160 mm - (RD-C-6 /2)-Z6-C062-PT | 3d | 2026-08-04 A | 2027-04-29 | RHD4CZ6C062SW2500, RHD4ENSDZ6APPPT130, RHD4ENMSPT2000 | 13% | 3d | 2026-11-29 | 2026-12-01 | -146d | 6.02d | Skilled labor [28.53 h]; Unskilled Labor [28.53 h]; Equipment Opreator [34.3 h]; Excavator-Poclain [28.53 h]; Dump Truck [5.66 h]; HDPE (160mm Diameter) - PT - Depth: less than 1.5m [64.99 m]; HDPE (160mm Diameter) - PT - Depth: 1.51m - 2.5m | 6,953.93 | C062 | Z6 | CONS | PT | Excavation | bef |
| RHD4CZ6C062PT1201 |  | Bedding works for HDPE Pipline 160 mm - (RD-C-6 /2)-Z6-C062-PT | 3d | 2026-08-29 A | 2027-05-11 | RHD4CZ6C062PT1101, RHD4CZ5L08PT3203 | 5% | 3d | 2026-12-02 | 2026-12-05 | -152.02d | 0d | Skilled labor [24.07 h]; Unskilled Labor [48.14 h]; Equipment Opreator [48.14 h]; Excavator-Poclain [24.07 h]; Dump Truck [24.07 h]; HDPE (160mm Diameter) - PT - Depth: less than 1.5m [32.5 m]; HDPE (160mm Diameter) - PT - Depth: 1.51m - 2.5m | 3,477.5 | C062 | Z6 | CONS | PT | Bedding | bef |
| RHD4CZ6C062PT1301 |  | Installing for HDPE Pipline 160 mm - (RD-C-6 /2)-Z6-C062-PT | 5d | 2026-09-01 A | 2027-05-22 | RHD4CZ6C062PT1201 | 3% | 5d | 2026-12-06 | 2026-12-10 | -152.02d | 0d | Unskilled Labor [93.44 h]; Plumber [46.72 h]; Equipment Opreator [46.72 h]; Boom Truck [46.72 h]; HDPE (160mm Diameter) - PT - Depth: less than 1.5m [292.46 m]; HDPE (160mm Diameter) - PT - Depth: 1.51m - 2.5m | 31,293.22 | C062 | Z6 | CONS | PT | Installation | bef |
| RHD4CZ6C062PT1401 |  | Primary Test for HDPE Pipline 160 mm - (RD-C-6 /2)-Z6-C062-PT | 2d | 2027-05-22 | 2027-05-24 | RHD4CZ6C062PT1301 |  |  |  |  | -152.02d | 0d | Unskilled Labor [14.92 h]; Plumber [14.92 h]; Equipment Opreator [14.92 h]; Water Truck [14.92 h]; HDPE (160mm Diameter) - PT - Depth: less than 1.5m [129.98 m]; HDPE (160mm Diameter) - PT - Depth: 1.51m - 2.5m | 13,907.86 | C062 | Z6 | CONS | PT | Primary Test | bef |
| RHD4CZ6C062PT1501 |  | Backfilling and warning tape works for HDPE Pipline 160 mm - (RD-C-6 /2)-Z6-C062-PT | 4d | 2027-05-24 | 2027-05-29 | RHD4CZ6C062PT1401, RHD4CZ6C062PT5100 |  |  |  |  | -152.02d | 0d | Skilled labor [35.39 h]; Unskilled Labor [70.79 h]; Equipment Opreator [70.79 h]; Excavator-Poclain [35.39 h]; Dump Truck [35.39 h]; HDPE (160mm Diameter) - PT - Depth: less than 1.5m [129.98 m]; HDPE (160mm Diameter) - PT - Depth: 1.51m - 2.5m | 13,907.86 | C062 | Z6 | CONS | PT | Backfilling | bef |
|  | 5340 | **RHD4-02-002-C062-(PT)-Gate Valves (Direct Buried)** |  | 2027-05-19 | 2027-05-24 |  |  |  |  |  |  |  |  |  |  |  |  |  |  |  |
| RHD4CZ6C062PT3100 |  | Installation for Direct Buried Gate Valves - (RD-C-6 /2)-Z6-C062-PT | 2d | 2027-05-19 | 2027-05-22 | RHD4CZ6C062PT1301 FF, RHD4CZ6C062PT1300 FF, RHD4CZ6C062PT1301 SS, RHD4CZ6C062PT1300 SS |  |  |  |  | -145.02d | 0d | Unskilled Labor [16.34 h]; Plumber [16.34 h]; Gate valves dia 100 mm - PT [1.8 nr]; Gate valves dia 150 mm - PT [0.9 nr] | 3,418.2 | C062 | Z6 | CONS | PT | Installation | bef |
| RHD4CZ6C062PT3200 |  | Stem and Service box for Direct Buried Gate Valves - (RD-C-6 /2)-Z6-C062-PT | 2d | 2027-05-22 | 2027-05-24 | RHD4CZ6C062PT3100 |  |  |  |  | -145.02d | 7d | Unskilled Labor [16.34 h]; Plumber [16.34 h]; Gate valves dia 100 mm - PT [0.2 nr]; Gate valves dia 150 mm - PT [0.1 nr] | 379.8 | C062 | Z6 | CONS | PT | Stem and Service box | bef |
|  | 5347 | **RHD4-02-002-C062-(PT)-Fire Hydrant** |  | 2027-05-29 | 2027-07-27 |  |  |  |  |  |  |  |  |  |  |  |  |  |  |  |
| RHD4CZ6C062PT4100 |  | Excavation and Bedding and Pipe Installation for Fire Hydrant - (RD-C-6 /2)-Z6-C062-PT | 3d | 2027-05-29 | 2027-06-01 | RHD4CZ6C062PT1501, RHD4CZ6C062PT1500, RHD4ENSDZ6APPPT130, RHD4CZ4A013LV2400, RHD4CZ2C082PT4500 |  |  |  |  | -152.02d | 0d | Skilled labor [27.2 h]; Unskilled Labor [27.2 h]; Plumber [27.2 h]; Equipment Opreator [13.6 h]; Excavator-Poclain [13.6 h]; 3-outlet fire hydrant (2 x 2.5 inch and 1 x 4.5 inch) in the form of a separate dry vacuum cylinder [0.5 nr] | 6,310 | C062 | Z6 | CONS | PT | Excavation | bef |
| RHD4CZ6C062PT4200 |  | Valve Installation for Fire Hydrant - (RD-C-6 /2)-Z6-C062-PT | 2d | 2027-06-01 | 2027-06-03 | RHD4CZ6C062PT4100, RHD4CZ6C062PT3200 |  |  |  |  | -152.02d | 0d | Unskilled Labor [18.19 h]; Plumber [18.19 h]; 3-outlet fire hydrant (2 x 2.5 inch and 1 x 4.5 inch) in the form of a separate dry vacuum cylinder [1 nr] | 12,620 | C062 | Z6 | CONS | PT | Valve | bef |
| RHD4CZ6C062PT4300 |  | Stem for Fire Hydrant - (RD-C-6 /2)-Z6-C062-PT | 2d | 2027-06-03 | 2027-06-06 | RHD4CZ6C062PT4200 |  |  |  |  | -152.02d | 0d | Unskilled Labor [18.19 h]; Plumber [18.19 h]; 3-outlet fire hydrant (2 x 2.5 inch and 1 x 4.5 inch) in the form of a separate dry vacuum cylinder [1.5 nr] | 18,930 | C062 | Z6 | CONS | PT | Stem | bef |
| RHD4CZ6C062PT4400 |  | Fire Installation for Fire Hydrant - (RD-C-6 /2)-Z6-C062-PT | 2d | 2027-06-06 | 2027-06-08 | RHD4CZ6C062PT4300 |  |  |  |  | -152.02d | 40d | Unskilled Labor [18.19 h]; Plumber [18.19 h]; Equipment Opreator [18.19 h]; Boom Truck [18.19 h]; 3-outlet fire hydrant (2 x 2.5 inch and 1 x 4.5 inch) in the form of a separate dry vacuum cylinder [1.75 nr] | 22,085 | C062 | Z6 | CONS | PT | Fire | bef |
| RHD4CZ6C062PT4500 |  | Protection Barriers for Fire Hydrant - (RD-C-6 /2)-Z6-C062-PT | 2d | 2027-07-25 | 2027-07-27 | RHD4CZ6C062PT4400, RHD4CZ4A013ST2500, RHD4CZ4L09PT2401 |  |  |  |  | -192.02d | 0d | Unskilled Labor [10.89 h]; Plumber [10.89 h]; 3-outlet fire hydrant (2 x 2.5 inch and 1 x 4.5 inch) in the form of a separate dry vacuum cylinder [0.25 nr] | 3,155 | C062 | Z6 | CONS | PT | Protection Barriers | bef |
|  | 5348 | **RHD4-02-002-C062-(PT)-Concrete Encasement** |  | 2027-05-12 | 2027-05-22 |  |  |  |  |  |  |  |  |  |  |  |  |  |  |  |
| RHD4CZ6C062PT5100 |  | Pipe Encasement for Potable Pipelines - (RD-C-6 /2)-Z6-C062-PT | 4d | 2027-05-12 | 2027-05-22 | RHD4CZ6C062PT1301 FF, RHD4CZ6C062PT1300 FF, RHD4CZ6C062PT1301 SS, RHD4CZ6C062PT1300 SS, RHD4CZ6C062PT1200, RHD4CZ6C062PT1201 |  |  |  |  | -150.02d | 2d | Skilled labor [33 h]; Unskilled Labor [33 h]; Equipment Opreator [36.26 h]; Concrete Mixer Truck [3.27 h]; Dump Truck [33 h]; Pipe Encasement - PT [15.15 m3] | 18,573.9 | C062 | Z6 | CONS | PT | Pipe Encasement | bef |

| ID | WBS | Activity | Duration | Start | Finish | Predecessors | Complete | Planned start | Planned finish | Total float | Free float | Resources | Cost | Actual cost | RDH4-01-001-Road and Block Names-1 | RDH4-01-001-Zones-1 | RDH4-01-001-Phases-1 | RDH4-01-001-Networks-1 | RDH4-01-001-Work Method-1 | RDH4-01-001-MENEM |
| --- | --- | --- | --- | --- | --- | --- | --- | --- | --- | --- | --- | --- | --- | --- | --- | --- | --- | --- | --- | --- |
|  | 5349 | **RHD4-02-002-Z6-C062-Irrigation Network - IRR** |  | 2026-08-04 | 2027-08-31 |  |  |  |  |  |  |  |  |  |  |  |  |  |  |  |
|  | 5350 | **RHD4-02-002-C062-(IRR)-HDPE Pipes - 160 mm diameter** |  | 2026-08-04 | 2026-08-31 |  |  |  |  |  |  |  |  |  |  |  |  |  |  |  |
| RHD4CZ6C062IRR1100 |  | Excavation works for HDPE Pipline 160 mm - (RD-C-6 /2)-Z6-C062-IRR | 6d | 2026-08-04 A | 2026-08-09 A | RHD4CZ6C062PT1101 SS, RHD4ENSDZ6APPIRR140, RHD4ENMSRR2000, RHD4CZ6C062PT4500 | 100% | 2026-12-31 | 2027-01-06 |  |  | Skilled labor [55.87 h]; Unskilled Labor [55.87 h]; Equipment Opreator [67.08 h]; Excavator-Poclain [55.87 h]; Dump Truck [11.2 h]; HDPE (160mm Diameter) - TSE - Depth: less than 1.5m [67.02 m]; HDPE (160mm Diameter) - TSE - Depth: more than 1.51m [14.97 m] | 10,504.42 | 10,504.42 | C062 | Z6 | CONS | IRR | Excavation | bef |
| RHD4CZ6C062IRR1200 |  | Bedding works for HDPE Pipline 160 mm - (RD-C-6 /2)-Z6-C062-IRR | 5d | 2026-08-10 A | 2026-08-15 A | RHD4CZ6C062IRR1100 | 100% |  |  |  |  | Skilled labor [43.78 h]; Unskilled Labor [87.45 h]; Equipment Opreator [87.45 h]; Excavator-Poclain [43.78 h]; Dump Truck [43.78 h]; HDPE (160mm Diameter) - TSE - Depth: less than 1.5m [33.51 m]; HDPE (160mm Diameter) - TSE - Depth: more than 1.51m [4.99 m] | 4,875.47 | 4,875.47 | C062 | Z6 | CONS | IRR | Bedding | bef |
| RHD4CZ6C062IRR1300 |  | Installing for HDPE Pipline 160 mm - (RD-C-6 /2)-Z6-C062-IRR | 6d | 2026-08-16 A | 2026-08-22 A | RHD4CZ6C062IRR1200, RHD4CZ9L05SL2400 | 100% |  |  |  |  | Unskilled Labor [111.84 h]; Plumber [55.87 h]; Equipment Opreator [55.87 h]; Boom Truck [55.87 h]; HDPE (160mm Diameter) - TSE - Depth: less than 1.5m [301.61 m]; HDPE (160mm Diameter) - TSE - Depth: more than 1.51m [39.93 m] | 43,127.21 | 43,127.21 | C062 | Z6 | CONS | IRR | Installation | bef |
| RHD4CZ6C062IRR1400 |  | Primary Test for HDPE Pipline 160 mm - (RD-C-6 /2)-Z6-C062-IRR | 2d | 2026-08-23 A | 2026-08-24 A | RHD4CZ6C062IRR1300 | 100% |  |  |  |  | Unskilled Labor [18.19 h]; Plumber [18.19 h]; Equipment Opreator [18.19 h]; Water Truck [18.19 h]; HDPE (160mm Diameter) - TSE - Depth: less than 1.5m [134.05 m]; HDPE (160mm Diameter) - TSE - Depth: more than 1.51m [19.96 m] | 19,501.86 | 19,501.86 | C062 | Z6 | CONS | IRR | Primary Test | bef |
| RHD4CZ6C062IRR1500 |  | Backfilling and warning tape works for HDPE Pipline 160 mm - (RD-C-6 /2)-Z6-C062-IRR | 5d | 2026-08-26 A | 2026-08-31 A | RHD4CZ6C062IRR1400, RHD4CZ4L09IRR1500 | 100% |  |  |  |  | Skilled labor [43.78 h]; Unskilled Labor [87.45 h]; Equipment Opreator [87.45 h]; Excavator-Poclain [43.78 h]; Dump Truck [43.78 h]; HDPE (160mm Diameter) - TSE - Depth: less than 1.5m [134.05 m]; HDPE (160mm Diameter) - TSE - Depth: more than 1.51m [19.96 m] | 19,501.86 | 19,501.86 | C062 | Z6 | CONS | IRR | Backfilling | bef |
|  | 5362 | **RHD4-02-002-C062-(IRR)-Wash out Valves** |  |  |  |  |  |  |  |  |  |  |  |  |  |  |  |  |  |  |
|  | 5363 | **RHD4-02-002-C062-(IRR)-Air Valve Chamber** |  | 2027-08-19 | 2027-08-29 |  |  |  |  |  |  |  |  |  |  |  |  |  |  |  |
| RHD4CZ6C062IRR2102 |  | Excavation and Bedding for Valve Chamber for Irrigation Network - (RD-C-6 /2)-Z6-C062-IRR | 2d | 2027-08-19 | 2027-08-22 | RHD4CZ6C062IRR1500, RHD4ENSDZ6APPIRR140 |  |  |  | -184.02d | 0d | Skilled labor [5.45 h]; Unskilled Labor [5.45 h]; Equipment Opreator [1.09 h]; Excavator-Poclain [0.54 h]; Dump Truck [0.54 h]; Air Valve chambers - TSE [0.25 nr] | 1,193 |  | C062 | Z6 | CONS | IRR | Excavation and Bedding | bef |
| RHD4CZ6C062IRR2202 |  | PC works for Valve Chamber for Irrigation Network - (RD-C-6 /2)-Z6-C062-IRR | 2d | 2027-08-22 | 2027-08-24 | RHD4CZ6C062IRR2102 |  |  |  | -184.02d | 0d | Skilled labor [5.45 h]; Unskilled Labor [10.89 h]; Equipment Opreator [0.54 h]; Concrete Pump [0.54 h]; Air Valve chambers - TSE [0.1 nr] | 477.2 |  | C062 | Z6 | CONS | IRR | PC Works | bef |
| RHD4CZ6C062IRR2302 |  | Installation for Valve Chamber for Irrigation Network - (RD-C-6 /2)-Z6-C062-IRR | 2d | 2027-08-24 | 2027-08-26 | RHD4CZ6C062IRR2202 |  |  |  | -184.02d | 0d | Skilled labor [5.45 h]; Unskilled Labor [10.89 h]; Equipment Opreator [1.09 h]; Boom Truck [1.09 h]; Air Valve chambers - TSE [0.55 nr] | 2,624.6 |  | C062 | Z6 | CONS | IRR | Installation | bef |
| RHD4CZ6C062IRR2402 |  | Backfilling works for Valve Chamber for Irrigation Network - (RD-C-6 /2)-Z6-C062-IRR | 2d | 2027-08-26 | 2027-08-29 | RHD4CZ6C062IRR2302 |  |  |  | -184.02d | 0d | Skilled labor [5.45 h]; Unskilled Labor [10.89 h]; Equipment Opreator [1.09 h]; Water Truck [0.54 h]; Dump Truck [0.54 h]; Air Valve chambers - TSE [0.1 nr] | 477.2 |  | C062 | Z6 | CONS | IRR | Backfilling Works | bef |
|  | 5364 | **RHD4-02-002-C062-(IRR)-Air Valves** |  | 2027-08-26 | 2027-08-31 |  |  |  |  |  |  |  |  |  |  |  |  |  |  |  |
| RHD4CZ6C062IRR3103 |  | Installation for Air Valves for Irrigation Network - (RD-C-6 /2)-Z6-C062-IRR | 2d | 2027-08-26 | 2027-08-29 | RHD4CZ6C062IRR2302 |  |  |  | -184.02d | 0d | Unskilled Labor [5.45 h]; Plumber [5.45 h]; Air valve diameter 50 mm - TSE [0.9 nr] | 4,427.1 |  | C062 | Z6 | CONS | IRR | Installation | bef |
| RHD4CZ6C062IRR3203 |  | Stem and Service box for Air Valves for Irrigation Network - (RD-C-6 /2)-Z6-C062-IRR | 2d | 2027-08-29 | 2027-08-31 | RHD4CZ6C062IRR3103, RHD4CZ6C062IRR2402 |  |  |  | -184.02d | 0.98d | Unskilled Labor [5.45 h]; Plumber [5.45 h]; Air valve diameter 50 mm - TSE [0.1 nr] | 491.9 |  | C062 | Z6 | CONS | IRR | Stem and Service box | bef |
|  | 5365 | **RHD4-02-002-C062-(IRR)-Concrete Encasement** |  |  |  |  |  |  |  |  |  |  |  |  |  |  |  |  |  |  |
|  | 6115 | **RHD4-02-002-C062-(IRR)-Gate Valves (Direct Buried)** |  | 2027-07-27 | 2027-08-01 |  |  |  |  |  |  |  |  |  |  |  |  |  |  |  |
| RHD4CZ6C062IRR3100 |  | Installation for Direct Buried Gate Valves - (RD-C-6 /2)-Z6-C062-IRR | 2d | 2027-07-27 | 2027-07-29 | RHD4CZ6C062IRR1100 SS |  |  |  | -154.02d | 0d | Unskilled Labor [16.34 h]; Plumber [16.34 h]; Gate valves dia 100 mm - TSE [2.7 nr] | 4,266 |  | C062 | Z6 | CONS | IRR | Installation | bef |
| RHD4CZ6C062IRR3200 |  | Stem and Service box for Direct Buried Gate Valves - (RD-C-6 /2)-Z6-C062-IRR | 2d | 2027-07-29 | 2027-08-01 | RHD4CZ6C062IRR3100 |  |  |  | -154.02d | 0d | Unskilled Labor [16.34 h]; Plumber [16.34 h]; Gate valves dia 100 mm - TSE [0.3 nr] | 474 |  | C062 | Z6 | CONS | IRR | Stem and Service box | bef |
|  | 5361 | **RHD4-02-002-C062-(IRR)-Wash out Chamber** |  |  |  |  |  |  |  |  |  |  |  |  |  |  |  |  |  |  |
|  | 5383 | **RHD4-02-002-Z6-C062-Medium Voltage Network - MV** |  | 2027-03-08 | 2027-05-05 |  |  |  |  |  |  |  |  |  |  |  |  |  |  |  |
|  | 5384 | **RHD4-02-002-C062-(MV)-Medium Voltage cable trench** |  | 2027-04-03 | 2027-04-20 |  |  |  |  |  |  |  |  |  |  |  |  |  |  |  |
| RHD4CZ6C062MV1100 |  | Excavation for Medium Voltage Trench - (RD-C-6 /2)-Z6-C062-MV | 8d | 2027-04-03 | 2027-04-11 | RHD4ENSDZ6APPMV150, RHD4CZ6C062RD3100, RHD4CZ6C062ST7400 |  |  |  | -172d | 0d | Skilled labor [80.8 h]; Unskilled Labor [161.72 h]; Equipment Opreator [242.53 h]; Excavator-Poclain [80.8 h]; Dump Truck [161.72 h]; Excavation for Trench size 120cm wide and 80cm deep (for 4 cables) [273.8 m3]; Excavation for Trench size 180cm wide and 80cm deep (for 6 cables) [245.81 m3] | 5,196.13 |  | C062 | Z6 | CONS | MV | Excavation | AFT |
| RHD4CZ6C062MV1200 |  | Trench Backfilling for Medium Voltage Network - (RD-C-6 /2)-Z6-C062-MV | 8d | 2027-04-12 | 2027-04-20 | RHD4CZ6C062MV1100 |  |  |  | -169d | 3d | Skilled labor [80.8 h]; Unskilled Labor [80.8 h]; Equipment Opreator [161.72 h]; Dump Truck [161.72 h]; Excavation for Trench size 120cm wide and 80cm deep (for 4 cables) [117.34 m3]; Excavation for Trench size 180cm wide and 80cm deep (for 6 cables) [105.35 m3] | 2,226.92 |  | C062 | Z6 | CONS | MV | Backfilling | AFT |

| ID | WBS | Activity | Duration | Start | Finish | Predecessors | Total float | Free float | Resources | Cost | RDH4-01-001-Road and Block Names-1 | RDH4-01-001-Zones-1 | RDH4-01-001-Phases-1 | RDH4-01-001-Networks-1 | RDH4-01-001-Work Method-1 | RDH4-01-001-MENEM |
| --- | --- | --- | --- | --- | --- | --- | --- | --- | --- | --- | --- | --- | --- | --- | --- | --- |
|  | 5385 | **RHD4-02-002-C062-(MV)-Medium Voltage duct banks** |  | 2027-03-08 | 2027-03-20 |  |  |  |  |  |  |  |  |  |  |  |
| RHD4CZ6C062MV2100 |  | Excavation of Duct Banks for Medium Voltage Network - (RD-C-6 /2)-Z6-C062-MV | 2d | 2027-03-08 | 2027-03-13 | RHD4CZ6C062RW3000, RHD4CZ6C062RD3100 | -167d | 0d | Unskilled Labor [11 h]; Equipment Opreator [21.89 h]; Excavator-Poclain [11 h]; Dump Truck [11 h]; Duct bank for MV cables UPVC (8xø150mm) [1.51 m] | 1,202.67 | C062 | Z6 | CONS | MV | Excavation | bef |
| RHD4CZ6C062MV2200 |  | Installation of Duct Banks for Medium Voltage Network - (RD-C-6 /2)-Z6-C062-MV | 2d | 2027-03-14 | 2027-03-15 | RHD4CZ6C062MV2100 | -167d | 0d | Unskilled Labor [16.44 h]; Equipment Opreator [32.89 h]; Excavator-Poclain [16.44 h]; Dump Truck [16.44 h]; Duct bank for MV cables UPVC (8xø150mm) [1.51 m] | 1,202.67 | C062 | Z6 | CONS | MV | Installing | bef |
| RHD4CZ6C062MV2300 |  | Pouring of Duct Banks for Medium Voltage Network - (RD-C-6 /2)-Z6-C062-MV | 2d | 2027-03-16 | 2027-03-17 | RHD4CZ6C062MV2200 | -167d | 0d | Unskilled Labor [11 h]; Equipment Opreator [21.89 h]; Excavator-Poclain [11 h]; Dump Truck [11 h]; Duct bank for MV cables UPVC (8xø150mm) [9.81 m] | 7,817.37 | C062 | Z6 | CONS | MV | Pouring | bef |
| RHD4CZ6C062MV2400 |  | Backfilling of Duct Banks for Medium Voltage Network - (RD-C-6 /2)-Z6-C062-MV | 2d | 2027-03-18 | 2027-03-20 | RHD4CZ6C062MV2300 | -167d | 10.02d | Unskilled Labor [8.17 h]; Equipment Opreator [16.44 h]; Excavator-Poclain [8.17 h]; Dump Truck [8.17 h]; Duct bank for MV cables UPVC (8xø150mm) [2.26 m] | 1,804.01 | C062 | Z6 | CONS | MV | Backfilling | bef |
|  | 5386 | **RHD4-02-002-C062-(MV)-Medium Voltage cables 3Cx 500 mm²** |  | 2027-04-12 | 2027-05-05 |  |  |  |  |  |  |  |  |  |  |  |
| RHD4CZ6C062MV3100 |  | Installation of Medium Voltage Cables 3Cx 500 mm² - (RD-C-6 /2)-Z6-C062-MV | 8d | 2027-04-12 | 2027-04-20 | RHD4CZ6C062MV1100, RHD4ENMSMV2000, RHD4ENMSMV2010 | -172d | 0d | Skilled labor [82.98 h]; Unskilled Labor [331.94 h]; Electrician [165.97 h]; Equipment Opreator [248.95 h]; Boom Truck [82.98 h]; Cable Laying Machine [165.97 h]; Cable 13.8 kV 3Cx 500 mm² Al/XLPE,/LLDPE / Unarmored [3429.09 m] | 545,224.74 | C062 | Z6 | CONS | MV | Installation | AFT |
| RHD4CZ6C062MV3200 |  | Joints Installation of Medium Voltage Cables 3Cx 500 mm² - (RD-C-6 /2)-Z6-C062-MV | 3d | 2027-04-21 | 2027-04-24 | RHD4CZ6C062MV3100 | -172d | 0d | Skilled labor [27.2 h]; Unskilled Labor [108.9 h]; Electrician [54.45 h]; Equipment Opreator [27.2 h]; Boom Truck [27.2 h]; Straight joints cables for 13.8 kv 3Cx 500 mm², Al /XLPE/LLDPE [5 Unit] | 16,240 | C062 | Z6 | CONS | MV | Joints Installation | AFT |
| RHD4CZ6C062MV3300 |  | Testing of Medium Voltage Cables 3Cx 500 mm² - (RD-C-6 /2)-Z6-C062-MV | 8d | 2027-04-25 | 2027-05-03 | RHD4CZ6C062MV3200, RHD4CZ6C062MV1200 | -172d | 0d | Skilled labor [82.98 h]; Unskilled Labor [331.94 h]; Electrician [165.97 h]; Cable 13.8 kV 3Cx 500 mm² Al/XLPE,/LLDPE / Unarmored [381.01 m] | 60,580.53 | C062 | Z6 | CONS | MV | Testing | AFT |
| RHD4CZ6C062MV3400 |  | Termination of Medium Voltage Cables 3Cx 500 mm² - (RD-C-6 /2)-Z6-C062-MV | 2d | 2027-05-04 | 2027-05-05 | RHD4CZ6C062MV3300 | -172d | 0d | Unskilled Labor [1.09 h]; Electrician [1.09 h]; Cable Termination for 13.8 kv 3Cx 500 mm², Al /XLPE/LLDPE [4.8 Unit] | 12,648 | C062 | Z6 | CONS | MV | Termination | AFT |
|  | 5387 | **RHD4-02-002-C062-(MV)-Medium Voltage cables 3Cx 50 mm²** |  | 2027-05-04 | 2027-05-05 |  |  |  |  |  |  |  |  |  |  |  |
| RHD4CZ6C062MV3401 |  | Termination of Medium Voltage Cables 3Cx 50 mm² - (RD-C-6 /2)-Z6-C062-MV | 2d | 2027-05-04 | 2027-05-05 | RHD4CZ6C062MV3400 SS, RHD4CZ6C062MV3300 | -172d | 0d | Unskilled Labor [17.42 h]; Electrician [8.71 h]; Cable Termination for 13.8 kv 3Cx 500 mm², Al /XLPE/LLDPE [1.2 Unit] | 3,162 | C062 | Z6 | CONS | MV | Termination | AFT |
|  | 5388 | **RHD4-02-002-C062-(MV)-Normally open Point (Outdoor Type)** |  |  |  |  |  |  |  |  |  |  |  |  |  |  |
|  | 5390 | **RHD4-02-002-Z6-C062-Low Voltage Network - LV** |  | 2027-08-19 | 2027-09-15 |  |  |  |  |  |  |  |  |  |  |  |
|  | 5391 | **RHD4-02-002-C062-(LV)-Low Voltage duct banks** |  | 2027-08-19 | 2027-08-30 |  |  |  |  |  |  |  |  |  |  |  |
| RHD4CZ6C062LV2100 |  | Excavation of Duct Banks for Low Voltage Network - (RD-C-6 /2)-Z6-C062-LV | 2d | 2027-08-19 | 2027-08-22 | RHD4CZ6C062RW3000, RHD4ENSDZ6APPLV160, RHD4CZ6C062MV2100 SS, RHD4CZ6C062IRR1500, RHD4CZ7A012ST7500 | -192.02d | 0d | Skilled labor [15.46 h]; Unskilled Labor [15.46 h]; Equipment Opreator [30.93 h]; Excavator-Poclain [15.46 h]; Dump Truck [15.46 h]; Duct bank for LV cables UPVC (2xø110mm) [2.13 m] | 430.44 | C062 | Z6 | CONS | LV | Excavation | bef |
| RHD4CZ6C062LV2200 |  | Installation of Duct Banks for Low Voltage Network - (RD-C-6 /2)-Z6-C062-LV | 3d | 2027-08-22 | 2027-08-25 | RHD4CZ6C062LV2100 | -192.02d | 0d | Carpenter [2.29 h]; Skilled labor [23.2 h]; Unskilled Labor [23.2 h]; Steel Fixer [2.29 h]; Duct bank for LV cables UPVC (2xø110mm) [2.13 m] | 430.44 | C062 | Z6 | CONS | LV | Installing | bef |
| RHD4CZ6C062LV2300 |  | Pouring of Duct Banks for Low Voltage Network - (RD-C-6 /2)-Z6-C062-LV | 2d | 2027-08-25 | 2027-08-28 | RHD4CZ6C062LV2200 | -192.02d | 0d | Skilled labor [15.46 h]; Unskilled Labor [15.46 h]; Equipment Opreator [6.21 h]; Concrete Mixer Truck [3.05 h]; Concrete Pump [3.05 h]; Duct bank for LV cables UPVC (2xø110mm) [13.85 m] | 2,797.87 | C062 | Z6 | CONS | LV | Pouring | bef |
| RHD4CZ6C062LV2400 |  | Backfilling of Duct Banks for Low Voltage Network - (RD-C-6 /2)-Z6-C062-LV | 2d | 2027-08-28 | 2027-08-30 | RHD4CZ6C062LV2300 | -190.02d | 2d | Skilled labor [11.65 h]; Unskilled Labor [11.65 h]; Equipment Opreator [4.68 h]; Excavator-Poclain [4.68 h]; Duct bank for LV cables UPVC (2xø110mm) [3.2 m] | 646.4 | C062 | Z6 | CONS | LV | Backfilling | bef |
|  | 5392 | **RHD4-02-002-C062-(LV)-Low Voltage Drawpit** |  | 2027-08-28 | 2027-09-01 |  |  |  |  |  |  |  |  |  |  |  |
| RHD4CZ6C062LV5100 |  | Excavation of Drawpit size 900x900x1000mm for Low Voltage Network - (RD-C-6 /2)-Z6-C062-LV | 2d | 2027-08-28 | 2027-08-30 | RHD4CZ6C062LV2300, RHD4ENSDZ6APPLV160 | -192.02d | 0d | Skilled labor [3.59 h]; Unskilled Labor [3.59 h]; Equipment Opreator [2.94 h]; Excavator-Poclain [1.42 h]; Dump Truck [1.42 h]; Drawpit with medium duty steel cover, size900x900x1000mm, [0.6 Unit] | 2,206.2 | C062 | Z6 | CONS | LV | Excavation | AFT |
| RHD4CZ6C062LV5200 |  | Installation of Drawpit size 900x900x1000mm for Low Voltage Network - (RD-C-6 /2)-Z6-C062-LV | 2d | 2027-08-30 | 2027-09-01 | RHD4CZ6C062LV5100, RHD4PRSHLDOSLV1400, RHD4PRSHLSTAGLV1400 | -192.02d | 0d | Skilled labor [3.59 h]; Unskilled Labor [3.59 h]; Equipment Opreator [1.42 h]; Boom Truck [1.42 h]; Drawpit with medium duty steel cover, size900x900x1000mm, [3.4 Unit] | 12,501.8 | C062 | Z6 | CONS | LV | Installation | AFT |
|  | 5393 | **RHD4-02-002-C062-(LV)-Low Voltage cables** |  | 2027-09-01 | 2027-09-15 |  |  |  |  |  |  |  |  |  |  |  |
| RHD4CZ6C062LV3100 |  | Excavation for Low Voltage Cables for Low Voltage Network - (RD-C-6 /2)-Z6-C062-LV | 4d | 2027-09-01 | 2027-09-06 | RHD4CZ6C062LV2400, RHD4ENSDZ6APPLV160, RHD4CZ6C062LV5200 | -192.02d | 0d | Skilled labor [39.1 h]; Unskilled Labor [78.19 h]; Equipment Opreator [78.19 h]; Excavator-Poclain [39.1 h]; Boom Truck [39.1 h]; Cable, Copper 3x10mm2/ CU/XLPE/SWA/PVC [179.5 m] | 7,000.5 | C062 | Z6 | CONS | LV | Excavation | AFT |
| RHD4CZ6C062LV3200 |  | Cable Laying of Low Voltage Cables for Low Voltage Network - (RD-C-6 /2)-Z6-C062-LV | 3d | 2027-09-06 | 2027-09-09 | RHD4CZ6C062LV3100, RHD4ENMSLV2000, RHD4ENMSLV2010 | -192.02d | 0d | Skilled labor [32.56 h]; Unskilled Labor [130.36 h]; Electrician [65.12 h]; Equipment Opreator [97.69 h]; Boom Truck [32.56 h]; Cable Laying Machine [65.12 h]; Cable, Copper 3x10mm2/ CU/XLPE/SWA/PVC [538.49 m] | 21,001.13 | C062 | Z6 | CONS | LV | Cable Laying | AFT |
| RHD4CZ6C062LV3300 |  | Warning tape and Backfill for Low Voltage Cables for Low Voltage Network - (RD-C-6 /2)-Z6-C062-LV | 3d | 2027-09-09 | 2027-09-13 | RHD4CZ6C062LV3200 | -192.02d | 0d | Skilled labor [32.56 h]; Unskilled Labor [130.36 h]; Electrician [65.12 h]; Equipment Opreator [32.56 h]; Boom Truck [32.56 h]; Cable, Copper 3x10mm2/ CU/XLPE/SWA/PVC [134.62 m] | 5,250.28 | C062 | Z6 | CONS | LV | Warning tape and Backfill | AFT |
| RHD4CZ6C062LV3400 |  | Testing of Low Voltage Cables for Low Voltage Network - (RD-C-6 /2)-Z6-C062-LV | 2d | 2027-09-13 | 2027-09-15 | RHD4CZ6C062LV3300 | -192.02d | 0d | Skilled labor [19.49 h]; Unskilled Labor [78.19 h]; Electrician [39.1 h]; Equipment Opreator [19.49 h]; Boom Truck [19.49 h]; Cable, Copper 3x10mm2/ CU/XLPE/SWA/PVC [44.87 m] | 1,750.09 | C062 | Z6 | CONS | LV | Testing | AFT |

| ID | WBS | Activity | Duration | Start | Finish | Predecessors | Total float | Free float | Resources | Cost | RDH4-01-001-Road and Block Names-1 | RDH4-01-001-Zones-1 | RDH4-01-001-Phases-1 | RDH4-01-001-Networks-1 | RDH4-01-001-Work Method-1 | RDH4-01-001-MENEM |
| --- | --- | --- | --- | --- | --- | --- | --- | --- | --- | --- | --- | --- | --- | --- | --- | --- |
|  | 4259 | **RHD4-02-002-C062-(LV)-Low Voltage Distribution Pillars** |  |  |  |  |  |  |  |  |  |  |  |  |  |  |
|  | 5396 | **RHD4-02-002-Z6-C062-Street Lighting Network - SL** |  | 2027-09-15 | 2027-10-17 |  |  |  |  |  |  |  |  |  |  |  |
|  | 5399 | **RHD4-02-002-C062-(SL)-Street Lighting cables** |  | 2027-09-15 | 2027-09-29 |  |  |  |  |  |  |  |  |  |  |  |
| RHD4CZ6C062SL3100 |  | Excavation for Street Lighting Cables for Street Lighting Network - (RD-C-6 /2)-Z6-C062-SL | 3d | 2027-09-15 | 2027-09-19 | RHD4ENSDZ6APPSL170, RHD4CZ6C062LV3400 | -191.02d | 0d | Skilled labor [28.75 h]; Unskilled Labor [57.5 h]; Equipment Opreator [57.5 h]; Excavator-Poclain [28.75 h]; Boom Truck [28.75 h]; Cable, Copper 4x10mm2/ CU/XLPE/SWA/PVC + 1x10mm2 CU/PVC [131.96 m] | 6,466 | C062 | Z6 | CONS | SL | Excavation | AFT |
| RHD4CZ6C062SL3200 |  | Cable Laying of Street Lighting Cables for Street Lighting Network - (RD-C-6 /2)-Z6-C062-SL | 3d | 2027-09-19 | 2027-09-22 | RHD4CZ6C062SL3100, RHD4PRSHLDOSSL1100, RHD4ENMSSL2000, RHD4ENMSSL2010, RHD4PRSHLSTAGSL1100 | -191.02d | 0d | Skilled labor [23.96 h]; Unskilled Labor [95.84 h]; Electrician [47.92 h]; Equipment Opreator [71.88 h]; Boom Truck [23.96 h]; Cable Laying Machine [47.92 h]; Cable, Copper 4x10mm2/ CU/XLPE/SWA/PVC + 1x10mm2 CU/PVC [395.88 m] | 19,397.99 | C062 | Z6 | CONS | SL | Cable Laying | AFT |
| RHD4CZ6C062SL3300 |  | Warning tape and Backfill for Street Lighting Cables for Street Lighting Network - (RD-C-6 /2)-Z6-C062-SL | 3d | 2027-09-22 | 2027-09-27 | RHD4CZ6C062SL3200 | -191.02d | 0d | Skilled labor [23.96 h]; Unskilled Labor [95.84 h]; Electrician [47.92 h]; Equipment Opreator [23.96 h]; Boom Truck [23.96 h]; Cable, Copper 4x10mm2/ CU/XLPE/SWA/PVC + 1x10mm2 CU/PVC [98.97 m] | 4,849.5 | C062 | Z6 | CONS | SL | Warning tape and Backfill | AFT |
| RHD4CZ6C062SL3400 |  | Testing of Street Lighting Cables for Street Lighting Network - (RD-C-6 /2)-Z6-C062-SL | 2d | 2027-09-27 | 2027-09-29 | RHD4CZ6C062SL3300 | -191.02d | 0d | Skilled labor [14.4 h]; Unskilled Labor [57.5 h]; Electrician [28.75 h]; Equipment Opreator [14.4 h]; Boom Truck [14.4 h]; Cable, Copper 4x10mm2/ CU/XLPE/SWA/PVC + 1x10mm2 CU/PVC [32.99 m] | 1,616.5 | C062 | Z6 | CONS | SL | Testing | AFT |
|  | 5400 | **RHD4-02-002-C062-(SL)-Street Lighting Poles** |  | 2027-09-29 | 2027-10-17 |  |  |  |  |  |  |  |  |  |  |  |
| RHD4CZ6C062SL1100 |  | Excavation for RC Base for Lighting Poles for Street Lighting Network - (RD-C-6 /2)-Z6-C062-SL | 2d | 2027-09-29 | 2027-10-02 | RHD4ENSDZ6APPSL170, RHD4CZ6C062SL3400 | -191.02d | 0d | Skilled labor [16.66 h]; Unskilled Labor [16.66 h]; Equipment Opreator [33.43 h]; Excavator-Poclain [16.66 h]; Dump Truck [16.66 h]; Lighting polesdouble arms, height of ( 12 ) meters [2.3 Unit] | 10,515.6 | C062 | Z6 | CONS | SL | Excavation | AFT |
| RHD4CZ6C062SL1200 |  | Installation for RC Base for Lighting Poles for Street Lighting Network - (RD-C-6 /2)-Z6-C062-SL | 2d | 2027-10-02 | 2027-10-04 | RHD4CZ6C062SL1100 | -191.02d | 0d | Skilled labor [16.66 h]; Unskilled Labor [16.66 h]; Equipment Opreator [33.43 h]; Excavator-Poclain [16.66 h]; Dump Truck [16.66 h]; Lighting polesdouble arms, height of ( 12 ) meters [5.75 Unit] | 26,289 | C062 | Z6 | CONS | SL | RC Base | AFT |
| RHD4CZ6C062SL1300 |  | Backfill for RC Base for Lighting Poles for Street Lighting Network - (RD-C-6 /2)-Z6-C062-SL | 2d | 2027-10-04 | 2027-10-06 | RHD4CZ6C062SL1200 | -191.02d | 0d | Skilled labor [16.66 h]; Unskilled Labor [16.66 h]; Equipment Opreator [33.43 h]; Excavator-Poclain [16.66 h]; Dump Truck [16.66 h]; Lighting polesdouble arms, height of ( 12 ) meters [1.15 Unit] | 5,257.8 | C062 | Z6 | CONS | SL | Backfill | AFT |
| RHD4CZ6C062SL1400 |  | Installation for Lighting Poles for Street Lighting Network - (RD-C-6 /2)-Z6-C062-SL | 3d | 2027-10-06 | 2027-10-10 | RHD4CZ6C062SL1300, RHD4PRSHLDOSSL1200, RHD4ENMSSL2000, RHD4ENMSSL2010, RHD4CZ6C062LV3400 | -191.02d | 0d | Skilled labor [25.05 h]; Unskilled Labor [25.05 h]; Electrician [25.05 h]; Equipment Opreator [25.05 h]; Boom Truck [25.05 h]; Lighting polesdouble arms, height of ( 12 ) meters [13.8 Unit] | 63,093.6 | C062 | Z6 | CONS | SL | Poles Installation | AFT |
| RHD4CZ6C062SL1500 |  | Luminaire Installation for Lighting Poles for Street Lighting Network - (RD-C-6 /2)-Z6-C062-SL | 4d | 2027-10-12 | 2027-10-17 | RHD4CZ6C062SL1400, RHD4CZ6C062SL6100 | -191.02d | 0d | Unskilled Labor [66.76 h]; Electrician [33.43 h]; Equipment Opreator [13.4 h]; Boom Truck [13.4 h]; Street Lighting( LED) Luminaire of Output ?18553 lumen [46 Unit] | 29,302 | C062 | Z6 | CONS | SL | Luminaire Installation | AFT |
|  | 5402 | **RHD4-02-002-C062-(SL)-Street Lighting Earthing System** |  | 2027-10-10 | 2027-10-12 |  |  |  |  |  |  |  |  |  |  |  |
| RHD4CZ6C062SL6100 |  | Installation of Earthing for Lighting Poles and Fedder Pillers for Street Lighting Network - (RD-C-6 /2)-Z6-C062-SL | 2d | 2027-10-10 | 2027-10-12 | RHD4CZ6C062SL1400, RHD4ENMSER2000, RHD4ENMSER2010 | -191.02d | 0d | Skilled labor [0.8 h]; Unskilled Labor [0.8 h]; Equipment Opreator [1.42 h]; Excavator-Poclain [0.8 h]; Dump Truck [0.8 h]; Including lighting poles circuits - ER [1 Unit] | 613 | C062 | Z6 | CONS | SL | Installation | AFT |
|  | 5408 | **RHD4-02-002-Z6-C062-Telecommunications Network - TC** |  | 2027-08-19 | 2027-11-30 |  |  |  |  |  |  |  |  |  |  |  |
|  | 5409 | **RHD4-02-002-C062-(TC)-Telecommunications Ducts** |  | 2027-10-17 | 2027-11-30 |  |  |  |  |  |  |  |  |  |  |  |
| RHD4CZ6C062TC2100 |  | Excavation of HDPE Ducts for Telecom Network - (RD-C-6 /2)-Z6-C062-TC | 11d | 2027-10-17 | 2027-10-30 | RHD4ENSDZ6APPTC190, RHD4CZ6C062SL1500 | -191.02d | 0d | Skilled labor [109.12 h]; Unskilled Labor [109.12 h]; Equipment Opreator [218.24 h]; Excavator-Poclain [109.12 h]; Dump Truck [109.12 h]; (6*50mm) HDPE ducts -TC [104.26 m]; (6*50mm+2*32mm) HDPE ducts -TC [76.5 m]; (6*50mm+4*32mm) HDPE ducts -TC [91.6 m]; (2*32mm) HDPE ducts -TC [28.28 m] | 29,375.3 | C062 | Z6 | CONS | TC | Excavation | AFT |
| RHD4CZ6C062TC2200 |  | Installation of HDPE Ducts for Telecom Network - (RD-C-6 /2)-Z6-C062-TC | 16d | 2027-10-30 | 2027-11-17 | RHD4CZ6C062TC2100 | -191.02d | 0d | Carpenter [16.34 h]; Skilled labor [163.68 h]; Unskilled Labor [163.68 h]; Steel Fixer [16.34 h]; (6*50mm) HDPE ducts -TC [338.85 m]; (6*50mm+2*32mm) HDPE ducts -TC [248.62 m]; (6*50mm+4*32mm) HDPE ducts -TC [297.7 m]; (2*32mm) HDPE ducts -TC [91.91 m] | 95,469.73 | C062 | Z6 | CONS | TC | Installing | AFT |
| RHD4CZ6C062TC2400 |  | Backfilling of HDPE Ducts for Telecom Network - (RD-C-6 /2)-Z6-C062-TC | 11d | 2027-11-17 | 2027-11-30 | RHD4CZ6C062TC2200, RHD4CZ6C062TC5200 | -191.02d | 0d | Skilled labor [109.12 h]; Unskilled Labor [109.12 h]; Equipment Opreator [43.67 h]; Excavator-Poclain [43.67 h]; (6*50mm) HDPE ducts -TC [78.19 m]; (6*50mm+2*32mm) HDPE ducts -TC [57.38 m]; (6*50mm+4*32mm) HDPE ducts -TC [68.7 m]; (2*32mm) HDPE ducts -TC [21.21 m] | 22,031.47 | C062 | Z6 | CONS | TC | Backfilling | AFT |
|  | 5410 | **RHD4-02-002-C062-(TC)-Telecommunications Manholes** |  | 2027-10-30 | 2027-11-08 |  |  |  |  |  |  |  |  |  |  |  |
| RHD4CZ6C062TC5100 |  | Excavation for Manholes for Telecom Network - (RD-C-6 /2)-Z6-C062-TC | 4d | 2027-10-30 | 2027-11-03 | RHD4CZ6C062TC2100, RHD4ENSDZ6APPTC190 | -183.02d | 0d | Skilled labor [13.6 h]; Unskilled Labor [13.6 h]; Equipment Opreator [10.89 h]; Excavator-Poclain [5.45 h]; Dump Truck [5.45 h]; Manhole Type 1 - TC [0.9 nr]; Manhole Type 2 - TC [0.3 nr] | 8,089.2 | C062 | Z6 | CONS | TC | Excavation | AFT |
| RHD4CZ6C062TC5200 |  | Installation of Manholes for Telecom Network - (RD-C-6 /2)-Z6-C062-TC | 4d | 2027-11-03 | 2027-11-08 | RHD4CZ6C062TC5100, RHD4CZ6C062TC2200 SS | -183.02d | 8d | Skilled labor [13.6 h]; Unskilled Labor [13.6 h]; Equipment Opreator [5.45 h]; Boom Truck [5.45 h]; Manhole Type 1 - TC [5.1 nr]; Manhole Type 2 - TC [1.7 nr] | 45,838.8 | C062 | Z6 | CONS | TC | Installation | AFT |
|  | 5411 | **RHD4-02-002-C062-(TC)-Telecomminications Road Crossings** |  | 2027-08-19 | 2027-08-29 |  |  |  |  |  |  |  |  |  |  |  |
| RHD4CZ6C062TC3100 |  | Excavation for Road Crossings for Telecom Network - (RD-C-6 /2)-Z6-C062-TC | 2d | 2027-08-19 | 2027-08-22 | RHD4ENSDZ6APPTC190, RHD4CZ6C062LV2100 SS | -190.02d | 0d | Skilled labor [9.37 h]; Unskilled Labor [9.37 h]; Equipment Opreator [18.73 h]; Excavator-Poclain [9.37 h]; Dump Truck [9.37 h]; Road crossing ducts, (6*50mm) HDPE -TC [1.72 m] | 65.36 | C062 | Z6 | CONS | TC | Excavation | bef |
| RHD4CZ6C062TC3200 |  | Installation of Road Crossings for Telecom Network - (RD-C-6 /2)-Z6-C062-TC | 2d | 2027-08-22 | 2027-08-24 | RHD4CZ6C062TC3100, RHD4PRSHLDOSTC1100, RHD4PRSHLSTAGTC1100 | -190.02d | 0d | Carpenter [1.2 h]; Skilled labor [12.52 h]; Unskilled Labor [12.52 h]; Steel Fixer [1.2 h]; Road crossing ducts, (6*50mm) HDPE -TC [1.72 m] | 65.36 | C062 | Z6 | CONS | TC | Installing | bef |
| RHD4CZ6C062TC3300 |  | Pouring of Road Crossings for Telecom Network - (RD-C-6 /2)-Z6-C062-TC | 2d | 2027-08-24 | 2027-08-26 | RHD4CZ6C062TC3200 | -190.02d | 0d | Skilled labor [12.52 h]; Unskilled Labor [12.52 h]; Equipment Opreator [5.01 h]; Concrete Mixer Truck [2.5 h]; Concrete Pump [2.5 h]; Road crossing ducts, (6*50mm) HDPE -TC [11.18 m] | 424.84 | C062 | Z6 | CONS | TC | Pouring | bef |
| RHD4CZ6C062TC3400 |  | Backfilling of Road Crossings for Telecom Network - (RD-C-6 /2)-Z6-C062-TC | 2d | 2027-08-26 | 2027-08-29 | RHD4CZ6C062TC3300, RHD4CZ9C071PT3203 | -190.02d | 0d | Skilled labor [9.37 h]; Unskilled Labor [9.37 h]; Equipment Opreator [3.7 h]; Excavator-Poclain [3.7 h]; Road crossing ducts, (6*50mm) HDPE -TC [2.58 m] | 98.04 | C062 | Z6 | CONS | TC | Backfilling | bef |

| ID | WBS | Activity | Duration | Start | Finish | Predecessors | Complete | Planned start | Planned finish | Total float | Free float | Resources | Cost | Actual cost | RDH4-01-001-Road and Block Names-1 | RDH4-01-001-Zones-1 | RDH4-01-001-Phases-1 | RDH4-01-001-Networks-1 | RDH4-01-001-Work Method-1 | RDH4-01-001-MENEM |
| --- | --- | --- | --- | --- | --- | --- | --- | --- | --- | --- | --- | --- | --- | --- | --- | --- | --- | --- | --- | --- |
|  | 5412 | **RHD4-02-002-Z6-C062-Information and Communication Technologies - ICT** |  | 2027-08-19 | 2028-01-10 |  |  |  |  |  |  |  |  |  |  |  |  |  |  |  |
|  | 5413 | **RHD4-02-002-C062-(ICT)-Information and Communication Technologies Ducts** |  | 2027-11-30 | 2028-01-10 |  |  |  |  |  |  |  |  |  |  |  |  |  |  |  |
| RHD4CZ6C062ICT2100 |  | Excavation of HDPE Ducts for ICT Network - (RD-C-6 /2)-Z6-C062-ICT | 10d | 2027-11-30 | 2027-12-12 | RHD4ENSDZ6APPICT200, RHD4CZ6C062TC3100 SS, RHD4CZ6C062TC2400 |  |  |  | -190.02d | 0d | Skilled labor [103.02 h]; Unskilled Labor [103.02 h]; Equipment Opreator [206.05 h]; Excavator-Poclain [103.02 h]; Dump Truck [103.02 h]; (2*50mm) HDPE ducts -ICT [90.46 m]; (2*50mm+2*32mm) HDPE ducts -ICT [112.46 m]; (2*50mm+4*32mm) HDPE ducts -ICT [51.54 m]; (2*32mm) HDPE ducts -ICT [29.36 m] | 16,965.28 |  | C062 | Z6 | CONS | ICT | Excavation | AFT |
| RHD4CZ6C062ICT2200 |  | Installation of HDPE Ducts for ICT Network - (RD-C-6 /2)-Z6-C062-ICT | 15d | 2027-12-12 | 2027-12-29 | RHD4CZ6C062ICT2100 |  |  |  | -190.02d | 0d | Carpenter [15.46 h]; Skilled labor [154.53 h]; Unskilled Labor [154.53 h]; Steel Fixer [15.46 h]; (2*50mm) HDPE ducts -ICT [294 m]; (2*50mm+2*32mm) HDPE ducts -ICT [365.5 m]; (2*50mm+4*32mm) HDPE ducts -ICT [167.5 m]; (2*32mm) HDPE ducts -ICT [95.42 m] | 55,137.71 |  | C062 | Z6 | CONS | ICT | Installing | AFT |
| RHD4CZ6C062ICT2400 |  | Backfilling of HDPE Ducts for ICT Network - (RD-C-6 /2)-Z6-C062-ICT | 10d | 2027-12-29 | 2028-01-10 | RHD4CZ6C062ICT2200, RHD4CZ6C062ICT5200 |  |  |  | -190.02d | 0d | Skilled labor [103.02 h]; Unskilled Labor [103.02 h]; Equipment Opreator [41.17 h]; Excavator-Poclain [41.17 h]; (2*50mm) HDPE ducts -ICT [67.84 m]; (2*50mm+2*32mm) HDPE ducts -ICT [84.34 m]; (2*50mm+4*32mm) HDPE ducts -ICT [38.66 m]; (2*32mm) HDPE ducts -ICT [22.02 m] | 12,723.96 |  | C062 | Z6 | CONS | ICT | Backfilling | AFT |
|  | 5414 | **RHD4-02-002-C062-(ICT)-Information and Communication Technologies Manholes** |  | 2027-12-12 | 2027-12-21 |  |  |  |  |  |  |  |  |  |  |  |  |  |  |  |
| RHD4CZ6C062ICT5100 |  | Excavation for Manholes for ICT Network - (RD-C-6 /2)-Z6-C062-ICT | 4d | 2027-12-12 | 2027-12-16 | RHD4CZ6C062ICT2100, RHD4ENSDZ6APPICT200 |  |  |  | -183.02d | 0d | Skilled labor [13.6 h]; Unskilled Labor [13.6 h]; Equipment Opreator [10.89 h]; Excavator-Poclain [5.45 h]; Dump Truck [5.45 h]; Manhole Type 1 - ICT [0.9 nr]; Manhole Type 2 - ICT [0.3 nr] | 6,471.6 |  | C062 | Z6 | CONS | ICT | Excavation | AFT |
| RHD4CZ6C062ICT5200 |  | Installation of Manholes for ICT Network - (RD-C-6 /2)-Z6-C062-ICT | 4d | 2027-12-16 | 2027-12-21 | RHD4CZ6C062ICT5100, RHD4PRSHLDOSICT1200, RHD4PRSHLSTAGICT1200 |  |  |  | -183.02d | 7d | Skilled labor [13.6 h]; Unskilled Labor [13.6 h]; Equipment Opreator [5.45 h]; Boom Truck [5.45 h]; Manhole Type 1 - ICT [5.1 nr]; Manhole Type 2 - ICT [1.7 nr] | 36,672.4 |  | C062 | Z6 | CONS | ICT | Installation | AFT |
|  | 5415 | **RHD4-02-002-C062-(ICT)-Information and Communication Technologies Road Crossings** |  | 2027-08-19 | 2027-08-31 |  |  |  |  |  |  |  |  |  |  |  |  |  |  |  |
| RHD4CZ6C062ICT3100 |  | Excavation for Road Crossings for ICT Network - (RD-C-6 /2)-Z6-C062-ICT | 2d | 2027-08-19 | 2027-08-22 | RHD4CZ6C062TC3100 SS, RHD4ENSDZ6APPICT200 |  |  |  | -188.02d | 2d | Skilled labor [9.37 h]; Unskilled Labor [9.37 h]; Equipment Opreator [18.73 h]; Excavator-Poclain [9.37 h]; Dump Truck [9.37 h]; Road crossing ducts, (2*50mm) HDPE -ICT [1.72 m] | 65.36 |  | C062 | Z6 | CONS | ICT | Excavation | bef |
| RHD4CZ6C062ICT3200 |  | Installation of Road Crossings for ICT Network - (RD-C-6 /2)-Z6-C062-ICT | 2d | 2027-08-24 | 2027-08-26 | RHD4CZ6C062ICT3100, RHD4CZ6C062TC3200, RHD4PRSHLDOSICT1100, RHD4PRSHLSTAGICT1100 |  |  |  | -190.02d | 0d | Carpenter [1.2 h]; Skilled labor [12.52 h]; Unskilled Labor [12.52 h]; Steel Fixer [1.2 h]; Road crossing ducts, (2*50mm) HDPE -ICT [1.72 m] | 65.36 |  | C062 | Z6 | CONS | ICT | Installing | bef |
| RHD4CZ6C062ICT3300 |  | Pouring of Road Crossings for ICT Network - (RD-C-6 /2)-Z6-C062-ICT | 2d | 2027-08-26 | 2027-08-29 | RHD4CZ6C062ICT3200, RHD4CZ6C062TC3300 |  |  |  | -190.02d | 0d | Skilled labor [12.52 h]; Unskilled Labor [12.52 h]; Equipment Opreator [5.01 h]; Concrete Mixer Truck [2.5 h]; Concrete Pump [2.5 h]; Road crossing ducts, (2*50mm) HDPE -ICT [11.18 m] | 424.84 |  | C062 | Z6 | CONS | ICT | Pouring | bef |
| RHD4CZ6C062ICT3400 |  | Backfilling of Road Crossings for ICT Network - (RD-C-6 /2)-Z6-C062-ICT | 2d | 2027-08-29 | 2027-08-31 | RHD4CZ6C062ICT3300, RHD4CZ6C062TC3400 |  |  |  | -190.02d | 3.98d | Skilled labor [9.37 h]; Unskilled Labor [9.37 h]; Equipment Opreator [3.7 h]; Excavator-Poclain [3.7 h]; Road crossing ducts, (2*50mm) HDPE -ICT [2.58 m] | 98.04 |  | C062 | Z6 | CONS | ICT | Backfilling | bef |
|  | 5403 | **RHD4-02-002-Z6-C062-Landscape Network - LS** |  |  |  |  |  |  |  |  |  |  |  |  |  |  |  |  |  |  |
|  | 5404 | **RHD4-02-002-C062-(LS)-Landscape Lighting cables** |  |  |  |  |  |  |  |  |  |  |  |  |  |  |  |  |  |  |
|  | 5406 | **RHD4-02-002-C062-(LS)-Landscape Bollard Poles** |  |  |  |  |  |  |  |  |  |  |  |  |  |  |  |  |  |  |
|  | 5416 | **RHD4-02-002-Z6-C062-Security Network - CCTV** |  |  |  |  |  |  |  |  |  |  |  |  |  |  |  |  |  |  |
|  | 5417 | **RHD4-02-002-C062-(CCTV)-Civil Works** |  |  |  |  |  |  |  |  |  |  |  |  |  |  |  |  |  |  |
|  | 4851 | **RHD4-02-002-C062-(CCTV)-CCTV Poles** |  |  |  |  |  |  |  |  |  |  |  |  |  |  |  |  |  |  |
|  | 4852 | **RHD4-02-002-C062-(CCTV)-Camera** |  |  |  |  |  |  |  |  |  |  |  |  |  |  |  |  |  |  |
|  | 4853 | **RHD4-02-002-C062-(CCTV)-Power and Infrastructure** |  |  |  |  |  |  |  |  |  |  |  |  |  |  |  |  |  |  |
|  | 4855 | **RHD4-02-002-C062-(CCTV)-CCTV Panels and Components** |  |  |  |  |  |  |  |  |  |  |  |  |  |  |  |  |  |  |
|  | 4677 | **RHD4-02-002-Z6-A015** |  | 2026-05-30 | 2028-02-01 |  |  |  |  |  |  |  |  |  |  |  |  |  |  |  |
|  | 4752 | **RHD4-02-002-Z6-A015-Crossings Potable Network - PTCr** |  |  |  |  |  |  |  |  |  |  |  |  |  |  |  |  |  |  |
|  | 4755 | **RHD4-02-002-A015-(PTCr)-HDPE Pipes - 200 mm diameter** |  |  |  |  |  |  |  |  |  |  |  |  |  |  |  |  |  |  |
|  | 4765 | **RHD4-02-002-A015-(PTCr)-Fire Hydrant** |  |  |  |  |  |  |  |  |  |  |  |  |  |  |  |  |  |  |
|  | 4799 | **RHD4-02-002-Z6-A015-Crossings Irrigation Network - IRRC** |  |  |  |  |  |  |  |  |  |  |  |  |  |  |  |  |  |  |
|  | 4800 | **RHD4-02-002-A015-(IRRC)-HDPE Pipes - 160 mm diameter** |  |  |  |  |  |  |  |  |  |  |  |  |  |  |  |  |  |  |
|  | 4856 | **RHD4-02-002-Z6-A015-Road Works - RD** |  | 2026-06-02 | 2028-02-01 |  |  |  |  |  |  |  |  |  |  |  |  |  |  |  |
|  | 4857 | **RHD4-02-002-A015-(RD)-Subgrade** |  | 2026-06-02 | 2026-06-21 |  |  |  |  |  |  |  |  |  |  |  |  |  |  |  |
| RHD4CZ6A015RD1100 |  | Supply, lay and compaction subgrade compacted thickness 300 mm for Roads - (RD-A-1 /5)-Z6-A015-RD | 4d | 2026-06-02 A | 2026-06-21 A | RHD4ENSDZ6APPRD220, RHD4ENSDZ6APPEW100 SS, RHD4CZ6A015ST3301, RHD4CZ6A015ST1503, RHD4CZ6A015TC3400, RHD4CZ6A015ICT3400 | 100% | 2026-08-24 | 2026-08-27 |  |  | Skilled labor [124.37 h]; Unskilled Labor [248.84 h]; Electrician [124.37 h]; Equipment Opreator [849.77 h]; Water Truck [41.06 h]; Roller compactor [62.18 h]; Grader [124.37 h]; Dump Truck [622.06 h]; Subgrade [5983.67 m3] | 113,689.73 | 113,689.73 | A015 | Z6 | CONS | RD | Subgrade | bef |

| ID | WBS | Activity | Duration | Start | Finish | Predecessors | Complete | Planned start | Planned finish | Total float | Free float | Resources | Cost | Actual cost | RDH4-01-001-Road and Block Names-1 | RDH4-01-001-Zones-1 | RDH4-01-001-Phases-1 | RDH4-01-001-Networks-1 | RDH4-01-001-Work Method-1 | RDH4-01-001-MENEM |
| --- | --- | --- | --- | --- | --- | --- | --- | --- | --- | --- | --- | --- | --- | --- | --- | --- | --- | --- | --- | --- |
|  | 4858 | **RHD4-02-002-A015-(RD)-Aggregate Base Course** |  | 2026-08-29 | 2026-09-24 |  |  |  |  |  |  |  |  |  |  |  |  |  |  |  |
| RHD4CZ6A015RD2100 |  | Supply, lay and compaction Aggregate base course compacted thickness 300 mmfor Roads - (RD-A-1 /5)-Z6-A015-RD | 4d | 2026-08-29 A | 2026-09-24 A | RHD4PRSHLDOSRD1000, RHD4PRSHLSTAGRD1000, RHD4CZ6A015RD1100 | 100% | 2026-08-29 | 2026-09-01 |  |  | Skilled labor [46.07 h]; Unskilled Labor [92.13 h]; Equipment Opreator [583.4 h]; Water Truck [30.4 h]; Roller compactor [92.13 h]; Grader [92.13 h]; Dump Truck [368.64 h]; Aggregate Base Courses [3758.35 m3] | 214,225.95 | 214,225.95 | A015 | Z6 | CONS | RD | ABC | bef |
|  | 4859 | **RHD4-02-002-A015-(RD)-Bituminous base course Two Layers, including (MC1)&(RC2)** |  | 2026-09-02 | 2028-01-12 |  |  |  |  |  |  |  |  |  |  |  |  |  |  |  |
| RHD4CZ6A015RD3100 |  | Supply, lay and Asphaltic base course including Prime Coat (MC1) for 1st Layer - (RD-A-1 /5)-Z6-A015-RD | 4d | 2026-09-02 A | 2026-10-03 A | RHD4CZ6A015RD2100, RHD4PRSHLDOSRD1100, RHD4ENMSASPH2000, RHD4ENMSASPH2010, RHD4PRSHLSTAGRD1100 | 100% | 2026-09-02 | 2026-09-06 |  |  | Skilled labor [43.56 h]; Unskilled Labor [261.37 h]; Equipment Opreator [653.42 h]; Bobcat [43.56 h]; Roller compactor [43.56 h]; Asphalt Paver [43.56 h]; Rubber Compactor [87.12 h]; MC1/RC2 Sprinkler [43.56 h]; Dump Truck [392.05 h]; Bituminous base course (Grading I - Class A), including Prime coat (MC1) & tack coate (RC2) [1593.73 m3] | 761,802.94 | 761,802.94 | A015 | Z6 | CONS | RD | 150 mm | AFT |
| RHD4CZ6A015RD3200 |  | Supply, lay and Asphaltic base course including Tack Coat (RC2) for 2nd Layer - (RD-A-1 /5)-Z6-A015-RD | 4d | 2028-01-08 | 2028-01-12 | RHD4PRSHLDOSRD1100, RHD4PRSHLSTAGRD1100, RHD4CZ6A015CCTV6100 |  |  |  | -191.02d | 0d | Skilled labor [43.56 h]; Unskilled Labor [261.37 h]; Equipment Opreator [653.42 h]; Bobcat [43.56 h]; Roller compactor [43.56 h]; Asphalt Paver [43.56 h]; Rubber Compactor [87.12 h]; MC1/RC2 Sprinkler [43.56 h]; Dump Truck [392.05 h]; Bituminous base course (Grading I - Class A), including Prime coat (MC1) & tack coate (RC2) [1593.73 m3] | 761,802.94 |  | A015 | Z6 | CONS | RD | 150 mm | AFT |
|  | 4861 | **RHD4-02-002-A015-(RD)-Precast Concrete Curb** |  | 2028-01-12 | 2028-01-20 |  |  |  |  |  |  |  |  |  |  |  |  |  |  |  |
| RHD4CZ6A015RD5100 |  | Supply and installation Precast Concrete Kerb for Roads - (RD-A-1 /5)-Z6-A015-RD | 7d | 2028-01-12 | 2028-01-20 | RHD4CZ6A015RD3200, RHD4PRSHLDOSRD1200, RHD4ENMSRD2000, RHD4ENMSRD2010, RHD4PRSHLSTAGRD1200 |  |  |  | -191.02d | 0d | Mason [200.27 h]; Skilled labor [66.76 h]; Unskilled Labor [200.27 h]; Equipment Opreator [133.52 h]; Bobcat [66.76 h]; Concrete Mixer Truck [66.76 h]; Precast Concrete Curbstone, type K1 [2758.16 m] | 151,698.64 |  | A015 | Z6 | CONS | RD | Curbs | AFT |
|  | 4864 | **RHD4-02-002-A015-(RD)-Traffic Signage** |  | 2028-01-20 | 2028-01-27 |  |  |  |  |  |  |  |  |  |  |  |  |  |  |  |
| RHD4CZ6A015RD8100 |  | Installation of Traffic Signage for Road Network - (RD-A-1 /5)-Z6-A015-RD | 6d | 2028-01-20 | 2028-01-27 | RHD4CZ6A015RD5100 |  |  |  | -191.02d | 0d | Skilled labor [130.68 h]; Unskilled Labor [65.34 h]; Electrician [4.36 h]; Equipment Opreator [14.81 h]; Boom Truck [13.07 h]; Concrete Mixer Truck [1.74 h]; Traffic signs, ground mounted, 1 Sheet Aluminium, (breakaway)Single post [4 nr] | 4,904 |  | A015 | Z6 | CONS | RD | Traffic Signage | AFT |
|  | 4862 | **RHD4-02-002-A015-(RD)-Precast Interlocking Block Pavers** |  |  |  |  |  |  |  |  |  |  |  |  |  |  |  |  |  |  |
|  | 4860 | **RHD4-02-002-A015-(RD)-Bituminous concrete wearing course including tack coat (RC2)** |  | 2028-01-20 | 2028-01-23 |  |  |  |  |  |  |  |  |  |  |  |  |  |  |  |
| RHD4CZ6A015RD4100 |  | Supply, lay and compaction Asphaltic wearing course including tack Coat (RC2)for Road Network - (RD-A-1 /5)-Z6-A015-RD | 2d | 2028-01-20 | 2028-01-23 | RHD4CZ6A015RD5100 |  |  |  | -187.02d | 4d | Skilled labor [18.84 h]; Unskilled Labor [113.15 h]; Equipment Opreator [282.71 h]; Bobcat [18.84 h]; Roller compactor [18.84 h]; Asphalt Paver [18.84 h]; Rubber Compactor [37.68 h]; MC1/RC2 Sprinkler [18.84 h]; Dump Truck [169.67 h]; Bituminous concrete wearing course, (Grading I - Class A), including tack coat (RC2) [899.06 m3] | 488,189.58 |  | A015 | Z6 | CONS | RD | 50 mm | AFT |
|  | 4863 | **RHD4-02-002-A015-(RD)-Pavement Marking** |  | 2028-01-27 | 2028-02-01 |  |  |  |  |  |  |  |  |  |  |  |  |  |  |  |
| RHD4CZ6A015RD7100 |  | Pavement Markings for Road Network - (RD-A-1 /5)-Z6-A015-RD | 4d | 2028-01-27 | 2028-02-01 | RHD4CZ6A015RD4100, RHD4CZ6A015RD8100 |  |  |  | -191.02d | 0d | Skilled labor [38.33 h]; Unskilled Labor [76.67 h]; Equipment Opreator [38.33 h]; Road Marking Machine [38.33 h]; Retroreflective Thermoplastic White Traffic Markings [316.05 m2]; Retroreflective Thermoplastic Yellow, Traffic Markings [376.94 m2]; Retroreflective raised pavement markers (cat eyes) [224 nr] | 29,098.69 |  | A015 | Z6 | CONS | RD | Pavement Marking | AFT |
|  | 4681 | **RHD4-02-002-Z6-A015-Storm Network - ST** |  | 2026-08-04 | 2027-04-04 |  |  |  |  |  |  |  |  |  |  |  |  |  |  |  |
|  | 4699 | **RHD4-02-002-A015-(ST)-MH Works - 1500 mm diameter** |  | 2026-08-04 | 2027-01-20 |  |  |  |  |  |  |  |  |  |  |  |  |  |  |  |
| RHD4CZ6A015ST3101 |  | Excavation and PC Blinding works for MH 1500 mm - (RD-A-1 /5)-Z6-A015-ST | 2d | 2026-08-04 A | 2026-08-06 A | RHD4ENSDZ6APPST110, RHD4ENMSST2000, RHD4CZ6C062RW3000, RHD4PRSHLDOSST1307 | 100% | 2026-05-19 | 2026-05-20 |  |  | Skilled labor [5.45 h]; Unskilled Labor [5.45 h]; Equipment Opreator [8.71 h]; Excavator-Poclain [5.45 h]; Water Truck [0.54 h]; Dump Truck [2.72 h]; MH (1500mm Diameter) - ST - depth 1.50 - 2.5m [0.25 nr] | 3,646.5 | 3,646.5 | A015 | Z6 | CONS | ST | Excavation | bef |
| RHD4CZ6A015ST3201 |  | Installation of Base for MH 1500 mm - (RD-A-1 /5)-Z6-A015-ST | 2d | 2026-08-06 A | 2026-08-09 A | RHD4CZ6A015ST3101, RHD4PRSHLSTAGST1605 | 100% | 2026-05-21 | 2026-05-23 |  |  | Skilled labor [5.45 h]; Unskilled Labor [5.45 h]; Equipment Opreator [2.18 h]; Boom Truck [1.09 h]; Concrete Mixer Truck [1.09 h]; MH (1500mm Diameter) - ST - depth 1.50 - 2.5m [0.25 nr] | 3,646.5 | 3,646.5 | A015 | Z6 | CONS | ST | Installing Base | bef |
| RHD4CZ6A015ST3301 |  | MH Ring and C.Slab works and Backfilling works for MH 1500 mm - (RD-A-1 /5)-Z6-A015-ST | 2d | 2026-09-05 A | 2026-09-06 A | RHD4CZ6A015ST3201, RHD4PRSHLDOSST1605 | 100% | 2026-05-24 | 2026-05-25 |  |  | Skilled labor [5.45 h]; Unskilled Labor [5.45 h]; Equipment Opreator [3.81 h]; Boom Truck [2.18 h]; Concrete Mixer Truck [1.6 h]; MH (1500mm Diameter) - ST - depth 1.50 - 2.5m [0.35 nr] | 5,105.1 | 5,105.1 | A015 | Z6 | CONS | ST | Installing Rings | bef |
| RHD4CZ6A015ST3401 |  | Steel Cover for MH 1500 mm - (RD-A-1 /5)-Z6-A015-ST | 2d | 2027-01-17 | 2027-01-18 | RHD4CZ6A015ST3301, RHD4CZ6A015ST1500, RHD4PRSHLDOSST1705, RHD4PRSHLSTAGST1705 |  |  |  | -194d | 0d | Skilled labor [3.59 h]; Unskilled Labor [7.3 h]; Equipment Opreator [0.8 h]; Boom Truck [0.8 h]; MH (1500mm Diameter) - ST - depth 1.50 - 2.5m [0.05 nr] | 729.3 |  | A015 | Z6 | CONS | ST | Steel Cover | bef |
| RHD4CZ6A015ST3501 |  | Finishing, Benching, Testing works for MH 1500 mm - (RD-A-1 /5)-Z6-A015-ST | 2d | 2027-01-19 | 2027-01-20 | RHD4CZ6A015ST3401, RHD4CZ6A015ST2500 |  |  |  | -194d | 4d | Skilled labor [5.45 h]; Unskilled Labor [10.89 h]; Plumber [5.45 h]; Equipment Opreator [1.09 h]; Water Truck [1.09 h]; MH (1500mm Diameter) - ST - depth 1.50 - 2.5m [0.1 nr] | 1,458.6 |  | A015 | Z6 | CONS | ST | Benching | bef |
|  | 4698 | **RHD4-02-002-A015-(ST)-MH Works - 1200 mm diameter** |  | 2026-08-04 | 2027-04-04 |  |  |  |  |  |  |  |  |  |  |  |  |  |  |  |
| RHD4CZ6A015ST3100 |  | Excavation and PC Blinding works for MH 1200 mm - (RD-A-1 /5)-Z6-A015-ST | 5d | 2026-08-04 A | 2026-08-06 A | RHD4CZ6A015ST3101, RHD4ENSDZ6APPST110, RHD4ENMSST2000, RHD4ENMSST2010 | 100% | 2026-05-21 | 2026-05-30 |  |  | Skilled labor [50.86 h]; Unskilled Labor [50.86 h]; Equipment Opreator [81.35 h]; Excavator-Poclain [50.86 h]; Water Truck [5.12 h]; Dump Truck [25.37 h]; MH (1200mm Diameter) - ST - depth 1.50 - 2.5m [3.5 nr] | 36,130.5 | 36,130.5 | A015 | Z6 | CONS | ST | Excavation | bef |
| RHD4CZ6A015ST3200 |  | Installation of Base for MH 1200 mm - (RD-A-1 /5)-Z6-A015-ST | 5d | 2026-08-06 A | 2026-08-28 A | RHD4CZ6A015ST3100, RHD4PRSHLSTAGST1605 | 100% | 2026-05-31 | 2026-06-04 |  |  | Skilled labor [50.86 h]; Unskilled Labor [50.86 h]; Equipment Opreator [20.36 h]; Boom Truck [10.13 h]; Concrete Mixer Truck [10.13 h]; MH (1200mm Diameter) - ST - depth 1.50 - 2.5m [3.5 nr] | 36,130.5 | 36,130.5 | A015 | Z6 | CONS | ST | Installing Base | bef |
| RHD4CZ6A015ST3300 |  | MH Ring and C.Slab works and Backfilling works for MH 1200 mm - (RD-A-1 /5)-Z6-A015-ST | 5d | 2026-09-05 A | 2026-09-09 A | RHD4CZ6A015ST3200, RHD4PRSHLDOSST1605 | 100% | 2026-06-06 | 2026-06-10 |  |  | Skilled labor [50.86 h]; Unskilled Labor [50.86 h]; Equipment Opreator [35.61 h]; Boom Truck [20.36 h]; Concrete Mixer Truck [15.25 h]; MH (1200mm Diameter) - ST - depth 1.50 - 2.5m [4.9 nr] | 50,582.7 | 50,582.7 | A015 | Z6 | CONS | ST | Installing Rings | bef |
| RHD4CZ6A015ST3400 |  | Steel Cover for MH 1200 mm - (RD-A-1 /5)-Z6-A015-ST | 5d | 2027-03-23 | 2027-03-29 | RHD4CZ6A015ST3300, RHD4CZ6A015ST2500, RHD4CZ6A015ST1500, RHD4PRSHLDOSST1705, RHD4PRSHLSTAGST1705, RHD4CZ6A015PT4300 |  |  |  | -147.04d | 0d | Skilled labor [50.86 h]; Unskilled Labor [101.6 h]; Equipment Opreator [10.13 h]; Boom Truck [10.13 h]; MH (1200mm Diameter) - ST - depth 1.50 - 2.5m [0.7 nr] | 7,226.1 |  | A015 | Z6 | CONS | ST | Steel Cover | bef |
| RHD4CZ6A015ST3500 |  | Finishing, Benching, Testing works for MH 1200 mm - (RD-A-1 /5)-Z6-A015-ST | 5d | 2027-03-29 | 2027-04-04 | RHD4CZ6A015ST3400, RHD4CZ6A015ST3501 |  |  |  | -147.04d | 31.96d | Skilled labor [50.86 h]; Unskilled Labor [101.6 h]; Plumber [50.86 h]; Equipment Opreator [10.13 h]; Water Truck [10.13 h]; MH (1200mm Diameter) - ST - depth 1.50 - 2.5m [1.4 nr] | 14,452.2 |  | A015 | Z6 | CONS | ST | Benching | bef |

| ID | WBS | Activity | Duration | Start | Finish | Predecessors | Complete | Remaining | Planned start | Planned finish | Total float | Free float | Resources | Cost | Actual cost | RDH4-01-001-Road and Block Names-1 | RDH4-01-001-Zones-1 | RDH4-01-001-Phases-1 | RDH4-01-001-Networks-1 | RDH4-01-001-Work Method-1 | RDH4-01-001-MENEM |
| --- | --- | --- | --- | --- | --- | --- | --- | --- | --- | --- | --- | --- | --- | --- | --- | --- | --- | --- | --- | --- | --- |
|  | 4685 | **RHD4-02-002-A015-(ST)-GRP Pipes - 700 mm diameter** |  | 2026-08-04 | 2026-12-28 |  |  |  |  |  |  |  |  |  |  |  |  |  |  |  |  |
| RHD4CZ6A015ST1103 |  | Excavation works for GRP Pipe Line 700 mm - (RD-A-1 /5)-Z6-A015-ST | 2d | 2026-08-04 A | 2026-08-05 A | RHD4CZ6A015ST3201, RHD4CZ6A015ST3200, RHD4ENSDZ6APPST110 | 100% |  | 2026-06-06 | 2026-06-07 |  |  | Skilled labor [1.42 h]; Unskilled Labor [1.42 h]; Equipment Opreator [1.74 h]; Excavator-Poclain [1.42 h]; Dump Truck [0.33 h]; GRP (700mm Diameter) - ST - Depth less than 1.5 m [2.67 m]; GRP (700mm Diameter) - ST - Depth: 1.51m - 2.5m | 1,479.18 | 1,479.18 | A015 | Z6 | CONS | ST | Excavation | bef |
| RHD4CZ6A015ST1203 |  | Bedding works for GRP Pipe Line 700 mm - (RD-A-1 /5)-Z6-A015-ST | 2d | 2026-08-06 A | 2026-08-08 A | RHD4CZ6A015ST1103 | 100% |  | 2026-06-08 | 2026-06-09 |  |  | Skilled labor [1.42 h]; Unskilled Labor [2.94 h]; Equipment Opreator [2.94 h]; Excavator-Poclain [1.42 h]; Dump Truck [1.42 h]; GRP (700mm Diameter) - ST - Depth less than 1.5 m [1.33 m]; GRP (700mm Diameter) - ST - Depth: 1.51m - 2.5m | 736.82 | 736.82 | A015 | Z6 | CONS | ST | Bedding | bef |
| RHD4CZ6A015ST1303 |  | Installing for GRP Pipe Line 700 mm - (RD-A-1 /5)-Z6-A015-ST | 2d | 2026-08-09 A | 2026-08-10 A | RHD4CZ6A015ST1203, RHD4CZ6A015ST3301, RHD4CZ6A015ST3300, RHD4PRSHLSTAGST1005, RHD4PRSHLDOSST1605, RHD4PRSHLPOST1000, RHD4PRSHLDOSST1005 | 100% |  | 2026-06-11 | 2026-06-13 |  |  | Unskilled Labor [1.42 h]; Plumber [0.8 h]; GRP (700mm Diameter) - ST - Depth less than 1.5 m [12 m]; GRP (700mm Diameter) - ST - Depth: 1.51m - 2.5m | 6,648 | 6,648 | A015 | Z6 | CONS | ST | Installation | bef |
| RHD4CZ6A015ST1503 |  | Backfilling and warning tape works for GRP Pipe Line 700 mm - (RD-A-1 /5)-Z6-A015-ST | 2d | 2026-09-05 A | 2026-09-06 A | RHD4CZ6A015ST1403 | 100% |  | 2026-06-16 | 2026-06-17 |  |  | Skilled labor [1.42 h]; Unskilled Labor [2.94 h]; Equipment Opreator [2.94 h]; Excavator-Poclain [1.42 h]; Dump Truck [1.42 h]; GRP (700mm Diameter) - ST - Depth less than 1.5 m [5.33 m]; GRP (700mm Diameter) - ST - Depth: 1.51m - 2.5m | 2,952.82 | 2,952.82 | A015 | Z6 | CONS | ST | Backfilling | bef |
| RHD4CZ6A015ST1403 |  | Primary Test for GRP Pipe Line 700 mm - (RD-A-1 /5)-Z6-A015-ST | 2d | 2026-12-27 | 2026-12-28 | RHD4CZ6A015ST1303 |  |  |  |  | -187d | 0d | Unskilled Labor [0.8 h]; Plumber [0.8 h]; Equipment Opreator [0.8 h]; Water Truck [0.8 h]; GRP (700mm Diameter) - ST - Depth less than 1.5 m [5.33 m]; GRP (700mm Diameter) - ST - Depth: 1.51m - 2.5m | 2,952.82 |  | A015 | Z6 | CONS | ST | Primary Test | bef |
|  | 4684 | **RHD4-02-002-A015-(ST)-GRP Pipes - 600 mm diameter** |  | 2026-08-04 | 2026-12-28 |  |  |  |  |  |  |  |  |  |  |  |  |  |  |  |  |
| RHD4CZ6A015ST1102 |  | Excavation works for GRP Pipe Line 600 mm - (RD-A-1 /5)-Z6-A015-ST | 2d | 2026-08-04 A | 2026-08-05 A | RHD4CZ6A015ST1103, RHD4ENSDZ6APPST110 | 100% |  | 2026-06-08 | 2026-06-09 |  |  | Skilled labor [4.25 h]; Unskilled Labor [4.25 h]; Equipment Opreator [5.12 h]; Excavator-Poclain [4.25 h]; Dump Truck [0.87 h]; GRP (600mm Diameter) - ST - Depth less than 1.5 m [9.75 m] | 4,202.68 | 4,202.68 | A015 | Z6 | CONS | ST | Excavation | bef |
| RHD4CZ6A015ST1202 |  | Bedding works for GRP Pipe Line 600 mm - (RD-A-1 /5)-Z6-A015-ST | 2d | 2026-08-06 A | 2026-08-08 A | RHD4CZ6A015ST1102 | 100% |  | 2026-06-10 | 2026-06-11 |  |  | Skilled labor [3.59 h]; Unskilled Labor [7.08 h]; Equipment Opreator [7.08 h]; Excavator-Poclain [3.59 h]; Dump Truck [3.59 h]; GRP (600mm Diameter) - ST - Depth less than 1.5 m [4.88 m] | 2,101.34 | 2,101.34 | A015 | Z6 | CONS | ST | Bedding | bef |
| RHD4CZ6A015ST1302 |  | Installing for GRP Pipe Line 600 mm - (RD-A-1 /5)-Z6-A015-ST | 2d | 2026-08-09 A | 2026-08-10 A | RHD4CZ6A015ST1202, RHD4CZ6A015ST1303, RHD4PRSHLSTAGST1005, RHD4PRSHLDOSST1605, RHD4PRSHLPOST1000, RHD4PRSHLDOSST1005 | 100% |  | 2026-06-14 | 2026-06-15 |  |  | Unskilled Labor [14.16 h]; Plumber [7.08 h]; GRP (600mm Diameter) - ST - Depth less than 1.5 m [43.88 m] | 18,912.06 | 18,912.06 | A015 | Z6 | CONS | ST | Installation | bef |
| RHD4CZ6A015ST1502 |  | Backfilling and warning tape works for GRP Pipe Line 600 mm - (RD-A-1 /5)-Z6-A015-ST | 2d | 2026-08-11 A | 2026-08-12 A | RHD4CZ6A015ST1402, RHD4CZ6A015ST1503 | 100% |  | 2026-06-18 | 2026-06-20 |  |  | Skilled labor [5.34 h]; Unskilled Labor [10.67 h]; Equipment Opreator [10.67 h]; Excavator-Poclain [5.34 h]; Dump Truck [5.34 h]; GRP (600mm Diameter) - ST - Depth less than 1.5 m [19.5 m] | 8,404.5 | 8,404.5 | A015 | Z6 | CONS | ST | Backfilling | bef |
| RHD4CZ6A015ST1402 |  | Primary Test for GRP Pipe Line 600 mm - (RD-A-1 /5)-Z6-A015-ST | 2d | 2026-12-27 | 2026-12-28 | RHD4CZ6A015ST1302 |  |  |  |  | -187d | 0d | Unskilled Labor [2.18 h]; Plumber [2.18 h]; Equipment Opreator [2.18 h]; Water Truck [2.18 h]; GRP (600mm Diameter) - ST - Depth less than 1.5 m [19.5 m] | 8,404.5 |  | A015 | Z6 | CONS | ST | Primary Test | bef |
|  | 4683 | **RHD4-02-002-A015-(ST)-GRP Pipes - 500 mm diameter** |  | 2026-08-04 | 2026-12-28 |  |  |  |  |  |  |  |  |  |  |  |  |  |  |  |  |
| RHD4CZ6A015ST1101 |  | Excavation works for GRP Pipe Line 500 mm - (RD-A-1 /5)-Z6-A015-ST | 2d | 2026-08-04 A | 2026-08-05 A | RHD4CZ6A015ST1102, RHD4ENSDZ6APPST110 | 100% |  | 2026-06-10 | 2026-06-11 |  |  | Skilled labor [4.25 h]; Unskilled Labor [4.25 h]; Equipment Opreator [5.12 h]; Excavator-Poclain [4.25 h]; Dump Truck [0.87 h]; GRP (500mm Diameter) - ST - Depth less than 1.5 m [9.72 m] | 3,450.95 | 3,450.95 | A015 | Z6 | CONS | ST | Excavation | bef |
| RHD4CZ6A015ST1201 |  | Bedding works for GRP Pipe Line 500 mm - (RD-A-1 /5)-Z6-A015-ST | 2d | 2026-08-06 A | 2026-08-08 A | RHD4CZ6A015ST1101 | 100% |  | 2026-06-13 | 2026-06-14 |  |  | Skilled labor [3.48 h]; Unskilled Labor [7.08 h]; Equipment Opreator [7.08 h]; Excavator-Poclain [3.48 h]; Dump Truck [3.48 h]; GRP (500mm Diameter) - ST - Depth less than 1.5 m [4.86 m] | 1,725.48 | 1,725.48 | A015 | Z6 | CONS | ST | Bedding | bef |
| RHD4CZ6A015ST1301 |  | Installing for GRP Pipe Line 500 mm - (RD-A-1 /5)-Z6-A015-ST | 2d | 2026-08-09 A | 2026-08-10 A | RHD4CZ6A015ST1201, RHD4CZ6A015ST1302, RHD4PRSHLSTAGST1005, RHD4PRSHLDOSST1605, RHD4PRSHLPOST1000, RHD4PRSHLDOSST1005 | 100% |  | 2026-06-16 | 2026-06-17 |  |  | Unskilled Labor [14.16 h]; Plumber [7.08 h]; GRP (500mm Diameter) - ST - Depth less than 1.5 m [43.74 m] | 15,529.3 | 15,529.3 | A015 | Z6 | CONS | ST | Installation | bef |
| RHD4CZ6A015ST1501 |  | Backfilling and warning tape works for GRP Pipe Line 500 mm - (RD-A-1 /5)-Z6-A015-ST | 2d | 2026-08-11 A | 2026-08-12 A | RHD4CZ6A015ST1401, RHD4CZ6A015ST1502 | 100% |  | 2026-06-21 | 2026-06-22 |  |  | Skilled labor [5.34 h]; Unskilled Labor [10.56 h]; Equipment Opreator [10.56 h]; Excavator-Poclain [5.34 h]; Dump Truck [5.34 h]; GRP (500mm Diameter) - ST - Depth less than 1.5 m [19.44 m] | 6,901.91 | 6,901.91 | A015 | Z6 | CONS | ST | Backfilling | bef |
| RHD4CZ6A015ST1401 |  | Primary Test for GRP Pipe Line 500 mm - (RD-A-1 /5)-Z6-A015-ST | 2d | 2026-12-27 | 2026-12-28 | RHD4CZ6A015ST1301 |  |  |  |  | -187d | 0d | Unskilled Labor [2.07 h]; Plumber [2.07 h]; Equipment Opreator [2.07 h]; Water Truck [2.07 h]; GRP (500mm Diameter) - ST - Depth less than 1.5 m [19.44 m] | 6,901.91 |  | A015 | Z6 | CONS | ST | Primary Test | bef |
|  | 4682 | **RHD4-02-002-A015-(ST)-GRP Pipes - 400 mm diameter** |  | 2026-08-04 | 2027-01-16 |  |  |  |  |  |  |  |  |  |  |  |  |  |  |  |  |
| RHD4CZ6A015ST1100 |  | Excavation works for GRP Pipe Line 400 mm - (RD-A-1 /5)-Z6-A015-ST | 4d | 2026-08-04 A | 2026-12-30 | RHD4CZ6A015ST1101, RHD4ENSDZ6APPST110 | 84% | 4d | 2026-06-13 | 2026-06-16 | -194d | 0d | Skilled labor [33.76 h]; Unskilled Labor [33.76 h]; Equipment Opreator [40.4 h]; Excavator-Poclain [33.76 h]; Dump Truck [6.75 h]; GRP (400mm Diameter) - ST - Depth less than 1.5 m [74.81 m]; GRP (400mm Diameter) - ST - Depth: 1.51m - 2.5 m | 21,694.9 |  | A015 | Z6 | CONS | ST | Excavation | bef |
| RHD4CZ6A015ST1200 |  | Bedding works for GRP Pipe Line 400 mm - (RD-A-1 /5)-Z6-A015-ST | 3d | 2026-08-06 A | 2027-01-03 | RHD4CZ6A015ST1100 | 86% | 3d | 2026-06-17 | 2026-06-20 | -194d | 0d | Skilled labor [29.08 h]; Unskilled Labor [58.05 h]; Equipment Opreator [58.05 h]; Excavator-Poclain [29.08 h]; Dump Truck [29.08 h]; GRP (400mm Diameter) - ST - Depth less than 1.5 m [37.4 m]; GRP (400mm Diameter) - ST - Depth: 1.51m - 2.5 m | 10,846 |  | A015 | Z6 | CONS | ST | Bedding | bef |
| RHD4CZ6A015ST1300 |  | Installing for GRP Pipe Line 400 mm - (RD-A-1 /5)-Z6-A015-ST | 5d | 2026-08-08 A | 2027-01-09 | RHD4CZ6A015ST1200, RHD4CZ6A015ST1301, RHD4PRSHLSTAGST1005, RHD4PRSHLDOSST1605, RHD4PRSHLPOST1000, RHD4PRSHLDOSST1005 | 86% | 5d | 2026-06-21 | 2026-06-25 | -194d | 0d | Unskilled Labor [104.87 h]; Plumber [52.38 h]; GRP (400mm Diameter) - ST - Depth less than 1.5 m [336.63 m]; GRP (400mm Diameter) - ST - Depth: 1.51m - 2.5 m | 97,622.7 |  | A015 | Z6 | CONS | ST | Installation | bef |
| RHD4CZ6A015ST1500 |  | Backfilling and warning tape works for GRP Pipe Line 400 mm - (RD-A-1 /5)-Z6-A015-ST | 4d | 2026-08-10 A | 2027-01-16 | RHD4CZ6A015ST1400 | 71% | 4d | 2026-06-29 | 2026-07-02 | -194d | 0d | Skilled labor [40.73 h]; Unskilled Labor [81.46 h]; Equipment Opreator [81.46 h]; Excavator-Poclain [40.73 h]; Dump Truck [40.73 h]; GRP (400mm Diameter) - ST - Depth less than 1.5 m [149.61 m]; GRP (400mm Diameter) - ST - Depth: 1.51m - 2.5 m | 43,386.9 |  | A015 | Z6 | CONS | ST | Backfilling | bef |
| RHD4CZ6A015ST1400 |  | Primary Test for GRP Pipe Line 400 mm - (RD-A-1 /5)-Z6-A015-ST | 2d | 2027-01-10 | 2027-01-11 | RHD4CZ6A015ST1300 |  |  |  |  | -194d | 0d | Unskilled Labor [19.71 h]; Plumber [19.71 h]; Equipment Opreator [19.71 h]; Water Truck [19.71 h]; GRP (400mm Diameter) - ST - Depth less than 1.5 m [149.61 m]; GRP (400mm Diameter) - ST - Depth: 1.51m - 2.5 m | 43,386.9 |  | A015 | Z6 | CONS | ST | Primary Test | bef |

| ID | WBS | Activity | Duration | Start | Finish | Predecessors | Complete | Remaining | Planned start | Planned finish | Total float | Free float | Resources | Cost | Actual cost | RDH4-01-001-Road and Block Names-1 | RDH4-01-001-Zones-1 | RDH4-01-001-Phases-1 | RDH4-01-001-Networks-1 | RDH4-01-001-Work Method-1 | RDH4-01-001-MENEM |
| --- | --- | --- | --- | --- | --- | --- | --- | --- | --- | --- | --- | --- | --- | --- | --- | --- | --- | --- | --- | --- | --- |
|  | 4697 | **RHD4-02-002-A015-(ST)-UPVC Pipes - 400 mm diameter** |  |  |  |  |  |  |  |  |  |  |  |  |  |  |  |  |  |  |  |
|  | 4696 | **RHD4-02-002-A015-(ST)-UPVC Pipes - 300 mm diameter** |  | 2026-08-04 | 2026-12-30 |  |  |  |  |  |  |  |  |  |  |  |  |  |  |  |  |
| RHD4CZ6A015ST2100 |  | Excavation works for UPVC Pipe Line 300 mm - (RD-A-1 /5)-Z6-A015-ST | 3d | 2026-08-04 A | 2026-08-06 A | RHD4CZ6A015ST3300, RHD4CZ6A015ST3301, RHD4ENSDZ6APPST110, RHD4CZ6A015ST1501 | 100% |  | 2026-06-23 | 2026-06-25 |  |  | Skilled labor [28.75 h]; Unskilled Labor [28.75 h]; Equipment Opreator [34.52 h]; Excavator-Poclain [28.75 h]; Dump Truck [5.77 h]; UPVC (300mm Diameter) - ST - Depth less than 1.5 [66.05 m] | 20,014.36 | 20,014.36 | A015 | Z6 | CONS | ST | Excavation | bef |
| RHD4CZ6A015ST2200 |  | Bedding works for UPVC Pipe Line 300 mm - (RD-A-1 /5)-Z6-A015-ST | 3d | 2026-08-08 A | 2026-08-10 A | RHD4CZ6A015ST2100 | 100% |  | 2026-06-27 | 2026-06-29 |  |  | Skilled labor [23.96 h]; Unskilled Labor [47.92 h]; Equipment Opreator [47.92 h]; Excavator-Poclain [23.96 h]; Dump Truck [23.96 h]; UPVC (300mm Diameter) - ST - Depth less than 1.5 [33.03 m] | 10,007.18 | 10,007.18 | A015 | Z6 | CONS | ST | Bedding | bef |
| RHD4CZ6A015ST2300 |  | Installing for UPVC Pipe Line 300 mm - (RD-A-1 /5)-Z6-A015-ST | 3d | 2026-08-11 A | 2026-08-13 A | RHD4CZ6A015ST2200, RHD4PRSHLDOSST1105, RHD4PRSHLSTAGST1105 | 100% |  | 2026-06-30 | 2026-07-02 |  |  | Unskilled Labor [57.5 h]; Plumber [28.75 h]; UPVC (300mm Diameter) - ST - Depth less than 1.5 [297.24 m] | 90,064.63 | 90,064.63 | A015 | Z6 | CONS | ST | Installation | bef |
| RHD4CZ6A015ST2500 |  | Backfilling and warning tape works for UPVC Pipe Line 300 mm - (RD-A-1 /5)-Z6-A015-ST | 4d | 2026-09-06 A | 2026-09-09 A | RHD4CZ6A015ST2400, RHD4CZ6A015ST6100 | 100% |  | 2026-07-06 | 2026-07-09 |  |  | Skilled labor [35.94 h]; Unskilled Labor [72 h]; Equipment Opreator [72 h]; Excavator-Poclain [35.94 h]; Dump Truck [35.94 h]; UPVC (300mm Diameter) - ST - Depth less than 1.5 [132.11 m] | 40,028.72 | 40,028.72 | A015 | Z6 | CONS | ST | Backfilling | bef |
| RHD4CZ6A015ST2400 |  | Primary Test for UPVC Pipe Line 300 mm - (RD-A-1 /5)-Z6-A015-ST | 2d | 2026-12-29 | 2026-12-30 | RHD4CZ6A015ST2300 |  |  |  |  | -187d | 0d | Unskilled Labor [14.4 h]; Plumber [14.4 h]; Equipment Opreator [14.4 h]; Water Truck [14.4 h]; UPVC (300mm Diameter) - ST - Depth less than 1.5 [132.11 m] | 40,028.72 |  | A015 | Z6 | CONS | ST | Primary Test | bef |
|  | 4704 | **RHD4-02-002-A015-(ST)-Concrete Encasement** |  | 2026-09-05 | 2026-12-30 |  |  |  |  |  |  |  |  |  |  |  |  |  |  |  |  |
| RHD4CZ6A015ST6100 |  | Pipe Encasement for Storm Pipelines - (RD-A-1 /5)-Z6-A015-ST | 2d | 2026-09-05 A | 2026-12-30 | RHD4CZ6A015ST2300 SS, RHD4CZ6A015ST2300 FF, RHD4CZ6A015ST2200 | 50% | 2d | 2026-07-01 | 2026-07-02 | -187d | 0d | Skilled labor [7.41 h]; Unskilled Labor [7.41 h]; Equipment Opreator [8.17 h]; Concrete Mixer Truck [0.8 h]; Dump Truck [7.41 h]; Pipe Encasement - ST [135.47 m3] | 68,547.82 |  | A015 | Z6 | CONS | ST | Pipe Encasement | bef |
|  | 4705 | **RHD4-02-002-Z6-A015-Catch Basin - ST** |  | 2026-08-04 | 2027-05-12 |  |  |  |  |  |  |  |  |  |  |  |  |  |  |  |  |
|  | 4706 | **RHD4-02-002-A015-(ST)-Single Catch Basin Works** |  | 2026-08-04 | 2027-05-12 |  |  |  |  |  |  |  |  |  |  |  |  |  |  |  |  |
| RHD4CZ6A015ST7100 |  | Excavation works for Single Catch Basin - (RD-A-1 /5)-Z6-A015-ST | 3d | 2026-08-04 A | 2026-08-08 A | RHD4CZ6A015ST3300, RHD4CZ6A015ST3301, RHD4ENSDZ6APPST110 | 100% |  | 2026-06-11 | 2026-06-14 |  |  | Skilled labor [31.58 h]; Unskilled Labor [63.2 h]; Equipment Opreator [47.37 h]; Excavator-Poclain [31.58 h]; Dump Truck [15.79 h]; Single Catch basin - ST [7.25 nr] | 27,049.75 | 27,049.75 | A015 | Z6 | CONS | ST | Excavation | bef |
| RHD4CZ6A015ST7200 |  | PC Blinding, Installation and Pipe connection for Single Catch Basin - (RD-A-1 /5)-Z6-A015-ST | 3d | 2026-08-06 A | 2026-08-09 A | RHD4CZ6A015ST7100 | 100% |  | 2026-06-15 | 2026-06-17 |  |  | Skilled labor [31.58 h]; Unskilled Labor [63.2 h]; Plumber [15.79 h]; Equipment Opreator [6.32 h]; Boom Truck [6.32 h]; Single Catch basin - ST [5.8 nr] | 21,639.8 | 21,639.8 | A015 | Z6 | CONS | ST | Installation & Pipe Connection | bef |
| RHD4CZ6A015ST7300 |  | Rings & C.Slab & Final Backfill for Single Catch Basin - (RD-A-1 /5)-Z6-A015-ST | 4d | 2026-09-05 A | 2026-09-08 A | RHD4CZ6A015ST7200, RHD4PRSHLDOSST1305, RHD4PRSHLSTAGST1305 | 100% |  | 2026-06-18 | 2026-06-22 |  |  | Skilled labor [39.53 h]; Unskilled Labor [78.96 h]; Equipment Opreator [47.37 h]; Boom Truck [7.95 h]; Bobcat [39.53 h]; Single Catch basin - ST [10.15 nr] | 37,869.65 | 37,869.65 | A015 | Z6 | CONS | ST | Rings | bef |
| RHD4CZ6A015ST7400 |  | Steel Cover for Single Catch Basin - (RD-A-1 /5)-Z6-A015-ST | 3d | 2027-04-07 | 2027-04-11 | RHD4CZ6A015ST7300, RHD4PRSHLDOSST1705, RHD4CZ6A015IRR2202 |  |  |  |  | -110.02d | 21.98d | Skilled labor [31.58 h]; Unskilled Labor [31.58 h]; Equipment Opreator [6.32 h]; Boom Truck [6.32 h]; Single Catch basin - ST [1.45 nr] | 5,409.95 |  | A015 | Z6 | CONS | ST | Steel Cover | bef |
| RHD4CZ6A015ST7500 |  | Finishing and Insulation works for Single Catch Basin - (RD-A-1 /5)-Z6-A015-ST | 6d | 2027-05-06 | 2027-05-12 | RHD4CZ6A015ST7400, RHD4CZ6C062MV3401 |  |  |  |  | -132d | 60.02d | Skilled labor [63.2 h]; Unskilled Labor [126.33 h]; Equipment Opreator [12.63 h]; Boom Truck [12.63 h]; Single Catch basin - ST [4.35 nr] | 16,229.85 |  | A015 | Z6 | CONS | ST | Insulation | bef |
|  | 4707 | **RHD4-02-002-A015-(ST)-Double Catch Basin Works** |  |  |  |  |  |  |  |  |  |  |  |  |  |  |  |  |  |  |  |
|  | 4299 | **RHD4-02-002-Z6-A015-Concrete Box Culvert - ST** |  | 2026-06-11 | 2027-01-25 |  |  |  |  |  |  |  |  |  |  |  |  |  |  |  |  |
|  | 4300 | **RHD4-02-002-A015-(ST)-Concrete Box Culvert** |  | 2026-06-11 | 2026-09-22 |  |  |  |  |  |  |  |  |  |  |  |  |  |  |  |  |
| RHD4CZ6A015ST4100 |  | Excavation works for Box Culvert - (RD-A-1/5)-Z6-A015-ST(Completed) | 7d | 2026-06-11 A | 2026-08-03 A | RHD4CZ6A015ST1500 | 100% |  | 2026-07-04 | 2026-07-11 |  |  | Skilled labor [151.27 h]; Unskilled Labor [151.27 h]; Equipment Opreator [453.91 h]; Excavator-Poclain [151.27 h]; Water Truck [151.27 h]; Dump Truck [151.27 h]; Excavation for culverts (all types of soil) including backfilling - ST [2268.42 m3] | 40,831.56 | 40,831.56 | A015 | Z6 | CONS | ST | Excavation | bef |
| RHD4CZ6A015ST4200 |  | PC works for Box Culvert - (RD-A-1/5)-Z6-A015-ST(Completed) | 7d | 2026-06-15 A | 2026-08-03 A | RHD4CZ6A015ST4100 | 100% |  | 2026-07-12 | 2026-07-19 |  |  | Skilled labor [2.83 h]; Unskilled Labor [2.83 h]; Equipment Opreator [2.83 h]; Concrete Mixer Truck [1.42 h]; Concrete Pump [1.42 h]; 100 mm thickness lean concrete under the base - ST [1027.01 m2] | 40,053.39 | 40,053.39 | A015 | Z6 | CONS | ST | PC | bef |
| RHD4CZ6A015ST4400 |  | Raft works for Box Culvert - (RD-A-1/5)-Z6-A015-ST(Completed) | 15d | 2026-07-11 A | 2026-08-03 A | RHD4CZ6A015ST4200 SS | 100% |  | 2026-07-12 | 2026-07-28 |  |  | Carpenter [18.19 h]; Skilled labor [22.22 h]; Steel Fixer [4 h]; Equipment Opreator [37.24 h]; Boom Truck [0.8 h]; Concrete Mixer Truck [18.19 h]; Concrete Pump [18.19 h]; Supply and cast in place reinforced concrete for Box culverts - ST [360.38 m3]; Supply, placing, and fixing of high tensile reinforcement steel for Box culverts - ST [79.7 Ton] | 642,809.12 | 642,809.12 | A015 | Z6 | CONS | ST | Raft Works | bef |
| RHD4CZ6A015ST4500 |  | Wall and slab works for Box Culvert - (RD-A-1/5)-Z6-A015-ST | 6d | 2026-08-04 A | 2026-09-21 A | RHD4CZ6A015ST4400, RHD4CZ6A015ST4200, RHD4CZ6A015ST4100 | 100% |  | 2026-07-29 | 2026-08-04 |  |  | Carpenter [49.01 h]; Skilled labor [59.9 h]; Steel Fixer [10.89 h]; Equipment Opreator [100.3 h]; Boom Truck [2.18 h]; Concrete Mixer Truck [49.01 h]; Concrete Pump [49.01 h]; Supply and cast in place reinforced concrete for Box culverts - ST [450.48 m3]; Supply, placing, and fixing of high tensile reinforcement steel for Box culverts - ST [119.56 Ton] | 875,601.28 | 875,601.28 | A015 | Z6 | CONS | ST | Wall and slab Works | bef |
| RHD4CZ6A015ST4600 |  | Insulation and Testing for Box Culvert - (RD-A-1/5)-Z6-A015-ST | 5d | 2026-09-19 A | 2026-09-21 A | RHD4CZ6A015ST4700, RHD4CZ6A015ST5400 | 100% |  | 2026-08-15 | 2026-08-19 |  |  | Skilled labor [49.01 h]; Unskilled Labor [98.12 h]; Equipment Opreator [49.01 h]; Water Truck [49.01 h]; Supply and cast in place reinforced concrete for Box culverts - ST [90.1 m3] | 88,658.4 | 88,658.4 | A015 | Z6 | CONS | ST | Insulation and Testing | bef |
| RHD4CZ6A015ST4700 |  | Backfilling works for Box Culvert - (RD-A-1/5)-Z6-A015-ST | 2d | 2026-09-21 A | 2026-09-22 A | RHD4CZ6A015ST4500, RHD4CZ6A015ST5300 | 100% |  | 2026-08-12 | 2026-08-13 |  |  | Skilled labor [176.42 h]; Unskilled Labor [352.96 h]; Equipment Opreator [282.28 h]; Boom Truck [88.21 h]; Water Truck [17.64 h]; Dump Truck [176.42 h]; Excavation for culverts (all types of soil) including backfilling - ST [972.18 m3] | 17,499.24 | 17,499.24 | A015 | Z6 | CONS | ST | Backfilling | bef |

| ID | WBS | Activity | Duration | Start | Finish | Predecessors | Complete | Remaining | Planned start | Planned finish | Total float | Free float | Resources | Cost | Actual cost | RDH4-01-001-Road and Block Names-1 | RDH4-01-001-Zones-1 | RDH4-01-001-Phases-1 | RDH4-01-001-Networks-1 | RDH4-01-001-Work Method-1 | RDH4-01-001-MENEM |
| --- | --- | --- | --- | --- | --- | --- | --- | --- | --- | --- | --- | --- | --- | --- | --- | --- | --- | --- | --- | --- | --- |
|  | 4301 | **RHD4-02-002-A015-(ST)-Concrete Chambers** |  | 2026-08-20 | 2027-01-25 |  |  |  |  |  |  |  |  |  |  |  |  |  |  |  |  |
| RHD4CZ6A015ST5100 |  | Excavation and Bedding for Concrete Chambers - for Box Culvert - (RD-A-1/5)-Z6-A015-ST | 2d | 2026-08-20 A | 2027-01-18 | RHD4CZ6A015ST4500 | 50% | 2d | 2026-08-05 | 2026-08-06 | -150d | 0d | Skilled labor [21.78 h]; Unskilled Labor [21.78 h]; Equipment Opreator [4.36 h]; Excavator-Poclain [2.18 h]; Dump Truck [2.18 h]; Concrete chambers - ST - Size 1.8 x 2.0 m, depth 4.51-5.5 m [0.3 nr] | 11,612.4 | 5,806.2 | A015 | Z6 | CONS | ST | Excavation & Bedding | bef |
| RHD4CZ6A015ST5200 |  | PC works for Concrete Chambers - for Box Culvert - (RD-A-1/5)-Z6-A015-ST | 2d | 2026-08-25 A | 2027-01-20 | RHD4CZ6A015ST5100 | 50% | 2d | 2026-08-08 | 2026-08-09 | -150d | 0d | Skilled labor [21.78 h]; Unskilled Labor [21.78 h]; Equipment Opreator [4.36 h]; Excavator-Poclain [2.18 h]; Dump Truck [2.18 h]; Concrete chambers - ST - Size 1.8 x 2.0 m, depth 4.51-5.5 m [0.2 nr] | 7,741.6 | 3,870.8 | A015 | Z6 | CONS | ST | PC Works | bef |
| RHD4CZ6A015ST5300 |  | Installation for Concrete Chambers - for Box Culvert - (RD-A-1/5)-Z6-A015-ST | 2d | 2026-08-30 A | 2027-01-23 | RHD4CZ6A015ST5200 | 50% | 2d | 2026-08-10 | 2026-08-11 | -150d | 0d | Skilled labor [21.78 h]; Unskilled Labor [21.78 h]; Equipment Opreator [4.36 h]; Excavator-Poclain [2.18 h]; Dump Truck [2.18 h]; Concrete chambers - ST - Size 1.8 x 2.0 m, depth 4.51-5.5 m [1.1 nr] | 42,578.8 | 21,289.4 | A015 | Z6 | CONS | ST | Installation | bef |
| RHD4CZ6A015ST5400 |  | Backfilling works for Concrete Chambers - for Box Culvert - (RD-A-1/5)-Z6-A015-ST | 2d | 2027-01-24 | 2027-01-25 | RHD4CZ6A015ST5300 |  |  |  |  | -150d | 0d | Skilled labor [21.78 h]; Unskilled Labor [21.78 h]; Equipment Opreator [4.36 h]; Excavator-Poclain [2.18 h]; Dump Truck [2.18 h]; Concrete chambers - ST - Size 1.8 x 2.0 m, depth 4.51-5.5 m [0.4 nr] | 15,483.2 |  | A015 | Z6 | CONS | ST | Backfilling Works | bef |
|  | 4767 | **RHD4-02-002-Z6-A015-Potable Network - PT** |  | 2026-12-31 | 2027-03-28 |  |  |  |  |  |  |  |  |  |  |  |  |  |  |  |  |
|  | 1745 | **RHD4-02-002-C011-(PT)-HDPE Pipes - 450 mm diameter** |  | 2026-12-31 | 2027-01-21 |  |  |  |  |  |  |  |  |  |  |  |  |  |  |  |  |
| RHD4CZ6A015PT1104 |  | Excavation works for HDPE Pipline 450 mm - (RD-A-1 /5)-Z6-A015-PT | 4d | 2026-12-31 | 2027-01-04 | RHD4CZ6A015ST2500 |  |  |  |  | -187d | 0d | Skilled labor [33.44 h]; Unskilled Labor [33.44 h]; Equipment Opreator [40.16 h]; Excavator-Poclain [33.44 h]; Dump Truck [6.64 h]; HDPE (450mm Diameter) - PT - Depth: less than 1.5m [45 m]; HDPE (450mm Diameter) - PT - Depth: more than 1.5m | 17,100 |  | C011 | Z3 | CONS | PT | Excavation | bef |
| RHD4CZ6A015PT1204 |  | Bedding works for HDPE Pipline 450 mm - (RD-A-1 /5)-Z6-A015-PT | 3d | 2027-01-05 | 2027-01-07 | RHD4CZ6A015PT1104 |  |  |  |  | -187d | 0d | Skilled labor [28.72 h]; Unskilled Labor [57.52 h]; Equipment Opreator [57.52 h]; Excavator-Poclain [28.72 h]; Dump Truck [28.72 h]; HDPE (450mm Diameter) - PT - Depth: less than 1.5m [22.5 m]; HDPE (450mm Diameter) - PT - Depth: more than 1.5m | 8,550 |  | C011 | Z3 | CONS | PT | Bedding | bef |
| RHD4CZ6A015PT1304 |  | Installing for HDPE Pipline 450 mm - (RD-A-1 /5)-Z6-A015-PT | 5d | 2027-01-09 | 2027-01-14 | RHD4CZ6A015PT1204 |  |  |  |  | -187d | 0d | Unskilled Labor [104.64 h]; Plumber [52.4 h]; Equipment Opreator [52.4 h]; Boom Truck [52.4 h]; HDPE (450mm Diameter) - PT - Depth: less than 1.5m [202.5 m]; HDPE (450mm Diameter) - PT - Depth: more than 1.5m | 76,950 |  | C011 | Z3 | CONS | PT | Installation | bef |
| RHD4CZ6A015PT1404 |  | Primary Test for HDPE Pipline 450 mm - (RD-A-1 /5)-Z6-A015-PT | 2d | 2027-01-14 | 2027-01-17 | RHD4CZ6A015PT1304 |  |  |  |  | -187d | 0d | Unskilled Labor [19.28 h]; Plumber [19.28 h]; Equipment Opreator [19.28 h]; Water Truck [19.28 h]; HDPE (450mm Diameter) - PT - Depth: less than 1.5m [90 m]; HDPE (450mm Diameter) - PT - Depth: more than 1.5m | 34,200 |  | C011 | Z3 | CONS | PT | Primary Test | bef |
| RHD4CZ6A015PT1504 |  | Backfilling and warning tape works for HDPE Pipline 450 mm - (RD-A-1 /5)-Z6-A015-PT | 4d | 2027-01-17 | 2027-01-21 | RHD4CZ6A015PT1404 |  |  |  |  | -187d | 10.02d | Skilled labor [40.48 h]; Unskilled Labor [81.12 h]; Equipment Opreator [81.12 h]; Excavator-Poclain [40.48 h]; Dump Truck [40.48 h]; HDPE (450mm Diameter) - PT - Depth: less than 1.5m [90 m]; HDPE (450mm Diameter) - PT - Depth: more than 1.5m | 34,200 |  | C011 | Z3 | CONS | PT | Backfilling | bef |
|  | 4770 | **RHD4-02-002-A015-(PT)-HDPE Pipes - 200 mm diameter** |  | 2027-02-24 | 2027-03-16 |  |  |  |  |  |  |  |  |  |  |  |  |  |  |  |  |
| RHD4CZ6A015PT1102 |  | Excavation works for HDPE Pipline 200 mm - (RD-A-1 /5)-Z6-A015-PT | 3d | 2027-02-24 | 2027-02-28 | RHD4ENSDZ6APPPT130, RHD4ENMSPT2000, RHD4CZ6A015ST1500, RHD4ENMSEW2000, RHD4ENMSEW2010, RHD4ENSDZ6APPEW100 SS, RHD4CZ6B17EX1001 |  |  |  |  | -147.04d | 0d | Skilled labor [24.61 h]; Unskilled Labor [24.61 h]; Equipment Opreator [29.51 h]; Excavator-Poclain [24.61 h]; Dump Truck [4.9 h]; HDPE (200mm Diameter) - PT - Depth: less than 1.5m [50.56 m]; HDPE (200mm Diameter) - PT - Depth: more than 1.5m | 7,078.4 |  | A015 | Z6 | CONS | PT | Excavation | bef |
| RHD4CZ6A015PT1202 |  | Bedding works for HDPE Pipline 200 mm - (RD-A-1 /5)-Z6-A015-PT | 2d | 2027-02-28 | 2027-03-02 | RHD4CZ6A015PT1102 |  |  |  |  | -147.04d | 0d | Skilled labor [21.6 h]; Unskilled Labor [43.13 h]; Equipment Opreator [43.13 h]; Excavator-Poclain [21.6 h]; Dump Truck [21.6 h]; HDPE (200mm Diameter) - PT - Depth: less than 1.5m [25.28 m]; HDPE (200mm Diameter) - PT - Depth: more than 1.5m | 3,539.2 |  | A015 | Z6 | CONS | PT | Bedding | bef |
| RHD4CZ6A015PT1302 |  | Installing for HDPE Pipline 200 mm - (RD-A-1 /5)-Z6-A015-PT | 4d | 2027-03-02 | 2027-03-07 | RHD4CZ6A015PT1202, RHD4PRSHLDOSPT1000, RHD4PRSHLSTAGPT1000 |  |  |  |  | -147.04d | 0d | Unskilled Labor [73.4 h]; Plumber [36.7 h]; Equipment Opreator [36.7 h]; Boom Truck [36.7 h]; HDPE (200mm Diameter) - PT - Depth: less than 1.5m [227.52 m]; HDPE (200mm Diameter) - PT - Depth: more than 1.5m | 31,852.8 |  | A015 | Z6 | CONS | PT | Installation | bef |
| RHD4CZ6A015PT1402 |  | Primary Test for HDPE Pipline 200 mm - (RD-A-1 /5)-Z6-A015-PT | 2d | 2027-03-07 | 2027-03-13 | RHD4CZ6A015PT1302 |  |  |  |  | -147.02d | 0.02d | Unskilled Labor [15.57 h]; Plumber [15.57 h]; Equipment Opreator [15.57 h]; Water Truck [15.57 h]; HDPE (200mm Diameter) - PT - Depth: less than 1.5m [101.12 m]; HDPE (200mm Diameter) - PT - Depth: more than 1.5m | 14,156.8 |  | A015 | Z6 | CONS | PT | Primary Test | bef |
| RHD4CZ6A015PT1502 |  | Backfilling and warning tape works for HDPE Pipline 200 mm - (RD-A-1 /5)-Z6-A015-PT | 3d | 2027-03-13 | 2027-03-16 | RHD4CZ6A015PT1402, RHD4CZ6A015PT5100 |  |  |  |  | -147.04d | 0d | Skilled labor [29.19 h]; Unskilled Labor [58.26 h]; Equipment Opreator [58.26 h]; Excavator-Poclain [29.19 h]; Dump Truck [29.19 h]; HDPE (200mm Diameter) - PT - Depth: less than 1.5m [101.12 m]; HDPE (200mm Diameter) - PT - Depth: more than 1.5m | 14,156.8 |  | A015 | Z6 | CONS | PT | Backfilling | bef |
|  | 4776 | **RHD4-02-002-A015-(PT)-Wash out Valve Chambers** |  | 2027-03-16 | 2027-03-25 |  |  |  |  |  |  |  |  |  |  |  |  |  |  |  |  |
| RHD4CZ6A015PT2101 |  | Excavation and Bedding for Wash out Valve Chambers for Potable Water Network - (RD-A-1 /5)-Z6-A015-PT | 2d | 2027-03-16 | 2027-03-18 | RHD4CZ6A015PT1502, RHD4ENSDZ6APPPT130 |  |  |  |  | -106.04d | 0d | Skilled labor [5.45 h]; Unskilled Labor [5.45 h]; Equipment Opreator [1.09 h]; Excavator-Poclain [0.54 h]; Dump Truck [0.54 h]; Wash out chambers - PT [0.25 nr] | 4,686.25 |  | A015 | Z6 | CONS | PT | Excavation and Bedding | bef |
| RHD4CZ6A015PT2201 |  | PC works for Wash out Valve Chambers for Potable Water Network - (RD-A-1 /5)-Z6-A015-PT | 2d | 2027-03-18 | 2027-03-21 | RHD4CZ6A015PT2101 |  |  |  |  | -106.04d | 0d | Skilled labor [5.45 h]; Unskilled Labor [10.89 h]; Equipment Opreator [0.54 h]; Concrete Pump [0.54 h]; Wash out chambers - PT [0.1 nr] | 1,874.5 |  | A015 | Z6 | CONS | PT | PC Works | bef |
| RHD4CZ6A015PT2301 |  | Installation for Wash out Valve Chambers for Potable Water Network - (RD-A-1 /5)-Z6-A015-PT | 2d | 2027-03-21 | 2027-03-23 | RHD4CZ6A015PT2201, RHD4PRSHLDOSPT1100, RHD4PRSHLDOSPT1400, RHD4PRSHLSTAGPT1100, RHD4PRSHLSTAGPT1400 |  |  |  |  | -106.04d | 0d | Skilled labor [5.45 h]; Unskilled Labor [10.89 h]; Equipment Opreator [1.09 h]; Boom Truck [1.09 h]; Wash out chambers - PT [0.55 nr] | 10,309.75 |  | A015 | Z6 | CONS | PT | Installation | bef |
| RHD4CZ6A015PT2401 |  | Backfilling works for Wash out Valve Chambers for Potable Water Network - (RD-A-1 /5)-Z6-A015-PT | 2d | 2027-03-23 | 2027-03-25 | RHD4CZ6A015PT2301 |  |  |  |  | -106.04d | 0d | Skilled labor [5.45 h]; Unskilled Labor [10.89 h]; Equipment Opreator [1.09 h]; Water Truck [0.54 h]; Dump Truck [0.54 h]; Wash out chambers - PT [0.1 nr] | 1,874.5 |  | A015 | Z6 | CONS | PT | Backfilling Works | bef |
|  | 4777 | **RHD4-02-002-A015-(PT)-Wash out Valves** |  | 2027-03-23 | 2027-03-28 |  |  |  |  |  |  |  |  |  |  |  |  |  |  |  |  |
| RHD4CZ6A015PT3102 |  | Installation for Wash out Valves for Potable Water Network - (RD-A-1 /5)-Z6-A015-PT | 2d | 2027-03-23 | 2027-03-25 | RHD4CZ6A015PT2301, RHD4PRSHLDOSPT1200, RHD4PRSHLSTAGPT1200 |  |  |  |  | -106.04d | 0d | Unskilled Labor [5.45 h]; Plumber [5.45 h]; Wash out valve diameter 100 mm - PT [0.9 nr] | 3,373.2 |  | A015 | Z6 | CONS | PT | Installation | bef |
| RHD4CZ6A015PT3202 |  | Stem and Service box for Wash out Valves for Potable Water Network - (RD-A-1 /5)-Z6-A015-PT | 2d | 2027-03-25 | 2027-03-28 | RHD4CZ6A015PT3102, RHD4CZ6A015PT2401, RHD4PRSHLDOSPT1300, RHD4PRSHLSTAGPT1300 |  |  |  |  | -106.04d | 52.96d | Unskilled Labor [5.45 h]; Plumber [5.45 h]; Wash out valve diameter 100 mm - PT [0.1 nr] | 374.8 |  | A015 | Z6 | CONS | PT | Stem and Service box | bef |

| ID | WBS | Activity | Duration | Start | Finish | Predecessors | Complete | Remaining | Planned start | Planned finish | Total float | Free float | Resources | Cost | RDH4-01-001-Road and Block Names-1 | RDH4-01-001-Zones-1 | RDH4-01-001-Phases-1 | RDH4-01-001-Networks-1 | RDH4-01-001-Work Method-1 | RDH4-01-001-MENEM |
| --- | --- | --- | --- | --- | --- | --- | --- | --- | --- | --- | --- | --- | --- | --- | --- | --- | --- | --- | --- | --- |
|  | 4780 | **RHD4-02-002-A015-(PT)-Fire Hydrant** |  | 2027-03-16 | 2027-03-28 |  |  |  |  |  |  |  |  |  |  |  |  |  |  |  |
| RHD4CZ6A015PT4100 |  | Excavation and Bedding and Pipe Installation for Fire Hydrant - (RD-A-1 /5)-Z6-A015-PT | 2d | 2027-03-16 | 2027-03-18 | RHD4CZ6A015PT1502, RHD4ENSDZ6APPPT130 |  |  |  |  | -147.04d | 0d | Skilled labor [21.78 h]; Unskilled Labor [21.78 h]; Plumber [21.78 h]; Equipment Opreator [10.89 h]; Excavator-Poclain [10.89 h]; 3-outlet fire hydrant (2 x 2.5 inch and 1 x 4.5 inch) in the form of a separate dry vacuum cylinder [0.4 nr] | 5,048 | A015 | Z6 | CONS | PT | Excavation | bef |
| RHD4CZ6A015PT4200 |  | Valve Installation for Fire Hydrant - (RD-A-1 /5)-Z6-A015-PT | 2d | 2027-03-18 | 2027-03-21 | RHD4CZ6A015PT4100 |  |  |  |  | -147.04d | 0d | Unskilled Labor [14.48 h]; Plumber [14.48 h]; 3-outlet fire hydrant (2 x 2.5 inch and 1 x 4.5 inch) in the form of a separate dry vacuum cylinder [0.8 nr] | 10,096 | A015 | Z6 | CONS | PT | Valve | bef |
| RHD4CZ6A015PT4300 |  | Stem for Fire Hydrant - (RD-A-1 /5)-Z6-A015-PT | 2d | 2027-03-21 | 2027-03-23 | RHD4CZ6A015PT4200 |  |  |  |  | -147.04d | 0d | Unskilled Labor [14.48 h]; Plumber [14.48 h]; 3-outlet fire hydrant (2 x 2.5 inch and 1 x 4.5 inch) in the form of a separate dry vacuum cylinder [1.2 nr] | 15,144 | A015 | Z6 | CONS | PT | Stem | bef |
| RHD4CZ6A015PT4400 |  | Fire Installation for Fire Hydrant - (RD-A-1 /5)-Z6-A015-PT | 2d | 2027-03-23 | 2027-03-25 | RHD4CZ6A015PT4300, RHD4PRSHLDOSPT1500, RHD4PRSHLSTAGPT1500 |  |  |  |  | -106.04d | 0d | Unskilled Labor [14.48 h]; Plumber [14.48 h]; Equipment Opreator [14.48 h]; Boom Truck [14.48 h]; 3-outlet fire hydrant (2 x 2.5 inch and 1 x 4.5 inch) in the form of a separate dry vacuum cylinder [1.4 nr] | 17,668 | A015 | Z6 | CONS | PT | Fire | bef |
| RHD4CZ6A015PT4500 |  | Protection Barriers for Fire Hydrant - (RD-A-1 /5)-Z6-A015-PT | 2d | 2027-03-25 | 2027-03-28 | RHD4CZ6A015PT4400 |  |  |  |  | -106.04d | 52.96d | Unskilled Labor [8.71 h]; Plumber [8.71 h]; 3-outlet fire hydrant (2 x 2.5 inch and 1 x 4.5 inch) in the form of a separate dry vacuum cylinder [0.2 nr] | 2,524 | A015 | Z6 | CONS | PT | Protection Barriers | bef |
|  | 4781 | **RHD4-02-002-A015-(PT)-Concrete Encasement** |  | 2027-03-07 | 2027-03-13 |  |  |  |  |  |  |  |  |  |  |  |  |  |  |  |
| RHD4CZ6A015PT5100 |  | Pipe Encasement for Potable Pipelines - (RD-A-1 /5)-Z6-A015-PT | 2.02d | 2027-03-07 | 2027-03-13 | RHD4CZ6A015PT1302 |  |  |  |  | -147.04d | 0d | Skilled labor [4.72 h]; Unskilled Labor [4.72 h]; Equipment Opreator [5.2 h]; Concrete Mixer Truck [0.4 h]; Dump Truck [4.72 h]; Pipe Encasement - PT [96.45 m3] | 118,247.7 | C052 | Z6 | CONS | PT | Pipe Encasement | bef |
|  | 4773 | **RHD4-02-002-A015-(PT)-Gate Valves (Direct Buried)** |  | 2027-03-04 | 2027-03-18 |  |  |  |  |  |  |  |  |  |  |  |  |  |  |  |
| RHD4CZ6A015PT3100 |  | Installation for Direct Buried Gate Valves - (RD-A-1 /5)-Z6-A015-PT | 2d | 2027-03-04 | 2027-03-07 | RHD4CZ6A015PT1302 FF, RHD4CZ6A015PT1302 SS, RHD4PRSHLDOSPT1200, RHD4PRSHLSTAGPT1200 |  |  |  |  | -93.02d | 5.02d | Unskilled Labor [5.45 h]; Plumber [5.45 h]; Gate valves dia 200 mm - PT [0.9 nr] | 2,008.8 | A015 | Z6 | CONS | PT | Installation | bef |
| RHD4CZ6A015PT3200 |  | Stem and Service box for Direct Buried Gate Valves - (RD-A-1 /5)-Z6-A015-PT | 2d | 2027-03-16 | 2027-03-18 | RHD4CZ6A015PT3100, RHD4CZ6A015PT1502, RHD4PRSHLDOSPT1300, RHD4PRSHLSTAGPT1300, RHD4CZ6A015PT1504 |  |  |  |  | -98.04d | 12.98d | Unskilled Labor [5.45 h]; Plumber [5.45 h]; Gate valves dia 200 mm - PT [0.1 nr] | 223.2 | A015 | Z6 | CONS | PT | Stem and Service box | bef |
|  | 4782 | **RHD4-02-002-Z6-A015-Irrigation Network - IRR** |  | 2026-08-04 | 2027-04-14 |  |  |  |  |  |  |  |  |  |  |  |  |  |  |  |
|  | 4783 | **RHD4-02-002-A015-(IRR)-HDPE Pipes - 160 mm diameter** |  | 2026-08-04 | 2027-04-03 |  |  |  |  |  |  |  |  |  |  |  |  |  |  |  |
| RHD4CZ6A015IRR1100 |  | Excavation works for HDPE Pipline 160 mm - (RD-A-1 /5)-Z6-A015-IRR | 7d | 2026-08-04 A | 2027-03-08 | RHD4ENSDZ6APPIRR140, RHD4ENMSRR2000, RHD4CZ6A015PT1102 | 14% | 7d | 2026-10-08 | 2026-10-15 | -146.02d | 0d | Skilled labor [69.04 h]; Unskilled Labor [69.04 h]; Equipment Opreator [82.88 h]; Excavator-Poclain [69.04 h]; Dump Truck [13.83 h]; HDPE (160mm Diameter) - TSE - Depth: less than 1.5m [92.6 m]; HDPE (160mm Diameter) - TSE - Depth: more than 1.51m [3.81 m] | 11,965.11 | A015 | Z6 | CONS | IRR | Excavation | bef |
| RHD4CZ6A015IRR1200 |  | Bedding works for HDPE Pipline 160 mm - (RD-A-1 /5)-Z6-A015-IRR | 5d | 2026-08-06 A | 2027-03-17 | RHD4CZ6A015IRR1100 | 13% | 5d | 2026-10-17 | 2026-10-21 | -112.02d | 0d | Skilled labor [52.27 h]; Unskilled Labor [104.55 h]; Equipment Opreator [104.55 h]; Excavator-Poclain [52.27 h]; Dump Truck [52.27 h]; HDPE (160mm Diameter) - TSE - Depth: less than 1.5m [46.3 m]; HDPE (160mm Diameter) - TSE - Depth: more than 1.51m [1.27 m] | 5,886.67 | A015 | Z6 | CONS | IRR | Bedding | bef |
| RHD4CZ6A015IRR1300 |  | Installing for HDPE Pipline 160 mm - (RD-A-1 /5)-Z6-A015-IRR | 7d | 2026-08-08 A | 2027-03-25 | RHD4CZ6A015IRR1200, RHD4PRSHLDOSIRR1000, RHD4PRSHLSTAGIRR1000 | 13% | 7d | 2026-10-22 | 2026-10-29 | -112.02d | 0d | Unskilled Labor [138.2 h]; Plumber [69.04 h]; Equipment Opreator [69.04 h]; Boom Truck [69.04 h]; HDPE (160mm Diameter) - TSE - Depth: less than 1.5m [416.7 m]; HDPE (160mm Diameter) - TSE - Depth: more than 1.51m [10.16 m] | 52,788.26 | A015 | Z6 | CONS | IRR | Installation | bef |
| RHD4CZ6A015IRR1400 |  | Primary Test for HDPE Pipline 160 mm - (RD-A-1 /5)-Z6-A015-IRR | 2d | 2027-03-25 | 2027-03-28 | RHD4CZ6A015IRR1300, RHD4CZ6A015IRR3100 |  |  |  |  | -112.02d | 0d | Unskilled Labor [21.13 h]; Plumber [21.13 h]; Equipment Opreator [21.13 h]; Water Truck [21.13 h]; HDPE (160mm Diameter) - TSE - Depth: less than 1.5m [185.2 m]; HDPE (160mm Diameter) - TSE - Depth: more than 1.51m [5.08 m] | 23,546.68 | A015 | Z6 | CONS | IRR | Primary Test | bef |
| RHD4CZ6A015IRR1500 |  | Backfilling and warning tape works for HDPE Pipline 160 mm - (RD-A-1 /5)-Z6-A015-IRR | 5d | 2027-03-28 | 2027-04-03 | RHD4CZ6A015IRR1400 |  |  |  |  | -112.02d | 0d | Skilled labor [52.27 h]; Unskilled Labor [104.55 h]; Equipment Opreator [104.55 h]; Excavator-Poclain [52.27 h]; Dump Truck [52.27 h]; HDPE (160mm Diameter) - TSE - Depth: less than 1.5m [185.2 m]; HDPE (160mm Diameter) - TSE - Depth: more than 1.51m [5.08 m] | 23,546.68 | A015 | Z6 | CONS | IRR | Backfilling | bef |
|  | 4791 | **RHD4-02-002-A015-(IRR)-Gate Valves (Direct Buried)** |  | 2027-03-22 | 2027-04-06 |  |  |  |  |  |  |  |  |  |  |  |  |  |  |  |
| RHD4CZ6A015IRR3100 |  | Installation for Direct Buried Gate Valves - (RD-A-1 /5)-Z6-A015-IRR | 3d | 2027-03-22 | 2027-03-25 | RHD4CZ6A015IRR1300 SS, RHD4CZ6A015IRR1300 FF, RHD4PRSHLDOSIRR1100, RHD4PRSHLSTAGIRR1100 |  |  |  |  | -112.02d | 0d | Unskilled Labor [27.2 h]; Plumber [27.2 h]; Gate valves dia 100 mm - TSE [4.5 nr] | 7,110 | A015 | Z6 | CONS | IRR | Installation | bef |
| RHD4CZ6A015IRR3200 |  | Stem and Service box for Direct Buried Gate Valves - (RD-A-1 /5)-Z6-A015-IRR | 3d | 2027-04-03 | 2027-04-06 | RHD4CZ6A015IRR3100, RHD4CZ6A015IRR1500, RHD4PRSHLDOSIRR1300, RHD4PRSHLSTAGIRR1300 |  |  |  |  | -107.02d | 5d | Unskilled Labor [27.2 h]; Plumber [27.2 h]; Gate valves dia 100 mm - TSE [0.5 nr] | 790 | A015 | Z6 | CONS | IRR | Stem and Service box | bef |
|  | 4794 | **RHD4-02-002-A015-(IRR)-Wash out Chamber** |  | 2027-04-03 | 2027-04-12 |  |  |  |  |  |  |  |  |  |  |  |  |  |  |  |
| RHD4CZ6A015IRR2101 |  | Excavation and Bedding for Wash out Chamber for Irrigation Network - (RD-A-1 /5)-Z6-A015-IRR | 2d | 2027-04-03 | 2027-04-05 | RHD4CZ6A015IRR1500, RHD4ENSDZ6APPIRR140 |  |  |  |  | -112.02d | 0d | Skilled labor [5.45 h]; Unskilled Labor [5.45 h]; Equipment Opreator [1.09 h]; Excavator-Poclain [0.54 h]; Dump Truck [0.54 h]; Wash out chambers - TSE [0.25 nr] | 4,686.25 | A015 | Z6 | CONS | IRR | Excavation and Bedding | bef |
| RHD4CZ6A015IRR2201 |  | PC works for Wash out Chamber for Irrigation Network - (RD-A-1 /5)-Z6-A015-IRR | 2d | 2027-04-05 | 2027-04-07 | RHD4CZ6A015IRR2101 |  |  |  |  | -112.02d | 0d | Skilled labor [5.45 h]; Unskilled Labor [10.89 h]; Equipment Opreator [0.54 h]; Concrete Pump [0.54 h]; Wash out chambers - TSE [0.1 nr] | 1,874.5 | A015 | Z6 | CONS | IRR | PC Works | bef |
| RHD4CZ6A015IRR2301 |  | Installation for Wash out Chamber for Irrigation Network - (RD-A-1 /5)-Z6-A015-IRR | 2d | 2027-04-07 | 2027-04-10 | RHD4CZ6A015IRR2201, RHD4PRSHLDOSIRR1200, RHD4PRSHLDOSIRR1400, RHD4PRSHLSTAGIRR1200, RHD4PRSHLSTAGIRR1400 |  |  |  |  | -112.02d | 0d | Skilled labor [5.45 h]; Unskilled Labor [10.89 h]; Equipment Opreator [1.09 h]; Boom Truck [1.09 h]; Wash out chambers - TSE [0.55 nr] | 10,309.75 | A015 | Z6 | CONS | IRR | Installation | bef |
| RHD4CZ6A015IRR2401 |  | Backfilling works for Wash out Chamber for Irrigation Network - (RD-A-1 /5)-Z6-A015-IRR | 2d | 2027-04-10 | 2027-04-12 | RHD4CZ6A015IRR2301 |  |  |  |  | -112.02d | 0d | Skilled labor [5.45 h]; Unskilled Labor [10.89 h]; Equipment Opreator [1.09 h]; Water Truck [0.54 h]; Dump Truck [0.54 h]; Wash out chambers - TSE [0.1 nr] | 1,874.5 | A015 | Z6 | CONS | IRR | Backfilling Works | bef |

| ID | WBS | Activity | Duration | Start | Finish | Predecessors | Total float | Free float | Resources | Cost | RDH4-01-001-Road and Block Names-1 | RDH4-01-001-Zones-1 | RDH4-01-001-Phases-1 | RDH4-01-001-Networks-1 | RDH4-01-001-Work Method-1 | RDH4-01-001-MENEM |
| --- | --- | --- | --- | --- | --- | --- | --- | --- | --- | --- | --- | --- | --- | --- | --- | --- |
|  | 4795 | **RHD4-02-002-A015-(IRR)-Wash out Valves** |  | 2027-04-10 | 2027-04-14 |  |  |  |  |  |  |  |  |  |  |  |
| RHD4CZ6A015IRR3102 |  | Installation for Wash out Valve for Irrigation Network - (RD-A-1 /5)-Z6-A015-IRR | 2d | 2027-04-10 | 2027-04-12 | RHD4CZ6A015IRR2301, RHD4PRSHLDOSIRR1100, RHD4PRSHLSTAGIRR1100 | -112.02d | 0d | Unskilled Labor [5.45 h]; Plumber [5.45 h]; Wash out valve diameter 100 mm - TSE [0.9 nr] | 3,373.2 | A015 | Z6 | CONS | IRR | Installation | bef |
| RHD4CZ6A015IRR3202 |  | Stem and Service box for Wash out Valve for Irrigation Network - (RD-A-1 /5)-Z6-A015-IRR | 2d | 2027-04-12 | 2027-04-14 | RHD4CZ6A015IRR3102, RHD4CZ6A015IRR2401, RHD4PRSHLDOSIRR1300, RHD4PRSHLSTAGIRR1300, RHD4CZ6A015IRR3200 | -112.02d | 66.98d | Unskilled Labor [5.45 h]; Plumber [5.45 h]; Wash out valve diameter 100 mm - TSE [0.1 nr] | 374.8 | A015 | Z6 | CONS | IRR | Stem and Service box | bef |
|  | 4796 | **RHD4-02-002-A015-(IRR)-Air Valve Chamber** |  | 2027-04-03 | 2027-04-12 |  |  |  |  |  |  |  |  |  |  |  |
| RHD4CZ6A015IRR2102 |  | Excavation and Bedding for Valve Chamber for Irrigation Network - (RD-A-1 /5)-Z6-A015-IRR | 2d | 2027-04-03 | 2027-04-05 | RHD4CZ6A015IRR1500, RHD4ENSDZ6APPIRR140 | -110.02d | 0d | Skilled labor [10.89 h]; Unskilled Labor [10.89 h]; Equipment Opreator [2.18 h]; Excavator-Poclain [1.09 h]; Dump Truck [1.09 h]; Air Valve chambers - TSE [0.5 nr] | 2,386 | A015 | Z6 | CONS | IRR | Excavation and Bedding | bef |
| RHD4CZ6A015IRR2202 |  | PC works for Valve Chamber for Irrigation Network - (RD-A-1 /5)-Z6-A015-IRR | 2d | 2027-04-05 | 2027-04-07 | RHD4CZ6A015IRR2102 | -110.02d | 0d | Skilled labor [10.89 h]; Unskilled Labor [21.78 h]; Equipment Opreator [1.09 h]; Concrete Pump [1.09 h]; Air Valve chambers - TSE [0.2 nr] | 954.4 | A015 | Z6 | CONS | IRR | PC Works | bef |
| RHD4CZ6A015IRR2302 |  | Installation for Valve Chamber for Irrigation Network - (RD-A-1 /5)-Z6-A015-IRR | 2d | 2027-04-07 | 2027-04-10 | RHD4CZ6A015IRR2202, RHD4PRSHLDOSIRR1200, RHD4PRSHLDOSIRR1400, RHD4PRSHLSTAGIRR1200, RHD4PRSHLSTAGIRR1400 | -110.02d | 0d | Skilled labor [10.89 h]; Unskilled Labor [21.78 h]; Equipment Opreator [2.18 h]; Boom Truck [2.18 h]; Air Valve chambers - TSE [1.1 nr] | 5,249.2 | A015 | Z6 | CONS | IRR | Installation | bef |
| RHD4CZ6A015IRR2402 |  | Backfilling works for Valve Chamber for Irrigation Network - (RD-A-1 /5)-Z6-A015-IRR | 2d | 2027-04-10 | 2027-04-12 | RHD4CZ6A015IRR2302 | -110.02d | 0d | Skilled labor [10.89 h]; Unskilled Labor [21.78 h]; Equipment Opreator [2.18 h]; Water Truck [1.09 h]; Dump Truck [1.09 h]; Air Valve chambers - TSE [0.2 nr] | 954.4 | A015 | Z6 | CONS | IRR | Backfilling Works | bef |
|  | 4797 | **RHD4-02-002-A015-(IRR)-Air Valves** |  | 2027-04-10 | 2027-04-14 |  |  |  |  |  |  |  |  |  |  |  |
| RHD4CZ6A015IRR3103 |  | Installation for Air Valves for Irrigation Network - (RD-A-1 /5)-Z6-A015-IRR | 2d | 2027-04-10 | 2027-04-12 | RHD4CZ6A015IRR2302, RHD4PRSHLDOSIRR1100, RHD4PRSHLSTAGIRR1100 | -110.02d | 0d | Unskilled Labor [10.89 h]; Plumber [10.89 h]; Air valve diameter 50 mm - TSE [1.8 nr] | 8,854.2 | A015 | Z6 | CONS | IRR | Installation | bef |
| RHD4CZ6A015IRR3203 |  | Stem and Service box for Air Valves for Irrigation Network - (RD-A-1 /5)-Z6-A015-IRR | 2d | 2027-04-12 | 2027-04-14 | RHD4CZ6A015IRR3103, RHD4CZ6A015IRR2402, RHD4PRSHLDOSIRR1300, RHD4PRSHLSTAGIRR1300 | -110.02d | 68.98d | Unskilled Labor [10.89 h]; Plumber [10.89 h]; Air valve diameter 50 mm - TSE [0.2 nr] | 983.8 | A015 | Z6 | CONS | IRR | Stem and Service box | bef |
|  | 4798 | **RHD4-02-002-A015-(IRR)-Concrete Encasement** |  |  |  |  |  |  |  |  |  |  |  |  |  |  |
|  | 4816 | **RHD4-02-002-Z6-A015-Medium Voltage Network - MV** |  |  |  |  |  |  |  |  |  |  |  |  |  |  |
|  | 4817 | **RHD4-02-002-A015-(MV)-Medium Voltage cable trench** |  |  |  |  |  |  |  |  |  |  |  |  |  |  |
|  | 4819 | **RHD4-02-002-A015-(MV)-Medium Voltage cables 3Cx 500 mm²** |  |  |  |  |  |  |  |  |  |  |  |  |  |  |
|  | 4823 | **RHD4-02-002-Z6-A015-Low Voltage Network - LV** |  | 2027-09-15 | 2027-10-09 |  |  |  |  |  |  |  |  |  |  |  |
|  | 4826 | **RHD4-02-002-A015-(LV)-Low Voltage cables** |  | 2027-09-15 | 2027-10-09 |  |  |  |  |  |  |  |  |  |  |  |
| RHD4CZ6A015LV3100 |  | Excavation for Low Voltage Cables for Low Voltage Network - (RD-A-1 /5)-Z6-A015-LV | 6d | 2027-09-15 | 2027-09-22 | RHD4ENSDZ6APPLV160, RHD4CZ6C062LV3400, RHD4CZ6A015RD3100 | -192.02d | 0d | Skilled labor [63.38 h]; Unskilled Labor [126.76 h]; Equipment Opreator [126.76 h]; Excavator-Poclain [63.38 h]; Boom Truck [63.38 h]; Cable, Copper 4x50mm2/ CU/XLPE/PVC +1x25mm2 CU/PVC [144.4 m]; Cable, Copper 3x10mm2/ CU/XLPE/SWA/PVC [146.69 m] | 23,482.11 | A015 | Z6 | CONS | LV | Excavation | AFT |
| RHD4CZ6A015LV3200 |  | Cable Laying of Low Voltage Cables for Low Voltage Network - (RD-A-1 /5)-Z6-A015-LV | 5d | 2027-09-22 | 2027-09-29 | RHD4CZ6A015LV3100, RHD4PRSHLDOSLV1100, RHD4ENMSLV2000, RHD4ENMSLV2010, RHD4PRSHLSTAGLV1100 | -192.02d | 0d | Skilled labor [52.8 h]; Unskilled Labor [211.38 h]; Electrician [105.6 h]; Equipment Opreator [158.45 h]; Boom Truck [52.8 h]; Cable Laying Machine [105.6 h]; Cable, Copper 4x50mm2/ CU/XLPE/PVC +1x25mm2 CU/PVC [433.2 m]; Cable, Copper 3x10mm2/ CU/XLPE/SWA/PVC [440.06 m] | 70,445.94 | A015 | Z6 | CONS | LV | Cable Laying | AFT |
| RHD4CZ6A015LV3300 |  | Warning tape and Backfill for Low Voltage Cables for Low Voltage Network - (RD-A-1 /5)-Z6-A015-LV | 5d | 2027-09-29 | 2027-10-05 | RHD4CZ6A015LV3200 | -192.02d | 0d | Skilled labor [52.8 h]; Unskilled Labor [211.38 h]; Electrician [105.6 h]; Equipment Opreator [52.8 h]; Boom Truck [52.8 h]; Cable, Copper 4x50mm2/ CU/XLPE/PVC +1x25mm2 CU/PVC [108.3 m]; Cable, Copper 3x10mm2/ CU/XLPE/SWA/PVC [110.01 m] | 17,611.29 | A015 | Z6 | CONS | LV | Warning tape and Backfill | AFT |
| RHD4CZ6A015LV3400 |  | Testing of Low Voltage Cables for Low Voltage Network - (RD-A-1 /5)-Z6-A015-LV | 3d | 2027-10-05 | 2027-10-09 | RHD4CZ6A015LV3300 | -192.02d | 0d | Skilled labor [31.69 h]; Unskilled Labor [126.76 h]; Electrician [63.38 h]; Equipment Opreator [31.69 h]; Boom Truck [31.69 h]; Cable, Copper 4x50mm2/ CU/XLPE/PVC +1x25mm2 CU/PVC [36.1 m]; Cable, Copper 3x10mm2/ CU/XLPE/SWA/PVC [36.67 m] | 5,870.43 | A015 | Z6 | CONS | LV | Testing | AFT |
|  | 4829 | **RHD4-02-002-Z6-A015-Street Lighting Network - SL** |  | 2027-10-09 | 2027-11-06 |  |  |  |  |  |  |  |  |  |  |  |
|  | 4832 | **RHD4-02-002-A015-(SL)-Street Lighting cables** |  | 2027-10-09 | 2027-10-21 |  |  |  |  |  |  |  |  |  |  |  |
| RHD4CZ6A015SL3100 |  | Excavation for Street Lighting Cables for Street Lighting Network - (RD-A-1 /5)-Z6-A015-SL | 3d | 2027-10-09 | 2027-10-12 | RHD4ENSDZ6APPSL170, RHD4CZ6A015LV3400 | -192.02d | 0d | Skilled labor [30.4 h]; Unskilled Labor [60.8 h]; Equipment Opreator [60.8 h]; Excavator-Poclain [30.4 h]; Boom Truck [30.4 h]; Cable, Copper 4x16mm2/ CU/XLPE/SWA/PVC + 1x16mm2 CU/PVC [109.99 m]; Cable, Copper 4x10mm2/ CU/XLPE/SWA/PVC + 1x10mm2 CU/PVC [29.63 m] | 8,821.22 | A015 | Z6 | CONS | SL | Excavation | AFT |
| RHD4CZ6A015SL3200 |  | Cable Laying of Street Lighting Cables for Street Lighting Network - (RD-A-1 /5)-Z6-A015-SL | 3d | 2027-10-12 | 2027-10-16 | RHD4CZ6A015SL3100, RHD4PRSHLDOSSL1100, RHD4ENMSSL2000, RHD4ENMSSL2010, RHD4PRSHLSTAGSL1100 | -192.02d | 0d | Skilled labor [25.37 h]; Unskilled Labor [101.39 h]; Electrician [50.64 h]; Equipment Opreator [76 h]; Boom Truck [25.37 h]; Cable Laying Machine [50.64 h]; Cable, Copper 4x16mm2/ CU/XLPE/SWA/PVC + 1x16mm2 CU/PVC [329.97 m]; Cable, Copper 4x10mm2/ CU/XLPE/SWA/PVC + 1x10mm2 CU/PVC [88.89 m] | 26,463.65 | A015 | Z6 | CONS | SL | Cable Laying | AFT |
| RHD4CZ6A015SL3300 |  | Warning tape and Backfill for Street Lighting Cables for Street Lighting Network - (RD-A-1 /5)-Z6-A015-SL | 3d | 2027-10-16 | 2027-10-19 | RHD4CZ6A015SL3200 | -192.02d | 0d | Skilled labor [25.37 h]; Unskilled Labor [101.39 h]; Electrician [50.64 h]; Equipment Opreator [25.37 h]; Boom Truck [25.37 h]; Cable, Copper 4x16mm2/ CU/XLPE/SWA/PVC + 1x16mm2 CU/PVC [82.49 m]; Cable, Copper 4x10mm2/ CU/XLPE/SWA/PVC + 1x10mm2 CU/PVC [22.22 m] | 6,615.79 | A015 | Z6 | CONS | SL | Warning tape and Backfill | AFT |
| RHD4CZ6A015SL3400 |  | Testing of Street Lighting Cables for Street Lighting Network - (RD-A-1 /5)-Z6-A015-SL | 2d | 2027-10-19 | 2027-10-21 | RHD4CZ6A015SL3300 | -192.02d | 0d | Skilled labor [15.25 h]; Unskilled Labor [60.8 h]; Electrician [30.4 h]; Equipment Opreator [15.25 h]; Boom Truck [15.25 h]; Cable, Copper 4x16mm2/ CU/XLPE/SWA/PVC + 1x16mm2 CU/PVC [27.5 m]; Cable, Copper 4x10mm2/ CU/XLPE/SWA/PVC + 1x10mm2 CU/PVC [7.41 m] | 2,205.59 | A015 | Z6 | CONS | SL | Testing | AFT |

| ID | WBS | Activity | Duration | Start | Finish | Predecessors | Total float | Free float | Resources | Cost | RDH4-01-001-Road and Block Names-1 | RDH4-01-001-Zones-1 | RDH4-01-001-Phases-1 | RDH4-01-001-Networks-1 | RDH4-01-001-Work Method-1 | RDH4-01-001-MENEM |
| --- | --- | --- | --- | --- | --- | --- | --- | --- | --- | --- | --- | --- | --- | --- | --- | --- |
|  | 4833 | **RHD4-02-002-A015-(SL)-Street Lighting Poles** |  | 2027-10-21 | 2027-11-06 |  |  |  |  |  |  |  |  |  |  |  |
| RHD4CZ6A015SL1100 |  | Excavation for RC Base for Lighting Poles for Street Lighting Network - (RD-A-1 /5)-Z6-A015-SL | 2d | 2027-10-21 | 2027-10-24 | RHD4ENSDZ6APPSL170, RHD4CZ6A015SL3400 | -192.02d | 0d | Skilled labor [13.83 h]; Unskilled Labor [13.83 h]; Equipment Opreator [27.55 h]; Excavator-Poclain [13.83 h]; Dump Truck [13.83 h]; Lighting polesdouble arms, height of ( 12 ) meters [1.9 Unit] | 8,686.8 | A015 | Z6 | CONS | SL | Excavation | AFT |
| RHD4CZ6A015SL1200 |  | Installation for RC Base for Lighting Poles for Street Lighting Network - (RD-A-1 /5)-Z6-A015-SL | 2d | 2027-10-24 | 2027-10-26 | RHD4CZ6A015SL1100 | -192.02d | 0d | Skilled labor [13.83 h]; Unskilled Labor [13.83 h]; Equipment Opreator [27.55 h]; Excavator-Poclain [13.83 h]; Dump Truck [13.83 h]; Lighting polesdouble arms, height of ( 12 ) meters [4.75 Unit] | 21,717 | A015 | Z6 | CONS | SL | RC Base | AFT |
| RHD4CZ6A015SL1300 |  | Backfill for RC Base for Lighting Poles for Street Lighting Network - (RD-A-1 /5)-Z6-A015-SL | 2d | 2027-10-26 | 2027-10-28 | RHD4CZ6A015SL1200 | -192.02d | 0d | Skilled labor [13.83 h]; Unskilled Labor [13.83 h]; Equipment Opreator [27.55 h]; Excavator-Poclain [13.83 h]; Dump Truck [13.83 h]; Lighting polesdouble arms, height of ( 12 ) meters [0.95 Unit] | 4,343.4 | A015 | Z6 | CONS | SL | Backfill | AFT |
| RHD4CZ6A015SL1400 |  | Installation for Lighting Poles for Street Lighting Network - (RD-A-1 /5)-Z6-A015-SL | 2d | 2027-10-28 | 2027-10-31 | RHD4CZ6A015SL1300, RHD4CZ6A015SL3400, RHD4PRSHLDOSSL1200, RHD4ENMSSL2000, RHD4ENMSSL2010, RHD4PRSHLSTAGSL1200 | -192.02d | 0d | Skilled labor [20.69 h]; Unskilled Labor [20.69 h]; Electrician [20.69 h]; Equipment Opreator [20.69 h]; Boom Truck [20.69 h]; Lighting polesdouble arms, height of ( 12 ) meters [11.4 Unit] | 52,120.8 | A015 | Z6 | CONS | SL | Poles Installation | AFT |
| RHD4CZ6A015SL1500 |  | Luminaire Installation for Lighting Poles for Street Lighting Network - (RD-A-1 /5)-Z6-A015-SL | 3d | 2027-11-02 | 2027-11-06 | RHD4CZ6A015SL1400, RHD4CZ6A015SL6100, RHD4PRSHLDOSSL1300, RHD4PRSHLSTAGSL1300 | -192.02d | 0d | Unskilled Labor [55.2 h]; Electrician [27.55 h]; Equipment Opreator [11 h]; Boom Truck [11 h]; Street Lighting( LED) Luminaire of Output ?39018 lumen [38 Unit] | 39,596 | A015 | Z6 | CONS | SL | Luminaire Installation | AFT |
|  | 4835 | **RHD4-02-002-A015-(SL)-Street Lighting Earthing System** |  | 2027-10-31 | 2027-11-02 |  |  |  |  |  |  |  |  |  |  |  |
| RHD4CZ6A015SL6100 |  | Installation of Earthing for Lighting Poles and Fedder Pillers for Street Lighting Network - (RD-A-1 /5)-Z6-A015-SL | 2d | 2027-10-31 | 2027-11-02 | RHD4CZ6A015SL1400, RHD4ENMSER2000, RHD4ENMSER2010 | -192.02d | 0d | Skilled labor [1.42 h]; Unskilled Labor [1.42 h]; Equipment Opreator [2.94 h]; Excavator-Poclain [1.42 h]; Dump Truck [1.42 h]; Including lighting poles circuits - ER [2 Unit] | 1,226 | A015 | Z6 | CONS | SL | Installation | AFT |
|  | 4841 | **RHD4-02-002-Z6-A015-Telecommunications Network - TC** |  | 2026-12-27 | 2027-11-30 |  |  |  |  |  |  |  |  |  |  |  |
|  | 4842 | **RHD4-02-002-A015-(TC)-Telecommunications Ducts** |  | 2027-11-06 | 2027-11-30 |  |  |  |  |  |  |  |  |  |  |  |
| RHD4CZ6A015TC2100 |  | Excavation of HDPE Ducts for Telecom Network - (RD-A-1 /5)-Z6-A015-TC | 6d | 2027-11-06 | 2027-11-13 | RHD4ENSDZ6APPTC190, RHD4CZ6A015SL1500 | -192.02d | 0d | Skilled labor [62.84 h]; Unskilled Labor [62.84 h]; Equipment Opreator [125.78 h]; Excavator-Poclain [62.84 h]; Dump Truck [62.84 h]; (6*50mm) HDPE ducts -TC [173.18 m] | 15,239.84 | A015 | Z6 | CONS | TC | Excavation | AFT |
| RHD4CZ6A015TC2200 |  | Installation of HDPE Ducts for Telecom Network - (RD-A-1 /5)-Z6-A015-TC | 9d | 2027-11-13 | 2027-11-23 | RHD4CZ6A015TC2100, RHD4PRSHLDOSTC1000, RHD4PRSHLSTAGTC1000 | -192.02d | 0d | Carpenter [9.47 h]; Skilled labor [94.31 h]; Unskilled Labor [94.31 h]; Steel Fixer [9.47 h]; (6*50mm) HDPE ducts -TC [562.84 m] | 49,529.48 | A015 | Z6 | CONS | TC | Installing | AFT |
| RHD4CZ6A015TC2400 |  | Backfilling of HDPE Ducts for Telecom Network - (RD-A-1 /5)-Z6-A015-TC | 6d | 2027-11-23 | 2027-11-30 | RHD4CZ6A015TC2200, RHD4CZ6A015TC5200 | -192.02d | 0d | Skilled labor [62.84 h]; Unskilled Labor [62.84 h]; Equipment Opreator [25.16 h]; Excavator-Poclain [25.16 h]; (6*50mm) HDPE ducts -TC [129.88 m] | 11,429.88 | A015 | Z6 | CONS | TC | Backfilling | AFT |
|  | 4843 | **RHD4-02-002-A015-(TC)-Telecommunications Manholes** |  | 2027-11-13 | 2027-11-20 |  |  |  |  |  |  |  |  |  |  |  |
| RHD4CZ6A015TC5100 |  | Excavation for Manholes for Telecom Network - (RD-A-1 /5)-Z6-A015-TC | 3d | 2027-11-13 | 2027-11-16 | RHD4CZ6A015TC2100, RHD4ENSDZ6APPTC190 | -189.02d | 0d | Skilled labor [9.6 h]; Unskilled Labor [9.6 h]; Equipment Opreator [7.62 h]; Excavator-Poclain [3.81 h]; Dump Truck [3.81 h]; Manhole Type 1 - TC [0.45 nr]; Manhole Type 2 - TC [0.3 nr] | 5,055.75 | A015 | Z6 | CONS | TC | Excavation | AFT |
| RHD4CZ6A015TC5200 |  | Installation of Manholes for Telecom Network - (RD-A-1 /5)-Z6-A015-TC | 3d | 2027-11-16 | 2027-11-20 | RHD4CZ6A015TC5100, RHD4CZ6A015TC2200 SS, RHD4PRSHLDOSTC1200, RHD4PRSHLSTAGTC1200 | -189.02d | 3d | Skilled labor [9.6 h]; Unskilled Labor [9.6 h]; Equipment Opreator [3.81 h]; Boom Truck [3.81 h]; Manhole Type 1 - TC [2.55 nr]; Manhole Type 2 - TC [1.7 nr] | 28,649.25 | A015 | Z6 | CONS | TC | Installation | AFT |
|  | 5411 | **RHD4-02-002-A015-(TC)-Telecomminications Road Crossings** |  | 2026-12-27 | 2027-01-05 |  |  |  |  |  |  |  |  |  |  |  |
| RHD4CZ6A015TC3100 |  | Excavation for Road Crossings for Telecom Network - (RD-A-1 /5)-Z6-A015-TC | 2d | 2026-12-27 | 2026-12-28 | RHD4CZ6A015ST3301 | -194.02d | 0d | Skilled labor [9.36 h]; Unskilled Labor [9.36 h]; Equipment Opreator [18.72 h]; Excavator-Poclain [9.36 h]; Dump Truck [9.36 h]; Road crossing ducts, (6*50mm) HDPE -TC [1.87 m] | 71.06 | C062 | Z6 | CONS | TC | Excavation | bef |
| RHD4CZ6A015TC3200 |  | Installation of Road Crossings for Telecom Network - (RD-A-1 /5)-Z6-A015-TC | 2.01d | 2026-12-29 | 2026-12-31 | RHD4CZ6A015TC3100 | -194.02d | 0d | Carpenter [1.2 h]; Skilled labor [12.56 h]; Unskilled Labor [12.56 h]; Steel Fixer [1.2 h]; Road crossing ducts, (6*50mm) HDPE -TC [1.87 m] | 71.06 | C062 | Z6 | CONS | TC | Installing | bef |
| RHD4CZ6A015TC3300 |  | Pouring of Road Crossings for Telecom Network - (RD-A-1 /5)-Z6-A015-TC | 2.01d | 2026-12-31 | 2027-01-03 | RHD4CZ6A015TC3200 | -194.02d | 0d | Skilled labor [12.56 h]; Unskilled Labor [12.56 h]; Equipment Opreator [5.04 h]; Concrete Mixer Truck [2.48 h]; Concrete Pump [2.48 h]; Road crossing ducts, (6*50mm) HDPE -TC [12.16 m] | 462.08 | C062 | Z6 | CONS | TC | Pouring | bef |
| RHD4CZ6A015TC3400 |  | Backfilling of Road Crossings for Telecom Network - (RD-A-1 /5)-Z6-A015-TC | 2d | 2027-01-03 | 2027-01-05 | RHD4CZ6A015TC3300 | -194.02d | 0d | Skilled labor [9.36 h]; Unskilled Labor [9.36 h]; Equipment Opreator [3.68 h]; Excavator-Poclain [3.68 h]; Road crossing ducts, (6*50mm) HDPE -TC [2.81 m] | 106.78 | C062 | Z6 | CONS | TC | Backfilling | bef |
|  | 4845 | **RHD4-02-002-Z6-A015-Information and Communication Technologies - ICT** |  | 2026-05-30 | 2027-12-25 |  |  |  |  |  |  |  |  |  |  |  |
|  | 4846 | **RHD4-02-002-A015-(ICT)-Information and Communication Technologies Ducts** |  | 2027-11-30 | 2027-12-25 |  |  |  |  |  |  |  |  |  |  |  |
| RHD4CZ6A015ICT2100 |  | Excavation of HDPE Ducts for ICT Network - (RD-A-1 /5)-Z6-A015-ICT | 6d | 2027-11-30 | 2027-12-07 | RHD4ENSDZ6APPICT200, RHD4CZ6A015TC2400 | -192.02d | 0d | Skilled labor [62.29 h]; Unskilled Labor [62.29 h]; Equipment Opreator [124.48 h]; Excavator-Poclain [62.29 h]; Dump Truck [62.29 h]; (2*50mm) HDPE ducts -ICT [171.5 m] | 6,517 | A015 | Z6 | CONS | ICT | Excavation | AFT |
| RHD4CZ6A015ICT2200 |  | Installation of HDPE Ducts for ICT Network - (RD-A-1 /5)-Z6-A015-ICT | 9d | 2027-12-07 | 2027-12-18 | RHD4CZ6A015ICT2100, RHD4PRSHLDOSICT1000, RHD4PRSHLSTAGICT1000 | -192.02d | 0d | Carpenter [9.37 h]; Skilled labor [93.33 h]; Unskilled Labor [93.33 h]; Steel Fixer [9.37 h]; (2*50mm) HDPE ducts -ICT [557.38 m] | 21,180.25 | A015 | Z6 | CONS | ICT | Installing | AFT |
| RHD4CZ6A015ICT2400 |  | Backfilling of HDPE Ducts for ICT Network - (RD-A-1 /5)-Z6-A015-ICT | 6d | 2027-12-18 | 2027-12-25 | RHD4CZ6A015ICT2200, RHD4CZ6A015ICT5200 | -192.02d | 0d | Skilled labor [62.29 h]; Unskilled Labor [62.29 h]; Equipment Opreator [24.94 h]; Excavator-Poclain [24.94 h]; (2*50mm) HDPE ducts -ICT [128.62 m] | 4,887.75 | A015 | Z6 | CONS | ICT | Backfilling | AFT |

| ID | WBS | Activity | Duration | Start | Finish | Predecessors | Complete | Planned start | Planned finish | Total float | Free float | Resources | Cost | Actual cost | RDH4-01-001-Road and Block Names-1 | RDH4-01-001-Zones-1 | RDH4-01-001-Phases-1 | RDH4-01-001-Networks-1 | RDH4-01-001-Work Method-1 | RDH4-01-001-MENEM |
| --- | --- | --- | --- | --- | --- | --- | --- | --- | --- | --- | --- | --- | --- | --- | --- | --- | --- | --- | --- | --- |
|  | 4847 | **RHD4-02-002-A015-(ICT)-Information and Communication Technologies Manholes** |  | 2027-12-07 | 2027-12-14 |  |  |  |  |  |  |  |  |  |  |  |  |  |  |  |
| RHD4CZ6A015ICT5100 |  | Excavation for Manholes for ICT Network - (RD-A-1 /5)-Z6-A015-ICT | 3d | 2027-12-07 | 2027-12-11 | RHD4CZ6A015ICT2100, RHD4ENSDZ6APPICT200 |  |  |  | -189.02d | 0d | Skilled labor [9.6 h]; Unskilled Labor [9.6 h]; Equipment Opreator [7.62 h]; Excavator-Poclain [3.81 h]; Dump Truck [3.81 h]; Manhole Type 1 - ICT [0.45 nr]; Manhole Type 2 - ICT [0.3 nr] | 4,044.75 |  | A015 | Z6 | CONS | ICT | Excavation | AFT |
| RHD4CZ6A015ICT5200 |  | Installation of Manholes for ICT Network - (RD-A-1 /5)-Z6-A015-ICT | 3d | 2027-12-11 | 2027-12-14 | RHD4CZ6A015ICT5100, RHD4PRSHLDOSICT1200, RHD4PRSHLSTAGICT1200 |  |  |  | -189.02d | 3d | Skilled labor [9.6 h]; Unskilled Labor [9.6 h]; Equipment Opreator [3.81 h]; Boom Truck [3.81 h]; Manhole Type 1 - ICT [2.55 nr]; Manhole Type 2 - ICT [1.7 nr] | 22,920.25 |  | A015 | Z6 | CONS | ICT | Installation | AFT |
|  | 4848 | **RHD4-02-002-A015-(ICT)-Information and Communication Technologies Road Crossings** |  | 2026-05-30 | 2026-08-12 |  |  |  |  |  |  |  |  |  |  |  |  |  |  |  |
| RHD4CZ6A015ICT3100 |  | Excavation for Road Crossings for ICT Network - (RD-A-1 /5)-Z6-A015-ICT | 2d | 2026-05-30 A | 2026-08-05 A | RHD4ENSDZ6APPICT200, RHD4CZ6A015ST3301 | 100% | 2026-05-30 | 2026-05-31 |  |  | Skilled labor [13.6 h]; Unskilled Labor [13.6 h]; Equipment Opreator [27.12 h]; Excavator-Poclain [13.6 h]; Dump Truck [13.6 h]; Road crossing ducts, (2*50mm) HDPE -ICT [2.49 m] | 94.62 | 94.62 | A015 | Z6 | CONS | ICT | Excavation | bef |
| RHD4CZ6A015ICT3200 |  | Installation of Road Crossings for ICT Network - (RD-A-1 /5)-Z6-A015-ICT | 2d | 2026-08-06 A | 2026-08-08 A | RHD4CZ6A015ICT3100, RHD4PRSHLDOSICT1100, RHD4PRSHLSTAGICT1100 | 100% | 2026-08-17 | 2026-08-18 |  |  | Carpenter [1.85 h]; Skilled labor [18.08 h]; Unskilled Labor [18.08 h]; Steel Fixer [1.85 h]; Road crossing ducts, (2*50mm) HDPE -ICT [2.49 m] | 94.62 | 94.62 | A015 | Z6 | CONS | ICT | Installing | bef |
| RHD4CZ6A015ICT3300 |  | Pouring of Road Crossings for ICT Network - (RD-A-1 /5)-Z6-A015-ICT | 2d | 2026-08-09 A | 2026-08-10 A | RHD4CZ6A015ICT3200 | 100% | 2026-08-19 | 2026-08-20 |  |  | Skilled labor [18.08 h]; Unskilled Labor [18.08 h]; Equipment Opreator [7.2 h]; Concrete Mixer Truck [3.59 h]; Concrete Pump [3.59 h]; Road crossing ducts, (2*50mm) HDPE -ICT [16.18 m] | 615.03 | 615.03 | A015 | Z6 | CONS | ICT | Pouring | bef |
| RHD4CZ6A015ICT3400 |  | Backfilling of Road Crossings for ICT Network - (RD-A-1 /5)-Z6-A015-ICT | 2d | 2026-08-11 A | 2026-08-12 A | RHD4CZ6A015ICT3300 | 100% | 2026-08-22 | 2026-08-23 |  |  | Skilled labor [13.6 h]; Unskilled Labor [13.6 h]; Equipment Opreator [5.45 h]; Excavator-Poclain [5.45 h]; Road crossing ducts, (2*50mm) HDPE -ICT [3.73 m] | 141.93 | 141.93 | A015 | Z6 | CONS | ICT | Backfilling | bef |
|  | 4836 | **RHD4-02-002-Z6-A015-Landscape Network - LS** |  |  |  |  |  |  |  |  |  |  |  |  |  |  |  |  |  |  |
|  | 4837 | **RHD4-02-002-A015-(LS)-Landscape Lighting cables** |  |  |  |  |  |  |  |  |  |  |  |  |  |  |  |  |  |  |
|  | 4838 | **RHD4-02-002-A015-(LS)-Landscape Feeder Pillars** |  |  |  |  |  |  |  |  |  |  |  |  |  |  |  |  |  |  |
|  | 4839 | **RHD4-02-002-A015-(LS)-Landscape Bollard Poles** |  |  |  |  |  |  |  |  |  |  |  |  |  |  |  |  |  |  |
|  | 4840 | **RHD4-02-002-A015-(LS)-Landscape Feeder Pillars Earthing** |  |  |  |  |  |  |  |  |  |  |  |  |  |  |  |  |  |  |
|  | 4849 | **RHD4-02-002-Z6-A015-Security Network - CCTV** |  | 2027-12-25 | 2028-01-08 |  |  |  |  |  |  |  |  |  |  |  |  |  |  |  |
|  | 4850 | **RHD4-02-002-A015-(CCTV)-Civil Works** |  |  |  |  |  |  |  |  |  |  |  |  |  |  |  |  |  |  |
|  | 4851 | **RHD4-02-002-A015-(CCTV)-CCTV Poles** |  | 2027-12-25 | 2028-01-03 |  |  |  |  |  |  |  |  |  |  |  |  |  |  |  |
| RHD4CZ6A015CCTV1100 |  | Excavation for RC Base for CCTV Poles for Security Network - (RD-A-1 /5)-Z6-A015-CCTV | 2d | 2027-12-25 | 2027-12-27 | RHD4ENSDZ6APPCCTV210, RHD4CZ6A015ICT2400 |  |  |  | -192.02d | 0d | Skilled labor [17.44 h]; Unskilled Labor [17.44 h]; Equipment Opreator [34.88 h]; Excavator-Poclain [8.71 h]; Dump Truck [8.71 h]; 7 Meters pole for ANPR CCTV CameraS [0.3 nr]; 4.5-meter Hinged Type Arm, fixed on 7 meter for installing LANPR cameras [0.6 nr] | 8,698.5 |  | A015 | Z6 | CONS | CCTV | Excavation | AFT |
| RHD4CZ6A015CCTV1200 |  | Installation for RC Base for CCTV Poles for Security Network - (RD-A-1 /5)-Z6-A015-CCTV | 2d | 2027-12-27 | 2027-12-29 | RHD4CZ6A015CCTV1100 |  |  |  | -192.02d | 0d | Skilled labor [17.44 h]; Unskilled Labor [17.44 h]; Equipment Opreator [34.88 h]; Excavator-Poclain [8.71 h]; Dump Truck [8.71 h]; 7 Meters pole for ANPR CCTV CameraS [0.75 nr]; 4.5-meter Hinged Type Arm, fixed on 7 meter for installing LANPR cameras [1.5 nr] | 21,746.25 |  | A015 | Z6 | CONS | CCTV | RC Base | AFT |
| RHD4CZ6A015CCTV1300 |  | Backfill for RC Base for CCTV Poles for Security Network - (RD-A-1 /5)-Z6-A015-CCTV | 2d | 2027-12-29 | 2028-01-01 | RHD4CZ6A015CCTV1200 |  |  |  | -192.02d | 0d | Skilled labor [10.88 h]; Unskilled Labor [10.88 h]; Equipment Opreator [21.76 h]; Excavator-Poclain [5.45 h]; Dump Truck [5.45 h]; 7 Meters pole for ANPR CCTV CameraS [0.15 nr]; 4.5-meter Hinged Type Arm, fixed on 7 meter for installing LANPR cameras [0.3 nr] | 4,349.25 |  | A015 | Z6 | CONS | CCTV | Backfill | AFT |
| RHD4CZ6A015CCTV1400 |  | Installation for CCTV Poles for Security Network - (RD-A-1 /5)-Z6-A015-CCTV | 2d | 2028-01-01 | 2028-01-03 | RHD4CZ6A015CCTV1300, RHD4PRSHLDOSCCTV1000, RHD4PRSHLSTACCTV1000 |  |  |  | -192.02d | 0d | Skilled labor [28.96 h]; Unskilled Labor [58.08 h]; Electrician [28.96 h]; Equipment Opreator [28.96 h]; Boom Truck [14.48 h]; 7 Meters pole for ANPR CCTV CameraS [1.8 nr]; 4.5-meter Hinged Type Arm, fixed on 7 meter for installing LANPR cameras [3.6 nr] | 52,191 |  | A015 | Z6 | CONS | CCTV | Installation | AFT |
|  | 4852 | **RHD4-02-002-A015-(CCTV)-Camera** |  | 2028-01-03 | 2028-01-05 |  |  |  |  |  |  |  |  |  |  |  |  |  |  |  |
| RHD4CZ6A015CCTV3100 |  | Installation for Cameras for Security Network - (RD-A-1 /5)-Z6-A015-CCTV | 2d | 2028-01-03 | 2028-01-05 | RHD4CZ6A015CCTV1400, RHD4PRSHLDOSCCTV1100, RHD4PRSHLSTACCTV1100 |  |  |  | -192.02d | 0d | Unskilled Labor [43.52 h]; Electrician [21.76 h]; Fixed outdoor Camera for LPR, IP66/67 and IK10-rated 10 MP/ 4K, day/night, IR luminator [5 nr] | 126,970 |  | A015 | Z6 | CONS | CCTV | Installation | AFT |
|  | 4853 | **RHD4-02-002-A015-(CCTV)-Power and Infrastructure** |  |  |  |  |  |  |  |  |  |  |  |  |  |  |  |  |  |  |
|  | 4855 | **RHD4-02-002-A015-(CCTV)-CCTV Panels and Components** |  | 2028-01-05 | 2028-01-08 |  |  |  |  |  |  |  |  |  |  |  |  |  |  |  |
| RHD4CZ6A015CCTV6100 |  | Installation for CCTV Panels for Security Network - (RD-A-1 /5)-Z6-A015-CCTV | 2d | 2028-01-05 | 2028-01-08 | RHD4CZ6A015CCTV3100, RHD4PRSHLDOSCCTV1200, RHD4PRSHLSTACCTV1200, RHD4PRLOLSTACCTV1001 |  |  |  | -192.02d | 0d | Skilled labor [43.52 h]; Unskilled Labor [130.72 h]; Electrician [43.52 h]; 8 Port Industrial PoE Switch 10/1000BaseT with 2X1G SFP UP-LINK(- 40 deg to +70 deg. Celsius) for remote poles and as specifiedin item 15 [4 nr] | 67,600 |  | A015 | Z6 | CONS | CCTV | Equipment | AFT |

| ID | WBS | Activity | Duration | Start | Finish | Predecessors | Complete | Planned start | Planned finish | Total float | Free float | Resources | Cost | Actual cost | RDH4-01-001-Road and Block Names-1 | RDH4-01-001-Zones-1 | RDH4-01-001-Phases-1 | RDH4-01-001-Networks-1 | RDH4-01-001-Work Method-1 | RDH4-01-001-MENEM |
| --- | --- | --- | --- | --- | --- | --- | --- | --- | --- | --- | --- | --- | --- | --- | --- | --- | --- | --- | --- | --- |
|  | 4866 | **RHD4-02-002-Z6-C052** |  | 2026-04-15 | 2027-09-08 |  |  |  |  |  |  |  |  |  |  |  |  |  |  |  |
|  | 4897 | **RHD4-02-002-Z6-C052-Crossings Sewage Network - SWCr** |  |  |  |  |  |  |  |  |  |  |  |  |  |  |  |  |  |  |
|  | 4907 | **RHD4-02-002-C052-(SWCr)-MH Works - 1200 mm diameter** |  |  |  |  |  |  |  |  |  |  |  |  |  |  |  |  |  |  |
|  | 4903 | **RHD4-02-002-C052-(SWCr)-UPVC Pipes - 200 mm diameter** |  |  |  |  |  |  |  |  |  |  |  |  |  |  |  |  |  |  |
|  | 4941 | **RHD4-02-002-Z6-C052-Crossings Potable Network - PTCr** |  |  |  |  |  |  |  |  |  |  |  |  |  |  |  |  |  |  |
|  | 4943 | **RHD4-02-002-C052-(PTCr)-HDPE Pipes - 160 mm diameter** |  |  |  |  |  |  |  |  |  |  |  |  |  |  |  |  |  |  |
|  | 4942 | **RHD4-02-002-C052-(PTCr)-HDPE Pipes - 110 mm diameter** |  |  |  |  |  |  |  |  |  |  |  |  |  |  |  |  |  |  |
|  | 4947 | **RHD4-02-002-C052-(PTCr)-Gate Valves (Direct Buried)** |  |  |  |  |  |  |  |  |  |  |  |  |  |  |  |  |  |  |
|  | 4952 | **RHD4-02-002-C052-(PTCr)-Air Valve Chambers** |  |  |  |  |  |  |  |  |  |  |  |  |  |  |  |  |  |  |
|  | 4953 | **RHD4-02-002-C052-(PTCr)-Air Valves** |  |  |  |  |  |  |  |  |  |  |  |  |  |  |  |  |  |  |
|  | 4954 | **RHD4-02-002-C052-(PTCr)-Fire Hydrant** |  |  |  |  |  |  |  |  |  |  |  |  |  |  |  |  |  |  |
|  | 4988 | **RHD4-02-002-Z6-C052-Crossings Irrigation Network - IRRC** |  |  |  |  |  |  |  |  |  |  |  |  |  |  |  |  |  |  |
|  | 4989 | **RHD4-02-002-C052-(IRRC)-HDPE Pipes - 160 mm diameter** |  |  |  |  |  |  |  |  |  |  |  |  |  |  |  |  |  |  |
|  | 4997 | **RHD4-02-002-C052-(IRRC)-Gate Valves (Direct Buried)** |  |  |  |  |  |  |  |  |  |  |  |  |  |  |  |  |  |  |
|  | 5000 | **RHD4-02-002-C052-(IRRC)-Wash out Chamber** |  |  |  |  |  |  |  |  |  |  |  |  |  |  |  |  |  |  |
|  | 5001 | **RHD4-02-002-C052-(IRRC)-Wash out Valves** |  |  |  |  |  |  |  |  |  |  |  |  |  |  |  |  |  |  |
|  | 5045 | **RHD4-02-002-Z6-C052-Road Works - RD** |  | 2026-04-15 | 2027-09-08 |  |  |  |  |  |  |  |  |  |  |  |  |  |  |  |
|  | 5046 | **RHD4-02-002-C052-(RD)-Subgrade** |  | 2026-04-15 | 2026-05-23 |  |  |  |  |  |  |  |  |  |  |  |  |  |  |  |
| RHD4CZ6C052RD1100 |  | Supply, lay and compaction subgrade compacted thickness 300 mm for Roads - (RD-C-5 /2)-Z6-C052-RD | 9d | 2026-04-15 A | 2026-05-23 A | RHD4ENSDZ6APPRD220, RHD4ENSDZ6APPEW100 SS, RHD4CZ6C052ST1502, RHD4CZ6C052ST1503, RHD4CZ6C052ST3301, RHD4CZ6C052ICT3400, RHD4CZ6C052TC3400 | 100% | 2026-08-26 | 2026-09-05 |  |  | Skilled labor [38.77 h]; Unskilled Labor [77.65 h]; Electrician [38.77 h]; Equipment Opreator [265.07 h]; Water Truck [12.85 h]; Roller compactor [19.38 h]; Grader [38.77 h]; Dump Truck [194.07 h]; Subgrade [1866.76 m3] | 35,468.44 | 35,468.44 | C052 | Z6 | CONS | RD | Subgrade | bef |
|  | 5047 | **RHD4-02-002-C052-(RD)-Aggregate Base Course** |  | 2027-02-24 | 2027-02-27 |  |  |  |  |  |  |  |  |  |  |  |  |  |  |  |
| RHD4CZ6C052RD2100 |  | Supply, lay and compaction Aggregate base course compacted thickness 300 mmfor Roads - (RD-C-5 /2)-Z6-C052-RD | 3d | 2027-02-24 | 2027-02-27 | RHD4PRSHLDOSRD1000, RHD4PRSHLSTAGRD1000, RHD4CZ6C052RD1100 |  |  |  | -170d | 0d | Skilled labor [14.4 h]; Unskilled Labor [28.75 h]; Equipment Opreator [181.98 h]; Water Truck [9.47 h]; Roller compactor [28.75 h]; Grader [28.75 h]; Dump Truck [115 h]; Aggregate Base Courses [1172.51 m3] | 66,833.07 |  | C052 | Z6 | CONS | RD | ABC | bef |
|  | 5048 | **RHD4-02-002-C052-(RD)-Bituminous base course Two Layers, including (MC1)&(RC2)** |  | 2027-02-28 | 2027-06-27 |  |  |  |  |  |  |  |  |  |  |  |  |  |  |  |
| RHD4CZ6C052RD3100 |  | Supply, lay and Asphaltic base course including Prime Coat (MC1) for 1st Layer - (RD-C-5 /2)-Z6-C052-RD | 2d | 2027-02-28 | 2027-03-01 | RHD4CZ6C052RD2100, RHD4PRSHLDOSRD1100, RHD4ENMSASPH2000, RHD4ENMSASPH2010, RHD4PRSHLSTAGRD1100 |  |  |  | -170d | 0d | Skilled labor [11.43 h]; Unskilled Labor [68.5 h]; Equipment Opreator [171.2 h]; Bobcat [11.43 h]; Roller compactor [11.43 h]; Asphalt Paver [11.43 h]; Rubber Compactor [22.87 h]; MC1/RC2 Sprinkler [11.43 h]; Dump Truck [102.7 h]; Bituminous base course (Grading I - Class A), including Prime coat (MC1) & tack coate (RC2) [417.65 m3] | 199,636.7 |  | C052 | Z6 | CONS | RD | 150 mm | AFT |
| RHD4CZ6C052RD3200 |  | Supply, lay and Asphaltic base course including Tack Coat (RC2) for 2nd Layer - (RD-C-5 /2)-Z6-C052-RD | 2d | 2027-06-26 | 2027-06-27 | RHD4PRSHLDOSRD1100, RHD4PRSHLSTAGRD1100, RHD4CZ6C052ICT2400 |  |  |  | -95d | 43d | Skilled labor [11.43 h]; Unskilled Labor [68.5 h]; Equipment Opreator [171.2 h]; Bobcat [11.43 h]; Roller compactor [11.43 h]; Asphalt Paver [11.43 h]; Rubber Compactor [22.87 h]; MC1/RC2 Sprinkler [11.43 h]; Dump Truck [102.7 h]; Bituminous base course (Grading I - Class A), including Prime coat (MC1) & tack coate (RC2) [417.65 m3] | 199,636.7 |  | C052 | Z6 | CONS | RD | 150 mm | AFT |

| ID | WBS | Activity | Duration | Start | Finish | Predecessors | Complete | Remaining | Planned start | Planned finish | Total float | Free float | Resources | Cost | Actual cost | RDH4-01-001-Road and Block Names-1 | RDH4-01-001-Zones-1 | RDH4-01-001-Phases-1 | RDH4-01-001-Networks-1 | RDH4-01-001-Work Method-1 | RDH4-01-001-MENEM |
| --- | --- | --- | --- | --- | --- | --- | --- | --- | --- | --- | --- | --- | --- | --- | --- | --- | --- | --- | --- | --- | --- |
|  | 5050 | **RHD4-02-002-C052-(RD)-Precast Concrete Curb** |  | 2027-08-17 | 2027-08-19 |  |  |  |  |  |  |  |  |  |  |  |  |  |  |  |  |
| RHD4CZ6C052RD5100 |  | Supply and installation Precast Concrete Kerb for Roads - (RD-C-5 /2)-Z6-C052-RD | 3d | 2027-08-17 | 2027-08-19 | RHD4CZ6C052RD3200, RHD4PRSHLDOSRD1200, RHD4ENMSRD2000, RHD4ENMSRD2010, RHD4PRSHLSTAGRD1200, RHD4CZ6RA01RD5100 |  |  |  |  | -138d | 0d | Mason [76.34 h]; Skilled labor [25.48 h]; Unskilled Labor [76.34 h]; Equipment Opreator [50.86 h]; Bobcat [25.48 h]; Concrete Mixer Truck [25.48 h]; Precast Concrete Curbstone, type K1 [1051 m] | 57,805 |  | C052 | Z6 | CONS | RD | Curbs | AFT |
|  | 5053 | **RHD4-02-002-C052-(RD)-Traffic Signage** |  | 2027-08-29 | 2027-09-04 |  |  |  |  |  |  |  |  |  |  |  |  |  |  |  |  |
| RHD4CZ6C052RD8100 |  | Installation of Traffic Signage for Road Network - (RD-C-5 /2)-Z6-C052-RD | 6d | 2027-08-29 | 2027-09-04 | RHD4CZ6C052RD5100, RHD4CZ6C052TC2400, RHD4CZ6C052ICT2400, RHD4PRSHLDOSRD1600, RHD4PRSHLSTAGRD1600, RHD4CZ6RA01RD8100 |  |  |  |  | -145d | 0d | Skilled labor [130.68 h]; Unskilled Labor [65.34 h]; Electrician [15.25 h]; Equipment Opreator [19.2 h]; Boom Truck [13.07 h]; Concrete Mixer Truck [6.1 h]; Traffic signs, ground mounted, 1 Sheet Aluminium, (breakaway)Single post [13 nr] | 15,938 |  | C052 | Z6 | CONS | RD | Traffic Signage | AFT |
|  | 5051 | **RHD4-02-002-C052-(RD)-Precast Interlocking Block Pavers** |  |  |  |  |  |  |  |  |  |  |  |  |  |  |  |  |  |  |  |
|  | 5049 | **RHD4-02-002-C052-(RD)-Bituminous concrete wearing course including tack coat (RC2)** |  | 2027-08-21 | 2027-08-22 |  |  |  |  |  |  |  |  |  |  |  |  |  |  |  |  |
| RHD4CZ6C052RD4100 |  | Supply, lay and compaction Asphaltic wearing course including tack Coat (RC2)for Road Network - (RD-C-5 /2)-Z6-C052-RD | 2d | 2027-08-21 | 2027-08-22 | RHD4CZ6C052RD5100 |  |  |  |  | -134d | 11d | Skilled labor [5.88 h]; Unskilled Labor [35.28 h]; Equipment Opreator [88.21 h]; Bobcat [5.88 h]; Roller compactor [5.88 h]; Asphalt Paver [5.88 h]; Rubber Compactor [11.76 h]; MC1/RC2 Sprinkler [5.88 h]; Dump Truck [52.93 h]; Bituminous concrete wearing course, (Grading I - Class A), including tack coat (RC2) [280.48 m3] | 152,300.64 |  | C052 | Z6 | CONS | RD | 50 mm | AFT |
|  | 5054 | **RHD4-02-002-C052-(RD)-Speed Table and Wheel Stopper** |  |  |  |  |  |  |  |  |  |  |  |  |  |  |  |  |  |  |  |
|  | 5052 | **RHD4-02-002-C052-(RD)-Pavement Marking** |  | 2027-09-05 | 2027-09-08 |  |  |  |  |  |  |  |  |  |  |  |  |  |  |  |  |
| RHD4CZ6C052RD7100 |  | Pavement Markings for Road Network - (RD-C-5 /2)-Z6-C052-RD | 4d | 2027-09-05 | 2027-09-08 | RHD4CZ6C052RD4100, RHD4PRSHLDOSRD1500, RHD4PRSHLSTAGRD1500, RHD4CZ6C052RD8100 |  |  |  |  | -145d | 53d | Skilled labor [38.23 h]; Unskilled Labor [76.45 h]; Equipment Opreator [38.23 h]; Road Marking Machine [38.23 h]; Retroreflective Thermoplastic White Traffic Markings [102.52 m2]; Retroreflective Thermoplastic Yellow, Traffic Markings [130.68 m2]; Retroreflective raised pavement markers (cat eyes) [657 nr] | 29,567.2 |  | C052 | Z6 | CONS | RD | Pavement Marking | AFT |
|  | 4870 | **RHD4-02-002-Z6-C052-Storm Network - ST** |  | 2026-08-04 | 2027-03-04 |  |  |  |  |  |  |  |  |  |  |  |  |  |  |  |  |
|  | 3739 | **RHD4-02-002-C052-(ST)-GRP Pipes - 700 mm diameter** |  | 2026-08-04 | 2027-01-27 |  |  |  |  |  |  |  |  |  |  |  |  |  |  |  |  |
| RHD4CZ6C052ST1103 |  | Excavation works for GRP Pipe Line 700 mm - (RD-C-5 /2)-Z6-C052-ST | 2d | 2026-08-04 A | 2026-08-05 A | RHD4ENSDZ5APPST110, RHD4CZ6C062ST1106, RHD4CZ7RA03RA3000 | 100% |  | 2026-07-22 | 2026-07-23 |  |  | Skilled labor [11.54 h]; Unskilled Labor [11.54 h]; Equipment Opreator [13.83 h]; Excavator-Poclain [11.54 h]; Dump Truck [2.29 h]; GRP (700mm Diameter) - ST - Depth less than 1.5 m [9.6 m]; GRP (700mm Diameter) - ST - Depth: 1.51m - 2.5m [12.94 m]; GRP (700mm Diameter) - ST - Depth: 2.51m - 3.5m | 13,043.58 | 13,043.58 | C052 | Z6 | CONS | ST | Excavation | bef |
| RHD4CZ6C052ST1203 |  | Bedding works for GRP Pipe Line 700 mm - (RD-C-5 /2)-Z6-C052-ST | 2d | 2026-08-06 A | 2026-08-08 A | RHD4CZ6C052ST1103 | 100% |  | 2026-07-25 | 2026-07-26 |  |  | Skilled labor [11.54 h]; Unskilled Labor [22.98 h]; Equipment Opreator [22.98 h]; Excavator-Poclain [11.54 h]; Dump Truck [11.54 h]; GRP (700mm Diameter) - ST - Depth less than 1.5 m [4.8 m]; GRP (700mm Diameter) - ST - Depth: 1.51m - 2.5m [4.31 m]; GRP (700mm Diameter) - ST - Depth: 2.51m - 3.5m | 5,232.27 | 5,232.27 | C052 | Z6 | CONS | ST | Bedding | bef |
| RHD4CZ6C052ST1303 |  | Installing for GRP Pipe Line 700 mm - (RD-C-5 /2)-Z6-C052-ST | 2d | 2026-08-09 A | 2026-09-20 A | RHD4CZ6C052ST1203 | 100% |  | 2026-07-27 | 2026-07-28 |  |  | Unskilled Labor [11.54 h]; Plumber [5.77 h]; GRP (700mm Diameter) - ST - Depth less than 1.5 m [43.2 m]; GRP (700mm Diameter) - ST - Depth: 1.51m - 2.5m [34.51 m]; GRP (700mm Diameter) - ST - Depth: 2.51m - 3.5m | 44,535.27 | 44,535.27 | C052 | Z6 | CONS | ST | Installation | bef |
| RHD4CZ6C052ST1503 |  | Backfilling and warning tape works for GRP Pipe Line 700 mm - (RD-C-5 /2)-Z6-C052-ST | 2d | 2026-08-11 A | 2026-10-13 A | RHD4CZ6C052ST1403 | 100% |  | 2026-08-01 | 2026-08-02 |  |  | Skilled labor [11.54 h]; Unskilled Labor [22.98 h]; Equipment Opreator [22.98 h]; Excavator-Poclain [11.54 h]; Dump Truck [11.54 h]; GRP (700mm Diameter) - ST - Depth less than 1.5 m [19.2 m]; GRP (700mm Diameter) - ST - Depth: 1.51m - 2.5m [17.25 m]; GRP (700mm Diameter) - ST - Depth: 2.51m - 3.5m | 20,935.05 | 20,935.05 | C052 | Z6 | CONS | ST | Backfilling | bef |
| RHD4CZ6C052ST1403 |  | Primary Test for GRP Pipe Line 700 mm - (RD-C-5 /2)-Z6-C052-ST | 2d | 2027-01-26 | 2027-01-27 | RHD4CZ6C052ST1303 |  |  |  |  | -149d | 0d | Unskilled Labor [5.77 h]; Plumber [5.77 h]; Equipment Opreator [5.77 h]; Water Truck [5.77 h]; GRP (700mm Diameter) - ST - Depth less than 1.5 m [19.2 m]; GRP (700mm Diameter) - ST - Depth: 1.51m - 2.5m [17.25 m]; GRP (700mm Diameter) - ST - Depth: 2.51m - 3.5m | 20,935.05 |  | C052 | Z6 | CONS | ST | Primary Test | bef |
|  | 4888 | **RHD4-02-002-C052-(ST)-MH Works - 1500 mm diameter** |  | 2026-08-04 | 2027-02-28 |  |  |  |  |  |  |  |  |  |  |  |  |  |  |  |  |
| RHD4CZ6C052ST3101 |  | Excavation and PC Blinding works for MH 1500 mm - (RD-C-5 /2)-Z6-C052-ST | 2d | 2026-08-04 A | 2026-08-06 A | RHD4CZ6C052RW3000, RHD4ENSDZ6APPST110, RHD4ENMSST2000, RHD4CZ6C052ST1103 | 100% |  | 2026-07-25 | 2026-07-26 |  |  | Skilled labor [21.78 h]; Unskilled Labor [21.78 h]; Equipment Opreator [34.85 h]; Excavator-Poclain [21.78 h]; Water Truck [2.18 h]; Dump Truck [10.89 h]; MH (1500mm Diameter) - ST - depth 1.50 - 2.5m [0.5 nr]; MH (1500mm Diameter) - ST - depth 3.51 - 4.5m [0.25 nr] | 12,566.5 | 12,566.5 | C052 | Z6 | CONS | ST | Excavation | bef |
| RHD4CZ6C052ST3201 |  | Installation of Base for MH 1500 mm - (RD-C-5 /2)-Z6-C052-ST | 2d | 2026-08-06 A | 2026-08-10 A | RHD4CZ6C052ST3101, RHD4PRSHLSTAGST1605 | 100% |  | 2026-07-27 | 2026-07-28 |  |  | Skilled labor [21.78 h]; Unskilled Labor [21.78 h]; Equipment Opreator [8.71 h]; Boom Truck [4.36 h]; Concrete Mixer Truck [4.36 h]; MH (1500mm Diameter) - ST - depth 1.50 - 2.5m [0.5 nr]; MH (1500mm Diameter) - ST - depth 3.51 - 4.5m [0.25 nr] | 12,566.5 | 12,566.5 | C052 | Z6 | CONS | ST | Installing Base | bef |
| RHD4CZ6C052ST3301 |  | MH Ring and C.Slab works and Backfilling works for MH 1500 mm - (RD-C-5 /2)-Z6-C052-ST | 2d | 2026-10-01 A | 2027-01-27 | RHD4CZ6C052ST3201, RHD4PRSHLDOSST1605 | 70% | 2d | 2026-10-20 | 2026-10-21 | -171d | 1d | Skilled labor [21.78 h]; Unskilled Labor [21.78 h]; Equipment Opreator [15.25 h]; Boom Truck [8.71 h]; Concrete Mixer Truck [6.53 h]; MH (1500mm Diameter) - ST - depth 1.50 - 2.5m [0.7 nr]; MH (1500mm Diameter) - ST - depth 3.51 - 4.5m [0.35 nr] | 17,593.1 |  | C052 | Z6 | CONS | ST | Installing Rings | bef |
| RHD4CZ6C052ST3401 |  | Steel Cover for MH 1500 mm - (RD-C-5 /2)-Z6-C052-ST | 2d | 2027-02-21 | 2027-02-23 | RHD4CZ6C052ST3301, RHD4CZ6C052ST2501, RHD4PRSHLDOSST1705, RHD4PRSHLSTAGST1705 |  |  |  |  | -163d | 2d | Skilled labor [10.89 h]; Unskilled Labor [21.78 h]; Equipment Opreator [2.18 h]; Boom Truck [2.18 h]; MH (1500mm Diameter) - ST - depth 1.50 - 2.5m [0.1 nr]; MH (1500mm Diameter) - ST - depth 3.51 - 4.5m [0.05 nr] | 2,513.3 |  | C052 | Z6 | CONS | ST | Steel Cover | bef |
| RHD4CZ6C052ST3501 |  | Finishing, Benching, Testing works for MH 1500 mm - (RD-C-5 /2)-Z6-C052-ST | 2d | 2027-02-27 | 2027-02-28 | RHD4CZ6C052ST3401, RHD4CZ6C052ST2500 |  |  |  |  | -161d | 15d | Skilled labor [21.78 h]; Unskilled Labor [43.56 h]; Plumber [21.78 h]; Equipment Opreator [4.36 h]; Water Truck [4.36 h]; MH (1500mm Diameter) - ST - depth 1.50 - 2.5m [0.2 nr]; MH (1500mm Diameter) - ST - depth 3.51 - 4.5m [0.1 nr] | 5,026.6 |  | C052 | Z6 | CONS | ST | Benching | bef |
|  | 4887 | **RHD4-02-002-C052-(ST)-MH Works - 1200 mm diameter** |  | 2026-08-04 | 2027-03-04 |  |  |  |  |  |  |  |  |  |  |  |  |  |  |  |  |
| RHD4CZ6C052ST3100 |  | Excavation and PC Blinding works for MH 1200 mm - (RD-C-5 /2)-Z6-C052-ST | 3d | 2026-08-04 A | 2026-08-06 A | RHD4CZ6C052ST3101, RHD4ENSDZ6APPST110, RHD4ENMSST2000, RHD4ENMSST2010 | 100% |  | 2026-07-27 | 2026-07-29 |  |  | Skilled labor [25.37 h]; Unskilled Labor [25.37 h]; Equipment Opreator [40.62 h]; Excavator-Poclain [25.37 h]; Water Truck [2.5 h]; Dump Truck [12.74 h]; MH (1200mm Diameter) - ST - depth 1.50 - 2.5m [1 nr]; MH (1200mm Diameter) - ST - depth 2.51 - 3.5m [0.75 nr] | 19,230.75 | 19,230.75 | C052 | Z6 | CONS | ST | Excavation | bef |
| RHD4CZ6C052ST3200 |  | Installation of Base for MH 1200 mm - (RD-C-5 /2)-Z6-C052-ST | 3d | 2026-08-06 A | 2026-08-12 A | RHD4CZ6C052ST3100, RHD4PRSHLSTAGST1605 | 100% |  | 2026-07-30 | 2026-08-02 |  |  | Skilled labor [30.82 h]; Unskilled Labor [30.82 h]; Equipment Opreator [12.31 h]; Boom Truck [6.21 h]; Concrete Mixer Truck [6.21 h]; MH (1200mm Diameter) - ST - depth 1.50 - 2.5m [1 nr]; MH (1200mm Diameter) - ST - depth 2.51 - 3.5m [0.75 nr] | 19,230.75 | 19,230.75 | C052 | Z6 | CONS | ST | Installing Base | bef |
| RHD4CZ6C052ST3300 |  | MH Ring and C.Slab works and Backfilling works for MH 1200 mm - (RD-C-5 /2)-Z6-C052-ST | 3d | 2026-10-01 A | 2027-01-28 | RHD4CZ6C052ST3200, RHD4PRSHLDOSST1605 | 70% | 3d | 2026-10-20 | 2026-10-22 | -172d | 0d | Skilled labor [30.82 h]; Unskilled Labor [30.82 h]; Equipment Opreator [21.6 h]; Boom Truck [12.31 h]; Concrete Mixer Truck [9.26 h]; MH (1200mm Diameter) - ST - depth 1.50 - 2.5m [1.4 nr]; MH (1200mm Diameter) - ST - depth 2.51 - 3.5m [1.05 nr] | 26,923.05 |  | C052 | Z6 | CONS | ST | Installing Rings | bef |
| RHD4CZ6C052ST3400 |  | Steel Cover for MH 1200 mm - (RD-C-5 /2)-Z6-C052-ST | 3d | 2027-02-27 | 2027-03-01 | RHD4CZ6C052ST3300, RHD4CZ6C052ST2501, RHD4CZ6C052ST2500, RHD4PRSHLDOSST1705, RHD4PRSHLSTAGST1705, RHD4CZ6C052ST3401 |  |  |  |  | -165d | 0d | Skilled labor [25.37 h]; Unskilled Labor [50.86 h]; Equipment Opreator [5.12 h]; Boom Truck [5.12 h]; MH (1200mm Diameter) - ST - depth 1.50 - 2.5m [0.2 nr]; MH (1200mm Diameter) - ST - depth 2.51 - 3.5m [0.15 nr] | 3,846.15 |  | C052 | Z6 | CONS | ST | Steel Cover | bef |
| RHD4CZ6C052ST3500 |  | Finishing, Benching, Testing works for MH 1200 mm - (RD-C-5 /2)-Z6-C052-ST | 3d | 2027-03-02 | 2027-03-04 | RHD4CZ6C052ST3400 |  |  |  |  | -165d | 11d | Skilled labor [25.37 h]; Unskilled Labor [50.86 h]; Plumber [25.37 h]; Equipment Opreator [5.12 h]; Water Truck [5.12 h]; MH (1200mm Diameter) - ST - depth 1.50 - 2.5m [0.4 nr]; MH (1200mm Diameter) - ST - depth 2.51 - 3.5m [0.3 nr] | 7,692.3 |  | C052 | Z6 | CONS | ST | Benching | bef |

| ID | WBS | Activity | Duration | Start | Finish | Predecessors | Complete | Remaining | Planned start | Planned finish | Total float | Free float | Resources | Cost | Actual cost | RDH4-01-001-Road and Block Names-1 | RDH4-01-001-Zones-1 | RDH4-01-001-Phases-1 | RDH4-01-001-Networks-1 | RDH4-01-001-Work Method-1 | RDH4-01-001-MENEM |
| --- | --- | --- | --- | --- | --- | --- | --- | --- | --- | --- | --- | --- | --- | --- | --- | --- | --- | --- | --- | --- | --- |
|  | 4876 | **RHD4-02-002-C052-(ST)-GRP Pipes - 900 mm diameter** |  |  |  |  |  |  |  |  |  |  |  |  |  |  |  |  |  |  |  |
|  | 4875 | **RHD4-02-002-C052-(ST)-GRP Pipes - 800 mm diameter** |  |  |  |  |  |  |  |  |  |  |  |  |  |  |  |  |  |  |  |
|  | 4873 | **RHD4-02-002-C052-(ST)-GRP Pipes - 600 mm diameter** |  | 2026-08-04 | 2027-01-27 |  |  |  |  |  |  |  |  |  |  |  |  |  |  |  |  |
| RHD4CZ6C052ST1102 |  | Excavation works for GRP Pipe Line 600 mm - (RD-C-5 /2)-Z6-C052-ST | 2d | 2026-08-04 A | 2026-08-05 A | RHD4ENSDZ6APPST110, RHD4CZ6C052ST3100 | 100% |  | 2026-07-30 | 2026-08-01 |  |  | Skilled labor [3.05 h]; Unskilled Labor [3.05 h]; Equipment Opreator [3.7 h]; Excavator-Poclain [3.05 h]; Dump Truck [0.65 h]; GRP (600mm Diameter) - ST - Depth: 1.51m - 2.5m [6.33 m]; GRP (600mm Diameter) - ST - Depth: 2.51m - 3.5m | 2,943.45 | 2,943.45 | C052 | Z6 | CONS | ST | Excavation | bef |
| RHD4CZ6C052ST1202 |  | Bedding works for GRP Pipe Line 600 mm - (RD-C-5 /2)-Z6-C052-ST | 2d | 2026-08-06 A | 2026-08-08 A | RHD4CZ6C052ST1102 | 100% |  | 2026-08-02 | 2026-08-03 |  |  | Skilled labor [3.05 h]; Unskilled Labor [6.1 h]; Equipment Opreator [6.1 h]; Excavator-Poclain [3.05 h]; Dump Truck [3.05 h]; GRP (600mm Diameter) - ST - Depth: 1.51m - 2.5m [2.11 m]; GRP (600mm Diameter) - ST - Depth: 2.51m - 3.5m | 981.15 | 981.15 | C052 | Z6 | CONS | ST | Bedding | bef |
| RHD4CZ6C052ST1302 |  | Installing for GRP Pipe Line 600 mm - (RD-C-5 /2)-Z6-C052-ST | 2d | 2026-08-09 A | 2026-08-10 A | RHD4CZ6C052ST1202, RHD4PRSHLSTAGST1005, RHD4PRSHLDOSST1605, RHD4PRSHLPOST1000, RHD4PRSHLDOSST1005 | 100% |  | 2026-08-04 | 2026-08-05 |  |  | Unskilled Labor [6.1 h]; Plumber [3.05 h]; GRP (600mm Diameter) - ST - Depth: 1.51m - 2.5m [16.87 m]; GRP (600mm Diameter) - ST - Depth: 2.51m - 3.5m | 7,844.55 | 7,844.55 | C052 | Z6 | CONS | ST | Installation | bef |
| RHD4CZ6C052ST1502 |  | Backfilling and warning tape works for GRP Pipe Line 600 mm - (RD-C-5 /2)-Z6-C052-ST | 2d | 2026-08-11 A | 2026-08-12 A | RHD4CZ6C052ST1402, RHD4CZ6C052ST1503 | 100% |  | 2026-08-09 | 2026-08-10 |  |  | Skilled labor [3.05 h]; Unskilled Labor [6.1 h]; Equipment Opreator [6.1 h]; Excavator-Poclain [3.05 h]; Dump Truck [3.05 h]; GRP (600mm Diameter) - ST - Depth: 1.51m - 2.5m [8.43 m]; GRP (600mm Diameter) - ST - Depth: 2.51m - 3.5m | 3,919.95 | 3,919.95 | C052 | Z6 | CONS | ST | Backfilling | bef |
| RHD4CZ6C052ST1402 |  | Primary Test for GRP Pipe Line 600 mm - (RD-C-5 /2)-Z6-C052-ST | 2d | 2027-01-26 | 2027-01-27 | RHD4CZ6C052ST1302 |  |  |  |  | -148d | 0d | Unskilled Labor [3.05 h]; Plumber [3.05 h]; Equipment Opreator [3.05 h]; Water Truck [3.05 h]; GRP (600mm Diameter) - ST - Depth: 1.51m - 2.5m [8.43 m]; GRP (600mm Diameter) - ST - Depth: 2.51m - 3.5m | 3,919.95 |  | C052 | Z6 | CONS | ST | Primary Test | bef |
|  | 4872 | **RHD4-02-002-C052-(ST)-GRP Pipes - 500 mm diameter** |  | 2026-08-04 | 2027-01-27 |  |  |  |  |  |  |  |  |  |  |  |  |  |  |  |  |
| RHD4CZ6C052ST1101 |  | Excavation works for GRP Pipe Line 500 mm - (RD-C-5 /2)-Z6-C052-ST | 2d | 2026-08-04 A | 2026-08-05 A | RHD4CZ6C052ST1102, RHD4ENSDZ6APPST110 | 100% |  | 2026-08-02 | 2026-08-03 |  |  | Skilled labor [11.65 h]; Unskilled Labor [11.65 h]; Equipment Opreator [13.94 h]; Excavator-Poclain [11.65 h]; Dump Truck [2.29 h]; GRP (500mm Diameter) - ST - Depth: 1.51m - 2.5m [26.28 m]; GRP (500mm Diameter) - ST - Depth: 2.51m - 3.5m | 10,380.6 | 10,380.6 | C052 | Z6 | CONS | ST | Excavation | bef |
| RHD4CZ6C052ST1201 |  | Bedding works for GRP Pipe Line 500 mm - (RD-C-5 /2)-Z6-C052-ST | 2d | 2026-08-06 A | 2026-08-08 A | RHD4CZ6C052ST1101 | 100% |  | 2026-08-04 | 2026-08-05 |  |  | Skilled labor [11.65 h]; Unskilled Labor [23.2 h]; Equipment Opreator [23.2 h]; Excavator-Poclain [11.65 h]; Dump Truck [11.65 h]; GRP (500mm Diameter) - ST - Depth: 1.51m - 2.5m [8.76 m]; GRP (500mm Diameter) - ST - Depth: 2.51m - 3.5m | 3,460.2 | 3,460.2 | C052 | Z6 | CONS | ST | Bedding | bef |
| RHD4CZ6C052ST1301 |  | Installing for GRP Pipe Line 500 mm - (RD-C-5 /2)-Z6-C052-ST | 2d | 2026-08-09 A | 2026-08-10 A | RHD4CZ6C052ST1201, RHD4CZ6C052ST1302, RHD4PRSHLSTAGST1005, RHD4PRSHLDOSST1605, RHD4PRSHLPOST1000, RHD4PRSHLDOSST1005 | 100% |  | 2026-08-06 | 2026-08-08 |  |  | Unskilled Labor [23.2 h]; Plumber [11.65 h]; GRP (500mm Diameter) - ST - Depth: 1.51m - 2.5m [70.07 m]; GRP (500mm Diameter) - ST - Depth: 2.51m - 3.5m | 27,677.65 | 27,677.65 | C052 | Z6 | CONS | ST | Installation | bef |
| RHD4CZ6C052ST1501 |  | Backfilling and warning tape works for GRP Pipe Line 500 mm - (RD-C-5 /2)-Z6-C052-ST | 2d | 2026-08-11 A | 2026-08-12 A | RHD4CZ6C052ST1401, RHD4CZ6C052ST1502 | 100% |  |  |  |  |  | Skilled labor [11.65 h]; Unskilled Labor [23.2 h]; Equipment Opreator [23.2 h]; Excavator-Poclain [11.65 h]; Dump Truck [11.65 h]; GRP (500mm Diameter) - ST - Depth: 1.51m - 2.5m [35.04 m]; GRP (500mm Diameter) - ST - Depth: 2.51m - 3.5m | 13,840.8 | 13,840.8 | C052 | Z6 | CONS | ST | Backfilling | bef |
| RHD4CZ6C052ST1401 |  | Primary Test for GRP Pipe Line 500 mm - (RD-C-5 /2)-Z6-C052-ST | 2d | 2026-09-15 A | 2027-01-27 | RHD4CZ6C052ST1301 | 75% | 2d | 2026-08-09 | 2026-08-10 | -143d | 0d | Unskilled Labor [11.65 h]; Plumber [11.65 h]; Equipment Opreator [11.65 h]; Water Truck [11.65 h]; GRP (500mm Diameter) - ST - Depth: 1.51m - 2.5m [35.04 m]; GRP (500mm Diameter) - ST - Depth: 2.51m - 3.5m | 13,840.8 |  | C052 | Z6 | CONS | ST | Primary Test | bef |
|  | 4871 | **RHD4-02-002-C052-(ST)-GRP Pipes - 400 mm diameter** |  | 2026-08-04 | 2026-09-19 |  |  |  |  |  |  |  |  |  |  |  |  |  |  |  |  |
| RHD4CZ6C052ST1100 |  | Excavation works for GRP Pipe Line 400 mm - (RD-C-5 /2)-Z6-C052-ST | 2d | 2026-08-04 A | 2026-08-05 A | RHD4CZ6C052ST1101, RHD4ENSDZ6APPST110 | 100% |  |  |  |  |  | Skilled labor [6.4 h]; Unskilled Labor [6.4 h]; Equipment Opreator [7.62 h]; Excavator-Poclain [6.4 h]; Dump Truck [1.31 h]; GRP (400mm Diameter) - ST - Depth less than 1.5 m [13.68 m]; GRP (400mm Diameter) - ST - Depth: 1.51m - 2.5 m | 3,967.2 | 3,967.2 | C052 | Z6 | CONS | ST | Excavation | bef |
| RHD4CZ6C052ST1200 |  | Bedding works for GRP Pipe Line 400 mm - (RD-C-5 /2)-Z6-C052-ST | 2d | 2026-08-06 A | 2026-08-08 A | RHD4CZ6C052ST1100 | 100% |  |  |  |  |  | Skilled labor [5.66 h]; Unskilled Labor [11.33 h]; Equipment Opreator [11.33 h]; Excavator-Poclain [5.66 h]; Dump Truck [5.66 h]; GRP (400mm Diameter) - ST - Depth less than 1.5 m [6.84 m]; GRP (400mm Diameter) - ST - Depth: 1.51m - 2.5 m | 1,983.6 | 1,983.6 | C052 | Z6 | CONS | ST | Bedding | bef |
| RHD4CZ6C052ST1300 |  | Installing for GRP Pipe Line 400 mm - (RD-C-5 /2)-Z6-C052-ST | 2d | 2026-08-09 A | 2026-09-15 A | RHD4CZ6C052ST1200, RHD4CZ6C052ST1301, RHD4PRSHLSTAGST1005, RHD4PRSHLDOSST1605, RHD4PRSHLPOST1000, RHD4PRSHLDOSST1005 | 100% |  | 2026-08-09 | 2026-08-10 |  |  | Unskilled Labor [18.4 h]; Plumber [9.26 h]; GRP (400mm Diameter) - ST - Depth less than 1.5 m [61.54 m]; GRP (400mm Diameter) - ST - Depth: 1.51m - 2.5 m | 17,846.6 | 17,846.6 | C052 | Z6 | CONS | ST | Installation | bef |
| RHD4CZ6C052ST1500 |  | Backfilling and warning tape works for GRP Pipe Line 400 mm - (RD-C-5 /2)-Z6-C052-ST | 2d | 2026-08-11 A | 2026-09-15 A | RHD4CZ6C052ST1400, RHD4CZ6C052ST1501 | 100% |  | 2026-08-13 | 2026-08-15 |  |  | Skilled labor [7.41 h]; Unskilled Labor [14.92 h]; Equipment Opreator [14.92 h]; Excavator-Poclain [7.41 h]; Dump Truck [7.41 h]; GRP (400mm Diameter) - ST - Depth less than 1.5 m [27.35 m]; GRP (400mm Diameter) - ST - Depth: 1.51m - 2.5 m | 7,931.5 | 7,931.5 | C052 | Z6 | CONS | ST | Backfilling | bef |
| RHD4CZ6C052ST1400 |  | Primary Test for GRP Pipe Line 400 mm - (RD-C-5 /2)-Z6-C052-ST | 2d | 2026-09-17 A | 2026-09-19 A | RHD4CZ6C052ST1300 | 100% |  | 2026-08-11 | 2026-08-12 |  |  | Unskilled Labor [4.25 h]; Plumber [4.25 h]; Equipment Opreator [4.25 h]; Water Truck [4.25 h]; GRP (400mm Diameter) - ST - Depth less than 1.5 m [27.35 m]; GRP (400mm Diameter) - ST - Depth: 1.51m - 2.5 m | 7,931.5 | 7,931.5 | C052 | Z6 | CONS | ST | Primary Test | bef |
|  | 4886 | **RHD4-02-002-C052-(ST)-UPVC Pipes - 400 mm diameter** |  | 2026-09-03 | 2027-02-15 |  |  |  |  |  |  |  |  |  |  |  |  |  |  |  |  |
| RHD4CZ6C052ST2501 |  | Backfilling and warning tape works for UPVC Pipe Line 400 mm - (RD-C-5 /2)-Z6-C052-ST | 2d | 2026-09-03 A | 2026-10-22 A | RHD4CZ6C052ST2401, RHD4CZ6C052ST6100, RHD4CZ6C052ST1500 | 100% |  | 2026-09-03 | 2026-09-05 |  |  | Skilled labor [0.8 h]; Unskilled Labor [1.52 h]; Equipment Opreator [1.52 h]; Excavator-Poclain [0.8 h]; Dump Truck [0.8 h]; UPVC (400mm Diameter) - ST - Depth less than 1.5 [2.77 m]; UPVC (400mm Diameter) - ST - Depth: 1.51m - 2.5m | 1,252.04 | 1,252.04 | C052 | Z6 | CONS | ST | Backfilling | bef |
| RHD4CZ6C052ST2101 |  | Excavation works for UPVC Pipe Line 400 mm - (RD-C-5 /2)-Z6-C052-ST | 2d | 2026-09-15 A | 2026-09-16 A | RHD4CZ6C052ST3300, RHD4CZ6C052ST3301, RHD4CZ6C052ST7300, RHD4CZ6C052ST8300, RHD4ENSDZ6APPST110 | 100% |  | 2026-08-22 | 2026-08-23 |  |  | Skilled labor [0.8 h]; Unskilled Labor [0.8 h]; Equipment Opreator [0.87 h]; Excavator-Poclain [0.8 h]; Dump Truck [0.11 h]; UPVC (400mm Diameter) - ST - Depth less than 1.5 [1.39 m]; UPVC (400mm Diameter) - ST - Depth: 1.51m - 2.5m | 628.28 | 628.28 | C052 | Z6 | CONS | ST | Excavation | bef |
| RHD4CZ6C052ST2201 |  | Bedding works for UPVC Pipe Line 400 mm - (RD-C-5 /2)-Z6-C052-ST | 2d | 2026-09-17 A | 2026-09-19 A | RHD4CZ6C052ST2101 | 100% |  | 2026-08-24 | 2026-08-25 |  |  | Skilled labor [0.8 h]; Unskilled Labor [1.42 h]; Equipment Opreator [1.42 h]; Excavator-Poclain [0.8 h]; Dump Truck [0.8 h]; UPVC (400mm Diameter) - ST - Depth less than 1.5 [0.69 m]; UPVC (400mm Diameter) - ST - Depth: 1.51m - 2.5m | 311.88 | 311.88 | C052 | Z6 | CONS | ST | Bedding | bef |
| RHD4CZ6C052ST2301 |  | Installing for UPVC Pipe Line 400 mm - (RD-C-5 /2)-Z6-C052-ST | 2d | 2026-09-19 A | 2026-09-20 A | RHD4CZ6C052ST2201, RHD4PRSHLDOSST1105, RHD4PRSHLSTAGST1105, RHD4CZ6C052ST7300, RHD4CZ6C052ST8300 | 100% |  | 2026-08-26 | 2026-08-27 |  |  | Unskilled Labor [1.52 h]; Plumber [0.8 h]; UPVC (400mm Diameter) - ST - Depth less than 1.5 [6.24 m]; UPVC (400mm Diameter) - ST - Depth: 1.51m - 2.5m | 2,820.48 | 2,820.48 | C052 | Z6 | CONS | ST | Installation | bef |
| RHD4CZ6C052ST2401 |  | Primary Test for UPVC Pipe Line 400 mm - (RD-C-5 /2)-Z6-C052-ST | 2d | 2027-02-14 | 2027-02-15 | RHD4CZ6C052ST2301 |  |  |  |  | -159d | 4d | Unskilled Labor [0.8 h]; Plumber [0.8 h]; Equipment Opreator [0.8 h]; Water Truck [0.8 h]; UPVC (400mm Diameter) - ST - Depth less than 1.5 [2.77 m]; UPVC (400mm Diameter) - ST - Depth: 1.51m - 2.5m | 1,252.04 |  | C052 | Z6 | CONS | ST | Primary Test | bef |

| ID | WBS | Activity | Duration | Start | Finish | Predecessors | Complete | Remaining | Planned start | Planned finish | Total float | Free float | Resources | Cost | Actual cost | RDH4-01-001-Road and Block Names-1 | RDH4-01-001-Zones-1 | RDH4-01-001-Phases-1 | RDH4-01-001-Networks-1 | RDH4-01-001-Work Method-1 | RDH4-01-001-MENEM |
| --- | --- | --- | --- | --- | --- | --- | --- | --- | --- | --- | --- | --- | --- | --- | --- | --- | --- | --- | --- | --- | --- |
|  | 4885 | **RHD4-02-002-C052-(ST)-UPVC Pipes - 300 mm diameter** |  | 2026-08-04 | 2027-02-25 |  |  |  |  |  |  |  |  |  |  |  |  |  |  |  |  |
| RHD4CZ6C052ST2100 |  | Excavation works for UPVC Pipe Line 300 mm - (RD-C-5 /2)-Z6-C052-ST | 3d | 2026-08-04 A | 2027-02-15 | RHD4CZ6C052ST3300, RHD4CZ6C052ST3301, RHD4CZ6C052ST2101, RHD4ENSDZ6APPST110 | 90% | 2d | 2026-08-24 | 2026-08-26 | -165d | 0d | Skilled labor [28.97 h]; Unskilled Labor [28.97 h]; Equipment Opreator [34.74 h]; Excavator-Poclain [28.97 h]; Dump Truck [5.77 h]; UPVC (300mm Diameter) - ST - Depth less than 1.5 [62.47 m]; UPVC (300mm Diameter) - ST - Depth: 1.51m - 2.5m | 18,928.41 | 6,309.47 | C052 | Z6 | CONS | ST | Excavation | bef |
| RHD4CZ6C052ST2200 |  | Bedding works for UPVC Pipe Line 300 mm - (RD-C-5 /2)-Z6-C052-ST | 3d | 2026-08-06 A | 2027-02-17 | RHD4CZ6C052ST2100 | 90% | 2d | 2026-08-27 | 2026-08-30 | -165d | 0d | Skilled labor [25.7 h]; Unskilled Labor [51.29 h]; Equipment Opreator [51.29 h]; Excavator-Poclain [25.7 h]; Dump Truck [25.7 h]; UPVC (300mm Diameter) - ST - Depth less than 1.5 [31.24 m]; UPVC (300mm Diameter) - ST - Depth: 1.51m - 2.5m | 9,465.72 | 3,155.24 | C052 | Z6 | CONS | ST | Bedding | bef |
| RHD4CZ6C052ST2300 |  | Installing for UPVC Pipe Line 300 mm - (RD-C-5 /2)-Z6-C052-ST | 3d | 2026-08-10 A | 2027-02-20 | RHD4CZ6C052ST2200, RHD4CZ6C052ST2301, RHD4PRSHLDOSST1105, RHD4PRSHLSTAGST1105, RHD4CZ6C052ST7300, RHD4CZ6C052ST8300 | 90% | 2d | 2026-08-31 | 2026-09-02 | -165d | 0d | Unskilled Labor [57.94 h]; Plumber [28.97 h]; UPVC (300mm Diameter) - ST - Depth less than 1.5 [281.12 m]; UPVC (300mm Diameter) - ST - Depth: 1.51m - 2.5m | 85,179.36 | 28,393.12 | C052 | Z6 | CONS | ST | Installation | bef |
| RHD4CZ6C052ST2500 |  | Backfilling and warning tape works for UPVC Pipe Line 300 mm - (RD-C-5 /2)-Z6-C052-ST | 4d | 2026-08-12 A | 2027-02-25 | RHD4CZ6C052ST2400, RHD4CZ6C052ST6100, RHD4CZ6C052ST2501 | 90% | 2d | 2026-09-06 | 2026-09-09 | -165d | 0d | Skilled labor [33.98 h]; Unskilled Labor [68.06 h]; Equipment Opreator [68.06 h]; Excavator-Poclain [33.98 h]; Dump Truck [33.98 h]; UPVC (300mm Diameter) - ST - Depth less than 1.5 [124.94 m]; UPVC (300mm Diameter) - ST - Depth: 1.51m - 2.5m | 37,856.82 | 18,928.41 | C052 | Z6 | CONS | ST | Backfilling | bef |
| RHD4CZ6C052ST2400 |  | Primary Test for UPVC Pipe Line 300 mm - (RD-C-5 /2)-Z6-C052-ST | 2d | 2027-02-21 | 2027-02-23 | RHD4CZ6C052ST2300 |  |  |  |  | -165d | 0d | Unskilled Labor [18.95 h]; Plumber [18.95 h]; Equipment Opreator [18.95 h]; Water Truck [18.95 h]; UPVC (300mm Diameter) - ST - Depth less than 1.5 [124.94 m]; UPVC (300mm Diameter) - ST - Depth: 1.51m - 2.5m | 37,856.82 |  | C052 | Z6 | CONS | ST | Primary Test | bef |
|  | 4893 | **RHD4-02-002-C052-(ST)-Concrete Encasement** |  | 2026-10-06 | 2027-02-20 |  |  |  |  |  |  |  |  |  |  |  |  |  |  |  |  |
| RHD4CZ6C052ST6100 |  | Pipe Encasement for Storm Pipelines - (RD-C-5 /2)-Z6-C052-ST | 2d | 2026-10-06 A | 2027-02-20 | RHD4CZ6C052ST2301 SS, RHD4CZ6C052ST2300 SS, RHD4CZ6C052ST2300 FF, RHD4CZ6C052ST2301 FF, RHD4CZ6C052ST2201, RHD4CZ6C052ST2200 | 50% | 2d | 2027-03-02 | 2027-03-03 | -163d | 0d | Skilled labor [5.12 h]; Unskilled Labor [5.12 h]; Equipment Opreator [5.55 h]; Concrete Mixer Truck [0.54 h]; Dump Truck [5.12 h]; Pipe Encasement - ST [93.08 m3] | 47,098.48 |  | C052 | Z6 | CONS | ST | Pipe Encasement | bef |
|  | 4894 | **RHD4-02-002-Z6-C052-Catch Basin - ST** |  | 2026-08-04 | 2027-02-28 |  |  |  |  |  |  |  |  |  |  |  |  |  |  |  |  |
|  | 4895 | **RHD4-02-002-C052-(ST)-Single Catch Basin Works** |  | 2026-08-04 | 2027-02-28 |  |  |  |  |  |  |  |  |  |  |  |  |  |  |  |  |
| RHD4CZ6C052ST7100 |  | Excavation works for Single Catch Basin - (RD-C-5 /2)-Z6-C052-ST | 4d | 2026-08-04 A | 2027-02-02 | RHD4CZ6C052ST3300, RHD4CZ6C052ST3301, RHD4ENSDZ6APPST110 | 71% | 4d | 2026-08-06 | 2026-08-10 | -172d | 0d | Skilled labor [41.38 h]; Unskilled Labor [82.77 h]; Equipment Opreator [62.07 h]; Excavator-Poclain [41.38 h]; Dump Truck [20.69 h]; Single Catch basin - ST [9.5 nr] | 35,444.5 | 26,115.51 | C052 | Z6 | CONS | ST | Excavation | bef |
| RHD4CZ6C052ST7200 |  | PC Blinding, Installation and Pipe connection for Single Catch Basin - (RD-C-5 /2)-Z6-C052-ST | 4d | 2026-08-06 A | 2027-02-07 | RHD4CZ6C052ST7100 | 71% | 4d | 2026-08-11 | 2026-08-15 | -172d | 0d | Skilled labor [41.38 h]; Unskilled Labor [82.77 h]; Plumber [20.69 h]; Equipment Opreator [8.28 h]; Boom Truck [8.28 h]; Single Catch basin - ST [7.6 nr] | 28,355.6 | 20,892.41 | C052 | Z6 | CONS | ST | Installation & Pipe Connection | bef |
| RHD4CZ6C052ST7300 |  | Rings & C.Slab & Final Backfill for Single Catch Basin - (RD-C-5 /2)-Z6-C052-ST | 5d | 2026-10-27 A | 2027-02-13 | RHD4CZ6C052ST7200, RHD4PRSHLDOSST1305, RHD4PRSHLSTAGST1305 |  | 5d | 2026-10-27 | 2026-11-01 | -172d | 0d | Skilled labor [51.73 h]; Unskilled Labor [103.46 h]; Equipment Opreator [62.07 h]; Boom Truck [10.35 h]; Bobcat [51.73 h]; Single Catch basin - ST [13.3 nr] | 49,622.3 | 33,951.58 | C052 | Z6 | CONS | ST | Rings | bef |
| RHD4CZ6C052ST7400 |  | Steel Cover for Single Catch Basin - (RD-C-5 /2)-Z6-C052-ST | 4d | 2027-02-14 | 2027-02-17 | RHD4CZ6C052ST7300, RHD4PRSHLDOSST1705 |  |  |  |  | -172d | 0d | Skilled labor [41.38 h]; Unskilled Labor [41.38 h]; Equipment Opreator [8.28 h]; Boom Truck [8.28 h]; Single Catch basin - ST [1.9 nr] | 7,088.9 |  | C052 | Z6 | CONS | ST | Steel Cover | bef |
| RHD4CZ6C052ST7500 |  | Finishing and Insulation works for Single Catch Basin - (RD-C-5 /2)-Z6-C052-ST | 8d | 2027-02-18 | 2027-02-28 | RHD4CZ6C052ST7400 |  |  |  |  | -165d | 11d | Skilled labor [82.77 h]; Unskilled Labor [165.53 h]; Equipment Opreator [16.55 h]; Boom Truck [16.55 h]; Single Catch basin - ST [5.7 nr] | 21,266.7 |  | C052 | Z6 | CONS | ST | Insulation | bef |
|  | 4896 | **RHD4-02-002-C052-(ST)-Double Catch Basin Works** |  | 2026-08-04 | 2027-02-23 |  |  |  |  |  |  |  |  |  |  |  |  |  |  |  |  |
| RHD4CZ6C052ST8100 |  | Excavation works for Double Catch Basin - (RD-C-5 /2)-Z6-C052-ST | 2d | 2026-08-04 A | 2026-08-06 A | RHD4CZ6C052ST3300, RHD4CZ6C052ST3301, RHD4CZ6C052ST7100, RHD4ENSDZ6APPST110 | 100% |  | 2026-08-11 | 2026-08-12 |  |  | Skilled labor [4.36 h]; Unskilled Labor [8.71 h]; Equipment Opreator [6.53 h]; Excavator-Poclain [4.36 h]; Dump Truck [2.18 h]; Double Catch basin - ST [0.5 nr] | 6,983 | 6,983 | C052 | Z6 | CONS | ST | Excavation | bef |
| RHD4CZ6C052ST8200 |  | PC Blinding, Installation and Pipe connection for Double Catch Basin - (RD-C-5 /2)-Z6-C052-ST | 2d | 2026-08-06 A | 2026-08-09 A | RHD4CZ6C052ST8100 | 100% |  | 2026-08-13 | 2026-08-15 |  |  | Skilled labor [4.36 h]; Unskilled Labor [8.71 h]; Plumber [2.18 h]; Equipment Opreator [0.87 h]; Boom Truck [0.87 h]; Double Catch basin - ST [0.4 nr] | 5,586.4 | 5,586.4 | C052 | Z6 | CONS | ST | Installation & Pipe Connection | bef |
| RHD4CZ6C052ST8300 |  | Rings & C.Slab & Final Backfillfor Double Catch Basin - (RD-C-5 /2)-Z6-C052-ST | 2d | 2027-02-03 | 2027-02-04 | RHD4CZ6C052ST8200, RHD4PRSHLDOSST1305, RHD4PRSHLSTAGST1305 |  |  |  |  | -161d | 7d | Skilled labor [5.45 h]; Unskilled Labor [10.89 h]; Equipment Opreator [6.53 h]; Boom Truck [1.09 h]; Bobcat [5.45 h]; Double Catch basin - ST [0.7 nr] | 9,776.2 |  | C052 | Z6 | CONS | ST | Rings | bef |
| RHD4CZ6C052ST8400 |  | Steel Cover for Double Catch Basin - (RD-C-5 /2)-Z6-C052-ST | 2d | 2027-02-18 | 2027-02-20 | RHD4CZ6C052ST8300, RHD4PRSHLDOSST1705, RHD4CZ6C052ST7400 |  |  |  |  | -172d | 0d | Skilled labor [4.36 h]; Unskilled Labor [4.36 h]; Equipment Opreator [0.87 h]; Boom Truck [0.87 h]; Double Catch basin - ST [0.1 nr] | 1,396.6 |  | C052 | Z6 | CONS | ST | Steel Cover | bef |
| RHD4CZ6C052ST8500 |  | Finishing and Insulation works for Double Catch Basin - (RD-C-5 /2)-Z6-C052-ST | 2d | 2027-02-21 | 2027-02-23 | RHD4CZ6C052ST8400 |  |  |  |  | -172d | 13d | Skilled labor [10.89 h]; Unskilled Labor [21.78 h]; Equipment Opreator [2.18 h]; Boom Truck [2.18 h]; Double Catch basin - ST [0.3 nr] | 4,189.8 |  | C052 | Z6 | CONS | ST | Insulation | bef |
|  | 4299 | **RHD4-02-002-Z6-C052-Concrete Box Culvert - ST** |  | 2026-06-11 | 2027-03-17 |  |  |  |  |  |  |  |  |  |  |  |  |  |  |  |  |
|  | 4300 | **RHD4-02-002-C052-(ST)-Concrete Box Culvert** |  | 2026-06-11 | 2027-03-17 |  |  |  |  |  |  |  |  |  |  |  |  |  |  |  |  |
| RHD4CZ6C052ST4100 |  | Excavation works for Box Culvert - (RD-C-5/2)-Z6-C052-ST(Completed) | 46d | 2026-06-11 A | 2026-06-13 A | RHD4CZ6C052RD1100 | 100% |  | 2026-09-06 | 2026-10-29 |  |  | Skilled labor [119.25 h]; Unskilled Labor [119.25 h]; Equipment Opreator [357.75 h]; Excavator-Poclain [119.25 h]; Water Truck [119.25 h]; Dump Truck [119.25 h]; Excavation for culverts (all types of soil) including backfilling - ST [1787.7 m3] | 32,178.6 | 32,178.6 | C052 | Z6 | CONS | ST | Excavation | bef |
| RHD4CZ6C052ST4200 |  | PC works for Box Culvert - (RD-C-5/2)-Z6-C052-ST(Completed) | 43d | 2026-06-15 A | 2026-06-18 A | RHD4CZ6C052ST4100 SS | 100% |  | 2026-09-06 | 2026-10-26 |  |  | Skilled labor [2.07 h]; Unskilled Labor [2.07 h]; Equipment Opreator [2.07 h]; Concrete Mixer Truck [1.09 h]; Concrete Pump [1.09 h]; 100 mm thickness lean concrete under the base - ST [777.58 m2] | 30,325.62 | 30,325.62 | C052 | Z6 | CONS | ST | PC | bef |
| RHD4CZ6C052ST4400 |  | Raft works for Box Culvert - (RD-C-5/2)-Z6-C052-ST(Completed) | 21d | 2026-07-11 A | 2026-07-16 A | RHD4CZ6C052ST4200 SS | 100% |  | 2026-09-06 | 2026-09-30 |  |  | Carpenter [13.4 h]; Skilled labor [16.55 h]; Steel Fixer [3.05 h]; Equipment Opreator [27.55 h]; Boom Truck [0.65 h]; Concrete Mixer Truck [13.4 h]; Concrete Pump [13.4 h]; Supply and cast in place reinforced concrete for Box culverts - ST [265.82 m3]; Supply, placing, and fixing of high tensile reinforcement steel for Box culverts - ST [61.3 Ton] | 483,227.68 | 483,227.68 | C052 | Z6 | CONS | ST | Raft Works | bef |
| RHD4CZ6C052ST4500 |  | Wall and slab works for Box Culvert - (RD-C-5/2)-Z6-C052-ST | 5d | 2026-08-04 A | 2026-09-22 A | RHD4CZ6C052ST4400, RHD4CZ6C052ST4200, RHD4CZ6C052RD1100, RHD4CZ6C052ST4100 | 100% |  | 2026-10-31 | 2026-11-04 |  |  | Carpenter [36.16 h]; Skilled labor [44.54 h]; Steel Fixer [8.39 h]; Equipment Opreator [74.05 h]; Boom Truck [1.6 h]; Concrete Mixer Truck [36.16 h]; Concrete Pump [36.16 h]; Supply and cast in place reinforced concrete for Box culverts - ST [332.28 m3]; Supply, placing, and fixing of high tensile reinforcement steel for Box culverts - ST [91.95 Ton] | 659,454.72 | 659,454.72 | C052 | Z6 | CONS | ST | Wall and slab Works | bef |
| RHD4CZ6C052ST4600 |  | Insulation and Testing for Box Culvert - (RD-C-5/2)-Z6-C052-ST | 4d | 2026-09-19 A | 2027-03-17 | RHD4CZ6C052ST4700, RHD4CZ6C052ST5400 | 80% | 4d | 2026-12-01 | 2026-12-05 | -115d | 31d | Skilled labor [36.16 h]; Unskilled Labor [72.42 h]; Equipment Opreator [36.16 h]; Water Truck [36.16 h]; Supply and cast in place reinforced concrete for Box culverts - ST [66.46 m3] | 65,396.64 |  | C052 | Z6 | CONS | ST | Insulation and Testing | bef |
| RHD4CZ6C052ST4700 |  | Backfilling works for Box Culvert - (RD-C-5/2)-Z6-C052-ST | 13d | 2026-09-26 A | 2026-10-10 A | RHD4CZ6C052ST4500, RHD4CZ6C052ST5300 | 100% |  |  |  |  |  | Skilled labor [139.07 h]; Unskilled Labor [278.14 h]; Equipment Opreator [222.49 h]; Boom Truck [69.48 h]; Water Truck [13.94 h]; Dump Truck [139.07 h]; Excavation for culverts (all types of soil) including backfilling - ST [766.16 m3] | 13,790.88 | 13,790.88 | C052 | Z6 | CONS | ST | Backfilling | bef |

| ID | WBS | Activity | Duration | Start | Finish | Predecessors | Complete | Remaining | Planned start | Planned finish | Total float | Free float | Resources | Cost | Actual cost | RDH4-01-001-Road and Block Names-1 | RDH4-01-001-Zones-1 | RDH4-01-001-Phases-1 | RDH4-01-001-Networks-1 | RDH4-01-001-Work Method-1 | RDH4-01-001-MENEM |
| --- | --- | --- | --- | --- | --- | --- | --- | --- | --- | --- | --- | --- | --- | --- | --- | --- | --- | --- | --- | --- | --- |
|  | 4301 | **RHD4-02-002-C052-(ST)-Concrete Chambers** |  | 2026-08-20 | 2027-03-13 |  |  |  |  |  |  |  |  |  |  |  |  |  |  |  |  |
| RHD4CZ6C052ST5100 |  | Excavation and Bedding for Concrete Chambers - for Box Culvert - (RD-C-5/2)-Z6-C052-ST | 3d | 2026-08-20 A | 2027-02-27 | RHD4CZ6C052ST4500 | 50% | 3d | 2026-11-05 | 2026-11-08 | -115d | 0d | Skilled labor [32.67 h]; Unskilled Labor [32.67 h]; Equipment Opreator [6.53 h]; Excavator-Poclain [3.27 h]; Dump Truck [3.27 h]; Concrete chambers - ST - Size 1.8 x 2.0 m, depth 4.51-5.5 m [0.45 nr] | 17,418.6 | 8,709.3 | C052 | Z6 | CONS | ST | Excavation & Bedding | bef |
| RHD4CZ6C052ST5200 |  | PC works for Concrete Chambers - for Box Culvert - (RD-C-5/2)-Z6-C052-ST | 3d | 2026-08-25 A | 2027-03-02 | RHD4CZ6C052ST5100 | 50% | 3d | 2026-11-09 | 2026-11-11 | -115d | 0d | Skilled labor [32.67 h]; Unskilled Labor [32.67 h]; Equipment Opreator [6.53 h]; Excavator-Poclain [3.27 h]; Dump Truck [3.27 h]; Concrete chambers - ST - Size 1.8 x 2.0 m, depth 4.51-5.5 m [0.3 nr] | 11,612.4 | 5,806.2 | C052 | Z6 | CONS | ST | PC Works | bef |
| RHD4CZ6C052ST5300 |  | Installation for Concrete Chambers - for Box Culvert - (RD-C-5/2)-Z6-C052-ST | 3d | 2026-08-30 A | 2027-03-06 | RHD4CZ6C052ST5200 | 50% | 3d | 2026-11-12 | 2026-11-15 | -115d | 0d | Skilled labor [32.67 h]; Unskilled Labor [32.67 h]; Equipment Opreator [6.53 h]; Excavator-Poclain [3.27 h]; Dump Truck [3.27 h]; Concrete chambers - ST - Size 1.8 x 2.0 m, depth 4.51-5.5 m [1.65 nr] | 63,868.2 | 31,934.1 | C052 | Z6 | CONS | ST | Installation | bef |
| RHD4CZ6C052ST5400 |  | Backfilling works for Concrete Chambers - for Box Culvert - (RD-C-5/2)-Z6-C052-ST | 3d | 2027-03-07 | 2027-03-13 | RHD4CZ6C052ST5300 |  |  |  |  | -115d | 0d | Skilled labor [32.67 h]; Unskilled Labor [32.67 h]; Equipment Opreator [6.53 h]; Excavator-Poclain [3.27 h]; Dump Truck [3.27 h]; Concrete chambers - ST - Size 1.8 x 2.0 m, depth 4.51-5.5 m [0.6 nr] | 23,224.8 |  | C052 | Z6 | CONS | ST | Backfilling Works | bef |
|  | 4919 | **RHD4-02-002-Z6-C052-Sewage Network - SW** |  | 2026-08-08 | 2027-03-03 |  |  |  |  |  |  |  |  |  |  |  |  |  |  |  |  |
|  | 4929 | **RHD4-02-002-C052-(SW)-MH Works - 1200 mm diameter** |  | 2026-08-08 | 2027-03-03 |  |  |  |  |  |  |  |  |  |  |  |  |  |  |  |  |
| RHD4CZ6C052SW3100 |  | Excavation and PC Blinding works for MH 1200 mm - (RD-C-5 /2)-Z6-C052-SW | 5d | 2026-08-08 A | 2026-09-20 A | RHD4ENSDZ6APPSW120, RHD4CZ6C052ST1503, RHD4CZ6C052ST2100 | 100% |  | 2026-08-27 | 2026-09-01 |  |  | Skilled labor [45.41 h]; Unskilled Labor [45.41 h]; Equipment Opreator [72.64 h]; Excavator-Poclain [45.41 h]; Water Truck [4.57 h]; Dump Truck [22.65 h]; MH (1200mm Diameter) - SW - depth 0 - 1.5m [0.5 nr]; MH (1200mm Diameter) - SW - depth 1.51 - 2.5m [1.75 nr] | 20,930 | 20,930 | C052 | Z6 | CONS | SW | Excavation | bef |
| RHD4CZ6C052SW3200 |  | Installation of Base for MH 1200 mm - (RD-C-5 /2)-Z6-C052-SW | 5d | 2026-08-10 A | 2026-09-22 A | RHD4CZ6C052SW3100 | 100% |  | 2026-09-02 | 2026-09-07 |  |  | Skilled labor [49.01 h]; Unskilled Labor [49.01 h]; Equipment Opreator [19.6 h]; Boom Truck [9.8 h]; Concrete Mixer Truck [9.8 h]; MH (1200mm Diameter) - SW - depth 0 - 1.5m [0.5 nr]; MH (1200mm Diameter) - SW - depth 1.51 - 2.5m [1.75 nr] | 20,930 | 20,930 | C052 | Z6 | CONS | SW | Installing Base | bef |
| RHD4CZ6C052SW3300 |  | MH Ring and C.Slab works and Backfilling works for MH 1200 mm - (RD-C-5 /2)-Z6-C052-SW | 5d | 2027-02-16 | 2027-02-21 | RHD4CZ6C052SW3200, RHD4PRSHLDOSSW1305, RHD4PRSHLSTAGSW1305 |  |  |  |  | -165d | 0d | Skilled labor [49.01 h]; Unskilled Labor [49.01 h]; Equipment Opreator [34.3 h]; Boom Truck [19.6 h]; Concrete Mixer Truck [14.7 h]; MH (1200mm Diameter) - SW - depth 0 - 1.5m [0.7 nr]; MH (1200mm Diameter) - SW - depth 1.51 - 2.5m [2.45 nr] | 29,302 |  | C052 | Z6 | CONS | SW | Installing Rings | bef |
| RHD4CZ6C052SW3400 |  | Steel Cover for MH 1200 mm - (RD-C-5 /2)-Z6-C052-SW | 3d | 2027-02-23 | 2027-02-25 | RHD4CZ6C052SW3300, RHD4PRSHLDOSSW1405, RHD4PRSHLSTAGSW1405 |  |  |  |  | -161d | 0d | Skilled labor [32.67 h]; Unskilled Labor [65.34 h]; Equipment Opreator [6.53 h]; Boom Truck [6.53 h]; MH (1200mm Diameter) - SW - depth 0 - 1.5m [0.1 nr]; MH (1200mm Diameter) - SW - depth 1.51 - 2.5m [0.35 nr] | 4,186 |  | C052 | Z6 | CONS | SW | Steel Cover | bef |
| RHD4CZ6C052SW3500 |  | Finishing, Benching, Testing works for MH 1200 mm - (RD-C-5 /2)-Z6-C052-SW | 5d | 2027-02-27 | 2027-03-03 | RHD4CZ6C052SW3400 |  |  |  |  | -161d | 0d | Skilled labor [49.01 h]; Unskilled Labor [98.01 h]; Plumber [49.01 h]; Equipment Opreator [9.8 h]; Water Truck [9.8 h]; MH (1200mm Diameter) - SW - depth 0 - 1.5m [0.2 nr]; MH (1200mm Diameter) - SW - depth 1.51 - 2.5m [0.7 nr] | 8,372 |  | C052 | Z6 | CONS | SW | Benching | bef |
|  | 4925 | **RHD4-02-002-C052-(SW)-UPVC Pipes - 200 mm diameter** |  | 2026-08-11 | 2027-02-28 |  |  |  |  |  |  |  |  |  |  |  |  |  |  |  |  |
| RHD4CZ6C052SW2100 |  | Excavation works for UPVC Pipe Line 200 mm - (RD-C-5 /2)-Z6-C052-SW | 2d | 2026-08-11 A | 2026-08-15 A | RHD4CZ6C052SW3200, RHD4ENSDZ6APPSW120 | 100% |  | 2026-09-08 | 2026-09-09 |  |  | Skilled labor [21.02 h]; Unskilled Labor [21.02 h]; Equipment Opreator [25.16 h]; Excavator-Poclain [21.02 h]; Dump Truck [4.25 h]; UPVC (200mm Diameter) - SW - Depth: less than 1.5m [35.29 m]; UPVC (200mm Diameter) - SW - Depth: 1.51m - 2.5m [9.21 m] | 8,350.77 | 8,350.77 | C052 | Z6 | CONS | SW | Excavation | bef |
| RHD4CZ6C052SW2200 |  | Bedding works for UPVC Pipe Line 200 mm - (RD-C-5 /2)-Z6-C052-SW | 2d | 2026-08-13 A | 2026-08-16 A | RHD4CZ6C052SW2100 | 100% |  | 2026-09-10 | 2026-09-12 |  |  | Skilled labor [19.93 h]; Unskilled Labor [39.86 h]; Equipment Opreator [39.86 h]; Excavator-Poclain [19.93 h]; Dump Truck [19.93 h]; UPVC (200mm Diameter) - SW - Depth: less than 1.5m [17.64 m]; UPVC (200mm Diameter) - SW - Depth: 1.51m - 2.5m [3.07 m] | 3,841.39 | 3,841.39 | C052 | Z6 | CONS | SW | Bedding | bef |
| RHD4CZ6C052SW2300 |  | Installing for UPVC Pipe Line 200 mm - (RD-C-5 /2)-Z6-C052-SW | 3d | 2026-08-15 A | 2026-08-17 A | RHD4CZ6C052SW2200, RHD4CZ6C052SW3300, RHD4PRSHLSTAGSW1005, RHD4PRSHLDOSSW1305, RHD4PRSHLPOSW1000, RHD4PRSHLDOSSW1005, RHD4PRSHLDOSSW1004, RHD4PRSHLDOSSW1304, RHD4PRSHLPOSW1100, RHD4PRSHLDOSSW1104 | 100% |  | 2026-09-14 | 2026-09-16 |  |  | Unskilled Labor [50.31 h]; Plumber [25.16 h]; Equipment Opreator [25.16 h]; Boom Truck [25.16 h]; UPVC (200mm Diameter) - SW - Depth: less than 1.5m [158.8 m]; UPVC (200mm Diameter) - SW - Depth: 1.51m - 2.5m [24.55 m] | 33,911.35 | 33,911.35 | C052 | Z6 | CONS | SW | Installation | bef |
| RHD4CZ6C052SW2500 |  | Backfilling and warning tape works for UPVC Pipe Line 200 mm - (RD-C-5 /2)-Z6-C052-SW | 3d | 2026-08-16 A | 2027-02-28 | RHD4CZ6C052SW2400 | 61% | 3d | 2026-09-20 | 2026-09-22 | -165d | 0d | Skilled labor [22.54 h]; Unskilled Labor [45.09 h]; Equipment Opreator [45.09 h]; Excavator-Poclain [22.54 h]; Dump Truck [22.54 h]; UPVC (200mm Diameter) - SW - Depth: less than 1.5m [70.58 m]; UPVC (200mm Diameter) - SW - Depth: 1.51m - 2.5m [12.28 m] | 15,369.16 |  | C052 | Z6 | CONS | SW | Backfilling | bef |
| RHD4CZ6C052SW2400 |  | Primary Test for UPVC Pipe Line 200 mm - (RD-C-5 /2)-Z6-C052-SW | 2d | 2026-09-20 A | 2027-02-24 | RHD4CZ6C052SW2300 | 31% | 2d | 2026-09-17 | 2026-09-19 | -165d | 0d | Unskilled Labor [12.96 h]; Plumber [12.96 h]; Equipment Opreator [12.96 h]; Water Truck [12.96 h]; UPVC (200mm Diameter) - SW - Depth: less than 1.5m [70.58 m]; UPVC (200mm Diameter) - SW - Depth: 1.51m - 2.5m [12.28 m] | 15,369.16 |  | C052 | Z6 | CONS | SW | Primary Test | bef |
|  | 4928 | **RHD4-02-002-C052-(SW)-Concrete Encasement** |  |  |  |  |  |  |  |  |  |  |  |  |  |  |  |  |  |  |  |
|  | 4956 | **RHD4-02-002-Z6-C052-Potable Network - PT** |  | 2026-08-04 | 2027-04-01 |  |  |  |  |  |  |  |  |  |  |  |  |  |  |  |  |
|  | 4957 | **RHD4-02-002-C052-(PT)-HDPE Pipes - 110 mm diameter** |  | 2026-08-04 | 2027-03-21 |  |  |  |  |  |  |  |  |  |  |  |  |  |  |  |  |
| RHD4CZ6C052PT1100 |  | Excavation works for HDPE Pipline 110 mm - (RD-C-5 /2)-Z6-C052-PT | 2d | 2026-08-04 A | 2027-03-04 | RHD4CZ6C052PT1101, RHD4CZ6C052SW2500, RHD4ENSDZ6APPPT130, RHD4ENMSPT2000 | 81% | 2d | 2026-09-27 | 2026-09-28 | -165d | 0d | Skilled labor [4.57 h]; Unskilled Labor [4.57 h]; Equipment Opreator [5.45 h]; Excavator-Poclain [4.57 h]; Dump Truck [0.87 h]; HDPE (110mm Diameter) - PT - Depth: less than 1.5m [10.48 m] | 890.8 |  | C052 | Z6 | CONS | PT | Excavation | bef |
| RHD4CZ6C052PT1200 |  | Bedding works for HDPE Pipline 110 mm - (RD-C-5 /2)-Z6-C052-PT | 2d | 2026-08-06 A | 2027-03-07 | RHD4CZ6C052PT1100, RHD4CZ6C052PT1201 | 81% | 2d | 2026-09-29 | 2026-09-30 | -159d | 1d | Skilled labor [3.81 h]; Unskilled Labor [7.62 h]; Equipment Opreator [7.62 h]; Excavator-Poclain [3.81 h]; Dump Truck [3.81 h]; HDPE (110mm Diameter) - PT - Depth: less than 1.5m [5.24 m] | 445.4 |  | C052 | Z6 | CONS | PT | Bedding | bef |
| RHD4CZ6C052PT1300 |  | Installing for HDPE Pipline 110 mm - (RD-C-5 /2)-Z6-C052-PT | 2d | 2026-08-08 A | 2027-03-14 | RHD4CZ6C052PT1200, RHD4CZ6C052PT1301, RHD4PRSHLDOSPT1000, RHD4PRSHLSTAGPT1000 | 81% | 2d | 2026-10-03 | 2026-10-04 | -160d | 0d | Unskilled Labor [15.25 h]; Plumber [7.62 h]; Equipment Opreator [7.62 h]; Boom Truck [7.62 h]; HDPE (110mm Diameter) - PT - Depth: less than 1.5m [47.16 m] | 4,008.6 |  | C052 | Z6 | CONS | PT | Installation | bef |
| RHD4CZ6C052PT1400 |  | Primary Test for HDPE Pipline 110 mm - (RD-C-5 /2)-Z6-C052-PT | 2d | 2027-03-17 | 2027-03-18 | RHD4CZ6C052PT1300, RHD4CZ6C052PT1401, RHD4CZ6C052PT5100 |  |  |  |  | -160d | 0d | Unskilled Labor [2.29 h]; Plumber [2.29 h]; Equipment Opreator [2.29 h]; Water Truck [2.29 h]; HDPE (110mm Diameter) - PT - Depth: less than 1.5m [20.96 m] | 1,781.6 |  | C052 | Z6 | CONS | PT | Primary Test | bef |
| RHD4CZ6C052PT1500 |  | Backfilling and warning tape works for HDPE Pipline 110 mm - (RD-C-5 /2)-Z6-C052-PT | 2d | 2027-03-20 | 2027-03-21 | RHD4CZ6C052PT1400, RHD4CZ6C052PT1501 |  |  |  |  | -160d | 0d | Skilled labor [5.66 h]; Unskilled Labor [11.43 h]; Equipment Opreator [11.43 h]; Excavator-Poclain [5.66 h]; Dump Truck [5.66 h]; HDPE (110mm Diameter) - PT - Depth: less than 1.5m [20.96 m] | 1,781.6 |  | C052 | Z6 | CONS | PT | Backfilling | bef |

| ID | WBS | Activity | Duration | Start | Finish | Predecessors | Total float | Free float | Resources | Cost | RDH4-01-001-Road and Block Names-1 | RDH4-01-001-Zones-1 | RDH4-01-001-Phases-1 | RDH4-01-001-Networks-1 | RDH4-01-001-Work Method-1 | RDH4-01-001-MENEM |
| --- | --- | --- | --- | --- | --- | --- | --- | --- | --- | --- | --- | --- | --- | --- | --- | --- |
|  | 3643 | **RHD4-02-002-C052-(PT)-Air Valve Chambers** |  | 2027-03-06 | 2027-03-20 |  |  |  |  |  |  |  |  |  |  |  |
| RHD4CZ6C052PT2102 |  | Excavation and Bedding for Air Valve Chambers for Potable Water Network - (RD-C-5 /2)-Z6-C052-PT | 2d | 2027-03-06 | 2027-03-07 | RHD4CZ6C052PT2101 SS | -165d | 2d | Skilled labor [5.45 h]; Unskilled Labor [5.45 h]; Equipment Opreator [1.09 h]; Excavator-Poclain [0.54 h]; Dump Truck [0.54 h]; Air Valve chambers - PT [0.25 nr] | 1,193 | C052 | Z6 | CONS | PT | Excavation and Bedding | bef |
| RHD4CZ6C052PT2202 |  | PC works for Air Valve Chambers for Potable Water Network - (RD-C-5 /2)-Z6-C052-PT | 2d | 2027-03-14 | 2027-03-15 | RHD4CZ6RA01RD3100, RHD4CZ6C052PT2102 | -167d | 0d | Skilled labor [5.45 h]; Unskilled Labor [10.89 h]; Equipment Opreator [0.54 h]; Concrete Pump [0.54 h]; Air Valve chambers - PT [0.1 nr] | 477.2 | C052 | Z6 | CONS | PT | PC Works | bef |
| RHD4CZ6C052PT2302 |  | Installation for Air Valve Chambers for Potable Water Network - (RD-C-5 /2)-Z6-C052-PT | 2d | 2027-03-16 | 2027-03-17 | RHD4CZ6C052PT2202 | -167d | 0d | Skilled labor [5.45 h]; Unskilled Labor [10.89 h]; Equipment Opreator [1.09 h]; Boom Truck [1.09 h]; Air Valve chambers - PT [0.55 nr] | 2,624.6 | C052 | Z6 | CONS | PT | Installation | bef |
| RHD4CZ6C052PT2402 |  | Backfilling works for Air Valve Chambers for Potable Water Network - (RD-C-5 /2)-Z6-C052-PT | 2d | 2027-03-18 | 2027-03-20 | RHD4CZ6C052PT2302 | -167d | 0d | Skilled labor [5.45 h]; Unskilled Labor [10.89 h]; Equipment Opreator [1.09 h]; Water Truck [0.54 h]; Dump Truck [0.54 h]; Air Valve chambers - PT [0.1 nr] | 477.2 | C052 | Z6 | CONS | PT | Backfilling Works | bef |
|  | 3644 | **RHD4-02-002-C052-(PT)-Air Valves** |  | 2027-03-18 | 2027-03-22 |  |  |  |  |  |  |  |  |  |  |  |
| RHD4CZ6C052PT3103 |  | Installation for Air Valves for Potable Water Network - (RD-C-5 /2)-Z6-C052-PT | 2d | 2027-03-18 | 2027-03-20 | RHD4CZ6C052PT2302 | -167d | 0d | Unskilled Labor [5.45 h]; Plumber [5.45 h]; Air valve diameter 50 mm - PT [0.9 nr] | 4,427.1 | C052 | Z6 | CONS | PT | Installation | bef |
| RHD4CZ6C052PT3203 |  | Stem and Service box for Air Valves for Potable Water Network - (RD-C-5 /2)-Z6-C052-PT | 2d | 2027-03-21 | 2027-03-22 | RHD4CZ6C052PT3103, RHD4CZ6C052PT2402 | -167d | 17d | Unskilled Labor [5.45 h]; Plumber [5.45 h]; Air valve diameter 50 mm - PT [0.1 nr] | 491.9 | C052 | Z6 | CONS | PT | Stem and Service box | bef |
|  | 4962 | **RHD4-02-002-C052-(PT)-Gate Valves (Direct Buried)** |  | 2027-03-13 | 2027-03-23 |  |  |  |  |  |  |  |  |  |  |  |
| RHD4CZ6C052PT3100 |  | Installation for Direct Buried Gate Valves - (RD-C-5 /2)-Z6-C052-PT | 2d | 2027-03-13 | 2027-03-14 | RHD4CZ6C052PT1301 FF, RHD4CZ6C052PT1300 FF, RHD4CZ6C052PT1301 SS, RHD4CZ6C052PT1300 SS, RHD4PRSHLDOSPT1200, RHD4PRSHLSTAGPT1200 | -160d | 0d | Unskilled Labor [16.34 h]; Plumber [16.34 h]; Gate valves dia 100 mm - PT [1.8 nr]; Gate valves dia 150 mm - PT [0.9 nr] | 3,418.2 | C052 | Z6 | CONS | PT | Installation | bef |
| RHD4CZ6C052PT3200 |  | Stem and Service box for Direct Buried Gate Valves - (RD-C-5 /2)-Z6-C052-PT | 2d | 2027-03-22 | 2027-03-23 | RHD4CZ6C052PT3100, RHD4CZ6C052PT1501, RHD4CZ6C052PT1500, RHD4PRSHLDOSPT1300, RHD4PRSHLSTAGPT1300 | -158d | 31.02d | Unskilled Labor [16.34 h]; Plumber [16.34 h]; Gate valves dia 100 mm - PT [0.2 nr]; Gate valves dia 150 mm - PT [0.1 nr] | 379.8 | C052 | Z6 | CONS | PT | Stem and Service box | bef |
|  | 4965 | **RHD4-02-002-C052-(PT)-Wash out Valve Chambers** |  | 2027-03-06 | 2027-03-17 |  |  |  |  |  |  |  |  |  |  |  |
| RHD4CZ6C052PT2101 |  | Excavation and Bedding for Wash out Valve Chambers for Potable Water Network - (RD-C-5 /2)-Z6-C052-PT | 2d | 2027-03-06 | 2027-03-07 | RHD4ENSDZ6APPPT130, RHD4CZ6C052PT1100 | -165d | 0d | Skilled labor [5.45 h]; Unskilled Labor [5.45 h]; Equipment Opreator [1.09 h]; Excavator-Poclain [0.54 h]; Dump Truck [0.54 h]; Wash out chambers - PT [0.25 nr] | 4,686.25 | C052 | Z6 | CONS | PT | Excavation and Bedding | bef |
| RHD4CZ6C052PT2201 |  | PC works for Wash out Valve Chambers for Potable Water Network - (RD-C-5 /2)-Z6-C052-PT | 2d | 2027-03-08 | 2027-03-13 | RHD4CZ6C052PT2101 | -165d | 0d | Skilled labor [5.45 h]; Unskilled Labor [10.89 h]; Equipment Opreator [0.54 h]; Concrete Pump [0.54 h]; Wash out chambers - PT [0.1 nr] | 1,874.5 | C052 | Z6 | CONS | PT | PC Works | bef |
| RHD4CZ6C052PT2301 |  | Installation for Wash out Valve Chambers for Potable Water Network - (RD-C-5 /2)-Z6-C052-PT | 2d | 2027-03-14 | 2027-03-15 | RHD4CZ6C052PT2201, RHD4PRSHLDOSPT1100, RHD4PRSHLDOSPT1400, RHD4PRSHLSTAGPT1100, RHD4PRSHLSTAGPT1400 | -165d | 0d | Skilled labor [5.45 h]; Unskilled Labor [10.89 h]; Equipment Opreator [1.09 h]; Boom Truck [1.09 h]; Wash out chambers - PT [0.55 nr] | 10,309.75 | C052 | Z6 | CONS | PT | Installation | bef |
| RHD4CZ6C052PT2401 |  | Backfilling works for Wash out Valve Chambers for Potable Water Network - (RD-C-5 /2)-Z6-C052-PT | 2d | 2027-03-16 | 2027-03-17 | RHD4CZ6C052PT2301 | -165d | 0d | Skilled labor [5.45 h]; Unskilled Labor [10.89 h]; Equipment Opreator [1.09 h]; Water Truck [0.54 h]; Dump Truck [0.54 h]; Wash out chambers - PT [0.1 nr] | 1,874.5 | C052 | Z6 | CONS | PT | Backfilling Works | bef |
|  | 4966 | **RHD4-02-002-C052-(PT)-Wash out Valves** |  | 2027-03-16 | 2027-03-20 |  |  |  |  |  |  |  |  |  |  |  |
| RHD4CZ6C052PT3102 |  | Installation for Wash out Valves for Potable Water Network - (RD-C-5 /2)-Z6-C052-PT | 2d | 2027-03-16 | 2027-03-17 | RHD4CZ6C052PT2301, RHD4PRSHLDOSPT1200, RHD4PRSHLSTAGPT1200 | -165d | 0d | Unskilled Labor [5.45 h]; Plumber [5.45 h]; Wash out valve diameter 100 mm - PT [0.9 nr] | 3,373.2 | C052 | Z6 | CONS | PT | Installation | bef |
| RHD4CZ6C052PT3202 |  | Stem and Service box for Wash out Valves for Potable Water Network - (RD-C-5 /2)-Z6-C052-PT | 2d | 2027-03-18 | 2027-03-20 | RHD4CZ6C052PT3102, RHD4CZ6C052PT2401, RHD4PRSHLDOSPT1300, RHD4PRSHLSTAGPT1300 | -165d | 19d | Unskilled Labor [5.45 h]; Plumber [5.45 h]; Wash out valve diameter 100 mm - PT [0.1 nr] | 374.8 | C052 | Z6 | CONS | PT | Stem and Service box | bef |
|  | 4969 | **RHD4-02-002-C052-(PT)-Fire Hydrant** |  | 2027-03-22 | 2027-04-01 |  |  |  |  |  |  |  |  |  |  |  |
| RHD4CZ6C052PT4100 |  | Excavation and Bedding and Pipe Installation for Fire Hydrant - (RD-C-5 /2)-Z6-C052-PT | 2d | 2027-03-22 | 2027-03-23 | RHD4CZ6C052PT1501, RHD4CZ6C052PT1500, RHD4ENSDZ6APPPT130 | -160d | 0d | Skilled labor [16.34 h]; Unskilled Labor [16.34 h]; Plumber [16.34 h]; Equipment Opreator [8.17 h]; Excavator-Poclain [8.17 h]; 3-outlet fire hydrant (2 x 2.5 inch and 1 x 4.5 inch) in the form of a separate dry vacuum cylinder [0.3 nr] | 3,786 | C052 | Z6 | CONS | PT | Excavation | bef |
| RHD4CZ6C052PT4200 |  | Valve Installation for Fire Hydrant - (RD-C-5 /2)-Z6-C052-PT | 2d | 2027-03-24 | 2027-03-25 | RHD4CZ6C052PT4100 | -97d | 0d | Unskilled Labor [10.89 h]; Plumber [10.89 h]; 3-outlet fire hydrant (2 x 2.5 inch and 1 x 4.5 inch) in the form of a separate dry vacuum cylinder [0.6 nr] | 7,572 | C052 | Z6 | CONS | PT | Valve | bef |
| RHD4CZ6C052PT4300 |  | Stem for Fire Hydrant - (RD-C-5 /2)-Z6-C052-PT | 2d | 2027-03-27 | 2027-03-28 | RHD4CZ6C052PT4200 | -97d | 0d | Unskilled Labor [10.89 h]; Plumber [10.89 h]; 3-outlet fire hydrant (2 x 2.5 inch and 1 x 4.5 inch) in the form of a separate dry vacuum cylinder [0.9 nr] | 11,358 | C052 | Z6 | CONS | PT | Stem | bef |
| RHD4CZ6C052PT4400 |  | Fire Installation for Fire Hydrant - (RD-C-5 /2)-Z6-C052-PT | 2d | 2027-03-29 | 2027-03-30 | RHD4CZ6C052PT4300, RHD4PRSHLDOSPT1500, RHD4PRSHLSTAGPT1500 | -97d | 0d | Unskilled Labor [10.89 h]; Plumber [10.89 h]; Equipment Opreator [10.89 h]; Boom Truck [10.89 h]; 3-outlet fire hydrant (2 x 2.5 inch and 1 x 4.5 inch) in the form of a separate dry vacuum cylinder [1.05 nr] | 13,251 | C052 | Z6 | CONS | PT | Fire | bef |
| RHD4CZ6C052PT4500 |  | Protection Barriers for Fire Hydrant - (RD-C-5 /2)-Z6-C052-PT | 2d | 2027-03-31 | 2027-04-01 | RHD4CZ6C052PT4400 | -97d | 0.02d | Unskilled Labor [6.53 h]; Plumber [6.53 h]; 3-outlet fire hydrant (2 x 2.5 inch and 1 x 4.5 inch) in the form of a separate dry vacuum cylinder [0.15 nr] | 1,893 | C052 | Z6 | CONS | PT | Protection Barriers | bef |

| ID | WBS | Activity | Duration | Start | Finish | Predecessors | Complete | Remaining | Planned start | Planned finish | Total float | Free float | Resources | Cost | RDH4-01-001-Road and Block Names-1 | RDH4-01-001-Zones-1 | RDH4-01-001-Phases-1 | RDH4-01-001-Networks-1 | RDH4-01-001-Work Method-1 | RDH4-01-001-MENEM |
| --- | --- | --- | --- | --- | --- | --- | --- | --- | --- | --- | --- | --- | --- | --- | --- | --- | --- | --- | --- | --- |
|  | 4970 | **RHD4-02-002-C052-(PT)-Concrete Encasement** |  | 2027-03-13 | 2027-03-14 |  |  |  |  |  |  |  |  |  |  |  |  |  |  |  |
| RHD4CZ6C052PT5100 |  | Pipe Encasement for Potable Pipelines - (RD-C-5 /2)-Z6-C052-PT | 2d | 2027-03-13 | 2027-03-14 | RHD4CZ6C052PT1301 FF, RHD4CZ6C052PT1300 FF, RHD4CZ6C052PT1301 SS, RHD4CZ6C052PT1300 SS, RHD4CZ6C052PT1201, RHD4CZ6C052PT1200 |  |  |  |  | -160d | 0d | Skilled labor [4.68 h]; Unskilled Labor [4.68 h]; Equipment Opreator [5.23 h]; Concrete Mixer Truck [0.44 h]; Dump Truck [4.68 h]; Pipe Encasement - PT [2.17 m3] | 2,660.42 | C052 | Z6 | CONS | PT | Pipe Encasement | bef |
|  | 4958 | **RHD4-02-002-C052-(PT)-HDPE Pipes - 160 mm diameter** |  | 2026-08-04 | 2027-03-18 |  |  |  |  |  |  |  |  |  |  |  |  |  |  |  |
| RHD4CZ6C052PT1101 |  | Excavation works for HDPE Pipline 160 mm - (RD-C-5 /2)-Z6-C052-PT | 2d | 2026-08-04 A | 2027-03-02 | RHD4CZ6C052SW2500, RHD4ENSDZ6APPPT130, RHD4ENMSPT2000 | 8% | 2d | 2026-09-24 | 2026-09-26 | -165d | 0d | Skilled labor [17.42 h]; Unskilled Labor [17.42 h]; Equipment Opreator [20.91 h]; Excavator-Poclain [17.42 h]; Dump Truck [3.48 h]; HDPE (160mm Diameter) - PT - Depth: less than 1.5m [39.99 m] | 4,279.36 | C052 | Z6 | CONS | PT | Excavation | bef |
| RHD4CZ6C052PT1201 |  | Bedding works for HDPE Pipline 160 mm - (RD-C-5 /2)-Z6-C052-PT | 2d | 2026-08-06 A | 2027-03-04 | RHD4CZ6C052PT1101 | 8% | 2d | 2026-09-27 | 2026-09-28 | -160d | 0d | Skilled labor [14.48 h]; Unskilled Labor [29.08 h]; Equipment Opreator [29.08 h]; Excavator-Poclain [14.48 h]; Dump Truck [14.48 h]; HDPE (160mm Diameter) - PT - Depth: less than 1.5m [20 m] | 2,140 | C052 | Z6 | CONS | PT | Bedding | bef |
| RHD4CZ6C052PT1301 |  | Installing for HDPE Pipline 160 mm - (RD-C-5 /2)-Z6-C052-PT | 3d | 2026-08-08 A | 2027-03-08 | RHD4CZ6C052PT1201, RHD4PRSHLDOSPT1000, RHD4PRSHLSTAGPT1000 | 8% | 3d | 2026-09-29 | 2026-10-01 | -160d | 0d | Unskilled Labor [58.05 h]; Plumber [29.08 h]; Equipment Opreator [29.08 h]; Boom Truck [29.08 h]; HDPE (160mm Diameter) - PT - Depth: less than 1.5m [179.97 m] | 19,257.11 | C052 | Z6 | CONS | PT | Installation | bef |
| RHD4CZ6C052PT1401 |  | Primary Test for HDPE Pipline 160 mm - (RD-C-5 /2)-Z6-C052-PT | 2d | 2027-03-15 | 2027-03-16 | RHD4CZ6C052PT1301, RHD4CZ6C052PT5100, RHD4CZ6C052PT3100 |  |  |  |  | -160d | 0d | Unskilled Labor [8.71 h]; Plumber [8.71 h]; Equipment Opreator [8.71 h]; Water Truck [8.71 h]; HDPE (160mm Diameter) - PT - Depth: less than 1.5m [79.99 m] | 8,558.72 | C052 | Z6 | CONS | PT | Primary Test | bef |
| RHD4CZ6C052PT1501 |  | Backfilling and warning tape works for HDPE Pipline 160 mm - (RD-C-5 /2)-Z6-C052-PT | 2d | 2027-03-17 | 2027-03-18 | RHD4CZ6C052PT1401 |  |  |  |  | -160d | 0d | Skilled labor [21.78 h]; Unskilled Labor [43.56 h]; Equipment Opreator [43.56 h]; Excavator-Poclain [21.78 h]; Dump Truck [21.78 h]; HDPE (160mm Diameter) - PT - Depth: less than 1.5m [79.99 m] | 8,558.72 | C052 | Z6 | CONS | PT | Backfilling | bef |
|  | 4971 | **RHD4-02-002-Z6-C052-Irrigation Network - IRR** |  | 2026-08-04 | 2027-04-13 |  |  |  |  |  |  |  |  |  |  |  |  |  |  |  |
|  | 4972 | **RHD4-02-002-C052-(IRR)-HDPE Pipes - 160 mm diameter** |  | 2026-08-04 | 2027-04-11 |  |  |  |  |  |  |  |  |  |  |  |  |  |  |  |
| RHD4CZ6C052IRR1100 |  | Excavation works for HDPE Pipline 160 mm - (RD-C-5 /2)-Z6-C052-IRR | 4d | 2026-08-04 A | 2027-03-28 | RHD4CZ6C052PT1101, RHD4CZ6C052PT1100, RHD4ENSDZ6APPIRR140, RHD4ENMSRR2000, RHD4CZ6C052PT4100 | 8% | 4d | 2026-10-14 | 2026-10-18 | -160d | 0d | Skilled labor [36.7 h]; Unskilled Labor [36.7 h]; Equipment Opreator [44 h]; Excavator-Poclain [36.7 h]; Dump Truck [7.3 h]; HDPE (160mm Diameter) - TSE - Depth: less than 1.5m [28.54 m]; HDPE (160mm Diameter) - TSE - Depth: more than 1.51m [32.99 m] | 8,491.54 | C052 | Z6 | CONS | IRR | Excavation | bef |
| RHD4CZ6C052IRR1200 |  | Bedding works for HDPE Pipline 160 mm - (RD-C-5 /2)-Z6-C052-IRR | 3d | 2026-08-06 A | 2027-03-31 | RHD4CZ6C052IRR1100 | 10% | 3d | 2026-10-19 | 2026-10-21 | -155d | 0d | Skilled labor [31.47 h]; Unskilled Labor [63.06 h]; Equipment Opreator [63.06 h]; Excavator-Poclain [31.47 h]; Dump Truck [31.47 h]; HDPE (160mm Diameter) - TSE - Depth: less than 1.5m [14.27 m]; HDPE (160mm Diameter) - TSE - Depth: more than 1.51m [11 m] | 3,416.03 | C052 | Z6 | CONS | IRR | Bedding | bef |
| RHD4CZ6C052IRR1300 |  | Installing for HDPE Pipline 160 mm - (RD-C-5 /2)-Z6-C052-IRR | 4d | 2026-08-08 A | 2027-04-05 | RHD4CZ6C052IRR1200, RHD4PRSHLDOSIRR1000, RHD4PRSHLSTAGIRR1000 | 6% | 4d | 2026-10-22 | 2026-10-26 | -155d | 0d | Unskilled Labor [73.4 h]; Plumber [36.7 h]; Equipment Opreator [36.7 h]; Boom Truck [36.7 h]; HDPE (160mm Diameter) - TSE - Depth: less than 1.5m [128.42 m]; HDPE (160mm Diameter) - TSE - Depth: more than 1.51m [87.98 m] | 29,080.21 | C052 | Z6 | CONS | IRR | Installation | bef |
| RHD4CZ6C052IRR1400 |  | Primary Test for HDPE Pipline 160 mm - (RD-C-5 /2)-Z6-C052-IRR | 2d | 2027-04-06 | 2027-04-07 | RHD4CZ6C052IRR1300 |  |  |  |  | -155d | 0d | Unskilled Labor [14.16 h]; Plumber [14.16 h]; Equipment Opreator [14.16 h]; Water Truck [14.16 h]; HDPE (160mm Diameter) - TSE - Depth: less than 1.5m [57.07 m]; HDPE (160mm Diameter) - TSE - Depth: more than 1.51m [43.99 m] | 13,662.59 | C052 | Z6 | CONS | IRR | Primary Test | bef |
| RHD4CZ6C052IRR1500 |  | Backfilling and warning tape works for HDPE Pipline 160 mm - (RD-C-5 /2)-Z6-C052-IRR | 3d | 2027-04-08 | 2027-04-11 | RHD4CZ6C052IRR1400 |  |  |  |  | -155d | 0d | Skilled labor [31.47 h]; Unskilled Labor [63.06 h]; Equipment Opreator [63.06 h]; Excavator-Poclain [31.47 h]; Dump Truck [31.47 h]; HDPE (160mm Diameter) - TSE - Depth: less than 1.5m [57.07 m]; HDPE (160mm Diameter) - TSE - Depth: more than 1.51m [43.99 m] | 13,662.59 | C052 | Z6 | CONS | IRR | Backfilling | bef |
|  | 6685 | **RHD4-02-002-C052-(IRR)-Wash out Chamber** |  | 2027-03-24 | 2027-04-01 |  |  |  |  |  |  |  |  |  |  |  |  |  |  |  |
| RHD4CZ6C052IRR2101 |  | Excavation and Bedding for Wash out Chamber for Irrigation Network - (RD-C-5 /2)-Z6-C052-IRR | 2d | 2027-03-24 | 2027-03-25 | RHD4CZ6C052IRR1100 SS |  |  |  |  | -160d | 0d | Skilled labor [10.89 h]; Unskilled Labor [10.89 h]; Equipment Opreator [2.18 h]; Excavator-Poclain [1.09 h]; Dump Truck [1.09 h]; Wash out chambers - TSE [0.5 nr] | 9,372.5 | C052 | Z6 | CONS | IRR | Excavation and Bedding | bef |
| RHD4CZ6C052IRR2201 |  | PC works for Wash out Chamber for Irrigation Network - (RD-C-5 /2)-Z6-C052-IRR | 2d | 2027-03-27 | 2027-03-28 | RHD4CZ6C052IRR2101 |  |  |  |  | -160d | 0d | Skilled labor [10.89 h]; Unskilled Labor [21.78 h]; Equipment Opreator [1.09 h]; Concrete Pump [1.09 h]; Wash out chambers - TSE [0.2 nr] | 3,749 | C052 | Z6 | CONS | IRR | PC Works | bef |
| RHD4CZ6C052IRR2301 |  | Installation for Wash out Chamber for Irrigation Network - (RD-C-5 /2)-Z6-C052-IRR | 2d | 2027-03-29 | 2027-03-30 | RHD4CZ6C052IRR2201 |  |  |  |  | -160d | 0d | Skilled labor [10.89 h]; Unskilled Labor [21.78 h]; Equipment Opreator [2.18 h]; Boom Truck [2.18 h]; Wash out chambers - TSE [1.1 nr] | 20,619.5 | C052 | Z6 | CONS | IRR | Installation | bef |
| RHD4CZ6C052IRR2401 |  | Backfilling works for Wash out Chamber for Irrigation Network - (RD-C-5 /2)-Z6-C052-IRR | 2d | 2027-03-31 | 2027-04-01 | RHD4CZ6C052IRR2301 |  |  |  |  | -160d | 0d | Skilled labor [10.89 h]; Unskilled Labor [21.78 h]; Equipment Opreator [2.18 h]; Water Truck [1.09 h]; Dump Truck [1.09 h]; Wash out chambers - TSE [0.2 nr] | 3,749 | C052 | Z6 | CONS | IRR | Backfilling Works | bef |
|  | 6686 | **RHD4-02-002-C052-(IRR)-Wash out Valves** |  | 2027-03-31 | 2027-04-04 |  |  |  |  |  |  |  |  |  |  |  |  |  |  |  |
| RHD4CZ6C052IRR3102 |  | Installation for Wash out Valve for Irrigation Network - (RD-C-5 /2)-Z6-C052-IRR | 2d | 2027-03-31 | 2027-04-01 | RHD4CZ6C052IRR2301 |  |  |  |  | -160d | 0d | Unskilled Labor [10.89 h]; Plumber [10.89 h]; Wash out valve diameter 100 mm - TSE [1.8 nr] | 6,746.4 | C052 | Z6 | CONS | IRR | Installation | bef |
| RHD4CZ6C052IRR3202 |  | Stem and Service box for Wash out Valve for Irrigation Network - (RD-C-5 /2)-Z6-C052-IRR | 2d | 2027-04-03 | 2027-04-04 | RHD4CZ6C052IRR3102, RHD4CZ6C052IRR2401 |  |  |  |  | -160d | 0d | Unskilled Labor [10.89 h]; Plumber [10.89 h]; Wash out valve diameter 100 mm - TSE [0.2 nr] | 749.6 | C052 | Z6 | CONS | IRR | Stem and Service box | bef |
|  | 4980 | **RHD4-02-002-C052-(IRR)-Gate Valves (Direct Buried)** |  | 2027-04-01 | 2027-04-13 |  |  |  |  |  |  |  |  |  |  |  |  |  |  |  |
| RHD4CZ6C052IRR3100 |  | Installation for Direct Buried Gate Valves - (RD-C-5 /2)-Z6-C052-IRR | 2d | 2027-04-01 | 2027-04-03 | RHD4CZ6C052IRR1300 SS, RHD4PRSHLDOSIRR1100, RHD4PRSHLSTAGIRR1100 |  |  |  |  | -148d | 7d | Unskilled Labor [21.78 h]; Plumber [21.78 h]; Gate valves dia 100 mm - TSE [3.6 nr] | 5,688 | C052 | Z6 | CONS | IRR | Installation | bef |
| RHD4CZ6C052IRR3200 |  | Stem and Service box for Direct Buried Gate Valves - (RD-C-5 /2)-Z6-C052-IRR | 2d | 2027-04-12 | 2027-04-13 | RHD4CZ6C052IRR3100, RHD4CZ6C052IRR1500, RHD4PRSHLDOSIRR1300, RHD4PRSHLSTAGIRR1300 |  |  |  |  | -155d | 0d | Unskilled Labor [21.78 h]; Plumber [21.78 h]; Gate valves dia 100 mm - TSE [0.4 nr] | 632 | C052 | Z6 | CONS | IRR | Stem and Service box | bef |

| ID | WBS | Activity | Duration | Start | Finish | Predecessors | Complete | Remaining | Planned start | Planned finish | Total float | Free float | Resources | Cost | Actual cost | RDH4-01-001-Road and Block Names-1 | RDH4-01-001-Zones-1 | RDH4-01-001-Phases-1 | RDH4-01-001-Networks-1 | RDH4-01-001-Work Method-1 | RDH4-01-001-MENEM |
| --- | --- | --- | --- | --- | --- | --- | --- | --- | --- | --- | --- | --- | --- | --- | --- | --- | --- | --- | --- | --- | --- |
|  | 5005 | **RHD4-02-002-Z6-C052-Medium Voltage Network - MV** |  | 2026-08-04 | 2027-06-21 |  |  |  |  |  |  |  |  |  |  |  |  |  |  |  |  |
|  | 5006 | **RHD4-02-002-C052-(MV)-Medium Voltage cable trench** |  | 2027-05-06 | 2027-05-22 |  |  |  |  |  |  |  |  |  |  |  |  |  |  |  |  |
| RHD4CZ6C052MV1100 |  | Excavation for Medium Voltage Trench - (RD-C-5 /2)-Z6-C052-MV | 5d | 2027-05-06 | 2027-05-11 | RHD4ENSDZ6APPMV150, RHD4CZ6C052RD3100, RHD4CZ6C062MV3401 |  |  |  |  | -172d | 0d | Skilled labor [52.06 h]; Unskilled Labor [104.22 h]; Equipment Opreator [156.28 h]; Excavator-Poclain [52.06 h]; Dump Truck [104.22 h]; Excavation for Trench size 60cm wide and 80cm deep ( for 2 cables) [68.86 m3]; Excavation for Trench size 180cm wide and 80cm deep (for 6 cables) [148.73 m3]; Excavation for Trench size 240cm wide and 80cm deep (for 9 cables) [117.28 m3] | 3,348.7 |  | C052 | Z6 | CONS | MV | Excavation | AFT |
| RHD4CZ6C052MV1200 |  | Trench Backfilling for Medium Voltage Network - (RD-C-5 /2)-Z6-C052-MV | 5d | 2027-05-12 | 2027-05-22 | RHD4CZ6C052MV1100 |  |  |  |  | -154d | 18d | Skilled labor [52.06 h]; Unskilled Labor [52.06 h]; Equipment Opreator [104.22 h]; Dump Truck [104.22 h]; Excavation for Trench size 60cm wide and 80cm deep ( for 2 cables) [29.51 m3]; Excavation for Trench size 180cm wide and 80cm deep (for 6 cables) [63.74 m3]; Excavation for Trench size 240cm wide and 80cm deep (for 9 cables) [50.26 m3] | 1,435.16 |  | C052 | Z6 | CONS | MV | Backfilling | AFT |
|  | 5007 | **RHD4-02-002-C052-(MV)-Medium Voltage duct banks** |  | 2026-08-04 | 2027-02-25 |  |  |  |  |  |  |  |  |  |  |  |  |  |  |  |  |
| RHD4CZ6C052MV2100 |  | Excavation of Duct Banks for Medium Voltage Network - (RD-C-5 /2)-Z6-C052-MV | 2d | 2026-08-04 A | 2027-02-17 | RHD4ENSDZ6APPMV150, RHD4CZ6C052SW3200 | 80% | 2d | 2026-09-08 | 2026-09-09 | -159d | 0d | Unskilled Labor [13.94 h]; Equipment Opreator [28 h]; Excavator-Poclain [13.94 h]; Dump Truck [13.94 h]; Duct bank for MV cables UPVC (8xø150mm) [1.93 m] | 1,538.21 |  | C052 | Z6 | CONS | MV | Excavation | bef |
| RHD4CZ6C052MV2200 |  | Installation of Duct Banks for Medium Voltage Network - (RD-C-5 /2)-Z6-C052-MV | 2d | 2026-08-06 A | 2027-02-20 | RHD4CZ6C052MV2100, RHD4PRSHLDOSMV1000, RHD4PRSHLSTAGMV1000 SS | 80% | 2d | 2026-09-10 | 2026-09-12 | -159d | 0d | Unskilled Labor [21.02 h]; Equipment Opreator [41.93 h]; Excavator-Poclain [21.02 h]; Dump Truck [21.02 h]; Duct bank for MV cables UPVC (8xø150mm) [1.93 m] | 1,538.21 |  | C052 | Z6 | CONS | MV | Installing | bef |
| RHD4CZ6C052MV2300 |  | Pouring of Duct Banks for Medium Voltage Network - (RD-C-5 /2)-Z6-C052-MV | 2d | 2026-08-09 A | 2027-02-23 | RHD4CZ6C052MV2200 | 80% | 2d | 2026-09-13 | 2026-09-14 | -159d | 0d | Unskilled Labor [13.94 h]; Equipment Opreator [28 h]; Excavator-Poclain [13.94 h]; Dump Truck [13.94 h]; Duct bank for MV cables UPVC (8xø150mm) [12.52 m] | 9,978.44 |  | C052 | Z6 | CONS | MV | Pouring | bef |
| RHD4CZ6C052MV2400 |  | Backfilling of Duct Banks for Medium Voltage Network - (RD-C-5 /2)-Z6-C052-MV | 2d | 2026-08-11 A | 2027-02-25 | RHD4CZ6C052MV2300 | 80% | 2d | 2026-09-15 | 2026-09-16 | -159d | 17d | Unskilled Labor [10.45 h]; Equipment Opreator [21.02 h]; Excavator-Poclain [10.45 h]; Dump Truck [10.45 h]; Duct bank for MV cables UPVC (8xø150mm) [2.89 m] | 2,303.33 |  | C052 | Z6 | CONS | MV | Backfilling | bef |
|  | 5008 | **RHD4-02-002-C052-(MV)-Medium Voltage cables 3Cx 500 mm²** |  | 2027-05-12 | 2027-06-21 |  |  |  |  |  |  |  |  |  |  |  |  |  |  |  |  |
| RHD4CZ6C052MV3100 |  | Installation of Medium Voltage Cables 3Cx 500 mm² - (RD-C-5 /2)-Z6-C052-MV | 20d | 2027-05-12 | 2027-06-08 | RHD4CZ6C052MV1100, RHD4PRSHLDOSMV1100, RHD4ENMSMV2000, RHD4ENMSMV2010, RHD4PRSHLSTAGMV1100 |  |  |  |  | -172d | 0d | Skilled labor [217.81 h]; Unskilled Labor [871.12 h]; Electrician [435.5 h]; Equipment Opreator [653.31 h]; Boom Truck [217.81 h]; Cable Laying Machine [435.5 h]; Cable 13.8 kV 3Cx 500 mm² Al/XLPE,/LLDPE / Unarmored [2699.56 m] | 429,230.17 |  | C052 | Z6 | CONS | MV | Installation | AFT |
| RHD4CZ6C052MV3200 |  | Joints Installation of Medium Voltage Cables 3Cx 500 mm² - (RD-C-5 /2)-Z6-C052-MV | 3d | 2027-06-09 | 2027-06-12 | RHD4CZ6C052MV3100, RHD4PRSHLDOSMV1300, RHD4PRSHLSTAGMV1300 |  |  |  |  | -172d | 0d | Skilled labor [32.67 h]; Unskilled Labor [130.68 h]; Electrician [65.34 h]; Equipment Opreator [32.67 h]; Boom Truck [32.67 h]; Straight joints cables for 13.8 kv 3Cx 500 mm², Al /XLPE/LLDPE [6 Unit] | 19,488 |  | C052 | Z6 | CONS | MV | Joints Installation | AFT |
| RHD4CZ6C052MV3300 |  | Testing of Medium Voltage Cables 3Cx 500 mm² - (RD-C-5 /2)-Z6-C052-MV | 6d | 2027-06-13 | 2027-06-19 | RHD4CZ6C052MV3200, RHD4CZ6C052MV1200, RHD4CZ6C052MV4200 |  |  |  |  | -172d | 0d | Skilled labor [65.34 h]; Unskilled Labor [261.37 h]; Electrician [130.68 h]; Cable 13.8 kV 3Cx 500 mm² Al/XLPE,/LLDPE / Unarmored [299.95 m] | 47,692.24 |  | C052 | Z6 | CONS | MV | Testing | AFT |
| RHD4CZ6C052MV3400 |  | Termination of Medium Voltage Cables 3Cx 500 mm² - (RD-C-5 /2)-Z6-C052-MV | 2d | 2027-06-20 | 2027-06-21 | RHD4CZ6C052MV3300 |  |  |  |  | -172d | 0d | Unskilled Labor [1.74 h]; Electrician [1.74 h]; Cable Termination for 13.8 kv 3Cx 500 mm², Al /XLPE/LLDPE [8 Unit] | 21,080 |  | C052 | Z6 | CONS | MV | Termination | AFT |
|  | 5009 | **RHD4-02-002-C052-(MV)-Medium Voltage cables 3Cx 50 mm²** |  | 2027-06-20 | 2027-06-21 |  |  |  |  |  |  |  |  |  |  |  |  |  |  |  |  |
| RHD4CZ6C052MV3401 |  | Termination of Medium Voltage Cables 3Cx 50 mm² - (RD-C-5 /2)-Z6-C052-MV | 2d | 2027-06-20 | 2027-06-21 | RHD4CZ6C052MV3400 SS, RHD4CZ6C052MV3300 |  |  |  |  | -172d | 0d | Unskilled Labor [29.08 h]; Electrician [14.48 h]; Cable Termination for 13.8 kv 3Cx 500 mm², Al /XLPE/LLDPE [2 Unit] | 5,270 |  | C052 | Z6 | CONS | MV | Termination | AFT |
|  | 5010 | **RHD4-02-002-C052-(MV)-Normally open Point (Outdoor Type)** |  | 2027-06-07 | 2027-06-10 |  |  |  |  |  |  |  |  |  |  |  |  |  |  |  |  |
| RHD4CZ6C052MV4100 |  | Installation for Normally open Point - (RD-C-5 /2)-Z6-C052-MV | 2d | 2027-06-07 | 2027-06-08 | RHD4CZ6C052MV3100 FF, RHD4PRSHLDOSMV1400, RHD4PRSHLSTAGMV1400 |  |  |  |  | -171d | 0d | Unskilled Labor [0.11 h]; Equipment Opreator [0.22 h]; Excavator-Poclain [0.11 h]; Dump Truck [0.11 h]; Normally Open Point 13.8 KV Outdoor type [0.9 Unit] | 77,219.1 |  | C052 | Z6 | CONS | MV | Installation | AFT |
| RHD4CZ6C052MV4200 |  | Termination for Normally open Point - (RD-C-5 /2)-Z6-C052-MV | 2d | 2027-06-09 | 2027-06-10 | RHD4CZ6C052MV4100 |  |  |  |  | -171d | 1d | Unskilled Labor [3.59 h]; Equipment Opreator [7.3 h]; Excavator-Poclain [3.59 h]; Dump Truck [3.59 h]; Normally Open Point 13.8 KV Outdoor type [0.1 Unit] | 8,579.9 |  | C052 | Z6 | CONS | MV | Termination | AFT |
|  | 5012 | **RHD4-02-002-Z6-C052-Low Voltage Network - LV** |  | 2026-08-04 | 2027-04-19 |  |  |  |  |  |  |  |  |  |  |  |  |  |  |  |  |
|  | 5013 | **RHD4-02-002-C052-(LV)-Low Voltage duct banks** |  | 2026-08-04 | 2026-08-12 |  |  |  |  |  |  |  |  |  |  |  |  |  |  |  |  |
| RHD4CZ6C052LV2100 |  | Excavation of Duct Banks for Low Voltage Network - (RD-C-5 /2)-Z6-C052-LV | 2d | 2026-08-04 A | 2026-08-05 A | RHD4CZ6C052RW3000, RHD4ENSDZ6APPLV160, RHD4CZ6C052MV2100 | 100% |  | 2026-09-10 | 2026-09-12 |  |  | Skilled labor [13.94 h]; Unskilled Labor [13.94 h]; Equipment Opreator [27.88 h]; Excavator-Poclain [13.94 h]; Dump Truck [13.94 h]; Duct bank for LV cables UPVC (2xø110mm) [1.92 m] | 387.17 | 387.17 | C052 | Z6 | CONS | LV | Excavation | bef |
| RHD4CZ6C052LV2200 |  | Installation of Duct Banks for Low Voltage Network - (RD-C-5 /2)-Z6-C052-LV | 2d | 2026-08-06 A | 2026-08-08 A | RHD4CZ6C052LV2100 | 100% |  | 2026-09-13 | 2026-09-14 |  |  | Carpenter [2.07 h]; Skilled labor [20.91 h]; Unskilled Labor [20.91 h]; Steel Fixer [2.07 h]; Duct bank for LV cables UPVC (2xø110mm) [1.92 m] | 387.17 | 387.17 | C052 | Z6 | CONS | LV | Installing | bef |
| RHD4CZ6C052LV2300 |  | Pouring of Duct Banks for Low Voltage Network - (RD-C-5 /2)-Z6-C052-LV | 2d | 2026-08-09 A | 2026-08-10 A | RHD4CZ6C052LV2200 | 100% |  | 2026-09-15 | 2026-09-16 |  |  | Skilled labor [13.94 h]; Unskilled Labor [13.94 h]; Equipment Opreator [5.55 h]; Concrete Mixer Truck [2.83 h]; Concrete Pump [2.83 h]; Duct bank for LV cables UPVC (2xø110mm) [12.46 m] | 2,516.63 | 2,516.63 | C052 | Z6 | CONS | LV | Pouring | bef |
| RHD4CZ6C052LV2400 |  | Backfilling of Duct Banks for Low Voltage Network - (RD-C-5 /2)-Z6-C052-LV | 2d | 2026-08-11 A | 2026-08-12 A | RHD4CZ6C052LV2300 | 100% |  | 2026-09-17 | 2026-09-19 |  |  | Skilled labor [10.45 h]; Unskilled Labor [10.45 h]; Equipment Opreator [4.14 h]; Excavator-Poclain [4.14 h]; Duct bank for LV cables UPVC (2xø110mm) [2.88 m] | 580.76 | 580.76 | C052 | Z6 | CONS | LV | Backfilling | bef |

| ID | WBS | Activity | Duration | Start | Finish | Predecessors | Complete | Planned start | Planned finish | Total float | Free float | Resources | Cost | Actual cost | RDH4-01-001-Road and Block Names-1 | RDH4-01-001-Zones-1 | RDH4-01-001-Phases-1 | RDH4-01-001-Networks-1 | RDH4-01-001-Work Method-1 | RDH4-01-001-MENEM |
| --- | --- | --- | --- | --- | --- | --- | --- | --- | --- | --- | --- | --- | --- | --- | --- | --- | --- | --- | --- | --- |
|  | 5014 | **RHD4-02-002-C052-(LV)-Low Voltage Drawpit** |  | 2027-04-05 | 2027-04-08 |  |  |  |  |  |  |  |  |  |  |  |  |  |  |  |
| RHD4CZ6C052LV5100 |  | Excavation of Drawpit size 900x900x1000mm for Low Voltage Network - (RD-C-5 /2)-Z6-C052-LV | 2d | 2027-04-05 | 2027-04-06 | RHD4CZ6C052LV2300, RHD4ENSDZ6APPLV160, RHD4CZ6C052IRR3202 |  |  |  | -154d | 0d | Skilled labor [2.72 h]; Unskilled Labor [2.72 h]; Equipment Opreator [2.18 h]; Excavator-Poclain [1.09 h]; Dump Truck [1.09 h]; Drawpit with medium duty steel cover, size900x900x1000mm, [0.45 Unit] | 1,654.65 |  | C052 | Z6 | CONS | LV | Excavation | AFT |
| RHD4CZ6C052LV5200 |  | Installation of Drawpit size 900x900x1000mm for Low Voltage Network - (RD-C-5 /2)-Z6-C052-LV | 2d | 2027-04-07 | 2027-04-08 | RHD4CZ6C052LV5100, RHD4PRSHLDOSLV1400, RHD4PRSHLSTAGLV1400 |  |  |  | -154d | 0d | Skilled labor [2.72 h]; Unskilled Labor [2.72 h]; Equipment Opreator [1.09 h]; Boom Truck [1.09 h]; Drawpit with medium duty steel cover, size900x900x1000mm, [2.55 Unit] | 9,376.35 |  | C052 | Z6 | CONS | LV | Installation | AFT |
|  | 5015 | **RHD4-02-002-C052-(LV)-Low Voltage cables** |  | 2027-04-10 | 2027-04-19 |  |  |  |  |  |  |  |  |  |  |  |  |  |  |  |
| RHD4CZ6C052LV3100 |  | Excavation for Low Voltage Cables for Low Voltage Network - (RD-C-5 /2)-Z6-C052-LV | 3d | 2027-04-10 | 2027-04-12 | RHD4ENSDZ6APPLV160, RHD4CZ6C052LV5200 |  |  |  | -154d | 0d | Skilled labor [22.98 h]; Unskilled Labor [46.07 h]; Equipment Opreator [46.07 h]; Excavator-Poclain [22.98 h]; Boom Truck [22.98 h]; Cable, Copper 4x70mm2/ CU/XLPE/PVC [80.21 m]; Cable, Copper 4x50mm2/ CU/XLPE/PVC +1x25mm2 CU/PVC [25.51 m] | 16,693.3 |  | C052 | Z6 | CONS | LV | Excavation | AFT |
| RHD4CZ6C052LV3200 |  | Cable Laying of Low Voltage Cables for Low Voltage Network - (RD-C-5 /2)-Z6-C052-LV | 2d | 2027-04-13 | 2027-04-14 | RHD4CZ6C052LV3100, RHD4PRSHLDOSLV1100, RHD4ENMSLV2000, RHD4ENMSLV2010, RHD4PRSHLSTAGLV1100 |  |  |  | -147d | 0d | Skilled labor [19.2 h]; Unskilled Labor [76.8 h]; Electrician [38.33 h]; Equipment Opreator [57.6 h]; Boom Truck [19.2 h]; Cable Laying Machine [38.33 h]; Cable, Copper 4x70mm2/ CU/XLPE/PVC [240.62 m]; Cable, Copper 4x50mm2/ CU/XLPE/PVC +1x25mm2 CU/PVC [76.54 m] | 50,079.9 |  | C052 | Z6 | CONS | LV | Cable Laying | AFT |
| RHD4CZ6C052LV3300 |  | Warning tape and Backfill for Low Voltage Cables for Low Voltage Network - (RD-C-5 /2)-Z6-C052-LV | 2d | 2027-04-15 | 2027-04-17 | RHD4CZ6C052LV3200 |  |  |  | -147d | 0d | Skilled labor [19.2 h]; Unskilled Labor [76.8 h]; Electrician [38.33 h]; Equipment Opreator [19.2 h]; Boom Truck [19.2 h]; Cable, Copper 4x70mm2/ CU/XLPE/PVC [60.16 m]; Cable, Copper 4x50mm2/ CU/XLPE/PVC +1x25mm2 CU/PVC [19.14 m] | 12,519.98 |  | C052 | Z6 | CONS | LV | Warning tape and Backfill | AFT |
| RHD4CZ6C052LV3400 |  | Testing of Low Voltage Cables for Low Voltage Network - (RD-C-5 /2)-Z6-C052-LV | 2d | 2027-04-18 | 2027-04-19 | RHD4CZ6C052LV3300 |  |  |  | -147d | 8d | Skilled labor [11.54 h]; Unskilled Labor [46.07 h]; Electrician [22.98 h]; Equipment Opreator [11.54 h]; Boom Truck [11.54 h]; Cable, Copper 4x70mm2/ CU/XLPE/PVC [20.05 m]; Cable, Copper 4x50mm2/ CU/XLPE/PVC +1x25mm2 CU/PVC [6.38 m] | 4,173.33 |  | C052 | Z6 | CONS | LV | Testing | AFT |
|  | 5018 | **RHD4-02-002-Z6-C052-Street Lighting Network - SL** |  | 2026-08-04 | 2027-05-03 |  |  |  |  |  |  |  |  |  |  |  |  |  |  |  |
|  | 5019 | **RHD4-02-002-C052-(SL)-Street Lighting duct banks** |  | 2026-08-04 | 2026-08-12 |  |  |  |  |  |  |  |  |  |  |  |  |  |  |  |
| RHD4CZ6C052SL2100 |  | Excavation of Duct Banks for Street Lighting Network - (RD-C-5 /2)-Z6-C052-SL | 2d | 2026-08-04 A | 2026-08-05 A | RHD4CZ6C052LV2100, RHD4ENSDZ6APPSL170, RHD4CZ6C052IRR3200 | 100% | 2026-11-04 | 2026-11-05 |  |  | Skilled labor [6.86 h]; Unskilled Labor [6.86 h]; Equipment Opreator [13.83 h]; Excavator-Poclain [6.86 h]; Dump Truck [6.86 h]; Road Crossing Duct for Street Lighting cables UPVC (4x?110mm) [0.95 m] | 250.9 | 250.9 | C052 | Z6 | CONS | SL | Excavation | bef |
| RHD4CZ6C052SL2200 |  | Installation of Duct Banks for Street Lighting Network - (RD-C-5 /2)-Z6-C052-SL | 2d | 2026-08-06 A | 2026-08-08 A | RHD4CZ6C052SL2100 | 100% | 2026-11-07 | 2026-11-08 |  |  | Carpenter [1.09 h]; Skilled labor [10.35 h]; Unskilled Labor [10.35 h]; Steel Fixer [1.09 h]; Road Crossing Duct for Street Lighting cables UPVC (4x?110mm) [0.95 m] | 250.9 | 250.9 | C052 | Z6 | CONS | SL | Installing | bef |
| RHD4CZ6C052SL2300 |  | Pouring of Duct Banks for Street Lighting Network - (RD-C-5 /2)-Z6-C052-SL | 2d | 2026-08-09 A | 2026-08-10 A | RHD4CZ6C052SL2200 | 100% | 2026-11-09 | 2026-11-10 |  |  | Skilled labor [6.86 h]; Unskilled Labor [6.86 h]; Equipment Opreator [2.72 h]; Concrete Mixer Truck [1.42 h]; Concrete Pump [1.42 h]; Road Crossing Duct for Street Lighting cables UPVC (4x?110mm) [6.18 m] | 1,630.82 | 1,630.82 | C052 | Z6 | CONS | SL | Pouring | bef |
| RHD4CZ6C052SL2400 |  | Backfilling of Duct Banks for Street Lighting Network - (RD-C-5 /2)-Z6-C052-SL | 2d | 2026-08-11 A | 2026-08-12 A | RHD4CZ6C052SL2300, RHD4CZ6C052LV2400 | 100% | 2026-11-11 | 2026-11-12 |  |  | Skilled labor [5.23 h]; Unskilled Labor [5.23 h]; Equipment Opreator [2.07 h]; Excavator-Poclain [2.07 h]; Road Crossing Duct for Street Lighting cables UPVC (4x?110mm) [1.43 m] | 376.34 | 376.34 | C052 | Z6 | CONS | SL | Backfilling | bef |
|  | 5020 | **RHD4-02-002-C052-(SL)-Street Lighting Drawpit** |  | 2027-04-14 | 2027-04-18 |  |  |  |  |  |  |  |  |  |  |  |  |  |  |  |
| RHD4CZ6C052SL5100 |  | Excavation of Drawpit size 600x600x900mm for Street Lighting Network - (RD-C-5 /2)-Z6-C052-SL | 2d | 2027-04-14 | 2027-04-15 | RHD4CZ6C052SL2300, RHD4ENSDZ6APPSL170, RHD4CZ6C052LV3100 |  |  |  | -155d | 0d | Skilled labor [2.72 h]; Unskilled Labor [2.72 h]; Equipment Opreator [2.18 h]; Excavator-Poclain [1.09 h]; Dump Truck [1.09 h]; Drawpit with medium duty steel cover, size600x600x900mm, [0.45 Unit] | 1,102.95 |  | C052 | Z6 | CONS | SL | Excavation | AFT |
| RHD4CZ6C052SL5200 |  | Installation of Drawpit size 600x600x900mm for Street Lighting Network - (RD-C-5 /2)-Z6-C052-SL | 2d | 2027-04-17 | 2027-04-18 | RHD4CZ6C052SL5100, RHD4PRSHLDOSSL1400, RHD4PRSHLSTAGSL1400 |  |  |  | -155d | 0d | Skilled labor [2.72 h]; Unskilled Labor [2.72 h]; Equipment Opreator [1.09 h]; Boom Truck [1.09 h]; Drawpit with medium duty steel cover, size600x600x900mm, [2.55 Unit] | 6,250.05 |  | C052 | Z6 | CONS | SL | Installation | AFT |
|  | 5021 | **RHD4-02-002-C052-(SL)-Street Lighting cables** |  | 2027-04-19 | 2027-04-28 |  |  |  |  |  |  |  |  |  |  |  |  |  |  |  |
| RHD4CZ6C052SL3100 |  | Excavation for Street Lighting Cables for Street Lighting Network - (RD-C-5 /2)-Z6-C052-SL | 3d | 2027-04-19 | 2027-04-21 | RHD4ENSDZ6APPSL170, RHD4CZ6C052SL5200 |  |  |  | -155d | 0d | Skilled labor [23.74 h]; Unskilled Labor [47.37 h]; Equipment Opreator [47.37 h]; Excavator-Poclain [23.74 h]; Boom Truck [23.74 h]; Cable, Copper 4x10mm2/ CU/XLPE/SWA/PVC + 1x10mm2 CU/PVC [108.79 m] | 5,330.83 |  | C052 | Z6 | CONS | SL | Excavation | AFT |
| RHD4CZ6C052SL3200 |  | Cable Laying of Street Lighting Cables for Street Lighting Network - (RD-C-5 /2)-Z6-C052-SL | 2d | 2027-04-22 | 2027-04-24 | RHD4CZ6C052SL3100, RHD4PRSHLDOSSL1100, RHD4ENMSSL2000, RHD4ENMSSL2010, RHD4PRSHLSTAGSL1100 |  |  |  | -155d | 0d | Skilled labor [19.71 h]; Unskilled Labor [78.96 h]; Electrician [39.53 h]; Equipment Opreator [59.24 h]; Boom Truck [19.71 h]; Cable Laying Machine [39.53 h]; Cable, Copper 4x10mm2/ CU/XLPE/SWA/PVC + 1x10mm2 CU/PVC [326.38 m] | 15,992.5 |  | C052 | Z6 | CONS | SL | Cable Laying | AFT |
| RHD4CZ6C052SL3300 |  | Warning tape and Backfill for Street Lighting Cables for Street Lighting Network - (RD-C-5 /2)-Z6-C052-SL | 2d | 2027-04-25 | 2027-04-26 | RHD4CZ6C052SL3200 |  |  |  | -155d | 0d | Skilled labor [19.71 h]; Unskilled Labor [78.96 h]; Electrician [39.53 h]; Equipment Opreator [19.71 h]; Boom Truck [19.71 h]; Cable, Copper 4x10mm2/ CU/XLPE/SWA/PVC + 1x10mm2 CU/PVC [81.59 m] | 3,998.13 |  | C052 | Z6 | CONS | SL | Warning tape and Backfill | AFT |
| RHD4CZ6C052SL3400 |  | Testing of Street Lighting Cables for Street Lighting Network - (RD-C-5 /2)-Z6-C052-SL | 2d | 2027-04-27 | 2027-04-28 | RHD4CZ6C052SL3300 |  |  |  | -155d | 0d | Skilled labor [11.87 h]; Unskilled Labor [47.37 h]; Electrician [23.74 h]; Equipment Opreator [11.87 h]; Boom Truck [11.87 h]; Cable, Copper 4x10mm2/ CU/XLPE/SWA/PVC + 1x10mm2 CU/PVC [27.2 m] | 1,332.8 |  | C052 | Z6 | CONS | SL | Testing | AFT |
|  | 5022 | **RHD4-02-002-C052-(SL)-Street Lighting Poles** |  | 2027-04-17 | 2027-05-03 |  |  |  |  |  |  |  |  |  |  |  |  |  |  |  |
| RHD4CZ6C052SL1100 |  | Excavation for RC Base for Lighting Poles for Street Lighting Network - (RD-C-5 /2)-Z6-C052-SL | 2d | 2027-04-17 | 2027-04-18 | RHD4CZ6C052SL2400, RHD4ENSDZ6APPSL170, RHD4CZ6C052SL5100 |  |  |  | -150d | 0d | Skilled labor [7.95 h]; Unskilled Labor [7.95 h]; Equipment Opreator [16 h]; Excavator-Poclain [7.95 h]; Dump Truck [7.95 h]; Lighting polesdouble arms, height of ( 12 ) meters [1.1 Unit] | 5,029.2 |  | C052 | Z6 | CONS | SL | Excavation | AFT |
| RHD4CZ6C052SL1200 |  | Installation for RC Base for Lighting Poles for Street Lighting Network - (RD-C-5 /2)-Z6-C052-SL | 2d | 2027-04-19 | 2027-04-20 | RHD4CZ6C052SL1100 |  |  |  | -150d | 0d | Skilled labor [7.95 h]; Unskilled Labor [7.95 h]; Equipment Opreator [16 h]; Excavator-Poclain [7.95 h]; Dump Truck [7.95 h]; Lighting polesdouble arms, height of ( 12 ) meters [2.75 Unit] | 12,573 |  | C052 | Z6 | CONS | SL | RC Base | AFT |
| RHD4CZ6C052SL1300 |  | Backfill for RC Base for Lighting Poles for Street Lighting Network - (RD-C-5 /2)-Z6-C052-SL | 2d | 2027-04-21 | 2027-04-22 | RHD4CZ6C052SL1200 |  |  |  | -150d | 5d | Skilled labor [7.95 h]; Unskilled Labor [7.95 h]; Equipment Opreator [16 h]; Excavator-Poclain [7.95 h]; Dump Truck [7.95 h]; Lighting polesdouble arms, height of ( 12 ) meters [0.55 Unit] | 2,514.6 |  | C052 | Z6 | CONS | SL | Backfill | AFT |
| RHD4CZ6C052SL1400 |  | Installation for Lighting Poles for Street Lighting Network - (RD-C-5 /2)-Z6-C052-SL | 2d | 2027-04-29 | 2027-05-01 | RHD4CZ6C052SL1300, RHD4CZ6C052SL3400, RHD4PRSHLDOSSL1200, RHD4ENMSSL2000, RHD4ENMSSL2010, RHD4PRSHLSTAGSL1200, RHD4CZ6C052LV3400, RHD4CZ6C052LV5200 FF |  |  |  | -155d | 0d | Skilled labor [12 h]; Unskilled Labor [12 h]; Electrician [12 h]; Equipment Opreator [12 h]; Boom Truck [12 h]; Lighting polesdouble arms, height of ( 12 ) meters [6.6 Unit] | 30,175.2 |  | C052 | Z6 | CONS | SL | Poles Installation | AFT |
| RHD4CZ6C052SL1500 |  | Luminaire Installation for Lighting Poles for Street Lighting Network - (RD-C-5 /2)-Z6-C052-SL | 2d | 2027-05-02 | 2027-05-03 | RHD4CZ6C052SL1400, RHD4PRSHLDOSSL1300, RHD4PRSHLSTAGSL1300 |  |  |  | -95d | 0d | Unskilled Labor [31.91 h]; Electrician [16 h]; Equipment Opreator [6.4 h]; Boom Truck [6.4 h]; Street Lighting( LED) Luminaire of Output ?18553 lumen [22 Unit] | 14,014 |  | C052 | Z6 | CONS | SL | Luminaire Installation | AFT |

| ID | WBS | Activity | Duration | Start | Finish | Predecessors | Complete | Remaining | Planned start | Planned finish | Total float | Free float | Resources | Cost | Actual cost | RDH4-01-001-Road and Block Names-1 | RDH4-01-001-Zones-1 | RDH4-01-001-Phases-1 | RDH4-01-001-Networks-1 | RDH4-01-001-Work Method-1 | RDH4-01-001-MENEM |
| --- | --- | --- | --- | --- | --- | --- | --- | --- | --- | --- | --- | --- | --- | --- | --- | --- | --- | --- | --- | --- | --- |
|  | 5023 | **RHD4-02-002-C052-(SL)-Street Lighting Feeder Pillars** |  |  |  |  |  |  |  |  |  |  |  |  |  |  |  |  |  |  |  |
|  | 5024 | **RHD4-02-002-C052-(SL)-Street Lighting Earthing System** |  | 2027-05-02 | 2027-05-03 |  |  |  |  |  |  |  |  |  |  |  |  |  |  |  |  |
| RHD4CZ6C052SL6100 |  | Installation of Earthing for Lighting Poles and Fedder Pillers for Street Lighting Network - (RD-C-5 /2)-Z6-C052-SL | 2d | 2027-05-02 | 2027-05-03 | RHD4ENMSER2000, RHD4ENMSER2010, RHD4CZ6C052SL1400 |  |  |  |  | -155d | 0d | Skilled labor [0.8 h]; Unskilled Labor [0.8 h]; Equipment Opreator [1.42 h]; Excavator-Poclain [0.8 h]; Dump Truck [0.8 h]; Street Lighting Feeder pillars - ER [1 Unit] | 1,128 |  | C052 | Z6 | CONS | SL | Installation | AFT |
|  | 5030 | **RHD4-02-002-Z6-C052-Telecommunications Network - TC** |  | 2026-08-04 | 2027-05-31 |  |  |  |  |  |  |  |  |  |  |  |  |  |  |  |  |
|  | 5031 | **RHD4-02-002-C052-(TC)-Telecommunications Ducts** |  | 2027-05-04 | 2027-05-31 |  |  |  |  |  |  |  |  |  |  |  |  |  |  |  |  |
| RHD4CZ6C052TC2100 |  | Excavation of HDPE Ducts for Telecom Network - (RD-C-5 /2)-Z6-C052-TC | 6d | 2027-05-04 | 2027-05-10 | RHD4ENSDZ6APPTC190, RHD4CZ6C052SL1500 |  |  |  |  | -95d | 0d | Skilled labor [56.09 h]; Unskilled Labor [56.09 h]; Equipment Opreator [112.28 h]; Excavator-Poclain [56.09 h]; Dump Truck [56.09 h]; (6*50mm) HDPE ducts -TC [87.78 m]; (6*50mm+2*32mm) HDPE ducts -TC [35.54 m]; (6*50mm+4*32mm) HDPE ducts -TC [18.36 m]; (2*32mm) HDPE ducts -TC [12.92 m] | 14,222.62 |  | C052 | Z6 | CONS | TC | Excavation | AFT |
| RHD4CZ6C052TC2200 |  | Installation of HDPE Ducts for Telecom Network - (RD-C-5 /2)-Z6-C052-TC | 8d | 2027-05-11 | 2027-05-24 | RHD4CZ6C052TC2100, RHD4PRSHLDOSTC1000, RHD4PRSHLSTAGTC1000 |  |  |  |  | -95d | 0d | Carpenter [8.39 h]; Skilled labor [84.18 h]; Unskilled Labor [84.18 h]; Steel Fixer [8.39 h]; (6*50mm) HDPE ducts -TC [285.29 m]; (6*50mm+2*32mm) HDPE ducts -TC [115.5 m]; (6*50mm+4*32mm) HDPE ducts -TC [59.67 m]; (2*32mm) HDPE ducts -TC [41.99 m] | 46,223.51 |  | C052 | Z6 | CONS | TC | Installing | AFT |
| RHD4CZ6C052TC2400 |  | Backfilling of HDPE Ducts for Telecom Network - (RD-C-5 /2)-Z6-C052-TC | 6d | 2027-05-25 | 2027-05-31 | RHD4CZ6C052TC2200, RHD4CZ6C052TC5200 |  |  |  |  | -95d | 0d | Skilled labor [56.09 h]; Unskilled Labor [56.09 h]; Equipment Opreator [22.4 h]; Excavator-Poclain [22.4 h]; (6*50mm) HDPE ducts -TC [65.83 m]; (6*50mm+2*32mm) HDPE ducts -TC [26.66 m]; (6*50mm+4*32mm) HDPE ducts -TC [13.77 m]; (2*32mm) HDPE ducts -TC [9.69 m] | 10,666.97 |  | C052 | Z6 | CONS | TC | Backfilling | AFT |
|  | 5032 | **RHD4-02-002-C052-(TC)-Telecommunications Manholes** |  | 2027-05-11 | 2027-05-24 |  |  |  |  |  |  |  |  |  |  |  |  |  |  |  |  |
| RHD4CZ6C052TC5100 |  | Excavation for Manholes for Telecom Network - (RD-C-5 /2)-Z6-C052-TC | 4d | 2027-05-11 | 2027-05-19 | RHD4CZ6C052TC2100, RHD4ENSDZ6APPTC190 |  |  |  |  | -95d | 0d | Skilled labor [16.34 h]; Unskilled Labor [16.34 h]; Equipment Opreator [13.07 h]; Excavator-Poclain [6.53 h]; Dump Truck [6.53 h]; Manhole Type 1 - TC [0.3 nr]; Manhole Type 2 - TC [0.75 nr] | 7,078.05 |  | C052 | Z6 | CONS | TC | Excavation | AFT |
| RHD4CZ6C052TC5200 |  | Installation of Manholes for Telecom Network - (RD-C-5 /2)-Z6-C052-TC | 4d | 2027-05-20 | 2027-05-24 | RHD4CZ6C052TC5100, RHD4CZ6C052TC2200 SS, RHD4PRSHLDOSTC1200, RHD4PRSHLSTAGTC1200 |  |  |  |  | -95d | 0d | Skilled labor [16.34 h]; Unskilled Labor [16.34 h]; Equipment Opreator [6.53 h]; Boom Truck [6.53 h]; Manhole Type 1 - TC [1.7 nr]; Manhole Type 2 - TC [4.25 nr] | 40,108.95 |  | C052 | Z6 | CONS | TC | Installation | AFT |
|  | 5033 | **RHD4-02-002-C052-(TC)-Telecomminications Road Crossings** |  | 2026-08-04 | 2027-02-01 |  |  |  |  |  |  |  |  |  |  |  |  |  |  |  |  |
| RHD4CZ6C052TC3100 |  | Excavation for Road Crossings for Telecom Network - (RD-C-5 /2)-Z6-C052-TC | 2d | 2026-08-04 A | 2027-01-26 | RHD4ENSDZ6APPTC190, RHD4CZ6C052ST1103 | 50% | 1d | 2026-07-25 | 2026-07-26 | -157d | 0d | Skilled labor [18.73 h]; Unskilled Labor [18.73 h]; Equipment Opreator [37.46 h]; Excavator-Poclain [18.73 h]; Dump Truck [18.73 h]; Road crossing ducts, (6*50mm) HDPE -TC [3.44 m] | 130.72 | 65.36 | C052 | Z6 | CONS | TC | Excavation | bef |
| RHD4CZ6C052TC3200 |  | Installation of Road Crossings for Telecom Network - (RD-C-5 /2)-Z6-C052-TC | 3d | 2026-08-06 A | 2027-01-28 | RHD4CZ6C052TC3100, RHD4PRSHLDOSTC1100, RHD4PRSHLSTAGTC1100 | 50% | 2d | 2026-07-30 | 2026-08-02 | -152d | 0d | Carpenter [2.5 h]; Skilled labor [24.94 h]; Unskilled Labor [24.94 h]; Steel Fixer [2.5 h]; Road crossing ducts, (6*50mm) HDPE -TC [3.44 m] | 130.72 | 43.57 | C052 | Z6 | CONS | TC | Installing | bef |
| RHD4CZ6C052TC3300 |  | Pouring of Road Crossings for Telecom Network - (RD-C-5 /2)-Z6-C052-TC | 3d | 2026-08-09 A | 2027-01-31 | RHD4CZ6C052TC3200 | 50% | 2d | 2026-08-03 | 2026-08-05 | -152d | 0d | Skilled labor [24.94 h]; Unskilled Labor [24.94 h]; Equipment Opreator [10.02 h]; Concrete Mixer Truck [5.01 h]; Concrete Pump [5.01 h]; Road crossing ducts, (6*50mm) HDPE -TC [22.36 m] | 849.68 | 283.23 | C052 | Z6 | CONS | TC | Pouring | bef |
| RHD4CZ6C052TC3400 |  | Backfilling of Road Crossings for Telecom Network - (RD-C-5 /2)-Z6-C052-TC | 2d | 2026-08-11 A | 2027-02-01 | RHD4CZ6C052TC3300 | 50% | 1d | 2026-08-06 | 2026-08-08 | -152d | 18d | Skilled labor [18.73 h]; Unskilled Labor [18.73 h]; Equipment Opreator [7.51 h]; Excavator-Poclain [7.51 h]; Road crossing ducts, (6*50mm) HDPE -TC [5.16 m] | 196.08 | 98.04 | C052 | Z6 | CONS | TC | Backfilling | bef |
|  | 5034 | **RHD4-02-002-Z6-C052-Information and Communication Technologies - ICT** |  | 2026-08-04 | 2027-06-24 |  |  |  |  |  |  |  |  |  |  |  |  |  |  |  |  |
|  | 5035 | **RHD4-02-002-C052-(ICT)-Information and Communication Technologies Ducts** |  | 2027-06-01 | 2027-06-24 |  |  |  |  |  |  |  |  |  |  |  |  |  |  |  |  |
| RHD4CZ6C052ICT2100 |  | Excavation of HDPE Ducts for ICT Network - (RD-C-5 /2)-Z6-C052-ICT | 6d | 2027-06-01 | 2027-06-07 | RHD4ENSDZ6APPICT200, RHD4CZ6C052TC3100, RHD4CZ6C052TC2400 |  |  |  |  | -95d | 0d | Skilled labor [62.07 h]; Unskilled Labor [62.07 h]; Equipment Opreator [124.15 h]; Excavator-Poclain [62.07 h]; Dump Truck [62.07 h]; (2*50mm) HDPE ducts -ICT [86.6 m]; (2*50mm+2*32mm) HDPE ducts -ICT [44.3 m]; (2*50mm+4*32mm) HDPE ducts -ICT [24.9 m]; (2*32mm) HDPE ducts -ICT [15.16 m] | 9,137.24 |  | C052 | Z6 | CONS | ICT | Excavation | AFT |
| RHD4CZ6C052ICT2200 |  | Installation of HDPE Ducts for ICT Network - (RD-C-5 /2)-Z6-C052-ICT | 9d | 2027-06-08 | 2027-06-17 | RHD4CZ6C052ICT2100, RHD4PRSHLDOSICT1000, RHD4PRSHLSTAGICT1000 |  |  |  |  | -95d | 0d | Carpenter [9.26 h]; Skilled labor [93.11 h]; Unskilled Labor [93.11 h]; Steel Fixer [9.26 h]; (2*50mm) HDPE ducts -ICT [281.45 m]; (2*50mm+2*32mm) HDPE ducts -ICT [143.97 m]; (2*50mm+4*32mm) HDPE ducts -ICT [80.92 m]; (2*32mm) HDPE ducts -ICT [49.27 m] | 29,696.03 |  | C052 | Z6 | CONS | ICT | Installing | AFT |
| RHD4CZ6C052ICT2400 |  | Backfilling of HDPE Ducts for ICT Network - (RD-C-5 /2)-Z6-C052-ICT | 6d | 2027-06-19 | 2027-06-24 | RHD4CZ6C052ICT2200, RHD4CZ6C052ICT5200 |  |  |  |  | -95d | 0d | Skilled labor [62.07 h]; Unskilled Labor [62.07 h]; Equipment Opreator [24.8 h]; Excavator-Poclain [24.8 h]; (2*50mm) HDPE ducts -ICT [64.95 m]; (2*50mm+2*32mm) HDPE ducts -ICT [33.23 m]; (2*50mm+4*32mm) HDPE ducts -ICT [18.68 m]; (2*32mm) HDPE ducts -ICT [11.37 m] | 6,852.93 |  | C052 | Z6 | CONS | ICT | Backfilling | AFT |
|  | 5036 | **RHD4-02-002-C052-(ICT)-Information and Communication Technologies Manholes** |  | 2027-06-08 | 2027-06-14 |  |  |  |  |  |  |  |  |  |  |  |  |  |  |  |  |
| RHD4CZ6C052ICT5100 |  | Excavation for Manholes for ICT Network - (RD-C-5 /2)-Z6-C052-ICT | 3d | 2027-06-08 | 2027-06-10 | RHD4CZ6C052ICT2100, RHD4ENSDZ6APPICT200 |  |  |  |  | -92d | 0d | Skilled labor [12.31 h]; Unskilled Labor [12.31 h]; Equipment Opreator [9.8 h]; Excavator-Poclain [4.9 h]; Dump Truck [4.9 h]; Manhole Type 1 - ICT [0.15 nr]; Manhole Type 2 - ICT [0.6 nr] | 4,044.75 |  | C052 | Z6 | CONS | ICT | Excavation | AFT |
| RHD4CZ6C052ICT5200 |  | Installation of Manholes for ICT Network - (RD-C-5 /2)-Z6-C052-ICT | 3d | 2027-06-12 | 2027-06-14 | RHD4CZ6C052ICT5100, RHD4PRSHLDOSICT1200, RHD4PRSHLSTAGICT1200 |  |  |  |  | -92d | 3d | Skilled labor [12.31 h]; Unskilled Labor [12.31 h]; Equipment Opreator [4.9 h]; Boom Truck [4.9 h]; Manhole Type 1 - ICT [0.85 nr]; Manhole Type 2 - ICT [3.4 nr] | 22,920.25 |  | C052 | Z6 | CONS | ICT | Installation | AFT |

| ID | WBS | Activity | Duration | Start | Finish | Predecessors | Complete | Remaining | Planned start | Planned finish | Total float | Free float | Resources | Cost | Actual cost | RDH4-01-001-Road and Block Names-1 | RDH4-01-001-Zones-1 | RDH4-01-001-Phases-1 | RDH4-01-001-Networks-1 | RDH4-01-001-Work Method-1 | RDH4-01-001-MENEM |
| --- | --- | --- | --- | --- | --- | --- | --- | --- | --- | --- | --- | --- | --- | --- | --- | --- | --- | --- | --- | --- | --- |
|  | 5037 | **RHD4-02-002-C052-(ICT)-Information and Communication Technologies Road Crossings** |  | 2026-08-04 | 2027-02-23 |  |  |  |  |  |  |  |  |  |  |  |  |  |  |  |  |
| RHD4CZ6C052ICT3100 |  | Excavation for Road Crossings for ICT Network - (RD-C-5 /2)-Z6-C052-ICT | 2d | 2026-08-04 A | 2027-01-28 | RHD4ENSDZ6APPICT200, RHD4CZ6C052TC3100 | 53% | 2d | 2026-07-27 | 2026-07-28 | -157d | 13d | Skilled labor [17.75 h]; Unskilled Labor [17.75 h]; Equipment Opreator [35.5 h]; Excavator-Poclain [17.75 h]; Dump Truck [17.75 h]; Road crossing ducts, (2*50mm) HDPE -ICT [3.26 m] | 123.88 |  | C052 | Z6 | CONS | ICT | Excavation | bef |
| RHD4CZ6C052ICT3200 |  | Installation of Road Crossings for ICT Network - (RD-C-5 /2)-Z6-C052-ICT | 3d | 2026-08-06 A | 2027-02-16 | RHD4CZ6C052ICT3100, RHD4PRSHLDOSICT1100, RHD4PRSHLSTAGICT1100 | 53% | 3d | 2026-08-17 | 2026-08-19 | -170d | 0d | Carpenter [2.4 h]; Skilled labor [23.63 h]; Unskilled Labor [23.63 h]; Steel Fixer [2.4 h]; Road crossing ducts, (2*50mm) HDPE -ICT [3.26 m] | 123.88 |  | C052 | Z6 | CONS | ICT | Installing | bef |
| RHD4CZ6C052ICT3300 |  | Pouring of Road Crossings for ICT Network - (RD-C-5 /2)-Z6-C052-ICT | 3d | 2026-08-09 A | 2027-02-20 | RHD4CZ6C052ICT3200 | 53% | 3d | 2026-08-20 | 2026-08-23 | -170d | 0d | Skilled labor [23.63 h]; Unskilled Labor [23.63 h]; Equipment Opreator [9.47 h]; Concrete Mixer Truck [4.68 h]; Concrete Pump [4.68 h]; Road crossing ducts, (2*50mm) HDPE -ICT [21.19 m] | 805.22 |  | C052 | Z6 | CONS | ICT | Pouring | bef |
| RHD4CZ6C052ICT3400 |  | Backfilling of Road Crossings for ICT Network - (RD-C-5 /2)-Z6-C052-ICT | 2d | 2026-08-11 A | 2027-02-23 | RHD4CZ6C052ICT3300 | 53% | 2d | 2026-08-24 | 2026-08-25 | -170d | 0d | Skilled labor [17.75 h]; Unskilled Labor [17.75 h]; Equipment Opreator [7.08 h]; Excavator-Poclain [7.08 h]; Road crossing ducts, (2*50mm) HDPE -ICT [4.89 m] | 185.82 |  | C052 | Z6 | CONS | ICT | Backfilling | bef |
|  | 5025 | **RHD4-02-002-Z6-C052-Landscape Network - LS** |  |  |  |  |  |  |  |  |  |  |  |  |  |  |  |  |  |  |  |
|  | 5026 | **RHD4-02-002-C052-(LS)-Landscape Lighting cables** |  |  |  |  |  |  |  |  |  |  |  |  |  |  |  |  |  |  |  |
|  | 5027 | **RHD4-02-002-C052-(LS)-Landscape Feeder Pillars** |  |  |  |  |  |  |  |  |  |  |  |  |  |  |  |  |  |  |  |
|  | 5028 | **RHD4-02-002-C052-(LS)-Landscape Bollard Poles** |  |  |  |  |  |  |  |  |  |  |  |  |  |  |  |  |  |  |  |
|  | 5029 | **RHD4-02-002-C052-(LS)-Landscape Feeder Pillars Earthing** |  |  |  |  |  |  |  |  |  |  |  |  |  |  |  |  |  |  |  |
|  | 5038 | **RHD4-02-002-Z6-C052-Security Network - CCTV** |  |  |  |  |  |  |  |  |  |  |  |  |  |  |  |  |  |  |  |
|  | 5039 | **RHD4-02-002-C052-(CCTV)-Civil Works** |  |  |  |  |  |  |  |  |  |  |  |  |  |  |  |  |  |  |  |
|  | 5055 | **RHD4-02-002-Z6-A02** |  | 2026-04-22 | 2027-07-24 |  |  |  |  |  |  |  |  |  |  |  |  |  |  |  |  |
|  | 5234 | **RHD4-02-002-Z6-A02-Road Works - RD** |  | 2026-04-22 | 2027-07-24 |  |  |  |  |  |  |  |  |  |  |  |  |  |  |  |  |
|  | 5235 | **RHD4-02-002-A02-(RD)-Subgrade** |  | 2026-04-22 | 2026-05-20 |  |  |  |  |  |  |  |  |  |  |  |  |  |  |  |  |
| RHD4CZ6A02RD1100 |  | Supply, lay and compaction subgrade compacted thickness 300 mm for Roads - (RD-A-2)-Z6-A02-RD | 11d | 2026-04-22 A | 2026-05-20 A | RHD4CZ6A02RW1000, RHD4CZ6A02ST1501, RHD4CZ6A02ST3300 | 100% |  | 2026-08-10 | 2026-08-22 |  |  | Skilled labor [24.61 h]; Unskilled Labor [49.12 h]; Electrician [24.61 h]; Equipment Opreator [167.82 h]; Water Truck [8.06 h]; Roller compactor [12.31 h]; Grader [24.61 h]; Dump Truck [122.84 h]; Subgrade [1181.65 m3] | 22,451.35 | 22,451.35 | A02 | Z6 | CONS | RD | Subgrade | bef |
|  | 5236 | **RHD4-02-002-A02-(RD)-Aggregate Base Course** |  | 2027-01-28 | 2027-01-30 |  |  |  |  |  |  |  |  |  |  |  |  |  |  |  |  |
| RHD4CZ6A02RD2100 |  | Supply, lay and compaction Aggregate base course compacted thickness 300 mmfor Roads - (RD-A-2)-Z6-A02-RD | 2d | 2027-01-28 | 2027-01-30 | RHD4PRSHLDOSRD1000, RHD4PRSHLSTAGRD1000, RHD4CZ6A02RD1100 |  |  |  |  | -145d | 25d | Skilled labor [9.15 h]; Unskilled Labor [18.19 h]; Equipment Opreator [115.2 h]; Water Truck [5.99 h]; Roller compactor [18.19 h]; Grader [18.19 h]; Dump Truck [72.75 h]; Aggregate Base Courses [742.19 m3] | 42,304.83 |  | A02 | Z6 | CONS | RD | ABC | bef |
|  | 5237 | **RHD4-02-002-A02-(RD)-Bituminous base course Two Layers, including (MC1)&(RC2)** |  | 2027-03-02 | 2027-07-07 |  |  |  |  |  |  |  |  |  |  |  |  |  |  |  |  |
| RHD4CZ6A02RD3100 |  | Supply, lay and Asphaltic base course including Prime Coat (MC1) for 1st Layer - (RD-A-2)-Z6-A02-RD | 2d | 2027-03-02 | 2027-03-03 | RHD4CZ6A02RD2100, RHD4PRSHLDOSRD1100, RHD4ENMSASPH2000, RHD4ENMSASPH2010, RHD4PRSHLSTAGRD1100, RHD4CZ6C052RD3100 |  |  |  |  | -170d | 0d | Skilled labor [9.6 h]; Unskilled Labor [57.83 h]; Equipment Opreator [144.51 h]; Bobcat [9.6 h]; Roller compactor [9.6 h]; Asphalt Paver [9.6 h]; Rubber Compactor [19.28 h]; MC1/RC2 Sprinkler [9.6 h]; Dump Truck [86.69 h]; Bituminous base course (Grading I - Class A), including Prime coat (MC1) & tack coate (RC2) [352.5 m3] | 168,495 |  | A02 | Z6 | CONS | RD | 150 mm | AFT |
| RHD4CZ6A02RD3200 |  | Supply, lay and Asphaltic base course including Tack Coat (RC2) for 2nd Layer - (RD-A-2)-Z6-A02-RD | 2d | 2027-07-06 | 2027-07-07 | RHD4PRSHLDOSRD1100, RHD4PRSHLSTAGRD1100, RHD4CZ6A02CCTV6100 |  |  |  |  | -161d | 0d | Skilled labor [9.6 h]; Unskilled Labor [57.83 h]; Equipment Opreator [144.51 h]; Bobcat [9.6 h]; Roller compactor [9.6 h]; Asphalt Paver [9.6 h]; Rubber Compactor [19.28 h]; MC1/RC2 Sprinkler [9.6 h]; Dump Truck [86.69 h]; Bituminous base course (Grading I - Class A), including Prime coat (MC1) & tack coate (RC2) [352.5 m3] | 168,495 |  | A02 | Z6 | CONS | RD | 150 mm | AFT |
|  | 5239 | **RHD4-02-002-A02-(RD)-Precast Concrete Curb** |  | 2027-07-08 | 2027-07-13 |  |  |  |  |  |  |  |  |  |  |  |  |  |  |  |  |
| RHD4CZ6A02RD5100 |  | Supply and installation Precast Concrete Kerb for Roads - (RD-A-2)-Z6-A02-RD | 5d | 2027-07-08 | 2027-07-13 | RHD4CZ6A02RD3200, RHD4PRSHLDOSRD1200, RHD4ENMSRD2000, RHD4ENMSRD2010 |  |  |  |  | -161d | 0d | Mason [137.98 h]; Skilled labor [45.96 h]; Unskilled Labor [137.98 h]; Equipment Opreator [91.91 h]; Bobcat [45.96 h]; Concrete Mixer Truck [45.96 h]; Precast Concrete Curbstone, type K1 [1900 m] | 104,500 |  | A02 | Z6 | CONS | RD | Curbs | AFT |
|  | 5242 | **RHD4-02-002-A02-(RD)-Traffic Signage** |  | 2027-07-14 | 2027-07-20 |  |  |  |  |  |  |  |  |  |  |  |  |  |  |  |  |
| RHD4CZ6A02RD8100 |  | Installation of Traffic Signage for Road Network - (RD-A-2)-Z6-A02-RD | 6d | 2027-07-14 | 2027-07-20 | RHD4CZ6A02RD5100 |  |  |  |  | -161d | 0d | Skilled labor [130.68 h]; Unskilled Labor [65.34 h]; Electrician [10.89 h]; Equipment Opreator [17.42 h]; Boom Truck [13.07 h]; Concrete Mixer Truck [4.36 h]; Traffic signs, ground mounted, 1 Sheet Aluminium, (breakaway)Single post [10 nr] | 12,260 |  | A02 | Z6 | CONS | RD | Traffic Signage | AFT |

| ID | WBS | Activity | Duration | Start | Finish | Predecessors | Complete | Planned start | Planned finish | Total float | Free float | Resources | Cost | Actual cost | RDH4-01-001-Road and Block Names-1 | RDH4-01-001-Zones-1 | RDH4-01-001-Phases-1 | RDH4-01-001-Networks-1 | RDH4-01-001-Work Method-1 | RDH4-01-001-MENEM |
| --- | --- | --- | --- | --- | --- | --- | --- | --- | --- | --- | --- | --- | --- | --- | --- | --- | --- | --- | --- | --- |
|  | 5240 | **RHD4-02-002-A02-(RD)-Precast Interlocking Block Pavers** |  |  |  |  |  |  |  |  |  |  |  |  |  |  |  |  |  |  |
|  | 5238 | **RHD4-02-002-A02-(RD)-Bituminous concrete wearing course including tack coat (RC2)** |  | 2027-07-14 | 2027-07-15 |  |  |  |  |  |  |  |  |  |  |  |  |  |  |  |
| RHD4CZ6A02RD4100 |  | Supply, lay and compaction Asphaltic wearing course including tack Coat (RC2)for Road Network - (RD-A-2)-Z6-A02-RD | 2d | 2027-07-14 | 2027-07-15 | RHD4CZ6A02RD5100 |  |  |  | -157d | 4d | Skilled labor [3.7 h]; Unskilled Labor [22.33 h]; Equipment Opreator [55.87 h]; Bobcat [3.7 h]; Roller compactor [3.7 h]; Asphalt Paver [3.7 h]; Rubber Compactor [7.41 h]; MC1/RC2 Sprinkler [3.7 h]; Dump Truck [33.54 h]; Bituminous concrete wearing course, (Grading I - Class A), including tack coat (RC2) [177.55 m3] | 96,409.65 |  | A02 | Z6 | CONS | RD | 50 mm | AFT |
|  | 5243 | **RHD4-02-002-A02-(RD)-Speed Table and Wheel Stopper** |  |  |  |  |  |  |  |  |  |  |  |  |  |  |  |  |  |  |
|  | 5241 | **RHD4-02-002-A02-(RD)-Pavement Marking** |  | 2027-07-21 | 2027-07-24 |  |  |  |  |  |  |  |  |  |  |  |  |  |  |  |
| RHD4CZ6A02RD7100 |  | Pavement Markings for Road Network - (RD-A-2)-Z6-A02-RD | 3d | 2027-07-21 | 2027-07-24 | RHD4CZ6A02RD4100, RHD4PRSHLDOSRD1500, RHD4PRSHLSTAGRD1500, RHD4CZ6A02RD8100 |  |  |  | -161d | 33d | Skilled labor [22.98 h]; Unskilled Labor [46.07 h]; Equipment Opreator [22.98 h]; Road Marking Machine [22.98 h]; Retroreflective Thermoplastic White Traffic Markings [180.62 m2]; Retroreflective Thermoplastic Yellow, Traffic Markings [89.36 m2]; Retroreflective raised pavement markers (cat eyes) [280 nr] | 17,889.38 |  | A02 | Z6 | CONS | RD | Pavement Marking | AFT |
|  | 5059 | **RHD4-02-002-Z6-A02-Storm Network - ST** |  | 2026-07-27 | 2027-02-08 |  |  |  |  |  |  |  |  |  |  |  |  |  |  |  |
|  | 5076 | **RHD4-02-002-A02-(ST)-MH Works - 1200 mm diameter** |  | 2026-07-27 | 2027-01-30 |  |  |  |  |  |  |  |  |  |  |  |  |  |  |  |
| RHD4CZ6A02ST3200 |  | Installation of Base for MH 1200 mm - (RD-A-2)-Z6-A02-ST | 2d | 2026-07-27 A | 2026-10-14 A | RHD4CZ6A02ST3100, RHD4PRSHLSTAGST1605 SS | 100% | 2026-07-27 | 2026-07-28 |  |  | Skilled labor [14.48 h]; Unskilled Labor [14.48 h]; Equipment Opreator [5.77 h]; Boom Truck [2.94 h]; Concrete Mixer Truck [2.94 h]; MH (1200mm Diameter) - ST - depth 1.50 - 2.5m [1 nr] | 10,323 | 10,323 | A02 | Z6 | CONS | ST | Installing Base | bef |
| RHD4CZ6A02ST3100 |  | Excavation and PC Blinding works for MH 1200 mm - (RD-A-2)-Z6-A02-ST | 2d | 2026-08-04 A | 2026-10-12 A | RHD4ENSDZ6APPST110, RHD4ENMSST2000, RHD4ENMSST2010, RHD4CZ6C052ST1103 | 100% | 2026-07-25 | 2026-07-26 |  |  | Skilled labor [14.48 h]; Unskilled Labor [14.48 h]; Equipment Opreator [23.2 h]; Excavator-Poclain [14.48 h]; Water Truck [1.42 h]; Dump Truck [7.3 h]; MH (1200mm Diameter) - ST - depth 1.50 - 2.5m [1 nr] | 10,323 | 10,323 | A02 | Z6 | CONS | ST | Excavation | bef |
| RHD4CZ6A02ST3300 |  | MH Ring and C.Slab works and Backfilling works for MH 1200 mm - (RD-A-2)-Z6-A02-ST | 2d | 2026-09-29 A | 2026-10-17 A | RHD4CZ6A02ST3200, RHD4PRSHLDOSST1605 | 100% | 2026-10-20 | 2026-10-21 |  |  | Skilled labor [14.48 h]; Unskilled Labor [14.48 h]; Equipment Opreator [10.13 h]; Boom Truck [5.77 h]; Concrete Mixer Truck [4.36 h]; MH (1200mm Diameter) - ST - depth 1.50 - 2.5m [1.4 nr] | 14,452.2 | 14,452.2 | A02 | Z6 | CONS | ST | Installing Rings | bef |
| RHD4CZ6A02ST3400 |  | Steel Cover for MH 1200 mm - (RD-A-2)-Z6-A02-ST | 2d | 2027-01-26 | 2027-01-27 | RHD4CZ6A02ST3300, RHD4PRSHLDOSST1705, RHD4PRSHLSTAGST1705 |  |  |  | -195d | 0d | Skilled labor [14.48 h]; Unskilled Labor [29.08 h]; Equipment Opreator [2.94 h]; Boom Truck [2.94 h]; MH (1200mm Diameter) - ST - depth 1.50 - 2.5m [0.2 nr] | 2,064.6 |  | A02 | Z6 | CONS | ST | Steel Cover | bef |
| RHD4CZ6A02ST3500 |  | Finishing, Benching, Testing works for MH 1200 mm - (RD-A-2)-Z6-A02-ST | 2d | 2027-01-28 | 2027-01-30 | RHD4CZ6A02ST3400 |  |  |  | -195d | 2.02d | Skilled labor [14.48 h]; Unskilled Labor [29.08 h]; Plumber [14.48 h]; Equipment Opreator [2.94 h]; Water Truck [2.94 h]; MH (1200mm Diameter) - ST - depth 1.50 - 2.5m [0.4 nr] | 4,129.2 |  | A02 | Z6 | CONS | ST | Benching | bef |
|  | 5061 | **RHD4-02-002-A02-(ST)-GRP Pipes - 500 mm diameter** |  | 2026-08-04 | 2027-01-27 |  |  |  |  |  |  |  |  |  |  |  |  |  |  |  |
| RHD4CZ6A02ST1101 |  | Excavation works for GRP Pipe Line 500 mm - (RD-A-2)-Z6-A02-ST | 2d | 2026-08-04 A | 2026-08-05 A | RHD4CZ6A02ST3200, RHD4ENSDZ6APPST110 | 100% | 2026-07-29 | 2026-07-30 |  |  | Skilled labor [5.01 h]; Unskilled Labor [5.01 h]; Equipment Opreator [5.99 h]; Excavator-Poclain [5.01 h]; Dump Truck [0.98 h]; GRP (500mm Diameter) - ST - Depth less than 1.5 m [9.11 m]; GRP (500mm Diameter) - ST - Depth: 1.51m - 2.5m | 3,234.05 | 3,234.05 | A02 | Z6 | CONS | ST | Excavation | bef |
| RHD4CZ6A02ST1201 |  | Bedding works for GRP Pipe Line 500 mm - (RD-A-2)-Z6-A02-ST | 2d | 2026-09-15 A | 2026-09-16 A | RHD4CZ6A02ST1101 | 100% | 2026-08-01 | 2026-08-02 |  |  | Skilled labor [5.01 h]; Unskilled Labor [9.91 h]; Equipment Opreator [9.91 h]; Excavator-Poclain [5.01 h]; Dump Truck [5.01 h]; GRP (500mm Diameter) - ST - Depth less than 1.5 m [4.55 m]; GRP (500mm Diameter) - ST - Depth: 1.51m - 2.5m | 1,615.25 | 1,615.25 | A02 | Z6 | CONS | ST | Bedding | bef |
| RHD4CZ6A02ST1301 |  | Installing for GRP Pipe Line 500 mm - (RD-A-2)-Z6-A02-ST | 2d | 2026-09-16 A | 2026-09-17 A | RHD4CZ6A02ST1201, RHD4CZ6A02ST3300, RHD4PRSHLSTAGST1005, RHD4PRSHLDOSST1605, RHD4PRSHLPOST1000, RHD4PRSHLDOSST1005 | 100% | 2026-08-03 | 2026-08-04 |  |  | Unskilled Labor [9.91 h]; Plumber [5.01 h]; GRP (500mm Diameter) - ST - Depth less than 1.5 m [40.98 m]; GRP (500mm Diameter) - ST - Depth: 1.51m - 2.5m | 14,547.9 | 14,547.9 | A02 | Z6 | CONS | ST | Installation | bef |
| RHD4CZ6A02ST1501 |  | Backfilling and warning tape works for GRP Pipe Line 500 mm - (RD-A-2)-Z6-A02-ST | 2d | 2026-09-17 A | 2026-09-19 A | RHD4CZ6A02ST1401 | 100% | 2026-08-08 | 2026-08-09 |  |  | Skilled labor [5.01 h]; Unskilled Labor [9.91 h]; Equipment Opreator [9.91 h]; Excavator-Poclain [5.01 h]; Dump Truck [5.01 h]; GRP (500mm Diameter) - ST - Depth less than 1.5 m [18.21 m]; GRP (500mm Diameter) - ST - Depth: 1.51m - 2.5m | 6,464.55 | 6,464.55 | A02 | Z6 | CONS | ST | Backfilling | bef |
| RHD4CZ6A02ST1401 |  | Primary Test for GRP Pipe Line 500 mm - (RD-A-2)-Z6-A02-ST | 2d | 2027-01-26 | 2027-01-27 | RHD4CZ6A02ST1301 |  |  |  | -180d | 0d | Unskilled Labor [5.01 h]; Plumber [5.01 h]; Equipment Opreator [5.01 h]; Water Truck [5.01 h]; GRP (500mm Diameter) - ST - Depth less than 1.5 m [18.21 m]; GRP (500mm Diameter) - ST - Depth: 1.51m - 2.5m | 6,464.55 |  | A02 | Z6 | CONS | ST | Primary Test | bef |
|  | 5060 | **RHD4-02-002-A02-(ST)-GRP Pipes - 400 mm diameter** |  | 2026-08-04 | 2027-01-27 |  |  |  |  |  |  |  |  |  |  |  |  |  |  |  |
| RHD4CZ6A02ST1100 |  | Excavation works for GRP Pipe Line 400 mm - (RD-A-2)-Z6-A02-ST | 2d | 2026-08-04 A | 2026-08-05 A | RHD4CZ6A02ST1101, RHD4ENSDZ6APPST110 | 100% | 2026-08-01 | 2026-08-02 |  |  | Skilled labor [11.54 h]; Unskilled Labor [11.54 h]; Equipment Opreator [13.83 h]; Excavator-Poclain [11.54 h]; Dump Truck [2.29 h]; GRP (400mm Diameter) - ST - Depth less than 1.5 m [26.5 m] | 7,685 | 7,685 | A02 | Z6 | CONS | ST | Excavation | bef |
| RHD4CZ6A02ST1200 |  | Bedding works for GRP Pipe Line 400 mm - (RD-A-2)-Z6-A02-ST | 2d | 2026-09-15 A | 2026-09-16 A | RHD4CZ6A02ST1100 | 100% | 2026-08-03 | 2026-08-04 |  |  | Skilled labor [9.6 h]; Unskilled Labor [19.28 h]; Equipment Opreator [19.28 h]; Excavator-Poclain [9.6 h]; Dump Truck [9.6 h]; GRP (400mm Diameter) - ST - Depth less than 1.5 m [13.25 m] | 3,842.64 | 3,842.64 | A02 | Z6 | CONS | ST | Bedding | bef |
| RHD4CZ6A02ST1300 |  | Installing for GRP Pipe Line 400 mm - (RD-A-2)-Z6-A02-ST | 2d | 2026-09-16 A | 2026-09-17 A | RHD4CZ6A02ST1200, RHD4CZ6A02ST1301, RHD4PRSHLSTAGST1005, RHD4PRSHLDOSST1605, RHD4PRSHLPOST1000, RHD4PRSHLDOSST1005 | 100% | 2026-08-05 | 2026-08-06 |  |  | Unskilled Labor [38.44 h]; Plumber [19.28 h]; GRP (400mm Diameter) - ST - Depth less than 1.5 m [119.25 m] | 34,583.81 | 34,583.81 | A02 | Z6 | CONS | ST | Installation | bef |
| RHD4CZ6A02ST1500 |  | Backfilling and warning tape works for GRP Pipe Line 400 mm - (RD-A-2)-Z6-A02-ST | 2d | 2026-09-17 A | 2026-09-19 A | RHD4CZ6A02ST1400, RHD4CZ6A02ST1501 | 100% | 2026-08-10 | 2026-08-11 |  |  | Skilled labor [14.48 h]; Unskilled Labor [28.86 h]; Equipment Opreator [28.86 h]; Excavator-Poclain [14.48 h]; Dump Truck [14.48 h]; GRP (400mm Diameter) - ST - Depth less than 1.5 m [53 m] | 15,370 | 15,370 | A02 | Z6 | CONS | ST | Backfilling | bef |
| RHD4CZ6A02ST1400 |  | Primary Test for GRP Pipe Line 400 mm - (RD-A-2)-Z6-A02-ST | 2d | 2027-01-26 | 2027-01-27 | RHD4CZ6A02ST1300 |  |  |  | -180d | 0d | Unskilled Labor [5.77 h]; Plumber [5.77 h]; Equipment Opreator [5.77 h]; Water Truck [5.77 h]; GRP (400mm Diameter) - ST - Depth less than 1.5 m [53 m] | 15,370 |  | A02 | Z6 | CONS | ST | Primary Test | bef |

| ID | WBS | Activity | Duration | Start | Finish | Predecessors | Complete | Remaining | Planned start | Planned finish | Total float | Free float | Resources | Cost | Actual cost | RDH4-01-001-Road and Block Names-1 | RDH4-01-001-Zones-1 | RDH4-01-001-Phases-1 | RDH4-01-001-Networks-1 | RDH4-01-001-Work Method-1 | RDH4-01-001-MENEM |
| --- | --- | --- | --- | --- | --- | --- | --- | --- | --- | --- | --- | --- | --- | --- | --- | --- | --- | --- | --- | --- | --- |
|  | 5074 | **RHD4-02-002-A02-(ST)-UPVC Pipes - 300 mm diameter** |  | 2026-08-23 | 2027-02-08 |  |  |  |  |  |  |  |  |  |  |  |  |  |  |  |  |
| RHD4CZ6A02ST2100 |  | Excavation works for UPVC Pipe Line 300 mm - (RD-A-2)-Z6-A02-ST | 2d | 2026-08-23 A | 2027-01-27 | RHD4ENSDZ6APPST110, RHD4CZ6A02ST3200 | 26% | 2d | 2026-07-29 | 2026-07-30 | -172d | 0d | Skilled labor [8.71 h]; Unskilled Labor [8.71 h]; Equipment Opreator [10.45 h]; Excavator-Poclain [8.71 h]; Dump Truck [1.74 h]; UPVC (300mm Diameter) - ST - Depth less than 1.5 [20.08 m] | 6,085.45 |  | A02 | Z6 | CONS | ST | Excavation | bef |
| RHD4CZ6A02ST2200 |  | Bedding works for UPVC Pipe Line 300 mm - (RD-A-2)-Z6-A02-ST | 2d | 2026-08-25 A | 2027-01-30 | RHD4CZ6A02ST2100 | 26% | 2d | 2026-08-01 | 2026-08-02 | -172d | 2d | Skilled labor [7.3 h]; Unskilled Labor [14.59 h]; Equipment Opreator [14.59 h]; Excavator-Poclain [7.3 h]; Dump Truck [7.3 h]; UPVC (300mm Diameter) - ST - Depth less than 1.5 [10.04 m] | 3,042.73 |  | A02 | Z6 | CONS | ST | Bedding | bef |
| RHD4CZ6A02ST2300 |  | Installing for UPVC Pipe Line 300 mm - (RD-A-2)-Z6-A02-ST | 2d | 2026-08-27 A | 2027-02-03 | RHD4CZ6A02ST2200, RHD4CZ6A02ST7300, RHD4PRSHLDOSST1105, RHD4PRSHLSTAGST1105 | 26% | 2d | 2026-08-03 | 2026-08-04 | -174d | 0d | Unskilled Labor [17.53 h]; Plumber [8.71 h]; UPVC (300mm Diameter) - ST - Depth less than 1.5 [90.37 m] | 27,382.11 |  | A02 | Z6 | CONS | ST | Installation | bef |
| RHD4CZ6A02ST2500 |  | Backfilling and warning tape works for UPVC Pipe Line 300 mm - (RD-A-2)-Z6-A02-ST | 2d | 2026-10-22 A | 2027-02-08 | RHD4CZ6A02ST2400, RHD4CZ6A02ST6100 | 26% | 2d | 2027-02-17 | 2027-02-18 | -174d | 0d | Skilled labor [10.89 h]; Unskilled Labor [21.89 h]; Equipment Opreator [21.89 h]; Excavator-Poclain [10.89 h]; Dump Truck [10.89 h]; UPVC (300mm Diameter) - ST - Depth less than 1.5 [40.17 m] | 12,170.9 |  | A02 | Z6 | CONS | ST | Backfilling | bef |
| RHD4CZ6A02ST2400 |  | Primary Test for UPVC Pipe Line 300 mm - (RD-A-2)-Z6-A02-ST | 2d | 2027-02-04 | 2027-02-06 | RHD4CZ6A02ST2300 |  |  |  |  | -174d | 0d | Unskilled Labor [4.36 h]; Plumber [4.36 h]; Equipment Opreator [4.36 h]; Water Truck [4.36 h]; UPVC (300mm Diameter) - ST - Depth less than 1.5 [40.17 m] | 12,170.9 |  | A02 | Z6 | CONS | ST | Primary Test | bef |
|  | 5082 | **RHD4-02-002-A02-(ST)-Concrete Encasement** |  | 2027-02-02 | 2027-02-03 |  |  |  |  |  |  |  |  |  |  |  |  |  |  |  |  |
| RHD4CZ6A02ST6100 |  | Pipe Encasement for Storm Pipelines - (RD-A-2)-Z6-A02-ST | 2d | 2027-02-02 | 2027-02-03 | RHD4CZ6A02ST2300 SS, RHD4CZ6A02ST2300 FF, RHD4CZ6A02ST2200 |  |  |  |  | -172d | 2d | Skilled labor [1.85 h]; Unskilled Labor [1.85 h]; Equipment Opreator [2.07 h]; Concrete Mixer Truck [0.22 h]; Dump Truck [1.85 h]; Pipe Encasement - ST [34.69 m3] | 17,553.14 |  | A02 | Z6 | CONS | ST | Pipe Encasement | bef |
|  | 5083 | **RHD4-02-002-Z6-A02-Catch Basin - ST** |  | 2026-08-04 | 2027-02-06 |  |  |  |  |  |  |  |  |  |  |  |  |  |  |  |  |
|  | 5084 | **RHD4-02-002-A02-(ST)-Single Catch Basin Works** |  | 2026-08-04 | 2027-02-06 |  |  |  |  |  |  |  |  |  |  |  |  |  |  |  |  |
| RHD4CZ6A02ST7100 |  | Excavation works for Single Catch Basin - (RD-A-2)-Z6-A02-ST | 2d | 2026-08-04 A | 2027-01-27 | RHD4ENSDZ6APPST110, RHD4CZ6A02ST3100 | 60% | 2d | 2026-07-27 | 2026-07-28 | -174d | 0d | Skilled labor [10.89 h]; Unskilled Labor [21.78 h]; Equipment Opreator [16.34 h]; Excavator-Poclain [10.89 h]; Dump Truck [5.45 h]; Single Catch basin - ST [2.5 nr] | 9,327.5 | 1,865.5 | A02 | Z6 | CONS | ST | Excavation | bef |
| RHD4CZ6A02ST7200 |  | PC Blinding, Installation and Pipe connection for Single Catch Basin - (RD-A-2)-Z6-A02-ST | 2d | 2026-08-06 A | 2027-01-30 | RHD4CZ6A02ST7100 | 50% | 2d | 2026-07-29 | 2026-07-30 | -174d | 0d | Skilled labor [10.89 h]; Unskilled Labor [21.78 h]; Plumber [5.45 h]; Equipment Opreator [2.18 h]; Boom Truck [2.18 h]; Single Catch basin - ST [2 nr] | 7,462 | 1,492.4 | A02 | Z6 | CONS | ST | Installation & Pipe Connection | bef |
| RHD4CZ6A02ST7300 |  | Rings & C.Slab & Final Backfill for Single Catch Basin - (RD-A-2)-Z6-A02-ST | 2d | 2026-10-27 A | 2027-02-01 | RHD4CZ6A02ST7200, RHD4PRSHLDOSST1305, RHD4PRSHLSTAGST1305 |  | 2d | 2026-10-27 | 2026-10-28 | -174d | 0d | Skilled labor [13.6 h]; Unskilled Labor [27.2 h]; Equipment Opreator [16.34 h]; Boom Truck [2.72 h]; Bobcat [13.6 h]; Single Catch basin - ST [3.5 nr] | 13,058.5 | 2,611.7 | A02 | Z6 | CONS | ST | Rings | bef |
| RHD4CZ6A02ST7400 |  | Steel Cover for Single Catch Basin - (RD-A-2)-Z6-A02-ST | 2d | 2027-02-02 | 2027-02-03 | RHD4CZ6A02ST7300, RHD4PRSHLDOSST1705, RHD4CZ6A02ST3400 |  |  |  |  | -170d | 0d | Skilled labor [10.89 h]; Unskilled Labor [10.89 h]; Equipment Opreator [2.18 h]; Boom Truck [2.18 h]; Single Catch basin - ST [0.5 nr] | 1,865.5 |  | A02 | Z6 | CONS | ST | Steel Cover | bef |
| RHD4CZ6A02ST7500 |  | Finishing and Insulation works for Single Catch Basin - (RD-A-2)-Z6-A02-ST | 2d | 2027-02-04 | 2027-02-06 | RHD4CZ6A02ST7400 |  |  |  |  | -170d | 0d | Skilled labor [21.78 h]; Unskilled Labor [43.56 h]; Equipment Opreator [4.36 h]; Boom Truck [4.36 h]; Single Catch basin - ST [1.5 nr] | 5,596.5 |  | A02 | Z6 | CONS | ST | Insulation | bef |
|  | 3973 | **RHD4-02-002-Z6-A02-Sewage Network - SW** |  | 2026-07-27 | 2027-02-03 |  |  |  |  |  |  |  |  |  |  |  |  |  |  |  |  |
|  | 3794 | **RHD4-02-002-A02-(SW)-MH Works - 1200 mm diameter** |  | 2026-07-29 | 2027-02-03 |  |  |  |  |  |  |  |  |  |  |  |  |  |  |  |  |
| RHD4CZ6A02SW3100 |  | Excavation and PC Blinding works for MH 1200 mm - (RD-A-2)-Z6-A02-SW | 2d | 2026-07-29 A | 2026-08-05 A | RHD4CZ6A02SW2100 | 100% |  | 2026-07-29 | 2026-07-30 |  |  | Skilled labor [10.89 h]; Unskilled Labor [10.89 h]; Equipment Opreator [17.42 h]; Excavator-Poclain [10.89 h]; Water Truck [1.09 h]; Dump Truck [5.45 h]; MH (1200mm Diameter) - SW - depth 1.51 - 2.5m [0.5 nr] | 4,771 | 4,771 | A02 | Z6 | CONS | SW | Excavation | bef |
| RHD4CZ6A02SW3200 |  | Installation of Base for MH 1200 mm - (RD-A-2)-Z6-A02-SW | 2d | 2027-01-26 | 2027-01-27 | RHD4CZ6A02SW3100 |  |  |  |  | -193d | 0d | Skilled labor [10.89 h]; Unskilled Labor [10.89 h]; Equipment Opreator [4.36 h]; Boom Truck [2.18 h]; Concrete Mixer Truck [2.18 h]; MH (1200mm Diameter) - SW - depth 1.51 - 2.5m [0.5 nr] | 4,771 |  | A02 | Z6 | CONS | SW | Installing Base | bef |
| RHD4CZ6A02SW3300 |  | MH Ring and C.Slab works and Backfilling works for MH 1200 mm - (RD-A-2)-Z6-A02-SW | 2d | 2027-01-28 | 2027-01-30 | RHD4CZ6A02SW3200 |  |  |  |  | -193d | 0d | Skilled labor [10.89 h]; Unskilled Labor [10.89 h]; Equipment Opreator [7.62 h]; Boom Truck [4.36 h]; Concrete Mixer Truck [3.27 h]; MH (1200mm Diameter) - SW - depth 1.51 - 2.5m [0.7 nr] | 6,679.4 |  | A02 | Z6 | CONS | SW | Installing Rings | bef |
| RHD4CZ6A02SW3400 |  | Steel Cover for MH 1200 mm - (RD-A-2)-Z6-A02-SW | 2d | 2027-01-31 | 2027-02-01 | RHD4CZ6A02SW3300 |  |  |  |  | -193d | 0d | Skilled labor [7.3 h]; Unskilled Labor [14.48 h]; Equipment Opreator [1.42 h]; Boom Truck [1.42 h]; MH (1200mm Diameter) - SW - depth 1.51 - 2.5m [0.1 nr] | 954.2 |  | A02 | Z6 | CONS | SW | Steel Cover | bef |
| RHD4CZ6A02SW3500 |  | Finishing, Benching, Testing works for MH 1200 mm - (RD-A-2)-Z6-A02-SW | 2d | 2027-02-02 | 2027-02-03 | RHD4CZ6A02SW3400 |  |  |  |  | -193d | 3d | Skilled labor [10.89 h]; Unskilled Labor [21.78 h]; Plumber [10.89 h]; Equipment Opreator [2.18 h]; Water Truck [2.18 h]; MH (1200mm Diameter) - SW - depth 1.51 - 2.5m [0.2 nr] | 1,908.4 |  | A02 | Z6 | CONS | SW | Benching | bef |
|  | 3979 | **RHD4-02-002-A02-(SW)-UPVC Pipes - 200 mm diameter** |  | 2026-07-27 | 2026-10-28 |  |  |  |  |  |  |  |  |  |  |  |  |  |  |  |  |
| RHD4CZ6A02SW2100 |  | Excavation works for UPVC Pipe Line 200 mm - (RD-A-2)-Z6-A02-SW | 2d | 2026-07-27 A | 2026-08-11 A | RHD4CZ6A02ST3100 | 100% |  | 2026-07-27 | 2026-07-28 |  |  | Skilled labor [7.84 h]; Unskilled Labor [7.84 h]; Equipment Opreator [9.47 h]; Excavator-Poclain [7.84 h]; Dump Truck [1.52 h]; UPVC (200mm Diameter) - SW - Depth: less than 1.5m [18.08 m] | 3,254.4 | 3,254.4 | A02 | Z6 | CONS | SW | Excavation | bef |
| RHD4CZ6A02SW2200 |  | Bedding works for UPVC Pipe Line 200 mm - (RD-A-2)-Z6-A02-SW | 2d | 2026-07-29 A | 2026-08-12 A | RHD4CZ6A02SW2100 | 100% |  | 2026-07-29 | 2026-07-30 |  |  | Skilled labor [6.53 h]; Unskilled Labor [13.18 h]; Equipment Opreator [13.18 h]; Excavator-Poclain [6.53 h]; Dump Truck [6.53 h]; UPVC (200mm Diameter) - SW - Depth: less than 1.5m [9.04 m] | 1,627.2 | 1,627.2 | A02 | Z6 | CONS | SW | Bedding | bef |
| RHD4CZ6A02SW2300 |  | Installing for UPVC Pipe Line 200 mm - (RD-A-2)-Z6-A02-SW | 2d | 2026-08-01 A | 2026-08-15 A | RHD4CZ6A02SW2200 | 100% |  | 2026-08-01 | 2026-08-02 |  |  | Unskilled Labor [26.25 h]; Plumber [13.18 h]; Equipment Opreator [13.18 h]; Boom Truck [13.18 h]; UPVC (200mm Diameter) - SW - Depth: less than 1.5m [81.37 m] | 14,646.6 | 14,646.6 | A02 | Z6 | CONS | SW | Installation | bef |
| RHD4CZ6A02SW2500 |  | Backfilling and warning tape works for UPVC Pipe Line 200 mm - (RD-A-2)-Z6-A02-SW | 2d | 2026-08-05 A | 2026-08-17 A | RHD4CZ6A02SW3300, RHD4CZ6A02SW2400 | 100% |  | 2026-08-05 | 2026-08-06 |  |  | Skilled labor [9.8 h]; Unskilled Labor [19.71 h]; Equipment Opreator [19.71 h]; Excavator-Poclain [9.8 h]; Dump Truck [9.8 h]; UPVC (200mm Diameter) - SW - Depth: less than 1.5m [36.16 m] | 6,508.8 | 6,508.8 | A02 | Z6 | CONS | SW | Backfilling | bef |
| RHD4CZ6A02SW2400 |  | Primary Test for UPVC Pipe Line 200 mm - (RD-A-2)-Z6-A02-SW | 2d | 2026-10-27 A | 2026-10-28 A | RHD4CZ6A02SW2300 | 100% |  |  |  |  |  | Unskilled Labor [3.92 h]; Plumber [3.92 h]; Equipment Opreator [3.92 h]; Water Truck [3.92 h]; UPVC (200mm Diameter) - SW - Depth: less than 1.5m [36.16 m] | 6,508.8 | 6,508.8 | A02 | Z6 | CONS | SW | Primary Test | bef |

| ID | WBS | Activity | Duration | Start | Finish | Predecessors | Total float | Free float | Resources | Cost | RDH4-01-001-Road and Block Names-1 | RDH4-01-001-Zones-1 | RDH4-01-001-Phases-1 | RDH4-01-001-Networks-1 | RDH4-01-001-Work Method-1 | RDH4-01-001-MENEM |
| --- | --- | --- | --- | --- | --- | --- | --- | --- | --- | --- | --- | --- | --- | --- | --- | --- |
|  | 5145 | **RHD4-02-002-Z6-A02-Potable Network - PT** |  | 2027-02-09 | 2027-03-04 |  |  |  |  |  |  |  |  |  |  |  |
|  | 5159 | **RHD4-02-002-A02-(PT)-Concrete Encasement** |  |  |  |  |  |  |  |  |  |  |  |  |  |  |
|  | 4962 | **RHD4-02-002-A02-(PT)-Gate Valves (Direct Buried)** |  | 2027-02-14 | 2027-02-23 |  |  |  |  |  |  |  |  |  |  |  |
| RHD4CZ6A02PT3100 |  | Installation for Direct Buried Gate Valves - (RD-A-2)-Z6-A02-PT | 2d | 2027-02-14 | 2027-02-15 | RHD4CZ6A02SW2500, RHD4CZ6A02PT1301 FF, RHD4CZ6A02PT1301 SS | -174d | 0d | Unskilled Labor [10.89 h]; Plumber [10.89 h]; Gate valves dia 150 mm - PT [1.8 nr] | 2,844 | A02 | Z6 | CONS | PT | Installation | bef |
| RHD4CZ6A02PT3200 |  | Stem and Service box for Direct Buried Gate Valves - (RD-A-2)-Z6-A02-PT | 2d | 2027-02-21 | 2027-02-23 | RHD4CZ6A02PT3100, RHD4CZ6A02PT1501 | -174d | 11d | Unskilled Labor [10.89 h]; Plumber [10.89 h]; Gate valves dia 150 mm - PT [0.2 nr] | 316 | A02 | Z6 | CONS | PT | Stem and Service box | bef |
|  | 4969 | **RHD4-02-002-A02-(PT)-Fire Hydrant** |  | 2027-02-21 | 2027-03-04 |  |  |  |  |  |  |  |  |  |  |  |
| RHD4CZ6A02PT4100 |  | Excavation and Bedding and Pipe Installation for Fire Hydrant - (RD-A-2)-Z6-A02-PT | 2d | 2027-02-21 | 2027-02-23 | RHD4CZ6A02ST2500, RHD4CZ6A02PT1501 | -169d | 0d | Skilled labor [5.45 h]; Unskilled Labor [5.45 h]; Plumber [5.45 h]; Equipment Opreator [2.72 h]; Excavator-Poclain [2.72 h]; 3-outlet fire hydrant (2 x 2.5 inch and 1 x 4.5 inch) in the form of a separate dry vacuum cylinder [0.1 nr] | 1,262 | A02 | Z6 | CONS | PT | Excavation | bef |
| RHD4CZ6A02PT4200 |  | Valve Installation for Fire Hydrant - (RD-A-2)-Z6-A02-PT | 2d | 2027-02-24 | 2027-02-25 | RHD4CZ6A02PT4100 | -169d | 0d | Unskilled Labor [3.59 h]; Plumber [3.59 h]; 3-outlet fire hydrant (2 x 2.5 inch and 1 x 4.5 inch) in the form of a separate dry vacuum cylinder [0.2 nr] | 2,524 | A02 | Z6 | CONS | PT | Valve | bef |
| RHD4CZ6A02PT4300 |  | Stem for Fire Hydrant - (RD-A-2)-Z6-A02-PT | 2d | 2027-02-27 | 2027-02-28 | RHD4CZ6A02PT4200 | -169d | 0d | Unskilled Labor [3.59 h]; Plumber [3.59 h]; 3-outlet fire hydrant (2 x 2.5 inch and 1 x 4.5 inch) in the form of a separate dry vacuum cylinder [0.3 nr] | 3,786 | A02 | Z6 | CONS | PT | Stem | bef |
| RHD4CZ6A02PT4400 |  | Fire Installation for Fire Hydrant - (RD-A-2)-Z6-A02-PT | 2d | 2027-03-01 | 2027-03-02 | RHD4CZ6A02PT4300 | -169d | 0d | Unskilled Labor [3.59 h]; Plumber [3.59 h]; Equipment Opreator [3.59 h]; Boom Truck [3.59 h]; 3-outlet fire hydrant (2 x 2.5 inch and 1 x 4.5 inch) in the form of a separate dry vacuum cylinder [0.35 nr] | 4,417 | A02 | Z6 | CONS | PT | Fire | bef |
| RHD4CZ6A02PT4500 |  | Protection Barriers for Fire Hydrant - (RD-A-2)-Z6-A02-PT | 2d | 2027-03-03 | 2027-03-04 | RHD4CZ6A02PT4400 | -169d | 7d | Unskilled Labor [2.18 h]; Plumber [2.18 h]; 3-outlet fire hydrant (2 x 2.5 inch and 1 x 4.5 inch) in the form of a separate dry vacuum cylinder [0.05 nr] | 631 | A02 | Z6 | CONS | PT | Protection Barriers | bef |
|  | 4958 | **RHD4-02-002-A02-(PT)-HDPE Pipes - 160 mm diameter** |  | 2027-02-09 | 2027-02-20 |  |  |  |  |  |  |  |  |  |  |  |
| RHD4CZ6A02PT1101 |  | Excavation works for HDPE Pipline 160 mm - (RD-A-2)-Z6-A02-PT | 2d | 2027-02-09 | 2027-02-10 | RHD4CZ6A02SW2500, RHD4CZ6A02ST2500 | -174d | 0d | Skilled labor [12.09 h]; Unskilled Labor [12.09 h]; Equipment Opreator [14.48 h]; Excavator-Poclain [12.09 h]; Dump Truck [2.4 h]; HDPE (160mm Diameter) - PT - Depth: less than 1.5m [23.19 m]; HDPE (160mm Diameter) - PT - Depth: 1.51m - 2.5m | 2,481.33 | A02 | Z6 | CONS | PT | Excavation | bef |
| RHD4CZ6A02PT1201 |  | Bedding works for HDPE Pipline 160 mm - (RD-A-2)-Z6-A02-PT | 2d | 2027-02-11 | 2027-02-13 | RHD4CZ6A02PT1101 | -174d | 0d | Skilled labor [11.76 h]; Unskilled Labor [23.41 h]; Equipment Opreator [23.41 h]; Excavator-Poclain [11.76 h]; Dump Truck [11.76 h]; HDPE (160mm Diameter) - PT - Depth: less than 1.5m [11.6 m]; HDPE (160mm Diameter) - PT - Depth: 1.51m - 2.5m | 1,241.2 | A02 | Z6 | CONS | PT | Bedding | bef |
| RHD4CZ6A02PT1301 |  | Installing for HDPE Pipline 160 mm - (RD-A-2)-Z6-A02-PT | 2d | 2027-02-14 | 2027-02-15 | RHD4CZ6A02PT1201 | -174d | 0d | Unskilled Labor [27.12 h]; Plumber [13.5 h]; Equipment Opreator [13.5 h]; Boom Truck [13.5 h]; HDPE (160mm Diameter) - PT - Depth: less than 1.5m [104.36 m]; HDPE (160mm Diameter) - PT - Depth: 1.51m - 2.5m | 11,166.52 | A02 | Z6 | CONS | PT | Installation | bef |
| RHD4CZ6A02PT1401 |  | Primary Test for HDPE Pipline 160 mm - (RD-A-2)-Z6-A02-PT | 2d | 2027-02-16 | 2027-02-17 | RHD4CZ6A02PT1301, RHD4CZ6A02PT3100 | -174d | 0d | Unskilled Labor [11 h]; Plumber [11 h]; Equipment Opreator [11 h]; Water Truck [11 h]; HDPE (160mm Diameter) - PT - Depth: less than 1.5m [46.38 m]; HDPE (160mm Diameter) - PT - Depth: 1.51m - 2.5m | 4,962.66 | A02 | Z6 | CONS | PT | Primary Test | bef |
| RHD4CZ6A02PT1501 |  | Backfilling and warning tape works for HDPE Pipline 160 mm - (RD-A-2)-Z6-A02-PT | 2d | 2027-02-18 | 2027-02-20 | RHD4CZ6A02PT1401 | -174d | 0d | Skilled labor [12.63 h]; Unskilled Labor [25.27 h]; Equipment Opreator [25.27 h]; Excavator-Poclain [12.63 h]; Dump Truck [12.63 h]; HDPE (160mm Diameter) - PT - Depth: less than 1.5m [46.38 m]; HDPE (160mm Diameter) - PT - Depth: 1.51m - 2.5m | 4,962.66 | A02 | Z6 | CONS | PT | Backfilling | bef |
|  | 5201 | **RHD4-02-002-Z6-A02-Low Voltage Network - LV** |  | 2027-02-11 | 2027-03-21 |  |  |  |  |  |  |  |  |  |  |  |
|  | 5202 | **RHD4-02-002-A02-(LV)-Low Voltage duct banks** |  | 2027-02-11 | 2027-02-21 |  |  |  |  |  |  |  |  |  |  |  |
| RHD4CZ6A02LV2100 |  | Excavation of Duct Banks for Low Voltage Network - (RD-A-2)-Z6-A02-LV | 2d | 2027-02-11 | 2027-02-13 | RHD4ENSDZ6APPLV160, RHD4CZ6A02PT1101 | -160d | 0d | Skilled labor [17.64 h]; Unskilled Labor [17.64 h]; Equipment Opreator [35.2 h]; Excavator-Poclain [17.64 h]; Dump Truck [17.64 h]; Duct bank for LV cables UPVC (2xø110mm) [2.43 m] | 489.89 | A02 | Z6 | CONS | LV | Excavation | bef |
| RHD4CZ6A02LV2200 |  | Installation of Duct Banks for Low Voltage Network - (RD-A-2)-Z6-A02-LV | 3d | 2027-02-14 | 2027-02-16 | RHD4CZ6A02LV2100, RHD4PRSHLDOSLV1000, RHD4PRSHLSTAGLV1000 | -160d | 0d | Carpenter [2.61 h]; Skilled labor [26.46 h]; Unskilled Labor [26.46 h]; Steel Fixer [2.61 h]; Duct bank for LV cables UPVC (2xø110mm) [2.43 m] | 489.89 | A02 | Z6 | CONS | LV | Installing | bef |
| RHD4CZ6A02LV2300 |  | Pouring of Duct Banks for Low Voltage Network - (RD-A-2)-Z6-A02-LV | 2d | 2027-02-17 | 2027-02-18 | RHD4CZ6A02LV2200 | -160d | 0d | Skilled labor [17.64 h]; Unskilled Labor [17.64 h]; Equipment Opreator [7.08 h]; Concrete Mixer Truck [3.48 h]; Concrete Pump [3.48 h]; Duct bank for LV cables UPVC (2xø110mm) [15.76 m] | 3,184.29 | A02 | Z6 | CONS | LV | Pouring | bef |
| RHD4CZ6A02LV2400 |  | Backfilling of Duct Banks for Low Voltage Network - (RD-A-2)-Z6-A02-LV | 2d | 2027-02-20 | 2027-02-21 | RHD4CZ6A02LV2300 | -158d | 12d | Skilled labor [13.18 h]; Unskilled Labor [13.18 h]; Equipment Opreator [5.34 h]; Excavator-Poclain [5.34 h]; Duct bank for LV cables UPVC (2xø110mm) [3.64 m] | 734.84 | A02 | Z6 | CONS | LV | Backfilling | bef |
|  | 5203 | **RHD4-02-002-A02-(LV)-Low Voltage Drawpit** |  | 2027-03-04 | 2027-03-08 |  |  |  |  |  |  |  |  |  |  |  |
| RHD4CZ6A02LV5100 |  | Excavation of Drawpit size 900x900x1000mm for Low Voltage Network - (RD-A-2)-Z6-A02-LV | 2d | 2027-03-04 | 2027-03-06 | RHD4CZ6A02LV2300, RHD4ENSDZ6APPLV160, RHD4CZ6A02RD3100 | -170d | 0d | Skilled labor [3.59 h]; Unskilled Labor [3.59 h]; Equipment Opreator [2.94 h]; Excavator-Poclain [1.42 h]; Dump Truck [1.42 h]; Drawpit with medium duty steel cover, size900x900x1000mm, [0.6 Unit] | 2,206.2 | A02 | Z6 | CONS | LV | Excavation | AFT |
| RHD4CZ6A02LV5200 |  | Installation of Drawpit size 900x900x1000mm for Low Voltage Network - (RD-A-2)-Z6-A02-LV | 2d | 2027-03-07 | 2027-03-08 | RHD4CZ6A02LV5100, RHD4PRSHLDOSLV1400, RHD4PRSHLSTAGLV1400 | -170d | 0d | Skilled labor [3.59 h]; Unskilled Labor [3.59 h]; Equipment Opreator [1.42 h]; Boom Truck [1.42 h]; Drawpit with medium duty steel cover, size900x900x1000mm, [3.4 Unit] | 12,501.8 | A02 | Z6 | CONS | LV | Installation | AFT |

| ID | WBS | Activity | Duration | Start | Finish | Predecessors | Total float | Free float | Resources | Cost | RDH4-01-001-Road and Block Names-1 | RDH4-01-001-Zones-1 | RDH4-01-001-Phases-1 | RDH4-01-001-Networks-1 | RDH4-01-001-Work Method-1 | RDH4-01-001-MENEM |
| --- | --- | --- | --- | --- | --- | --- | --- | --- | --- | --- | --- | --- | --- | --- | --- | --- |
|  | 5204 | **RHD4-02-002-A02-(LV)-Low Voltage cables** |  | 2027-03-13 | 2027-03-21 |  |  |  |  |  |  |  |  |  |  |  |
| RHD4CZ6A02LV3100 |  | Excavation for Low Voltage Cables for Low Voltage Network - (RD-A-2)-Z6-A02-LV | 2d | 2027-03-13 | 2027-03-14 | RHD4CZ6A02LV2400, RHD4ENSDZ6APPLV160, RHD4CZ6A02LV5200 | -170d | 0d | Skilled labor [5.88 h]; Unskilled Labor [11.76 h]; Equipment Opreator [11.76 h]; Excavator-Poclain [5.88 h]; Boom Truck [5.88 h]; Cable, Copper 3x10mm2/ CU/XLPE/SWA/PVC [27 m] | 1,053 | A02 | Z6 | CONS | LV | Excavation | AFT |
| RHD4CZ6A02LV3200 |  | Cable Laying of Low Voltage Cables for Low Voltage Network - (RD-A-2)-Z6-A02-LV | 2d | 2027-03-15 | 2027-03-16 | RHD4CZ6A02LV3100, RHD4PRSHLDOSLV1100, RHD4ENMSLV2000, RHD4ENMSLV2010, RHD4PRSHLSTAGLV1100 | -170d | 0d | Skilled labor [4.9 h]; Unskilled Labor [19.6 h]; Electrician [9.8 h]; Equipment Opreator [14.7 h]; Boom Truck [4.9 h]; Cable Laying Machine [9.8 h]; Cable, Copper 3x10mm2/ CU/XLPE/SWA/PVC [81.01 m] | 3,159.33 | A02 | Z6 | CONS | LV | Cable Laying | AFT |
| RHD4CZ6A02LV3300 |  | Warning tape and Backfill for Low Voltage Cables for Low Voltage Network - (RD-A-2)-Z6-A02-LV | 2d | 2027-03-17 | 2027-03-18 | RHD4CZ6A02LV3200 | -170d | 0d | Skilled labor [4.9 h]; Unskilled Labor [19.6 h]; Electrician [9.8 h]; Equipment Opreator [4.9 h]; Boom Truck [4.9 h]; Cable, Copper 3x10mm2/ CU/XLPE/SWA/PVC [20.25 m] | 789.83 | A02 | Z6 | CONS | LV | Warning tape and Backfill | AFT |
| RHD4CZ6A02LV3400 |  | Testing of Low Voltage Cables for Low Voltage Network - (RD-A-2)-Z6-A02-LV | 2d | 2027-03-20 | 2027-03-21 | RHD4CZ6A02LV3300 | -170d | 4d | Skilled labor [2.94 h]; Unskilled Labor [11.76 h]; Electrician [5.88 h]; Equipment Opreator [2.94 h]; Boom Truck [2.94 h]; Cable, Copper 3x10mm2/ CU/XLPE/SWA/PVC [6.75 m] | 263.28 | A02 | Z6 | CONS | LV | Testing | AFT |
|  | 5207 | **RHD4-02-002-Z6-A02-Street Lighting Network - SL** |  | 2027-04-14 | 2027-05-06 |  |  |  |  |  |  |  |  |  |  |  |
|  | 5210 | **RHD4-02-002-A02-(SL)-Street Lighting cables** |  | 2027-04-14 | 2027-04-22 |  |  |  |  |  |  |  |  |  |  |  |
| RHD4CZ6A02SL3100 |  | Excavation for Street Lighting Cables for Street Lighting Network - (RD-A-2)-Z6-A02-SL | 2d | 2027-04-14 | 2027-04-15 | RHD4ENSDZ6APPSL170, RHD4CZ6A02LV3400, RHD4CZ6C052SL2400 | -150d | 0d | Skilled labor [7.3 h]; Unskilled Labor [14.48 h]; Equipment Opreator [14.48 h]; Excavator-Poclain [7.3 h]; Boom Truck [7.3 h]; Cable, Copper 4x10mm2/ CU/XLPE/SWA/PVC + 1x10mm2 CU/PVC [33.34 m] | 1,633.58 | A02 | Z6 | CONS | SL | Excavation | AFT |
| RHD4CZ6A02SL3200 |  | Cable Laying of Street Lighting Cables for Street Lighting Network - (RD-A-2)-Z6-A02-SL | 2d | 2027-04-17 | 2027-04-18 | RHD4CZ6A02SL3100, RHD4PRSHLDOSSL1100, RHD4ENMSSL2000, RHD4ENMSSL2010, RHD4PRSHLSTAGSL1100 | -150d | 0d | Skilled labor [6.1 h]; Unskilled Labor [24.18 h]; Electrician [12.09 h]; Equipment Opreator [18.19 h]; Boom Truck [6.1 h]; Cable Laying Machine [12.09 h]; Cable, Copper 4x10mm2/ CU/XLPE/SWA/PVC + 1x10mm2 CU/PVC [100.02 m] | 4,900.75 | A02 | Z6 | CONS | SL | Cable Laying | AFT |
| RHD4CZ6A02SL3300 |  | Warning tape and Backfill for Street Lighting Cables for Street Lighting Network - (RD-A-2)-Z6-A02-SL | 2d | 2027-04-19 | 2027-04-20 | RHD4CZ6A02SL3200 | -150d | 0d | Skilled labor [6.1 h]; Unskilled Labor [24.18 h]; Electrician [12.09 h]; Equipment Opreator [6.1 h]; Boom Truck [6.1 h]; Cable, Copper 4x10mm2/ CU/XLPE/SWA/PVC + 1x10mm2 CU/PVC [25 m] | 1,225 | A02 | Z6 | CONS | SL | Warning tape and Backfill | AFT |
| RHD4CZ6A02SL3400 |  | Testing of Street Lighting Cables for Street Lighting Network - (RD-A-2)-Z6-A02-SL | 2d | 2027-04-21 | 2027-04-22 | RHD4CZ6A02SL3300 | -150d | 0d | Skilled labor [3.59 h]; Unskilled Labor [14.48 h]; Electrician [7.3 h]; Equipment Opreator [3.59 h]; Boom Truck [3.59 h]; Cable, Copper 4x10mm2/ CU/XLPE/SWA/PVC + 1x10mm2 CU/PVC [8.33 m] | 408.4 | A02 | Z6 | CONS | SL | Testing | AFT |
|  | 5211 | **RHD4-02-002-A02-(SL)-Street Lighting Poles** |  | 2027-04-24 | 2027-05-06 |  |  |  |  |  |  |  |  |  |  |  |
| RHD4CZ6A02SL1100 |  | Excavation for RC Base for Lighting Poles for Street Lighting Network - (RD-A-2)-Z6-A02-SL | 2d | 2027-04-24 | 2027-04-25 | RHD4ENSDZ6APPSL170, RHD4CZ6A02SL3400 | -150d | 0d | Skilled labor [4.36 h]; Unskilled Labor [4.36 h]; Equipment Opreator [8.71 h]; Excavator-Poclain [4.36 h]; Dump Truck [4.36 h]; Lighting polesdouble arms, height of ( 12 ) meters [0.6 Unit] | 2,743.2 | A02 | Z6 | CONS | SL | Excavation | AFT |
| RHD4CZ6A02SL1200 |  | Installation for RC Base for Lighting Poles for Street Lighting Network - (RD-A-2)-Z6-A02-SL | 2d | 2027-04-26 | 2027-04-27 | RHD4CZ6A02SL1100 | -150d | 0d | Skilled labor [4.36 h]; Unskilled Labor [4.36 h]; Equipment Opreator [8.71 h]; Excavator-Poclain [4.36 h]; Dump Truck [4.36 h]; Lighting polesdouble arms, height of ( 12 ) meters [1.5 Unit] | 6,858 | A02 | Z6 | CONS | SL | RC Base | AFT |
| RHD4CZ6A02SL1300 |  | Backfill for RC Base for Lighting Poles for Street Lighting Network - (RD-A-2)-Z6-A02-SL | 2d | 2027-04-28 | 2027-04-29 | RHD4CZ6A02SL1200 | -150d | 0d | Skilled labor [4.36 h]; Unskilled Labor [4.36 h]; Equipment Opreator [8.71 h]; Excavator-Poclain [4.36 h]; Dump Truck [4.36 h]; Lighting polesdouble arms, height of ( 12 ) meters [0.3 Unit] | 1,371.6 | A02 | Z6 | CONS | SL | Backfill | AFT |
| RHD4CZ6A02SL1400 |  | Installation for Lighting Poles for Street Lighting Network - (RD-A-2)-Z6-A02-SL | 2d | 2027-05-01 | 2027-05-02 | RHD4CZ6A02SL1300, RHD4CZ6A02SL3400, RHD4PRSHLDOSSL1200, RHD4ENMSSL2000, RHD4ENMSSL2010, RHD4PRSHLSTAGSL1200 | -150d | 0d | Skilled labor [6.53 h]; Unskilled Labor [6.53 h]; Electrician [6.53 h]; Equipment Opreator [6.53 h]; Boom Truck [6.53 h]; Lighting polesdouble arms, height of ( 12 ) meters [3.6 Unit] | 16,459.2 | A02 | Z6 | CONS | SL | Poles Installation | AFT |
| RHD4CZ6A02SL1500 |  | Luminaire Installation for Lighting Poles for Street Lighting Network - (RD-A-2)-Z6-A02-SL | 2d | 2027-05-05 | 2027-05-06 | RHD4CZ6A02SL1400, RHD4CZ6A02SL6100, RHD4PRSHLDOSSL1300, RHD4PRSHLSTAGSL1300 | -150d | 0d | Unskilled Labor [17.42 h]; Electrician [8.71 h]; Equipment Opreator [3.48 h]; Boom Truck [3.48 h]; Street Lighting( LED) Luminaire of Output ?39018 lumen [12 Unit] | 12,504 | A02 | Z6 | CONS | SL | Luminaire Installation | AFT |
|  | 5213 | **RHD4-02-002-A02-(SL)-Street Lighting Earthing System** |  | 2027-05-03 | 2027-05-04 |  |  |  |  |  |  |  |  |  |  |  |
| RHD4CZ6A02SL6100 |  | Installation of Earthing for Lighting Poles and Fedder Pillers for Street Lighting Network - (RD-A-2)-Z6-A02-SL | 2d | 2027-05-03 | 2027-05-04 | RHD4CZ6A02SL1400, RHD4ENMSER2000, RHD4ENMSER2010 | -150d | 0d | Skilled labor [0.8 h]; Unskilled Labor [0.8 h]; Equipment Opreator [1.42 h]; Excavator-Poclain [0.8 h]; Dump Truck [0.8 h]; Including lighting poles circuits - ER [1 Unit] | 613 | A02 | Z6 | CONS | SL | Installation | AFT |
|  | 5219 | **RHD4-02-002-Z6-A02-Telecommunications Network - TC** |  | 2027-05-08 | 2027-05-20 |  |  |  |  |  |  |  |  |  |  |  |
|  | 5220 | **RHD4-02-002-A02-(TC)-Telecommunications Ducts** |  | 2027-05-08 | 2027-05-20 |  |  |  |  |  |  |  |  |  |  |  |
| RHD4CZ6A02TC2100 |  | Excavation of HDPE Ducts for Telecom Network - (RD-A-2)-Z6-A02-TC | 2d | 2027-05-08 | 2027-05-09 | RHD4ENSDZ6APPTC190, RHD4CZ6A02SL1500 | -144d | 0d | Skilled labor [15.79 h]; Unskilled Labor [15.79 h]; Equipment Opreator [31.58 h]; Excavator-Poclain [15.79 h]; Dump Truck [15.79 h]; (6*50mm) HDPE ducts -TC [6.5 m]; (6*50mm+2*32mm) HDPE ducts -TC [31.1 m]; (2*32mm) HDPE ducts -TC [5.92 m] | 4,163.18 | A02 | Z6 | CONS | TC | Excavation | AFT |
| RHD4CZ6A02TC2200 |  | Installation of HDPE Ducts for Telecom Network - (RD-A-2)-Z6-A02-TC | 3d | 2027-05-10 | 2027-05-12 | RHD4CZ6A02TC2100, RHD4PRSHLDOSTC1000, RHD4PRSHLSTAGTC1000 | -143d | 1d | Carpenter [2.4 h]; Skilled labor [23.74 h]; Unskilled Labor [23.74 h]; Steel Fixer [2.4 h]; (6*50mm) HDPE ducts -TC [21.12 m]; (6*50mm+2*32mm) HDPE ducts -TC [101.08 m]; (2*32mm) HDPE ducts -TC [19.24 m] | 13,530.33 | A02 | Z6 | CONS | TC | Installing | AFT |
| RHD4CZ6A02TC2400 |  | Backfilling of HDPE Ducts for Telecom Network - (RD-A-2)-Z6-A02-TC | 2d | 2027-05-19 | 2027-05-20 | RHD4CZ6A02TC2200, RHD4CZ6A02TC5200 | -144d | 0d | Skilled labor [15.79 h]; Unskilled Labor [15.79 h]; Equipment Opreator [6.32 h]; Excavator-Poclain [6.32 h]; (6*50mm) HDPE ducts -TC [4.88 m]; (6*50mm+2*32mm) HDPE ducts -TC [23.32 m]; (2*32mm) HDPE ducts -TC [4.44 m] | 3,122.39 | A02 | Z6 | CONS | TC | Backfilling | AFT |

| ID | WBS | Activity | Duration | Start | Finish | Predecessors | Total float | Free float | Resources | Cost | RDH4-01-001-Road and Block Names-1 | RDH4-01-001-Zones-1 | RDH4-01-001-Phases-1 | RDH4-01-001-Networks-1 | RDH4-01-001-Work Method-1 | RDH4-01-001-MENEM |
| --- | --- | --- | --- | --- | --- | --- | --- | --- | --- | --- | --- | --- | --- | --- | --- | --- |
|  | 5221 | **RHD4-02-002-A02-(TC)-Telecommunications Manholes** |  | 2027-05-10 | 2027-05-13 |  |  |  |  |  |  |  |  |  |  |  |
| RHD4CZ6A02TC5100 |  | Excavation for Manholes for Telecom Network - (RD-A-2)-Z6-A02-TC | 2d | 2027-05-10 | 2027-05-11 | RHD4CZ6A02TC2100, RHD4ENSDZ6APPTC190 | -144d | 0d | Skilled labor [2.72 h]; Unskilled Labor [2.72 h]; Equipment Opreator [2.18 h]; Excavator-Poclain [1.09 h]; Dump Truck [1.09 h]; Manhole Type 1 - TC [0.3 nr] | 2,022.3 | A02 | Z6 | CONS | TC | Excavation | AFT |
| RHD4CZ6A02TC5200 |  | Installation of Manholes for Telecom Network - (RD-A-2)-Z6-A02-TC | 2d | 2027-05-12 | 2027-05-13 | RHD4CZ6A02TC5100, RHD4CZ6A02TC2200 SS, RHD4PRSHLDOSTC1200, RHD4PRSHLSTAGTC1200 | -144d | 0d | Skilled labor [2.72 h]; Unskilled Labor [2.72 h]; Equipment Opreator [1.09 h]; Boom Truck [1.09 h]; Manhole Type 1 - TC [1.7 nr] | 11,459.7 | A02 | Z6 | CONS | TC | Installation | AFT |
|  | 5223 | **RHD4-02-002-Z6-A02-Information and Communication Technologies - ICT** |  | 2027-05-22 | 2027-06-01 |  |  |  |  |  |  |  |  |  |  |  |
|  | 5224 | **RHD4-02-002-A02-(ICT)-Information and Communication Technologies Ducts** |  | 2027-05-22 | 2027-06-01 |  |  |  |  |  |  |  |  |  |  |  |
| RHD4CZ6A02ICT2100 |  | Excavation of HDPE Ducts for ICT Network - (RD-A-2)-Z6-A02-ICT | 3d | 2027-05-22 | 2027-05-24 | RHD4ENSDZ6APPICT200, RHD4CZ6A02TC2400 | -144d | 0d | Skilled labor [23.41 h]; Unskilled Labor [23.41 h]; Equipment Opreator [46.94 h]; Excavator-Poclain [23.41 h]; Dump Truck [23.41 h]; (2*50mm) HDPE ducts -ICT [64.64 m] | 2,456.32 | A02 | Z6 | CONS | ICT | Excavation | AFT |
| RHD4CZ6A02ICT2200 |  | Installation of HDPE Ducts for ICT Network - (RD-A-2)-Z6-A02-ICT | 4d | 2027-05-25 | 2027-05-29 | RHD4CZ6A02ICT2100, RHD4PRSHLDOSICT1000, RHD4PRSHLSTAGICT1000 | -144d | 0d | Carpenter [3.48 h]; Skilled labor [35.2 h]; Unskilled Labor [35.2 h]; Steel Fixer [3.48 h]; (2*50mm) HDPE ducts -ICT [210.08 m] | 7,983.04 | A02 | Z6 | CONS | ICT | Installing | AFT |
| RHD4CZ6A02ICT2400 |  | Backfilling of HDPE Ducts for ICT Network - (RD-A-2)-Z6-A02-ICT | 3d | 2027-05-30 | 2027-06-01 | RHD4CZ6A02ICT2200, RHD4CZ6A02ICT5200 | -144d | 17d | Skilled labor [23.41 h]; Unskilled Labor [23.41 h]; Equipment Opreator [9.37 h]; Excavator-Poclain [9.37 h]; (2*50mm) HDPE ducts -ICT [48.48 m] | 1,842.24 | A02 | Z6 | CONS | ICT | Backfilling | AFT |
|  | 5225 | **RHD4-02-002-A02-(ICT)-Information and Communication Technologies Manholes** |  | 2027-05-25 | 2027-05-29 |  |  |  |  |  |  |  |  |  |  |  |
| RHD4CZ6A02ICT5100 |  | Excavation for Manholes for ICT Network - (RD-A-2)-Z6-A02-ICT | 2d | 2027-05-25 | 2027-05-26 | RHD4CZ6A02ICT2100, RHD4ENSDZ6APPICT200 | -144d | 0d | Skilled labor [5.45 h]; Unskilled Labor [5.45 h]; Equipment Opreator [4.36 h]; Excavator-Poclain [2.18 h]; Dump Truck [2.18 h]; Manhole Type 1 - ICT [0.6 nr] | 3,235.8 | A02 | Z6 | CONS | ICT | Excavation | AFT |
| RHD4CZ6A02ICT5200 |  | Installation of Manholes for ICT Network - (RD-A-2)-Z6-A02-ICT | 2d | 2027-05-27 | 2027-05-29 | RHD4CZ6A02ICT5100, RHD4PRSHLDOSICT1200, RHD4PRSHLSTAGICT1200 | -144d | 0d | Skilled labor [5.45 h]; Unskilled Labor [5.45 h]; Equipment Opreator [2.18 h]; Boom Truck [2.18 h]; Manhole Type 1 - ICT [3.4 nr] | 18,336.2 | A02 | Z6 | CONS | ICT | Installation | AFT |
|  | 5214 | **RHD4-02-002-Z6-A02-Landscape Network - LS** |  |  |  |  |  |  |  |  |  |  |  |  |  |  |
|  | 5215 | **RHD4-02-002-A02-(LS)-Landscape Lighting cables** |  |  |  |  |  |  |  |  |  |  |  |  |  |  |
|  | 5216 | **RHD4-02-002-A02-(LS)-Landscape Feeder Pillars** |  |  |  |  |  |  |  |  |  |  |  |  |  |  |
|  | 5217 | **RHD4-02-002-A02-(LS)-Landscape Bollard Poles** |  |  |  |  |  |  |  |  |  |  |  |  |  |  |
|  | 5218 | **RHD4-02-002-A02-(LS)-Landscape Feeder Pillars Earthing** |  |  |  |  |  |  |  |  |  |  |  |  |  |  |
|  | 5227 | **RHD4-02-002-Z6-A02-Security Network - CCTV** |  | 2027-06-22 | 2027-07-05 |  |  |  |  |  |  |  |  |  |  |  |
|  | 5228 | **RHD4-02-002-A02-(CCTV)-Civil Works** |  |  |  |  |  |  |  |  |  |  |  |  |  |  |
|  | 5229 | **RHD4-02-002-A02-(CCTV)-CCTV Poles** |  | 2027-06-22 | 2027-06-30 |  |  |  |  |  |  |  |  |  |  |  |
| RHD4CZ6A02CCTV1100 |  | Excavation for RC Base for CCTV Poles for Security Network - (RD-A-2)-Z6-A02-CCTV | 2d | 2027-06-22 | 2027-06-23 | RHD4ENSDZ6APPCCTV210, RHD4CZ6A02ICT2400, RHD4CZ6C052MV4200, RHD4CZ6C052MV3401, RHD4CZ6C052MV3400 | -161d | 0d | Skilled labor [17.44 h]; Unskilled Labor [17.44 h]; Equipment Opreator [34.88 h]; Excavator-Poclain [8.71 h]; Dump Truck [8.71 h]; 7 Meters pole for ANPR CCTV CameraS [0.2 nr]; 4.5-meter Hinged Type Arm, fixed on 7 meter for installing LANPR cameras [0.4 nr] | 5,799 | A02 | Z6 | CONS | CCTV | Excavation | AFT |
| RHD4CZ6A02CCTV1200 |  | Installation for RC Base for CCTV Poles for Security Network - (RD-A-2)-Z6-A02-CCTV | 2d | 2027-06-24 | 2027-06-26 | RHD4CZ6A02CCTV1100 | -161d | 0d | Skilled labor [17.44 h]; Unskilled Labor [17.44 h]; Equipment Opreator [34.88 h]; Excavator-Poclain [8.71 h]; Dump Truck [8.71 h]; 7 Meters pole for ANPR CCTV CameraS [0.5 nr]; 4.5-meter Hinged Type Arm, fixed on 7 meter for installing LANPR cameras [1 nr] | 14,497.5 | A02 | Z6 | CONS | CCTV | RC Base | AFT |
| RHD4CZ6A02CCTV1300 |  | Backfill for RC Base for CCTV Poles for Security Network - (RD-A-2)-Z6-A02-CCTV | 2d | 2027-06-27 | 2027-06-28 | RHD4CZ6A02CCTV1200 | -161d | 0d | Skilled labor [10.88 h]; Unskilled Labor [10.88 h]; Equipment Opreator [21.76 h]; Excavator-Poclain [5.45 h]; Dump Truck [5.45 h]; 7 Meters pole for ANPR CCTV CameraS [0.1 nr]; 4.5-meter Hinged Type Arm, fixed on 7 meter for installing LANPR cameras [0.2 nr] | 2,899.5 | A02 | Z6 | CONS | CCTV | Backfill | AFT |
| RHD4CZ6A02CCTV1400 |  | Installation for CCTV Poles for Security Network - (RD-A-2)-Z6-A02-CCTV | 2d | 2027-06-29 | 2027-06-30 | RHD4CZ6A02CCTV1300, RHD4PRSHLDOSCCTV1000, RHD4PRSHLSTACCTV1000 | -161d | 0d | Skilled labor [28.96 h]; Unskilled Labor [58.08 h]; Electrician [28.96 h]; Equipment Opreator [28.96 h]; Boom Truck [14.48 h]; 7 Meters pole for ANPR CCTV CameraS [1.2 nr]; 4.5-meter Hinged Type Arm, fixed on 7 meter for installing LANPR cameras [2.4 nr] | 34,794 | A02 | Z6 | CONS | CCTV | Installation | AFT |
|  | 5230 | **RHD4-02-002-A02-(CCTV)-Camera** |  | 2027-07-01 | 2027-07-03 |  |  |  |  |  |  |  |  |  |  |  |
| RHD4CZ6A02CCTV3100 |  | Installation for Cameras for Security Network - (RD-A-2)-Z6-A02-CCTV | 2d | 2027-07-01 | 2027-07-03 | RHD4CZ6A02CCTV1400, RHD4PRSHLDOSCCTV1100, RHD4PRSHLSTACCTV1100 | -161d | 0d | Unskilled Labor [43.52 h]; Electrician [21.76 h]; Fixed outdoor Camera for LPR, IP66/67 and IK10-rated 10 MP/ 4K, day/night, IR luminator [5 nr] | 126,970 | A02 | Z6 | CONS | CCTV | Installation | AFT |

| ID | WBS | Activity | Duration | Start | Finish | Predecessors | Complete | Planned start | Planned finish | Total float | Free float | Resources | Cost | Actual cost | RDH4-01-001-Road and Block Names-1 | RDH4-01-001-Zones-1 | RDH4-01-001-Phases-1 | RDH4-01-001-Networks-1 | RDH4-01-001-Work Method-1 | RDH4-01-001-MENEM |
| --- | --- | --- | --- | --- | --- | --- | --- | --- | --- | --- | --- | --- | --- | --- | --- | --- | --- | --- | --- | --- |
|  | 5231 | **RHD4-02-002-A02-(CCTV)-Power and Infrastructure** |  |  |  |  |  |  |  |  |  |  |  |  |  |  |  |  |  |  |
|  | 5233 | **RHD4-02-002-A02-(CCTV)-CCTV Panels and Components** |  | 2027-07-04 | 2027-07-05 |  |  |  |  |  |  |  |  |  |  |  |  |  |  |  |
| RHD4CZ6A02CCTV6100 |  | Installation for CCTV Panels for Security Network - (RD-A-2)-Z6-A02-CCTV | 2d | 2027-07-04 | 2027-07-05 | RHD4CZ6A02CCTV3100, RHD4PRSHLDOSCCTV1200, RHD4PRSHLSTACCTV1200, RHD4PRLOLSTACCTV1001 |  |  |  | -161d | 0d | Skilled labor [43.52 h]; Unskilled Labor [130.72 h]; Electrician [43.52 h]; 8 Port Industrial PoE Switch 10/1000BaseT with 2X1G SFP UP-LINK(- 40 deg to +70 deg. Celsius) for remote poles and as specifiedin item 15 [4 nr] | 67,600 |  | A02 | Z6 | CONS | CCTV | Equipment | AFT |
|  | 5433 | **RHD4-02-002-Z6-RA01** |  | 2026-04-25 | 2027-09-05 |  |  |  |  |  |  |  |  |  |  |  |  |  |  |  |
|  | 5612 | **RHD4-02-002-Z6-RA01-Road Works - RD** |  | 2026-04-25 | 2027-09-05 |  |  |  |  |  |  |  |  |  |  |  |  |  |  |  |
|  | 5613 | **RHD4-02-002-RA01-(RD)-Subgrade** |  | 2026-04-25 | 2026-05-23 |  |  |  |  |  |  |  |  |  |  |  |  |  |  |  |
| RHD4CZ6RA01RD1100 |  | Supply, lay and compaction subgrade compacted thickness 300 mm for Roads - (ROUND-01)-Z6-RA01-RD | 4d | 2026-04-25 A | 2026-05-23 A | RHD4ENSDZ6APPRD220, RHD4ENSDZ6APPEW100, RHD4CZ6A02RD1100 SS | 100% | 2026-08-10 | 2026-08-13 |  |  | Skilled labor [45.6 h]; Unskilled Labor [91.26 h]; Electrician [45.6 h]; Equipment Opreator [311.46 h]; Water Truck [15.03 h]; Roller compactor [22.76 h]; Grader [45.6 h]; Dump Truck [228.04 h]; Subgrade [2193.59 m3] | 41,678.21 | 41,678.21 | RA01 | Z6 | CONS | RD | Subgrade | bef |
|  | 5614 | **RHD4-02-002-RA01-(RD)-Aggregate Base Course** |  | 2027-01-28 | 2027-02-01 |  |  |  |  |  |  |  |  |  |  |  |  |  |  |  |
| RHD4CZ6RA01RD2100 |  | Supply, lay and compaction Aggregate base course compacted thickness 300 mmfor Roads - (ROUND-01)-Z6-RA01-RD | 4d | 2027-01-28 | 2027-02-01 | RHD4CZ6RA01RD1100 |  |  |  | -139d | 28d | Skilled labor [16.88 h]; Unskilled Labor [33.76 h]; Equipment Opreator [213.89 h]; Water Truck [11.11 h]; Roller compactor [33.76 h]; Grader [33.76 h]; Dump Truck [135.15 h]; Aggregate Base Courses [1377.8 m3] | 78,534.6 |  | RA01 | Z6 | CONS | RD | ABC | bef |
|  | 5615 | **RHD4-02-002-RA01-(RD)-Bituminous base course Two Layers, including (MC1)&(RC2)** |  | 2027-03-08 | 2027-08-12 |  |  |  |  |  |  |  |  |  |  |  |  |  |  |  |
| RHD4CZ6RA01RD3100 |  | Supply, lay and Asphaltic base course including Prime Coat (MC1) for 1st Layer - (ROUND-01)-Z6-RA01-RD | 2d | 2027-03-08 | 2027-03-13 | RHD4CZ6RA01RD2100, RHD4ENMSASPH2000, RHD4ENMSASPH2010, RHD4CZ6C062RD3100 |  |  |  | -167d | 0d | Skilled labor [17.86 h]; Unskilled Labor [107.27 h]; Equipment Opreator [268.34 h]; Bobcat [17.86 h]; Roller compactor [17.86 h]; Asphalt Paver [17.86 h]; Rubber Compactor [35.72 h]; MC1/RC2 Sprinkler [17.86 h]; Dump Truck [160.96 h]; Bituminous base course (Grading I - Class A), including Prime coat (MC1) & tack coate (RC2) [654.37 m3] | 312,788.86 |  | RA01 | Z6 | CONS | RD | 150 mm | AFT |
| RHD4CZ6RA01RD3200 |  | Supply, lay and Asphaltic base course including Tack Coat (RC2) for 2nd Layer - (ROUND-01)-Z6-RA01-RD | 2d | 2027-08-11 | 2027-08-12 | RHD4CZ6RA01CCTV5200 |  |  |  | -150d | 0d | Skilled labor [17.86 h]; Unskilled Labor [107.27 h]; Equipment Opreator [268.34 h]; Bobcat [17.86 h]; Roller compactor [17.86 h]; Asphalt Paver [17.86 h]; Rubber Compactor [35.72 h]; MC1/RC2 Sprinkler [17.86 h]; Dump Truck [160.96 h]; Bituminous base course (Grading I - Class A), including Prime coat (MC1) & tack coate (RC2) [654.37 m3] | 312,788.86 |  | RA01 | Z6 | CONS | RD | 150 mm | AFT |
|  | 5617 | **RHD4-02-002-RA01-(RD)-Precast Concrete Curb** |  | 2027-08-14 | 2027-08-16 |  |  |  |  |  |  |  |  |  |  |  |  |  |  |  |
| RHD4CZ6RA01RD5100 |  | Supply and installation Precast Concrete Kerb for Roads - (ROUND-01)-Z6-RA01-RD | 3d | 2027-08-14 | 2027-08-16 | RHD4CZ6RA01RD3200, RHD4ENMSRD2000, RHD4ENMSRD2010 |  |  |  | -150d | 0d | Mason [88.97 h]; Skilled labor [29.6 h]; Unskilled Labor [88.97 h]; Equipment Opreator [59.35 h]; Bobcat [29.6 h]; Concrete Mixer Truck [29.6 h]; Precast Concrete Curbstone, type K1 [1226 m] | 67,430 |  | RA01 | Z6 | CONS | RD | Curbs | AFT |
|  | 5620 | **RHD4-02-002-RA01-(RD)-Traffic Signage** |  | 2027-08-17 | 2027-08-28 |  |  |  |  |  |  |  |  |  |  |  |  |  |  |  |
| RHD4CZ6RA01RD8100 |  | Installation of Traffic Signage for Road Network - (ROUND-01)-Z6-RA01-RD | 10d | 2027-08-17 | 2027-08-28 | RHD4CZ6RA01RD5100 |  |  |  | -145d | 0d | Skilled labor [217.81 h]; Unskilled Labor [108.9 h]; Electrician [46.83 h]; Equipment Opreator [40.51 h]; Boom Truck [21.78 h]; Concrete Mixer Truck [18.73 h]; Traffic signs, ground mounted, 1 Sheet Aluminium, (breakaway)Single post [10 nr]; Traffic signs, ground mounted, 2 Sheets Aluminium, (breakaway)Single post [12 nr]; Traffic signs, ground mounted, 1 Sheets Aluminium, (breakaway)Double post [3 nr] | 39,845 |  | RA01 | Z6 | CONS | RD | Traffic Signage | AFT |
|  | 5618 | **RHD4-02-002-RA01-(RD)-Precast Interlocking Block Pavers** |  |  |  |  |  |  |  |  |  |  |  |  |  |  |  |  |  |  |
|  | 5616 | **RHD4-02-002-RA01-(RD)-Bituminous concrete wearing course including tack coat (RC2)** |  | 2027-08-17 | 2027-08-18 |  |  |  |  |  |  |  |  |  |  |  |  |  |  |  |
| RHD4CZ6RA01RD4100 |  | Supply, lay and compaction Asphaltic wearing course including tack Coat (RC2)for Road Network - (ROUND-01)-Z6-RA01-RD | 2d | 2027-08-17 | 2027-08-18 | RHD4CZ6RA01RD5100 |  |  |  | -150d | 0d | Skilled labor [6.86 h]; Unskilled Labor [41.49 h]; Equipment Opreator [103.68 h]; Bobcat [6.86 h]; Roller compactor [6.86 h]; Asphalt Paver [6.86 h]; Rubber Compactor [13.83 h]; MC1/RC2 Sprinkler [6.86 h]; Dump Truck [62.18 h]; Bituminous concrete wearing course, (Grading I - Class A), including tack coat (RC2) [329.59 m3] | 178,967.37 |  | RA01 | Z6 | CONS | RD | 50 mm | AFT |
|  | 5619 | **RHD4-02-002-RA01-(RD)-Pavement Marking** |  | 2027-08-19 | 2027-09-05 |  |  |  |  |  |  |  |  |  |  |  |  |  |  |  |
| RHD4CZ6RA01RD7100 |  | Pavement Markings for Road Network - (ROUND-01)-Z6-RA01-RD | 5d | 2027-08-19 | 2027-08-24 | RHD4CZ6RA01RD4100 |  |  |  | -150d | 0d | Skilled labor [46.5 h]; Unskilled Labor [93.11 h]; Equipment Opreator [46.5 h]; Road Marking Machine [46.5 h]; Retroreflective Thermoplastic White Traffic Markings [238.57 m2]; Retroreflective Thermoplastic Yellow, Traffic Markings [289.35 m2]; Retroreflective raised pavement markers (cat eyes) [569 nr] | 35,711.52 |  | RA01 | Z6 | CONS | RD | Pavement Marking | AFT |
| RHD4CZ6RA01RD9100 |  | Installation for Speed Bump for Road Network - (ROUND-01)-Z6-RA01-RD | 10d | 2027-08-25 | 2027-09-05 | RHD4CZ6RA01RD7100 |  |  |  | -150d | 48d | Mason [309.94 h]; Skilled labor [103.35 h]; Unskilled Labor [206.7 h]; Equipment Opreator [20.69 h]; Boom Truck [20.69 h]; SPEED TABLE [664.14 m2] | 81,689.22 |  | RA01 | Z6 | CONS | RD | Speed Bump | AFT |
|  | 5585 | **RHD4-02-002-Z6-RA01-Street Lighting Network - SL** |  | 2027-05-08 | 2027-06-14 |  |  |  |  |  |  |  |  |  |  |  |  |  |  |  |
|  | 5586 | **RHD4-02-002-RA01-(SL)-Street Lighting duct banks** |  | 2027-05-08 | 2027-05-22 |  |  |  |  |  |  |  |  |  |  |  |  |  |  |  |
| RHD4CZ6RA01SL2100 |  | Excavation of Duct Banks for Street Lighting Network - (ROUND-01)-Z6-RA01-SL | 2d | 2027-05-08 | 2027-05-09 | RHD4CZ6RA01RA3000, RHD4ENSDZ6APPSL170, RHD4CZ6C052MV2100, RHD4CZ6A02SL1500 |  |  |  | -150d | 0d | Skilled labor [18.08 h]; Unskilled Labor [18.08 h]; Equipment Opreator [36.16 h]; Excavator-Poclain [18.08 h]; Dump Truck [18.08 h]; Road Crossing Duct for Street Lighting cables UPVC (2x?110mm) [2.49 m] | 503.61 |  | RA01 | Z6 | CONS | SL | Excavation | bef |
| RHD4CZ6RA01SL2200 |  | Installation of Duct Banks for Street Lighting Network - (ROUND-01)-Z6-RA01-SL | 3d | 2027-05-10 | 2027-05-12 | RHD4CZ6RA01SL2100 |  |  |  | -150d | 0d | Carpenter [2.72 h]; Skilled labor [27.12 h]; Unskilled Labor [27.12 h]; Steel Fixer [2.72 h]; Road Crossing Duct for Street Lighting cables UPVC (2x?110mm) [2.49 m] | 503.61 |  | RA01 | Z6 | CONS | SL | Installing | bef |
| RHD4CZ6RA01SL2300 |  | Pouring of Duct Banks for Street Lighting Network - (ROUND-01)-Z6-RA01-SL | 2d | 2027-05-13 | 2027-05-19 | RHD4CZ6RA01SL2200 |  |  |  | -150d | 0d | Skilled labor [18.08 h]; Unskilled Labor [18.08 h]; Equipment Opreator [7.2 h]; Concrete Mixer Truck [3.59 h]; Concrete Pump [3.59 h]; Road Crossing Duct for Street Lighting cables UPVC (2x?110mm) [16.21 m] | 3,273.48 |  | RA01 | Z6 | CONS | SL | Pouring | bef |
| RHD4CZ6RA01SL2400 |  | Backfilling of Duct Banks for Street Lighting Network - (ROUND-01)-Z6-RA01-SL | 2d | 2027-05-20 | 2027-05-22 | RHD4CZ6RA01SL2300 |  |  |  | -148d | 2d | Skilled labor [13.6 h]; Unskilled Labor [13.6 h]; Equipment Opreator [5.45 h]; Excavator-Poclain [5.45 h]; Road Crossing Duct for Street Lighting cables UPVC (2x?110mm) [3.74 m] | 755.42 |  | RA01 | Z6 | CONS | SL | Backfilling | bef |

| ID | WBS | Activity | Duration | Start | Finish | Predecessors | Total float | Free float | Resources | Cost | RDH4-01-001-Road and Block Names-1 | RDH4-01-001-Zones-1 | RDH4-01-001-Phases-1 | RDH4-01-001-Networks-1 | RDH4-01-001-Work Method-1 | RDH4-01-001-MENEM |
| --- | --- | --- | --- | --- | --- | --- | --- | --- | --- | --- | --- | --- | --- | --- | --- | --- |
|  | 5587 | **RHD4-02-002-RA01-(SL)-Street Lighting Drawpit** |  | 2027-05-20 | 2027-05-24 |  |  |  |  |  |  |  |  |  |  |  |
| RHD4CZ6RA01SL5100 |  | Excavation of Drawpit size 600x600x900mm for Street Lighting Network - (ROUND-01)-Z6-RA01-SL | 2d | 2027-05-20 | 2027-05-22 | RHD4CZ6RA01SL2300, RHD4ENSDZ6APPSL170, RHD4CZ6RA01RD3100 | -150d | 0d | Skilled labor [1.85 h]; Unskilled Labor [1.85 h]; Equipment Opreator [1.42 h]; Excavator-Poclain [0.8 h]; Dump Truck [0.8 h]; Drawpit with medium duty steel cover, size600x600x900mm, [0.3 Unit] | 735.3 | RA01 | Z6 | CONS | SL | Excavation | AFT |
| RHD4CZ6RA01SL5200 |  | Installation of Drawpit size 600x600x900mm for Street Lighting Network - (ROUND-01)-Z6-RA01-SL | 2d | 2027-05-23 | 2027-05-24 | RHD4CZ6RA01SL5100, RHD4PRSHLDOSSL1400, RHD4PRSHLSTAGSL1400 | -150d | 0d | Skilled labor [1.85 h]; Unskilled Labor [1.85 h]; Equipment Opreator [0.8 h]; Boom Truck [0.8 h]; Drawpit with medium duty steel cover, size600x600x900mm, [1.7 Unit] | 4,166.7 | RA01 | Z6 | CONS | SL | Installation | AFT |
|  | 5588 | **RHD4-02-002-RA01-(SL)-Street Lighting cables** |  | 2027-05-25 | 2027-06-02 |  |  |  |  |  |  |  |  |  |  |  |
| RHD4CZ6RA01SL3100 |  | Excavation for Street Lighting Cables for Street Lighting Network - (ROUND-01)-Z6-RA01-SL | 2d | 2027-05-25 | 2027-05-26 | RHD4ENSDZ6APPSL170, RHD4CZ6RA01SL5200, RHD4CZ6RA01SL2400 | -150d | 0d | Skilled labor [10.56 h]; Unskilled Labor [21.13 h]; Equipment Opreator [21.13 h]; Excavator-Poclain [10.56 h]; Boom Truck [10.56 h]; Cable, Copper 4x10mm2/ CU/XLPE/SWA/PVC + 1x10mm2 CU/PVC [48.44 m] | 2,373.76 | RA01 | Z6 | CONS | SL | Excavation | AFT |
| RHD4CZ6RA01SL3200 |  | Cable Laying of Street Lighting Cables for Street Lighting Network - (ROUND-01)-Z6-RA01-SL | 2d | 2027-05-27 | 2027-05-29 | RHD4CZ6RA01SL3100, RHD4ENMSSL2000, RHD4ENMSSL2010 | -150d | 0d | Skilled labor [8.8 h]; Unskilled Labor [35.2 h]; Electrician [17.53 h]; Equipment Opreator [26.35 h]; Boom Truck [8.8 h]; Cable Laying Machine [17.53 h]; Cable, Copper 4x10mm2/ CU/XLPE/SWA/PVC + 1x10mm2 CU/PVC [145.33 m] | 7,121.27 | RA01 | Z6 | CONS | SL | Cable Laying | AFT |
| RHD4CZ6RA01SL3300 |  | Warning tape and Backfill for Street Lighting Cables for Street Lighting Network - (ROUND-01)-Z6-RA01-SL | 2d | 2027-05-30 | 2027-05-31 | RHD4CZ6RA01SL3200 | -150d | 0d | Skilled labor [8.8 h]; Unskilled Labor [35.2 h]; Electrician [17.53 h]; Equipment Opreator [8.8 h]; Boom Truck [8.8 h]; Cable, Copper 4x10mm2/ CU/XLPE/SWA/PVC + 1x10mm2 CU/PVC [36.33 m] | 1,780.32 | RA01 | Z6 | CONS | SL | Warning tape and Backfill | AFT |
| RHD4CZ6RA01SL3400 |  | Testing of Street Lighting Cables for Street Lighting Network - (ROUND-01)-Z6-RA01-SL | 2d | 2027-06-01 | 2027-06-02 | RHD4CZ6RA01SL3300 | -150d | 0d | Skilled labor [5.23 h]; Unskilled Labor [21.13 h]; Electrician [10.56 h]; Equipment Opreator [5.23 h]; Boom Truck [5.23 h]; Cable, Copper 4x10mm2/ CU/XLPE/SWA/PVC + 1x10mm2 CU/PVC [12.11 m] | 593.44 | RA01 | Z6 | CONS | SL | Testing | AFT |
|  | 5589 | **RHD4-02-002-RA01-(SL)-Street Lighting Poles** |  | 2027-06-03 | 2027-06-14 |  |  |  |  |  |  |  |  |  |  |  |
| RHD4CZ6RA01SL1100 |  | Excavation for RC Base for Lighting Poles for Street Lighting Network - (ROUND-01)-Z6-RA01-SL | 2d | 2027-06-03 | 2027-06-05 | RHD4ENSDZ6APPSL170, RHD4CZ6RA01SL3400 | -150d | 0d | Skilled labor [5.77 h]; Unskilled Labor [5.77 h]; Equipment Opreator [11.65 h]; Excavator-Poclain [5.77 h]; Dump Truck [5.77 h]; Lighting poles single arms, height of ( 10 ) meters [0.8 Unit] | 2,725.6 | RA01 | Z6 | CONS | SL | Excavation | AFT |
| RHD4CZ6RA01SL1200 |  | Installation for RC Base for Lighting Poles for Street Lighting Network - (ROUND-01)-Z6-RA01-SL | 2d | 2027-06-06 | 2027-06-07 | RHD4CZ6RA01SL1100 | -150d | 0d | Skilled labor [5.77 h]; Unskilled Labor [5.77 h]; Equipment Opreator [11.65 h]; Excavator-Poclain [5.77 h]; Dump Truck [5.77 h]; Lighting poles single arms, height of ( 10 ) meters [2 Unit] | 6,814 | RA01 | Z6 | CONS | SL | RC Base | AFT |
| RHD4CZ6RA01SL1300 |  | Backfill for RC Base for Lighting Poles for Street Lighting Network - (ROUND-01)-Z6-RA01-SL | 2d | 2027-06-08 | 2027-06-09 | RHD4CZ6RA01SL1200 | -150d | 0d | Skilled labor [5.77 h]; Unskilled Labor [5.77 h]; Equipment Opreator [11.65 h]; Excavator-Poclain [5.77 h]; Dump Truck [5.77 h]; Lighting poles single arms, height of ( 10 ) meters [0.4 Unit] | 1,362.8 | RA01 | Z6 | CONS | SL | Backfill | AFT |
| RHD4CZ6RA01SL1400 |  | Installation for Lighting Poles for Street Lighting Network - (ROUND-01)-Z6-RA01-SL | 2d | 2027-06-10 | 2027-06-12 | RHD4CZ6RA01SL1300, RHD4CZ6RA01SL3400, RHD4ENMSSL2000, RHD4ENMSSL2010 | -150d | 0d | Skilled labor [8.71 h]; Unskilled Labor [8.71 h]; Electrician [8.71 h]; Equipment Opreator [8.71 h]; Boom Truck [8.71 h]; Lighting poles single arms, height of ( 10 ) meters [4.8 Unit] | 16,353.6 | RA01 | Z6 | CONS | SL | Poles Installation | AFT |
| RHD4CZ6RA01SL1500 |  | Luminaire Installation for Lighting Poles for Street Lighting Network - (ROUND-01)-Z6-RA01-SL | 2d | 2027-06-13 | 2027-06-14 | RHD4CZ6RA01SL1400 | -150d | 0d | Unskilled Labor [11.65 h]; Electrician [5.77 h]; Equipment Opreator [1.2 h]; Boom Truck [2.29 h]; Street Lighting( LED) Luminaire of Output ?10898 lumen [8 Unit] | 4,704 | RA01 | Z6 | CONS | SL | Luminaire Installation | AFT |
|  | 5024 | **RHD4-02-002-RA01-(SL)-Street Lighting Earthing System** |  |  |  |  |  |  |  |  |  |  |  |  |  |  |
|  | 5597 | **RHD4-02-002-Z6-RA01-Telecommunications Network - TC** |  | 2027-06-15 | 2027-06-30 |  |  |  |  |  |  |  |  |  |  |  |
|  | 5598 | **RHD4-02-002-RA01-(TC)-Telecommunications Ducts** |  | 2027-06-15 | 2027-06-21 |  |  |  |  |  |  |  |  |  |  |  |
| RHD4CZ6RA01TC2100 |  | Excavation of HDPE Ducts for Telecom Network - (ROUND-01)-Z6-RA01-TC | 2d | 2027-06-15 | 2027-06-16 | RHD4ENSDZ6APPTC190, RHD4CZ6RA01SL1500 | -150d | 0d | Skilled labor [13.5 h]; Unskilled Labor [13.5 h]; Equipment Opreator [27.01 h]; Excavator-Poclain [13.5 h]; Dump Truck [13.5 h]; (6*50mm) HDPE ducts -TC [16.76 m]; (6*50mm+2*32mm) HDPE ducts -TC [15.36 m]; (6*50mm+4*32mm) HDPE ducts -TC [0.82 m]; (2*32mm) HDPE ducts -TC [4.24 m] | 3,390.86 | RA01 | Z6 | CONS | TC | Excavation | AFT |
| RHD4CZ6RA01TC2200 |  | Installation of HDPE Ducts for Telecom Network - (ROUND-01)-Z6-RA01-TC | 2d | 2027-06-17 | 2027-06-19 | RHD4CZ6RA01TC2100, RHD4PRSHLDOSTC1000, RHD4PRSHLSTAGTC1000 | -150d | 0d | Carpenter [2.07 h]; Skilled labor [20.26 h]; Unskilled Labor [20.26 h]; Steel Fixer [2.07 h]; (6*50mm) HDPE ducts -TC [54.47 m]; (6*50mm+2*32mm) HDPE ducts -TC [49.92 m]; (6*50mm+4*32mm) HDPE ducts -TC [2.67 m]; (2*32mm) HDPE ducts -TC [13.78 m] | 11,020.89 | RA01 | Z6 | CONS | TC | Installing | AFT |
| RHD4CZ6RA01TC2400 |  | Backfilling of HDPE Ducts for Telecom Network - (ROUND-01)-Z6-RA01-TC | 2d | 2027-06-20 | 2027-06-21 | RHD4CZ6RA01TC2200 | -150d | 0d | Skilled labor [13.5 h]; Unskilled Labor [13.5 h]; Equipment Opreator [5.45 h]; Excavator-Poclain [5.45 h]; (6*50mm) HDPE ducts -TC [12.57 m]; (6*50mm+2*32mm) HDPE ducts -TC [11.52 m]; (6*50mm+4*32mm) HDPE ducts -TC [0.62 m]; (2*32mm) HDPE ducts -TC [3.18 m] | 2,543.74 | RA01 | Z6 | CONS | TC | Backfilling | AFT |
|  | 491 | **RHD4-02-002-RA01-(TC)-Telecommunications Manholes** |  | 2027-06-22 | 2027-06-30 |  |  |  |  |  |  |  |  |  |  |  |
| RHD4CZ6RA01TC5100 |  | Excavation for Manholes for Telecom Network - (ROUND-01)-Z6-RA01-TC | 4d | 2027-06-22 | 2027-06-26 | RHD4CZ6RA01TC2400 | -147d | 0d | Skilled labor [13.6 h]; Unskilled Labor [13.6 h]; Equipment Opreator [10.88 h]; Excavator-Poclain [5.44 h]; Dump Truck [5.44 h]; Manhole Type 1 - TC [0.3 nr] | 2,022.3 | C081 | Z1 | CONS | TC | Excavation | AFT |
| RHD4CZ6RA01TC5200 |  | Installation of Manholes for Telecom Network - (ROUND-01)-Z6-RA01-TC | 4d | 2027-06-27 | 2027-06-30 | RHD4CZ6RA01TC5100 | -147d | 3d | Skilled labor [13.6 h]; Unskilled Labor [13.6 h]; Equipment Opreator [5.44 h]; Boom Truck [5.44 h]; Manhole Type 1 - TC [1.7 nr] | 11,459.7 | C081 | Z1 | CONS | TC | Installation | AFT |
|  | 5412 | **RHD4-02-002-Z6-RA01-Information and Communication Technologies - ICT** |  |  |  |  |  |  |  |  |  |  |  |  |  |  |
|  | 5413 | **RHD4-02-002-RA01-(ICT)-Information and Communication Technologies Ducts** |  |  |  |  |  |  |  |  |  |  |  |  |  |  |
|  | 5414 | **RHD4-02-002-RA01-(ICT)-Information and Communication Technologies Manholes** |  |  |  |  |  |  |  |  |  |  |  |  |  |  |
|  | 5592 | **RHD4-02-002-Z6-RA01-Landscape Network - LS** |  |  |  |  |  |  |  |  |  |  |  |  |  |  |
|  | 5593 | **RHD4-02-002-RA01-(LS)-Landscape Lighting cables** |  |  |  |  |  |  |  |  |  |  |  |  |  |  |
|  | 5594 | **RHD4-02-002-RA01-(LS)-Landscape Feeder Pillars** |  |  |  |  |  |  |  |  |  |  |  |  |  |  |
|  | 5595 | **RHD4-02-002-RA01-(LS)-Landscape Bollard Poles** |  |  |  |  |  |  |  |  |  |  |  |  |  |  |
|  | 5596 | **RHD4-02-002-RA01-(LS)-Landscape Feeder Pillars Earthing** |  |  |  |  |  |  |  |  |  |  |  |  |  |  |
|  | 5605 | **RHD4-02-002-Z6-RA01-Security Network - CCTV** |  | 2027-06-22 | 2027-08-10 |  |  |  |  |  |  |  |  |  |  |  |
|  | 5606 | **RHD4-02-002-RA01-(CCTV)-Civil Works** |  | 2027-06-22 | 2027-07-04 |  |  |  |  |  |  |  |  |  |  |  |
| RHD4CZ6RA01CCTV2100 |  | Civil Works for Security Network - (ROUND-01)-Z6-RA01-CCTV | 11d | 2027-06-22 | 2027-07-04 | RHD4CZ6RA01TC2400 | -150d | 0d | Skilled labor [437.12 h]; Unskilled Labor [874.08 h]; Equipment Opreator [437.12 h]; Excavator-Poclain [109.23 h]; Dump Truck [109.23 h]; PECD 110mm with 32mm 5sub ducts [400 m]; Civil works Digging, trenching, laying pipes Meter with supply and installation of Manholes and for power feeding sources related to all towers and poles – (from 35-meter pole to control room and from related UPS camersa distribution boards till overall 2 [300 m] | 52,000 | RA01 | Z6 | CONS | CCTV | Civil Works | AFT |

| ID | WBS | Activity | Duration | Start | Finish | Predecessors | Complete | Planned start | Planned finish | Total float | Free float | Resources | Cost | Actual cost | RDH4-01-001-Road and Block Names-1 | RDH4-01-001-Zones-1 | RDH4-01-001-Phases-1 | RDH4-01-001-Networks-1 | RDH4-01-001-Work Method-1 | RDH4-01-001-MENEM |
| --- | --- | --- | --- | --- | --- | --- | --- | --- | --- | --- | --- | --- | --- | --- | --- | --- | --- | --- | --- | --- |
|  | 5607 | **RHD4-02-002-RA01-(CCTV)-CCTV Poles** |  | 2027-07-05 | 2027-07-15 |  |  |  |  |  |  |  |  |  |  |  |  |  |  |  |
| RHD4CZ6RA01CCTV1100 |  | Excavation for RC Base for CCTV Poles for Security Network - (ROUND-01)-Z6-RA01-CCTV | 2d | 2027-07-05 | 2027-07-06 | RHD4CZ6RA01CCTV2100, RHD4ENSDZ6APPCCTV210, RHD4CZ6RA01TC5200 |  |  |  | -150d | 0d | Skilled labor [13.12 h]; Unskilled Labor [13.12 h]; Equipment Opreator [26.08 h]; Excavator-Poclain [6.53 h]; Dump Truck [6.53 h]; 35 Meters mono pole main pole for all Wireless Devices [0.2 nr]; 25 Meters pole for CCTV Cameras [0.1 nr] | 57,958.2 |  | RA01 | Z6 | CONS | CCTV | Excavation | AFT |
| RHD4CZ6RA01CCTV1200 |  | Installation for RC Base for CCTV Poles for Security Network - (ROUND-01)-Z6-RA01-CCTV | 2d | 2027-07-07 | 2027-07-08 | RHD4CZ6RA01CCTV1100 |  |  |  | -150d | 0d | Skilled labor [13.12 h]; Unskilled Labor [13.12 h]; Equipment Opreator [26.08 h]; Excavator-Poclain [6.53 h]; Dump Truck [6.53 h]; 35 Meters mono pole main pole for all Wireless Devices [0.5 nr]; 25 Meters pole for CCTV Cameras [0.25 nr] | 144,895.5 |  | RA01 | Z6 | CONS | CCTV | RC Base | AFT |
| RHD4CZ6RA01CCTV1300 |  | Backfill for RC Base for CCTV Poles for Security Network - (ROUND-01)-Z6-RA01-CCTV | 2d | 2027-07-10 | 2027-07-11 | RHD4CZ6RA01CCTV1200 |  |  |  | -150d | 0d | Skilled labor [8.32 h]; Unskilled Labor [8.32 h]; Equipment Opreator [16.32 h]; Excavator-Poclain [4.14 h]; Dump Truck [4.14 h]; 35 Meters mono pole main pole for all Wireless Devices [0.1 nr]; 25 Meters pole for CCTV Cameras [0.05 nr] | 28,979.1 |  | RA01 | Z6 | CONS | CCTV | Backfill | AFT |
| RHD4CZ6RA01CCTV1400 |  | Installation for CCTV Poles for Security Network - (ROUND-01)-Z6-RA01-CCTV | 2d | 2027-07-12 | 2027-07-13 | RHD4CZ6RA01CCTV1300, RHD4PRSHLDOSCCTV1000, RHD4PRSHLSTACCTV1000 |  |  |  | -150d | 0d | Skilled labor [21.76 h]; Unskilled Labor [43.52 h]; Electrician [21.76 h]; Equipment Opreator [21.76 h]; Boom Truck [10.89 h]; 35 Meters mono pole main pole for all Wireless Devices [1.2 nr]; 25 Meters pole for CCTV Cameras [0.6 nr] | 347,749.2 |  | RA01 | Z6 | CONS | CCTV | Installation | AFT |
| RHD4CZ6RA01CCTV1500 |  | Protection post Installation for CCTV Poles for Security Network - (ROUND-01)-Z6-RA01-CCTV | 2d | 2027-07-14 | 2027-07-15 | RHD4CZ6RA01CCTV1400 |  |  |  | -145d | 40d | Skilled labor [21.76 h]; Unskilled Labor [43.52 h]; Supply and Installation of minimum 4 Protection Post for each pole or tower with pipe ?220*6mm THK. [1 nr] | 4,903 |  | RA01 | Z6 | CONS | CCTV | Protection post | AFT |
|  | 5608 | **RHD4-02-002-RA01-(CCTV)-Camera** |  | 2027-07-17 | 2027-07-18 |  |  |  |  |  |  |  |  |  |  |  |  |  |  |  |
| RHD4CZ6RA01CCTV3100 |  | Installation for Cameras for Security Network - (ROUND-01)-Z6-RA01-CCTV | 2d | 2027-07-17 | 2027-07-18 | RHD4CZ6RA01CCTV1400, RHD4CZ6RA01CCTV4100, RHD4PRSHLDOSCCTV1100, RHD4PRSHLSTACCTV1100 |  |  |  | -150d | 0d | Unskilled Labor [54.4 h]; Electrician [27.2 h]; Outdoor Camera, 5MP resolution, day/night, fixed bullet camera providing Forensic WDR. [4 nr]; Outdoor PTZ with IR, HDTV 1080 and 31x optical, 12x digital, total 372x zoom, H264/265 with Motion JPEG. [1 nr] | 61,727 |  | RA01 | Z6 | CONS | CCTV | Installation | AFT |
|  | 5609 | **RHD4-02-002-RA01-(CCTV)-Power and Infrastructure** |  | 2027-07-14 | 2027-07-25 |  |  |  |  |  |  |  |  |  |  |  |  |  |  |  |
| RHD4CZ6RA01CCTV4100 |  | Installation of Power outlet, UPS and midspan for PTZ Camerafor Cameras for Security Network - (ROUND-01)-Z6-RA01-CCTV | 2d | 2027-07-14 | 2027-07-15 | RHD4CZ6RA01CCTV1400, RHD4PRSHLDOSCCTV1300, RHD4PRSHLSTACCTV1300 |  |  |  | -150d | 0d | Skilled labor [43.52 h]; Unskilled Labor [174.24 h]; Electrician [87.2 h]; Equipment Opreator [87.2 h]; Excavator-Poclain [21.78 h]; Dump Truck [21.78 h]; Outdoor ready IP66-rated midspan for PTZ Camera (The outdoor- ready midspan should be IP66/IP67- and NEMA 4X-rated [1 nr]; Power Distribution unit 12 outlets located at main pole cabinet . Main cabinet in control room and fed from UPS located at control room [38 nr]; 1.2KVA Industrial type UPS located at FEC remote poles [2 nr]; UPS 20KVA to power for all servers, monitors, and switch in the control, room [1 nr] | 146,710 |  | RA01 | Z6 | CONS | CCTV | Power | AFT |
| RHD4CZ6RA01CCTV4200 |  | Short Range Wireless PoP wireless Bridgefor CCTV Poles for Security Network - (ROUND-01)-Z6-RA01-CCTV | 2d | 2027-07-17 | 2027-07-18 | RHD4CZ6RA01CCTV4100 |  |  |  | -150d | 0d | Skilled labor [21.76 h]; Unskilled Labor [43.52 h]; Electrician [21.76 h]; Equipment Opreator [43.52 h]; Excavator-Poclain [10.89 h]; Dump Truck [10.89 h]; Short Range wireless point to point wireless bridge [4 nr] | 58,548 |  | RA01 | Z6 | CONS | CCTV | Wireless Pop | AFT |
| RHD4CZ6RA01CCTV4300 |  | Fiber Optic Cables for 35m height Pole to Main data Center for CCTV Pole for Security Network - (ROUND-01)-Z6-RA01-CCTV | 6d | 2027-07-19 | 2027-07-25 | RHD4CZ6RA01CCTV4200, RHD4CZ6RA01CCTV3100 |  |  |  | -150d | 0d | Skilled labor [116.16 h]; Unskilled Labor [464.64 h]; Electrician [116.16 h]; Equipment Opreator [232.48 h]; Excavator-Poclain [58.05 h]; Dump Truck [58.05 h]; Single mode 12 fiber outdoor FO cable with splicing tray, patch cables, pigtails etc. to connect 35 meters pole to main data center [800 m] | 14,400 |  | RA01 | Z6 | CONS | CCTV | FO Cables | AFT |
|  | 5610 | **RHD4-02-002-RA01-(CCTV)-Control Room Equipment** |  | 2027-07-31 | 2027-08-10 |  |  |  |  |  |  |  |  |  |  |  |  |  |  |  |
| RHD4CZ6RA01CCTV5100 |  | Installation for Control room Equipment for Security Network - (ROUND-01)-Z6-RA01-CCTV | 8d | 2027-07-31 | 2027-08-08 | RHD4CZ6RA01CCTV6100 |  |  |  | -150d | 0d | Skilled labor [1.6 h]; Unskilled Labor [168.32 h]; Professional joystick for accurate control of PTZ [2 nr]; Surveillance-optimized server for recording CCTV supports simultaneous cameras stream and recording at high resolution [1 nr]; Video analytics computing hardware with below specs: CPU: 1x 12 Cores/24 Threads @ 2.4G GPU: 2x NVIDIA A4000 RAM: 128 GB Storage: (0.5T + 8T) SSD OS: Ubuntu Linux [1 nr]; Video analytics license package all lifetime and for each camera connected to the system [1 nr]; Video analytics license for ANPR for all lifetime and for each camera connected to the system and as specified in item 2. [1 nr]; Security Firewall with minimum 3x GE Ethernet Port , IPS 1Gbps, NGFW 800bps, Threat Protection 600Mpbs and as specified [1 nr]; supply and install Standalone Multiple biometric identification reader with Default verification mode Fingerprint & Face [2 nr]; Cameras Interlink License for overall cameras. [1 nr]; Workstation; Precision T5820/Intel® Xeon W-2223 3.6GHz, 3.9GHz Turbo, 4C/512GB SSD + 2TB 3.5" 7200 RPM/32GB (2x16GB) 2933MHz DDR4 RDIMM ECC/4GB NVIDIA T1000/8x DVD+/-RW, Slimline/950W/3yr BasicWarranty - Pro Support NBD/Windows 10 Pro 64-bit. [4 nr]; Professional LED screen 32 inch for workstations and as specified [4 nr]; videowall processor controller [1 nr]; Professional 55" video wall cube [6 nr] | 2,626,679 |  | RA01 | Z6 | CONS | CCTV | Equipment | AFT |
| RHD4CZ6RA01CCTV5200 |  | Installation of Access Control for Control Room for Security Network - (ROUND-01)-Z6-RA01-CCTV | 2d | 2027-08-09 | 2027-08-10 | RHD4CZ6RA01CCTV5100 |  |  |  | -150d | 0d | Skilled labor [4.32 h]; Unskilled Labor [4.32 h]; supply and install magnetic lock at control room [2 nr] | 1,594 |  | RA01 | Z6 | CONS | CCTV | Access Control | AFT |
|  | 5611 | **RHD4-02-002-RA01-(CCTV)-CCTV Panels and Components** |  | 2027-07-26 | 2027-07-29 |  |  |  |  |  |  |  |  |  |  |  |  |  |  |  |
| RHD4CZ6RA01CCTV6100 |  | Installation for CCTV Panels for Security Network - (ROUND-01)-Z6-RA01-CCTV | 4d | 2027-07-26 | 2027-07-29 | RHD4CZ6RA01CCTV4200, RHD4PRSHLDOSCCTV1200, RHD4PRSHLSTACCTV1200, RHD4PRLOLSTACCTV1001, RHD4CZ6RA01CCTV4300 |  |  |  | -150d | 0d | Skilled labor [83.04 h]; Unskilled Labor [249.12 h]; Electrician [83.04 h]; Floor mounted Filed Equipment cabinet (FEC) , with ventilation fan, NEMA 4X, door minimum size (800x600x600mm), the cabinet/enclosure [2 nr]; Pole mounted Filed Equipment cabinet (FEC) , with fan and ventilation, NEMEX 4X ,door, minimum size (600x600x400mm) , the cabinet/enclosurE [2 nr]; 8 Port Industrial PoE Switch 10/1000BaseT (-40 deg to +70 deg. Celsius) for remote poles and as specifiedin item 15. [1 nr]; 48-Port switch 10/100/1000 with 2X10G SFP UP-LINK at floor FEC cabinet for main pole. and as specified [1 nr]; 24-Port switch 10/100/1000 with 2X10G SFP UP-LINK at main cabinet in control room and as specified in item 16. [1 nr]; 24-Port universal LC-SMOF fiber patch panel with splice tray and fiber fusion, pigtail at main pole cabinet & main cabinet at control room cabinet [2 nr]; 48-Port CAT6A UTP patch panel at main pole cabinet [1 nr]; 24-Port CAT6A UTP patch panel at main cabinet in control room [1 nr]; 47U main Cabinet in control Room with vertical cable management, front glass door and fan with thermostat.and as specified [1 nr]; UTP CAT6 Patch Cord , connect the industrial switch with the cameras, and radio wireless antenna [6 nr]; D Ring horizontal cable management in main cabinets in control room and cabinet at main pole [2 nr] | 273,340 |  | RA01 | Z6 | CONS | CCTV | Equipment | AFT |
|  | 3352 | **RHD4-02-002-Z5** |  | 2026-04-16 | 2028-07-08 |  |  |  |  |  |  |  |  |  |  |  |  |  |  |  |
|  | 3920 | **RHD4-02-002-Z5-C051** |  | 2026-04-16 | 2027-11-28 |  |  |  |  |  |  |  |  |  |  |  |  |  |  |  |
|  | 3951 | **RHD4-02-002-Z5-C051-Crossings Sewage Network - SWCr** |  |  |  |  |  |  |  |  |  |  |  |  |  |  |  |  |  |  |
|  | 3961 | **RHD4-02-002-C051-(SWCr)-MH Works - 1200 mm diameter** |  |  |  |  |  |  |  |  |  |  |  |  |  |  |  |  |  |  |
|  | 3957 | **RHD4-02-002-C051-(SWCr)-UPVC Pipes - 200 mm diameter** |  |  |  |  |  |  |  |  |  |  |  |  |  |  |  |  |  |  |
|  | 3995 | **RHD4-02-002-Z5-C051-Crossings Potable Network - PTCr** |  |  |  |  |  |  |  |  |  |  |  |  |  |  |  |  |  |  |
|  | 3996 | **RHD4-02-002-C051-(PTCr)-HDPE Pipes - 110 mm diameter** |  |  |  |  |  |  |  |  |  |  |  |  |  |  |  |  |  |  |
|  | 4001 | **RHD4-02-002-C051-(PTCr)-Gate Valves (Direct Buried)** |  |  |  |  |  |  |  |  |  |  |  |  |  |  |  |  |  |  |
|  | 4008 | **RHD4-02-002-C051-(PTCr)-Fire Hydrant** |  |  |  |  |  |  |  |  |  |  |  |  |  |  |  |  |  |  |
|  | 4042 | **RHD4-02-002-Z5-C051-Crossings Irrigation Network - IRRC** |  |  |  |  |  |  |  |  |  |  |  |  |  |  |  |  |  |  |
|  | 4043 | **RHD4-02-002-C051-(IRRC)-HDPE Pipes - 160 mm diameter** |  |  |  |  |  |  |  |  |  |  |  |  |  |  |  |  |  |  |
|  | 4051 | **RHD4-02-002-C051-(IRRC)-Gate Valves (Direct Buried)** |  |  |  |  |  |  |  |  |  |  |  |  |  |  |  |  |  |  |
|  | 4099 | **RHD4-02-002-Z5-C051-Road Works - RD** |  | 2026-04-16 | 2027-11-28 |  |  |  |  |  |  |  |  |  |  |  |  |  |  |  |
|  | 4100 | **RHD4-02-002-C051-(RD)-Subgrade** |  | 2026-04-16 | 2026-05-23 |  |  |  |  |  |  |  |  |  |  |  |  |  |  |  |
| RHD4CZ5C051RD1100 |  | Supply, lay and compaction subgrade compacted thickness 300 mm for Roads - (RD-C-5 /1)-Z5-C051-RD | 11d | 2026-04-16 A | 2026-05-23 A | RHD4ENSDZ5APPRD220, RHD4ENSDZ5APPEW100 SS, RHD4CZ5C051ST3301, RHD4CZ5C051ST3300, RHD4CZ5C051ICT3400, RHD4CZ5C051TC3400 | 100% | 2026-08-24 | 2026-09-05 |  |  | Skilled labor [67.52 h]; Unskilled Labor [135.04 h]; Electrician [67.52 h]; Equipment Opreator [461.1 h]; Water Truck [22.33 h]; Roller compactor [33.76 h]; Grader [67.52 h]; Dump Truck [337.6 h]; Subgrade [3247.34 m3] | 61,699.46 | 61,699.46 | C051 | Z5 | CONS | RD | Subgrade | bef |

| ID | WBS | Activity | Duration | Start | Finish | Predecessors | Complete | Remaining | Planned start | Planned finish | Total float | Free float | Resources | Cost | Actual cost | RDH4-01-001-Road and Block Names-1 | RDH4-01-001-Zones-1 | RDH4-01-001-Phases-1 | RDH4-01-001-Networks-1 | RDH4-01-001-Work Method-1 | RDH4-01-001-MENEM |
| --- | --- | --- | --- | --- | --- | --- | --- | --- | --- | --- | --- | --- | --- | --- | --- | --- | --- | --- | --- | --- | --- |
|  | 4101 | **RHD4-02-002-C051-(RD)-Aggregate Base Course** |  | 2027-02-14 | 2027-02-18 |  |  |  |  |  |  |  |  |  |  |  |  |  |  |  |  |
| RHD4CZ5C051RD2100 |  | Supply, lay and compaction Aggregate base course compacted thickness 300 mmfor Roads - (RD-C-5 /1)-Z5-C051-RD | 5d | 2027-02-14 | 2027-02-18 | RHD4CZ5C051RD1100, RHD4PRSHLDOSRD1000, RHD4PRSHLSTAGRD1000 |  |  |  |  | -142d | 0d | Skilled labor [25.05 h]; Unskilled Labor [49.99 h]; Equipment Opreator [316.58 h]; Water Truck [16.55 h]; Roller compactor [49.99 h]; Grader [49.99 h]; Dump Truck [200.06 h]; Aggregate Base Courses [2039.65 m3] | 116,260.05 |  | C051 | Z5 | CONS | RD | ABC | bef |
|  | 4102 | **RHD4-02-002-C051-(RD)-Bituminous base course Two Layers, including (MC1)&(RC2)** |  | 2027-02-20 | 2027-11-01 |  |  |  |  |  |  |  |  |  |  |  |  |  |  |  |  |
| RHD4CZ5C051RD3100 |  | Supply, lay and Asphaltic base course including Prime Coat (MC1) for 1st Layer - (RD-C-5 /1)-Z5-C051-RD | 2d | 2027-02-20 | 2027-02-21 | RHD4CZ5C051RD2100, RHD4PRSHLDOSRD1100, RHD4ENMSASPH2000, RHD4ENMSASPH2010, RHD4PRSHLSTAGRD1100 |  |  |  |  | -142d | 12d | Skilled labor [17.32 h]; Unskilled Labor [103.79 h]; Equipment Opreator [259.41 h]; Bobcat [17.32 h]; Roller compactor [17.32 h]; Asphalt Paver [17.32 h]; Rubber Compactor [34.63 h]; MC1/RC2 Sprinkler [17.32 h]; Dump Truck [155.62 h]; Bituminous base course (Grading I - Class A), including Prime coat (MC1) & tack coate (RC2) [632.81 m3] | 302,483.18 |  | C051 | Z5 | CONS | RD | 150 mm | AFT |
| RHD4CZ5C051RD3200 |  | Supply, lay and Asphaltic base course including Tack Coat (RC2) for 2nd Layer - (RD-C-5 /1)-Z5-C051-RD | 2d | 2027-10-31 | 2027-11-01 | RHD4PRSHLDOSRD1100, RHD4PRSHLSTAGRD1100, RHD4CZ5C051CCTV6100 |  |  |  |  | -155d | 0d | Skilled labor [17.32 h]; Unskilled Labor [103.79 h]; Equipment Opreator [259.41 h]; Bobcat [17.32 h]; Roller compactor [17.32 h]; Asphalt Paver [17.32 h]; Rubber Compactor [34.63 h]; MC1/RC2 Sprinkler [17.32 h]; Dump Truck [155.62 h]; Bituminous base course (Grading I - Class A), including Prime coat (MC1) & tack coate (RC2) [632.81 m3] | 302,483.18 |  | C051 | Z5 | CONS | RD | 150 mm | AFT |
|  | 4104 | **RHD4-02-002-C051-(RD)-Precast Concrete Curb** |  | 2027-11-02 | 2027-11-06 |  |  |  |  |  |  |  |  |  |  |  |  |  |  |  |  |
| RHD4CZ5C051RD5100 |  | Supply and installation Precast Concrete Kerb for Roads - (RD-C-5 /1)-Z5-C051-RD | 4d | 2027-11-02 | 2027-11-06 | RHD4CZ5C051RD3200, RHD4PRSHLDOSRD1200, RHD4ENMSRD2000, RHD4ENMSRD2010, RHD4PRSHLSTAGRD1200 |  |  |  |  | -155d | 0d | Mason [114.46 h]; Skilled labor [38.12 h]; Unskilled Labor [114.46 h]; Equipment Opreator [76.23 h]; Bobcat [38.12 h]; Concrete Mixer Truck [38.12 h]; Precast Concrete Curbstone, type K1 [1576 m] | 86,680 |  | C051 | Z5 | CONS | RD | Curbs | AFT |
|  | 4107 | **RHD4-02-002-C051-(RD)-Traffic Signage** |  | 2027-11-07 | 2027-11-13 |  |  |  |  |  |  |  |  |  |  |  |  |  |  |  |  |
| RHD4CZ5C051RD8100 |  | Installation of Traffic Signage for Road Network - (RD-C-5 /1)-Z5-C051-RD | 6d | 2027-11-07 | 2027-11-13 | RHD4CZ5C051RD5100, RHD4PRSHLDOSRD1600, RHD4PRSHLSTAGRD1600 |  |  |  |  | -155d | 0d | Skilled labor [130.68 h]; Unskilled Labor [65.34 h]; Electrician [4.36 h]; Equipment Opreator [14.81 h]; Boom Truck [13.07 h]; Concrete Mixer Truck [1.74 h]; Traffic signs, ground mounted, 1 Sheet Aluminium, (breakaway)Single post [4 nr] | 4,904 |  | C051 | Z5 | CONS | RD | Traffic Signage | AFT |
|  | 4105 | **RHD4-02-002-C051-(RD)-Precast Interlocking Block Pavers** |  | 2027-11-14 | 2027-11-20 |  |  |  |  |  |  |  |  |  |  |  |  |  |  |  |  |
| RHD4CZ5C051RD6100 |  | Interlocking block pavers for sidewalk-footpath for Side walks and Parking areas - (RD-C-5 /1)-Z5-C051-RD | 6d | 2027-11-14 | 2027-11-20 | RHD4CZ5C051RD8100, RHD4PRSHLDOSRD1300, RHD4PRSHLDOSRD1400, RHD4ENMSRD2000, RHD4ENMSRD2010, RHD4PRSHLSTAGRD1300, RHD4PRSHLSTAGRD1400 |  |  |  |  | -155d | 0d | Skilled labor [116.09 h]; Unskilled Labor [174.25 h]; Equipment Opreator [188.73 h]; Boom Truck [58.05 h]; Bobcat [58.05 h]; Concrete Mixer Truck [58.05 h]; Water Truck [14.48 h]; Interlock 80 mm thick Pavers for parking including sand fill [1333 m2] | 98,642 |  | C051 | Z5 | CONS | RD | Interlocking | AFT |
|  | 4103 | **RHD4-02-002-C051-(RD)-Bituminous concrete wearing course including tack coat (RC2)** |  | 2027-11-21 | 2027-11-22 |  |  |  |  |  |  |  |  |  |  |  |  |  |  |  |  |
| RHD4CZ5C051RD4100 |  | Supply, lay and compaction Asphaltic wearing course including tack Coat (RC2)for Road Network - (RD-C-5 /1)-Z5-C051-RD | 2d | 2027-11-21 | 2027-11-22 | RHD4CZ5C051RD5100, RHD4CZ5C051RD6100 |  |  |  |  | -155d | 0d | Skilled labor [8.93 h]; Unskilled Labor [53.47 h]; Equipment Opreator [133.6 h]; Bobcat [8.93 h]; Roller compactor [8.93 h]; Asphalt Paver [8.93 h]; Rubber Compactor [17.86 h]; MC1/RC2 Sprinkler [8.93 h]; Dump Truck [80.15 h]; Bituminous concrete wearing course, (Grading I - Class A), including tack coat (RC2) [424.98 m3] | 230,764.14 |  | C051 | Z5 | CONS | RD | 50 mm | AFT |
|  | 4108 | **RHD4-02-002-C051-(RD)-Speed Table and Wheel Stopper** |  |  |  |  |  |  |  |  |  |  |  |  |  |  |  |  |  |  |  |
|  | 4106 | **RHD4-02-002-C051-(RD)-Pavement Marking** |  | 2027-11-23 | 2027-11-28 |  |  |  |  |  |  |  |  |  |  |  |  |  |  |  |  |
| RHD4CZ5C051RD7100 |  | Pavement Markings for Road Network - (RD-C-5 /1)-Z5-C051-RD | 5d | 2027-11-23 | 2027-11-28 | RHD4CZ5C051RD4100, RHD4PRSHLDOSRD1500, RHD4PRSHLSTAGRD1500 |  |  |  |  | -155d | 0d | Skilled labor [46.18 h]; Unskilled Labor [92.35 h]; Equipment Opreator [46.18 h]; Road Marking Machine [46.18 h]; Retroreflective Thermoplastic White Traffic Markings [323.6 m2]; Retroreflective Thermoplastic Yellow, Traffic Markings [178.35 m2]; Retroreflective raised pavement markers (cat eyes) [596 nr] | 35,824.45 |  | C051 | Z5 | CONS | RD | Pavement Marking | AFT |
|  | 3924 | **RHD4-02-002-Z5-C051-Storm Network - ST** |  | 2026-08-04 | 2027-02-09 |  |  |  |  |  |  |  |  |  |  |  |  |  |  |  |  |
|  | 3942 | **RHD4-02-002-C051-(ST)-MH Works - 1500 mm diameter** |  | 2026-08-04 | 2027-02-04 |  |  |  |  |  |  |  |  |  |  |  |  |  |  |  |  |
| RHD4CZ5C051ST3101 |  | Excavation and PC Blinding works for MH 1500 mm - (RD-C-5 /1)-Z5-C051-ST | 3d | 2026-08-04 A | 2026-08-06 A | RHD4CZ5C051RW3000, RHD4ENSDZ5APPST110, RHD4PRSHLSTAGST1604, RHD4CZ6C052ST1103, RHD4PRSHLSTAGST1302, RHD4PRSHLSTAGSL1000 | 100% |  | 2026-07-25 | 2026-07-27 |  |  | Skilled labor [21.78 h]; Unskilled Labor [21.78 h]; Equipment Opreator [34.85 h]; Excavator-Poclain [21.78 h]; Water Truck [2.18 h]; Dump Truck [10.89 h]; MH (1500mm Diameter) - ST - depth 1.50 - 2.5m [0.5 nr]; MH (1500mm Diameter) - ST - depth 3.51 - 4.5m [0.25 nr] | 12,566.5 | 12,566.5 | C051 | Z5 | CONS | ST | Excavation | bef |
| RHD4CZ5C051ST3201 |  | Installation of Base for MH 1500 mm - (RD-C-5 /1)-Z5-C051-ST | 2d | 2026-08-06 A | 2026-08-09 A | RHD4CZ5C051ST3101, RHD4PRSHLSTAGST1604 | 100% |  | 2026-07-28 | 2026-07-29 |  |  | Skilled labor [21.78 h]; Unskilled Labor [21.78 h]; Equipment Opreator [8.71 h]; Boom Truck [4.36 h]; Concrete Mixer Truck [4.36 h]; MH (1500mm Diameter) - ST - depth 1.50 - 2.5m [0.5 nr]; MH (1500mm Diameter) - ST - depth 3.51 - 4.5m [0.25 nr] | 12,566.5 | 12,566.5 | C051 | Z5 | CONS | ST | Installing Base | bef |
| RHD4CZ5C051ST3301 |  | MH Ring and C.Slab works and Backfilling works for MH 1500 mm - (RD-C-5 /1)-Z5-C051-ST | 2d | 2026-10-01 A | 2027-01-27 | RHD4CZ5C051ST3201, RHD4PRSHLDOSST1604 | 80% | 2d | 2026-10-20 | 2026-10-21 | -172d | 0d | Skilled labor [21.78 h]; Unskilled Labor [21.78 h]; Equipment Opreator [15.25 h]; Boom Truck [8.71 h]; Concrete Mixer Truck [6.53 h]; MH (1500mm Diameter) - ST - depth 1.50 - 2.5m [0.7 nr]; MH (1500mm Diameter) - ST - depth 3.51 - 4.5m [0.35 nr] | 17,593.1 |  | C051 | Z5 | CONS | ST | Installing Rings | bef |
| RHD4CZ5C051ST3401 |  | Steel Cover for MH 1500 mm - (RD-C-5 /1)-Z5-C051-ST | 2d | 2027-01-28 | 2027-01-30 | RHD4CZ5C051ST3301, RHD4PRSHLDOSST1704, RHD4PRSHLSTAGST1704 |  |  |  |  | -172d | 3d | Skilled labor [10.89 h]; Unskilled Labor [21.78 h]; Equipment Opreator [2.18 h]; Boom Truck [2.18 h]; MH (1500mm Diameter) - ST - depth 1.50 - 2.5m [0.1 nr]; MH (1500mm Diameter) - ST - depth 3.51 - 4.5m [0.05 nr] | 2,513.3 |  | C051 | Z5 | CONS | ST | Steel Cover | bef |
| RHD4CZ5C051ST3501 |  | Finishing, Benching, Testing works for MH 1500 mm - (RD-C-5 /1)-Z5-C051-ST | 2d | 2027-02-03 | 2027-02-04 | RHD4CZ5C051ST3401, RHD4CZ5C051ST2500 |  |  |  |  | -174d | 1d | Skilled labor [21.78 h]; Unskilled Labor [43.56 h]; Plumber [21.78 h]; Equipment Opreator [4.36 h]; Water Truck [4.36 h]; MH (1500mm Diameter) - ST - depth 1.50 - 2.5m [0.2 nr]; MH (1500mm Diameter) - ST - depth 3.51 - 4.5m [0.1 nr] | 5,026.6 |  | C051 | Z5 | CONS | ST | Benching | bef |
|  | 3941 | **RHD4-02-002-C051-(ST)-MH Works - 1200 mm diameter** |  | 2026-08-04 | 2027-02-09 |  |  |  |  |  |  |  |  |  |  |  |  |  |  |  |  |
| RHD4CZ5C051ST3100 |  | Excavation and PC Blinding works for MH 1200 mm - (RD-C-5 /1)-Z5-C051-ST | 3d | 2026-08-04 A | 2026-08-05 A | RHD4CZ5C051ST3101 SS, RHD4ENSDZ5APPST110, RHD4ENMSST2000, RHD4ENMSST2010 | 100% |  | 2026-07-25 | 2026-07-27 |  |  | Skilled labor [29.08 h]; Unskilled Labor [29.08 h]; Equipment Opreator [46.5 h]; Excavator-Poclain [29.08 h]; Water Truck [2.94 h]; Dump Truck [14.48 h]; MH (1200mm Diameter) - ST - depth 1.50 - 2.5m [0.5 nr]; MH (1200mm Diameter) - ST - depth 2.51 - 3.5m [0.75 nr]; MH (1200mm Diameter) - ST - depth 3.51 - 4.5m [0.25 nr]; MH (1200mm Diameter) - ST - depth 4.51 - 5.5m [0.25 nr] | 21,691.75 | 21,691.75 | C051 | Z5 | CONS | ST | Excavation | bef |
| RHD4CZ5C051ST3200 |  | Installation of Base for MH 1200 mm - (RD-C-5 /1)-Z5-C051-ST | 4d | 2026-08-06 A | 2026-08-13 A | RHD4CZ5C051ST3100, RHD4PRSHLSTAGST1604 | 100% |  | 2026-07-28 | 2026-08-01 |  |  | Skilled labor [40 h]; Unskilled Labor [40 h]; Equipment Opreator [16 h]; Boom Truck [7.95 h]; Concrete Mixer Truck [7.95 h]; MH (1200mm Diameter) - ST - depth 1.50 - 2.5m [0.5 nr]; MH (1200mm Diameter) - ST - depth 2.51 - 3.5m [0.75 nr]; MH (1200mm Diameter) - ST - depth 3.51 - 4.5m [0.25 nr]; MH (1200mm Diameter) - ST - depth 4.51 - 5.5m [0.25 nr] | 21,691.75 | 21,691.75 | C051 | Z5 | CONS | ST | Installing Base | bef |
| RHD4CZ5C051ST3300 |  | MH Ring and C.Slab works and Backfilling works for MH 1200 mm - (RD-C-5 /1)-Z5-C051-ST | 4d | 2026-10-07 A | 2027-01-30 | RHD4CZ5C051ST3200, RHD4PRSHLDOSST1604 | 80% | 4d | 2026-10-20 | 2026-10-24 | -172d | 3d | Skilled labor [40 h]; Unskilled Labor [40 h]; Equipment Opreator [28 h]; Boom Truck [16 h]; Concrete Mixer Truck [12 h]; MH (1200mm Diameter) - ST - depth 1.50 - 2.5m [0.7 nr]; MH (1200mm Diameter) - ST - depth 2.51 - 3.5m [1.05 nr]; MH (1200mm Diameter) - ST - depth 3.51 - 4.5m [0.35 nr]; MH (1200mm Diameter) - ST - depth 4.51 - 5.5m [0.35 nr] | 30,368.45 |  | C051 | Z5 | CONS | ST | Installing Rings | bef |
| RHD4CZ5C051ST3400 |  | Steel Cover for MH 1200 mm - (RD-C-5 /1)-Z5-C051-ST | 3d | 2027-02-03 | 2027-02-06 | RHD4CZ5C051ST3300, RHD4CZ5C051ST2500, RHD4PRSHLDOSST1704, RHD4PRSHLSTAGST1704, RHD4CZ5C051ST3401 |  |  |  |  | -175d | 0d | Skilled labor [25.37 h]; Unskilled Labor [50.86 h]; Equipment Opreator [5.12 h]; Boom Truck [5.12 h]; MH (1200mm Diameter) - ST - depth 1.50 - 2.5m [0.1 nr]; MH (1200mm Diameter) - ST - depth 2.51 - 3.5m [0.15 nr]; MH (1200mm Diameter) - ST - depth 3.51 - 4.5m [0.05 nr]; MH (1200mm Diameter) - ST - depth 4.51 - 5.5m [0.05 nr] | 4,338.35 |  | C051 | Z5 | CONS | ST | Steel Cover | bef |
| RHD4CZ5C051ST3500 |  | Finishing, Benching, Testing works for MH 1200 mm - (RD-C-5 /1)-Z5-C051-ST | 3d | 2027-02-07 | 2027-02-09 | RHD4CZ5C051ST3400, RHD4CZ5C051ST3501 |  |  |  |  | -175d | 0d | Skilled labor [29.08 h]; Unskilled Labor [58.05 h]; Plumber [29.08 h]; Equipment Opreator [5.77 h]; Water Truck [5.77 h]; MH (1200mm Diameter) - ST - depth 1.50 - 2.5m [0.2 nr]; MH (1200mm Diameter) - ST - depth 2.51 - 3.5m [0.3 nr]; MH (1200mm Diameter) - ST - depth 3.51 - 4.5m [0.1 nr]; MH (1200mm Diameter) - ST - depth 4.51 - 5.5m [0.1 nr] | 8,676.7 |  | C051 | Z5 | CONS | ST | Benching | bef |

| ID | WBS | Activity | Duration | Start | Finish | Predecessors | Complete | Remaining | Planned start | Planned finish | Total float | Free float | Resources | Cost | Actual cost | RDH4-01-001-Road and Block Names-1 | RDH4-01-001-Zones-1 | RDH4-01-001-Phases-1 | RDH4-01-001-Networks-1 | RDH4-01-001-Work Method-1 | RDH4-01-001-MENEM |
| --- | --- | --- | --- | --- | --- | --- | --- | --- | --- | --- | --- | --- | --- | --- | --- | --- | --- | --- | --- | --- | --- |
|  | 3930 | **RHD4-02-002-C051-(ST)-GRP Pipes - 900 mm diameter** |  |  |  |  |  |  |  |  |  |  |  |  |  |  |  |  |  |  |  |
|  | 3928 | **RHD4-02-002-C051-(ST)-GRP Pipes - 700 mm diameter** |  | 2026-08-04 | 2026-09-20 |  |  |  |  |  |  |  |  |  |  |  |  |  |  |  |  |
| RHD4CZ5C051ST1103 |  | Excavation works for GRP Pipe Line 700 mm - (RD-C-5 /1)-Z5-C051-ST | 2d | 2026-08-04 A | 2026-08-05 A | RHD4ENSDZ5APPST110, RHD4CZ5C051ST3100 | 100% |  | 2026-07-28 | 2026-07-29 |  |  | Skilled labor [14.7 h]; Unskilled Labor [14.7 h]; Equipment Opreator [17.53 h]; Excavator-Poclain [14.7 h]; Dump Truck [2.94 h]; GRP (700mm Diameter) - ST - Depth: 1.51m - 2.5m [40.37 m] | 24,100.89 | 24,100.89 | C051 | Z5 | CONS | ST | Excavation | bef |
| RHD4CZ5C051ST1403 |  | Primary Test for GRP Pipe Line 700 mm - (RD-C-5 /1)-Z5-C051-ST | 2d | 2026-08-04 A | 2026-09-20 A | RHD4CZ5C051ST1303 | 100% |  | 2026-08-04 | 2026-08-05 |  |  | Unskilled Labor [7.3 h]; Plumber [7.3 h]; Equipment Opreator [7.3 h]; Water Truck [7.3 h]; GRP (700mm Diameter) - ST - Depth: 1.51m - 2.5m [53.82 m] | 32,130.54 | 32,130.54 | C051 | Z5 | CONS | ST | Primary Test | bef |
| RHD4CZ5C051ST1203 |  | Bedding works for GRP Pipe Line 700 mm - (RD-C-5 /1)-Z5-C051-ST | 2d | 2026-08-06 A | 2026-08-08 A | RHD4CZ5C051ST1103 | 100% |  | 2026-07-30 | 2026-08-01 |  |  | Skilled labor [14.7 h]; Unskilled Labor [29.3 h]; Equipment Opreator [29.3 h]; Excavator-Poclain [14.7 h]; Dump Truck [14.7 h]; GRP (700mm Diameter) - ST - Depth: 1.51m - 2.5m [13.46 m] | 8,035.62 | 8,035.62 | C051 | Z5 | CONS | ST | Bedding | bef |
| RHD4CZ5C051ST1303 |  | Installing for GRP Pipe Line 700 mm - (RD-C-5 /1)-Z5-C051-ST | 2d | 2026-08-09 A | 2026-08-10 A | RHD4CZ5C051ST1203, RHD4PRSHLSTAGST1004, RHD4PRSHLDOSST1604, RHD4PRSHLPOST1000, RHD4PRSHLDOSST1004 | 100% |  | 2026-08-02 | 2026-08-03 |  |  | Unskilled Labor [14.7 h]; Plumber [7.3 h]; GRP (700mm Diameter) - ST - Depth: 1.51m - 2.5m [107.65 m] | 64,267.05 | 64,267.05 | C051 | Z5 | CONS | ST | Installation | bef |
| RHD4CZ5C051ST1503 |  | Backfilling and warning tape works for GRP Pipe Line 700 mm - (RD-C-5 /1)-Z5-C051-ST | 2d | 2026-08-11 A | 2026-08-12 A | RHD4CZ5C051ST1403 | 100% |  | 2026-08-06 | 2026-08-08 |  |  | Skilled labor [14.7 h]; Unskilled Labor [29.3 h]; Equipment Opreator [29.3 h]; Excavator-Poclain [14.7 h]; Dump Truck [14.7 h]; GRP (700mm Diameter) - ST - Depth: 1.51m - 2.5m [53.82 m] | 32,130.54 | 32,130.54 | C051 | Z5 | CONS | ST | Backfilling | bef |
|  | 3927 | **RHD4-02-002-C051-(ST)-GRP Pipes - 600 mm diameter** |  | 2026-08-04 | 2027-02-02 |  |  |  |  |  |  |  |  |  |  |  |  |  |  |  |  |
| RHD4CZ5C051ST1102 |  | Excavation works for GRP Pipe Line 600 mm - (RD-C-5 /1)-Z5-C051-ST | 3d | 2026-08-04 A | 2026-09-19 A | RHD4CZ5C051ST1103, RHD4ENSDZ5APPST110 | 100% |  | 2026-07-30 | 2026-08-02 |  |  | Skilled labor [28.42 h]; Unskilled Labor [28.42 h]; Equipment Opreator [34.09 h]; Excavator-Poclain [28.42 h]; Dump Truck [5.66 h]; GRP (600mm Diameter) - ST - Depth: 1.51m - 2.5m [25.87 m]; GRP (600mm Diameter) - ST - Depth: 2.51m - 3.5m [48.94 m]; GRP (600mm Diameter) - ST - Depth: 3.51m - 4.5m [12.19 m] | 52,589.37 | 52,589.37 | C051 | Z5 | CONS | ST | Excavation | bef |
| RHD4CZ5C051ST1202 |  | Bedding works for GRP Pipe Line 600 mm - (RD-C-5 /1)-Z5-C051-ST | 3d | 2026-08-06 A | 2026-09-20 A | RHD4CZ5C051ST1102 | 100% |  | 2026-08-03 | 2026-08-05 |  |  | Skilled labor [28.42 h]; Unskilled Labor [56.85 h]; Equipment Opreator [56.85 h]; Excavator-Poclain [28.42 h]; Dump Truck [28.42 h]; GRP (600mm Diameter) - ST - Depth: 1.51m - 2.5m [8.62 m]; GRP (600mm Diameter) - ST - Depth: 2.51m - 3.5m [16.31 m]; GRP (600mm Diameter) - ST - Depth: 3.51m - 4.5m [4.06 m] | 17,523.48 | 17,523.48 | C051 | Z5 | CONS | ST | Bedding | bef |
| RHD4CZ5C051ST1302 |  | Installing for GRP Pipe Line 600 mm - (RD-C-5 /1)-Z5-C051-ST | 3d | 2026-08-09 A | 2026-09-21 A | RHD4CZ5C051ST1202, RHD4PRSHLSTAGST1004, RHD4PRSHLDOSST1604, RHD4PRSHLPOST1000, RHD4PRSHLDOSST1004 | 100% |  | 2026-08-06 | 2026-08-09 |  |  | Unskilled Labor [56.85 h]; Plumber [28.42 h]; GRP (600mm Diameter) - ST - Depth: 1.51m - 2.5m [68.99 m]; GRP (600mm Diameter) - ST - Depth: 2.51m - 3.5m [130.5 m]; GRP (600mm Diameter) - ST - Depth: 3.51m - 4.5m [32.5 m] | 140,230.35 | 140,230.35 | C051 | Z5 | CONS | ST | Installation | bef |
| RHD4CZ5C051ST1502 |  | Backfilling and warning tape works for GRP Pipe Line 600 mm - (RD-C-5 /1)-Z5-C051-ST | 3d | 2026-08-11 A | 2026-09-22 A | RHD4CZ5C051ST1402 | 100% |  | 2026-08-13 | 2026-08-16 |  |  | Skilled labor [28.42 h]; Unskilled Labor [56.85 h]; Equipment Opreator [56.85 h]; Excavator-Poclain [28.42 h]; Dump Truck [28.42 h]; GRP (600mm Diameter) - ST - Depth: 1.51m - 2.5m [34.49 m]; GRP (600mm Diameter) - ST - Depth: 2.51m - 3.5m [65.25 m]; GRP (600mm Diameter) - ST - Depth: 3.51m - 4.5m [16.25 m] | 70,112.85 | 70,112.85 | C051 | Z5 | CONS | ST | Backfilling | bef |
| RHD4CZ5C051ST1402 |  | Primary Test for GRP Pipe Line 600 mm - (RD-C-5 /1)-Z5-C051-ST | 3d | 2026-09-19 A | 2027-02-02 | RHD4CZ5C051ST1302 | 30% | 7d | 2026-08-10 | 2026-08-12 | -175d | 0d | Unskilled Labor [28.42 h]; Plumber [28.42 h]; Equipment Opreator [28.42 h]; Water Truck [28.42 h]; GRP (600mm Diameter) - ST - Depth: 1.51m - 2.5m [34.49 m]; GRP (600mm Diameter) - ST - Depth: 2.51m - 3.5m [65.25 m]; GRP (600mm Diameter) - ST - Depth: 3.51m - 4.5m [16.25 m] | 70,112.85 |  | C051 | Z5 | CONS | ST | Primary Test | bef |
|  | 2413 | **RHD4-02-002-C051-(ST)-GRP Pipes - 500 mm diameter** |  | 2026-08-04 | 2026-09-20 |  |  |  |  |  |  |  |  |  |  |  |  |  |  |  |  |
| RHD4CZ5C051ST1101 |  | Excavation works for GRP Pipe Line 500 mm - (RD-C-5 /1)-Z5-C051-ST | 2d | 2026-08-04 A | 2026-08-05 A | RHD4CZ5C051ST1102 | 100% |  | 2026-08-03 | 2026-08-04 |  |  | Skilled labor [7.2 h]; Unskilled Labor [7.2 h]; Equipment Opreator [8.6 h]; Excavator-Poclain [7.2 h]; Dump Truck [1.42 h]; GRP (500mm Diameter) - ST - Depth: 2.51m - 3.5m [14.83 m]; GRP (500mm Diameter) - ST - Depth: more than 3.5m [18.54 m] | 21,560.93 | 21,560.93 | C051 | Z5 | CONS | ST | Excavation | bef |
| RHD4CZ5C051ST1201 |  | Bedding works for GRP Pipe Line 500 mm - (RD-C-5 /1)-Z5-C051-ST | 2d | 2026-08-06 A | 2026-08-08 A | RHD4CZ5C051ST1101 | 100% |  | 2026-08-05 | 2026-08-06 |  |  | Skilled labor [7.2 h]; Unskilled Labor [14.4 h]; Equipment Opreator [14.4 h]; Excavator-Poclain [7.2 h]; Dump Truck [7.2 h]; GRP (500mm Diameter) - ST - Depth: 2.51m - 3.5m [4.94 m]; GRP (500mm Diameter) - ST - Depth: more than 3.5m [6.18 m] | 7,185.16 | 7,185.16 | C051 | Z5 | CONS | ST | Bedding | bef |
| RHD4CZ5C051ST1301 |  | Installing for GRP Pipe Line 500 mm - (RD-C-5 /1)-Z5-C051-ST | 2d | 2026-08-09 A | 2026-08-10 A | RHD4CZ5C051ST1201 | 100% |  | 2026-08-08 | 2026-08-09 |  |  | Unskilled Labor [14.4 h]; Plumber [7.2 h]; GRP (500mm Diameter) - ST - Depth: 2.51m - 3.5m [39.55 m]; GRP (500mm Diameter) - ST - Depth: more than 3.5m [49.44 m] | 57,497.63 | 57,497.63 | C051 | Z5 | CONS | ST | Installation | bef |
| RHD4CZ5C051ST1501 |  | Backfilling and warning tape works for GRP Pipe Line 500 mm - (RD-C-5 /1)-Z5-C051-ST | 2d | 2026-08-11 A | 2026-08-12 A | RHD4CZ5C051ST1401 | 100% |  | 2026-08-12 | 2026-08-13 |  |  | Skilled labor [7.2 h]; Unskilled Labor [14.4 h]; Equipment Opreator [14.4 h]; Excavator-Poclain [7.2 h]; Dump Truck [7.2 h]; GRP (500mm Diameter) - ST - Depth: 2.51m - 3.5m [19.77 m]; GRP (500mm Diameter) - ST - Depth: more than 3.5m [24.72 m] | 28,746.09 | 28,746.09 | C051 | Z5 | CONS | ST | Backfilling | bef |
| RHD4CZ5C051ST1401 |  | Primary Test for GRP Pipe Line 500 mm - (RD-C-5 /1)-Z5-C051-ST | 2d | 2026-09-19 A | 2026-09-20 A | RHD4CZ5C051ST1301 | 100% |  | 2026-08-10 | 2026-08-11 |  |  | Unskilled Labor [7.2 h]; Plumber [7.2 h]; Equipment Opreator [7.2 h]; Water Truck [7.2 h]; GRP (500mm Diameter) - ST - Depth: 2.51m - 3.5m [19.77 m]; GRP (500mm Diameter) - ST - Depth: more than 3.5m [24.72 m] | 28,746.09 | 28,746.09 | C051 | Z5 | CONS | ST | Primary Test | bef |
|  | 2994 | **RHD4-02-002-C051-(ST)-UPVC Pipes - 400 mm diameter** |  | 2026-08-04 | 2027-01-27 |  |  |  |  |  |  |  |  |  |  |  |  |  |  |  |  |
| RHD4CZ5C051ST2101 |  | Excavation works for UPVC Pipe Line 400 mm - (RD-C-5 /1)-Z5-C051-ST | 2d | 2026-08-04 A | 2026-08-05 A | RHD4CZ5C051ST1103 | 100% |  | 2026-07-30 | 2026-08-01 |  |  | Skilled labor [2.18 h]; Unskilled Labor [2.18 h]; Equipment Opreator [2.72 h]; Excavator-Poclain [2.18 h]; Dump Truck [0.44 h]; UPVC (400mm Diameter) - ST - Depth less than 1.5 [5.12 m] | 2,314.24 | 2,314.24 | C051 | Z5 | CONS | ST | Excavation | bef |
| RHD4CZ5C051ST2201 |  | Bedding works for UPVC Pipe Line 400 mm - (RD-C-5 /1)-Z5-C051-ST | 2d | 2026-08-06 A | 2026-08-08 A | RHD4CZ5C051ST2101 | 100% |  | 2026-08-02 | 2026-08-03 |  |  | Skilled labor [1.85 h]; Unskilled Labor [3.7 h]; Equipment Opreator [3.7 h]; Excavator-Poclain [1.85 h]; Dump Truck [1.85 h]; UPVC (400mm Diameter) - ST - Depth less than 1.5 [2.56 m] | 1,157.12 | 1,157.12 | C051 | Z5 | CONS | ST | Bedding | bef |
| RHD4CZ5C051ST2301 |  | Installing for UPVC Pipe Line 400 mm - (RD-C-5 /1)-Z5-C051-ST | 2d | 2026-08-09 A | 2026-08-10 A | RHD4CZ5C051ST2201 | 100% |  | 2026-08-04 | 2026-08-05 |  |  | Unskilled Labor [7.41 h]; Plumber [3.7 h]; UPVC (400mm Diameter) - ST - Depth less than 1.5 [23.03 m] | 10,409.56 | 10,409.56 | C051 | Z5 | CONS | ST | Installation | bef |
| RHD4CZ5C051ST2501 |  | Backfilling and warning tape works for UPVC Pipe Line 400 mm - (RD-C-5 /1)-Z5-C051-ST | 2d | 2026-08-11 A | 2026-08-12 A | RHD4CZ5C051ST2401 | 100% |  | 2026-08-09 | 2026-08-10 |  |  | Skilled labor [2.83 h]; Unskilled Labor [5.55 h]; Equipment Opreator [5.55 h]; Excavator-Poclain [2.83 h]; Dump Truck [2.83 h]; UPVC (400mm Diameter) - ST - Depth less than 1.5 [10.24 m] | 4,628.48 | 4,628.48 | C051 | Z5 | CONS | ST | Backfilling | bef |
| RHD4CZ5C051ST2401 |  | Primary Test for UPVC Pipe Line 400 mm - (RD-C-5 /1)-Z5-C051-ST | 2d | 2027-01-26 | 2027-01-27 | RHD4CZ5C051ST2301 |  |  |  |  | -172d | 0d | Unskilled Labor [1.09 h]; Plumber [1.09 h]; Equipment Opreator [1.09 h]; Water Truck [1.09 h]; UPVC (400mm Diameter) - ST - Depth less than 1.5 [10.24 m] | 4,628.48 |  | C051 | Z5 | CONS | ST | Primary Test | bef |

| ID | WBS | Activity | Duration | Start | Finish | Predecessors | Complete | Planned start | Planned finish | Total float | Free float | Resources | Cost | Actual cost | RDH4-01-001-Road and Block Names-1 | RDH4-01-001-Zones-1 | RDH4-01-001-Phases-1 | RDH4-01-001-Networks-1 | RDH4-01-001-Work Method-1 | RDH4-01-001-MENEM |
| --- | --- | --- | --- | --- | --- | --- | --- | --- | --- | --- | --- | --- | --- | --- | --- | --- | --- | --- | --- | --- |
|  | 3939 | **RHD4-02-002-C051-(ST)-UPVC Pipes - 300 mm diameter** |  | 2026-08-04 | 2027-01-30 |  |  |  |  |  |  |  |  |  |  |  |  |  |  |  |
| RHD4CZ5C051ST2100 |  | Excavation works for UPVC Pipe Line 300 mm - (RD-C-5 /1)-Z5-C051-ST | 3d | 2026-08-04 A | 2026-08-06 A | RHD4ENSDZ5APPST110, RHD4CZ5C051ST2101 SS | 100% | 2026-07-30 | 2026-08-02 |  |  | Skilled labor [24.72 h]; Unskilled Labor [24.72 h]; Equipment Opreator [29.73 h]; Excavator-Poclain [24.72 h]; Dump Truck [4.9 h]; UPVC (300mm Diameter) - ST - Depth less than 1.5 [53.26 m]; UPVC (300mm Diameter) - ST - Depth: 1.51m - 2.5m | 16,137.78 | 16,137.78 | C051 | Z5 | CONS | ST | Excavation | bef |
| RHD4CZ5C051ST2200 |  | Bedding works for UPVC Pipe Line 300 mm - (RD-C-5 /1)-Z5-C051-ST | 3d | 2026-08-08 A | 2026-08-10 A | RHD4CZ5C051ST2100 | 100% | 2026-08-03 | 2026-08-05 |  |  | Skilled labor [21.89 h]; Unskilled Labor [43.78 h]; Equipment Opreator [43.78 h]; Excavator-Poclain [21.89 h]; Dump Truck [21.89 h]; UPVC (300mm Diameter) - ST - Depth less than 1.5 [26.63 m]; UPVC (300mm Diameter) - ST - Depth: 1.51m - 2.5m | 8,068.89 | 8,068.89 | C051 | Z5 | CONS | ST | Bedding | bef |
| RHD4CZ5C051ST2300 |  | Installing for UPVC Pipe Line 300 mm - (RD-C-5 /1)-Z5-C051-ST | 3d | 2026-08-11 A | 2026-08-13 A | RHD4CZ5C051ST2200, RHD4PRSHLDOSST1104, RHD4PRSHLSTAGST1104, RHD4CZ5C051ST2501 | 100% |  |  |  |  | Unskilled Labor [49.44 h]; Plumber [24.72 h]; UPVC (300mm Diameter) - ST - Depth less than 1.5 [239.65 m]; UPVC (300mm Diameter) - ST - Depth: 1.51m - 2.5m | 72,613.95 | 72,613.95 | C051 | Z5 | CONS | ST | Installation | bef |
| RHD4CZ5C051ST2500 |  | Backfilling and warning tape works for UPVC Pipe Line 300 mm - (RD-C-5 /1)-Z5-C051-ST | 3d | 2026-08-15 A | 2026-08-17 A | RHD4CZ5C051ST2400, RHD4CZ5C051ST6100, RHD4CZ5C051ST1502, RHD4CZ5C051ST1503 | 100% | 2026-08-17 | 2026-08-19 |  |  | Skilled labor [28.97 h]; Unskilled Labor [58.05 h]; Equipment Opreator [58.05 h]; Excavator-Poclain [28.97 h]; Dump Truck [28.97 h]; UPVC (300mm Diameter) - ST - Depth less than 1.5 [106.51 m]; UPVC (300mm Diameter) - ST - Depth: 1.51m - 2.5m | 32,272.53 | 32,272.53 | C051 | Z5 | CONS | ST | Backfilling | bef |
| RHD4CZ5C051ST2400 |  | Primary Test for UPVC Pipe Line 300 mm - (RD-C-5 /1)-Z5-C051-ST | 2d | 2027-01-28 | 2027-01-30 | RHD4CZ5C051ST2300 |  |  |  | -172d | 3d | Unskilled Labor [16.23 h]; Plumber [16.23 h]; Equipment Opreator [16.23 h]; Water Truck [16.23 h]; UPVC (300mm Diameter) - ST - Depth less than 1.5 [106.51 m]; UPVC (300mm Diameter) - ST - Depth: 1.51m - 2.5m | 32,272.53 |  | C051 | Z5 | CONS | ST | Primary Test | bef |
|  | 3947 | **RHD4-02-002-C051-(ST)-Concrete Encasement** |  | 2027-01-28 | 2027-01-30 |  |  |  |  |  |  |  |  |  |  |  |  |  |  |  |
| RHD4CZ5C051ST6100 |  | Pipe Encasement for Storm Pipelines - (RD-C-5 /1)-Z5-C051-ST | 2d | 2027-01-28 | 2027-01-30 | RHD4CZ5C051ST2300 SS, RHD4CZ5C051ST2300 FF, RHD4CZ5C051ST2200 |  |  |  | -172d | 3d | Skilled labor [5.23 h]; Unskilled Labor [5.23 h]; Equipment Opreator [5.77 h]; Concrete Mixer Truck [0.54 h]; Dump Truck [5.23 h]; Pipe Encasement - ST [95.61 m3] | 48,378.66 |  | C051 | Z5 | CONS | ST | Pipe Encasement | bef |
|  | 3948 | **RHD4-02-002-Z5-C051-Catch Basin - ST** |  | 2026-08-04 | 2027-02-16 |  |  |  |  |  |  |  |  |  |  |  |  |  |  |  |
|  | 3949 | **RHD4-02-002-C051-(ST)-Single Catch Basin Works** |  | 2026-08-04 | 2027-02-16 |  |  |  |  |  |  |  |  |  |  |  |  |  |  |  |
| RHD4CZ5C051ST7100 |  | Excavation works for Single Catch Basin - (RD-C-5 /1)-Z5-C051-ST | 3d | 2026-08-04 A | 2026-08-06 A | RHD4ENSDZ5APPST110, RHD4CZ5C051ST2100 | 100% | 2026-08-03 | 2026-08-05 |  |  | Skilled labor [31.58 h]; Unskilled Labor [63.2 h]; Equipment Opreator [47.37 h]; Excavator-Poclain [31.58 h]; Dump Truck [15.79 h]; Single Catch basin - ST [7.25 nr] | 27,049.75 | 27,049.75 | C051 | Z5 | CONS | ST | Excavation | bef |
| RHD4CZ5C051ST7200 |  | PC Blinding, Installation and Pipe connection for Single Catch Basin - (RD-C-5 /1)-Z5-C051-ST | 3d | 2026-08-06 A | 2026-08-09 A | RHD4CZ5C051ST7100 | 100% |  |  |  |  | Skilled labor [31.58 h]; Unskilled Labor [63.2 h]; Plumber [15.79 h]; Equipment Opreator [6.32 h]; Boom Truck [6.32 h]; Single Catch basin - ST [5.8 nr] | 21,639.8 | 21,639.8 | C051 | Z5 | CONS | ST | Installation & Pipe Connection | bef |
| RHD4CZ5C051ST7300 |  | Rings & C.Slab & Final Backfill for Single Catch Basin - (RD-C-5 /1)-Z5-C051-ST | 4d | 2026-09-19 A | 2026-09-22 A | RHD4CZ5C051ST7200, RHD4PRSHLDOSST1304, RHD4PRSHLSTAGST1304 | 100% | 2026-08-10 | 2026-08-13 |  |  | Skilled labor [39.53 h]; Unskilled Labor [78.96 h]; Equipment Opreator [47.37 h]; Boom Truck [7.95 h]; Bobcat [39.53 h]; Single Catch basin - ST [10.15 nr] | 37,869.65 | 37,869.65 | C051 | Z5 | CONS | ST | Rings | bef |
| RHD4CZ5C051ST7400 |  | Steel Cover for Single Catch Basin - (RD-C-5 /1)-Z5-C051-ST | 3d | 2027-01-26 | 2027-01-28 | RHD4CZ5C051ST7300, RHD4PRSHLDOSST1704 |  |  |  | -165d | 10d | Skilled labor [31.58 h]; Unskilled Labor [31.58 h]; Equipment Opreator [6.32 h]; Boom Truck [6.32 h]; Single Catch basin - ST [1.45 nr] | 5,409.95 |  | C051 | Z5 | CONS | ST | Steel Cover | bef |
| RHD4CZ5C051ST7500 |  | Finishing and Insulation works for Single Catch Basin - (RD-C-5 /1)-Z5-C051-ST | 6d | 2027-02-10 | 2027-02-16 | RHD4CZ5C051ST7400, RHD4CZ5C051ST3500 |  |  |  | -175d | 13d | Skilled labor [63.2 h]; Unskilled Labor [126.33 h]; Equipment Opreator [12.63 h]; Boom Truck [12.63 h]; Single Catch basin - ST [4.35 nr] | 16,229.85 |  | C051 | Z5 | CONS | ST | Insulation | bef |
|  | 6409 | **RHD4-02-002-C051-(ST)-Double Catch Basin Works** |  | 2026-08-04 | 2027-01-30 |  |  |  |  |  |  |  |  |  |  |  |  |  |  |  |
| RHD4CZ5C051ST8100 |  | Excavation works for Double Catch Basin - (RD-C-5 /1)-Z5-C051-ST | 2d | 2026-08-04 A | 2026-08-06 A | RHD4CZ5C051ST2100 | 100% | 2026-08-03 | 2026-08-04 |  |  | Skilled labor [2.18 h]; Unskilled Labor [4.36 h]; Equipment Opreator [3.27 h]; Excavator-Poclain [2.18 h]; Dump Truck [1.09 h]; Double Catch basin - ST [0.25 nr] | 3,491.5 | 3,491.5 | C051 | Z5 | CONS | ST | Excavation | bef |
| RHD4CZ5C051ST8200 |  | PC Blinding, Installation and Pipe connection for Double Catch Basin - (RD-C-5 /1)-Z5-C051-ST | 2d | 2026-08-06 A | 2026-08-09 A | RHD4CZ5C051ST8100 | 100% | 2026-08-05 | 2026-08-06 |  |  | Skilled labor [2.18 h]; Unskilled Labor [4.36 h]; Plumber [1.09 h]; Equipment Opreator [0.44 h]; Boom Truck [0.44 h]; Double Catch basin - ST [0.2 nr] | 2,793.2 | 2,793.2 | C051 | Z5 | CONS | ST | Installation & Pipe Connection | bef |
| RHD4CZ5C051ST8300 |  | Rings & C.Slab & Final Backfillfor Double Catch Basin - (RD-C-5 /1)-Z5-C051-ST | 2d | 2026-09-19 A | 2026-09-20 A | RHD4CZ5C051ST8200 | 100% | 2026-08-08 | 2026-08-09 |  |  | Skilled labor [2.72 h]; Unskilled Labor [5.45 h]; Equipment Opreator [3.27 h]; Boom Truck [0.54 h]; Bobcat [2.72 h]; Double Catch basin - ST [0.35 nr] | 4,888.1 | 4,888.1 | C051 | Z5 | CONS | ST | Rings | bef |
| RHD4CZ5C051ST8400 |  | Steel Cover for Double Catch Basin - (RD-C-5 /1)-Z5-C051-ST | 2d | 2027-01-26 | 2027-01-27 | RHD4CZ5C051ST8300 |  |  |  | -180d | 0d | Skilled labor [2.18 h]; Unskilled Labor [2.18 h]; Equipment Opreator [0.44 h]; Boom Truck [0.44 h]; Double Catch basin - ST [0.05 nr] | 698.3 |  | C051 | Z5 | CONS | ST | Steel Cover | bef |
| RHD4CZ5C051ST8500 |  | Finishing and Insulation works for Double Catch Basin - (RD-C-5 /1)-Z5-C051-ST | 2d | 2027-01-28 | 2027-01-30 | RHD4CZ5C051ST8400 |  |  |  | -180d | 17.02d | Skilled labor [5.45 h]; Unskilled Labor [10.89 h]; Equipment Opreator [1.09 h]; Boom Truck [1.09 h]; Double Catch basin - ST [0.15 nr] | 2,094.9 |  | C051 | Z5 | CONS | ST | Insulation | bef |
|  | 3973 | **RHD4-02-002-Z5-C051-Sewage Network - SW** |  | 2026-08-08 | 2027-03-03 |  |  |  |  |  |  |  |  |  |  |  |  |  |  |  |
|  | 957 | **RHD4-02-002-C051-(SW)-MH Works - 1200 mm diameter with Back drop** |  | 2026-08-09 | 2027-02-16 |  |  |  |  |  |  |  |  |  |  |  |  |  |  |  |
| RHD4CZ5C051SW3101 |  | Excavation and PC Blinding works for MH 1200 mm - (RD-C-5 /1)-Z5-C051-SW | 2d | 2026-08-09 A | 2026-08-10 A | RHD4CZ5C051ST2100, RHD4CZ5C051ST3500 | 100% | 2026-08-27 | 2026-08-29 |  |  | Skilled labor [5.45 h]; Unskilled Labor [5.45 h]; Equipment Opreator [8.71 h]; Excavator-Poclain [5.45 h]; Water Truck [0.54 h]; Dump Truck [2.72 h]; MH (1200mm Diameter) - SW - depth 2.51- 3.5 m with back drop [0.25 nr] | 4,003.75 | 4,003.75 | C051 | Z5 | CONS | SW | Excavation | bef |
| RHD4CZ5C051SW3201 |  | Installation of Base for MH 1200 mm - (RD-C-5 /1)-Z5-C051-SW | 2d | 2026-08-12 A | 2026-08-13 A | RHD4CZ5C051SW3101 | 100% | 2026-08-30 | 2026-08-31 |  |  | Skilled labor [5.45 h]; Unskilled Labor [5.45 h]; Equipment Opreator [2.18 h]; Boom Truck [1.09 h]; Concrete Mixer Truck [1.09 h]; MH (1200mm Diameter) - SW - depth 2.51- 3.5 m with back drop [0.25 nr] | 4,003.75 | 4,003.75 | C051 | Z5 | CONS | SW | Installing Base | bef |
| RHD4CZ5C051SW3301 |  | MH Ring and C.Slab works and Backfilling works for MH 1200 mm - (RD-C-5 /1)-Z5-C051-SW | 2d | 2027-02-10 | 2027-02-11 | RHD4CZ5C051SW3201 |  |  |  | -156d | 0d | Skilled labor [5.45 h]; Unskilled Labor [5.45 h]; Equipment Opreator [3.81 h]; Boom Truck [2.18 h]; Concrete Mixer Truck [1.6 h]; MH (1200mm Diameter) - SW - depth 2.51- 3.5 m with back drop [0.35 nr] | 5,605.25 |  | C051 | Z5 | CONS | SW | Installing Rings | bef |
| RHD4CZ5C051SW3401 |  | Steel Cover for MH 1200 mm - (RD-C-5 /1)-Z5-C051-SW | 2d | 2027-02-13 | 2027-02-14 | RHD4CZ5C051SW3301 |  |  |  | -156d | 0d | Skilled labor [3.59 h]; Unskilled Labor [7.3 h]; Equipment Opreator [0.8 h]; Boom Truck [0.8 h]; MH (1200mm Diameter) - SW - depth 2.51- 3.5 m with back drop [0.05 nr] | 800.75 |  | C051 | Z5 | CONS | SW | Steel Cover | bef |
| RHD4CZ5C051SW3501 |  | Finishing, Benching, Testing works for MH 1200 mm - (RD-C-5 /1)-Z5-C051-SW | 2d | 2027-02-15 | 2027-02-16 | RHD4CZ5C051SW3401 |  |  |  | -156d | 20d | Skilled labor [5.45 h]; Unskilled Labor [10.89 h]; Plumber [5.45 h]; Equipment Opreator [1.09 h]; Water Truck [1.09 h]; MH (1200mm Diameter) - SW - depth 2.51- 3.5 m with back drop [0.1 nr] | 1,601.5 |  | C051 | Z5 | CONS | SW | Benching | bef |

| ID | WBS | Activity | Duration | Start | Finish | Predecessors | Complete | Remaining | Planned start | Planned finish | Total float | Free float | Resources | Cost | Actual cost | RDH4-01-001-Road and Block Names-1 | RDH4-01-001-Zones-1 | RDH4-01-001-Phases-1 | RDH4-01-001-Networks-1 | RDH4-01-001-Work Method-1 | RDH4-01-001-MENEM |
| --- | --- | --- | --- | --- | --- | --- | --- | --- | --- | --- | --- | --- | --- | --- | --- | --- | --- | --- | --- | --- | --- |
|  | 3794 | **RHD4-02-002-C051-(SW)-MH Works - 1200 mm diameter** |  | 2026-08-09 | 2027-03-03 |  |  |  |  |  |  |  |  |  |  |  |  |  |  |  |  |
| RHD4CZ5C051SW3100 |  | Excavation and PC Blinding works for MH 1200 mm - (RD-C-5 /1)-Z5-C051-SW | 5d | 2026-08-09 A | 2026-08-10 A | RHD4CZ5C051SW2100 | 100% |  | 2026-09-03 | 2026-09-08 |  |  | Skilled labor [54.45 h]; Unskilled Labor [54.45 h]; Equipment Opreator [87.12 h]; Excavator-Poclain [54.45 h]; Water Truck [5.45 h]; Dump Truck [27.2 h]; MH (1200mm Diameter) - SW - depth 1.51 - 2.5m [1.5 nr]; MH (1200mm Diameter) - SW - depth 2.51 - 3.5m [0.5 nr]; MH (1200mm Diameter) - SW - depth 3.51 -4.5m [0.5 nr] | 26,811 | 26,811 | C051 | Z5 | CONS | SW | Excavation | bef |
| RHD4CZ5C051SW3200 |  | Installation of Base for MH 1200 mm - (RD-C-5 /1)-Z5-C051-SW | 7d | 2026-08-11 A | 2026-08-12 A | RHD4CZ5C051SW3100 | 100% |  | 2026-09-09 | 2026-09-16 |  |  | Skilled labor [76.23 h]; Unskilled Labor [76.23 h]; Equipment Opreator [30.49 h]; Boom Truck [15.25 h]; Concrete Mixer Truck [15.25 h]; MH (1200mm Diameter) - SW - depth 1.51 - 2.5m [1.5 nr]; MH (1200mm Diameter) - SW - depth 2.51 - 3.5m [0.5 nr]; MH (1200mm Diameter) - SW - depth 3.51 -4.5m [0.5 nr] | 26,811 | 26,811 | C051 | Z5 | CONS | SW | Installing Base | bef |
| RHD4CZ5C051SW3300 |  | MH Ring and C.Slab works and Backfilling works for MH 1200 mm - (RD-C-5 /1)-Z5-C051-SW | 7d | 2027-02-10 | 2027-02-17 | RHD4CZ5C051SW3200 |  |  |  |  | -154d | 0d | Skilled labor [76.23 h]; Unskilled Labor [76.23 h]; Equipment Opreator [53.36 h]; Boom Truck [30.49 h]; Concrete Mixer Truck [22.87 h]; MH (1200mm Diameter) - SW - depth 1.51 - 2.5m [2.1 nr]; MH (1200mm Diameter) - SW - depth 2.51 - 3.5m [0.7 nr]; MH (1200mm Diameter) - SW - depth 3.51 -4.5m [0.7 nr] | 37,535.4 |  | C051 | Z5 | CONS | SW | Installing Rings | bef |
| RHD4CZ5C051SW3400 |  | Steel Cover for MH 1200 mm - (RD-C-5 /1)-Z5-C051-SW | 4d | 2027-02-18 | 2027-02-23 | RHD4CZ5C051SW3300 |  |  |  |  | -154d | 0d | Skilled labor [36.26 h]; Unskilled Labor [72.64 h]; Equipment Opreator [7.3 h]; Boom Truck [7.3 h]; MH (1200mm Diameter) - SW - depth 1.51 - 2.5m [0.3 nr]; MH (1200mm Diameter) - SW - depth 2.51 - 3.5m [0.1 nr]; MH (1200mm Diameter) - SW - depth 3.51 -4.5m [0.1 nr] | 5,362.2 |  | C051 | Z5 | CONS | SW | Steel Cover | bef |
| RHD4CZ5C051SW3500 |  | Finishing, Benching, Testing works for MH 1200 mm - (RD-C-5 /1)-Z5-C051-SW | 7d | 2027-02-24 | 2027-03-03 | RHD4CZ5C051SW3400 |  |  |  |  | -154d | 0d | Skilled labor [76.23 h]; Unskilled Labor [152.46 h]; Plumber [76.23 h]; Equipment Opreator [15.25 h]; Water Truck [15.25 h]; MH (1200mm Diameter) - SW - depth 1.51 - 2.5m [0.6 nr]; MH (1200mm Diameter) - SW - depth 2.51 - 3.5m [0.2 nr]; MH (1200mm Diameter) - SW - depth 3.51 -4.5m [0.2 nr] | 10,724.4 |  | C051 | Z5 | CONS | SW | Benching | bef |
|  | 3979 | **RHD4-02-002-C051-(SW)-UPVC Pipes - 200 mm diameter** |  | 2026-08-08 | 2026-09-20 |  |  |  |  |  |  |  |  |  |  |  |  |  |  |  |  |
| RHD4CZ5C051SW2100 |  | Excavation works for UPVC Pipe Line 200 mm - (RD-C-5 /1)-Z5-C051-SW | 4d | 2026-08-08 A | 2026-08-11 A | RHD4ENSDZ5APPSW120, RHD4CZ5C051SW3101 | 100% |  | 2026-08-30 | 2026-09-02 |  |  | Skilled labor [34.4 h]; Unskilled Labor [34.4 h]; Equipment Opreator [41.27 h]; Excavator-Poclain [34.4 h]; Dump Truck [6.86 h]; UPVC (200mm Diameter) - SW - Depth: less than 1.5m [29.67 m]; UPVC (200mm Diameter) - SW - Depth: 1.51m - 2.5m [14.69 m]; UPVC (200mm Diameter) - SW - Depth: 2.51m - 3.5m [26.97 m] | 16,781.15 | 16,781.15 | C051 | Z5 | CONS | SW | Excavation | bef |
| RHD4CZ5C051SW2200 |  | Bedding works for UPVC Pipe Line 200 mm - (RD-C-5 /1)-Z5-C051-SW | 4d | 2026-08-12 A | 2026-08-14 A | RHD4CZ5C051SW2100 | 100% |  | 2026-09-03 | 2026-09-07 |  |  | Skilled labor [33.65 h]; Unskilled Labor [67.41 h]; Equipment Opreator [67.41 h]; Excavator-Poclain [33.65 h]; Dump Truck [33.65 h]; UPVC (200mm Diameter) - SW - Depth: less than 1.5m [14.84 m]; UPVC (200mm Diameter) - SW - Depth: 1.51m - 2.5m [4.9 m]; UPVC (200mm Diameter) - SW - Depth: 2.51m - 3.5m [8.99 m] | 6,485.44 | 6,485.44 | C051 | Z5 | CONS | SW | Bedding | bef |
| RHD4CZ5C051SW2300 |  | Installing for UPVC Pipe Line 200 mm - (RD-C-5 /1)-Z5-C051-SW | 4d | 2026-08-15 A | 2026-08-18 A | RHD4CZ5C051SW2200, RHD4PRSHLSTAGSW1004, RHD4CZ5C051ST1501, RHD4PRSHLPOSW1000, RHD4PRSHLDOSSW1004, RHD4PRSHLDOSSW1304, RHD4PRSHLPOSW1100, RHD4PRSHLDOSSW1104 | 100% |  | 2026-09-08 | 2026-09-12 |  |  | Unskilled Labor [74.4 h]; Plumber [37.14 h]; Equipment Opreator [37.14 h]; Boom Truck [37.14 h]; UPVC (200mm Diameter) - SW - Depth: less than 1.5m [133.54 m]; UPVC (200mm Diameter) - SW - Depth: 1.51m - 2.5m [39.17 m]; UPVC (200mm Diameter) - SW - Depth: 2.51m - 3.5m [71.91 m] | 54,541.55 | 54,541.55 | C051 | Z5 | CONS | SW | Installation | bef |
| RHD4CZ5C051SW2500 |  | Backfilling and warning tape works for UPVC Pipe Line 200 mm - (RD-C-5 /1)-Z5-C051-SW | 4d | 2026-08-17 A | 2026-08-22 A | RHD4CZ5C051SW2400 | 100% |  | 2026-09-16 | 2026-09-20 |  |  | Skilled labor [35.39 h]; Unskilled Labor [70.9 h]; Equipment Opreator [70.9 h]; Excavator-Poclain [35.39 h]; Dump Truck [35.39 h]; UPVC (200mm Diameter) - SW - Depth: less than 1.5m [59.35 m]; UPVC (200mm Diameter) - SW - Depth: 1.51m - 2.5m [19.59 m]; UPVC (200mm Diameter) - SW - Depth: 2.51m - 3.5m [35.95 m] | 25,934.73 | 25,934.73 | C051 | Z5 | CONS | SW | Backfilling | bef |
| RHD4CZ5C051SW2400 |  | Primary Test for UPVC Pipe Line 200 mm - (RD-C-5 /1)-Z5-C051-SW | 3d | 2026-09-13 A | 2026-09-20 A | RHD4CZ5C051SW2300 | 100% |  | 2026-09-13 | 2026-09-15 |  |  | Unskilled Labor [23.63 h]; Plumber [23.63 h]; Equipment Opreator [23.63 h]; Water Truck [23.63 h]; UPVC (200mm Diameter) - SW - Depth: less than 1.5m [59.35 m]; UPVC (200mm Diameter) - SW - Depth: 1.51m - 2.5m [19.59 m]; UPVC (200mm Diameter) - SW - Depth: 2.51m - 3.5m [35.95 m] | 25,934.73 | 25,934.73 | C051 | Z5 | CONS | SW | Primary Test | bef |
|  | 4010 | **RHD4-02-002-Z5-C051-Potable Network - PT** |  | 2026-08-04 | 2027-03-17 |  |  |  |  |  |  |  |  |  |  |  |  |  |  |  |  |
|  | 4011 | **RHD4-02-002-C051-(PT)-HDPE Pipes - 110 mm diameter** |  | 2026-08-04 | 2027-03-08 |  |  |  |  |  |  |  |  |  |  |  |  |  |  |  |  |
| RHD4CZ5C051PT1100 |  | Excavation works for HDPE Pipline 110 mm - (RD-C-5 /1)-Z5-C051-PT | 2d | 2026-08-04 A | 2026-08-05 A | RHD4CZ5C051SW2500, RHD4ENSDZ5APPPT130, RHD4ENMSPT2000, RHD4CZ5C051SW3300, RHD4CZ5C051SW3500 | 100% |  | 2026-10-10 | 2026-10-11 |  |  | Skilled labor [4.47 h]; Unskilled Labor [4.47 h]; Equipment Opreator [5.34 h]; Excavator-Poclain [4.47 h]; Dump Truck [0.87 h]; HDPE (110mm Diameter) - PT - Depth: less than 1.5m [10.26 m] | 872.1 | 872.1 | C051 | Z5 | CONS | PT | Excavation | bef |
| RHD4CZ5C051PT1200 |  | Bedding works for HDPE Pipline 110 mm - (RD-C-5 /1)-Z5-C051-PT | 2d | 2026-08-06 A | 2026-08-08 A | RHD4CZ5C051PT1100 | 100% |  | 2026-10-12 | 2026-10-13 |  |  | Skilled labor [3.7 h]; Unskilled Labor [7.41 h]; Equipment Opreator [7.41 h]; Excavator-Poclain [3.7 h]; Dump Truck [3.7 h]; HDPE (110mm Diameter) - PT - Depth: less than 1.5m [5.13 m] | 436.05 | 436.05 | C051 | Z5 | CONS | PT | Bedding | bef |
| RHD4CZ5C051PT1300 |  | Installing for HDPE Pipline 110 mm - (RD-C-5 /1)-Z5-C051-PT | 2d | 2026-08-08 A | 2026-08-09 A | RHD4CZ5C051PT1200, RHD4PRSHLDOSPT1000, RHD4PRSHLSTAGPT1000 | 100% |  | 2026-10-14 | 2026-10-15 |  |  | Unskilled Labor [14.92 h]; Plumber [7.41 h]; Equipment Opreator [7.41 h]; Boom Truck [7.41 h]; HDPE (110mm Diameter) - PT - Depth: less than 1.5m [46.17 m] | 3,924.45 | 3,924.45 | C051 | Z5 | CONS | PT | Installation | bef |
| RHD4CZ5C051PT1400 |  | Primary Test for HDPE Pipline 110 mm - (RD-C-5 /1)-Z5-C051-PT | 2d | 2027-03-04 | 2027-03-06 | RHD4CZ5C051PT1300 |  |  |  |  | -154d | 0d | Unskilled Labor [2.29 h]; Plumber [2.29 h]; Equipment Opreator [2.29 h]; Water Truck [2.29 h]; HDPE (110mm Diameter) - PT - Depth: less than 1.5m [20.52 m] | 1,744.2 |  | C051 | Z5 | CONS | PT | Primary Test | bef |
| RHD4CZ5C051PT1500 |  | Backfilling and warning tape works for HDPE Pipline 110 mm - (RD-C-5 /1)-Z5-C051-PT | 2d | 2027-03-07 | 2027-03-08 | RHD4CZ5C051PT1400 |  |  |  |  | -154d | 0d | Skilled labor [5.55 h]; Unskilled Labor [11.2 h]; Equipment Opreator [11.2 h]; Excavator-Poclain [5.55 h]; Dump Truck [5.55 h]; HDPE (110mm Diameter) - PT - Depth: less than 1.5m [20.52 m] | 1,744.2 |  | C051 | Z5 | CONS | PT | Backfilling | bef |
|  | 4012 | **RHD4-02-002-C051-(PT)-HDPE Pipes - 160 mm diameter** |  | 2026-08-04 | 2027-03-15 |  |  |  |  |  |  |  |  |  |  |  |  |  |  |  |  |
| RHD4CZ5C051PT1101 |  | Excavation works for HDPE Pipline 160 mm - (RD-C-5 /1)-Z5-C051-PT | 2d | 2026-08-04 A | 2027-02-11 | RHD4CZ5C051SW2500, RHD4ENSDZ5APPPT130, RHD4ENMSPT2000 | 20% | 2d | 2026-09-21 | 2026-09-22 | -134d | 0d | Skilled labor [17.97 h]; Unskilled Labor [17.97 h]; Equipment Opreator [21.6 h]; Excavator-Poclain [17.97 h]; Dump Truck [3.59 h]; HDPE (160mm Diameter) - PT - Depth: less than 1.5m [41.19 m] | 4,407.12 |  | C051 | Z5 | CONS | PT | Excavation | bef |
| RHD4CZ5C051PT1201 |  | Bedding works for HDPE Pipline 160 mm - (RD-C-5 /1)-Z5-C051-PT | 2d | 2026-08-06 A | 2027-02-14 | RHD4CZ5C051PT1101 | 20% | 2d | 2026-09-24 | 2026-09-26 | -116d | 0d | Skilled labor [14.92 h]; Unskilled Labor [29.95 h]; Equipment Opreator [29.95 h]; Excavator-Poclain [14.92 h]; Dump Truck [14.92 h]; HDPE (160mm Diameter) - PT - Depth: less than 1.5m [20.59 m] | 2,203.56 |  | C051 | Z5 | CONS | PT | Bedding | bef |
| RHD4CZ5C051PT1301 |  | Installing for HDPE Pipline 160 mm - (RD-C-5 /1)-Z5-C051-PT | 3d | 2026-08-08 A | 2027-02-17 | RHD4CZ5C051PT1201, RHD4PRSHLDOSPT1000, RHD4PRSHLSTAGPT1000 | 20% | 3d | 2026-09-27 | 2026-09-29 | -116d | 13d | Unskilled Labor [59.79 h]; Plumber [29.95 h]; Equipment Opreator [29.95 h]; Boom Truck [29.95 h]; HDPE (160mm Diameter) - PT - Depth: less than 1.5m [185.35 m] | 19,832.02 |  | C051 | Z5 | CONS | PT | Installation | bef |
| RHD4CZ5C051PT1401 |  | Primary Test for HDPE Pipline 160 mm - (RD-C-5 /1)-Z5-C051-PT | 2d | 2027-03-07 | 2027-03-08 | RHD4CZ5C051PT1301, RHD4CZ5C051PT3100 |  |  |  |  | -129d | 0d | Unskilled Labor [8.93 h]; Plumber [8.93 h]; Equipment Opreator [8.93 h]; Water Truck [8.93 h]; HDPE (160mm Diameter) - PT - Depth: less than 1.5m [82.38 m] | 8,814.23 |  | C051 | Z5 | CONS | PT | Primary Test | bef |
| RHD4CZ5C051PT1501 |  | Backfilling and warning tape works for HDPE Pipline 160 mm - (RD-C-5 /1)-Z5-C051-PT | 3d | 2027-03-13 | 2027-03-15 | RHD4CZ5C051PT1401 |  |  |  |  | -129d | 0d | Skilled labor [22.4 h]; Unskilled Labor [44.87 h]; Equipment Opreator [44.87 h]; Excavator-Poclain [22.4 h]; Dump Truck [22.4 h]; HDPE (160mm Diameter) - PT - Depth: less than 1.5m [82.38 m] | 8,814.23 |  | C051 | Z5 | CONS | PT | Backfilling | bef |

| ID | WBS | Activity | Duration | Start | Finish | Predecessors | Total float | Free float | Resources | Cost | RDH4-01-001-Road and Block Names-1 | RDH4-01-001-Zones-1 | RDH4-01-001-Phases-1 | RDH4-01-001-Networks-1 | RDH4-01-001-Work Method-1 | RDH4-01-001-MENEM |
| --- | --- | --- | --- | --- | --- | --- | --- | --- | --- | --- | --- | --- | --- | --- | --- | --- |
|  | 4016 | **RHD4-02-002-C051-(PT)-Gate Valves (Direct Buried)** |  | 2027-03-04 | 2027-03-17 |  |  |  |  |  |  |  |  |  |  |  |
| RHD4CZ5C051PT3100 |  | Installation for Direct Buried Gate Valves - (RD-C-5 /1)-Z5-C051-PT | 2d | 2027-03-04 | 2027-03-06 | RHD4CZ5C051PT1301 FF, RHD4CZ5C051PT1300 FF, RHD4CZ5C051PT1301 SS, RHD4CZ5C051PT1300 SS, RHD4PRSHLDOSPT1200, RHD4PRSHLSTAGPT1200 | -129d | 0d | Unskilled Labor [10.89 h]; Plumber [10.89 h]; Gate valves dia 100 mm - PT [1.8 nr] | 1,996.2 | C051 | Z5 | CONS | PT | Installation | bef |
| RHD4CZ5C051PT3200 |  | Stem and Service box for Direct Buried Gate Valves - (RD-C-5 /1)-Z5-C051-PT | 2d | 2027-03-16 | 2027-03-17 | RHD4CZ5C051PT3100, RHD4CZ5C051PT1501, RHD4CZ5C051PT1500, RHD4PRSHLDOSPT1300, RHD4PRSHLSTAGPT1300, RHD4PRSHLSTAGSW1304 | -129d | 16.02d | Unskilled Labor [10.89 h]; Plumber [10.89 h]; Gate valves dia 100 mm - PT [0.2 nr] | 221.8 | C051 | Z5 | CONS | PT | Stem and Service box | bef |
|  | 4021 | **RHD4-02-002-C051-(PT)-Air Valve Chambers** |  |  |  |  |  |  |  |  |  |  |  |  |  |  |
|  | 4022 | **RHD4-02-002-C051-(PT)-Air Valves** |  |  |  |  |  |  |  |  |  |  |  |  |  |  |
|  | 4023 | **RHD4-02-002-C051-(PT)-Fire Hydrant** |  |  |  |  |  |  |  |  |  |  |  |  |  |  |
|  | 4024 | **RHD4-02-002-C051-(PT)-Concrete Encasement** |  |  |  |  |  |  |  |  |  |  |  |  |  |  |
|  | 4025 | **RHD4-02-002-Z5-C051-Irrigation Network - IRR** |  | 2027-03-13 | 2027-04-08 |  |  |  |  |  |  |  |  |  |  |  |
|  | 4026 | **RHD4-02-002-C051-(IRR)-HDPE Pipes - 160 mm diameter** |  | 2027-03-13 | 2027-04-01 |  |  |  |  |  |  |  |  |  |  |  |
| RHD4CZ5C051IRR1100 |  | Excavation works for HDPE Pipline 160 mm - (RD-C-5 /1)-Z5-C051-IRR | 4d | 2027-03-13 | 2027-03-16 | RHD4CZ5C051PT1101, RHD4CZ5C051PT1100, RHD4ENSDZ5APPIRR140, RHD4ENMSRR2000, RHD4CZ5C051PT1500, RHD4CZ5C051RD3100, RHD4CZ5C051ST7500 | -154d | 0d | Skilled labor [41.27 h]; Unskilled Labor [41.27 h]; Equipment Opreator [49.55 h]; Excavator-Poclain [41.27 h]; Dump Truck [8.28 h]; HDPE (160mm Diameter) - TSE - Depth: less than 1.5m [40.61 m]; HDPE (160mm Diameter) - TSE - Depth: more than 1.51m [24.44 m] | 8,685.47 | C051 | Z5 | CONS | IRR | Excavation | bef |
| RHD4CZ5C051IRR1200 |  | Bedding works for HDPE Pipline 160 mm - (RD-C-5 /1)-Z5-C051-IRR | 4d | 2027-03-17 | 2027-03-21 | RHD4CZ5C051IRR1100 | -154d | 0d | Skilled labor [33.98 h]; Unskilled Labor [67.85 h]; Equipment Opreator [67.85 h]; Excavator-Poclain [33.98 h]; Dump Truck [33.98 h]; HDPE (160mm Diameter) - TSE - Depth: less than 1.5m [20.3 m]; HDPE (160mm Diameter) - TSE - Depth: more than 1.51m [8.15 m] | 3,728.16 | C051 | Z5 | CONS | IRR | Bedding | bef |
| RHD4CZ5C051IRR1300 |  | Installing for HDPE Pipline 160 mm - (RD-C-5 /1)-Z5-C051-IRR | 4d | 2027-03-22 | 2027-03-25 | RHD4CZ5C051IRR1200, RHD4PRSHLDOSIRR1000, RHD4PRSHLSTAGIRR1000 | -154d | 0d | Unskilled Labor [82.66 h]; Plumber [41.27 h]; Equipment Opreator [41.27 h]; Boom Truck [41.27 h]; HDPE (160mm Diameter) - TSE - Depth: less than 1.5m [182.75 m]; HDPE (160mm Diameter) - TSE - Depth: more than 1.51m [65.17 m] | 32,318.31 | C051 | Z5 | CONS | IRR | Installation | bef |
| RHD4CZ5C051IRR1400 |  | Primary Test for HDPE Pipline 160 mm - (RD-C-5 /1)-Z5-C051-IRR | 2d | 2027-03-27 | 2027-03-28 | RHD4CZ5C051IRR1300, RHD4CZ5C051IRR5100, RHD4CZ5C051IRR3100 | -154d | 0d | Unskilled Labor [14.81 h]; Plumber [14.81 h]; Equipment Opreator [14.81 h]; Water Truck [14.81 h]; HDPE (160mm Diameter) - TSE - Depth: less than 1.5m [81.22 m]; HDPE (160mm Diameter) - TSE - Depth: more than 1.51m [32.58 m] | 14,909.64 | C051 | Z5 | CONS | IRR | Primary Test | bef |
| RHD4CZ5C051IRR1500 |  | Backfilling and warning tape works for HDPE Pipline 160 mm - (RD-C-5 /1)-Z5-C051-IRR | 4d | 2027-03-29 | 2027-04-01 | RHD4CZ5C051IRR1400 | -154d | 0d | Skilled labor [33.98 h]; Unskilled Labor [67.85 h]; Equipment Opreator [67.85 h]; Excavator-Poclain [33.98 h]; Dump Truck [33.98 h]; HDPE (160mm Diameter) - TSE - Depth: less than 1.5m [81.22 m]; HDPE (160mm Diameter) - TSE - Depth: more than 1.51m [32.58 m] | 14,909.64 | C051 | Z5 | CONS | IRR | Backfilling | bef |
|  | 4034 | **RHD4-02-002-C051-(IRR)-Gate Valves (Direct Buried)** |  | 2027-03-24 | 2027-04-04 |  |  |  |  |  |  |  |  |  |  |  |
| RHD4CZ5C051IRR3100 |  | Installation for Direct Buried Gate Valves - (RD-C-5 /1)-Z5-C051-IRR | 2d | 2027-03-24 | 2027-03-25 | RHD4CZ5C051IRR1300 SS, RHD4CZ5C051IRR1300 FF, RHD4PRSHLDOSIRR1100, RHD4PRSHLSTAGIRR1100 | -154d | 0d | Unskilled Labor [10.89 h]; Plumber [10.89 h]; Gate valves dia 100 mm - TSE [1.8 nr] | 2,844 | C051 | Z5 | CONS | IRR | Installation | bef |
| RHD4CZ5C051IRR3200 |  | Stem and Service box for Direct Buried Gate Valves - (RD-C-5 /1)-Z5-C051-IRR | 2d | 2027-04-03 | 2027-04-04 | RHD4CZ5C051IRR3100, RHD4CZ5C051IRR1500, RHD4PRSHLDOSIRR1300, RHD4PRSHLSTAGIRR1300 | -154d | 0d | Unskilled Labor [10.89 h]; Plumber [10.89 h]; Gate valves dia 100 mm - TSE [0.2 nr] | 316 | C051 | Z5 | CONS | IRR | Stem and Service box | bef |
|  | 4037 | **RHD4-02-002-C051-(IRR)-Wash out Chamber** |  | 2027-03-27 | 2027-04-04 |  |  |  |  |  |  |  |  |  |  |  |
| RHD4CZ5C051IRR2101 |  | Excavation and Bedding for Wash out Chamber for Irrigation Network - (RD-C-5 /1)-Z5-C051-IRR | 2d | 2027-03-27 | 2027-03-28 | RHD4ENSDZ5APPIRR140, RHD4CZ5C051IRR3100 | -130d | 0d | Skilled labor [5.45 h]; Unskilled Labor [5.45 h]; Equipment Opreator [1.09 h]; Excavator-Poclain [0.54 h]; Dump Truck [0.54 h]; Wash out chambers - TSE [0.25 nr] | 4,686.25 | C051 | Z5 | CONS | IRR | Excavation and Bedding | bef |
| RHD4CZ5C051IRR2201 |  | PC works for Wash out Chamber for Irrigation Network - (RD-C-5 /1)-Z5-C051-IRR | 2d | 2027-03-29 | 2027-03-30 | RHD4CZ5C051IRR2101 | -130d | 0d | Skilled labor [5.45 h]; Unskilled Labor [10.89 h]; Equipment Opreator [0.54 h]; Concrete Pump [0.54 h]; Wash out chambers - TSE [0.1 nr] | 1,874.5 | C051 | Z5 | CONS | IRR | PC Works | bef |
| RHD4CZ5C051IRR2301 |  | Installation for Wash out Chamber for Irrigation Network - (RD-C-5 /1)-Z5-C051-IRR | 2d | 2027-03-31 | 2027-04-01 | RHD4CZ5C051IRR2201, RHD4PRSHLDOSIRR1200, RHD4PRSHLDOSIRR1400, RHD4PRSHLSTAGIRR1200, RHD4PRSHLSTAGIRR1400 | -130d | 0d | Skilled labor [5.45 h]; Unskilled Labor [10.89 h]; Equipment Opreator [1.09 h]; Boom Truck [1.09 h]; Wash out chambers - TSE [0.55 nr] | 10,309.75 | C051 | Z5 | CONS | IRR | Installation | bef |
| RHD4CZ5C051IRR2401 |  | Backfilling works for Wash out Chamber for Irrigation Network - (RD-C-5 /1)-Z5-C051-IRR | 2d | 2027-04-03 | 2027-04-04 | RHD4CZ5C051IRR2301 | -130d | 0d | Skilled labor [5.45 h]; Unskilled Labor [10.89 h]; Equipment Opreator [1.09 h]; Water Truck [0.54 h]; Dump Truck [0.54 h]; Wash out chambers - TSE [0.1 nr] | 1,874.5 | C051 | Z5 | CONS | IRR | Backfilling Works | bef |
|  | 4038 | **RHD4-02-002-C051-(IRR)-Wash out Valves** |  | 2027-04-03 | 2027-04-06 |  |  |  |  |  |  |  |  |  |  |  |
| RHD4CZ5C051IRR3102 |  | Installation for Wash out Valve for Irrigation Network - (RD-C-5 /1)-Z5-C051-IRR | 2d | 2027-04-03 | 2027-04-04 | RHD4CZ5C051IRR2301, RHD4PRSHLDOSIRR1100, RHD4PRSHLSTAGIRR1100 | -130d | 0d | Unskilled Labor [5.45 h]; Plumber [5.45 h]; Wash out valve diameter 100 mm - TSE [0.9 nr] | 3,373.2 | C051 | Z5 | CONS | IRR | Installation | bef |
| RHD4CZ5C051IRR3202 |  | Stem and Service box for Wash out Valve for Irrigation Network - (RD-C-5 /1)-Z5-C051-IRR | 2d | 2027-04-05 | 2027-04-06 | RHD4CZ5C051IRR3102, RHD4CZ5C051IRR2401, RHD4PRSHLDOSIRR1300, RHD4PRSHLSTAGIRR1300 | -130d | 0d | Unskilled Labor [5.45 h]; Plumber [5.45 h]; Wash out valve diameter 100 mm - TSE [0.1 nr] | 374.8 | C051 | Z5 | CONS | IRR | Stem and Service box | bef |

| ID | WBS | Activity | Duration | Start | Finish | Predecessors | Complete | Planned start | Planned finish | Total float | Free float | Resources | Cost | Actual cost | RDH4-01-001-Road and Block Names-1 | RDH4-01-001-Zones-1 | RDH4-01-001-Phases-1 | RDH4-01-001-Networks-1 | RDH4-01-001-Work Method-1 | RDH4-01-001-MENEM |
| --- | --- | --- | --- | --- | --- | --- | --- | --- | --- | --- | --- | --- | --- | --- | --- | --- | --- | --- | --- | --- |
|  | 4039 | **RHD4-02-002-C051-(IRR)-Air Valve Chamber** |  | 2027-03-27 | 2027-04-04 |  |  |  |  |  |  |  |  |  |  |  |  |  |  |  |
| RHD4CZ5C051IRR2102 |  | Excavation and Bedding for Valve Chamber for Irrigation Network - (RD-C-5 /1)-Z5-C051-IRR | 2d | 2027-03-27 | 2027-03-28 | RHD4ENSDZ5APPIRR140, RHD4CZ5C051IRR3100 |  |  |  | -128d | 0d | Skilled labor [5.45 h]; Unskilled Labor [5.45 h]; Equipment Opreator [1.09 h]; Excavator-Poclain [0.54 h]; Dump Truck [0.54 h]; Air Valve chambers - TSE [0.25 nr] | 1,193 |  | C051 | Z5 | CONS | IRR | Excavation and Bedding | bef |
| RHD4CZ5C051IRR2202 |  | PC works for Valve Chamber for Irrigation Network - (RD-C-5 /1)-Z5-C051-IRR | 2d | 2027-03-29 | 2027-03-30 | RHD4CZ5C051IRR2102 |  |  |  | -128d | 0d | Skilled labor [5.45 h]; Unskilled Labor [10.89 h]; Equipment Opreator [0.54 h]; Concrete Pump [0.54 h]; Air Valve chambers - TSE [0.1 nr] | 477.2 |  | C051 | Z5 | CONS | IRR | PC Works | bef |
| RHD4CZ5C051IRR2302 |  | Installation for Valve Chamber for Irrigation Network - (RD-C-5 /1)-Z5-C051-IRR | 2d | 2027-03-31 | 2027-04-01 | RHD4CZ5C051IRR2202, RHD4PRSHLDOSIRR1200, RHD4PRSHLDOSIRR1400, RHD4PRSHLSTAGIRR1200, RHD4PRSHLSTAGIRR1400 |  |  |  | -128d | 0d | Skilled labor [5.45 h]; Unskilled Labor [10.89 h]; Equipment Opreator [1.09 h]; Boom Truck [1.09 h]; Air Valve chambers - TSE [0.55 nr] | 2,624.6 |  | C051 | Z5 | CONS | IRR | Installation | bef |
| RHD4CZ5C051IRR2402 |  | Backfilling works for Valve Chamber for Irrigation Network - (RD-C-5 /1)-Z5-C051-IRR | 2d | 2027-04-03 | 2027-04-04 | RHD4CZ5C051IRR2302 |  |  |  | -128d | 2d | Skilled labor [5.45 h]; Unskilled Labor [10.89 h]; Equipment Opreator [1.09 h]; Water Truck [0.54 h]; Dump Truck [0.54 h]; Air Valve chambers - TSE [0.1 nr] | 477.2 |  | C051 | Z5 | CONS | IRR | Backfilling Works | bef |
|  | 4040 | **RHD4-02-002-C051-(IRR)-Air Valves** |  | 2027-04-03 | 2027-04-08 |  |  |  |  |  |  |  |  |  |  |  |  |  |  |  |
| RHD4CZ5C051IRR3103 |  | Installation for Air Valves for Irrigation Network - (RD-C-5 /1)-Z5-C051-IRR | 2d | 2027-04-03 | 2027-04-04 | RHD4CZ5C051IRR2302, RHD4PRSHLDOSIRR1100, RHD4PRSHLSTAGIRR1100 |  |  |  | -128d | 2d | Unskilled Labor [5.45 h]; Plumber [5.45 h]; Air valve diameter 50 mm - TSE [0.9 nr] | 4,427.1 |  | C051 | Z5 | CONS | IRR | Installation | bef |
| RHD4CZ5C051IRR3203 |  | Stem and Service box for Air Valves for Irrigation Network - (RD-C-5 /1)-Z5-C051-IRR | 2d | 2027-04-07 | 2027-04-08 | RHD4CZ5C051IRR3103, RHD4CZ5C051IRR2402, RHD4PRSHLDOSIRR1300, RHD4PRSHLSTAGIRR1300, RHD4CZ5C051IRR3202 |  |  |  | -130d | 0d | Unskilled Labor [5.45 h]; Plumber [5.45 h]; Air valve diameter 50 mm - TSE [0.1 nr] | 491.9 |  | C051 | Z5 | CONS | IRR | Stem and Service box | bef |
|  | 4041 | **RHD4-02-002-C051-(IRR)-Concrete Encasement** |  | 2027-03-24 | 2027-03-25 |  |  |  |  |  |  |  |  |  |  |  |  |  |  |  |
| RHD4CZ5C051IRR5100 |  | Pipe Encasement for Irrigation Pipelines - (RD-C-5 /1)-Z5-C051-IRR | 2d | 2027-03-24 | 2027-03-25 | RHD4CZ5C051IRR1300 SS, RHD4CZ5C051IRR1300 FF, RHD4CZ5C051IRR1200 |  |  |  | -154d | 0d | Skilled labor [16 h]; Unskilled Labor [16 h]; Equipment Opreator [17.53 h]; Concrete Mixer Truck [1.6 h]; Dump Truck [16 h]; Pipe Encasement - TSE [7.33 m3] | 8,986.58 |  | C051 | Z5 | CONS | IRR | Pipe Encasement | bef |
|  | 4059 | **RHD4-02-002-Z5-C051-Medium Voltage Network - MV** |  | 2026-08-04 | 2027-07-06 |  |  |  |  |  |  |  |  |  |  |  |  |  |  |  |
|  | 4060 | **RHD4-02-002-C051-(MV)-Medium Voltage cable trench** |  | 2027-06-22 | 2027-07-04 |  |  |  |  |  |  |  |  |  |  |  |  |  |  |  |
| RHD4CZ5C051MV1100 |  | Excavation for Medium Voltage Trench - (RD-C-5 /1)-Z5-C051-MV | 2d | 2027-06-22 | 2027-06-23 | RHD4ENSDZ5APPMV150, RHD4CZ5C051RD3100, RHD4CZ6C052MV3401 |  |  |  | -172d | 0d | Skilled labor [17.32 h]; Unskilled Labor [34.63 h]; Equipment Opreator [52.06 h]; Excavator-Poclain [17.32 h]; Dump Truck [34.63 h]; Excavation for Trench size 120cm wide and 80cm deep (for 4 cables) [111.45 m3] | 1,114.52 |  | C051 | Z5 | CONS | MV | Excavation | AFT |
| RHD4CZ5C051MV1200 |  | Trench Backfilling for Medium Voltage Network - (RD-C-5 /1)-Z5-C051-MV | 2d | 2027-07-03 | 2027-07-04 | RHD4CZ5C051MV3200 |  |  |  | -172d | 0d | Skilled labor [17.32 h]; Unskilled Labor [17.32 h]; Equipment Opreator [34.63 h]; Dump Truck [34.63 h]; Excavation for Trench size 120cm wide and 80cm deep (for 4 cables) [47.77 m3] | 477.65 |  | C051 | Z5 | CONS | MV | Backfilling | AFT |
|  | 4061 | **RHD4-02-002-C051-(MV)-Medium Voltage duct banks** |  | 2026-08-04 | 2026-08-12 |  |  |  |  |  |  |  |  |  |  |  |  |  |  |  |
| RHD4CZ5C051MV2100 |  | Excavation of Duct Banks for Medium Voltage Network - (RD-C-5 /1)-Z5-C051-MV | 2d | 2026-08-04 A | 2026-08-05 A | RHD4ENSDZ5APPMV150, RHD4CZ5C051MV1200 | 100% | 2026-12-31 | 2027-01-02 |  |  | Unskilled Labor [14.27 h]; Equipment Opreator [28.42 h]; Excavator-Poclain [14.27 h]; Dump Truck [14.27 h]; Duct bank for MV cables UPVC (6xø150mm) [1.96 m] | 1,169.46 | 1,169.46 | C051 | Z5 | CONS | MV | Excavation | bef |
| RHD4CZ5C051MV2200 |  | Installation of Duct Banks for Medium Voltage Network - (RD-C-5 /1)-Z5-C051-MV | 2d | 2026-08-06 A | 2026-08-08 A | RHD4CZ5C051MV2100, RHD4PRSHLDOSMV1000, RHD4PRSHLSTAGMV1000 | 100% | 2027-01-03 | 2027-01-04 |  |  | Unskilled Labor [21.35 h]; Equipment Opreator [42.69 h]; Excavator-Poclain [21.35 h]; Dump Truck [21.35 h]; Duct bank for MV cables UPVC (6xø150mm) [1.96 m] | 1,169.46 | 1,169.46 | C051 | Z5 | CONS | MV | Installing | bef |
| RHD4CZ5C051MV2300 |  | Pouring of Duct Banks for Medium Voltage Network - (RD-C-5 /1)-Z5-C051-MV | 2d | 2026-08-09 A | 2026-08-10 A | RHD4CZ5C051MV2200 | 100% | 2027-01-05 | 2027-01-06 |  |  | Unskilled Labor [14.27 h]; Equipment Opreator [28.42 h]; Excavator-Poclain [14.27 h]; Dump Truck [14.27 h]; Duct bank for MV cables UPVC (6xø150mm) [12.73 m] | 7,601.51 | 7,601.51 | C051 | Z5 | CONS | MV | Pouring | bef |
| RHD4CZ5C051MV2400 |  | Backfilling of Duct Banks for Medium Voltage Network - (RD-C-5 /1)-Z5-C051-MV | 2d | 2026-08-11 A | 2026-08-12 A | RHD4CZ5C051MV2300 | 100% | 2027-01-07 | 2027-01-09 |  |  | Unskilled Labor [10.67 h]; Equipment Opreator [21.35 h]; Excavator-Poclain [10.67 h]; Dump Truck [10.67 h]; Duct bank for MV cables UPVC (6xø150mm) [2.94 m] | 1,754.19 | 1,754.19 | C051 | Z5 | CONS | MV | Backfilling | bef |
|  | 4062 | **RHD4-02-002-C051-(MV)-Medium Voltage cables 3Cx 500 mm²** |  | 2027-06-24 | 2027-07-06 |  |  |  |  |  |  |  |  |  |  |  |  |  |  |  |
| RHD4CZ5C051MV3100 |  | Installation of Medium Voltage Cables 3Cx 500 mm² - (RD-C-5 /1)-Z5-C051-MV | 5d | 2027-06-24 | 2027-06-29 | RHD4CZ5C051MV1100, RHD4PRSHLDOSMV1100, RHD4ENMSMV2000, RHD4ENMSMV2010, RHD4PRSHLSTAGMV1100 |  |  |  | -172d | 0d | Skilled labor [51.95 h]; Unskilled Labor [207.68 h]; Electrician [103.89 h]; Equipment Opreator [155.73 h]; Boom Truck [51.95 h]; Cable Laying Machine [103.89 h]; Cable 13.8 kV 3Cx 500 mm² Al/XLPE,/LLDPE / Unarmored [643.7 m] | 102,348.3 |  | C051 | Z5 | CONS | MV | Installation | AFT |
| RHD4CZ5C051MV3200 |  | Joints Installation of Medium Voltage Cables 3Cx 500 mm² - (RD-C-5 /1)-Z5-C051-MV | 2d | 2027-06-30 | 2027-07-01 | RHD4CZ5C051MV3100, RHD4PRSHLDOSMV1300, RHD4PRSHLSTAGMV1300 |  |  |  | -172d | 0d | Skilled labor [5.45 h]; Unskilled Labor [21.78 h]; Electrician [10.89 h]; Equipment Opreator [5.45 h]; Boom Truck [5.45 h]; Straight joints cables for 13.8 kv 3Cx 500 mm², Al /XLPE/LLDPE [1 Unit] | 3,248 |  | C051 | Z5 | CONS | MV | Joints Installation | AFT |
| RHD4CZ5C051MV3300 |  | Testing of Medium Voltage Cables 3Cx 500 mm² - (RD-C-5 /1)-Z5-C051-MV | 2d | 2027-07-05 | 2027-07-06 | RHD4CZ5C051MV3200, RHD4CZ5C051MV1200 |  |  |  | -172d | 0d | Skilled labor [15.57 h]; Unskilled Labor [62.29 h]; Electrician [31.15 h]; Cable 13.8 kV 3Cx 500 mm² Al/XLPE,/LLDPE / Unarmored [71.52 m] | 11,372.06 |  | C051 | Z5 | CONS | MV | Testing | AFT |
|  | 4066 | **RHD4-02-002-Z5-C051-Low Voltage Network - LV** |  | 2026-08-04 | 2027-06-08 |  |  |  |  |  |  |  |  |  |  |  |  |  |  |  |
|  | 4067 | **RHD4-02-002-C051-(LV)-Low Voltage duct banks** |  | 2026-08-04 | 2026-08-13 |  |  |  |  |  |  |  |  |  |  |  |  |  |  |  |
| RHD4CZ5C051LV2100 |  | Excavation of Duct Banks for Low Voltage Network - (RD-C-5 /1)-Z5-C051-LV | 3d | 2026-08-04 A | 2026-08-06 A | RHD4CZ5C051RW3000, RHD4ENSDZ5APPLV160, RHD4CZ5C051IRR3203 | 100% | 2026-11-18 | 2026-11-21 |  |  | Skilled labor [29.08 h]; Unskilled Labor [29.08 h]; Equipment Opreator [58.15 h]; Excavator-Poclain [29.08 h]; Dump Truck [29.08 h]; Duct bank for LV cables UPVC (2xø110mm) [4.01 m] | 809.07 | 809.07 | C051 | Z5 | CONS | LV | Excavation | bef |
| RHD4CZ5C051LV2200 |  | Installation of Duct Banks for Low Voltage Network - (RD-C-5 /1)-Z5-C051-LV | 5d | 2026-08-06 A | 2026-08-11 A | RHD4CZ5C051LV2100, RHD4PRSHLDOSLV1000, RHD4PRSHLSTAGLV1000 | 100% | 2026-11-22 | 2026-11-26 |  |  | Carpenter [4.36 h]; Skilled labor [43.67 h]; Unskilled Labor [43.67 h]; Steel Fixer [4.36 h]; Duct bank for LV cables UPVC (2xø110mm) [4.01 m] | 809.07 | 809.07 | C051 | Z5 | CONS | LV | Installing | bef |
| RHD4CZ5C051LV2300 |  | Pouring of Duct Banks for Low Voltage Network - (RD-C-5 /1)-Z5-C051-LV | 3d | 2026-08-09 A | 2026-08-11 A | RHD4CZ5C051LV2200 | 100% | 2026-11-28 | 2026-11-30 |  |  | Skilled labor [29.08 h]; Unskilled Labor [29.08 h]; Equipment Opreator [11.65 h]; Concrete Mixer Truck [5.77 h]; Concrete Pump [5.77 h]; Duct bank for LV cables UPVC (2xø110mm) [26.03 m] | 5,258.96 | 5,258.96 | C051 | Z5 | CONS | LV | Pouring | bef |
| RHD4CZ5C051LV2400 |  | Backfilling of Duct Banks for Low Voltage Network - (RD-C-5 /1)-Z5-C051-LV | 3d | 2026-08-11 A | 2026-08-13 A | RHD4CZ5C051LV2300 | 100% | 2026-12-01 | 2026-12-03 |  |  | Skilled labor [21.78 h]; Unskilled Labor [21.78 h]; Equipment Opreator [8.71 h]; Excavator-Poclain [8.71 h]; Duct bank for LV cables UPVC (2xø110mm) [6.01 m] | 1,213.61 | 1,213.61 | C051 | Z5 | CONS | LV | Backfilling | bef |

| ID | WBS | Activity | Duration | Start | Finish | Predecessors | Total float | Free float | Resources | Cost | RDH4-01-001-Road and Block Names-1 | RDH4-01-001-Zones-1 | RDH4-01-001-Phases-1 | RDH4-01-001-Networks-1 | RDH4-01-001-Work Method-1 | RDH4-01-001-MENEM |
| --- | --- | --- | --- | --- | --- | --- | --- | --- | --- | --- | --- | --- | --- | --- | --- | --- |
|  | 4068 | **RHD4-02-002-C051-(LV)-Low Voltage Drawpit** |  | 2027-05-04 | 2027-05-08 |  |  |  |  |  |  |  |  |  |  |  |
| RHD4CZ5C051LV5100 |  | Excavation of Drawpit size 900x900x1000mm for Low Voltage Network - (RD-C-5 /1)-Z5-C051-LV | 2d | 2027-05-04 | 2027-05-05 | RHD4ENSDZ5APPLV160, RHD4CZ6C052SL6100 | -155d | 0d | Skilled labor [5.45 h]; Unskilled Labor [5.45 h]; Equipment Opreator [4.36 h]; Excavator-Poclain [2.18 h]; Dump Truck [2.18 h]; Drawpit with medium duty steel cover, size900x900x1000mm, [0.9 Unit] | 3,309.3 | C051 | Z5 | CONS | LV | Excavation | AFT |
| RHD4CZ5C051LV5200 |  | Installation of Drawpit size 900x900x1000mm for Low Voltage Network - (RD-C-5 /1)-Z5-C051-LV | 2d | 2027-05-06 | 2027-05-08 | RHD4CZ5C051LV5100, RHD4PRSHLDOSLV1400, RHD4PRSHLSTAGLV1400 | -155d | 0d | Skilled labor [5.45 h]; Unskilled Labor [5.45 h]; Equipment Opreator [2.18 h]; Boom Truck [2.18 h]; Drawpit with medium duty steel cover, size900x900x1000mm, [5.1 Unit] | 18,752.7 | C051 | Z5 | CONS | LV | Installation | AFT |
|  | 4069 | **RHD4-02-002-C051-(LV)-Low Voltage cables** |  | 2027-05-09 | 2027-06-08 |  |  |  |  |  |  |  |  |  |  |  |
| RHD4CZ5C051LV3100 |  | Excavation for Low Voltage Cables for Low Voltage Network - (RD-C-5 /1)-Z5-C051-LV | 7d | 2027-05-09 | 2027-05-20 | RHD4ENSDZ5APPLV160, RHD4CZ5C051LV5200, RHD4CZ5C051LV2400 | -155d | 0d | Skilled labor [67.74 h]; Unskilled Labor [135.48 h]; Equipment Opreator [135.48 h]; Excavator-Poclain [67.74 h]; Boom Truck [67.74 h]; Cable, Copper 4x185mm2/ CU/XLPE/PVC [129.03 m]; Cable, Copper 4x50mm2/ CU/XLPE/PVC +1x25mm2 CU/PVC [86.33 m]; Cable, Copper 3x10mm2/ CU/XLPE/SWA/PVC [95.7 m] | 64,157.89 | C051 | Z5 | CONS | LV | Excavation | AFT |
| RHD4CZ5C051LV3200 |  | Cable Laying of Low Voltage Cables for Low Voltage Network - (RD-C-5 /1)-Z5-C051-LV | 6d | 2027-05-22 | 2027-05-27 | RHD4CZ5C051LV3100, RHD4PRSHLDOSLV1100, RHD4ENMSLV2000, RHD4ENMSLV2010, RHD4PRSHLSTAGLV1100 | -155d | 0d | Skilled labor [56.41 h]; Unskilled Labor [225.87 h]; Electrician [112.93 h]; Equipment Opreator [169.34 h]; Boom Truck [56.41 h]; Cable Laying Machine [112.93 h]; Cable, Copper 4x185mm2/ CU/XLPE/PVC [201 m]; Cable, Copper 4x50mm2/ CU/XLPE/PVC +1x25mm2 CU/PVC [200 m]; Cable, Copper 3x10mm2/ CU/XLPE/SWA/PVC [287.09 m] | 113,382.67 | C051 | Z5 | CONS | LV | Cable Laying | AFT |
| RHD4CZ5C051LV3300 |  | Warning tape and Backfill for Low Voltage Cables for Low Voltage Network - (RD-C-5 /1)-Z5-C051-LV | 6d | 2027-05-29 | 2027-06-03 | RHD4CZ5C051LV3200 | -155d | 0d | Skilled labor [56.41 h]; Unskilled Labor [225.87 h]; Electrician [112.93 h]; Equipment Opreator [56.41 h]; Boom Truck [56.41 h]; Cable, Copper 4x185mm2/ CU/XLPE/PVC [96.78 m]; Cable, Copper 4x50mm2/ CU/XLPE/PVC +1x25mm2 CU/PVC [64.75 m]; Cable, Copper 3x10mm2/ CU/XLPE/SWA/PVC [71.77 m] | 48,118.36 | C051 | Z5 | CONS | LV | Warning tape and Backfill | AFT |
| RHD4CZ5C051LV3400 |  | Testing of Low Voltage Cables for Low Voltage Network - (RD-C-5 /1)-Z5-C051-LV | 4d | 2027-06-05 | 2027-06-08 | RHD4CZ5C051LV3300 | -155d | 0d | Skilled labor [33.87 h]; Unskilled Labor [135.48 h]; Electrician [67.74 h]; Equipment Opreator [33.87 h]; Boom Truck [33.87 h]; Cable, Copper 4x185mm2/ CU/XLPE/PVC [32.26 m]; Cable, Copper 4x50mm2/ CU/XLPE/PVC +1x25mm2 CU/PVC [21.58 m]; Cable, Copper 3x10mm2/ CU/XLPE/SWA/PVC [23.92 m] | 16,039.45 | C051 | Z5 | CONS | LV | Testing | AFT |
|  | 4072 | **RHD4-02-002-Z5-C051-Street Lighting Network - SL** |  | 2027-06-09 | 2027-07-08 |  |  |  |  |  |  |  |  |  |  |  |
|  | 4075 | **RHD4-02-002-C051-(SL)-Street Lighting cables** |  | 2027-06-09 | 2027-06-22 |  |  |  |  |  |  |  |  |  |  |  |
| RHD4CZ5C051SL3100 |  | Excavation for Street Lighting Cables for Street Lighting Network - (RD-C-5 /1)-Z5-C051-SL | 4d | 2027-06-09 | 2027-06-13 | RHD4ENSDZ5APPSL170, RHD4CZ5C051LV3400 | -155d | 0d | Skilled labor [35.28 h]; Unskilled Labor [70.68 h]; Equipment Opreator [70.68 h]; Excavator-Poclain [35.28 h]; Boom Truck [35.28 h]; Cable, Copper 4x10mm2/ CU/XLPE/SWA/PVC + 1x10mm2 CU/PVC [162.21 m] | 7,948.44 | C051 | Z5 | CONS | SL | Excavation | AFT |
| RHD4CZ5C051SL3200 |  | Cable Laying of Street Lighting Cables for Street Lighting Network - (RD-C-5 /1)-Z5-C051-SL | 3d | 2027-06-14 | 2027-06-16 | RHD4CZ5C051SL3100, RHD4PRSHLDOSSL1100, RHD4ENMSSL2000, RHD4ENMSSL2010, RHD4PRSHLSTAGSL1100 | -155d | 0d | Skilled labor [29.4 h]; Unskilled Labor [117.72 h]; Electrician [58.92 h]; Equipment Opreator [88.32 h]; Boom Truck [29.4 h]; Cable Laying Machine [58.92 h]; Cable, Copper 4x10mm2/ CU/XLPE/SWA/PVC + 1x10mm2 CU/PVC [486.64 m] | 23,845.32 | C051 | Z5 | CONS | SL | Cable Laying | AFT |
| RHD4CZ5C051SL3300 |  | Warning tape and Backfill for Street Lighting Cables for Street Lighting Network - (RD-C-5 /1)-Z5-C051-SL | 3d | 2027-06-17 | 2027-06-20 | RHD4CZ5C051SL3200 | -155d | 0d | Skilled labor [29.4 h]; Unskilled Labor [117.72 h]; Electrician [58.92 h]; Equipment Opreator [29.4 h]; Boom Truck [29.4 h]; Cable, Copper 4x10mm2/ CU/XLPE/SWA/PVC + 1x10mm2 CU/PVC [121.66 m] | 5,961.33 | C051 | Z5 | CONS | SL | Warning tape and Backfill | AFT |
| RHD4CZ5C051SL3400 |  | Testing of Street Lighting Cables for Street Lighting Network - (RD-C-5 /1)-Z5-C051-SL | 2d | 2027-06-21 | 2027-06-22 | RHD4CZ5C051SL3300 | -155d | 0d | Skilled labor [17.64 h]; Unskilled Labor [70.68 h]; Electrician [35.28 h]; Equipment Opreator [17.64 h]; Boom Truck [17.64 h]; Cable, Copper 4x10mm2/ CU/XLPE/SWA/PVC + 1x10mm2 CU/PVC [40.55 m] | 1,987.11 | C051 | Z5 | CONS | SL | Testing | AFT |
|  | 4076 | **RHD4-02-002-C051-(SL)-Street Lighting Poles** |  | 2027-06-23 | 2027-07-08 |  |  |  |  |  |  |  |  |  |  |  |
| RHD4CZ5C051SL1100 |  | Excavation for RC Base for Lighting Poles for Street Lighting Network - (RD-C-5 /1)-Z5-C051-SL | 2d | 2027-06-23 | 2027-06-24 | RHD4ENSDZ5APPSL170, RHD4CZ5C051IRR3203, RHD4CZ5C051SL3400 | -155d | 0d | Skilled labor [17.42 h]; Unskilled Labor [17.42 h]; Equipment Opreator [34.85 h]; Excavator-Poclain [17.42 h]; Dump Truck [17.42 h]; Lighting polesdouble arms, height of ( 12 ) meters [1.5 Unit]; Lighting poles single arms, height of ( 10 ) meters [0.9 Unit] | 9,924.3 | C051 | Z5 | CONS | SL | Excavation | AFT |
| RHD4CZ5C051SL1200 |  | Installation for RC Base for Lighting Poles for Street Lighting Network - (RD-C-5 /1)-Z5-C051-SL | 2d | 2027-06-26 | 2027-06-27 | RHD4CZ5C051SL1100 | -155d | 0d | Skilled labor [17.42 h]; Unskilled Labor [17.42 h]; Equipment Opreator [34.85 h]; Excavator-Poclain [17.42 h]; Dump Truck [17.42 h]; Lighting polesdouble arms, height of ( 12 ) meters [3.75 Unit]; Lighting poles single arms, height of ( 10 ) meters [2.25 Unit] | 24,810.75 | C051 | Z5 | CONS | SL | RC Base | AFT |
| RHD4CZ5C051SL1300 |  | Backfill for RC Base for Lighting Poles for Street Lighting Network - (RD-C-5 /1)-Z5-C051-SL | 2d | 2027-06-28 | 2027-06-29 | RHD4CZ5C051SL1200 | -155d | 0d | Skilled labor [17.42 h]; Unskilled Labor [17.42 h]; Equipment Opreator [34.85 h]; Excavator-Poclain [17.42 h]; Dump Truck [17.42 h]; Lighting polesdouble arms, height of ( 12 ) meters [0.75 Unit]; Lighting poles single arms, height of ( 10 ) meters [0.45 Unit] | 4,962.15 | C051 | Z5 | CONS | SL | Backfill | AFT |
| RHD4CZ5C051SL1400 |  | Installation for Lighting Poles for Street Lighting Network - (RD-C-5 /1)-Z5-C051-SL | 3d | 2027-06-30 | 2027-07-03 | RHD4CZ5C051SL1300, RHD4PRSHLDOSSL1200, RHD4ENMSSL2000, RHD4ENMSSL2010, RHD4PRSHLSTAGSL1200 | -155d | 0d | Skilled labor [26.14 h]; Unskilled Labor [26.14 h]; Electrician [26.14 h]; Equipment Opreator [26.14 h]; Boom Truck [26.14 h]; Lighting polesdouble arms, height of ( 12 ) meters [9 Unit]; Lighting poles single arms, height of ( 10 ) meters [5.4 Unit] | 59,545.8 | C051 | Z5 | CONS | SL | Poles Installation | AFT |
| RHD4CZ5C051SL1500 |  | Luminaire Installation for Lighting Poles for Street Lighting Network - (RD-C-5 /1)-Z5-C051-SL | 3d | 2027-07-06 | 2027-07-08 | RHD4CZ5C051SL1400, RHD4CZ5C051SL6100, RHD4PRSHLDOSSL1300, RHD4PRSHLSTAGSL1300 | -155d | 0d | Unskilled Labor [56.63 h]; Electrician [28.31 h]; Equipment Opreator [10.02 h]; Boom Truck [11.33 h]; Street Lighting( LED) Luminaire of Output ?18553 lumen [30 Unit]; Street Lighting( LED) Luminaire of Output ?10898 lumen [9 Unit] | 24,402 | C051 | Z5 | CONS | SL | Luminaire Installation | AFT |
|  | 4078 | **RHD4-02-002-C051-(SL)-Street Lighting Earthing System** |  | 2027-07-04 | 2027-07-05 |  |  |  |  |  |  |  |  |  |  |  |
| RHD4CZ5C051SL6100 |  | Installation of Earthing for Lighting Poles and Fedder Pillers for Street Lighting Network - (RD-C-5 /1)-Z5-C051-SL | 2d | 2027-07-04 | 2027-07-05 | RHD4CZ5C051SL1400, RHD4ENMSER2000, RHD4ENMSER2010 | -155d | 0d | Skilled labor [1.42 h]; Unskilled Labor [1.42 h]; Equipment Opreator [2.94 h]; Excavator-Poclain [1.42 h]; Dump Truck [1.42 h]; Including lighting poles circuits - ER [2 Unit] | 1,226 | C051 | Z5 | CONS | SL | Installation | AFT |
|  | 5023 | **RHD4-02-002-C051-(SL)-Street Lighting Feeder Pillars** |  |  |  |  |  |  |  |  |  |  |  |  |  |  |
|  | 4084 | **RHD4-02-002-Z5-C051-Telecommunications Network - TC** |  | 2026-07-28 | 2027-08-18 |  |  |  |  |  |  |  |  |  |  |  |
|  | 4085 | **RHD4-02-002-C051-(TC)-Telecommunications Ducts** |  | 2027-07-10 | 2027-08-09 |  |  |  |  |  |  |  |  |  |  |  |
| RHD4CZ5C051TC2100 |  | Excavation of HDPE Ducts for Telecom Network - (RD-C-5 /1)-Z5-C051-TC | 8d | 2027-07-10 | 2027-07-18 | RHD4ENSDZ5APPTC190, RHD4CZ5C051SL1500, RHD4CZ5C051MV2400, RHD4CZ5C051MV3300 | -155d | 0d | Skilled labor [79.06 h]; Unskilled Labor [79.06 h]; Equipment Opreator [158.13 h]; Excavator-Poclain [79.06 h]; Dump Truck [79.06 h]; (6*50mm) HDPE ducts -TC [112.36 m]; (6*50mm+2*32mm) HDPE ducts -TC [52.06 m]; (6*50mm+4*32mm) HDPE ducts -TC [37.15 m]; (2*32mm) HDPE ducts -TC [16.2 m] | 20,534.11 | C051 | Z5 | CONS | TC | Excavation | AFT |
| RHD4CZ5C051TC2200 |  | Installation of HDPE Ducts for Telecom Network - (RD-C-5 /1)-Z5-C051-TC | 11d | 2027-07-19 | 2027-07-31 | RHD4CZ5C051TC2100, RHD4PRSHLDOSTC1000, RHD4PRSHLSTAGTC1000 | -155d | 0d | Carpenter [11.87 h]; Skilled labor [118.6 h]; Unskilled Labor [118.6 h]; Steel Fixer [11.87 h]; (6*50mm) HDPE ducts -TC [365.17 m]; (6*50mm+2*32mm) HDPE ducts -TC [169.2 m]; (6*50mm+4*32mm) HDPE ducts -TC [120.74 m]; (2*32mm) HDPE ducts -TC [52.65 m] | 66,736.4 | C051 | Z5 | CONS | TC | Installing | AFT |
| RHD4CZ5C051TC2400 |  | Backfilling of HDPE Ducts for Telecom Network - (RD-C-5 /1)-Z5-C051-TC | 8d | 2027-08-01 | 2027-08-09 | RHD4CZ5C051TC2200 | -155d | 0d | Skilled labor [79.06 h]; Unskilled Labor [79.06 h]; Equipment Opreator [31.58 h]; Excavator-Poclain [31.58 h]; (6*50mm) HDPE ducts -TC [84.27 m]; (6*50mm+2*32mm) HDPE ducts -TC [39.05 m]; (6*50mm+4*32mm) HDPE ducts -TC [27.86 m]; (2*32mm) HDPE ducts -TC [12.15 m] | 15,400.58 | C051 | Z5 | CONS | TC | Backfilling | AFT |

| ID | WBS | Activity | Duration | Start | Finish | Predecessors | Complete | Planned start | Planned finish | Total float | Free float | Resources | Cost | Actual cost | RDH4-01-001-Road and Block Names-1 | RDH4-01-001-Zones-1 | RDH4-01-001-Phases-1 | RDH4-01-001-Networks-1 | RDH4-01-001-Work Method-1 | RDH4-01-001-MENEM |
| --- | --- | --- | --- | --- | --- | --- | --- | --- | --- | --- | --- | --- | --- | --- | --- | --- | --- | --- | --- | --- |
|  | 4086 | **RHD4-02-002-C051-(TC)-Telecommunications Manholes** |  | 2027-08-10 | 2027-08-18 |  |  |  |  |  |  |  |  |  |  |  |  |  |  |  |
| RHD4CZ5C051TC5100 |  | Excavation for Manholes for Telecom Network - (RD-C-5 /1)-Z5-C051-TC | 4d | 2027-08-10 | 2027-08-14 | RHD4ENSDZ5APPTC190, RHD4CZ5C051TC2400 |  |  |  | -155d | 0d | Skilled labor [12.31 h]; Unskilled Labor [12.31 h]; Equipment Opreator [9.8 h]; Excavator-Poclain [4.9 h]; Dump Truck [4.9 h]; Manhole Type 1 - TC [0.75 nr]; Manhole Type 2 - TC [0.3 nr] | 7,078.05 |  | C051 | Z5 | CONS | TC | Excavation | AFT |
| RHD4CZ5C051TC5200 |  | Installation of Manholes for Telecom Network - (RD-C-5 /1)-Z5-C051-TC | 4d | 2027-08-15 | 2027-08-18 | RHD4CZ5C051TC5100, RHD4CZ5C051TC2200 SS, RHD4PRSHLDOSTC1200, RHD4PRSHLSTAGTC1200 |  |  |  | -155d | 0d | Skilled labor [12.31 h]; Unskilled Labor [12.31 h]; Equipment Opreator [4.9 h]; Boom Truck [4.9 h]; Manhole Type 1 - TC [4.25 nr]; Manhole Type 2 - TC [1.7 nr] | 40,108.95 |  | C051 | Z5 | CONS | TC | Installation | AFT |
|  | 4087 | **RHD4-02-002-C051-(TC)-Telecomminications Road Crossings** |  | 2026-07-28 | 2026-08-12 |  |  |  |  |  |  |  |  |  |  |  |  |  |  |  |
| RHD4CZ5C051TC3100 |  | Excavation for Road Crossings for Telecom Network - (RD-C-5 /1)-Z5-C051-TC | 2d | 2026-07-28 A | 2026-08-05 A | RHD4ENSDZ5APPTC190, RHD4CZ5C051ST3101 | 100% | 2026-07-28 | 2026-07-29 |  |  | Skilled labor [9.37 h]; Unskilled Labor [9.37 h]; Equipment Opreator [18.73 h]; Excavator-Poclain [9.37 h]; Dump Truck [9.37 h]; Road crossing ducts, (6*50mm) HDPE -TC [1.72 m] | 65.36 | 65.36 | C051 | Z5 | CONS | TC | Excavation | bef |
| RHD4CZ5C051TC3200 |  | Installation of Road Crossings for Telecom Network - (RD-C-5 /1)-Z5-C051-TC | 2d | 2026-07-30 A | 2026-08-08 A | RHD4CZ5C051TC3100, RHD4PRSHLDOSTC1100, RHD4PRSHLSTAGTC1100 | 100% | 2026-07-30 | 2026-08-01 |  |  | Carpenter [1.2 h]; Skilled labor [12.52 h]; Unskilled Labor [12.52 h]; Steel Fixer [1.2 h]; Road crossing ducts, (6*50mm) HDPE -TC [1.72 m] | 65.36 | 65.36 | C051 | Z5 | CONS | TC | Installing | bef |
| RHD4CZ5C051TC3300 |  | Pouring of Road Crossings for Telecom Network - (RD-C-5 /1)-Z5-C051-TC | 2d | 2026-08-02 A | 2026-08-10 A | RHD4CZ5C051TC3200 | 100% | 2026-08-02 | 2026-08-03 |  |  | Skilled labor [12.52 h]; Unskilled Labor [12.52 h]; Equipment Opreator [5.01 h]; Concrete Mixer Truck [2.5 h]; Concrete Pump [2.5 h]; Road crossing ducts, (6*50mm) HDPE -TC [11.18 m] | 424.84 | 424.84 | C051 | Z5 | CONS | TC | Pouring | bef |
| RHD4CZ5C051TC3400 |  | Backfilling of Road Crossings for Telecom Network - (RD-C-5 /1)-Z5-C051-TC | 2d | 2026-08-04 A | 2026-08-12 A | RHD4CZ5C051TC3300 | 100% | 2026-08-04 | 2026-08-05 |  |  | Skilled labor [9.37 h]; Unskilled Labor [9.37 h]; Equipment Opreator [3.7 h]; Excavator-Poclain [3.7 h]; Road crossing ducts, (6*50mm) HDPE -TC [2.58 m] | 98.04 | 98.04 | C051 | Z5 | CONS | TC | Backfilling | bef |
|  | 4088 | **RHD4-02-002-Z5-C051-Information and Communication Technologies - ICT** |  | 2026-07-30 | 2027-09-15 |  |  |  |  |  |  |  |  |  |  |  |  |  |  |  |
|  | 4089 | **RHD4-02-002-C051-(ICT)-Information and Communication Technologies Ducts** |  | 2027-08-19 | 2027-09-15 |  |  |  |  |  |  |  |  |  |  |  |  |  |  |  |
| RHD4CZ5C051ICT2100 |  | Excavation of HDPE Ducts for ICT Network - (RD-C-5 /1)-Z5-C051-ICT | 7d | 2027-08-19 | 2027-08-26 | RHD4CZ5C051ICT3400, RHD4ENSDZ5APPICT200, RHD4CZ5C051TC5200 |  |  |  | -155d | 0d | Skilled labor [72.2 h]; Unskilled Labor [72.2 h]; Equipment Opreator [144.41 h]; Excavator-Poclain [72.2 h]; Dump Truck [72.2 h]; (2*50mm) HDPE ducts -ICT [83.26 m]; (2*50mm+2*32mm) HDPE ducts -ICT [60.2 m]; (2*50mm+4*32mm) HDPE ducts -ICT [36.46 m]; (2*32mm) HDPE ducts -ICT [18.99 m] | 11,279.52 |  | C051 | Z5 | CONS | ICT | Excavation | AFT |
| RHD4CZ5C051ICT2200 |  | Installation of HDPE Ducts for ICT Network - (RD-C-5 /1)-Z5-C051-ICT | 10d | 2027-08-28 | 2027-09-07 | RHD4CZ5C051ICT2100, RHD4PRSHLDOSICT1000, RHD4PRSHLSTAGICT1000 |  |  |  | -155d | 0d | Carpenter [10.78 h]; Skilled labor [108.36 h]; Unskilled Labor [108.36 h]; Steel Fixer [10.78 h]; (2*50mm) HDPE ducts -ICT [270.61 m]; (2*50mm+2*32mm) HDPE ducts -ICT [195.65 m]; (2*50mm+4*32mm) HDPE ducts -ICT [118.5 m]; (2*32mm) HDPE ducts -ICT [61.7 m] | 36,658.7 |  | C051 | Z5 | CONS | ICT | Installing | AFT |
| RHD4CZ5C051ICT2400 |  | Backfilling of HDPE Ducts for ICT Network - (RD-C-5 /1)-Z5-C051-ICT | 7d | 2027-09-08 | 2027-09-15 | RHD4CZ5C051ICT2200 |  |  |  | -155d | 0d | Skilled labor [72.2 h]; Unskilled Labor [72.2 h]; Equipment Opreator [28.86 h]; Excavator-Poclain [28.86 h]; (2*50mm) HDPE ducts -ICT [62.45 m]; (2*50mm+2*32mm) HDPE ducts -ICT [45.15 m]; (2*50mm+4*32mm) HDPE ducts -ICT [27.34 m]; (2*32mm) HDPE ducts -ICT [14.24 m] | 8,459.64 |  | C051 | Z5 | CONS | ICT | Backfilling | AFT |
|  | 4090 | **RHD4-02-002-C051-(ICT)-Information and Communication Technologies Manholes** |  | 2027-08-28 | 2027-09-02 |  |  |  |  |  |  |  |  |  |  |  |  |  |  |  |
| RHD4CZ5C051ICT5100 |  | Excavation for Manholes for ICT Network - (RD-C-5 /1)-Z5-C051-ICT | 3d | 2027-08-28 | 2027-08-30 | RHD4CZ5C051ICT2100, RHD4ENSDZ5APPICT200 |  |  |  | -144d | 0d | Skilled labor [10.89 h]; Unskilled Labor [10.89 h]; Equipment Opreator [8.71 h]; Excavator-Poclain [4.36 h]; Dump Truck [4.36 h]; Manhole Type 1 - ICT [0.6 nr]; Manhole Type 2 - ICT [0.3 nr] | 4,853.7 |  | C051 | Z5 | CONS | ICT | Excavation | AFT |
| RHD4CZ5C051ICT5200 |  | Installation of Manholes for ICT Network - (RD-C-5 /1)-Z5-C051-ICT | 3d | 2027-08-31 | 2027-09-02 | RHD4CZ5C051ICT5100, RHD4PRSHLDOSICT1200, RHD4PRSHLSTAGICT1200 |  |  |  | -144d | 11d | Skilled labor [10.89 h]; Unskilled Labor [10.89 h]; Equipment Opreator [4.36 h]; Boom Truck [4.36 h]; Manhole Type 1 - ICT [3.4 nr]; Manhole Type 2 - ICT [1.7 nr] | 27,504.3 |  | C051 | Z5 | CONS | ICT | Installation | AFT |
|  | 4091 | **RHD4-02-002-C051-(ICT)-Information and Communication Technologies Road Crossings** |  | 2026-07-30 | 2026-08-12 |  |  |  |  |  |  |  |  |  |  |  |  |  |  |  |
| RHD4CZ5C051ICT3100 |  | Excavation for Road Crossings for ICT Network - (RD-C-5 /1)-Z5-C051-ICT | 2d | 2026-07-30 A | 2026-08-05 A | RHD4ENSDZ5APPICT200, RHD4CZ5C051TC3100 | 100% | 2026-07-30 | 2026-08-01 |  |  | Skilled labor [9.37 h]; Unskilled Labor [9.37 h]; Equipment Opreator [18.62 h]; Excavator-Poclain [9.37 h]; Dump Truck [9.37 h]; Road crossing ducts, (2*50mm) HDPE -ICT [1.71 m] | 64.98 | 64.98 | C051 | Z5 | CONS | ICT | Excavation | bef |
| RHD4CZ5C051ICT3200 |  | Installation of Road Crossings for ICT Network - (RD-C-5 /1)-Z5-C051-ICT | 2d | 2026-08-06 A | 2026-08-08 A | RHD4CZ5C051ICT3100, RHD4PRSHLDOSICT1100, RHD4PRSHLSTAGICT1100 | 100% | 2026-08-17 | 2026-08-18 |  |  | Carpenter [1.2 h]; Skilled labor [12.41 h]; Unskilled Labor [12.41 h]; Steel Fixer [1.2 h]; Road crossing ducts, (2*50mm) HDPE -ICT [1.71 m] | 64.98 | 64.98 | C051 | Z5 | CONS | ICT | Installing | bef |
| RHD4CZ5C051ICT3300 |  | Pouring of Road Crossings for ICT Network - (RD-C-5 /1)-Z5-C051-ICT | 2d | 2026-08-09 A | 2026-08-10 A | RHD4CZ5C051ICT3200 | 100% | 2026-08-19 | 2026-08-20 |  |  | Skilled labor [12.41 h]; Unskilled Labor [12.41 h]; Equipment Opreator [5.01 h]; Concrete Mixer Truck [2.5 h]; Concrete Pump [2.5 h]; Road crossing ducts, (2*50mm) HDPE -ICT [11.12 m] | 422.37 | 422.37 | C051 | Z5 | CONS | ICT | Pouring | bef |
| RHD4CZ5C051ICT3400 |  | Backfilling of Road Crossings for ICT Network - (RD-C-5 /1)-Z5-C051-ICT | 2d | 2026-08-11 A | 2026-08-12 A | RHD4CZ5C051ICT3300 | 100% | 2026-08-22 | 2026-08-23 |  |  | Skilled labor [9.37 h]; Unskilled Labor [9.37 h]; Equipment Opreator [3.7 h]; Excavator-Poclain [3.7 h]; Road crossing ducts, (2*50mm) HDPE -ICT [2.56 m] | 97.47 | 97.47 | C051 | Z5 | CONS | ICT | Backfilling | bef |
|  | 4079 | **RHD4-02-002-Z5-C051-Landscape Network - LS** |  |  |  |  |  |  |  |  |  |  |  |  |  |  |  |  |  |  |
|  | 4080 | **RHD4-02-002-C051-(LS)-Landscape Lighting cables** |  |  |  |  |  |  |  |  |  |  |  |  |  |  |  |  |  |  |
|  | 4081 | **RHD4-02-002-C051-(LS)-Landscape Feeder Pillars** |  |  |  |  |  |  |  |  |  |  |  |  |  |  |  |  |  |  |
|  | 4082 | **RHD4-02-002-C051-(LS)-Landscape Bollard Poles** |  |  |  |  |  |  |  |  |  |  |  |  |  |  |  |  |  |  |
|  | 4083 | **RHD4-02-002-C051-(LS)-Landscape Feeder Pillars Earthing** |  |  |  |  |  |  |  |  |  |  |  |  |  |  |  |  |  |  |
|  | 4092 | **RHD4-02-002-Z5-C051-Security Network - CCTV** |  | 2027-09-16 | 2027-10-30 |  |  |  |  |  |  |  |  |  |  |  |  |  |  |  |
|  | 4093 | **RHD4-02-002-C051-(CCTV)-Civil Works** |  | 2027-09-16 | 2027-09-28 |  |  |  |  |  |  |  |  |  |  |  |  |  |  |  |
| RHD4CZ5C051CCTV2100 |  | Civil Works for Security Network - (RD-C-5 /1)-Z5-C051-CCTV | 10d | 2027-09-16 | 2027-09-28 | RHD4CZ5C051ICT2400, RHD4CZ5C051ICT5200 |  |  |  | -155d | 0d | Skilled labor [435.68 h]; Unskilled Labor [871.2 h]; Equipment Opreator [435.68 h]; Excavator-Poclain [108.9 h]; Dump Truck [108.9 h]; Civil works Digging, trenching, laying pipes Meter with supply and installation of Manholes and for power feeding sources related to all towers and poles – (from 35-meter pole to control room and from related UPS camersa distribution boards till overall 2 [300 m] | 34,800 |  | C051 | Z5 | CONS | CCTV | Civil Works | AFT |

| ID | WBS | Activity | Duration | Start | Finish | Predecessors | Complete | Planned start | Planned finish | Total float | Free float | Resources | Cost | Actual cost | RDH4-01-001-Road and Block Names-1 | RDH4-01-001-Zones-1 | RDH4-01-001-Phases-1 | RDH4-01-001-Networks-1 | RDH4-01-001-Work Method-1 | RDH4-01-001-MENEM |
| --- | --- | --- | --- | --- | --- | --- | --- | --- | --- | --- | --- | --- | --- | --- | --- | --- | --- | --- | --- | --- |
|  | 4851 | **RHD4-02-002-A015-(CCTV)-CCTV Poles** |  | 2027-09-29 | 2027-10-10 |  |  |  |  |  |  |  |  |  |  |  |  |  |  |  |
| RHD4CZ5C051CCTV1100 |  | Excavation for RC Base for CCTV Poles for Security Network - (RD-C-5 /1)-Z5-C051-CCTV | 2d | 2027-09-29 | 2027-09-30 | RHD4CZ5C051CCTV2100 |  |  |  | -155d | 0d | Skilled labor [4.32 h]; Unskilled Labor [4.32 h]; Equipment Opreator [8.64 h]; Excavator-Poclain [2.18 h]; Dump Truck [2.18 h]; 25 Meters pole for CCTV Cameras [0.1 nr] | 14,090.2 |  | C051 | Z5 | CONS | CCTV | Excavation | AFT |
| RHD4CZ5C051CCTV1200 |  | Installation for RC Base for CCTV Poles for Security Network - (RD-C-5 /1)-Z5-C051-CCTV | 2d | 2027-10-02 | 2027-10-03 | RHD4CZ5C051CCTV1100 |  |  |  | -155d | 0d | Skilled labor [4.32 h]; Unskilled Labor [4.32 h]; Equipment Opreator [8.64 h]; Excavator-Poclain [2.18 h]; Dump Truck [2.18 h]; 25 Meters pole for CCTV Cameras [0.25 nr] | 35,225.5 |  | C051 | Z5 | CONS | CCTV | RC Base | AFT |
| RHD4CZ5C051CCTV1300 |  | Backfill for RC Base for CCTV Poles for Security Network - (RD-C-5 /1)-Z5-C051-CCTV | 2d | 2027-10-04 | 2027-10-05 | RHD4CZ5C051CCTV1200 |  |  |  | -155d | 0d | Skilled labor [2.88 h]; Unskilled Labor [2.88 h]; Equipment Opreator [5.44 h]; Excavator-Poclain [1.42 h]; Dump Truck [1.42 h]; 25 Meters pole for CCTV Cameras [0.05 nr] | 7,045.1 |  | C051 | Z5 | CONS | CCTV | Backfill | AFT |
| RHD4CZ5C051CCTV1400 |  | Installation for CCTV Poles for Security Network - (RD-C-5 /1)-Z5-C051-CCTV | 2d | 2027-10-06 | 2027-10-07 | RHD4CZ5C051CCTV1300 |  |  |  | -155d | 0d | Skilled labor [7.2 h]; Unskilled Labor [14.56 h]; Electrician [7.2 h]; Equipment Opreator [7.2 h]; Boom Truck [3.59 h]; 25 Meters pole for CCTV Cameras [0.6 nr] | 84,541.2 |  | C051 | Z5 | CONS | CCTV | Installation | AFT |
| RHD4CZ5C051CCTV1500 |  | Protection post Installation for CCTV Poles for Security Network - (RD-C-5 /1)-Z5-C051-CCTV | 2d | 2027-10-09 | 2027-10-10 | RHD4CZ5C051CCTV1400 |  |  |  | -153d | 2d | Skilled labor [21.76 h]; Unskilled Labor [43.52 h]; Supply and Installation of minimum 4 Protection Post for each pole or tower with pipe ?220*6mm THK. [1 nr] | 4,903 |  | C051 | Z5 | CONS | CCTV | Protection post | AFT |
|  | 4852 | **RHD4-02-002-A015-(CCTV)-Camera** |  | 2027-10-11 | 2027-10-12 |  |  |  |  |  |  |  |  |  |  |  |  |  |  |  |
| RHD4CZ5C051CCTV3100 |  | Installation for Cameras for Security Network - (RD-C-5 /1)-Z5-C051-CCTV | 2d | 2027-10-11 | 2027-10-12 | RHD4CZ5C051CCTV1400, RHD4CZ5C051CCTV4100 |  |  |  | -155d | 0d | Unskilled Labor [54.4 h]; Electrician [27.2 h]; Outdoor Camera, 5MP resolution, day/night, fixed bullet camera providing Forensic WDR. [4 nr]; Outdoor PTZ with IR, HDTV 1080 and 31x optical, 12x digital, total 372x zoom, H264/265 with Motion JPEG. [1 nr] | 61,727 |  | C051 | Z5 | CONS | CCTV | Installation | AFT |
|  | 4853 | **RHD4-02-002-A015-(CCTV)-Power and Infrastructure** |  | 2027-10-09 | 2027-10-12 |  |  |  |  |  |  |  |  |  |  |  |  |  |  |  |
| RHD4CZ5C051CCTV4100 |  | Installation of Power outlet, UPS and midspan for PTZ Camerafor Cameras for Security Network - (RD-C-5 /1)-Z5-C051-CCTV | 2d | 2027-10-09 | 2027-10-10 | RHD4CZ5C051CCTV1400 |  |  |  | -155d | 0d | Skilled labor [13.12 h]; Unskilled Labor [52.32 h]; Electrician [26.08 h]; Equipment Opreator [26.08 h]; Excavator-Poclain [6.53 h]; Dump Truck [6.53 h]; Outdoor ready IP66-rated midspan for PTZ Camera (The outdoor- ready midspan should be IP66/IP67- and NEMA 4X-rated [1 nr]; 1.2KVA Industrial type UPS located at FEC remote poles [2 nr] | 15,232 |  | C051 | Z5 | CONS | CCTV | Power | AFT |
| RHD4CZ5C051CCTV4200 |  | Short Range Wireless PoP wireless Bridgefor CCTV Poles for Security Network - (RD-L-16)-Z5-L016-CCTV | 2d | 2027-10-11 | 2027-10-12 | RHD4CZ5C051CCTV4100 |  |  |  | -155d | 0d | Skilled labor [21.76 h]; Unskilled Labor [43.52 h]; Electrician [21.76 h]; Equipment Opreator [43.52 h]; Excavator-Poclain [10.88 h]; Dump Truck [10.88 h]; Short Range wireless point to point wireless bridge [4 nr] | 58,548 |  | L016 | Z5 | CONS | CCTV | Wireless Pop | AFT |
|  | 4855 | **RHD4-02-002-A015-(CCTV)-CCTV Panels and Components** |  | 2027-10-13 | 2027-10-30 |  |  |  |  |  |  |  |  |  |  |  |  |  |  |  |
| RHD4CZ5C051CCTV6100 |  | Installation for CCTV Panels for Security Network - (RD-C-5 /1)-Z5-C051-CCTV | 15d | 2027-10-13 | 2027-10-30 | RHD4CZ5C051CCTV4200, RHD4CZ5C051CCTV3100, RHD4CZ5C051CCTV1500 |  |  |  | -155d | 0d | Skilled labor [326.72 h]; Unskilled Labor [980.16 h]; Electrician [326.72 h]; Pole mounted Filed Equipment cabinet (FEC) , with fan and ventilation, NEMEX 4X ,door, minimum size (600x600x400mm) , the cabinet/enclosurE [2 nr]; 8 Port Industrial PoE Switch 10/1000BaseT (-40 deg to +70 deg. Celsius) for remote poles and as specifiedin item 15. [1 nr]; UTP CAT6 Patch Cord , connect the industrial switch with the cameras, and radio wireless antenna [12 nr] | 32,584 |  | C051 | Z5 | CONS | CCTV | Equipment | AFT |
|  | 4109 | **RHD4-02-002-Z5-RA07** |  | 2026-05-20 | 2027-12-09 |  |  |  |  |  |  |  |  |  |  |  |  |  |  |  |
|  | 4140 | **RHD4-02-002-Z5-RA07-Crossings Sewage Network - SWCr** |  |  |  |  |  |  |  |  |  |  |  |  |  |  |  |  |  |  |
|  | 4150 | **RHD4-02-002-RA07-(SWCr)-MH Works - 1200 mm diameter** |  |  |  |  |  |  |  |  |  |  |  |  |  |  |  |  |  |  |
|  | 4146 | **RHD4-02-002-RA07-(SWCr)-UPVC Pipes - 200 mm diameter** |  |  |  |  |  |  |  |  |  |  |  |  |  |  |  |  |  |  |
|  | 4184 | **RHD4-02-002-Z5-RA07-Crossings Potable Network - PTCr** |  |  |  |  |  |  |  |  |  |  |  |  |  |  |  |  |  |  |
|  | 4197 | **RHD4-02-002-RA07-(PTCr)-Fire Hydrant** |  |  |  |  |  |  |  |  |  |  |  |  |  |  |  |  |  |  |
|  | 4231 | **RHD4-02-002-Z5-RA07-Crossings Irrigation Network - IRRC** |  |  |  |  |  |  |  |  |  |  |  |  |  |  |  |  |  |  |
|  | 4234 | **RHD4-02-002-RA07-(IRRC)-HDPE Pipes - 200 mm diameter** |  |  |  |  |  |  |  |  |  |  |  |  |  |  |  |  |  |  |
|  | 4240 | **RHD4-02-002-RA07-(IRRC)-Gate Valves (Direct Buried)** |  |  |  |  |  |  |  |  |  |  |  |  |  |  |  |  |  |  |
|  | 4288 | **RHD4-02-002-Z5-RA07-Road Works - RD** |  | 2026-05-20 | 2027-12-09 |  |  |  |  |  |  |  |  |  |  |  |  |  |  |  |
|  | 4289 | **RHD4-02-002-RA07-(RD)-Subgrade** |  | 2026-05-20 | 2026-06-03 |  |  |  |  |  |  |  |  |  |  |  |  |  |  |  |
| RHD4CZ5RA07RD1100 |  | Supply, lay and compaction subgrade compacted thickness 300 mm for Roads - (ROUND-07)-Z5-RA07-RD | 3d | 2026-05-20 A | 2026-06-03 A | RHD4ENSDZ5APPRD220, RHD4ENSDZ5APPEW100, RHD4CZ5RA07SW3200 SS | 100% | 2026-08-20 | 2026-08-23 |  |  | Skilled labor [76.34 h]; Unskilled Labor [152.68 h]; Electrician [76.34 h]; Equipment Opreator [521.21 h]; Water Truck [25.16 h]; Roller compactor [38.12 h]; Grader [76.34 h]; Dump Truck [381.6 h]; Subgrade [3670.66 m3] | 69,742.54 | 69,742.54 | RA07 | Z5 | CONS | RD | Subgrade | bef |

| ID | WBS | Activity | Duration | Start | Finish | Predecessors | Complete | Remaining | Planned start | Planned finish | Total float | Free float | Resources | Cost | Actual cost | RDH4-01-001-Road and Block Names-1 | RDH4-01-001-Zones-1 | RDH4-01-001-Phases-1 | RDH4-01-001-Networks-1 | RDH4-01-001-Work Method-1 | RDH4-01-001-MENEM |
| --- | --- | --- | --- | --- | --- | --- | --- | --- | --- | --- | --- | --- | --- | --- | --- | --- | --- | --- | --- | --- | --- |
|  | 4290 | **RHD4-02-002-RA07-(RD)-Aggregate Base Course** |  | 2027-02-08 | 2027-02-14 |  |  |  |  |  |  |  |  |  |  |  |  |  |  |  |  |
| RHD4CZ5RA07RD2100 |  | Supply, lay and compaction Aggregate base course compacted thickness 300 mmfor Roads - (ROUND-07)-Z5-RA07-RD | 6d | 2027-02-08 | 2027-02-14 | RHD4PRSHLDOSRD1000, RHD4PRSHLSTAGRD1000, RHD4CZ5RA07RD1100 |  |  |  |  | -159d | 0d | Skilled labor [28.31 h]; Unskilled Labor [56.52 h]; Equipment Opreator [357.86 h]; Water Truck [18.62 h]; Roller compactor [56.52 h]; Grader [56.52 h]; Dump Truck [226.08 h]; Aggregate Base Courses [2305.54 m3] | 131,415.78 |  | RA07 | Z5 | CONS | RD | ABC | bef |
|  | 4291 | **RHD4-02-002-RA07-(RD)-Bituminous base course Two Layers, including (MC1)&(RC2)** |  | 2027-02-15 | 2027-10-07 |  |  |  |  |  |  |  |  |  |  |  |  |  |  |  |  |
| RHD4CZ5RA07RD3100 |  | Supply, lay and Asphaltic base course including Prime Coat (MC1) for 1st Layer - (ROUND-07)-Z5-RA07-RD | 3d | 2027-02-15 | 2027-02-17 | RHD4CZ5RA07RD2100, RHD4PRSHLDOSRD1100, RHD4ENMSASPH2000, RHD4ENMSASPH2010, RHD4PRSHLSTAGRD1100 |  |  |  |  | -159d | 0d | Skilled labor [22.4 h]; Unskilled Labor [134.71 h]; Equipment Opreator [336.73 h]; Bobcat [22.4 h]; Roller compactor [22.4 h]; Asphalt Paver [22.4 h]; Rubber Compactor [44.87 h]; MC1/RC2 Sprinkler [22.4 h]; Dump Truck [202.02 h]; Bituminous base course (Grading I - Class A), including Prime coat (MC1) & tack coate (RC2) [821.24 m3] | 392,552.72 |  | RA07 | Z5 | CONS | RD | 150 mm | AFT |
| RHD4CZ5RA07RD3200 |  | Supply, lay and Asphaltic base course including Tack Coat (RC2) for 2nd Layer - (ROUND-07)-Z5-RA07-RD | 3d | 2027-10-05 | 2027-10-07 | RHD4PRSHLDOSRD1100, RHD4PRSHLSTAGRD1100, RHD4CZ5RA07CCTV6100, RHD4CZ5RA07CCTV1500 |  |  |  |  | -171d | 0d | Skilled labor [22.4 h]; Unskilled Labor [134.71 h]; Equipment Opreator [336.73 h]; Bobcat [22.4 h]; Roller compactor [22.4 h]; Asphalt Paver [22.4 h]; Rubber Compactor [44.87 h]; MC1/RC2 Sprinkler [22.4 h]; Dump Truck [202.02 h]; Bituminous base course (Grading I - Class A), including Prime coat (MC1) & tack coate (RC2) [821.24 m3] | 392,552.72 |  | RA07 | Z5 | CONS | RD | 150 mm | AFT |
|  | 4293 | **RHD4-02-002-RA07-(RD)-Precast Concrete Curb** |  | 2027-10-09 | 2027-10-13 |  |  |  |  |  |  |  |  |  |  |  |  |  |  |  |  |
| RHD4CZ5RA07RD5100 |  | Supply and installation Precast Concrete Kerb for Roads - (ROUND-07)-Z5-RA07-RD | 5d | 2027-10-09 | 2027-10-13 | RHD4CZ5RA07RD3200, RHD4PRSHLDOSRD1200, RHD4ENMSRD2000, RHD4ENMSRD2010, RHD4PRSHLSTAGRD1200 |  |  |  |  | -171d | 0d | Mason [149.2 h]; Skilled labor [49.77 h]; Unskilled Labor [149.2 h]; Equipment Opreator [99.43 h]; Bobcat [49.77 h]; Concrete Mixer Truck [49.77 h]; Precast Concrete Curbstone, type K1 [2055 m] | 113,025 |  | RA07 | Z5 | CONS | RD | Curbs | AFT |
|  | 4296 | **RHD4-02-002-RA07-(RD)-Traffic Signage** |  | 2027-10-14 | 2027-10-20 |  |  |  |  |  |  |  |  |  |  |  |  |  |  |  |  |
| RHD4CZ5RA07RD8100 |  | Installation of Traffic Signage for Road Network - (ROUND-07)-Z5-RA07-RD | 6d | 2027-10-14 | 2027-10-20 | RHD4CZ5RA07RD5100, RHD4PRSHLDOSRD1600, RHD4PRSHLSTAGRD1600 |  |  |  |  | -171d | 0d | Skilled labor [130.68 h]; Unskilled Labor [65.34 h]; Electrician [18.51 h]; Equipment Opreator [20.47 h]; Boom Truck [13.07 h]; Concrete Mixer Truck [7.41 h]; Traffic signs, ground mounted, 1 Sheet Aluminium, (breakaway)Single post [12 nr]; Traffic signs, ground mounted, 1 Sheets Aluminium, (breakaway)Double post [4 nr] | 22,068 |  | RA07 | Z5 | CONS | RD | Traffic Signage | AFT |
|  | 4294 | **RHD4-02-002-RA07-(RD)-Precast Interlocking Block Pavers** |  |  |  |  |  |  |  |  |  |  |  |  |  |  |  |  |  |  |  |
|  | 4292 | **RHD4-02-002-RA07-(RD)-Bituminous concrete wearing course including tack coat (RC2)** |  | 2027-10-14 | 2027-10-16 |  |  |  |  |  |  |  |  |  |  |  |  |  |  |  |  |
| RHD4CZ5RA07RD4100 |  | Supply, lay and compaction Asphaltic wearing course including tack Coat (RC2)for Road Network - (ROUND-07)-Z5-RA07-RD | 2d | 2027-10-14 | 2027-10-16 | RHD4CZ5RA07RD5100 |  |  |  |  | -167d | 4d | Skilled labor [11.54 h]; Unskilled Labor [69.37 h]; Equipment Opreator [173.48 h]; Bobcat [11.54 h]; Roller compactor [11.54 h]; Asphalt Paver [11.54 h]; Rubber Compactor [23.09 h]; MC1/RC2 Sprinkler [11.54 h]; Dump Truck [104.11 h]; Bituminous concrete wearing course, (Grading I - Class A), including tack coat (RC2) [551.53 m3] | 299,480.79 |  | RA07 | Z5 | CONS | RD | 50 mm | AFT |
|  | 4295 | **RHD4-02-002-RA07-(RD)-Pavement Marking** |  | 2027-10-21 | 2027-12-09 |  |  |  |  |  |  |  |  |  |  |  |  |  |  |  |  |
| RHD4CZ5RA07RD7100 |  | Pavement Markings for Road Network - (ROUND-07)-Z5-RA07-RD | 4d | 2027-10-21 | 2027-10-25 | RHD4CZ5RA07RD4100, RHD4PRSHLDOSRD1500, RHD4PRSHLSTAGRD1500, RHD4CZ5RA07RD8100 |  |  |  |  | -171d | 6d | Skilled labor [39.75 h]; Unskilled Labor [79.5 h]; Equipment Opreator [39.75 h]; Road Marking Machine [39.75 h]; Retroreflective Thermoplastic White Traffic Markings [261.22 m2]; Retroreflective Thermoplastic Yellow, Traffic Markings [140.35 m2]; Retroreflective raised pavement markers (cat eyes) [542 nr] | 30,876.67 |  | RA07 | Z5 | CONS | RD | Pavement Marking | AFT |
| RHD4CZ5RA07RD9200 |  | Installation for Wheel Stopper for Road Network - (ROUND-07)-Z5-RA07-RD | 10d | 2027-11-29 | 2027-12-09 | RHD4CZ5C051RD7100 |  |  |  |  | -155d | 43d | Mason [326.71 h]; Skilled labor [108.9 h]; Unskilled Labor [217.81 h]; Equipment Opreator [21.78 h]; Boom Truck [21.78 h]; Wheel Stoppers [50 nr] | 12,250 |  | C051 | Z5 | CONS | RD | Wheel Stopper | AFT |
|  | 4113 | **RHD4-02-002-Z5-RA07-Storm Network - ST** |  |  |  |  |  |  |  |  |  |  |  |  |  |  |  |  |  |  |  |
|  | 4130 | **RHD4-02-002-RA07-(ST)-MH Works - 1200 mm diameter** |  |  |  |  |  |  |  |  |  |  |  |  |  |  |  |  |  |  |  |
|  | 4132 | **RHD4-02-002-RA07-(ST)-MH Works - 2000 mm diameter** |  |  |  |  |  |  |  |  |  |  |  |  |  |  |  |  |  |  |  |
|  | 4131 | **RHD4-02-002-RA07-(ST)-MH Works - 1500 mm diameter** |  |  |  |  |  |  |  |  |  |  |  |  |  |  |  |  |  |  |  |
|  | 4120 | **RHD4-02-002-RA07-(ST)-GRP Pipes - 1000 mm diameter** |  |  |  |  |  |  |  |  |  |  |  |  |  |  |  |  |  |  |  |
|  | 4119 | **RHD4-02-002-RA07-(ST)-GRP Pipes - 900 mm diameter** |  |  |  |  |  |  |  |  |  |  |  |  |  |  |  |  |  |  |  |
|  | 4118 | **RHD4-02-002-RA07-(ST)-GRP Pipes - 800 mm diameter** |  |  |  |  |  |  |  |  |  |  |  |  |  |  |  |  |  |  |  |
|  | 4117 | **RHD4-02-002-RA07-(ST)-GRP Pipes - 700 mm diameter** |  |  |  |  |  |  |  |  |  |  |  |  |  |  |  |  |  |  |  |
|  | 4114 | **RHD4-02-002-RA07-(ST)-GRP Pipes - 400 mm diameter** |  |  |  |  |  |  |  |  |  |  |  |  |  |  |  |  |  |  |  |
|  | 4129 | **RHD4-02-002-RA07-(ST)-UPVC Pipes - 400 mm diameter** |  |  |  |  |  |  |  |  |  |  |  |  |  |  |  |  |  |  |  |
|  | 4128 | **RHD4-02-002-RA07-(ST)-UPVC Pipes - 300 mm diameter** |  |  |  |  |  |  |  |  |  |  |  |  |  |  |  |  |  |  |  |
|  | 4136 | **RHD4-02-002-RA07-(ST)-Concrete Encasement** |  |  |  |  |  |  |  |  |  |  |  |  |  |  |  |  |  |  |  |
|  | 4137 | **RHD4-02-002-Z5-RA07-Catch Basin - ST** |  |  |  |  |  |  |  |  |  |  |  |  |  |  |  |  |  |  |  |
|  | 4138 | **RHD4-02-002-RA07-(ST)-Single Catch Basin Works** |  |  |  |  |  |  |  |  |  |  |  |  |  |  |  |  |  |  |  |
|  | 4139 | **RHD4-02-002-RA07-(ST)-Double Catch Basin Works** |  |  |  |  |  |  |  |  |  |  |  |  |  |  |  |  |  |  |  |
|  | 4162 | **RHD4-02-002-Z5-RA07-Sewage Network - SW** |  | 2026-08-04 | 2027-02-24 |  |  |  |  |  |  |  |  |  |  |  |  |  |  |  |  |
|  | 4172 | **RHD4-02-002-RA07-(SW)-MH Works - 1200 mm diameter** |  | 2026-08-09 | 2027-02-24 |  |  |  |  |  |  |  |  |  |  |  |  |  |  |  |  |
| RHD4CZ5RA07SW3100 |  | Excavation and PC Blinding works for MH 1200 mm - (ROUND-07)-Z5-RA07-SW | 3d | 2026-08-09 A | 2027-02-07 | RHD4ENSDZ5APPSW120, RHD4CZ5C061ST1500 SS, RHD4CZ5C051ST3101 | 80% | 1d | 2026-08-17 | 2026-08-19 | -162d | 0d | Skilled labor [27.2 h]; Unskilled Labor [27.2 h]; Equipment Opreator [43.56 h]; Excavator-Poclain [27.2 h]; Water Truck [2.72 h]; Dump Truck [13.6 h]; MH (1200mm Diameter) - SW - depth 3.51 -4.5m [1.25 nr] | 16,650 | 11,100 | RA07 | Z5 | CONS | SW | Excavation | bef |
| RHD4CZ5RA07SW3200 |  | Installation of Base for MH 1200 mm - (ROUND-07)-Z5-RA07-SW | 3d | 2026-08-10 A | 2027-02-09 | RHD4CZ5RA07SW3100 | 40% | 2d | 2026-08-20 | 2026-08-23 | -162d | 0d | Skilled labor [54.45 h]; Unskilled Labor [54.45 h]; Equipment Opreator [21.78 h]; Boom Truck [10.89 h]; Concrete Mixer Truck [10.89 h]; MH (1200mm Diameter) - SW - depth 3.51 -4.5m [1.25 nr] | 16,650 | 5,550 | RA07 | Z5 | CONS | SW | Installing Base | bef |
| RHD4CZ5RA07SW3300 |  | MH Ring and C.Slab works and Backfilling works for MH 1200 mm - (ROUND-07)-Z5-RA07-SW | 5d | 2027-02-10 | 2027-02-15 | RHD4CZ5RA07SW3200 |  |  |  |  | -162d | 0d | Skilled labor [54.45 h]; Unskilled Labor [54.45 h]; Equipment Opreator [38.12 h]; Boom Truck [21.78 h]; Concrete Mixer Truck [16.34 h]; MH (1200mm Diameter) - SW - depth 3.51 -4.5m [1.75 nr] | 23,310 |  | RA07 | Z5 | CONS | SW | Installing Rings | bef |
| RHD4CZ5RA07SW3400 |  | Steel Cover for MH 1200 mm - (ROUND-07)-Z5-RA07-SW | 2d | 2027-02-16 | 2027-02-17 | RHD4CZ5RA07SW3300 |  |  |  |  | -162d | 0d | Skilled labor [18.19 h]; Unskilled Labor [36.26 h]; Equipment Opreator [3.59 h]; Boom Truck [3.59 h]; MH (1200mm Diameter) - SW - depth 3.51 -4.5m [0.25 nr] | 3,330 |  | RA07 | Z5 | CONS | SW | Steel Cover | bef |
| RHD4CZ5RA07SW3500 |  | Finishing, Benching, Testing works for MH 1200 mm - (ROUND-07)-Z5-RA07-SW | 5d | 2027-02-18 | 2027-02-24 | RHD4CZ5RA07SW3400 |  |  |  |  | -162d | 14d | Skilled labor [54.45 h]; Unskilled Labor [108.9 h]; Plumber [54.45 h]; Equipment Opreator [10.89 h]; Water Truck [10.89 h]; MH (1200mm Diameter) - SW - depth 3.51 -4.5m [0.5 nr] | 6,660 |  | RA07 | Z5 | CONS | SW | Benching | bef |

| ID | WBS | Activity | Duration | Start | Finish | Predecessors | Complete | Remaining | Planned start | Planned finish | Total float | Free float | Resources | Cost | Actual cost | RDH4-01-001-Road and Block Names-1 | RDH4-01-001-Zones-1 | RDH4-01-001-Phases-1 | RDH4-01-001-Networks-1 | RDH4-01-001-Work Method-1 | RDH4-01-001-MENEM |
| --- | --- | --- | --- | --- | --- | --- | --- | --- | --- | --- | --- | --- | --- | --- | --- | --- | --- | --- | --- | --- | --- |
|  | 4168 | **RHD4-02-002-RA07-(SW)-UPVC Pipes - 200 mm diameter** |  | 2026-08-04 | 2027-02-20 |  |  |  |  |  |  |  |  |  |  |  |  |  |  |  |  |
| RHD4CZ5RA07SW2100 |  | Excavation works for UPVC Pipe Line 200 mm - (ROUND-07)-Z5-RA07-SW | 2d | 2026-08-04 A | 2026-09-17 A | RHD4ENSDZ5APPSW120, RHD4CZ5RA07SW3200 | 100% |  | 2026-08-24 | 2026-08-25 |  |  | Skilled labor [16.8 h]; Unskilled Labor [16.8 h]; Equipment Opreator [20.15 h]; Excavator-Poclain [16.8 h]; Dump Truck [3.38 h]; UPVC (200mm Diameter) - SW - Depth: 2.51m - 3.5m [34.68 m]; UPVC (200mm Diameter) - SW - Depth: 3.51m - 4.5m | 10,612.08 | 10,612.08 | RA07 | Z5 | CONS | SW | Excavation | bef |
| RHD4CZ5RA07SW2200 |  | Bedding works for UPVC Pipe Line 200 mm - (ROUND-07)-Z5-RA07-SW | 2d | 2026-08-06 A | 2026-09-20 A | RHD4CZ5RA07SW2100 | 100% |  | 2026-08-26 | 2026-08-27 |  |  | Skilled labor [16.8 h]; Unskilled Labor [33.54 h]; Equipment Opreator [33.54 h]; Excavator-Poclain [16.8 h]; Dump Truck [16.8 h]; UPVC (200mm Diameter) - SW - Depth: 2.51m - 3.5m [11.56 m]; UPVC (200mm Diameter) - SW - Depth: 3.51m - 4.5m | 3,537.36 | 3,537.36 | RA07 | Z5 | CONS | SW | Bedding | bef |
| RHD4CZ5RA07SW2300 |  | Installing for UPVC Pipe Line 200 mm - (ROUND-07)-Z5-RA07-SW | 2d | 2026-08-10 A | 2026-09-22 A | RHD4CZ5RA07SW2200, RHD4CZ5RA07SW3300, RHD4PRSHLSTAGSW1004, RHD4PRSHLPOSW1000, RHD4PRSHLDOSSW1004, RHD4PRSHLDOSSW1304, RHD4PRSHLPOSW1100, RHD4PRSHLDOSSW1104 | 100% |  | 2026-08-29 | 2026-08-30 |  |  | Unskilled Labor [33.54 h]; Plumber [16.8 h]; Equipment Opreator [16.8 h]; Boom Truck [16.8 h]; UPVC (200mm Diameter) - SW - Depth: 2.51m - 3.5m [92.49 m]; UPVC (200mm Diameter) - SW - Depth: 3.51m - 4.5m | 28,301.94 | 28,301.94 | RA07 | Z5 | CONS | SW | Installation | bef |
| RHD4CZ5RA07SW2500 |  | Backfilling and warning tape works for UPVC Pipe Line 200 mm - (ROUND-07)-Z5-RA07-SW | 2d | 2026-08-13 A | 2027-02-20 | RHD4CZ5RA07SW2400, RHD4CZ5RA07RD3100 | 42% | 2d | 2026-09-02 | 2026-09-03 | -159d | 17d | Skilled labor [16.8 h]; Unskilled Labor [33.54 h]; Equipment Opreator [33.54 h]; Excavator-Poclain [16.8 h]; Dump Truck [16.8 h]; UPVC (200mm Diameter) - SW - Depth: 2.51m - 3.5m [46.24 m]; UPVC (200mm Diameter) - SW - Depth: 3.51m - 4.5m | 14,149.44 |  | RA07 | Z5 | CONS | SW | Backfilling | bef |
| RHD4CZ5RA07SW2400 |  | Primary Test for UPVC Pipe Line 200 mm - (ROUND-07)-Z5-RA07-SW | 2d | 2027-02-16 | 2027-02-17 | RHD4CZ5RA07SW2300 |  |  |  |  | -159d | 0d | Unskilled Labor [15.03 h]; Plumber [15.03 h]; Equipment Opreator [15.03 h]; Water Truck [15.03 h]; UPVC (200mm Diameter) - SW - Depth: 2.51m - 3.5m [46.24 m]; UPVC (200mm Diameter) - SW - Depth: 3.51m - 4.5m | 14,149.44 |  | RA07 | Z5 | CONS | SW | Primary Test | bef |
|  | 4199 | **RHD4-02-002-Z5-RA07-Potable Network - PT** |  | 2026-08-04 | 2027-04-29 |  |  |  |  |  |  |  |  |  |  |  |  |  |  |  |  |
|  | 4201 | **RHD4-02-002-RA07-(PT)-HDPE Pipes - 160 mm diameter** |  | 2026-08-04 | 2027-04-15 |  |  |  |  |  |  |  |  |  |  |  |  |  |  |  |  |
| RHD4CZ5RA07PT1101 |  | Excavation works for HDPE Pipline 160 mm - (ROUND-07)-Z5-RA07-PT | 2d | 2026-08-04 A | 2027-04-06 | RHD4ENSDZ5APPPT130, RHD4ENMSPT2000, RHD4CZ5RA07SW3100, RHD4CZ5C051IRR3200 | 92% | 2d | 2026-11-14 | 2026-11-15 | -154d | 0d | Skilled labor [5.45 h]; Unskilled Labor [5.45 h]; Equipment Opreator [6.53 h]; Excavator-Poclain [5.45 h]; Dump Truck [1.09 h]; HDPE (160mm Diameter) - PT - Depth: less than 1.5m [12.54 m] | 1,341.24 |  | RA07 | Z5 | CONS | PT | Excavation | bef |
| RHD4CZ5RA07PT1201 |  | Bedding works for HDPE Pipline 160 mm - (ROUND-07)-Z5-RA07-PT | 2d | 2026-08-06 A | 2027-04-08 | RHD4CZ5RA07PT1101 | 92% | 2d | 2026-11-16 | 2026-11-17 | -154d | 0d | Skilled labor [4.57 h]; Unskilled Labor [9.15 h]; Equipment Opreator [9.15 h]; Excavator-Poclain [4.57 h]; Dump Truck [4.57 h]; HDPE (160mm Diameter) - PT - Depth: less than 1.5m [6.27 m] | 670.62 |  | RA07 | Z5 | CONS | PT | Bedding | bef |
| RHD4CZ5RA07PT1301 |  | Installing for HDPE Pipline 160 mm - (ROUND-07)-Z5-RA07-PT | 2d | 2026-08-08 A | 2027-04-11 | RHD4CZ5RA07PT1201, RHD4PRSHLDOSPT1000, RHD4PRSHLSTAGPT1000 | 92% | 2d | 2026-11-18 | 2026-11-19 | -154d | 0d | Unskilled Labor [18.19 h]; Plumber [9.15 h]; Equipment Opreator [9.15 h]; Boom Truck [9.15 h]; HDPE (160mm Diameter) - PT - Depth: less than 1.5m [56.41 m] | 6,035.6 |  | RA07 | Z5 | CONS | PT | Installation | bef |
| RHD4CZ5RA07PT1401 |  | Primary Test for HDPE Pipline 160 mm - (ROUND-07)-Z5-RA07-PT | 2d | 2027-04-12 | 2027-04-13 | RHD4CZ5RA07PT1301 |  |  |  |  | -154d | 0d | Unskilled Labor [2.72 h]; Plumber [2.72 h]; Equipment Opreator [2.72 h]; Water Truck [2.72 h]; HDPE (160mm Diameter) - PT - Depth: less than 1.5m [25.07 m] | 2,682.49 |  | RA07 | Z5 | CONS | PT | Primary Test | bef |
| RHD4CZ5RA07PT1501 |  | Backfilling and warning tape works for HDPE Pipline 160 mm - (ROUND-07)-Z5-RA07-PT | 2d | 2027-04-14 | 2027-04-15 | RHD4CZ5RA07PT1401 |  |  |  |  | -154d | 0d | Skilled labor [6.86 h]; Unskilled Labor [13.6 h]; Equipment Opreator [13.6 h]; Excavator-Poclain [6.86 h]; Dump Truck [6.86 h]; HDPE (160mm Diameter) - PT - Depth: less than 1.5m [25.07 m] | 2,682.49 |  | RA07 | Z5 | CONS | PT | Backfilling | bef |
|  | 1751 | **RHD4-02-002-RA07-(PT)-Air Valve Chambers** |  | 2027-04-19 | 2027-04-27 |  |  |  |  |  |  |  |  |  |  |  |  |  |  |  |  |
| RHD4CZ5RA07PT2102 |  | Excavation and Bedding for Air Valve Chambers for Potable Water Network - (ROUND-07)-Z5-RA07-PT | 2d | 2027-04-19 | 2027-04-20 | RHD4CZ5RA07PT2101 |  |  |  |  | -154d | 0d | Skilled labor [5.45 h]; Unskilled Labor [5.45 h]; Equipment Opreator [1.09 h]; Excavator-Poclain [0.54 h]; Dump Truck [0.54 h]; Air Valve chambers - PT [0.25 nr] | 1,193 |  | RA07 | Z5 | CONS | PT | Excavation and Bedding | bef |
| RHD4CZ5RA07PT2202 |  | PC works for Air Valve Chambers for Potable Water Network - (ROUND-07)-Z5-RA07-PT | 2d | 2027-04-21 | 2027-04-22 | RHD4CZ5RA07PT2102 |  |  |  |  | -154d | 0d | Skilled labor [5.45 h]; Unskilled Labor [10.89 h]; Equipment Opreator [0.54 h]; Concrete Pump [0.54 h]; Air Valve chambers - PT [0.1 nr] | 477.2 |  | RA07 | Z5 | CONS | PT | PC Works | bef |
| RHD4CZ5RA07PT2302 |  | Installation for Air Valve Chambers for Potable Water Network - (ROUND-07)-Z5-RA07-PT | 2d | 2027-04-24 | 2027-04-25 | RHD4CZ5RA07PT2202 |  |  |  |  | -154d | 0d | Skilled labor [5.45 h]; Unskilled Labor [10.89 h]; Equipment Opreator [1.09 h]; Boom Truck [1.09 h]; Air Valve chambers - PT [0.55 nr] | 2,624.6 |  | RA07 | Z5 | CONS | PT | Installation | bef |
| RHD4CZ5RA07PT2402 |  | Backfilling works for Air Valve Chambers for Potable Water Network - (ROUND-07)-Z5-RA07-PT | 2d | 2027-04-26 | 2027-04-27 | RHD4CZ5RA07PT2302 |  |  |  |  | -154d | 0d | Skilled labor [5.45 h]; Unskilled Labor [10.89 h]; Equipment Opreator [1.09 h]; Water Truck [0.54 h]; Dump Truck [0.54 h]; Air Valve chambers - PT [0.1 nr] | 477.2 |  | RA07 | Z5 | CONS | PT | Backfilling Works | bef |
|  | 2888 | **RHD4-02-002-RA071-(PT)-Fire Hydrant** |  | 2027-04-19 | 2027-04-29 |  |  |  |  |  |  |  |  |  |  |  |  |  |  |  |  |
| RHD4CZ5RA07PT4100 |  | Excavation and Bedding and Pipe Installation for Fire Hydrant - (ROUND-07)-Z5-RA07-PT | 2d | 2027-04-19 | 2027-04-20 | RHD4CZ5RA07PT2101 |  |  |  |  | -154d | 0d | Skilled labor [21.78 h]; Unskilled Labor [21.78 h]; Plumber [21.78 h]; Equipment Opreator [10.89 h]; Excavator-Poclain [10.89 h]; 3-outlet fire hydrant (2 x 2.5 inch and 1 x 4.5 inch) in the form of a separate dry vacuum cylinder [0.4 nr] | 5,048 |  | RA07 | Z5 | CONS | PT | Excavation | bef |
| RHD4CZ5RA07PT4200 |  | Valve Installation for Fire Hydrant - (ROUND-07)-Z5-RA07-PT | 2d | 2027-04-21 | 2027-04-22 | RHD4CZ5RA07PT4100 |  |  |  |  | -154d | 0d | Unskilled Labor [14.48 h]; Plumber [14.48 h]; 3-outlet fire hydrant (2 x 2.5 inch and 1 x 4.5 inch) in the form of a separate dry vacuum cylinder [0.8 nr] | 10,096 |  | RA07 | Z5 | CONS | PT | Valve | bef |
| RHD4CZ5RA07PT4300 |  | Stem for Fire Hydrant - (ROUND-07)-Z5-RA07-PT | 2d | 2027-04-24 | 2027-04-25 | RHD4CZ5RA07PT4200 |  |  |  |  | -154d | 0d | Unskilled Labor [14.48 h]; Plumber [14.48 h]; 3-outlet fire hydrant (2 x 2.5 inch and 1 x 4.5 inch) in the form of a separate dry vacuum cylinder [1.2 nr] | 15,144 |  | RA07 | Z5 | CONS | PT | Stem | bef |
| RHD4CZ5RA07PT4400 |  | Fire Installation for Fire Hydrant - (ROUND-07)-Z5-RA07-PT | 2d | 2027-04-26 | 2027-04-27 | RHD4CZ5RA07PT4300 |  |  |  |  | -154d | 0d | Unskilled Labor [14.48 h]; Plumber [14.48 h]; Equipment Opreator [14.48 h]; Boom Truck [14.48 h]; 3-outlet fire hydrant (2 x 2.5 inch and 1 x 4.5 inch) in the form of a separate dry vacuum cylinder [1.4 nr] | 17,668 |  | RA07 | Z5 | CONS | PT | Fire | bef |
| RHD4CZ5RA07PT4500 |  | Protection Barriers for Fire Hydrant - (ROUND-07)-Z5-RA07-PT | 2d | 2027-04-28 | 2027-04-29 | RHD4CZ5RA07PT4400 |  |  |  |  | -154d | 13.02d | Unskilled Labor [8.71 h]; Plumber [8.71 h]; 3-outlet fire hydrant (2 x 2.5 inch and 1 x 4.5 inch) in the form of a separate dry vacuum cylinder [0.2 nr] | 2,524 |  | RA07 | Z5 | CONS | PT | Protection Barriers | bef |

| ID | WBS | Activity | Duration | Start | Finish | Predecessors | Complete | Remaining | Planned start | Planned finish | Total float | Free float | Resources | Cost | RDH4-01-001-Road and Block Names-1 | RDH4-01-001-Zones-1 | RDH4-01-001-Phases-1 | RDH4-01-001-Networks-1 | RDH4-01-001-Work Method-1 | RDH4-01-001-MENEM |
| --- | --- | --- | --- | --- | --- | --- | --- | --- | --- | --- | --- | --- | --- | --- | --- | --- | --- | --- | --- | --- |
|  | 4208 | **RHD4-02-002-RA07-(PT)-Wash out Valve Chambers** |  | 2027-04-17 | 2027-04-27 |  |  |  |  |  |  |  |  |  |  |  |  |  |  |  |
| RHD4CZ5RA07PT2101 |  | Excavation and Bedding for Wash out Valve Chambers for Potable Water Network - (ROUND-07)-Z5-RA07-PT | 2d | 2027-04-17 | 2027-04-18 | RHD4CZ5RA07PT1501, RHD4ENSDZ5APPPT130 |  |  |  |  | -154d | 0d | Skilled labor [5.45 h]; Unskilled Labor [5.45 h]; Equipment Opreator [1.09 h]; Excavator-Poclain [0.54 h]; Dump Truck [0.54 h]; Wash out chambers - PT [0.25 nr] | 4,686.25 | RA07 | Z5 | CONS | PT | Excavation and Bedding | bef |
| RHD4CZ5RA07PT2201 |  | PC works for Wash out Valve Chambers for Potable Water Network - (ROUND-07)-Z5-RA07-PT | 2d | 2027-04-19 | 2027-04-20 | RHD4CZ5RA07PT2101 |  |  |  |  | -152d | 0d | Skilled labor [5.45 h]; Unskilled Labor [10.89 h]; Equipment Opreator [0.54 h]; Concrete Pump [0.54 h]; Wash out chambers - PT [0.1 nr] | 1,874.5 | RA07 | Z5 | CONS | PT | PC Works | bef |
| RHD4CZ5RA07PT2301 |  | Installation for Wash out Valve Chambers for Potable Water Network - (ROUND-07)-Z5-RA07-PT | 2d | 2027-04-21 | 2027-04-22 | RHD4CZ5RA07PT2201, RHD4PRSHLDOSPT1100, RHD4PRSHLDOSPT1400, RHD4PRSHLSTAGPT1100, RHD4PRSHLSTAGPT1400 |  |  |  |  | -152d | 0d | Skilled labor [5.45 h]; Unskilled Labor [10.89 h]; Equipment Opreator [1.09 h]; Boom Truck [1.09 h]; Wash out chambers - PT [0.55 nr] | 10,309.75 | RA07 | Z5 | CONS | PT | Installation | bef |
| RHD4CZ5RA07PT2401 |  | Backfilling works for Wash out Valve Chambers for Potable Water Network - (ROUND-07)-Z5-RA07-PT | 2d | 2027-04-26 | 2027-04-27 | RHD4CZ5RA07PT2301, RHD4CZ5RA07PT4300 |  |  |  |  | -154d | 0d | Skilled labor [5.45 h]; Unskilled Labor [10.89 h]; Equipment Opreator [1.09 h]; Water Truck [0.54 h]; Dump Truck [0.54 h]; Wash out chambers - PT [0.1 nr] | 1,874.5 | RA07 | Z5 | CONS | PT | Backfilling Works | bef |
|  | 4209 | **RHD4-02-002-RA07-(PT)-Wash out Valves** |  | 2027-04-24 | 2027-04-29 |  |  |  |  |  |  |  |  |  |  |  |  |  |  |  |
| RHD4CZ5RA07PT3102 |  | Installation for Wash out Valves for Potable Water Network - (ROUND-07)-Z5-RA07-PT | 2d | 2027-04-24 | 2027-04-25 | RHD4CZ5RA07PT2301, RHD4PRSHLDOSPT1200, RHD4PRSHLSTAGPT1200 |  |  |  |  | -152d | 2d | Unskilled Labor [5.45 h]; Plumber [5.45 h]; Wash out valve diameter 100 mm - PT [0.9 nr] | 3,373.2 | RA07 | Z5 | CONS | PT | Installation | bef |
| RHD4CZ5RA07PT3202 |  | Stem and Service box for Wash out Valves for Potable Water Network - (ROUND-07)-Z5-RA07-PT | 2d | 2027-04-28 | 2027-04-29 | RHD4CZ5RA07PT3102, RHD4CZ5RA07PT2401 |  |  |  |  | -154d | 0d | Unskilled Labor [5.45 h]; Plumber [5.45 h]; Wash out valve diameter 100 mm - PT [0.1 nr] | 374.8 | RA07 | Z5 | CONS | PT | Stem and Service box | bef |
|  | 1752 | **RHD4-02-002-RA07-(PT)-Air Valves** |  | 2027-04-26 | 2027-04-29 |  |  |  |  |  |  |  |  |  |  |  |  |  |  |  |
| RHD4CZ5RA07PT3103 |  | Installation for Air Valves for Potable Water Network - (ROUND-07)-Z5-RA07-PT | 2d | 2027-04-26 | 2027-04-27 | RHD4CZ5RA07PT2302 |  |  |  |  | -154d | 0d | Unskilled Labor [5.45 h]; Plumber [5.45 h]; Air valve diameter 50 mm - PT [0.9 nr] | 4,427.1 | RA07 | Z5 | CONS | PT | Installation | bef |
| RHD4CZ5RA07PT3203 |  | Stem and Service box for Air Valves for Potable Water Network - (ROUND-07)-Z5-RA07-PT | 2d | 2027-04-28 | 2027-04-29 | RHD4CZ5RA07PT3103, RHD4CZ5RA07PT2402 |  |  |  |  | -154d | 13.02d | Unskilled Labor [5.45 h]; Plumber [5.45 h]; Air valve diameter 50 mm - PT [0.1 nr] | 491.9 | RA07 | Z5 | CONS | PT | Stem and Service box | bef |
|  | 4205 | **RHD4-02-002-RA07-(PT)-Gate Valves (Direct Buried)** |  | 2027-04-10 | 2027-04-18 |  |  |  |  |  |  |  |  |  |  |  |  |  |  |  |
| RHD4CZ5RA07PT3100 |  | Installation for Direct Buried Gate Valves - (ROUND-07)-Z5-RA07-PT | 2d | 2027-04-10 | 2027-04-11 | RHD4CZ5RA07PT1301 FF, RHD4CZ5RA07PT1301 SS, RHD4PRSHLDOSPT1200, RHD4PRSHLSTAGPT1200 |  |  |  |  | -138d | 4d | Unskilled Labor [16.34 h]; Plumber [16.34 h]; Gate valves dia 150 mm - PT [2.7 nr] | 4,266 | RA07 | Z5 | CONS | PT | Installation | bef |
| RHD4CZ5RA07PT3200 |  | Stem and Service box for Direct Buried Gate Valves - (ROUND-07)-Z5-RA07-PT | 2d | 2027-04-17 | 2027-04-18 | RHD4CZ5RA07PT3100, RHD4CZ5RA07PT1501, RHD4PRSHLDOSPT1300 |  |  |  |  | -142d | 4d | Unskilled Labor [16.34 h]; Plumber [16.34 h]; Gate valves dia 150 mm - PT [0.3 nr] | 474 | RA07 | Z5 | CONS | PT | Stem and Service box | bef |
|  | 4214 | **RHD4-02-002-Z5-RA07-Irrigation Network - IRR** |  | 2026-08-04 | 2027-04-29 |  |  |  |  |  |  |  |  |  |  |  |  |  |  |  |
|  | 4217 | **RHD4-02-002-RA07-(IRR)-HDPE Pipes - 200 mm diameter** |  | 2026-08-04 | 2027-04-18 |  |  |  |  |  |  |  |  |  |  |  |  |  |  |  |
| RHD4CZ5RA07IRR1102 |  | Excavation works for HDPE Pipline 200 mm - (ROUND-07)-Z5-RA07-IRR | 2d | 2026-08-04 A | 2027-04-08 | RHD4CZ5RA07PT1101, RHD4ENSDZ5APPIRR140, RHD4ENMSRR2000, RHD4CZ5C061IRR1102 | 28% | 2d | 2026-11-16 | 2026-11-17 | -154d | 0d | Skilled labor [12.2 h]; Unskilled Labor [12.2 h]; Equipment Opreator [14.7 h]; Excavator-Poclain [12.2 h]; Dump Truck [2.4 h]; HDPE (200mm Diameter) - TSE - Depth: less than 1.5m [6.08 m]; HDPE (200mm Diameter) - TSE - Depth: more than 1.51m [16.14 m] | 4,261.67 | RA07 | Z5 | CONS | IRR | Excavation | bef |
| RHD4CZ5RA07IRR1202 |  | Bedding works for HDPE Pipline 200 mm - (ROUND-07)-Z5-RA07-IRR | 2d | 2026-08-06 A | 2027-04-11 | RHD4CZ5RA07IRR1102 | 37% | 2d | 2026-11-18 | 2026-11-19 | -154d | 0d | Skilled labor [11.11 h]; Unskilled Labor [22.22 h]; Equipment Opreator [22.22 h]; Excavator-Poclain [11.11 h]; Dump Truck [11.11 h]; HDPE (200mm Diameter) - TSE - Depth: less than 1.5m [3.04 m]; HDPE (200mm Diameter) - TSE - Depth: more than 1.51m [5.38 m] | 1,608.97 | RA07 | Z5 | CONS | IRR | Bedding | bef |
| RHD4CZ5RA07IRR1302 |  | Installing for HDPE Pipline 200 mm - (ROUND-07)-Z5-RA07-IRR | 2d | 2026-08-08 A | 2027-04-13 | RHD4CZ5RA07IRR1202, RHD4PRSHLDOSIRR1000, RHD4PRSHLSTAGIRR1000 | 24% | 2d | 2026-11-21 | 2026-11-22 | -154d | 0d | Unskilled Labor [24.39 h]; Plumber [12.2 h]; Equipment Opreator [12.2 h]; Boom Truck [12.2 h]; HDPE (200mm Diameter) - TSE - Depth: less than 1.5m [27.35 m]; HDPE (200mm Diameter) - TSE - Depth: more than 1.51m [43.04 m] | 13,437.05 | RA07 | Z5 | CONS | IRR | Installation | bef |
| RHD4CZ5RA07IRR1402 |  | Primary Test for HDPE Pipline 200 mm - (ROUND-07)-Z5-RA07-IRR | 2d | 2027-04-14 | 2027-04-15 | RHD4CZ5RA07IRR1302, RHD4CZ5RA07IRR3100 |  |  |  |  | -154d | 0d | Unskilled Labor [5.23 h]; Plumber [5.23 h]; Equipment Opreator [5.23 h]; Water Truck [5.23 h]; HDPE (200mm Diameter) - TSE - Depth: less than 1.5m [12.16 m]; HDPE (200mm Diameter) - TSE - Depth: more than 1.51m [21.52 m] | 6,435.9 | RA07 | Z5 | CONS | IRR | Primary Test | bef |
| RHD4CZ5RA07IRR1502 |  | Backfilling and warning tape works for HDPE Pipline 200 mm - (ROUND-07)-Z5-RA07-IRR | 2d | 2027-04-17 | 2027-04-18 | RHD4CZ5RA07IRR1402 |  |  |  |  | -154d | 0d | Skilled labor [11.11 h]; Unskilled Labor [22.22 h]; Equipment Opreator [22.22 h]; Excavator-Poclain [11.11 h]; Dump Truck [11.11 h]; HDPE (200mm Diameter) - TSE - Depth: less than 1.5m [12.16 m]; HDPE (200mm Diameter) - TSE - Depth: more than 1.51m [21.52 m] | 6,435.9 | RA07 | Z5 | CONS | IRR | Backfilling | bef |
|  | 4223 | **RHD4-02-002-RA07-(IRR)-Gate Valves (Direct Buried)** |  | 2027-04-12 | 2027-04-15 |  |  |  |  |  |  |  |  |  |  |  |  |  |  |  |
| RHD4CZ5RA07IRR3100 |  | Installation for Direct Buried Gate Valves - (ROUND-07)-Z5-RA07-IRR | 2d | 2027-04-12 | 2027-04-13 | RHD4CZ5RA07IRR1302 SS, RHD4CZ5RA07IRR1302 FF, RHD4PRSHLDOSIRR1100, RHD4PRSHLSTAGIRR1100 |  |  |  |  | -154d | 0d | Unskilled Labor [21.78 h]; Plumber [21.78 h]; Gate valves dia 150 mm - TSE [3.6 nr] | 8,035.2 | RA07 | Z5 | CONS | IRR | Installation | bef |
| RHD4CZ5RA07IRR3200 |  | Stem and Service box for Direct Buried Gate Valves - (ROUND-07)-Z5-RA07-IRR | 2d | 2027-04-14 | 2027-04-15 | RHD4CZ5RA07IRR3100 |  |  |  |  | -152d | 2d | Unskilled Labor [21.78 h]; Plumber [21.78 h]; Gate valves dia 150 mm - TSE [0.4 nr] | 892.8 | RA07 | Z5 | CONS | IRR | Stem and Service box | bef |

| ID | WBS | Activity | Duration | Start | Finish | Predecessors | Complete | Remaining | Planned start | Planned finish | Total float | Free float | Resources | Cost | RDH4-01-001-Road and Block Names-1 | RDH4-01-001-Zones-1 | RDH4-01-001-Phases-1 | RDH4-01-001-Networks-1 | RDH4-01-001-Work Method-1 | RDH4-01-001-MENEM |
| --- | --- | --- | --- | --- | --- | --- | --- | --- | --- | --- | --- | --- | --- | --- | --- | --- | --- | --- | --- | --- |
|  | 4226 | **RHD4-02-002-RA07-(IRR)-Wash out Chamber** |  | 2027-04-19 | 2027-04-27 |  |  |  |  |  |  |  |  |  |  |  |  |  |  |  |
| RHD4CZ5RA07IRR2101 |  | Excavation and Bedding for Wash out Chamber for Irrigation Network - (ROUND-07)-Z5-RA07-IRR | 2d | 2027-04-19 | 2027-04-20 | RHD4CZ5RA07IRR1502, RHD4ENSDZ5APPIRR140, RHD4CZ5RA07IRR3200 |  |  |  |  | -154d | 0d | Skilled labor [10.89 h]; Unskilled Labor [10.89 h]; Equipment Opreator [2.18 h]; Excavator-Poclain [1.09 h]; Dump Truck [1.09 h]; Wash out chambers - TSE [0.5 nr] | 9,372.5 | RA07 | Z5 | CONS | IRR | Excavation and Bedding | bef |
| RHD4CZ5RA07IRR2201 |  | PC works for Wash out Chamber for Irrigation Network - (ROUND-07)-Z5-RA07-IRR | 2d | 2027-04-21 | 2027-04-22 | RHD4CZ5RA07IRR2101 |  |  |  |  | -154d | 0d | Skilled labor [10.89 h]; Unskilled Labor [21.78 h]; Equipment Opreator [1.09 h]; Concrete Pump [1.09 h]; Wash out chambers - TSE [0.2 nr] | 3,749 | RA07 | Z5 | CONS | IRR | PC Works | bef |
| RHD4CZ5RA07IRR2301 |  | Installation for Wash out Chamber for Irrigation Network - (ROUND-07)-Z5-RA07-IRR | 2d | 2027-04-24 | 2027-04-25 | RHD4CZ5RA07IRR2201, RHD4PRSHLDOSIRR1200, RHD4PRSHLDOSIRR1400, RHD4PRSHLSTAGIRR1200, RHD4PRSHLSTAGIRR1400 |  |  |  |  | -154d | 0d | Skilled labor [10.89 h]; Unskilled Labor [21.78 h]; Equipment Opreator [2.18 h]; Boom Truck [2.18 h]; Wash out chambers - TSE [1.1 nr] | 20,619.5 | RA07 | Z5 | CONS | IRR | Installation | bef |
| RHD4CZ5RA07IRR2401 |  | Backfilling works for Wash out Chamber for Irrigation Network - (ROUND-07)-Z5-RA07-IRR | 2d | 2027-04-26 | 2027-04-27 | RHD4CZ5RA07IRR2301 |  |  |  |  | -154d | 0d | Skilled labor [10.89 h]; Unskilled Labor [21.78 h]; Equipment Opreator [2.18 h]; Water Truck [1.09 h]; Dump Truck [1.09 h]; Wash out chambers - TSE [0.2 nr] | 3,749 | RA07 | Z5 | CONS | IRR | Backfilling Works | bef |
|  | 4227 | **RHD4-02-002-RA07-(IRR)-Wash out Valves** |  | 2027-04-26 | 2027-04-29 |  |  |  |  |  |  |  |  |  |  |  |  |  |  |  |
| RHD4CZ5RA07IRR3102 |  | Installation for Wash out Valve for Irrigation Network - (ROUND-07)-Z5-RA07-IRR | 2d | 2027-04-26 | 2027-04-27 | RHD4CZ5RA07IRR2301, RHD4PRSHLDOSIRR1100, RHD4PRSHLSTAGIRR1100 |  |  |  |  | -154d | 0d | Unskilled Labor [10.89 h]; Plumber [10.89 h]; Wash out valve diameter 100 mm - TSE [1.8 nr] | 6,746.4 | RA07 | Z5 | CONS | IRR | Installation | bef |
| RHD4CZ5RA07IRR3202 |  | Stem and Service box for Wash out Valve for Irrigation Network - (ROUND-07)-Z5-RA07-IRR | 2d | 2027-04-28 | 2027-04-29 | RHD4CZ5RA07IRR3102, RHD4CZ5RA07IRR2401, RHD4PRSHLDOSIRR1300, RHD4PRSHLSTAGIRR1300 |  |  |  |  | -154d | 13.02d | Unskilled Labor [10.89 h]; Plumber [10.89 h]; Wash out valve diameter 100 mm - TSE [0.2 nr] | 749.6 | RA07 | Z5 | CONS | IRR | Stem and Service box | bef |
|  | 6107 | **RHD4-02-002-RA07-(IRR)-HDPE Pipes - 160 mm diameter** |  | 2026-08-04 | 2027-04-22 |  |  |  |  |  |  |  |  |  |  |  |  |  |  |  |
| RHD4CZ5RA07IRR1100 |  | Excavation works for HDPE Pipline 160 mm - (ROUND-07)-Z5-RA07-IRR | 2d | 2026-08-04 A | 2027-04-11 | RHD4CZ5RA07IRR1102 | 55% | 2d | 2026-11-18 | 2026-11-19 | -143d | 0d | Skilled labor [6.4 h]; Unskilled Labor [6.4 h]; Equipment Opreator [7.73 h]; Excavator-Poclain [6.4 h]; Dump Truck [1.31 h]; HDPE (160mm Diameter) - TSE - Depth: less than 1.5m [3.88 m]; HDPE (160mm Diameter) - TSE - Depth: more than 1.51m [7.5 m] | 1,609.74 | RA07 | Z5 | CONS | IRR | Excavation | bef |
| RHD4CZ5RA07IRR1200 |  | Bedding works for HDPE Pipline 160 mm - (ROUND-07)-Z5-RA07-IRR | 2d | 2026-08-06 A | 2027-04-13 | RHD4CZ5RA07IRR1100 | 48% | 2d | 2026-11-21 | 2026-11-22 | -143d | 0d | Skilled labor [5.77 h]; Unskilled Labor [11.43 h]; Equipment Opreator [11.43 h]; Excavator-Poclain [5.77 h]; Dump Truck [5.77 h]; HDPE (160mm Diameter) - TSE - Depth: less than 1.5m [1.94 m]; HDPE (160mm Diameter) - TSE - Depth: more than 1.51m [2.5 m] | 616.12 | RA07 | Z5 | CONS | IRR | Bedding | bef |
| RHD4CZ5RA07IRR1300 |  | Installing for HDPE Pipline 160 mm - (ROUND-07)-Z5-RA07-IRR | 2d | 2026-08-08 A | 2027-04-15 | RHD4CZ5RA07IRR1200 | 45% | 2d | 2026-11-23 | 2026-11-24 | -143d | 0d | Unskilled Labor [12.85 h]; Plumber [6.4 h]; Equipment Opreator [6.4 h]; Boom Truck [6.4 h]; HDPE (160mm Diameter) - TSE - Depth: less than 1.5m [17.46 m]; HDPE (160mm Diameter) - TSE - Depth: more than 1.51m [20 m] | 5,167.58 | RA07 | Z5 | CONS | IRR | Installation | bef |
| RHD4CZ5RA07IRR1400 |  | Primary Test for HDPE Pipline 160 mm - (ROUND-07)-Z5-RA07-IRR | 2d | 2027-04-19 | 2027-04-20 | RHD4CZ5RA07IRR5100, RHD4CZ5RA07IRR1300 |  |  |  |  | -143d | 0d | Unskilled Labor [2.61 h]; Plumber [2.61 h]; Equipment Opreator [2.61 h]; Water Truck [2.61 h]; HDPE (160mm Diameter) - TSE - Depth: less than 1.5m [7.76 m]; HDPE (160mm Diameter) - TSE - Depth: more than 1.51m [10 m] | 2,464.48 | RA07 | Z5 | CONS | IRR | Primary Test | bef |
| RHD4CZ5RA07IRR1500 |  | Backfilling and warning tape works for HDPE Pipline 160 mm - (ROUND-07)-Z5-RA07-IRR | 2d | 2027-04-21 | 2027-04-22 | RHD4CZ5RA07IRR1400 |  |  |  |  | -143d | 0d | Skilled labor [5.77 h]; Unskilled Labor [11.43 h]; Equipment Opreator [11.43 h]; Excavator-Poclain [5.77 h]; Dump Truck [5.77 h]; HDPE (160mm Diameter) - TSE - Depth: less than 1.5m [7.76 m]; HDPE (160mm Diameter) - TSE - Depth: more than 1.51m [10 m] | 2,464.48 | RA07 | Z5 | CONS | IRR | Backfilling | bef |
|  | 1771 | **RHD4-02-002-RA07-(IRR)-Concrete Encasement** |  | 2027-04-17 | 2027-04-18 |  |  |  |  |  |  |  |  |  |  |  |  |  |  |  |
| RHD4CZ5RA07IRR5100 |  | Pipe Encasement for Irrigation Pipelines - (ROUND-07)-Z5-RA07-IRR | 2d | 2027-04-17 | 2027-04-18 | RHD4CZ5RA07IRR1300 |  |  |  |  | -143d | 0d | Skilled labor [13.18 h]; Unskilled Labor [13.18 h]; Equipment Opreator [14.48 h]; Concrete Mixer Truck [1.31 h]; Dump Truck [13.18 h]; Pipe Encasement - TSE [6.04 m3] | 7,405.04 | RA07 | Z5 | CONS | IRR | Pipe Encasement | bef |
|  | 4248 | **RHD4-02-002-Z5-RA07-Medium Voltage Network - MV** |  | 2027-07-07 | 2027-07-31 |  |  |  |  |  |  |  |  |  |  |  |  |  |  |  |
|  | 4249 | **RHD4-02-002-RA07-(MV)-Medium Voltage cable trench** |  | 2027-07-07 | 2027-07-15 |  |  |  |  |  |  |  |  |  |  |  |  |  |  |  |
| RHD4CZ5RA07MV1100 |  | Excavation for Medium Voltage Trench - (ROUND-07)-Z5-RA07-MV | 3d | 2027-07-07 | 2027-07-10 | RHD4ENSDZ5APPMV150, RHD4CZ5RA07RD3100, RHD4CZ5C051MV3300 |  |  |  |  | -172d | 0d | Skilled labor [25.37 h]; Unskilled Labor [50.86 h]; Equipment Opreator [76.23 h]; Excavator-Poclain [25.37 h]; Dump Truck [50.86 h]; Excavation for Trench size 40cm wide and 80cm deep ( for 1 cables) [106.41 m3]; Excavation for Trench size 60cm wide and 80cm deep ( for 2 cables) [22.02 m3]; Excavation for Trench size 120cm wide and 80cm deep (for 4 cables) [34.98 m3] | 1,634.13 | RA07 | Z5 | CONS | MV | Excavation | AFT |
| RHD4CZ5RA07MV1200 |  | Trench Backfilling for Medium Voltage Network - (ROUND-07)-Z5-RA07-MV | 3d | 2027-07-13 | 2027-07-15 | RHD4CZ5RA07MV3101 |  |  |  |  | -172d | 0d | Skilled labor [25.37 h]; Unskilled Labor [25.37 h]; Equipment Opreator [50.86 h]; Dump Truck [50.86 h]; Excavation for Trench size 40cm wide and 80cm deep ( for 1 cables) [45.6 m3]; Excavation for Trench size 60cm wide and 80cm deep ( for 2 cables) [9.44 m3]; Excavation for Trench size 120cm wide and 80cm deep (for 4 cables) [14.99 m3] | 700.3 | RA07 | Z5 | CONS | MV | Backfilling | AFT |
|  | 4251 | **RHD4-02-002-RA07-(MV)-Medium Voltage cables 3Cx 500 mm²** |  | 2027-07-11 | 2027-07-21 |  |  |  |  |  |  |  |  |  |  |  |  |  |  |  |
| RHD4CZ5RA07MV3100 |  | Installation of Medium Voltage Cables 3Cx 500 mm² - (ROUND-07)-Z5-RA07-MV | 4d | 2027-07-11 | 2027-07-14 | RHD4CZ5RA07MV1100, RHD4PRSHLDOSMV1100, RHD4ENMSMV2000, RHD4ENMSMV2010, RHD4PRSHLSTAGMV1100 |  |  |  |  | -163d | 0d | Skilled labor [36.05 h]; Unskilled Labor [144.41 h]; Electrician [72.2 h]; Equipment Opreator [108.25 h]; Boom Truck [36.05 h]; Cable Laying Machine [72.2 h]; Cable 13.8 kV 3Cx 500 mm² Al/XLPE,/LLDPE / Unarmored [447.4 m] | 71,136.6 | RA07 | Z5 | CONS | MV | Installation | AFT |
| RHD4CZ5RA07MV3200 |  | Joints Installation of Medium Voltage Cables 3Cx 500 mm² - (ROUND-07)-Z5-RA07-MV | 2d | 2027-07-15 | 2027-07-17 | RHD4CZ5RA07MV3100, RHD4PRSHLDOSMV1300, RHD4PRSHLSTAGMV1300 |  |  |  |  | -163d | 0d | Skilled labor [5.45 h]; Unskilled Labor [21.78 h]; Electrician [10.89 h]; Equipment Opreator [5.45 h]; Boom Truck [5.45 h]; Straight joints cables for 13.8 kv 3Cx 500 mm², Al /XLPE/LLDPE [1 Unit] | 3,248 | RA07 | Z5 | CONS | MV | Joints Installation | AFT |
| RHD4CZ5RA07MV3300 |  | Testing of Medium Voltage Cables 3Cx 500 mm² - (ROUND-07)-Z5-RA07-MV | 2d | 2027-07-18 | 2027-07-19 | RHD4CZ5RA07MV3200, RHD4CZ5RA07MV1200 |  |  |  |  | -163d | 0d | Skilled labor [10.78 h]; Unskilled Labor [43.34 h]; Electrician [21.67 h]; Cable 13.8 kV 3Cx 500 mm² Al/XLPE,/LLDPE / Unarmored [49.71 m] | 7,904.08 | RA07 | Z5 | CONS | MV | Testing | AFT |
| RHD4CZ5RA07MV3400 |  | Termination of Medium Voltage Cables 3Cx 500 mm² - (ROUND-07)-Z5-RA07-MV | 2d | 2027-07-20 | 2027-07-21 | RHD4CZ5RA07MV3300 |  |  |  |  | -163d | 8d | Unskilled Labor [0.33 h]; Electrician [0.33 h]; Cable Termination for 13.8 kv 3Cx 500 mm², Al /XLPE/LLDPE [1.6 Unit] | 4,216 | RA07 | Z5 | CONS | MV | Termination | AFT |

| ID | WBS | Activity | Duration | Start | Finish | Predecessors | Complete | Planned start | Planned finish | Total float | Free float | Resources | Cost | Actual cost | RDH4-01-001-Road and Block Names-1 | RDH4-01-001-Zones-1 | RDH4-01-001-Phases-1 | RDH4-01-001-Networks-1 | RDH4-01-001-Work Method-1 | RDH4-01-001-MENEM |
| --- | --- | --- | --- | --- | --- | --- | --- | --- | --- | --- | --- | --- | --- | --- | --- | --- | --- | --- | --- | --- |
|  | 4252 | **RHD4-02-002-RA07-(MV)-Medium Voltage cables 3Cx 50 mm²** |  | 2027-07-11 | 2027-07-20 |  |  |  |  |  |  |  |  |  |  |  |  |  |  |  |
| RHD4CZ5RA07MV3101 |  | Installation of Medium Voltage Cables 3Cx 50 mm² - (ROUND-07)-Z5-RA07-MV | 2d | 2027-07-11 | 2027-07-12 | RHD4CZ5RA07MV1100, RHD4PRSHLDOSMV1200, RHD4ENMSMV2000, RHD4ENMSMV2010, RHD4PRSHLSTAGMV1200 |  |  |  | -172d | 0d | Unskilled Labor [1.74 h]; Electrician [0.87 h]; Equipment Opreator [1.31 h]; Boom Truck [0.44 h]; Cable Laying Machine [0.87 h]; Single Core Copper Cable 13.8 kV 3Cx 50 mm² Cu/XLPE/PVC / Unarmored [3.6 m] | 403.2 |  | RA07 | Z5 | CONS | MV | Installation | AFT |
| RHD4CZ5RA07MV3301 |  | Testing of Medium Voltage Cables 3Cx 50 mm² - (ROUND-07)-Z5-RA07-MV | 2d | 2027-07-17 | 2027-07-18 | RHD4CZ5RA07MV3101, RHD4CZ5RA07MV1200 |  |  |  | -162d | 0d | Unskilled Labor [0.33 h]; Electrician [0.22 h]; Single Core Copper Cable 13.8 kV 3Cx 50 mm² Cu/XLPE/PVC / Unarmored [0.4 m] | 44.8 |  | RA07 | Z5 | CONS | MV | Testing | AFT |
| RHD4CZ5RA07MV3401 |  | Termination of Medium Voltage Cables 3Cx 50 mm² - (ROUND-07)-Z5-RA07-MV | 2d | 2027-07-19 | 2027-07-20 | RHD4CZ5RA07MV3301 |  |  |  | -162d | 9d | Unskilled Labor [5.77 h]; Electrician [2.94 h]; Cable Termination for 13.8 kv 3Cx 500 mm², Al /XLPE/LLDPE [0.4 Unit] | 1,054 |  | RA07 | Z5 | CONS | MV | Termination | AFT |
|  | 4254 | **RHD4-02-002-RA07-(MV)-Unit Substations** |  | 2027-07-17 | 2027-07-31 |  |  |  |  |  |  |  |  |  |  |  |  |  |  |  |
| RHD4CZ5RA07MV5100 |  | Excavation for Unit Substations for Medium Voltage Network - (ROUND-07)-Z5-RA07-MV | 2d | 2027-07-17 | 2027-07-18 | RHD4CZ5RA07MV1200, RHD4ENSDZ5APPMV150 |  |  |  | -172d | 0d | Skilled labor [21.78 h]; Unskilled Labor [21.78 h]; Equipment Opreator [43.56 h]; Excavator-Poclain [21.78 h]; Dump Truck [21.78 h]; Unit Substation 13.8/0.4 K V, 500kVA ,Including concrete foundations and fencing, According to the specifications and standards of SEC [0.1 Unit]; Ring Main Unit RMU, 13.8KV, According to the specifications and standards of SEC [0.1 Unit] | 12,257 |  | RA07 | Z5 | CONS | MV | Excavation | AFT |
| RHD4CZ5RA07MV5200 |  | Concrete Base Placement for Unit Substations for Medium Voltage Network - (ROUND-07)-Z5-RA07-MV | 2d | 2027-07-19 | 2027-07-20 | RHD4CZ5RA07MV5100 |  |  |  | -172d | 0d | Skilled labor [21.78 h]; Unskilled Labor [21.78 h]; Equipment Opreator [21.78 h]; Boom Truck [21.78 h]; Unit Substation 13.8/0.4 K V, 500kVA ,Including concrete foundations and fencing, According to the specifications and standards of SEC [0.15 Unit]; Ring Main Unit RMU, 13.8KV, According to the specifications and standards of SEC [0.15 Unit] | 18,385.5 |  | RA07 | Z5 | CONS | MV | Concrete Base Placement | AFT |
| RHD4CZ5RA07MV5300 |  | Installation for Fences and doors for Medium Voltage Network - (ROUND-07)-Z5-RA07-MV | 5d | 2027-07-21 | 2027-07-26 | RHD4CZ5RA07MV5200 |  |  |  | -172d | 0d | Skilled labor [54.45 h]; Unskilled Labor [54.45 h]; Equipment Opreator [65.34 h]; Excavator-Poclain [10.89 h]; Boom Truck [54.45 h]; Unit Substation 13.8/0.4 K V, 500kVA ,Including concrete foundations and fencing, According to the specifications and standards of SEC [0.1 Unit]; Ring Main Unit RMU, 13.8KV, According to the specifications and standards of SEC [0.1 Unit] | 12,257 |  | RA07 | Z5 | CONS | MV | Fence Installation | AFT |
| RHD4CZ5RA07MV5400 |  | Installation for Unit Substations for Medium Voltage Network - (ROUND-07)-Z5-RA07-MV | 4d | 2027-07-27 | 2027-07-31 | RHD4CZ5RA07MV5300 |  |  |  | -172d | 0d | Skilled labor [43.56 h]; Unskilled Labor [87.12 h]; Electrician [87.12 h]; Unit Substation 13.8/0.4 K V, 500kVA ,Including concrete foundations and fencing, According to the specifications and standards of SEC [0.65 Unit]; Ring Main Unit RMU, 13.8KV, According to the specifications and standards of SEC [0.65 Unit] | 79,670.5 |  | RA07 | Z5 | CONS | MV | Substation Installation | AFT |
|  | 4255 | **RHD4-02-002-Z5-RA07-Low Voltage Network - LV** |  | 2026-08-04 | 2027-05-13 |  |  |  |  |  |  |  |  |  |  |  |  |  |  |  |
|  | 4256 | **RHD4-02-002-RA07-(LV)-Low Voltage duct banks** |  | 2026-08-04 | 2026-08-12 |  |  |  |  |  |  |  |  |  |  |  |  |  |  |  |
| RHD4CZ5RA07LV2100 |  | Excavation of Duct Banks for Low Voltage Network - (ROUND-07)-Z5-RA07-LV | 2d | 2026-08-04 A | 2026-08-05 A | RHD4CZ5RA07RA3000, RHD4ENSDZ5APPLV160, RHD4CZ5RA07IRR1500 | 100% | 2026-12-02 | 2026-12-03 |  |  | Skilled labor [20.26 h]; Unskilled Labor [20.26 h]; Equipment Opreator [40.51 h]; Excavator-Poclain [20.26 h]; Dump Truck [20.26 h]; Duct bank for LV cables UPVC (2xø110mm) [2.79 m] | 562.87 | 562.87 | RA07 | Z5 | CONS | LV | Excavation | bef |
| RHD4CZ5RA07LV2200 |  | Installation of Duct Banks for Low Voltage Network - (ROUND-07)-Z5-RA07-LV | 3d | 2026-08-06 A | 2026-08-09 A | RHD4CZ5RA07LV2100 | 100% | 2026-12-05 | 2026-12-07 |  |  | Carpenter [3.05 h]; Skilled labor [30.4 h]; Unskilled Labor [30.4 h]; Steel Fixer [3.05 h]; Duct bank for LV cables UPVC (2xø110mm) [2.79 m] | 562.87 | 562.87 | RA07 | Z5 | CONS | LV | Installing | bef |
| RHD4CZ5RA07LV2300 |  | Pouring of Duct Banks for Low Voltage Network - (ROUND-07)-Z5-RA07-LV | 2d | 2026-08-09 A | 2026-08-10 A | RHD4CZ5RA07LV2200 | 100% | 2026-12-08 | 2026-12-09 |  |  | Skilled labor [20.26 h]; Unskilled Labor [20.26 h]; Equipment Opreator [8.06 h]; Concrete Mixer Truck [4 h]; Concrete Pump [4 h]; Duct bank for LV cables UPVC (2xø110mm) [18.11 m] | 3,658.67 | 3,658.67 | RA07 | Z5 | CONS | LV | Pouring | bef |
| RHD4CZ5RA07LV2400 |  | Backfilling of Duct Banks for Low Voltage Network - (ROUND-07)-Z5-RA07-LV | 2d | 2026-08-11 A | 2026-08-12 A | RHD4CZ5RA07LV2300 | 100% | 2026-12-10 | 2026-12-12 |  |  | Skilled labor [15.14 h]; Unskilled Labor [15.14 h]; Equipment Opreator [6.1 h]; Excavator-Poclain [6.1 h]; Duct bank for LV cables UPVC (2xø110mm) [4.18 m] | 844.31 | 844.31 | RA07 | Z5 | CONS | LV | Backfilling | bef |
|  | 4257 | **RHD4-02-002-RA07-(LV)-Low Voltage Drawpit** |  | 2027-04-24 | 2027-04-27 |  |  |  |  |  |  |  |  |  |  |  |  |  |  |  |
| RHD4CZ5RA07LV5100 |  | Excavation of Drawpit size 900x900x1000mm for Low Voltage Network - (ROUND-07)-Z5-RA07-LV | 2d | 2027-04-24 | 2027-04-25 | RHD4CZ5RA07LV2300, RHD4ENSDZ5APPLV160 |  |  |  | -143d | 0d | Skilled labor [2.72 h]; Unskilled Labor [2.72 h]; Equipment Opreator [2.18 h]; Excavator-Poclain [1.09 h]; Dump Truck [1.09 h]; Drawpit with medium duty steel cover, size900x900x1000mm, [0.45 Unit] | 1,654.65 |  | RA07 | Z5 | CONS | LV | Excavation | AFT |
| RHD4CZ5RA07LV5200 |  | Installation of Drawpit size 900x900x1000mm for Low Voltage Network - (ROUND-07)-Z5-RA07-LV | 2d | 2027-04-26 | 2027-04-27 | RHD4CZ5RA07LV5100, RHD4PRSHLDOSLV1400, RHD4PRSHLSTAGLV1400 |  |  |  | -143d | 0d | Skilled labor [2.72 h]; Unskilled Labor [2.72 h]; Equipment Opreator [1.09 h]; Boom Truck [1.09 h]; Drawpit with medium duty steel cover, size900x900x1000mm, [2.55 Unit] | 9,376.35 |  | RA07 | Z5 | CONS | LV | Installation | AFT |
|  | 4258 | **RHD4-02-002-RA07-(LV)-Low Voltage cables** |  | 2027-04-28 | 2027-05-06 |  |  |  |  |  |  |  |  |  |  |  |  |  |  |  |
| RHD4CZ5RA07LV3100 |  | Excavation for Low Voltage Cables for Low Voltage Network - (ROUND-07)-Z5-RA07-LV | 2d | 2027-04-28 | 2027-04-29 | RHD4CZ5RA07LV2400, RHD4CZ5RA07PT1501, RHD4ENSDZ5APPLV160, RHD4CZ5RA07LV5200 |  |  |  | -143d | 0d | Skilled labor [4.36 h]; Unskilled Labor [8.71 h]; Equipment Opreator [8.71 h]; Excavator-Poclain [4.36 h]; Boom Truck [4.36 h]; Cable, Copper 4x185mm2/ CU/XLPE/PVC [4.43 m]; Cable, Copper 4x70mm2/ CU/XLPE/PVC [2.15 m]; Cable, Copper 4x50mm2/ CU/XLPE/PVC +1x25mm2 CU/PVC [13.41 m] | 3,725.37 |  | RA07 | Z5 | CONS | LV | Excavation | AFT |
| RHD4CZ5RA07LV3200 |  | Cable Laying of Low Voltage Cables for Low Voltage Network - (ROUND-07)-Z5-RA07-LV | 2d | 2027-05-01 | 2027-05-02 | RHD4CZ5RA07LV3100, RHD4PRSHLDOSLV1100, RHD4ENMSLV2000, RHD4ENMSLV2010, RHD4PRSHLSTAGLV1100 |  |  |  | -143d | 0d | Skilled labor [3.59 h]; Unskilled Labor [14.48 h]; Electrician [7.3 h]; Equipment Opreator [10.89 h]; Boom Truck [3.59 h]; Cable Laying Machine [7.3 h]; Cable, Copper 4x185mm2/ CU/XLPE/PVC [13.3 m]; Cable, Copper 4x70mm2/ CU/XLPE/PVC [6.45 m]; Cable, Copper 4x50mm2/ CU/XLPE/PVC +1x25mm2 CU/PVC [40.24 m] | 11,176.1 |  | RA07 | Z5 | CONS | LV | Cable Laying | AFT |
| RHD4CZ5RA07LV3300 |  | Warning tape and Backfill for Low Voltage Cables for Low Voltage Network - (ROUND-07)-Z5-RA07-LV | 2d | 2027-05-03 | 2027-05-04 | RHD4CZ5RA07LV3200 |  |  |  | -143d | 0d | Skilled labor [3.59 h]; Unskilled Labor [14.48 h]; Electrician [7.3 h]; Equipment Opreator [3.59 h]; Boom Truck [3.59 h]; Cable, Copper 4x185mm2/ CU/XLPE/PVC [3.33 m]; Cable, Copper 4x70mm2/ CU/XLPE/PVC [1.61 m]; Cable, Copper 4x50mm2/ CU/XLPE/PVC +1x25mm2 CU/PVC [10.06 m] | 2,794.02 |  | RA07 | Z5 | CONS | LV | Warning tape and Backfill | AFT |
| RHD4CZ5RA07LV3400 |  | Testing of Low Voltage Cables for Low Voltage Network - (ROUND-07)-Z5-RA07-LV | 2d | 2027-05-05 | 2027-05-06 | RHD4CZ5RA07LV3300 |  |  |  | -143d | 0d | Skilled labor [2.18 h]; Unskilled Labor [8.71 h]; Electrician [4.36 h]; Equipment Opreator [2.18 h]; Boom Truck [2.18 h]; Cable, Copper 4x185mm2/ CU/XLPE/PVC [1.11 m]; Cable, Copper 4x70mm2/ CU/XLPE/PVC [0.54 m]; Cable, Copper 4x50mm2/ CU/XLPE/PVC +1x25mm2 CU/PVC [3.35 m] | 931.34 |  | RA07 | Z5 | CONS | LV | Testing | AFT |
|  | 4259 | **RHD4-02-002-RA07-(LV)-Low Voltage Distribution Pillars** |  | 2027-05-08 | 2027-05-13 |  |  |  |  |  |  |  |  |  |  |  |  |  |  |  |
| RHD4CZ5RA07LV4100 |  | Leveling for Distribution Pillars for Low Voltage Network - (ROUND-07)-Z5-RA07-LV | 2d | 2027-05-08 | 2027-05-09 | RHD4CZ5RA07LV3300, RHD4CZ5RA07LV3400 |  |  |  | -143d | 0d | Skilled labor [21.78 h]; Unskilled Labor [43.56 h]; Equipment Opreator [8.71 h]; Excavator-Poclain [4.36 h]; Boom Truck [4.36 h]; 0.6/1 KV Low Voltage Distribution Pillars with main breaker MCCB type and 5 Outgoing feeders MCCB type [0.15 Unit]; 0.6/1 KV Low Voltage Distribution Panels for Industrial UPS - Cameras [0.15 Unit]; Supply and installation of KWH meter mounting frame including concrete block wall for installation of KWH meter according to the standards and specifications of SEC [0.3 Unit] | 5,993.7 |  | RA07 | Z5 | CONS | LV | Leveling | AFT |
| RHD4CZ5RA07LV4200 |  | Lean Concrete for Distribution Pillars for Low Voltage Network - (ROUND-07)-Z5-RA07-LV | 2d | 2027-05-10 | 2027-05-11 | RHD4CZ5RA07LV4100 |  |  |  | -143d | 0d | Skilled labor [14.48 h]; Unskilled Labor [29.08 h]; Equipment Opreator [5.77 h]; Concrete Mixer Truck [2.94 h]; Concrete Pump [2.94 h]; 0.6/1 KV Low Voltage Distribution Pillars with main breaker MCCB type and 5 Outgoing feeders MCCB type [0.25 Unit]; 0.6/1 KV Low Voltage Distribution Panels for Industrial UPS - Cameras [0.25 Unit]; Supply and installation of KWH meter mounting frame including concrete block wall for installation of KWH meter according to the standards and specifications of SEC [0.5 Unit] | 9,989.5 |  | RA07 | Z5 | CONS | LV | Lean Concrete | AFT |
| RHD4CZ5RA07LV4300 |  | Installation of Distribution Pillars for Low Voltage Network - (ROUND-07)-Z5-RA07-LV | 2d | 2027-05-12 | 2027-05-13 | RHD4CZ5RA07LV4200, RHD4PRSHLDOSLV1200, RHD4PRSHLDOSLV1300, RHD4PRSHLSTAGLV1200, RHD4PRSHLSTAGLV1300 |  |  |  | -143d | 0d | Skilled labor [21.78 h]; Unskilled Labor [87.12 h]; Electrician [43.56 h]; Equipment Opreator [21.78 h]; Boom Truck [21.78 h]; 0.6/1 KV Low Voltage Distribution Pillars with main breaker MCCB type and 5 Outgoing feeders MCCB type [0.6 Unit]; 0.6/1 KV Low Voltage Distribution Panels for Industrial UPS - Cameras [0.6 Unit]; Supply and installation of KWH meter mounting frame including concrete block wall for installation of KWH meter according to the standards and specifications of SEC [1.2 Unit] | 23,974.8 |  | RA07 | Z5 | CONS | LV | Installation | AFT |

| ID | WBS | Activity | Duration | Start | Finish | Predecessors | Complete | Remaining | Planned start | Planned finish | Total float | Free float | Resources | Cost | RDH4-01-001-Road and Block Names-1 | RDH4-01-001-Zones-1 | RDH4-01-001-Phases-1 | RDH4-01-001-Networks-1 | RDH4-01-001-Work Method-1 | RDH4-01-001-MENEM |
| --- | --- | --- | --- | --- | --- | --- | --- | --- | --- | --- | --- | --- | --- | --- | --- | --- | --- | --- | --- | --- |
|  | 4260 | **RHD4-02-002-RA07-(LV)-Low Voltage Distribution Pillars Earthing** |  |  |  |  |  |  |  |  |  |  |  |  |  |  |  |  |  |  |
|  | 4261 | **RHD4-02-002-Z5-RA07-Street Lighting Network - SL** |  | 2026-08-04 | 2027-06-16 |  |  |  |  |  |  |  |  |  |  |  |  |  |  |  |
|  | 4262 | **RHD4-02-002-RA07-(SL)-Street Lighting duct banks** |  | 2026-08-04 | 2027-05-11 |  |  |  |  |  |  |  |  |  |  |  |  |  |  |  |
| RHD4CZ5RA07SL2100 |  | Excavation of Duct Banks for Street Lighting Network - (ROUND-07)-Z5-RA07-SL | 4d | 2026-08-04 A | 2027-04-27 | RHD4CZ5RA07LV2100, RHD4CZ5RA07RA3000, RHD4ENSDZ5APPSL170 | 92% | 4d | 2026-12-05 | 2026-12-08 | -142d | 0d | Skilled labor [34.4 h]; Unskilled Labor [34.4 h]; Equipment Opreator [68.94 h]; Excavator-Poclain [34.4 h]; Dump Truck [34.4 h]; Road Crossing Duct for Street Lighting cables UPVC (2x?110mm) [3.39 m]; Road Crossing Duct for Street Lighting cables UPVC (4x?110mm) [1.36 m] | 1,042.77 | RA07 | Z5 | CONS | SL | Excavation | bef |
| RHD4CZ5RA07SL2200 |  | Installation of Duct Banks for Street Lighting Network - (ROUND-07)-Z5-RA07-SL | 5d | 2026-08-06 A | 2027-05-03 | RHD4CZ5RA07SL2100, RHD4CZ5RA07LV2200, RHD4PRSHLDOSSL1000, RHD4PRSHLSTAGSL1000 | 92% | 5d | 2026-12-09 | 2026-12-14 | -138d | 0d | Carpenter [5.12 h]; Skilled labor [51.73 h]; Unskilled Labor [51.73 h]; Steel Fixer [5.12 h]; Road Crossing Duct for Street Lighting cables UPVC (2x?110mm) [3.39 m]; Road Crossing Duct for Street Lighting cables UPVC (4x?110mm) [1.36 m] | 1,042.77 | RA07 | Z5 | CONS | SL | Installing | bef |
| RHD4CZ5RA07SL2300 |  | Pouring of Duct Banks for Street Lighting Network - (ROUND-07)-Z5-RA07-SL | 4d | 2026-08-09 A | 2027-05-08 | RHD4CZ5RA07SL2200, RHD4CZ5RA07LV2300 | 92% | 4d | 2026-12-15 | 2026-12-19 | -138d | 0d | Skilled labor [34.4 h]; Unskilled Labor [34.4 h]; Equipment Opreator [13.83 h]; Concrete Mixer Truck [6.86 h]; Concrete Pump [6.86 h]; Road Crossing Duct for Street Lighting cables UPVC (2x?110mm) [22.01 m]; Road Crossing Duct for Street Lighting cables UPVC (4x?110mm) [8.83 m] | 6,778.04 | RA07 | Z5 | CONS | SL | Pouring | bef |
| RHD4CZ5RA07SL2400 |  | Backfilling of Duct Banks for Street Lighting Network - (ROUND-07)-Z5-RA07-SL | 3d | 2026-08-11 A | 2027-05-11 | RHD4CZ5RA07SL2300, RHD4CZ5RA07LV2400 | 92% | 3d | 2026-12-20 | 2026-12-22 | -128d | 15d | Skilled labor [25.81 h]; Unskilled Labor [25.81 h]; Equipment Opreator [10.35 h]; Excavator-Poclain [10.35 h]; Road Crossing Duct for Street Lighting cables UPVC (2x?110mm) [5.08 m]; Road Crossing Duct for Street Lighting cables UPVC (4x?110mm) [2.04 m] | 1,564.16 | RA07 | Z5 | CONS | SL | Backfilling | bef |
|  | 4263 | **RHD4-02-002-RA07-(SL)-Street Lighting Drawpit** |  | 2027-05-19 | 2027-05-23 |  |  |  |  |  |  |  |  |  |  |  |  |  |  |  |
| RHD4CZ5RA07SL5100 |  | Excavation of Drawpit size 600x600x900mm for Street Lighting Network - (ROUND-07)-Z5-RA07-SL | 2d | 2027-05-19 | 2027-05-20 | RHD4CZ5RA07SL2300, RHD4ENSDZ5APPSL170, RHD4CZ5RA07LV4300 |  |  |  |  | -143d | 0d | Skilled labor [3.59 h]; Unskilled Labor [3.59 h]; Equipment Opreator [2.94 h]; Excavator-Poclain [1.42 h]; Dump Truck [1.42 h]; Drawpit with medium duty steel cover, size600x600x900mm, [0.6 Unit] | 1,470.6 | RA07 | Z5 | CONS | SL | Excavation | AFT |
| RHD4CZ5RA07SL5200 |  | Installation of Drawpit size 600x600x900mm for Street Lighting Network - (ROUND-07)-Z5-RA07-SL | 2d | 2027-05-22 | 2027-05-23 | RHD4CZ5RA07SL5100, RHD4PRSHLDOSSL1400, RHD4PRSHLSTAGSL1400 |  |  |  |  | -143d | 0d | Skilled labor [3.59 h]; Unskilled Labor [3.59 h]; Equipment Opreator [1.42 h]; Boom Truck [1.42 h]; Drawpit with medium duty steel cover, size600x600x900mm, [3.4 Unit] | 8,333.4 | RA07 | Z5 | CONS | SL | Installation | AFT |
|  | 4264 | **RHD4-02-002-RA07-(SL)-Street Lighting cables** |  | 2027-05-24 | 2027-06-02 |  |  |  |  |  |  |  |  |  |  |  |  |  |  |  |
| RHD4CZ5RA07SL3100 |  | Excavation for Street Lighting Cables for Street Lighting Network - (ROUND-07)-Z5-RA07-SL | 3d | 2027-05-24 | 2027-05-26 | RHD4ENSDZ5APPSL170, RHD4CZ5RA07SL5200 |  |  |  |  | -143d | 0d | Skilled labor [24.07 h]; Unskilled Labor [48.24 h]; Equipment Opreator [48.24 h]; Excavator-Poclain [24.07 h]; Boom Truck [24.07 h]; Cable, Copper 4x10mm2/ CU/XLPE/SWA/PVC + 1x10mm2 CU/PVC [110.68 m] | 5,423.11 | RA07 | Z5 | CONS | SL | Excavation | AFT |
| RHD4CZ5RA07SL3200 |  | Cable Laying of Street Lighting Cables for Street Lighting Network - (ROUND-07)-Z5-RA07-SL | 2d | 2027-05-27 | 2027-05-29 | RHD4CZ5RA07SL3100, RHD4PRSHLDOSSL1100, RHD4ENMSSL2000, RHD4ENMSSL2010, RHD4PRSHLSTAGSL1100 |  |  |  |  | -143d | 0d | Skilled labor [20 h]; Unskilled Labor [80.37 h]; Electrician [40.19 h]; Equipment Opreator [60.22 h]; Boom Truck [20 h]; Cable Laying Machine [40.19 h]; Cable, Copper 4x10mm2/ CU/XLPE/SWA/PVC + 1x10mm2 CU/PVC [332.03 m] | 16,269.33 | RA07 | Z5 | CONS | SL | Cable Laying | AFT |
| RHD4CZ5RA07SL3300 |  | Warning tape and Backfill for Street Lighting Cables for Street Lighting Network - (ROUND-07)-Z5-RA07-SL | 2d | 2027-05-30 | 2027-05-31 | RHD4CZ5RA07SL3200 |  |  |  |  | -143d | 0d | Skilled labor [20 h]; Unskilled Labor [80.37 h]; Electrician [40.19 h]; Equipment Opreator [20 h]; Boom Truck [20 h]; Cable, Copper 4x10mm2/ CU/XLPE/SWA/PVC + 1x10mm2 CU/PVC [83.01 m] | 4,067.33 | RA07 | Z5 | CONS | SL | Warning tape and Backfill | AFT |
| RHD4CZ5RA07SL3400 |  | Testing of Street Lighting Cables for Street Lighting Network - (ROUND-07)-Z5-RA07-SL | 2d | 2027-06-01 | 2027-06-02 | RHD4CZ5RA07SL3300 |  |  |  |  | -143d | 0d | Skilled labor [12.09 h]; Unskilled Labor [48.24 h]; Electrician [24.07 h]; Equipment Opreator [12.09 h]; Boom Truck [12.09 h]; Cable, Copper 4x10mm2/ CU/XLPE/SWA/PVC + 1x10mm2 CU/PVC [27.67 m] | 1,355.78 | RA07 | Z5 | CONS | SL | Testing | AFT |
|  | 4265 | **RHD4-02-002-RA07-(SL)-Street Lighting Poles** |  | 2027-06-03 | 2027-06-14 |  |  |  |  |  |  |  |  |  |  |  |  |  |  |  |
| RHD4CZ5RA07SL1100 |  | Excavation for RC Base for Lighting Poles for Street Lighting Network - (ROUND-07)-Z5-RA07-SL | 2d | 2027-06-03 | 2027-06-05 | RHD4CZ5RA07SL2400, RHD4ENSDZ5APPSL170, RHD4CZ5RA07SL3400 |  |  |  |  | -143d | 0d | Skilled labor [6.53 h]; Unskilled Labor [6.53 h]; Equipment Opreator [13.07 h]; Excavator-Poclain [6.53 h]; Dump Truck [6.53 h]; Lighting polesdouble arms, height of ( 12 ) meters [0.5 Unit]; Lighting poles single arms, height of ( 10 ) meters [0.4 Unit] | 3,648.8 | RA07 | Z5 | CONS | SL | Excavation | AFT |
| RHD4CZ5RA07SL1200 |  | Installation for RC Base for Lighting Poles for Street Lighting Network - (ROUND-07)-Z5-RA07-SL | 2d | 2027-06-06 | 2027-06-07 | RHD4CZ5RA07SL1100 |  |  |  |  | -143d | 0d | Skilled labor [6.53 h]; Unskilled Labor [6.53 h]; Equipment Opreator [13.07 h]; Excavator-Poclain [6.53 h]; Dump Truck [6.53 h]; Lighting polesdouble arms, height of ( 12 ) meters [1.25 Unit]; Lighting poles single arms, height of ( 10 ) meters [1 Unit] | 9,122 | RA07 | Z5 | CONS | SL | RC Base | AFT |
| RHD4CZ5RA07SL1300 |  | Backfill for RC Base for Lighting Poles for Street Lighting Network - (ROUND-07)-Z5-RA07-SL | 2d | 2027-06-08 | 2027-06-09 | RHD4CZ5RA07SL1200 |  |  |  |  | -143d | 0d | Skilled labor [6.53 h]; Unskilled Labor [6.53 h]; Equipment Opreator [13.07 h]; Excavator-Poclain [6.53 h]; Dump Truck [6.53 h]; Lighting polesdouble arms, height of ( 12 ) meters [0.25 Unit]; Lighting poles single arms, height of ( 10 ) meters [0.2 Unit] | 1,824.4 | RA07 | Z5 | CONS | SL | Backfill | AFT |
| RHD4CZ5RA07SL1400 |  | Installation for Lighting Poles for Street Lighting Network - (ROUND-07)-Z5-RA07-SL | 2d | 2027-06-10 | 2027-06-12 | RHD4CZ5RA07SL1300, RHD4PRSHLDOSSL1200, RHD4ENMSSL2000, RHD4ENMSSL2010, RHD4PRSHLSTAGSL1200 |  |  |  |  | -143d | 0d | Skilled labor [9.8 h]; Unskilled Labor [9.8 h]; Electrician [9.8 h]; Equipment Opreator [9.8 h]; Boom Truck [9.8 h]; Lighting polesdouble arms, height of ( 12 ) meters [3 Unit]; Lighting poles single arms, height of ( 10 ) meters [2.4 Unit] | 21,892.8 | RA07 | Z5 | CONS | SL | Poles Installation | AFT |
| RHD4CZ5RA07SL1500 |  | Luminaire Installation for Lighting Poles for Street Lighting Network - (ROUND-07)-Z5-RA07-SL | 2d | 2027-06-13 | 2027-06-14 | RHD4CZ5RA07SL1400, RHD4PRSHLDOSSL1300, RHD4PRSHLSTAGSL1300 |  |  |  |  | -143d | 0d | Unskilled Labor [20.36 h]; Electrician [10.13 h]; Equipment Opreator [3.48 h]; Boom Truck [4 h]; Street Lighting( LED) Luminaire of Output ?18553 lumen [10 Unit]; Street Lighting( LED) Luminaire of Output ?10898 lumen [4 Unit] | 8,722 | RA07 | Z5 | CONS | SL | Luminaire Installation | AFT |
|  | 4266 | **RHD4-02-002-RA07-(SL)-Street Lighting Feeder Pillars** |  | 2027-06-01 | 2027-06-14 |  |  |  |  |  |  |  |  |  |  |  |  |  |  |  |
| RHD4CZ5RA07SL4100 |  | Leveling for Distribution Pillars for Street Lighting Network - (ROUND-07)-Z5-RA07-SL | 2d | 2027-06-01 | 2027-06-02 | RHD4CZ5RA07SL3300 |  |  |  |  | -137d | 0d | Skilled labor [10.89 h]; Unskilled Labor [21.78 h]; Equipment Opreator [4.36 h]; Excavator-Poclain [2.18 h]; Boom Truck [2.18 h]; 0.6/1 KV Steet Lighting Feeder Pillar [0.15 Unit] | 3,438.15 | RA07 | Z5 | CONS | SL | Leveling | AFT |
| RHD4CZ5RA07SL4200 |  | Lean Concrete for Distribution Pillars for Street Lighting Network - (ROUND-07)-Z5-RA07-SL | 2d | 2027-06-03 | 2027-06-05 | RHD4CZ5RA07SL4100 |  |  |  |  | -137d | 6d | Skilled labor [10.89 h]; Unskilled Labor [21.78 h]; Equipment Opreator [4.36 h]; Concrete Mixer Truck [2.18 h]; Concrete Pump [2.18 h]; 0.6/1 KV Steet Lighting Feeder Pillar [0.25 Unit] | 5,730.25 | RA07 | Z5 | CONS | SL | Lean Concrete | AFT |
| RHD4CZ5RA07SL4300 |  | Installation of Distribution Pillars for Street Lighting Network - (ROUND-07)-Z5-RA07-SL | 2d | 2027-06-13 | 2027-06-14 | RHD4CZ5RA07SL4200, RHD4CZ5RA07SL1400 |  |  |  |  | -143d | 0d | Skilled labor [10.89 h]; Unskilled Labor [43.56 h]; Electrician [21.78 h]; Equipment Opreator [10.89 h]; Boom Truck [10.89 h]; 0.6/1 KV Steet Lighting Feeder Pillar [0.6 Unit] | 13,752.6 | RA07 | Z5 | CONS | SL | Installation | AFT |

| ID | WBS | Activity | Duration | Start | Finish | Predecessors | Total float | Free float | Resources | Cost | RDH4-01-001-Road and Block Names-1 | RDH4-01-001-Zones-1 | RDH4-01-001-Phases-1 | RDH4-01-001-Networks-1 | RDH4-01-001-Work Method-1 | RDH4-01-001-MENEM |
| --- | --- | --- | --- | --- | --- | --- | --- | --- | --- | --- | --- | --- | --- | --- | --- | --- |
|  | 4267 | **RHD4-02-002-RA07-(SL)-Street Lighting Earthing System** |  | 2027-06-15 | 2027-06-16 |  |  |  |  |  |  |  |  |  |  |  |
| RHD4CZ5RA07SL6100 |  | Installation of Earthing for Lighting Poles and Fedder Pillers for Street Lighting Network - (ROUND-07)-Z5-RA07-SL | 2d | 2027-06-15 | 2027-06-16 | RHD4CZ5RA07SL4300, RHD4ENMSER2000, RHD4ENMSER2010, RHD4CZ5RA07SL1500 | -143d | 0d | Skilled labor [0.8 h]; Unskilled Labor [0.8 h]; Equipment Opreator [1.42 h]; Excavator-Poclain [0.8 h]; Dump Truck [0.8 h]; Street Lighting Feeder pillars - ER [1 Unit] | 1,128 | RA07 | Z5 | CONS | SL | Installation | AFT |
|  | 4273 | **RHD4-02-002-Z5-RA07-Telecommunications Network - TC** |  | 2027-06-17 | 2027-08-04 |  |  |  |  |  |  |  |  |  |  |  |
|  | 4274 | **RHD4-02-002-RA07-(TC)-Telecommunications Ducts** |  | 2027-06-17 | 2027-06-28 |  |  |  |  |  |  |  |  |  |  |  |
| RHD4CZ5RA07TC2100 |  | Excavation of HDPE Ducts for Telecom Network - (ROUND-07)-Z5-RA07-TC | 3d | 2027-06-17 | 2027-06-20 | RHD4ENSDZ5APPTC190, RHD4CZ5RA07SL6100 | -143d | 0d | Skilled labor [23.63 h]; Unskilled Labor [23.63 h]; Equipment Opreator [47.26 h]; Excavator-Poclain [23.63 h]; Dump Truck [23.63 h]; (6*50mm) HDPE ducts -TC [59.88 m]; (6*50mm+2*32mm) HDPE ducts -TC [4.7 m]; (2*32mm) HDPE ducts -TC [0.48 m] | 5,798.06 | RA07 | Z5 | CONS | TC | Excavation | AFT |
| RHD4CZ5RA07TC2200 |  | Installation of HDPE Ducts for Telecom Network - (ROUND-07)-Z5-RA07-TC | 4d | 2027-06-21 | 2027-06-24 | RHD4CZ5RA07TC2100, RHD4PRSHLDOSTC1000, RHD4PRSHLSTAGTC1000 | -143d | 0d | Carpenter [3.59 h]; Skilled labor [35.39 h]; Unskilled Labor [35.39 h]; Steel Fixer [3.59 h]; (6*50mm) HDPE ducts -TC [194.61 m]; (6*50mm+2*32mm) HDPE ducts -TC [15.28 m]; (2*32mm) HDPE ducts -TC [1.56 m] | 18,844.24 | RA07 | Z5 | CONS | TC | Installing | AFT |
| RHD4CZ5RA07TC2400 |  | Backfilling of HDPE Ducts for Telecom Network - (ROUND-07)-Z5-RA07-TC | 3d | 2027-06-26 | 2027-06-28 | RHD4CZ5RA07TC2200 | -143d | 28d | Skilled labor [23.63 h]; Unskilled Labor [23.63 h]; Equipment Opreator [9.47 h]; Excavator-Poclain [9.47 h]; (6*50mm) HDPE ducts -TC [44.91 m]; (6*50mm+2*32mm) HDPE ducts -TC [3.53 m]; (2*32mm) HDPE ducts -TC [0.36 m] | 4,349.09 | RA07 | Z5 | CONS | TC | Backfilling | AFT |
|  | 4275 | **RHD4-02-002-RA07-(TC)-Telecommunications Manholes** |  | 2027-08-01 | 2027-08-04 |  |  |  |  |  |  |  |  |  |  |  |
| RHD4CZ5RA07TC5100 |  | Excavation for Manholes for Telecom Network - (ROUND-07)-Z5-RA07-TC | 2d | 2027-08-01 | 2027-08-02 | RHD4ENSDZ5APPTC190, RHD4CZ5RA07TC2400, RHD4CZ5RA07MV5400, RHD4CZ5RA07MV3400, RHD4CZ5RA07MV3401 | -171d | 0d | Skilled labor [5.45 h]; Unskilled Labor [5.45 h]; Equipment Opreator [4.36 h]; Excavator-Poclain [2.18 h]; Dump Truck [2.18 h]; Manhole Type 1 - TC [0.6 nr] | 4,044.6 | RA07 | Z5 | CONS | TC | Excavation | AFT |
| RHD4CZ5RA07TC5200 |  | Installation of Manholes for Telecom Network - (ROUND-07)-Z5-RA07-TC | 2d | 2027-08-03 | 2027-08-04 | RHD4CZ5RA07TC5100, RHD4PRSHLDOSTC1200, RHD4PRSHLSTAGTC1200 | -171d | 0d | Skilled labor [5.45 h]; Unskilled Labor [5.45 h]; Equipment Opreator [2.18 h]; Boom Truck [2.18 h]; Manhole Type 1 - TC [3.4 nr] | 22,919.4 | RA07 | Z5 | CONS | TC | Installation | AFT |
|  | 5411 | **RHD4-02-002-RA07-(TC)-Telecomminications Road Crossings** |  |  |  |  |  |  |  |  |  |  |  |  |  |  |
|  | 4277 | **RHD4-02-002-Z5-RA07-Information and Communication Technologies - ICT** |  | 2027-08-05 | 2027-08-21 |  |  |  |  |  |  |  |  |  |  |  |
|  | 4278 | **RHD4-02-002-RA07-(ICT)-Information and Communication Technologies Ducts** |  | 2027-08-05 | 2027-08-16 |  |  |  |  |  |  |  |  |  |  |  |
| RHD4CZ5RA07ICT2100 |  | Excavation of HDPE Ducts for ICT Network - (ROUND-07)-Z5-RA07-ICT | 3d | 2027-08-05 | 2027-08-08 | RHD4ENSDZ5APPICT200, RHD4CZ5RA07SL2100, RHD4CZ5RA07TC5200 | -171d | 0d | Skilled labor [22.33 h]; Unskilled Labor [22.33 h]; Equipment Opreator [44.65 h]; Excavator-Poclain [22.33 h]; Dump Truck [22.33 h]; (2*50mm) HDPE ducts -ICT [61.54 m] | 2,338.52 | RA07 | Z5 | CONS | ICT | Excavation | AFT |
| RHD4CZ5RA07ICT2200 |  | Installation of HDPE Ducts for ICT Network - (ROUND-07)-Z5-RA07-ICT | 4d | 2027-08-09 | 2027-08-12 | RHD4CZ5RA07ICT2100, RHD4PRSHLDOSICT1000, RHD4PRSHLSTAGICT1000 SS | -171d | 0d | Carpenter [3.38 h]; Skilled labor [33.54 h]; Unskilled Labor [33.54 h]; Steel Fixer [3.38 h]; (2*50mm) HDPE ducts -ICT [200 m] | 7,600.19 | RA07 | Z5 | CONS | ICT | Installing | AFT |
| RHD4CZ5RA07ICT2400 |  | Backfilling of HDPE Ducts for ICT Network - (ROUND-07)-Z5-RA07-ICT | 3d | 2027-08-14 | 2027-08-16 | RHD4CZ5RA07ICT2200 | -171d | 0d | Skilled labor [22.33 h]; Unskilled Labor [22.33 h]; Equipment Opreator [8.93 h]; Excavator-Poclain [8.93 h]; (2*50mm) HDPE ducts -ICT [46.16 m] | 1,753.89 | RA07 | Z5 | CONS | ICT | Backfilling | AFT |
|  | 4279 | **RHD4-02-002-RA07-(ICT)-Information and Communication Technologies Manholes** |  | 2027-08-17 | 2027-08-21 |  |  |  |  |  |  |  |  |  |  |  |
| RHD4CZ5RA07ICT5100 |  | Excavation for Manholes for ICT Network - (ROUND-07)-Z5-RA07-ICT | 2d | 2027-08-17 | 2027-08-18 | RHD4ENSDZ5APPICT200, RHD4CZ5RA07ICT2400 | -171d | 0d | Skilled labor [1.42 h]; Unskilled Labor [1.42 h]; Equipment Opreator [1.09 h]; Excavator-Poclain [0.54 h]; Dump Truck [0.54 h]; Manhole Type 1 - ICT [0.15 nr] | 808.95 | RA07 | Z5 | CONS | ICT | Excavation | AFT |
| RHD4CZ5RA07ICT5200 |  | Installation of Manholes for ICT Network - (ROUND-07)-Z5-RA07-ICT | 2d | 2027-08-19 | 2027-08-21 | RHD4PRSHLDOSICT1200, RHD4PRSHLSTAGICT1200, RHD4CZ5RA07ICT5100 | -171d | 0d | Skilled labor [1.42 h]; Unskilled Labor [1.42 h]; Equipment Opreator [0.54 h]; Boom Truck [0.54 h]; Manhole Type 1 - ICT [0.85 nr] | 4,584.05 | RA07 | Z5 | CONS | ICT | Installation | AFT |
|  | 4268 | **RHD4-02-002-Z5-RA07-Landscape Network - LS** |  |  |  |  |  |  |  |  |  |  |  |  |  |  |
|  | 4269 | **RHD4-02-002-RA07-(LS)-Landscape Lighting cables** |  |  |  |  |  |  |  |  |  |  |  |  |  |  |
|  | 4270 | **RHD4-02-002-RA07-(LS)-Landscape Feeder Pillars** |  |  |  |  |  |  |  |  |  |  |  |  |  |  |
|  | 4271 | **RHD4-02-002-RA07-(LS)-Landscape Bollard Poles** |  |  |  |  |  |  |  |  |  |  |  |  |  |  |
|  | 4272 | **RHD4-02-002-RA07-(LS)-Landscape Feeder Pillars Earthing** |  |  |  |  |  |  |  |  |  |  |  |  |  |  |
|  | 4281 | **RHD4-02-002-Z5-RA07-Security Network - CCTV** |  | 2027-08-22 | 2027-10-04 |  |  |  |  |  |  |  |  |  |  |  |
|  | 4282 | **RHD4-02-002-RA07-(CCTV)-Civil Works** |  | 2027-08-22 | 2027-09-01 |  |  |  |  |  |  |  |  |  |  |  |
| RHD4CZ5RA07CCTV2100 |  | Civil Works for Security Network - (ROUND-07)-Z5-RA07-CCTV | 10d | 2027-08-22 | 2027-09-01 | RHD4CZ5RA07ICT5200 | -171d | 0d | Skilled labor [435.68 h]; Unskilled Labor [871.2 h]; Equipment Opreator [435.68 h]; Excavator-Poclain [108.9 h]; Dump Truck [108.9 h]; Civil works Digging, trenching, laying pipes Meter with supply and installation of Manholes and for power feeding sources related to all towers and poles – (from 35-meter pole to control room and from related UPS camersa distribution boards till overall 2 [300 m] | 34,800 | RA07 | Z5 | CONS | CCTV | Civil Works | AFT |

| ID | WBS | Activity | Duration | Start | Finish | Predecessors | Complete | Planned start | Planned finish | Total float | Free float | Resources | Cost | Actual cost | RDH4-01-001-Road and Block Names-1 | RDH4-01-001-Zones-1 | RDH4-01-001-Phases-1 | RDH4-01-001-Networks-1 | RDH4-01-001-Work Method-1 | RDH4-01-001-MENEM |
| --- | --- | --- | --- | --- | --- | --- | --- | --- | --- | --- | --- | --- | --- | --- | --- | --- | --- | --- | --- | --- |
|  | 4283 | **RHD4-02-002-RA07-(CCTV)-CCTV Poles** |  | 2027-09-02 | 2027-09-13 |  |  |  |  |  |  |  |  |  |  |  |  |  |  |  |
| RHD4CZ5RA07CCTV1100 |  | Excavation for RC Base for CCTV Poles for Security Network - (ROUND-07)-Z5-RA07-CCTV | 2d | 2027-09-02 | 2027-09-04 | RHD4CZ5RA07CCTV2100, RHD4ENSDZ5APPCCTV210 |  |  |  | -171d | 0d | Skilled labor [8.64 h]; Unskilled Labor [8.64 h]; Equipment Opreator [17.44 h]; Excavator-Poclain [4.36 h]; Dump Truck [4.36 h]; 25 Meters pole for CCTV Cameras [0.2 nr] | 28,180.4 |  | RA07 | Z5 | CONS | CCTV | Excavation | AFT |
| RHD4CZ5RA07CCTV1200 |  | Installation for RC Base for CCTV Poles for Security Network - (ROUND-07)-Z5-RA07-CCTV | 2d | 2027-09-05 | 2027-09-06 | RHD4CZ5RA07CCTV1100 |  |  |  | -171d | 0d | Skilled labor [8.64 h]; Unskilled Labor [8.64 h]; Equipment Opreator [17.44 h]; Excavator-Poclain [4.36 h]; Dump Truck [4.36 h]; 25 Meters pole for CCTV Cameras [0.5 nr] | 70,451 |  | RA07 | Z5 | CONS | CCTV | RC Base | AFT |
| RHD4CZ5RA07CCTV1300 |  | Backfill for RC Base for CCTV Poles for Security Network - (ROUND-07)-Z5-RA07-CCTV | 2d | 2027-09-07 | 2027-09-08 | RHD4CZ5RA07CCTV1200 |  |  |  | -171d | 0d | Skilled labor [5.44 h]; Unskilled Labor [5.44 h]; Equipment Opreator [10.88 h]; Excavator-Poclain [2.72 h]; Dump Truck [2.72 h]; 25 Meters pole for CCTV Cameras [0.1 nr] | 14,090.2 |  | RA07 | Z5 | CONS | CCTV | Backfill | AFT |
| RHD4CZ5RA07CCTV1400 |  | Installation for CCTV Poles for Security Network - (ROUND-07)-Z5-RA07-CCTV | 2d | 2027-09-09 | 2027-09-11 | RHD4CZ5RA07CCTV1300, RHD4PRSHLDOSCCTV1000, RHD4PRSHLSTACCTV1000 |  |  |  | -171d | 0d | Skilled labor [14.56 h]; Unskilled Labor [28.96 h]; Electrician [14.56 h]; Equipment Opreator [14.56 h]; Boom Truck [7.3 h]; 25 Meters pole for CCTV Cameras [1.2 nr] | 169,082.4 |  | RA07 | Z5 | CONS | CCTV | Installation | AFT |
| RHD4CZ5RA07CCTV1500 |  | Protection post Installation for CCTV Poles for Security Network - (ROUND-07)-Z5-RA07-CCTV | 2d | 2027-09-12 | 2027-09-13 | RHD4CZ5RA07CCTV1400 |  |  |  | -157d | 17d | Skilled labor [21.76 h]; Unskilled Labor [43.52 h]; Supply and Installation of minimum 4 Protection Post for each pole or tower with pipe ?220*6mm THK. [1 nr] | 4,903 |  | RA07 | Z5 | CONS | CCTV | Protection post | AFT |
|  | 4284 | **RHD4-02-002-RA07-(CCTV)-Camera** |  | 2027-09-14 | 2027-09-15 |  |  |  |  |  |  |  |  |  |  |  |  |  |  |  |
| RHD4CZ5RA07CCTV3100 |  | Installation for Cameras for Security Network - (ROUND-07)-Z5-RA07-CCTV | 2d | 2027-09-14 | 2027-09-15 | RHD4CZ5RA07CCTV1400, RHD4CZ5RA07CCTV4100, RHD4PRSHLDOSCCTV1100, RHD4PRSHLSTACCTV1100 |  |  |  | -171d | 0d | Unskilled Labor [108.96 h]; Electrician [54.4 h]; Outdoor Camera, 5MP resolution, day/night, fixed bullet camera providing Forensic WDR. [8 nr]; Outdoor PTZ with IR, HDTV 1080 and 31x optical, 12x digital, total 372x zoom, H264/265 with Motion JPEG. [2 nr] | 123,454 |  | RA07 | Z5 | CONS | CCTV | Installation | AFT |
|  | 4285 | **RHD4-02-002-RA07-(CCTV)-Power and Infrastructure** |  | 2027-09-12 | 2027-09-15 |  |  |  |  |  |  |  |  |  |  |  |  |  |  |  |
| RHD4CZ5RA07CCTV4100 |  | Installation of Power outlet, UPS and midspan for PTZ Camerafor Cameras for Security Network - (ROUND-07)-Z5-RA07-CCTV | 2d | 2027-09-12 | 2027-09-13 | RHD4CZ5RA07CCTV1400, RHD4PRSHLDOSCCTV1300, RHD4PRSHLSTACCTV1300 |  |  |  | -171d | 0d | Skilled labor [13.12 h]; Unskilled Labor [52.32 h]; Electrician [26.08 h]; Equipment Opreator [26.08 h]; Excavator-Poclain [6.53 h]; Dump Truck [6.53 h]; Outdoor ready IP66-rated midspan for PTZ Camera (The outdoor- ready midspan should be IP66/IP67- and NEMA 4X-rated [2 nr]; 1.2KVA Industrial type UPS located at FEC remote poles [1 nr] | 12,077 |  | RA07 | Z5 | CONS | CCTV | Power | AFT |
| RHD4CZ5RA07CCTV4200 |  | Short Range Wireless PoP wireless Bridgefor CCTV Poles for Security Network - (ROUND-07)-Z5-RA07-CCTV | 2d | 2027-09-14 | 2027-09-15 | RHD4CZ5RA07CCTV4100 |  |  |  | -171d | 0d | Skilled labor [21.76 h]; Unskilled Labor [43.52 h]; Electrician [21.76 h]; Equipment Opreator [43.52 h]; Excavator-Poclain [10.89 h]; Dump Truck [10.89 h]; Short Range wireless point to point wireless bridge [4 nr] | 58,548 |  | RA07 | Z5 | CONS | CCTV | Wireless Pop | AFT |
|  | 4287 | **RHD4-02-002-RA07-(CCTV)-CCTV Panels and Components** |  | 2027-09-16 | 2027-10-04 |  |  |  |  |  |  |  |  |  |  |  |  |  |  |  |
| RHD4CZ5RA07CCTV6100 |  | Installation for CCTV Panels for Security Network - (ROUND-07)-Z5-RA07-CCTV | 15d | 2027-09-16 | 2027-10-04 | RHD4CZ5RA07CCTV4200, RHD4CZ5RA07CCTV3100, RHD4PRSHLDOSCCTV1200, RHD4PRSHLSTACCTV1200, RHD4PRLOLSTACCTV1001 |  |  |  | -171d | 0d | Skilled labor [326.72 h]; Unskilled Labor [980.16 h]; Electrician [326.72 h]; Pole mounted Filed Equipment cabinet (FEC) , with fan and ventilation, NEMEX 4X ,door, minimum size (600x600x400mm) , the cabinet/enclosurE [1 nr]; 8 Port Industrial PoE Switch 10/1000BaseT (-40 deg to +70 deg. Celsius) for remote poles and as specifiedin item 15. [2 nr]; UTP CAT6 Patch Cord , connect the industrial switch with the cameras, and radio wireless antenna [12 nr] | 35,987 |  | RA07 | Z5 | CONS | CCTV | Equipment | AFT |
|  | 4487 | **RHD4-02-002-Z5-C061** |  | 2026-05-12 | 2027-10-23 |  |  |  |  |  |  |  |  |  |  |  |  |  |  |  |
|  | 4518 | **RHD4-02-002-Z5-C061-Crossings Sewage Network - SWCr** |  |  |  |  |  |  |  |  |  |  |  |  |  |  |  |  |  |  |
|  | 4528 | **RHD4-02-002-C061-(SWCr)-MH Works - 1200 mm diameter** |  |  |  |  |  |  |  |  |  |  |  |  |  |  |  |  |  |  |
|  | 4529 | **RHD4-02-002-C061-(SWCr)-MH Works - 1200 mm diameter with Back drop** |  |  |  |  |  |  |  |  |  |  |  |  |  |  |  |  |  |  |
|  | 4520 | **RHD4-02-002-C061-(SWCr)-GRP Pipes - 400 mm diameter** |  |  |  |  |  |  |  |  |  |  |  |  |  |  |  |  |  |  |
|  | 4524 | **RHD4-02-002-C061-(SWCr)-UPVC Pipes - 200 mm diameter** |  |  |  |  |  |  |  |  |  |  |  |  |  |  |  |  |  |  |
|  | 4532 | **RHD4-02-002-C061-(SWCr)-Wash out Chambers** |  |  |  |  |  |  |  |  |  |  |  |  |  |  |  |  |  |  |
|  | 4533 | **RHD4-02-002-C061-(SWCr)-Wash out Valves** |  |  |  |  |  |  |  |  |  |  |  |  |  |  |  |  |  |  |
|  | 4539 | **RHD4-02-002-C061-(SWCr)-Gate Valves (Direct Buried)** |  |  |  |  |  |  |  |  |  |  |  |  |  |  |  |  |  |  |
|  | 4562 | **RHD4-02-002-Z5-C061-Crossings Potable Network - PTCr** |  |  |  |  |  |  |  |  |  |  |  |  |  |  |  |  |  |  |
|  | 4564 | **RHD4-02-002-C061-(PTCr)-HDPE Pipes - 160 mm diameter** |  |  |  |  |  |  |  |  |  |  |  |  |  |  |  |  |  |  |
|  | 4575 | **RHD4-02-002-C061-(PTCr)-Fire Hydrant** |  |  |  |  |  |  |  |  |  |  |  |  |  |  |  |  |  |  |
|  | 4666 | **RHD4-02-002-Z5-C061-Road Works - RD** |  | 2026-05-12 | 2027-10-23 |  |  |  |  |  |  |  |  |  |  |  |  |  |  |  |
|  | 4667 | **RHD4-02-002-C061-(RD)-Subgrade** |  | 2026-05-12 | 2026-05-23 |  |  |  |  |  |  |  |  |  |  |  |  |  |  |  |
| RHD4CZ5C061RD1100 |  | Supply, lay and compaction subgrade compacted thickness 300 mm for Roads - (RD-C-6 /1)-Z5-C061-RD | 7d | 2026-05-12 A | 2026-05-23 A | RHD4ENSDZ5APPRD220, RHD4ENSDZ5APPEW100 SS, RHD4CZ5C061ST3301, RHD4CZ5C061ST3300, RHD4CZ5C061ST1503, RHD4CZ5C061TC3400, RHD4CZ5C061ICT3400 | 100% | 2026-08-24 | 2026-08-31 |  |  | Skilled labor [44.65 h]; Unskilled Labor [89.41 h]; Electrician [44.65 h]; Equipment Opreator [305.26 h]; Water Truck [14.7 h]; Roller compactor [22.33 h]; Grader [44.65 h]; Dump Truck [223.47 h]; Subgrade [2149.6 m3] | 40,842.4 | 40,842.4 | C061 | Z5 | CONS | RD | Subgrade | bef |

| ID | WBS | Activity | Duration | Start | Finish | Predecessors | Complete | Planned start | Planned finish | Total float | Free float | Resources | Cost | Actual cost | RDH4-01-001-Road and Block Names-1 | RDH4-01-001-Zones-1 | RDH4-01-001-Phases-1 | RDH4-01-001-Networks-1 | RDH4-01-001-Work Method-1 | RDH4-01-001-MENEM |
| --- | --- | --- | --- | --- | --- | --- | --- | --- | --- | --- | --- | --- | --- | --- | --- | --- | --- | --- | --- | --- |
|  | 4668 | **RHD4-02-002-C061-(RD)-Aggregate Base Course** |  | 2027-02-21 | 2027-02-25 |  |  |  |  |  |  |  |  |  |  |  |  |  |  |  |
| RHD4CZ5C061RD2100 |  | Supply, lay and compaction Aggregate base course compacted thickness 300 mmfor Roads - (RD-C-6 /1)-Z5-C061-RD | 4d | 2027-02-21 | 2027-02-25 | RHD4CZ5C061RD1100 |  |  |  | -162d | 0d | Skilled labor [16.55 h]; Unskilled Labor [33.11 h]; Equipment Opreator [209.53 h]; Water Truck [10.89 h]; Roller compactor [33.11 h]; Grader [33.11 h]; Dump Truck [132.43 h]; Aggregate Base Courses [1350.16 m3] | 76,959.12 |  | C061 | Z5 | CONS | RD | ABC | bef |
|  | 4669 | **RHD4-02-002-C061-(RD)-Bituminous base course Two Layers, including (MC1)&(RC2)** |  | 2027-02-27 | 2027-10-10 |  |  |  |  |  |  |  |  |  |  |  |  |  |  |  |
| RHD4CZ5C061RD3100 |  | Supply, lay and Asphaltic base course including Prime Coat (MC1) for 1st Layer - (RD-C-6 /1)-Z5-C061-RD | 2d | 2027-02-27 | 2027-02-28 | RHD4CZ5C061RD2100, RHD4ENMSASPH2000, RHD4ENMSASPH2010 |  |  |  | -162d | 14d | Skilled labor [13.18 h]; Unskilled Labor [78.85 h]; Equipment Opreator [197.22 h]; Bobcat [13.18 h]; Roller compactor [13.18 h]; Asphalt Paver [13.18 h]; Rubber Compactor [26.25 h]; MC1/RC2 Sprinkler [13.18 h]; Dump Truck [118.27 h]; Bituminous base course (Grading I - Class A), including Prime coat (MC1) & tack coate (RC2) [480.93 m3] | 229,884.54 |  | C061 | Z5 | CONS | RD | 150 mm | AFT |
| RHD4CZ5C061RD3200 |  | Supply, lay and Asphaltic base course including Tack Coat (RC2) for 2nd Layer - (RD-C-6 /1)-Z5-C061-RD | 2d | 2027-10-09 | 2027-10-10 | RHD4PRSHLDOSRD1100, RHD4PRSHLSTAGRD1100, RHD4CZ5C061CCTV6100 |  |  |  | -172d | 0d | Skilled labor [13.18 h]; Unskilled Labor [78.85 h]; Equipment Opreator [197.22 h]; Bobcat [13.18 h]; Roller compactor [13.18 h]; Asphalt Paver [13.18 h]; Rubber Compactor [26.25 h]; MC1/RC2 Sprinkler [13.18 h]; Dump Truck [118.27 h]; Bituminous base course (Grading I - Class A), including Prime coat (MC1) & tack coate (RC2) [480.93 m3] | 229,884.54 |  | C061 | Z5 | CONS | RD | 150 mm | AFT |
|  | 4671 | **RHD4-02-002-C061-(RD)-Precast Concrete Curb** |  | 2027-10-11 | 2027-10-16 |  |  |  |  |  |  |  |  |  |  |  |  |  |  |  |
| RHD4CZ5C061RD5100 |  | Supply and installation Precast Concrete Kerb for Roads - (RD-C-6 /1)-Z5-C061-RD | 5d | 2027-10-11 | 2027-10-16 | RHD4CZ5C061RD3200, RHD4ENMSRD2000 |  |  |  | -172d | 0d | Mason [154.64 h]; Skilled labor [51.51 h]; Unskilled Labor [154.64 h]; Equipment Opreator [103.13 h]; Bobcat [51.51 h]; Concrete Mixer Truck [51.51 h]; Precast Concrete Curbstone, type K1 [2130 m] | 117,150 |  | C061 | Z5 | CONS | RD | Curbs | AFT |
|  | 4674 | **RHD4-02-002-C061-(RD)-Traffic Signage** |  | 2027-10-17 | 2027-10-23 |  |  |  |  |  |  |  |  |  |  |  |  |  |  |  |
| RHD4CZ5C061RD8100 |  | Installation of Traffic Signage for Road Network - (RD-C-6 /1)-Z5-C061-RD | 6d | 2027-10-17 | 2027-10-23 | RHD4CZ5C061RD5100 |  |  |  | -172d | 26d | Skilled labor [130.68 h]; Unskilled Labor [65.34 h]; Electrician [9.8 h]; Equipment Opreator [16.99 h]; Boom Truck [13.07 h]; Concrete Mixer Truck [3.92 h]; Traffic signs, ground mounted, 1 Sheet Aluminium, (breakaway)Single post [9 nr] | 11,034 |  | C061 | Z5 | CONS | RD | Traffic Signage | AFT |
|  | 4672 | **RHD4-02-002-C061-(RD)-Precast Interlocking Block Pavers** |  |  |  |  |  |  |  |  |  |  |  |  |  |  |  |  |  |  |
|  | 4670 | **RHD4-02-002-C061-(RD)-Bituminous concrete wearing course including tack coat (RC2)** |  | 2027-10-17 | 2027-10-18 |  |  |  |  |  |  |  |  |  |  |  |  |  |  |  |
| RHD4CZ5C061RD4100 |  | Supply, lay and compaction Asphaltic wearing course including tack Coat (RC2)for Road Network - (RD-C-6 /1)-Z5-C061-RD | 2d | 2027-10-17 | 2027-10-18 | RHD4CZ5C061RD5100 |  |  |  | -172d | 0d | Skilled labor [6.75 h]; Unskilled Labor [40.62 h]; Equipment Opreator [101.6 h]; Bobcat [6.75 h]; Roller compactor [6.75 h]; Asphalt Paver [6.75 h]; Rubber Compactor [13.5 h]; MC1/RC2 Sprinkler [6.75 h]; Dump Truck [60.99 h]; Bituminous concrete wearing course, (Grading I - Class A), including tack coat (RC2) [322.98 m3] | 175,378.14 |  | C061 | Z5 | CONS | RD | 50 mm | AFT |
|  | 4673 | **RHD4-02-002-C061-(RD)-Pavement Marking** |  | 2027-10-19 | 2027-10-23 |  |  |  |  |  |  |  |  |  |  |  |  |  |  |  |
| RHD4CZ5C061RD7100 |  | Pavement Markings for Road Network - (RD-C-6 /1)-Z5-C061-RD | 4d | 2027-10-19 | 2027-10-23 | RHD4CZ5C061RD4100 |  |  |  | -172d | 26d | Skilled labor [36.26 h]; Unskilled Labor [72.42 h]; Equipment Opreator [36.26 h]; Road Marking Machine [36.26 h]; Retroreflective Thermoplastic White Traffic Markings [261.24 m2]; Retroreflective Thermoplastic Yellow, Traffic Markings [130.12 m2]; Retroreflective raised pavement markers (cat eyes) [471 nr] | 28,146.16 |  | C061 | Z5 | CONS | RD | Pavement Marking | AFT |
|  | 4491 | **RHD4-02-002-Z5-C061-Storm Network - ST** |  | 2026-08-04 | 2027-02-10 |  |  |  |  |  |  |  |  |  |  |  |  |  |  |  |
|  | 4509 | **RHD4-02-002-C061-(ST)-MH Works - 1500 mm diameter** |  | 2026-08-04 | 2027-02-03 |  |  |  |  |  |  |  |  |  |  |  |  |  |  |  |
| RHD4CZ5C061ST3101 |  | Excavation and PC Blinding works for MH 1500 mm - (RD-C-6 /1)-Z5-C061-ST | 3d | 2026-08-04 A | 2026-09-12 A | RHD4ENSDZ5APPST110, RHD4ENMSST2000, RHD4CZ5C051ST3101 | 100% | 2026-07-28 | 2026-07-30 |  |  | Skilled labor [32.67 h]; Unskilled Labor [32.67 h]; Equipment Opreator [52.27 h]; Excavator-Poclain [32.67 h]; Water Truck [3.27 h]; Dump Truck [16.34 h]; MH (1500mm Diameter) - ST - depth 1.50 - 2.5m [1 nr]; MH (1500mm Diameter) - ST - depth 3.51 - 4.5m [0.25 nr] | 19,859.5 | 19,859.5 | C061 | Z5 | CONS | ST | Excavation | bef |
| RHD4CZ5C061ST3201 |  | Installation of Base for MH 1500 mm - (RD-C-6 /1)-Z5-C061-ST | 3d | 2026-08-06 A | 2026-09-20 A | RHD4CZ5C061ST3101, RHD4PRSHLSTAGST1604 | 100% | 2026-08-01 | 2026-08-03 |  |  | Skilled labor [32.67 h]; Unskilled Labor [32.67 h]; Equipment Opreator [13.07 h]; Boom Truck [6.53 h]; Concrete Mixer Truck [6.53 h]; MH (1500mm Diameter) - ST - depth 1.50 - 2.5m [1 nr]; MH (1500mm Diameter) - ST - depth 3.51 - 4.5m [0.25 nr] | 19,859.5 | 19,859.5 | C061 | Z5 | CONS | ST | Installing Base | bef |
| RHD4CZ5C061ST3301 |  | MH Ring and C.Slab works and Backfilling works for MH 1500 mm - (RD-C-6 /1)-Z5-C061-ST | 3d | 2027-01-26 | 2027-01-28 | RHD4CZ5C061ST3201, RHD4PRSHLDOSST1604 |  |  |  | -176d | 0d | Skilled labor [32.67 h]; Unskilled Labor [32.67 h]; Equipment Opreator [22.87 h]; Boom Truck [13.07 h]; Concrete Mixer Truck [9.8 h]; MH (1500mm Diameter) - ST - depth 1.50 - 2.5m [1.4 nr]; MH (1500mm Diameter) - ST - depth 3.51 - 4.5m [0.35 nr] | 27,803.3 |  | C061 | Z5 | CONS | ST | Installing Rings | bef |
| RHD4CZ5C061ST3401 |  | Steel Cover for MH 1500 mm - (RD-C-6 /1)-Z5-C061-ST | 2d | 2027-01-30 | 2027-01-31 | RHD4CZ5C061ST3301, RHD4PRSHLDOSST1704, RHD4PRSHLSTAGST1704 |  |  |  | -176d | 0d | Skilled labor [18.19 h]; Unskilled Labor [36.26 h]; Equipment Opreator [3.59 h]; Boom Truck [3.59 h]; MH (1500mm Diameter) - ST - depth 1.50 - 2.5m [0.2 nr]; MH (1500mm Diameter) - ST - depth 3.51 - 4.5m [0.05 nr] | 3,971.9 |  | C061 | Z5 | CONS | ST | Steel Cover | bef |
| RHD4CZ5C061ST3501 |  | Finishing, Benching, Testing works for MH 1500 mm - (RD-C-6 /1)-Z5-C061-ST | 3d | 2027-02-01 | 2027-02-03 | RHD4CZ5C061ST3401 |  |  |  | -176d | 0d | Skilled labor [32.67 h]; Unskilled Labor [65.34 h]; Plumber [32.67 h]; Equipment Opreator [6.53 h]; Water Truck [6.53 h]; MH (1500mm Diameter) - ST - depth 1.50 - 2.5m [0.4 nr]; MH (1500mm Diameter) - ST - depth 3.51 - 4.5m [0.1 nr] | 7,943.8 |  | C061 | Z5 | CONS | ST | Benching | bef |
|  | 4497 | **RHD4-02-002-C061-(ST)-GRP Pipes - 900 mm diameter** |  |  |  |  |  |  |  |  |  |  |  |  |  |  |  |  |  |  |
|  | 3752 | **RHD4-02-002-L016-(ST)-MH Works - 1200 mm diameter** |  | 2026-08-04 | 2027-02-01 |  |  |  |  |  |  |  |  |  |  |  |  |  |  |  |
| RHD4CZ5C061ST3100 |  | Excavation and PC Blinding works for MH 1200 mm - (RD-C-6 /1)-Z5-C061-ST | 2d | 2026-08-04 A | 2026-08-06 A | RHD4CZ5C061ST3101 | 100% | 2026-08-01 | 2026-08-02 |  |  | Skilled labor [10.89 h]; Unskilled Labor [10.89 h]; Equipment Opreator [17.42 h]; Excavator-Poclain [10.89 h]; Water Truck [1.09 h]; Dump Truck [5.45 h]; MH (1200mm Diameter) - ST - depth 1.50 - 2.5m [0.75 nr] | 7,742.25 | 7,742.25 | C061 | Z5 | CONS | ST | Excavation | bef |
| RHD4CZ5C061ST3200 |  | Installation of Base for MH 1200 mm - (RD-C-6 /1)-Z5-C061-ST | 2d | 2026-08-06 A | 2026-09-14 A | RHD4CZ5C061ST3100 | 100% | 2026-08-03 | 2026-08-04 |  |  | Skilled labor [10.89 h]; Unskilled Labor [10.89 h]; Equipment Opreator [4.36 h]; Boom Truck [2.18 h]; Concrete Mixer Truck [2.18 h]; MH (1200mm Diameter) - ST - depth 1.50 - 2.5m [0.75 nr] | 7,742.25 | 7,742.25 | C061 | Z5 | CONS | ST | Installing Base | bef |
| RHD4CZ5C061ST3300 |  | MH Ring and C.Slab works and Backfilling works for MH 1200 mm - (RD-C-6 /1)-Z5-C061-ST | 2d | 2027-01-26 | 2027-01-27 | RHD4CZ5C061ST3200 |  |  |  | -182d | 0d | Skilled labor [10.89 h]; Unskilled Labor [10.89 h]; Equipment Opreator [7.62 h]; Boom Truck [4.36 h]; Concrete Mixer Truck [3.27 h]; MH (1200mm Diameter) - ST - depth 1.50 - 2.5m [1.05 nr] | 10,839.15 |  | C061 | Z5 | CONS | ST | Installing Rings | bef |
| RHD4CZ5C061ST3400 |  | Steel Cover for MH 1200 mm - (RD-C-6 /1)-Z5-C061-ST | 2d | 2027-01-28 | 2027-01-30 | RHD4CZ5C061ST3300 |  |  |  | -148d | 0d | Skilled labor [10.89 h]; Unskilled Labor [21.78 h]; Equipment Opreator [2.18 h]; Boom Truck [2.18 h]; MH (1200mm Diameter) - ST - depth 1.50 - 2.5m [0.15 nr] | 1,548.45 |  | C061 | Z5 | CONS | ST | Steel Cover | bef |
| RHD4CZ5C061ST3500 |  | Finishing, Benching, Testing works for MH 1200 mm - (RD-C-6 /1)-Z5-C061-ST | 2d | 2027-01-31 | 2027-02-01 | RHD4CZ5C061ST3400 |  |  |  | -148d | 0d | Skilled labor [10.89 h]; Unskilled Labor [21.78 h]; Plumber [10.89 h]; Equipment Opreator [2.18 h]; Water Truck [2.18 h]; MH (1200mm Diameter) - ST - depth 1.50 - 2.5m [0.3 nr] | 3,096.9 |  | C061 | Z5 | CONS | ST | Benching | bef |

| ID | WBS | Activity | Duration | Start | Finish | Predecessors | Complete | Remaining | Planned start | Planned finish | Total float | Free float | Resources | Cost | Actual cost | RDH4-01-001-Road and Block Names-1 | RDH4-01-001-Zones-1 | RDH4-01-001-Phases-1 | RDH4-01-001-Networks-1 | RDH4-01-001-Work Method-1 | RDH4-01-001-MENEM |
| --- | --- | --- | --- | --- | --- | --- | --- | --- | --- | --- | --- | --- | --- | --- | --- | --- | --- | --- | --- | --- | --- |
|  | 1844 | **RHD4-02-002-L016-(ST)-GRP Pipes - 400 mm diameter** |  | 2026-08-04 | 2027-02-08 |  |  |  |  |  |  |  |  |  |  |  |  |  |  |  |  |
| RHD4CZ5C061ST1100 |  | Excavation works for GRP Pipe Line 400 mm - (RD-C-6 /1)-Z5-C061-ST | 2d | 2026-08-04 A | 2027-01-30 | RHD4CZ5C061ST3101, RHD4CZ5C061ST1103, RHD4CZ5C061ST3300 | 87% | 2d | 2026-08-08 | 2026-08-09 | -182d | 0d | Skilled labor [8.39 h]; Unskilled Labor [8.39 h]; Equipment Opreator [10.02 h]; Excavator-Poclain [8.39 h]; Dump Truck [1.6 h]; GRP (400mm Diameter) - ST - Depth less than 1.5 m [17.54 m]; GRP (400mm Diameter) - ST - Depth: 1.51m - 2.5 m | 5,086.6 |  | C061 | Z5 | CONS | ST | Excavation | bef |
| RHD4CZ5C061ST1200 |  | Bedding works for GRP Pipe Line 400 mm - (RD-C-6 /1)-Z5-C061-ST | 2d | 2026-08-06 A | 2027-02-01 | RHD4CZ5C061ST1100 | 84% | 2d | 2026-08-10 | 2026-08-11 | -162d | 0d | Skilled labor [7.62 h]; Unskilled Labor [15.14 h]; Equipment Opreator [15.14 h]; Excavator-Poclain [7.62 h]; Dump Truck [7.62 h]; GRP (400mm Diameter) - ST - Depth less than 1.5 m [8.77 m]; GRP (400mm Diameter) - ST - Depth: 1.51m - 2.5 m | 2,543.3 |  | C061 | Z5 | CONS | ST | Bedding | bef |
| RHD4CZ5C061ST1300 |  | Installing for GRP Pipe Line 400 mm - (RD-C-6 /1)-Z5-C061-ST | 2d | 2026-08-08 A | 2027-02-03 | RHD4CZ5C061ST1200 | 83% | 2d | 2026-08-12 | 2026-08-13 | -162d | 0d | Unskilled Labor [23.09 h]; Plumber [11.54 h]; GRP (400mm Diameter) - ST - Depth less than 1.5 m [78.95 m]; GRP (400mm Diameter) - ST - Depth: 1.51m - 2.5 m | 22,895.5 |  | C061 | Z5 | CONS | ST | Installation | bef |
| RHD4CZ5C061ST1500 |  | Backfilling and warning tape works for GRP Pipe Line 400 mm - (RD-C-6 /1)-Z5-C061-ST | 2d | 2026-08-10 A | 2027-02-08 | RHD4CZ5C061ST1503, RHD4CZ5C061ST1400 | 84% | 2d | 2026-08-17 | 2026-08-18 | -162d | 0d | Skilled labor [9.6 h]; Unskilled Labor [19.06 h]; Equipment Opreator [19.06 h]; Excavator-Poclain [9.6 h]; Dump Truck [9.6 h]; GRP (400mm Diameter) - ST - Depth less than 1.5 m [35.09 m]; GRP (400mm Diameter) - ST - Depth: 1.51m - 2.5 m | 10,176.1 |  | C061 | Z5 | CONS | ST | Backfilling | bef |
| RHD4CZ5C061ST1400 |  | Primary Test for GRP Pipe Line 400 mm - (RD-C-6 /1)-Z5-C061-ST | 2d | 2027-02-04 | 2027-02-06 | RHD4CZ5C061ST1300 |  |  |  |  | -162d | 0d | Unskilled Labor [5.99 h]; Plumber [5.99 h]; Equipment Opreator [5.99 h]; Water Truck [5.99 h]; GRP (400mm Diameter) - ST - Depth less than 1.5 m [35.09 m]; GRP (400mm Diameter) - ST - Depth: 1.51m - 2.5 m | 10,176.1 |  | C061 | Z5 | CONS | ST | Primary Test | bef |
|  | 3739 | **RHD4-02-002-L016-(ST)-GRP Pipes - 700 mm diameter** |  | 2026-08-04 | 2027-01-30 |  |  |  |  |  |  |  |  |  |  |  |  |  |  |  |  |
| RHD4CZ5C061ST1103 |  | Excavation works for GRP Pipe Line 700 mm - (RD-C-6 /1)-Z5-C061-ST | 2d | 2026-08-04 A | 2026-10-13 A | RHD4CZ5C061ST3101, RHD4CZ5C061ST1104 | 100% |  | 2026-08-03 | 2026-08-04 |  |  | Skilled labor [12.09 h]; Unskilled Labor [12.09 h]; Equipment Opreator [14.59 h]; Excavator-Poclain [12.09 h]; Dump Truck [2.4 h]; GRP (700mm Diameter) - ST - Depth less than 1.5 m [22.25 m]; GRP (700mm Diameter) - ST - Depth: 1.51m - 2.5m | 12,326.5 | 12,326.5 | C061 | Z5 | CONS | ST | Excavation | bef |
| RHD4CZ5C061ST1203 |  | Bedding works for GRP Pipe Line 700 mm - (RD-C-6 /1)-Z5-C061-ST | 2d | 2026-08-06 A | 2026-10-15 A | RHD4CZ5C061ST1103 | 100% |  | 2026-08-05 | 2026-08-06 |  |  | Skilled labor [12.09 h]; Unskilled Labor [24.29 h]; Equipment Opreator [24.29 h]; Excavator-Poclain [12.09 h]; Dump Truck [12.09 h]; GRP (700mm Diameter) - ST - Depth less than 1.5 m [11.13 m]; GRP (700mm Diameter) - ST - Depth: 1.51m - 2.5m | 6,166.02 | 6,166.02 | C061 | Z5 | CONS | ST | Bedding | bef |
| RHD4CZ5C061ST1303 |  | Installing for GRP Pipe Line 700 mm - (RD-C-6 /1)-Z5-C061-ST | 2d | 2026-08-08 A | 2026-10-18 A | RHD4CZ5C061ST1203 | 100% |  | 2026-08-08 | 2026-08-09 |  |  | Unskilled Labor [12.09 h]; Plumber [6.1 h]; GRP (700mm Diameter) - ST - Depth less than 1.5 m [100.14 m]; GRP (700mm Diameter) - ST - Depth: 1.51m - 2.5m | 55,477.56 | 55,477.56 | C061 | Z5 | CONS | ST | Installation | bef |
| RHD4CZ5C061ST1503 |  | Backfilling and warning tape works for GRP Pipe Line 700 mm - (RD-C-6 /1)-Z5-C061-ST | 2d | 2026-08-10 A | 2026-11-01 A | RHD4CZ5C061ST1504, RHD4CZ5C061ST1403 | 100% |  | 2026-08-12 | 2026-08-13 |  |  | Skilled labor [12.09 h]; Unskilled Labor [24.29 h]; Equipment Opreator [24.29 h]; Excavator-Poclain [12.09 h]; Dump Truck [12.09 h]; GRP (700mm Diameter) - ST - Depth less than 1.5 m [44.51 m]; GRP (700mm Diameter) - ST - Depth: 1.51m - 2.5m | 24,658.54 | 24,658.54 | C061 | Z5 | CONS | ST | Backfilling | bef |
| RHD4CZ5C061ST1403 |  | Primary Test for GRP Pipe Line 700 mm - (RD-C-6 /1)-Z5-C061-ST | 2d | 2027-01-28 | 2027-01-30 | RHD4CZ5C061ST1303 |  |  |  |  | -156d | 6d | Unskilled Labor [6.1 h]; Plumber [6.1 h]; Equipment Opreator [6.1 h]; Water Truck [6.1 h]; GRP (700mm Diameter) - ST - Depth less than 1.5 m [44.51 m]; GRP (700mm Diameter) - ST - Depth: 1.51m - 2.5m | 24,658.54 |  | C061 | Z5 | CONS | ST | Primary Test | bef |
|  | 4496 | **RHD4-02-002-C061-(ST)-GRP Pipes - 800 mm diameter** |  | 2026-10-10 | 2027-02-06 |  |  |  |  |  |  |  |  |  |  |  |  |  |  |  |  |
| RHD4CZ5C061ST1104 |  | Excavation works for GRP Pipe Line 800 mm - (RD-C-6 /1)-Z5-C061-ST | 2d | 2026-10-10 A | 2027-01-27 | RHD4ENSDZ5APPST110, RHD4CZ5C061ST3101 | 63% | 2d | 2027-02-09 | 2027-02-10 | -182d | 0d | Skilled labor [2.94 h]; Unskilled Labor [2.94 h]; Equipment Opreator [3.59 h]; Excavator-Poclain [2.94 h]; Dump Truck [0.54 h]; GRP (800mm Diameter) - ST - Depth: 2.51m - 3.5m [6.14 m] | 5,665.37 |  | C061 | Z5 | CONS | ST | Excavation | bef |
| RHD4CZ5C061ST1204 |  | Bedding works for GRP Pipe Line 800 mm - (RD-C-6 /1)-Z5-C061-ST | 2d | 2026-10-12 A | 2027-01-30 | RHD4CZ5C061ST1104 | 63% | 2d | 2027-02-11 | 2027-02-13 | -178d | 0d | Skilled labor [2.94 h]; Unskilled Labor [5.99 h]; Equipment Opreator [5.99 h]; Excavator-Poclain [2.94 h]; Dump Truck [2.94 h]; GRP (800mm Diameter) - ST - Depth: 2.51m - 3.5m [2.05 m] | 1,888.46 |  | C061 | Z5 | CONS | ST | Bedding | bef |
| RHD4CZ5C061ST1304 |  | Installing for GRP Pipe Line 800 mm - (RD-C-6 /1)-Z5-C061-ST | 2d | 2026-10-20 A | 2027-02-01 | RHD4CZ5C061ST1204, RHD4PRSHLSTAGST1004, RHD4PRSHLDOSST1604, RHD4PRSHLPOST1000, RHD4PRSHLDOSST1004 | 63% | 2d | 2027-02-14 | 2027-02-15 | -178d | 0d | Unskilled Labor [3.59 h]; Plumber [1.74 h]; GRP (800mm Diameter) - ST - Depth: 2.51m - 3.5m [16.37 m] | 15,107.66 |  | C061 | Z5 | CONS | ST | Installation | bef |
| RHD4CZ5C061ST1504 |  | Backfilling and warning tape works for GRP Pipe Line 800 mm - (RD-C-6 /1)-Z5-C061-ST | 2d | 2026-10-21 A | 2027-02-06 | RHD4CZ5C061ST1404 | 63% | 2d | 2027-02-18 | 2027-02-20 | -178d | 0d | Skilled labor [2.94 h]; Unskilled Labor [5.99 h]; Equipment Opreator [5.99 h]; Excavator-Poclain [2.94 h]; Dump Truck [2.94 h]; GRP (800mm Diameter) - ST - Depth: 2.51m - 3.5m [8.18 m] | 7,553.83 |  | C061 | Z5 | CONS | ST | Backfilling | bef |
| RHD4CZ5C061ST1404 |  | Primary Test for GRP Pipe Line 800 mm - (RD-C-6 /1)-Z5-C061-ST | 2d | 2027-02-02 | 2027-02-03 | RHD4CZ5C061ST1304 |  |  |  |  | -178d | 0d | Unskilled Labor [1.52 h]; Plumber [1.52 h]; Equipment Opreator [1.52 h]; Water Truck [1.52 h]; GRP (800mm Diameter) - ST - Depth: 2.51m - 3.5m [8.18 m] | 7,553.83 |  | C061 | Z5 | CONS | ST | Primary Test | bef |
|  | 4506 | **RHD4-02-002-C061-(ST)-UPVC Pipes - 300 mm diameter** |  | 2027-01-30 | 2027-02-10 |  |  |  |  |  |  |  |  |  |  |  |  |  |  |  |  |
| RHD4CZ5C061ST2100 |  | Excavation works for UPVC Pipe Line 300 mm - (RD-C-6 /1)-Z5-C061-ST | 2d | 2027-01-30 | 2027-01-31 | RHD4CZ5C061ST3301, RHD4ENSDZ5APPST110 |  |  |  |  | -155d | 0d | Skilled labor [12.09 h]; Unskilled Labor [12.09 h]; Equipment Opreator [14.48 h]; Excavator-Poclain [12.09 h]; Dump Truck [2.4 h]; UPVC (300mm Diameter) - ST - Depth less than 1.5 [26.53 m]; UPVC (300mm Diameter) - ST - Depth: 1.51m - 2.5m | 8,038.59 |  | C061 | Z5 | CONS | ST | Excavation | bef |
| RHD4CZ5C061ST2200 |  | Bedding works for UPVC Pipe Line 300 mm - (RD-C-6 /1)-Z5-C061-ST | 2d | 2027-02-01 | 2027-02-02 | RHD4CZ5C061ST2100 |  |  |  |  | -155d | 0d | Skilled labor [10.45 h]; Unskilled Labor [20.91 h]; Equipment Opreator [20.91 h]; Excavator-Poclain [10.45 h]; Dump Truck [10.45 h]; UPVC (300mm Diameter) - ST - Depth less than 1.5 [13.26 m]; UPVC (300mm Diameter) - ST - Depth: 1.51m - 2.5m | 4,017.78 |  | C061 | Z5 | CONS | ST | Bedding | bef |
| RHD4CZ5C061ST2300 |  | Installing for UPVC Pipe Line 300 mm - (RD-C-6 /1)-Z5-C061-ST | 2d | 2027-02-03 | 2027-02-04 | RHD4CZ5C061ST2200, RHD4CZ5C061ST7300 SS, RHD4PRSHLDOSST1104, RHD4PRSHLSTAGST1104 |  |  |  |  | -155d | 0d | Unskilled Labor [24.07 h]; Plumber [12.09 h]; UPVC (300mm Diameter) - ST - Depth less than 1.5 [119.37 m]; UPVC (300mm Diameter) - ST - Depth: 1.51m - 2.5m | 36,169.11 |  | C061 | Z5 | CONS | ST | Installation | bef |
| RHD4CZ5C061ST2400 |  | Primary Test for UPVC Pipe Line 300 mm - (RD-C-6 /1)-Z5-C061-ST | 2d | 2027-02-06 | 2027-02-07 | RHD4CZ5C061ST2300, RHD4CZ5C061ST6100 |  |  |  |  | -155d | 1d | Unskilled Labor [7.2 h]; Plumber [7.2 h]; Equipment Opreator [7.2 h]; Water Truck [7.2 h]; UPVC (300mm Diameter) - ST - Depth less than 1.5 [53.06 m]; UPVC (300mm Diameter) - ST - Depth: 1.51m - 2.5m | 16,077.18 |  | C061 | Z5 | CONS | ST | Primary Test | bef |
| RHD4CZ5C061ST2500 |  | Backfilling and warning tape works for UPVC Pipe Line 300 mm - (RD-C-6 /1)-Z5-C061-ST | 2d | 2027-02-09 | 2027-02-10 | RHD4CZ5C061ST2400, RHD4CZ5C061ST6100, RHD4CZ5C061ST1500 |  |  |  |  | -156d | 6d | Skilled labor [14.48 h]; Unskilled Labor [28.86 h]; Equipment Opreator [28.86 h]; Excavator-Poclain [14.48 h]; Dump Truck [14.48 h]; UPVC (300mm Diameter) - ST - Depth less than 1.5 [53.06 m]; UPVC (300mm Diameter) - ST - Depth: 1.51m - 2.5m | 16,077.18 |  | C061 | Z5 | CONS | ST | Backfilling | bef |

| ID | WBS | Activity | Duration | Start | Finish | Predecessors | Complete | Remaining | Planned start | Planned finish | Total float | Free float | Calendar | Resources | Cost | Actual cost | RDH4-01-001-Road and Block Names-1 | RDH4-01-001-Zones-1 | RDH4-01-001-Phases-1 | RDH4-01-001-Networks-1 | RDH4-01-001-Work Method-1 | RDH4-01-001-MENEM |
| --- | --- | --- | --- | --- | --- | --- | --- | --- | --- | --- | --- | --- | --- | --- | --- | --- | --- | --- | --- | --- | --- | --- |
|  | 4514 | **RHD4-02-002-C061-(ST)-Concrete Encasement** |  | 2027-02-03 | 2027-02-04 |  |  |  |  |  |  |  |  |  |  |  |  |  |  |  |  |  |
| RHD4CZ5C061ST6100 |  | Pipe Encasement for Storm Pipelines - (RD-C-6 /1)-Z5-C061-ST | 2d | 2027-02-03 | 2027-02-04 | RHD4CZ5C061ST2300 SS, RHD4CZ5C061ST2300 FF, RHD4CZ5C061ST2200 |  |  |  |  | -155d | 0d |  | Skilled labor [3.59 h]; Unskilled Labor [3.59 h]; Equipment Opreator [3.92 h]; Concrete Mixer Truck [0.33 h]; Dump Truck [3.59 h]; Pipe Encasement - ST [65.72 m3] | 33,254.32 |  | C061 | Z5 | CONS | ST | Pipe Encasement | bef |
|  | 4515 | **RHD4-02-002-Z5-C061-Catch Basin - ST** |  | 2026-08-29 | 2027-02-10 |  |  |  |  |  |  |  |  |  |  |  |  |  |  |  |  |  |
|  | 4516 | **RHD4-02-002-C061-(ST)-Single Catch Basin Works** |  | 2026-08-29 | 2027-02-10 |  |  |  |  |  |  |  |  |  |  |  |  |  |  |  |  |  |
| RHD4CZ5C061ST7100 |  | Excavation works for Single Catch Basin - (RD-C-6 /1)-Z5-C061-ST | 2d | 2026-08-29 A | 2027-01-31 | RHD4CZ5C061ST3301, RHD4ENSDZ5APPST110 | 7% | 2d | 2026-08-08 | 2026-08-09 | -164d | 0d |  | Skilled labor [15.25 h]; Unskilled Labor [30.49 h]; Equipment Opreator [22.87 h]; Excavator-Poclain [15.25 h]; Dump Truck [7.62 h]; Single Catch basin - ST [3.5 nr] | 13,058.5 |  | C061 | Z5 | CONS | ST | Excavation | bef |
| RHD4CZ5C061ST7200 |  | PC Blinding, Installation and Pipe connection for Single Catch Basin - (RD-C-6 /1)-Z5-C061-ST | 2d | 2026-08-31 A | 2027-02-02 | RHD4CZ5C061ST7100 | 7% | 2d | 2026-08-10 | 2026-08-11 | -164d | 0d |  | Skilled labor [15.25 h]; Unskilled Labor [30.49 h]; Plumber [7.62 h]; Equipment Opreator [3.05 h]; Boom Truck [3.05 h]; Single Catch basin - ST [2.8 nr] | 10,446.8 |  | C061 | Z5 | CONS | ST | Installation & Pipe Connection | bef |
| RHD4CZ5C061ST7300 |  | Rings & C.Slab & Final Backfill for Single Catch Basin - (RD-C-6 /1)-Z5-C061-ST | 2d | 2027-02-03 | 2027-02-04 | RHD4CZ5C061ST7200, RHD4PRSHLDOSST1304, RHD4PRSHLSTAGST1304 |  |  |  |  | -164d | 0d |  | Skilled labor [19.06 h]; Unskilled Labor [38.12 h]; Equipment Opreator [22.87 h]; Boom Truck [3.81 h]; Bobcat [19.06 h]; Single Catch basin - ST [4.9 nr] | 18,281.9 |  | C061 | Z5 | CONS | ST | Rings | bef |
| RHD4CZ5C061ST7400 |  | Steel Cover for Single Catch Basin - (RD-C-6 /1)-Z5-C061-ST | 2d | 2027-02-06 | 2027-02-07 | RHD4CZ5C061ST7300, RHD4PRSHLDOSST1704 |  |  |  |  | -164d | 0d |  | Skilled labor [15.25 h]; Unskilled Labor [15.25 h]; Equipment Opreator [3.05 h]; Boom Truck [3.05 h]; Single Catch basin - ST [0.7 nr] | 2,611.7 |  | C061 | Z5 | CONS | ST | Steel Cover | bef |
| RHD4CZ5C061ST7500 |  | Finishing and Insulation works for Single Catch Basin - (RD-C-6 /1)-Z5-C061-ST | 3d | 2027-02-08 | 2027-02-10 | RHD4CZ5C061ST7400 |  |  |  |  | -164d | 9d |  | Skilled labor [30.49 h]; Unskilled Labor [60.99 h]; Equipment Opreator [6.1 h]; Boom Truck [6.1 h]; Single Catch basin - ST [2.1 nr] | 7,835.1 |  | C061 | Z5 | CONS | ST | Insulation | bef |
|  | 4299 | **RHD4-02-002-Z5-C061-Concrete Box Culvert - ST** |  | 2026-06-11 | 2027-02-02 |  |  |  |  |  |  |  |  |  |  |  |  |  |  |  |  |  |
|  | 4300 | **RHD4-02-002-L061-(ST)-Concrete Box Culvert** |  | 2026-06-11 | 2027-02-02 |  |  |  |  |  |  |  |  |  |  |  |  |  |  |  |  |  |
| RHD4CZ5C061ST4100 |  | Excavation works for Box Culvert - (RD-C-6/1)-Z5-C061-ST(Completed) | 9d | 2026-06-11 A | 2026-06-13 A | RHD4PRSHLDOSST1003 | 100% |  | 2026-07-12 | 2026-07-21 |  |  |  | Skilled labor [136.89 h]; Unskilled Labor [136.89 h]; Equipment Opreator [410.57 h]; Excavator-Poclain [136.89 h]; Water Truck [136.89 h]; Dump Truck [136.89 h]; Excavation for culverts (all types of soil) including backfilling - ST [2052.04 m3] | 36,936.72 | 36,936.72 | C061 | Z5 | CONS | ST | Excavation | bef |
| RHD4CZ5C061ST4200 |  | PC works for Box Culvert - (RD-C-6/1)-Z5-C061-ST(Completed) | 5d | 2026-06-15 A | 2026-06-18 A | RHD4CZ5C061ST4100 | 100% |  | 2026-07-22 | 2026-07-27 |  |  |  | Skilled labor [2.18 h]; Unskilled Labor [2.18 h]; Equipment Opreator [2.18 h]; Concrete Mixer Truck [1.09 h]; Concrete Pump [1.09 h]; 100 mm thickness lean concrete under the base - ST [816.9 m2] | 31,859.1 | 31,859.1 | C061 | Z5 | CONS | ST | PC | bef |
| RHD4CZ5C061ST4400 |  | Raft works for Box Culvert - (RD-C-6/1)-Z5-C061-ST(Completed) | 7d | 2026-07-11 A | 2026-07-16 A | RHD4CZ5C061ST4200 | 100% |  | 2026-07-28 | 2026-08-04 |  |  |  | Carpenter [14.16 h]; Skilled labor [17.21 h]; Steel Fixer [3.05 h]; Equipment Opreator [28.97 h]; Boom Truck [0.65 h]; Concrete Mixer Truck [14.16 h]; Concrete Pump [14.16 h]; Supply and cast in place reinforced concrete for Box culverts - ST [280.58 m3]; Supply, placing, and fixing of high tensile reinforcement steel for Box culverts - ST [59.64 Ton] | 491,748.96 | 491,748.96 | C061 | Z5 | CONS | ST | Raft Works | bef |
| RHD4CZ5C061ST4500 |  | Wall and slab works for Box Culvert - (RD-C-6/1)-Z5-C061-ST | 5d | 2026-08-04 A | 2026-09-20 A | RHD4CZ5C061ST4400, RHD4CZ5C061ST4200, RHD4CZ5C061ST4100 | 100% |  | 2026-08-05 | 2026-08-10 |  |  |  | Carpenter [38.23 h]; Skilled labor [46.28 h]; Steel Fixer [8.17 h]; Equipment Opreator [77.97 h]; Boom Truck [1.6 h]; Concrete Mixer Truck [38.23 h]; Concrete Pump [38.23 h]; Supply and cast in place reinforced concrete for Box culverts - ST [350.73 m3]; Supply, placing, and fixing of high tensile reinforcement steel for Box culverts - ST [89.46 Ton] | 668,605.68 | 668,605.68 | C061 | Z5 | CONS | ST | Wall and slab Works | bef |
| RHD4CZ5C061ST4600 |  | Insulation and Testing for Box Culvert - (RD-C-6/1)-Z5-C061-ST | 4d | 2026-09-19 A | 2027-02-02 | RHD4CZ5C061ST4700, RHD4CZ5C061ST5400, RHD4CZ5C061ST3500 | 80% | 1d | 2026-08-31 | 2026-09-03 | -148d | 15d |  | Skilled labor [38.23 h]; Unskilled Labor [76.34 h]; Equipment Opreator [38.23 h]; Water Truck [38.23 h]; Supply and cast in place reinforced concrete for Box culverts - ST [70.15 m3] | 69,027.6 | 51,770.7 | C061 | Z5 | CONS | ST | Insulation and Testing | bef |
| RHD4CZ5C061ST4700 |  | Backfilling works for Box Culvert - (RD-C-6/1)-Z5-C061-ST | 15d | 2026-10-01 A | 2026-10-18 A | RHD4CZ5C061ST4500, RHD4CZ5C061ST5300 | 100% |  |  |  |  |  |  | Skilled labor [159.65 h]; Unskilled Labor [319.2 h]; Equipment Opreator [255.38 h]; Boom Truck [79.83 h]; Water Truck [16 h]; Dump Truck [159.65 h]; Excavation for culverts (all types of soil) including backfilling - ST [879.44 m3] | 15,829.92 | 15,829.92 | C061 | Z5 | CONS | ST | Backfilling | bef |
|  | 4301 | **RHD4-02-002-L061-(ST)-Concrete Chambers** |  | 2026-08-20 | 2027-01-10 |  |  |  |  |  |  |  |  |  |  |  |  |  |  |  |  |  |
| RHD4CZ5C061ST5100 |  | Excavation and Bedding for Concrete Chambers - for Box Culvert - (RD-C-6/1)-Z5-C061-ST | 2d | 2026-08-20 A | 2027-01-03 | RHD4CZ5C061ST4500 | 50% | 2d | 2026-08-11 | 2026-08-12 | -129d | 0d |  | Skilled labor [10.89 h]; Unskilled Labor [10.89 h]; Equipment Opreator [2.18 h]; Excavator-Poclain [1.09 h]; Dump Truck [1.09 h]; Concrete chambers - ST - Size 1.8 x 2.0 m, depth 4.51-5.5 m [0.15 nr] | 5,806.2 | 2,903.1 | C061 | Z5 | CONS | ST | Excavation & Bedding | bef |
| RHD4CZ5C061ST5200 |  | PC works for Concrete Chambers - for Box Culvert - (RD-C-6/1)-Z5-C061-ST | 2d | 2026-08-25 A | 2027-01-05 | RHD4CZ5C061ST5100 | 50% | 2d | 2026-08-13 | 2026-08-15 | -129d | 0d |  | Skilled labor [10.89 h]; Unskilled Labor [10.89 h]; Equipment Opreator [2.18 h]; Excavator-Poclain [1.09 h]; Dump Truck [1.09 h]; Concrete chambers - ST - Size 1.8 x 2.0 m, depth 4.51-5.5 m [0.1 nr] | 3,870.8 | 1,935.4 | C061 | Z5 | CONS | ST | PC Works | bef |
| RHD4CZ5C061ST5300 |  | Installation for Concrete Chambers - for Box Culvert - (RD-C-6/1)-Z5-C061-ST | 2d | 2026-08-30 A | 2027-01-07 | RHD4CZ5C061ST5200 | 50% | 2d | 2026-08-16 | 2026-08-17 | -129d | 0d |  | Skilled labor [10.89 h]; Unskilled Labor [10.89 h]; Equipment Opreator [2.18 h]; Excavator-Poclain [1.09 h]; Dump Truck [1.09 h]; Concrete chambers - ST - Size 1.8 x 2.0 m, depth 4.51-5.5 m [0.55 nr] | 21,289.4 | 10,644.7 | C061 | Z5 | CONS | ST | Installation | bef |
| RHD4CZ5C061ST5400 |  | Backfilling works for Concrete Chambers - for Box Culvert - (RD-C-6/1)-Z5-C061-ST | 2d | 2027-01-09 | 2027-01-10 | RHD4CZ5C061ST5300 |  |  |  |  | -129d | 19d |  | Skilled labor [10.89 h]; Unskilled Labor [10.89 h]; Equipment Opreator [2.18 h]; Excavator-Poclain [1.09 h]; Dump Truck [1.09 h]; Concrete chambers - ST - Size 1.8 x 2.0 m, depth 4.51-5.5 m [0.2 nr] | 7,741.6 |  | C061 | Z5 | CONS | ST | Backfilling Works | bef |
|  | 4540 | **RHD4-02-002-Z5-C061-Sewage Network - SW** |  | 2026-08-09 | 2027-03-14 |  |  |  |  |  |  |  |  |  |  |  |  |  |  |  |  |  |
|  | 1 | **Missing ID** |  | 2027-02-14 | 2027-02-25 |  |  |  |  |  |  |  |  |  |  |  |  |  |  |  |  |  |
| RHD4CZ5C061SW4100 |  | Excavation and Bedding for Wash out Chamber for HDPE force Main - (RD-C-6 /1)-Z5-C061-SW | 2d | 2027-02-14 | 2027-02-15 | RHD4CZ5C061ST3101 SS, RHD4CZ5C061SW2600 |  |  |  |  | -192d | 0d | RHD4 - (7 Days - 8 Hours)-48 | Skilled labor [5.45 h]; Unskilled Labor [5.45 h]; Equipment Opreator [1.09 h]; Excavator-Poclain [0.54 h]; Dump Truck [0.54 h]; Wash out chamber - SW [0.25 nr] | 4,686.25 |  | C061 | Z5 | CONS | SW |  | bef |
| RHD4CZ5C061SW4200 |  | PC works for Wash out Chamber for HDPE force Main - (RD-C-6 /1)-Z5-C061-SW | 2d | 2027-02-16 | 2027-02-17 | RHD4CZ5C061SW4100 |  |  |  |  | -192d | 0d | RHD4 - (7 Days - 8 Hours)-48 | Skilled labor [5.45 h]; Unskilled Labor [10.89 h]; Equipment Opreator [0.54 h]; Concrete Pump [0.54 h]; Wash out chamber - SW [0.1 nr] | 1,874.5 |  | C061 | Z5 | CONS | SW |  | bef |
| RHD4CZ5C061SW4300 |  | Installation for Wash out Chamber for HDPE force Main - (RD-C-6 /1)-Z5-C061-SW | 2d | 2027-02-18 | 2027-02-19 | RHD4CZ5C061SW4200 |  |  |  |  | -192d | 0d | RHD4 - (7 Days - 8 Hours)-48 | Skilled labor [5.45 h]; Unskilled Labor [10.89 h]; Equipment Opreator [1.09 h]; Boom Truck [1.09 h]; Wash out chamber - SW [0.55 nr] | 10,309.75 |  | C061 | Z5 | CONS | SW |  | bef |
| RHD4CZ5C061SW4400 |  | Backfilling works for Wash out Chamber for HDPE force Main - (RD-C-6 /1)-Z5-C061-SW | 2d | 2027-02-20 | 2027-02-21 | RHD4CZ5C061SW4300 |  |  |  |  | -192d | 0d | RHD4 - (7 Days - 8 Hours)-48 | Skilled labor [5.45 h]; Unskilled Labor [10.89 h]; Equipment Opreator [1.09 h]; Water Truck [0.54 h]; Dump Truck [0.54 h]; Wash out chamber - SW [0.1 nr] | 1,874.5 |  | C061 | Z5 | CONS | SW |  | bef |
| RHD4CZ5C061SW5100 |  | Installation for Wash out Valves for HDPE force Main - (RD-C-6 /1)-Z5-C061-SW | 2d | 2027-02-22 | 2027-02-23 | RHD4CZ5C061SW4400 |  |  |  |  | -192d | 0d | RHD4 - (7 Days - 8 Hours)-48 | Unskilled Labor [5.45 h]; Plumber [5.45 h]; Wash out valve with dia (100mm) - SW [0.9 nr] | 3,373.2 |  | C061 | Z5 | CONS | SW |  | bef |
| RHD4CZ5C061SW5200 |  | Stem and Service box for Wash out Valves for HDPE force Main - (RD-C-6 /1)-Z5-C061-SW | 2d | 2027-02-24 | 2027-02-25 | RHD4CZ5C061SW5100, RHD4CZ5C061SW3000 |  |  |  |  | -192d | 19d | RHD4 - (7 Days - 8 Hours)-48 | Unskilled Labor [5.45 h]; Plumber [5.45 h]; Wash out valve with dia (100mm) - SW [0.1 nr] | 374.8 |  | C061 | Z5 | CONS | SW |  | bef |

| ID | WBS | Activity | Duration | Start | Finish | Predecessors | Complete | Remaining | Planned start | Planned finish | Total float | Free float | Resources | Cost | Actual cost | RDH4-01-001-Road and Block Names-1 | RDH4-01-001-Zones-1 | RDH4-01-001-Phases-1 | RDH4-01-001-Networks-1 | RDH4-01-001-Work Method-1 | RDH4-01-001-MENEM |
| --- | --- | --- | --- | --- | --- | --- | --- | --- | --- | --- | --- | --- | --- | --- | --- | --- | --- | --- | --- | --- | --- |
|  | 4358 | **RHD4-02-002-C061-(SW)-HDPE Pipes - 250 mm diameter** |  | 2027-02-11 | 2027-02-23 |  |  |  |  |  |  |  |  |  |  |  |  |  |  |  |  |
| RHD4CZ5C061SW2600 |  | Excavation works for HDPE Force Main Pipeline 250 mm - (RD-C-6 /1)-Z5-C061-SW | 2d | 2027-02-11 | 2027-02-13 | RHD4CZ5C061SW3100 |  |  |  |  | -163d | 0d | Skilled labor [8.71 h]; Unskilled Labor [8.71 h]; Equipment Opreator [10.45 h]; Excavator-Poclain [8.71 h]; Dump Truck [1.74 h]; HDPE (250mm Diameter) - SW - in trenches depth:0- 1.5m [20 m] | 3,980 |  | C061 | Z5 | CONS | SW | Excavation | bef |
| RHD4CZ5C061SW2700 |  | Bedding works for HDPE Force Main Pipeline 250 mm - (RD-C-6 /1)-Z5-C061-SW | 2d | 2027-02-14 | 2027-02-15 | RHD4CZ5C061SW2600 |  |  |  |  | -163d | 0d | Skilled labor [7.3 h]; Unskilled Labor [14.48 h]; Equipment Opreator [14.48 h]; Excavator-Poclain [7.3 h]; Dump Truck [7.3 h]; HDPE (250mm Diameter) - SW - in trenches depth:0- 1.5m [10 m] | 1,990 |  | C061 | Z5 | CONS | SW | Bedding | bef |
| RHD4CZ5C061SW2800 |  | Installing for HDPE Force Main Pipeline 250 mm - (RD-C-6 /1)-Z5-C061-SW | 2d | 2027-02-16 | 2027-02-17 | RHD4CZ5C061SW2700 |  |  |  |  | -163d | 0d | Unskilled Labor [29.08 h]; Plumber [14.48 h]; Equipment Opreator [14.48 h]; Boom Truck [14.48 h]; HDPE (250mm Diameter) - SW - in trenches depth:0- 1.5m [90 m] | 17,910 |  | C061 | Z5 | CONS | SW | Installation | bef |
| RHD4CZ5C061SW2900 |  | Primary Test for HDPE Force Main Pipeline 250 mm - (RD-C-6 /1)-Z5-C061-SW | 2d | 2027-02-18 | 2027-02-20 | RHD4CZ5C061SW2800 |  |  |  |  | -163d | 0d | Unskilled Labor [4.36 h]; Plumber [4.36 h]; Equipment Opreator [4.36 h]; Water Truck [4.36 h]; HDPE (250mm Diameter) - SW - in trenches depth:0- 1.5m [40 m] | 7,960 |  | C061 | Z5 | CONS | SW | Primary Test | bef |
| RHD4CZ5C061SW3000 |  | Backfilling and warning tape works for HDPE Force Main Pipeline 250 mm - (RD-C-6 /1)-Z5-C061-SW | 2d | 2027-02-21 | 2027-02-23 | RHD4CZ5C061ST4600, RHD4CZ5C061SW2900 |  |  |  |  | -163d | 0d | Skilled labor [10.89 h]; Unskilled Labor [21.78 h]; Equipment Opreator [21.78 h]; Excavator-Poclain [10.89 h]; Dump Truck [10.89 h]; HDPE (250mm Diameter) - SW - in trenches depth:0- 1.5m [40 m] | 7,960 |  | C061 | Z5 | CONS | SW | Backfilling | bef |
|  | 4550 | **RHD4-02-002-C061-(SW)-MH Works - 1200 mm diameter** |  | 2026-08-15 | 2027-03-08 |  |  |  |  |  |  |  |  |  |  |  |  |  |  |  |  |
| RHD4CZ5C061SW3100 |  | Excavation and PC Blinding works for MH 1200 mm - (RD-C-6 /1)-Z5-C061-SW | 4d | 2026-08-15 A | 2027-02-10 | RHD4ENSDZ5APPSW120, RHD4CZ5C061ST1504 | 70% | 4d | 2026-08-12 | 2026-08-16 | -178d | 0d | Skilled labor [43.56 h]; Unskilled Labor [43.56 h]; Equipment Opreator [69.7 h]; Excavator-Poclain [43.56 h]; Water Truck [4.36 h]; Dump Truck [21.78 h]; MH (1200mm Diameter) - SW - depth 1.51 - 2.5m [0.75 nr]; MH (1200mm Diameter) - SW - depth 2.51 - 3.5m [0.75 nr]; MH (1200mm Diameter) - SW - depth 3.51 -4.5m [0.5 nr] | 22,573.5 | 15,801.45 | C061 | Z5 | CONS | SW | Excavation | bef |
| RHD4CZ5C061SW3200 |  | Installation of Base for MH 1200 mm - (RD-C-6 /1)-Z5-C061-SW | 7d | 2026-08-17 A | 2027-02-15 | RHD4CZ5C061SW3100 | 50% | 4d | 2026-08-17 | 2026-08-24 | -178d | 0d | Skilled labor [70.79 h]; Unskilled Labor [70.79 h]; Equipment Opreator [28.31 h]; Boom Truck [14.16 h]; Concrete Mixer Truck [14.16 h]; MH (1200mm Diameter) - SW - depth 1.51 - 2.5m [0.75 nr]; MH (1200mm Diameter) - SW - depth 2.51 - 3.5m [0.75 nr]; MH (1200mm Diameter) - SW - depth 3.51 -4.5m [0.5 nr] | 22,573.5 | 11,286.75 | C061 | Z5 | CONS | SW | Installing Base | bef |
| RHD4CZ5C061SW3300 |  | MH Ring and C.Slab works and Backfilling works for MH 1200 mm - (RD-C-6 /1)-Z5-C061-SW | 7d | 2027-02-16 | 2027-02-24 | RHD4CZ5C061SW3200 |  |  |  |  | -178d | 0d | Skilled labor [70.79 h]; Unskilled Labor [70.79 h]; Equipment Opreator [49.55 h]; Boom Truck [28.31 h]; Concrete Mixer Truck [21.24 h]; MH (1200mm Diameter) - SW - depth 1.51 - 2.5m [1.05 nr]; MH (1200mm Diameter) - SW - depth 2.51 - 3.5m [1.05 nr]; MH (1200mm Diameter) - SW - depth 3.51 -4.5m [0.7 nr] | 31,602.9 |  | C061 | Z5 | CONS | SW | Installing Rings | bef |
| RHD4CZ5C061SW3400 |  | Steel Cover for MH 1200 mm - (RD-C-6 /1)-Z5-C061-SW | 3d | 2027-02-25 | 2027-02-28 | RHD4CZ5C061SW3300, RHD4PRSHLDOSSW1404, RHD4PRSHLSTAGSW1404 |  |  |  |  | -170d | 0d | Skilled labor [29.08 h]; Unskilled Labor [58.05 h]; Equipment Opreator [5.77 h]; Boom Truck [5.77 h]; MH (1200mm Diameter) - SW - depth 1.51 - 2.5m [0.15 nr]; MH (1200mm Diameter) - SW - depth 2.51 - 3.5m [0.15 nr]; MH (1200mm Diameter) - SW - depth 3.51 -4.5m [0.1 nr] | 4,514.7 |  | C061 | Z5 | CONS | SW | Steel Cover | bef |
| RHD4CZ5C061SW3500 |  | Finishing, Benching, Testing works for MH 1200 mm - (RD-C-6 /1)-Z5-C061-SW | 7d | 2027-03-01 | 2027-03-08 | RHD4CZ5C061SW3400 |  |  |  |  | -170d | 0d | Skilled labor [70.79 h]; Unskilled Labor [141.6 h]; Plumber [70.79 h]; Equipment Opreator [14.16 h]; Water Truck [14.16 h]; MH (1200mm Diameter) - SW - depth 1.51 - 2.5m [0.3 nr]; MH (1200mm Diameter) - SW - depth 2.51 - 3.5m [0.3 nr]; MH (1200mm Diameter) - SW - depth 3.51 -4.5m [0.2 nr] | 9,029.4 |  | C061 | Z5 | CONS | SW | Benching | bef |
|  | 4551 | **RHD4-02-002-C061-(SW)-MH Works - 1200 mm diameter with Back drop** |  | 2026-08-09 | 2027-03-14 |  |  |  |  |  |  |  |  |  |  |  |  |  |  |  |  |
| RHD4CZ5C061SW3101 |  | Excavation and PC Blinding works for MH 1200 mm - (RD-C-6 /1)-Z5-C061-SW | 2d | 2026-08-09 A | 2026-08-10 A | RHD4CZ5C061SW3100, RHD4ENSDZ5APPSW120 | 100% |  | 2026-08-17 | 2026-08-18 |  |  | Skilled labor [5.45 h]; Unskilled Labor [5.45 h]; Equipment Opreator [8.71 h]; Excavator-Poclain [5.45 h]; Water Truck [0.54 h]; Dump Truck [2.72 h]; MH (1200mm Diameter) - SW - depth 3.51 -4.5 m with back drop [0.25 nr] | 4,409.75 | 4,409.75 | C061 | Z5 | CONS | SW | Excavation | bef |
| RHD4CZ5C061SW3201 |  | Installation of Base for MH 1200 mm - (RD-C-6 /1)-Z5-C061-SW | 2d | 2026-08-12 A | 2026-08-13 A | RHD4CZ5C061SW3101 | 100% |  | 2026-08-19 | 2026-08-20 |  |  | Skilled labor [10.89 h]; Unskilled Labor [10.89 h]; Equipment Opreator [4.36 h]; Boom Truck [2.18 h]; Concrete Mixer Truck [2.18 h]; MH (1200mm Diameter) - SW - depth 3.51 -4.5 m with back drop [0.25 nr] | 4,409.75 | 4,409.75 | C061 | Z5 | CONS | SW | Installing Base | bef |
| RHD4CZ5C061SW3301 |  | MH Ring and C.Slab works and Backfilling works for MH 1200 mm - (RD-C-6 /1)-Z5-C061-SW | 2d | 2027-02-11 | 2027-02-13 | RHD4CZ5C061SW3201 |  |  |  |  | -169d | 9d | Skilled labor [10.89 h]; Unskilled Labor [10.89 h]; Equipment Opreator [7.62 h]; Boom Truck [4.36 h]; Concrete Mixer Truck [3.27 h]; MH (1200mm Diameter) - SW - depth 3.51 -4.5 m with back drop [0.35 nr] | 6,173.65 |  | C061 | Z5 | CONS | SW | Installing Rings | bef |
| RHD4CZ5C061SW3401 |  | Steel Cover for MH 1200 mm - (RD-C-6 /1)-Z5-C061-SW | 2d | 2027-03-01 | 2027-03-02 | RHD4CZ5C061SW3301, RHD4PRSHLDOSSW1404, RHD4PRSHLSTAGSW1404, RHD4CZ5C061SW3400 |  |  |  |  | -165d | 5d | Skilled labor [3.59 h]; Unskilled Labor [7.3 h]; Equipment Opreator [0.8 h]; Boom Truck [0.8 h]; MH (1200mm Diameter) - SW - depth 3.51 -4.5 m with back drop [0.05 nr] | 881.95 |  | C061 | Z5 | CONS | SW | Steel Cover | bef |
| RHD4CZ5C061SW3501 |  | Finishing, Benching, Testing works for MH 1200 mm - (RD-C-6 /1)-Z5-C061-SW | 2d | 2027-03-13 | 2027-03-14 | RHD4CZ5C061SW3401, RHD4CZ5C061SW3500 |  |  |  |  | -170d | 6d | Skilled labor [10.89 h]; Unskilled Labor [21.78 h]; Plumber [10.89 h]; Equipment Opreator [2.18 h]; Water Truck [2.18 h]; MH (1200mm Diameter) - SW - depth 3.51 -4.5 m with back drop [0.1 nr] | 1,763.9 |  | C061 | Z5 | CONS | SW | Benching | bef |
|  | 4542 | **RHD4-02-002-C061-(SW)-GRP Pipes - 400 mm diameter** |  | 2026-09-15 | 2027-03-08 |  |  |  |  |  |  |  |  |  |  |  |  |  |  |  |  |
| RHD4CZ5C061SW1101 |  | Excavation works for GRP Pipe Line 400 mm - (RD-C-6 /1)-Z5-C061-SW | 2d | 2026-09-15 A | 2027-02-27 | RHD4ENSDZ5APPSW120, RHD4CZ5C061SW3300, RHD4CZ5C061SW3301 |  | 2d | 2026-09-02 | 2026-09-03 | -178d | 0d | Skilled labor [9.15 h]; Unskilled Labor [9.15 h]; Equipment Opreator [11 h]; Excavator-Poclain [9.15 h]; Dump Truck [1.85 h]; GRP (400mm Diameter) - SW - Depth: less than 2.5m [20.07 m]; GRP (400mm Diameter) - SW - Depth: 2.51m - 3.5m | 9,031.5 |  | C061 | Z5 | CONS | SW | Excavation | bef |
| RHD4CZ5C061SW1201 |  | Bedding works for GRP Pipe Line 400 mm - (RD-C-6 /1)-Z5-C061-SW | 2d | 2027-02-28 | 2027-03-01 | RHD4CZ5C061SW1101 |  |  |  |  | -178d | 0d | Skilled labor [8.06 h]; Unskilled Labor [16 h]; Equipment Opreator [16 h]; Excavator-Poclain [8.06 h]; Dump Truck [8.06 h]; GRP (400mm Diameter) - SW - Depth: less than 2.5m [10.04 m]; GRP (400mm Diameter) - SW - Depth: 2.51m - 3.5m | 4,518 |  | C061 | Z5 | CONS | SW | Bedding | bef |
| RHD4CZ5C061SW1301 |  | Installing for GRP Pipe Line 400 mm - (RD-C-6 /1)-Z5-C061-SW | 2d | 2027-03-02 | 2027-03-03 | RHD4CZ5C061SW1201, RHD4CZ5C061SW3300, RHD4CZ5C061SW3301, RHD4PRSHLSTAGSW1104, RHD4PRSHLDOSSW1304, RHD4PRSHLPOSW1100, RHD4PRSHLDOSSW1104 |  |  |  |  | -178d | 0d | Unskilled Labor [27.66 h]; Plumber [13.83 h]; Equipment Opreator [13.83 h]; Boom Truck [13.83 h]; GRP (400mm Diameter) - SW - Depth: less than 2.5m [90.33 m]; GRP (400mm Diameter) - SW - Depth: 2.51m - 3.5m | 40,648.5 |  | C061 | Z5 | CONS | SW | Installation | bef |
| RHD4CZ5C061SW1401 |  | Primary Test for GRP Pipe Line 400 mm - (RD-C-6 /1)-Z5-C061-SW | 2d | 2027-03-04 | 2027-03-06 | RHD4CZ5C061SW1301 |  |  |  |  | -178d | 0d | Unskilled Labor [5.66 h]; Plumber [5.66 h]; Equipment Opreator [5.66 h]; Water Truck [5.66 h]; GRP (400mm Diameter) - SW - Depth: less than 2.5m [40.15 m]; GRP (400mm Diameter) - SW - Depth: 2.51m - 3.5m | 18,067.5 |  | C061 | Z5 | CONS | SW | Primary Test | bef |
| RHD4CZ5C061SW1501 |  | Backfilling and warning tape works for GRP Pipe Line 400 mm - (RD-C-6 /1)-Z5-C061-SW | 2d | 2027-03-07 | 2027-03-08 | RHD4CZ5C061SW1401 |  |  |  |  | -176d | 0d | Skilled labor [10.89 h]; Unskilled Labor [21.89 h]; Equipment Opreator [21.89 h]; Excavator-Poclain [10.89 h]; Dump Truck [10.89 h]; GRP (400mm Diameter) - SW - Depth: less than 2.5m [40.15 m]; GRP (400mm Diameter) - SW - Depth: 2.51m - 3.5m | 18,067.5 |  | C061 | Z5 | CONS | SW | Backfilling | bef |

| ID | WBS | Activity | Duration | Start | Finish | Predecessors | Complete | Planned start | Planned finish | Total float | Free float | Resources | Cost | Actual cost | RDH4-01-001-Road and Block Names-1 | RDH4-01-001-Zones-1 | RDH4-01-001-Phases-1 | RDH4-01-001-Networks-1 | RDH4-01-001-Work Method-1 | RDH4-01-001-MENEM |
| --- | --- | --- | --- | --- | --- | --- | --- | --- | --- | --- | --- | --- | --- | --- | --- | --- | --- | --- | --- | --- |
|  | 4541 | **RHD4-02-002-C061-(SW)-GRP Pipes - 300 mm diameter** |  | 2026-09-05 | 2027-03-08 |  |  |  |  |  |  |  |  |  |  |  |  |  |  |  |
| RHD4CZ5C061SW1100 |  | Excavation works for GRP Pipe Line 300 mm - (RD-C-6 /1)-Z5-C061-SW | 2d | 2026-09-05 A | 2026-09-16 A | RHD4CZ5C061SW1101, RHD4ENSDZ5APPSW120 | 100% | 2026-09-05 | 2026-09-06 |  |  | Skilled labor [3.7 h]; Unskilled Labor [3.7 h]; Equipment Opreator [4.36 h]; Excavator-Poclain [3.7 h]; Dump Truck [0.8 h]; GRP (300mm Diameter) - SW - Depth: 2.51m - 3.5m [7.59 m] | 3,096.72 | 3,096.72 | C061 | Z5 | CONS | SW | Excavation | bef |
| RHD4CZ5C061SW1200 |  | Bedding works for GRP Pipe Line 300 mm - (RD-C-6 /1)-Z5-C061-SW | 2d | 2026-09-07 A | 2026-09-17 A | RHD4CZ5C061SW1100 | 100% | 2026-09-07 | 2026-09-08 |  |  | Skilled labor [3.7 h]; Unskilled Labor [7.3 h]; Equipment Opreator [7.3 h]; Excavator-Poclain [3.7 h]; Dump Truck [3.7 h]; GRP (300mm Diameter) - SW - Depth: 2.51m - 3.5m [2.53 m] | 1,032.24 | 1,032.24 | C061 | Z5 | CONS | SW | Bedding | bef |
| RHD4CZ5C061SW1300 |  | Installing for GRP Pipe Line 300 mm - (RD-C-6 /1)-Z5-C061-SW | 2d | 2026-09-09 A | 2026-09-19 A | RHD4CZ5C061SW1200, RHD4CZ5C061SW1301, RHD4CZ5C061SW3300, RHD4CZ5C061SW3301, RHD4PRSHLSTAGSW1104, RHD4PRSHLDOSSW1304, RHD4PRSHLPOSW1100, RHD4PRSHLDOSSW1104 | 100% | 2026-09-09 | 2026-09-10 |  |  | Unskilled Labor [7.3 h]; Plumber [3.7 h]; Equipment Opreator [3.7 h]; Boom Truck [3.7 h]; GRP (300mm Diameter) - SW - Depth: 2.51m - 3.5m [20.24 m] | 8,257.92 | 8,257.92 | C061 | Z5 | CONS | SW | Installation | bef |
| RHD4CZ5C061SW1500 |  | Backfilling and warning tape works for GRP Pipe Line 300 mm - (RD-C-6 /1)-Z5-C061-SW | 2d | 2026-09-14 A | 2026-09-20 A | RHD4CZ5C061SW1400, RHD4CZ5C061SW1501 | 100% | 2026-09-14 | 2026-09-15 |  |  | Skilled labor [3.7 h]; Unskilled Labor [7.3 h]; Equipment Opreator [7.3 h]; Excavator-Poclain [3.7 h]; Dump Truck [3.7 h]; GRP (300mm Diameter) - SW - Depth: 2.51m - 3.5m [10.12 m] | 4,128.96 | 4,128.96 | C061 | Z5 | CONS | SW | Backfilling | bef |
| RHD4CZ5C061SW1400 |  | Primary Test for GRP Pipe Line 300 mm - (RD-C-6 /1)-Z5-C061-SW | 2d | 2027-03-07 | 2027-03-08 | RHD4CZ5C061SW1300, RHD4CZ5C061SW1401 |  |  |  | -178d | 0d | Unskilled Labor [3.7 h]; Plumber [3.7 h]; Equipment Opreator [3.7 h]; Water Truck [3.7 h]; GRP (300mm Diameter) - SW - Depth: 2.51m - 3.5m [10.12 m] | 4,128.96 |  | C061 | Z5 | CONS | SW | Primary Test | bef |
|  | 4546 | **RHD4-02-002-C061-(SW)-UPVC Pipes - 200 mm diameter** |  | 2026-08-09 | 2027-03-14 |  |  |  |  |  |  |  |  |  |  |  |  |  |  |  |
| RHD4CZ5C061SW2100 |  | Excavation works for UPVC Pipe Line 200 mm - (RD-C-6 /1)-Z5-C061-SW | 2d | 2026-08-09 A | 2026-09-10 A | RHD4CZ5C061SW3300, RHD4CZ5C061SW3301, RHD4ENSDZ5APPSW120, RHD4PRSHLSTAGIRR1000, RHD4ENMSEW2000, RHD4ENMSEW2010, RHD4ENSDZ5APPEW100 SS | 100% | 2026-09-02 | 2026-09-03 |  |  | Skilled labor [9.6 h]; Unskilled Labor [9.6 h]; Equipment Opreator [11.54 h]; Excavator-Poclain [9.6 h]; Dump Truck [1.96 h]; UPVC (200mm Diameter) - SW - Depth: 1.51m - 2.5m [9.23 m]; UPVC (200mm Diameter) - SW - Depth: 2.51m - 3.5m [12.97 m]; UPVC (200mm Diameter) - SW - Depth: 3.51m - 4.5m | 5,971.73 | 5,971.73 | C061 | Z5 | CONS | SW | Excavation | bef |
| RHD4CZ5C061SW2200 |  | Bedding works for UPVC Pipe Line 200 mm - (RD-C-6 /1)-Z5-C061-SW | 2d | 2026-08-10 A | 2026-09-13 A | RHD4CZ5C061SW2100 | 100% | 2026-09-05 | 2026-09-06 |  |  | Skilled labor [9.6 h]; Unskilled Labor [19.28 h]; Equipment Opreator [19.28 h]; Excavator-Poclain [9.6 h]; Dump Truck [9.6 h]; UPVC (200mm Diameter) - SW - Depth: 1.51m - 2.5m [3.08 m]; UPVC (200mm Diameter) - SW - Depth: 2.51m - 3.5m [4.32 m]; UPVC (200mm Diameter) - SW - Depth: 3.51m - 4.5m | 1,990.28 | 1,990.28 | C061 | Z5 | CONS | SW | Bedding | bef |
| RHD4CZ5C061SW2300 |  | Installing for UPVC Pipe Line 200 mm - (RD-C-6 /1)-Z5-C061-SW | 2d | 2026-08-12 A | 2026-09-14 A | RHD4CZ5C061SW2200, RHD4CZ5C061SW1300, RHD4PRSHLSTAGSW1004, RHD4PRSHLPOSW1000, RHD4PRSHLDOSSW1004, RHD4PRSHLDOSSW1304, RHD4PRSHLPOSW1100, RHD4PRSHLDOSSW1104 | 100% | 2026-09-12 | 2026-09-13 |  |  | Unskilled Labor [19.28 h]; Plumber [9.6 h]; Equipment Opreator [9.6 h]; Boom Truck [9.6 h]; UPVC (200mm Diameter) - SW - Depth: 1.51m - 2.5m [24.61 m]; UPVC (200mm Diameter) - SW - Depth: 2.51m - 3.5m [34.59 m]; UPVC (200mm Diameter) - SW - Depth: 3.51m - 4.5m | 15,924.91 | 15,924.91 | C061 | Z5 | CONS | SW | Installation | bef |
| RHD4CZ5C061SW2500 |  | Backfilling and warning tape works for UPVC Pipe Line 200 mm - (RD-C-6 /1)-Z5-C061-SW | 2d | 2026-08-15 A | 2026-09-17 A | RHD4CZ5C061SW2400, RHD4CZ5C061SW1500 | 100% | 2026-09-16 | 2026-09-17 |  |  | Skilled labor [9.6 h]; Unskilled Labor [19.28 h]; Equipment Opreator [19.28 h]; Excavator-Poclain [9.6 h]; Dump Truck [9.6 h]; UPVC (200mm Diameter) - SW - Depth: 1.51m - 2.5m [12.31 m]; UPVC (200mm Diameter) - SW - Depth: 2.51m - 3.5m [17.29 m]; UPVC (200mm Diameter) - SW - Depth: 3.51m - 4.5m | 7,962.01 | 7,962.01 | C061 | Z5 | CONS | SW | Backfilling | bef |
| RHD4CZ5C061SW2400 |  | Primary Test for UPVC Pipe Line 200 mm - (RD-C-6 /1)-Z5-C061-SW | 2d | 2027-03-13 | 2027-03-14 | RHD4CZ5C061SW2300, RHD4CZ5C061SW1400 |  |  |  | -178d | 0d | Unskilled Labor [7.73 h]; Plumber [7.73 h]; Equipment Opreator [7.73 h]; Water Truck [7.73 h]; UPVC (200mm Diameter) - SW - Depth: 1.51m - 2.5m [12.31 m]; UPVC (200mm Diameter) - SW - Depth: 2.51m - 3.5m [17.29 m]; UPVC (200mm Diameter) - SW - Depth: 3.51m - 4.5m | 7,962.01 |  | C061 | Z5 | CONS | SW | Primary Test | bef |
|  | 4549 | **RHD4-02-002-C061-(SW)-Concrete Encasement** |  |  |  |  |  |  |  |  |  |  |  |  |  |  |  |  |  |  |
|  | 4577 | **RHD4-02-002-Z5-C061-Potable Network - PT** |  | 2027-03-15 | 2027-04-01 |  |  |  |  |  |  |  |  |  |  |  |  |  |  |  |
|  | 4579 | **RHD4-02-002-C061-(PT)-HDPE Pipes - 160 mm diameter** |  | 2027-03-15 | 2027-03-30 |  |  |  |  |  |  |  |  |  |  |  |  |  |  |  |
| RHD4CZ5C061PT1101 |  | Excavation works for HDPE Pipline 160 mm - (RD-C-6 /1)-Z5-C061-PT | 2d | 2027-03-15 | 2027-03-16 | RHD4ENSDZ5APPPT130, RHD4ENMSPT2000, RHD4CZ5C061SW2500 |  |  |  | -178d | 0d | Skilled labor [18.51 h]; Unskilled Labor [18.51 h]; Equipment Opreator [22.22 h]; Excavator-Poclain [18.51 h]; Dump Truck [3.7 h]; HDPE (160mm Diameter) - PT - Depth: less than 1.5m [41.19 m]; HDPE (160mm Diameter) - PT - Depth: 1.51m - 2.5m | 4,407.33 |  | C061 | Z5 | CONS | PT | Excavation | bef |
| RHD4CZ5C061PT1201 |  | Bedding works for HDPE Pipline 160 mm - (RD-C-6 /1)-Z5-C061-PT | 2d | 2027-03-17 | 2027-03-18 | RHD4CZ5C061PT1101 |  |  |  | -178d | 0d | Skilled labor [15.9 h]; Unskilled Labor [31.69 h]; Equipment Opreator [31.69 h]; Excavator-Poclain [15.9 h]; Dump Truck [15.9 h]; HDPE (160mm Diameter) - PT - Depth: less than 1.5m [20.6 m]; HDPE (160mm Diameter) - PT - Depth: 1.51m - 2.5m | 2,204.2 |  | C061 | Z5 | CONS | PT | Bedding | bef |
| RHD4CZ5C061PT1301 |  | Installing for HDPE Pipline 160 mm - (RD-C-6 /1)-Z5-C061-PT | 3d | 2027-03-20 | 2027-03-22 | RHD4CZ5C061PT1201, RHD4PRSHLDOSPT1000, RHD4PRSHLSTAGPT1000 |  |  |  | -178d | 0d | Unskilled Labor [57.94 h]; Plumber [28.97 h]; Equipment Opreator [28.97 h]; Boom Truck [28.97 h]; HDPE (160mm Diameter) - PT - Depth: less than 1.5m [185.36 m]; HDPE (160mm Diameter) - PT - Depth: 1.51m - 2.5m | 19,833.52 |  | C061 | Z5 | CONS | PT | Installation | bef |
| RHD4CZ5C061PT1401 |  | Primary Test for HDPE Pipline 160 mm - (RD-C-6 /1)-Z5-C061-PT | 2d | 2027-03-25 | 2027-03-27 | RHD4CZ5C061PT1301, RHD4CZ5C061PT5100, RHD4CZ5C061PT3100 |  |  |  | -178d | 0d | Unskilled Labor [10.67 h]; Plumber [10.67 h]; Equipment Opreator [10.67 h]; Water Truck [10.67 h]; HDPE (160mm Diameter) - PT - Depth: less than 1.5m [82.38 m]; HDPE (160mm Diameter) - PT - Depth: 1.51m - 2.5m | 8,814.66 |  | C061 | Z5 | CONS | PT | Primary Test | bef |
| RHD4CZ5C061PT1501 |  | Backfilling and warning tape works for HDPE Pipline 160 mm - (RD-C-6 /1)-Z5-C061-PT | 3d | 2027-03-28 | 2027-03-30 | RHD4CZ5C061PT1401 |  |  |  | -178d | 0d | Skilled labor [22.4 h]; Unskilled Labor [44.87 h]; Equipment Opreator [44.87 h]; Excavator-Poclain [22.4 h]; Dump Truck [22.4 h]; HDPE (160mm Diameter) - PT - Depth: less than 1.5m [82.38 m]; HDPE (160mm Diameter) - PT - Depth: 1.51m - 2.5m | 8,814.66 |  | C061 | Z5 | CONS | PT | Backfilling | bef |
|  | 2888 | **RHD4-02-002-C061-(PT)-Fire Hydrant** |  | 2027-03-20 | 2027-03-30 |  |  |  |  |  |  |  |  |  |  |  |  |  |  |  |
| RHD4CZ5C061PT4100 |  | Excavation and Bedding and Pipe Installation for Fire Hydrant - (ROUND-07)-Z5-RA07-PT | 2d | 2027-03-20 | 2027-03-21 | RHD4CZ5C061PT2101 |  |  |  | -176d | 0d | Skilled labor [10.89 h]; Unskilled Labor [10.89 h]; Plumber [10.89 h]; Equipment Opreator [5.45 h]; Excavator-Poclain [5.45 h]; 3-outlet fire hydrant (2 x 2.5 inch and 1 x 4.5 inch) in the form of a separate dry vacuum cylinder [0.2 nr] | 2,524 |  | C061 | Z5 | CONS | PT | Excavation | bef |
| RHD4CZ5C061PT4200 |  | Valve Installation for Fire Hydrant - (ROUND-07)-Z5-RA07-PT | 2d | 2027-03-22 | 2027-03-23 | RHD4CZ5C061PT4100 |  |  |  | -176d | 0d | Unskilled Labor [7.3 h]; Plumber [7.3 h]; 3-outlet fire hydrant (2 x 2.5 inch and 1 x 4.5 inch) in the form of a separate dry vacuum cylinder [0.4 nr] | 5,048 |  | C061 | Z5 | CONS | PT | Valve | bef |
| RHD4CZ5C061PT4300 |  | Stem for Fire Hydrant - (ROUND-07)-Z5-RA07-PT | 2d | 2027-03-24 | 2027-03-25 | RHD4CZ5C061PT4200 |  |  |  | -176d | 0d | Unskilled Labor [7.3 h]; Plumber [7.3 h]; 3-outlet fire hydrant (2 x 2.5 inch and 1 x 4.5 inch) in the form of a separate dry vacuum cylinder [0.6 nr] | 7,572 |  | C061 | Z5 | CONS | PT | Stem | bef |
| RHD4CZ5C061PT4400 |  | Fire Installation for Fire Hydrant - (ROUND-07)-Z5-RA07-PT | 2d | 2027-03-27 | 2027-03-28 | RHD4CZ5C061PT4300 |  |  |  | -176d | 0d | Unskilled Labor [7.3 h]; Plumber [7.3 h]; Equipment Opreator [7.3 h]; Boom Truck [7.3 h]; 3-outlet fire hydrant (2 x 2.5 inch and 1 x 4.5 inch) in the form of a separate dry vacuum cylinder [0.7 nr] | 8,834 |  | C061 | Z5 | CONS | PT | Fire | bef |
| RHD4CZ5C061PT4500 |  | Protection Barriers for Fire Hydrant - (ROUND-07)-Z5-RA07-PT | 2d | 2027-03-29 | 2027-03-30 | RHD4CZ5C061PT4400 |  |  |  | -176d | 1.02d | Unskilled Labor [4.36 h]; Plumber [4.36 h]; 3-outlet fire hydrant (2 x 2.5 inch and 1 x 4.5 inch) in the form of a separate dry vacuum cylinder [0.1 nr] | 1,262 |  | C061 | Z5 | CONS | PT | Protection Barriers | bef |

| ID | WBS | Activity | Duration | Start | Finish | Predecessors | Total float | Free float | Resources | Cost | RDH4-01-001-Road and Block Names-1 | RDH4-01-001-Zones-1 | RDH4-01-001-Phases-1 | RDH4-01-001-Networks-1 | RDH4-01-001-Work Method-1 | RDH4-01-001-MENEM |
| --- | --- | --- | --- | --- | --- | --- | --- | --- | --- | --- | --- | --- | --- | --- | --- | --- |
|  | 4586 | **RHD4-02-002-C061-(PT)-Wash out Valve Chambers** |  | 2027-03-17 | 2027-03-25 |  |  |  |  |  |  |  |  |  |  |  |
| RHD4CZ5C061PT2101 |  | Excavation and Bedding for Wash out Valve Chambers for Potable Water Network - (RD-C-6 /1)-Z5-C061-PT | 2d | 2027-03-17 | 2027-03-18 | RHD4ENSDZ5APPPT130, RHD4CZ5C061PT1101 | -176d | 0d | Skilled labor [5.45 h]; Unskilled Labor [5.45 h]; Equipment Opreator [1.09 h]; Excavator-Poclain [0.54 h]; Dump Truck [0.54 h]; Wash out chambers - PT [0.25 nr] | 4,686.25 | C061 | Z5 | CONS | PT | Excavation and Bedding | bef |
| RHD4CZ5C061PT2201 |  | PC works for Wash out Valve Chambers for Potable Water Network - (RD-C-6 /1)-Z5-C061-PT | 2d | 2027-03-20 | 2027-03-21 | RHD4CZ5C061PT2101 | -174d | 0d | Skilled labor [5.45 h]; Unskilled Labor [10.89 h]; Equipment Opreator [0.54 h]; Concrete Pump [0.54 h]; Wash out chambers - PT [0.1 nr] | 1,874.5 | C061 | Z5 | CONS | PT | PC Works | bef |
| RHD4CZ5C061PT2301 |  | Installation for Wash out Valve Chambers for Potable Water Network - (RD-C-6 /1)-Z5-C061-PT | 2d | 2027-03-22 | 2027-03-23 | RHD4CZ5C061PT2201, RHD4PRSHLDOSPT1100, RHD4PRSHLDOSPT1400, RHD4PRSHLSTAGPT1100, RHD4PRSHLSTAGPT1400 | -174d | 0d | Skilled labor [5.45 h]; Unskilled Labor [10.89 h]; Equipment Opreator [1.09 h]; Boom Truck [1.09 h]; Wash out chambers - PT [0.55 nr] | 10,309.75 | C061 | Z5 | CONS | PT | Installation | bef |
| RHD4CZ5C061PT2401 |  | Backfilling works for Wash out Valve Chambers for Potable Water Network - (RD-C-6 /1)-Z5-C061-PT | 2d | 2027-03-24 | 2027-03-25 | RHD4CZ5C061PT2301 | -174d | 0d | Skilled labor [5.45 h]; Unskilled Labor [10.89 h]; Equipment Opreator [1.09 h]; Water Truck [0.54 h]; Dump Truck [0.54 h]; Wash out chambers - PT [0.1 nr] | 1,874.5 | C061 | Z5 | CONS | PT | Backfilling Works | bef |
|  | 4587 | **RHD4-02-002-C061-(PT)-Wash out Valves** |  | 2027-03-24 | 2027-03-28 |  |  |  |  |  |  |  |  |  |  |  |
| RHD4CZ5C061PT3102 |  | Installation for Wash out Valves for Potable Water Network - (RD-C-6 /1)-Z5-C061-PT | 2d | 2027-03-24 | 2027-03-25 | RHD4CZ5C061PT2301, RHD4PRSHLDOSPT1200, RHD4PRSHLSTAGPT1200 | -174d | 0d | Unskilled Labor [5.45 h]; Plumber [5.45 h]; Wash out valve diameter 100 mm - PT [0.9 nr] | 3,373.2 | C061 | Z5 | CONS | PT | Installation | bef |
| RHD4CZ5C061PT3202 |  | Stem and Service box for Wash out Valves for Potable Water Network - (RD-C-6 /1)-Z5-C061-PT | 2d | 2027-03-27 | 2027-03-28 | RHD4CZ5C061PT3102, RHD4CZ5C061PT2401, RHD4PRSHLDOSPT1300, RHD4PRSHLSTAGPT1300 | -174d | 3.02d | Unskilled Labor [5.45 h]; Plumber [5.45 h]; Wash out valve diameter 100 mm - PT [0.1 nr] | 374.8 | C061 | Z5 | CONS | PT | Stem and Service box | bef |
|  | 4591 | **RHD4-02-002-C061-(PT)-Concrete Encasement** |  | 2027-03-20 | 2027-03-24 |  |  |  |  |  |  |  |  |  |  |  |
| RHD4CZ5C061PT5100 |  | Pipe Encasement for Potable Pipelines - (RD-C-6 /1)-Z5-C061-PT | 5d | 2027-03-20 | 2027-03-24 | RHD4CZ5C061PT1301 FF, RHD4CZ5C061PT1301 SS, RHD4CZ5C061PT1201 | -178d | 0d | Skilled labor [47.81 h]; Unskilled Labor [47.81 h]; Equipment Opreator [52.49 h]; Concrete Mixer Truck [4.8 h]; Dump Truck [47.81 h]; Pipe Encasement - PT [21.93 m3] | 26,886.18 | C061 | Z5 | CONS | PT | Pipe Encasement | bef |
|  | 4583 | **RHD4-02-002-C061-(PT)-Gate Valves (Direct Buried)** |  | 2027-03-21 | 2027-04-01 |  |  |  |  |  |  |  |  |  |  |  |
| RHD4CZ5C061PT3100 |  | Installation for Direct Buried Gate Valves - (RD-C-6 /1)-Z5-C061-PT | 2d | 2027-03-21 | 2027-03-22 | RHD4CZ5C061PT1301 FF, RHD4CZ5C061PT1301 SS, RHD4PRSHLDOSPT1200, RHD4PRSHLSTAGPT1200, RHD4CZ5C061RD3100 | -176d | 2d | Unskilled Labor [16.34 h]; Plumber [16.34 h]; Gate valves dia 150 mm - PT [2.7 nr] | 4,266 | C061 | Z5 | CONS | PT | Installation | bef |
| RHD4CZ5C061PT3200 |  | Stem and Service box for Direct Buried Gate Valves - (RD-C-6 /1)-Z5-C061-PT | 2d | 2027-03-31 | 2027-04-01 | RHD4CZ5C061PT3100, RHD4CZ5C061PT1501 | -178d | 0d | Unskilled Labor [16.34 h]; Plumber [16.34 h]; Gate valves dia 150 mm - PT [0.3 nr] | 474 | C061 | Z5 | CONS | PT | Stem and Service box | bef |
|  | 4592 | **RHD4-02-002-Z5-C061-Irrigation Network - IRR** |  | 2027-03-17 | 2027-03-28 |  |  |  |  |  |  |  |  |  |  |  |
|  | 4595 | **RHD4-02-002-C061-(IRR)-HDPE Pipes - 200 mm diameter** |  | 2027-03-17 | 2027-03-28 |  |  |  |  |  |  |  |  |  |  |  |
| RHD4CZ5C061IRR1102 |  | Excavation works for HDPE Pipline 200 mm - (RD-C-6 /1)-Z5-C061-IRR | 2d | 2027-03-17 | 2027-03-18 | RHD4CZ5C061PT1101, RHD4ENSDZ5APPIRR140, RHD4ENMSRR2000 | -174d | 0d | Skilled labor [15.68 h]; Unskilled Labor [15.68 h]; Equipment Opreator [18.73 h]; Excavator-Poclain [15.68 h]; Dump Truck [3.16 h]; HDPE (200mm Diameter) - TSE - Depth: more than 1.51m [32.32 m] | 6,270.08 | C061 | Z5 | CONS | IRR | Excavation | bef |
| RHD4CZ5C061IRR1202 |  | Bedding works for HDPE Pipline 200 mm - (RD-C-6 /1)-Z5-C061-IRR | 2d | 2027-03-20 | 2027-03-21 | RHD4CZ5C061IRR1102 | -174d | 0d | Skilled labor [15.68 h]; Unskilled Labor [31.26 h]; Equipment Opreator [31.26 h]; Excavator-Poclain [15.68 h]; Dump Truck [15.68 h]; HDPE (200mm Diameter) - TSE - Depth: more than 1.51m [10.77 m] | 2,089.38 | C061 | Z5 | CONS | IRR | Bedding | bef |
| RHD4CZ5C061IRR1302 |  | Installing for HDPE Pipline 200 mm - (RD-C-6 /1)-Z5-C061-IRR | 2d | 2027-03-22 | 2027-03-23 | RHD4CZ5C061IRR1202, RHD4PRSHLDOSIRR1000, RHD4PRSHLSTAGIRR1000 | -174d | 0d | Unskilled Labor [31.26 h]; Plumber [15.68 h]; Equipment Opreator [15.68 h]; Boom Truck [15.68 h]; HDPE (200mm Diameter) - TSE - Depth: more than 1.51m [86.18 m] | 16,718.92 | C061 | Z5 | CONS | IRR | Installation | bef |
| RHD4CZ5C061IRR1402 |  | Primary Test for HDPE Pipline 200 mm - (RD-C-6 /1)-Z5-C061-IRR | 2d | 2027-03-24 | 2027-03-25 | RHD4CZ5C061IRR1302 | -174d | 0d | Unskilled Labor [7.84 h]; Plumber [7.84 h]; Equipment Opreator [7.84 h]; Water Truck [7.84 h]; HDPE (200mm Diameter) - TSE - Depth: more than 1.51m [43.09 m] | 8,359.46 | C061 | Z5 | CONS | IRR | Primary Test | bef |
| RHD4CZ5C061IRR1502 |  | Backfilling and warning tape works for HDPE Pipline 200 mm - (RD-C-6 /1)-Z5-C061-IRR | 2d | 2027-03-27 | 2027-03-28 | RHD4CZ5C061IRR1402 | -174d | 0d | Skilled labor [15.68 h]; Unskilled Labor [31.26 h]; Equipment Opreator [31.26 h]; Excavator-Poclain [15.68 h]; Dump Truck [15.68 h]; HDPE (200mm Diameter) - TSE - Depth: more than 1.51m [43.09 m] | 8,359.46 | C061 | Z5 | CONS | IRR | Backfilling | bef |
|  | 4601 | **RHD4-02-002-C061-(IRR)-Gate Valves (Direct Buried)** |  |  |  |  |  |  |  |  |  |  |  |  |  |  |
|  | 4609 | **RHD4-02-002-Z5-C061-Crossings Irrigation Network - IRRC** |  |  |  |  |  |  |  |  |  |  |  |  |  |  |
|  | 4621 | **RHD4-02-002-C061-(IRRC)-Wash out Chamber** |  |  |  |  |  |  |  |  |  |  |  |  |  |  |
|  | 4622 | **RHD4-02-002-C061-(IRRC)-Wash out Valves** |  |  |  |  |  |  |  |  |  |  |  |  |  |  |
|  | 4626 | **RHD4-02-002-Z5-C061-Medium Voltage Network - MV** |  | 2027-03-29 | 2027-08-25 |  |  |  |  |  |  |  |  |  |  |  |
|  | 4627 | **RHD4-02-002-C061-(MV)-Medium Voltage cable trench** |  | 2027-08-01 | 2027-08-10 |  |  |  |  |  |  |  |  |  |  |  |
| RHD4CZ5C061MV1100 |  | Excavation for Medium Voltage Trench - (RD-C-6 /1)-Z5-C061-MV | 3d | 2027-08-01 | 2027-08-03 | RHD4ENSDZ5APPMV150, RHD4CZ5C061RD3100, RHD4CZ5RA07MV5400 | -172d | 0d | Skilled labor [24.72 h]; Unskilled Labor [49.33 h]; Equipment Opreator [74.05 h]; Excavator-Poclain [24.72 h]; Dump Truck [49.33 h]; Excavation for Trench size 40cm wide and 80cm deep ( for 1 cables) [96.83 m3]; Excavation for Trench size 60cm wide and 80cm deep ( for 2 cables) [61.74 m3] | 1,585.67 | C061 | Z5 | CONS | MV | Excavation | AFT |
| RHD4CZ5C061MV1200 |  | Trench Backfilling for Medium Voltage Network - (RD-C-6 /1)-Z5-C061-MV | 3d | 2027-08-08 | 2027-08-10 | RHD4CZ5C061MV3101, RHD4CZ5C061MV3100 | -172d | 0d | Skilled labor [24.72 h]; Unskilled Labor [24.72 h]; Equipment Opreator [49.33 h]; Dump Truck [49.33 h]; Excavation for Trench size 40cm wide and 80cm deep ( for 1 cables) [41.5 m3]; Excavation for Trench size 60cm wide and 80cm deep ( for 2 cables) [26.46 m3] | 679.61 | C061 | Z5 | CONS | MV | Backfilling | AFT |

| ID | WBS | Activity | Duration | Start | Finish | Predecessors | Total float | Free float | Resources | Cost | RDH4-01-001-Road and Block Names-1 | RDH4-01-001-Zones-1 | RDH4-01-001-Phases-1 | RDH4-01-001-Networks-1 | RDH4-01-001-Work Method-1 | RDH4-01-001-MENEM |
| --- | --- | --- | --- | --- | --- | --- | --- | --- | --- | --- | --- | --- | --- | --- | --- | --- |
|  | 4628 | **RHD4-02-002-C061-(MV)-Medium Voltage duct banks** |  | 2027-03-29 | 2027-04-06 |  |  |  |  |  |  |  |  |  |  |  |
| RHD4CZ5C061MV2100 |  | Excavation of Duct Banks for Medium Voltage Network - (RD-C-6 /1)-Z5-C061-MV | 2d | 2027-03-29 | 2027-03-30 | RHD4ENSDZ5APPMV150, RHD4CZ5C061IRR1102, RHD4CZ5C061IRR1502 | -136d | 0d | Unskilled Labor [14.05 h]; Equipment Opreator [28.1 h]; Excavator-Poclain [14.05 h]; Dump Truck [14.05 h]; Duct bank for MV cables UPVC (4xø150mm) [1.93 m] | 769.21 | C061 | Z5 | CONS | MV | Excavation | bef |
| RHD4CZ5C061MV2200 |  | Installation of Duct Banks for Medium Voltage Network - (RD-C-6 /1)-Z5-C061-MV | 2d | 2027-03-31 | 2027-04-01 | RHD4CZ5C061MV2100, RHD4PRSHLDOSMV1000, RHD4PRSHLSTAGMV1000 | -136d | 0d | Unskilled Labor [21.02 h]; Equipment Opreator [42.15 h]; Excavator-Poclain [21.02 h]; Dump Truck [21.02 h]; Duct bank for MV cables UPVC (4xø150mm) [1.93 m] | 769.21 | C061 | Z5 | CONS | MV | Installing | bef |
| RHD4CZ5C061MV2300 |  | Pouring of Duct Banks for Medium Voltage Network - (RD-C-6 /1)-Z5-C061-MV | 2d | 2027-04-03 | 2027-04-04 | RHD4CZ5C061MV2200 | -136d | 0d | Unskilled Labor [14.05 h]; Equipment Opreator [28.1 h]; Excavator-Poclain [14.05 h]; Dump Truck [14.05 h]; Duct bank for MV cables UPVC (4xø150mm) [12.56 m] | 4,999.89 | C061 | Z5 | CONS | MV | Pouring | bef |
| RHD4CZ5C061MV2400 |  | Backfilling of Duct Banks for Medium Voltage Network - (RD-C-6 /1)-Z5-C061-MV | 2d | 2027-04-05 | 2027-04-06 | RHD4CZ5C061MV2300 | -136d | 20.02d | Unskilled Labor [10.56 h]; Equipment Opreator [21.02 h]; Excavator-Poclain [10.56 h]; Dump Truck [10.56 h]; Duct bank for MV cables UPVC (4xø150mm) [2.9 m] | 1,154.2 | C061 | Z5 | CONS | MV | Backfilling | bef |
|  | 4629 | **RHD4-02-002-C061-(MV)-Medium Voltage cables 3Cx 500 mm²** |  | 2027-08-04 | 2027-08-15 |  |  |  |  |  |  |  |  |  |  |  |
| RHD4CZ5C061MV3100 |  | Installation of Medium Voltage Cables 3Cx 500 mm² - (RD-C-6 /1)-Z5-C061-MV | 3d | 2027-08-04 | 2027-08-07 | RHD4CZ5C061MV1100, RHD4PRSHLDOSMV1100, RHD4ENMSMV2000, RHD4ENMSMV2010, RHD4PRSHLSTAGMV1100, RHD4CZ5C061MV2400 | -172d | 0d | Skilled labor [27.44 h]; Unskilled Labor [109.56 h]; Electrician [54.78 h]; Equipment Opreator [82.22 h]; Boom Truck [27.44 h]; Cable Laying Machine [54.78 h]; Cable 13.8 kV 3Cx 500 mm² Al/XLPE,/LLDPE / Unarmored [339.64 m] | 54,003.22 | C061 | Z5 | CONS | MV | Installation | AFT |
| RHD4CZ5C061MV3300 |  | Testing of Medium Voltage Cables 3Cx 500 mm² - (RD-C-6 /1)-Z5-C061-MV | 2d | 2027-08-11 | 2027-08-12 | RHD4CZ5C061MV1200, RHD4CZ5C061MV3100 | -163d | 0d | Skilled labor [8.17 h]; Unskilled Labor [32.89 h]; Electrician [16.44 h]; Cable 13.8 kV 3Cx 500 mm² Al/XLPE,/LLDPE / Unarmored [37.74 m] | 6,000.36 | C061 | Z5 | CONS | MV | Testing | AFT |
| RHD4CZ5C061MV3400 |  | Termination of Medium Voltage Cables 3Cx 500 mm² - (RD-C-6 /1)-Z5-C061-MV | 2d | 2027-08-14 | 2027-08-15 | RHD4CZ5C061MV3300 | -163d | 9d | Unskilled Labor [0.33 h]; Electrician [0.33 h]; Cable Termination for 13.8 kv 3Cx 500 mm², Al /XLPE/LLDPE [1.6 Unit] | 4,216 | C061 | Z5 | CONS | MV | Termination | AFT |
|  | 4630 | **RHD4-02-002-C061-(MV)-Medium Voltage cables 3Cx 50 mm²** |  | 2027-08-04 | 2027-08-15 |  |  |  |  |  |  |  |  |  |  |  |
| RHD4CZ5C061MV3101 |  | Installation of Medium Voltage Cables 3Cx 50 mm² - (RD-C-6 /1)-Z5-C061-MV | 2d | 2027-08-04 | 2027-08-05 | RHD4CZ5C061MV1100, RHD4PRSHLDOSMV1200, RHD4ENMSMV2000, RHD4ENMSMV2010, RHD4PRSHLSTAGMV1200 | -171d | 1d | Unskilled Labor [1.74 h]; Electrician [0.87 h]; Equipment Opreator [1.31 h]; Boom Truck [0.44 h]; Cable Laying Machine [0.87 h]; Single Core Copper Cable 13.8 kV 3Cx 50 mm² Cu/XLPE/PVC / Unarmored [3.6 m] | 403.2 | C061 | Z5 | CONS | MV | Installation | AFT |
| RHD4CZ5C061MV3301 |  | Testing of Medium Voltage Cables 3Cx 50 mm² - (RD-C-6 /1)-Z5-C061-MV | 2d | 2027-08-11 | 2027-08-12 | RHD4CZ5C061MV3101, RHD4CZ5C061MV1200 | -163d | 0d | Unskilled Labor [0.33 h]; Electrician [0.22 h]; Single Core Copper Cable 13.8 kV 3Cx 50 mm² Cu/XLPE/PVC / Unarmored [0.4 m] | 44.8 | C061 | Z5 | CONS | MV | Testing | AFT |
| RHD4CZ5C061MV3401 |  | Termination of Medium Voltage Cables 3Cx 50 mm² - (RD-C-6 /1)-Z5-C061-MV | 2d | 2027-08-14 | 2027-08-15 | RHD4CZ5C061MV3301 | -163d | 9d | Unskilled Labor [5.77 h]; Electrician [2.94 h]; Cable Termination for 13.8 kv 3Cx 500 mm², Al /XLPE/LLDPE [0.4 Unit] | 1,054 | C061 | Z5 | CONS | MV | Termination | AFT |
|  | 4632 | **RHD4-02-002-C061-(MV)-Unit Substations** |  | 2027-08-11 | 2027-08-25 |  |  |  |  |  |  |  |  |  |  |  |
| RHD4CZ5C061MV5100 |  | Excavation for Unit Substations for Medium Voltage Network - (RD-C-6 /1)-Z5-C061-MV | 2d | 2027-08-11 | 2027-08-12 | RHD4CZ5C061MV1200, RHD4ENSDZ5APPMV150 | -172d | 0d | Skilled labor [21.78 h]; Unskilled Labor [21.78 h]; Equipment Opreator [43.56 h]; Excavator-Poclain [21.78 h]; Dump Truck [21.78 h]; Unit Substation 13.8/0.4 K V, 500kVA ,Including concrete foundations and fencing, According to the specifications and standards of SEC [0.1 Unit]; Ring Main Unit RMU, 13.8KV, According to the specifications and standards of SEC [0.1 Unit] | 12,257 | C061 | Z5 | CONS | MV | Excavation | AFT |
| RHD4CZ5C061MV5200 |  | Concrete Base Placement for Unit Substations for Medium Voltage Network - (RD-C-6 /1)-Z5-C061-MV | 2d | 2027-08-14 | 2027-08-15 | RHD4CZ5C061MV5100 | -172d | 0d | Skilled labor [21.78 h]; Unskilled Labor [21.78 h]; Equipment Opreator [21.78 h]; Boom Truck [21.78 h]; Unit Substation 13.8/0.4 K V, 500kVA ,Including concrete foundations and fencing, According to the specifications and standards of SEC [0.15 Unit]; Ring Main Unit RMU, 13.8KV, According to the specifications and standards of SEC [0.15 Unit] | 18,385.5 | C061 | Z5 | CONS | MV | Concrete Base Placement | AFT |
| RHD4CZ5C061MV5300 |  | Installation for Fences and doors for Medium Voltage Network - (RD-C-6 /1)-Z5-C061-MV | 5d | 2027-08-16 | 2027-08-21 | RHD4CZ5C061MV5200 | -172d | 0d | Skilled labor [54.45 h]; Unskilled Labor [54.45 h]; Equipment Opreator [65.34 h]; Excavator-Poclain [10.89 h]; Boom Truck [54.45 h]; Unit Substation 13.8/0.4 K V, 500kVA ,Including concrete foundations and fencing, According to the specifications and standards of SEC [0.1 Unit]; Ring Main Unit RMU, 13.8KV, According to the specifications and standards of SEC [0.1 Unit] | 12,257 | C061 | Z5 | CONS | MV | Fence Installation | AFT |
| RHD4CZ5C061MV5400 |  | Installation for Unit Substations for Medium Voltage Network - (RD-C-6 /1)-Z5-C061-MV | 4d | 2027-08-22 | 2027-08-25 | RHD4CZ5C061MV5300 | -172d | 0d | Skilled labor [43.56 h]; Unskilled Labor [87.12 h]; Electrician [87.12 h]; Unit Substation 13.8/0.4 K V, 500kVA ,Including concrete foundations and fencing, According to the specifications and standards of SEC [0.65 Unit]; Ring Main Unit RMU, 13.8KV, According to the specifications and standards of SEC [0.65 Unit] | 79,670.5 | C061 | Z5 | CONS | MV | Substation Installation | AFT |
|  | 4633 | **RHD4-02-002-Z5-C061-Low Voltage Network - LV** |  | 2027-04-28 | 2027-05-31 |  |  |  |  |  |  |  |  |  |  |  |
|  | 4634 | **RHD4-02-002-C061-(LV)-Low Voltage duct banks** |  | 2027-04-28 | 2027-05-06 |  |  |  |  |  |  |  |  |  |  |  |
| RHD4CZ5C061LV2100 |  | Excavation of Duct Banks for Low Voltage Network - (RD-C-6 /1)-Z5-C061-LV | 2d | 2027-04-28 | 2027-04-29 | RHD4CZ5C061RW3000, RHD4ENSDZ5APPLV160, RHD4CZ5RA07SL2100 | -142d | 0d | Skilled labor [14.16 h]; Unskilled Labor [14.16 h]; Equipment Opreator [28.42 h]; Excavator-Poclain [14.16 h]; Dump Truck [14.16 h]; Duct bank for LV cables UPVC (2xø110mm) [1.96 m] | 395.92 | C061 | Z5 | CONS | LV | Excavation | bef |
| RHD4CZ5C061LV2200 |  | Installation of Duct Banks for Low Voltage Network - (RD-C-6 /1)-Z5-C061-LV | 2d | 2027-05-01 | 2027-05-02 | RHD4CZ5C061LV2100, RHD4PRSHLDOSLV1000, RHD4PRSHLSTAGLV1000 | -142d | 0d | Carpenter [2.18 h]; Skilled labor [21.35 h]; Unskilled Labor [21.35 h]; Steel Fixer [2.18 h]; Duct bank for LV cables UPVC (2xø110mm) [1.96 m] | 395.92 | C061 | Z5 | CONS | LV | Installing | bef |
| RHD4CZ5C061LV2300 |  | Pouring of Duct Banks for Low Voltage Network - (RD-C-6 /1)-Z5-C061-LV | 2d | 2027-05-03 | 2027-05-04 | RHD4CZ5C061LV2200 | -142d | 0d | Skilled labor [14.16 h]; Unskilled Labor [14.16 h]; Equipment Opreator [5.66 h]; Concrete Mixer Truck [2.83 h]; Concrete Pump [2.83 h]; Duct bank for LV cables UPVC (2xø110mm) [12.71 m] | 2,567.42 | C061 | Z5 | CONS | LV | Pouring | bef |
| RHD4CZ5C061LV2400 |  | Backfilling of Duct Banks for Low Voltage Network - (RD-C-6 /1)-Z5-C061-LV | 2d | 2027-05-05 | 2027-05-06 | RHD4CZ5C061LV2300 | -142d | 0d | Skilled labor [10.67 h]; Unskilled Labor [10.67 h]; Equipment Opreator [4.25 h]; Excavator-Poclain [4.25 h]; Duct bank for LV cables UPVC (2xø110mm) [2.93 m] | 591.86 | C061 | Z5 | CONS | LV | Backfilling | bef |

| ID | WBS | Activity | Duration | Start | Finish | Predecessors | Total float | Free float | Resources | Cost | RDH4-01-001-Road and Block Names-1 | RDH4-01-001-Zones-1 | RDH4-01-001-Phases-1 | RDH4-01-001-Networks-1 | RDH4-01-001-Work Method-1 | RDH4-01-001-MENEM |
| --- | --- | --- | --- | --- | --- | --- | --- | --- | --- | --- | --- | --- | --- | --- | --- | --- |
|  | 4636 | **RHD4-02-002-C061-(LV)-Low Voltage cables** |  | 2027-05-08 | 2027-05-24 |  |  |  |  |  |  |  |  |  |  |  |
| RHD4CZ5C061LV3100 |  | Excavation for Low Voltage Cables for Low Voltage Network - (RD-C-6 /1)-Z5-C061-LV | 3d | 2027-05-08 | 2027-05-10 | RHD4ENSDZ5APPLV160, RHD4CZ5C061LV2400 | -142d | 0d | Skilled labor [29.6 h]; Unskilled Labor [59.35 h]; Equipment Opreator [59.35 h]; Excavator-Poclain [29.6 h]; Boom Truck [29.6 h]; Cable, Copper 4x185mm2/ CU/XLPE/PVC [57.8 m]; Cable, Copper 4x50mm2/ CU/XLPE/PVC +1x25mm2 CU/PVC [20.71 m]; Cable, Copper 3x10mm2/ CU/XLPE/SWA/PVC [57.64 m] | 27,105.9 | C061 | Z5 | CONS | LV | Excavation | AFT |
| RHD4CZ5C061LV3200 |  | Cable Laying of Low Voltage Cables for Low Voltage Network - (RD-C-6 /1)-Z5-C061-LV | 3d | 2027-05-11 | 2027-05-13 | RHD4CZ5C061LV3100, RHD4PRSHLDOSLV1100, RHD4ENMSLV2000, RHD4ENMSLV2010, RHD4PRSHLSTAGLV1100 | -142d | 0d | Skilled labor [24.72 h]; Unskilled Labor [98.88 h]; Electrician [49.44 h]; Equipment Opreator [74.16 h]; Boom Truck [24.72 h]; Cable Laying Machine [49.44 h]; Cable, Copper 4x185mm2/ CU/XLPE/PVC [150 m]; Cable, Copper 4x50mm2/ CU/XLPE/PVC +1x25mm2 CU/PVC [62.13 m]; Cable, Copper 3x10mm2/ CU/XLPE/SWA/PVC [172.92 m] | 72,285.3 | C061 | Z5 | CONS | LV | Cable Laying | AFT |
| RHD4CZ5C061LV3300 |  | Warning tape and Backfill for Low Voltage Cables for Low Voltage Network - (RD-C-6 /1)-Z5-C061-LV | 3d | 2027-05-19 | 2027-05-22 | RHD4CZ5C061LV3200 | -142d | 0d | Skilled labor [24.72 h]; Unskilled Labor [98.88 h]; Electrician [49.44 h]; Equipment Opreator [24.72 h]; Boom Truck [24.72 h]; Cable, Copper 4x185mm2/ CU/XLPE/PVC [43.35 m]; Cable, Copper 4x50mm2/ CU/XLPE/PVC +1x25mm2 CU/PVC [15.53 m]; Cable, Copper 3x10mm2/ CU/XLPE/SWA/PVC [43.23 m] | 20,329.66 | C061 | Z5 | CONS | LV | Warning tape and Backfill | AFT |
| RHD4CZ5C061LV3400 |  | Testing of Low Voltage Cables for Low Voltage Network - (RD-C-6 /1)-Z5-C061-LV | 2d | 2027-05-23 | 2027-05-24 | RHD4CZ5C061LV3300 | -142d | 0d | Skilled labor [14.81 h]; Unskilled Labor [59.35 h]; Electrician [29.6 h]; Equipment Opreator [14.81 h]; Boom Truck [14.81 h]; Cable, Copper 4x185mm2/ CU/XLPE/PVC [14.45 m]; Cable, Copper 4x50mm2/ CU/XLPE/PVC +1x25mm2 CU/PVC [5.18 m]; Cable, Copper 3x10mm2/ CU/XLPE/SWA/PVC [14.41 m] | 6,776.55 | C061 | Z5 | CONS | LV | Testing | AFT |
|  | 4637 | **RHD4-02-002-C061-(LV)-Low Voltage Distribution Pillars** |  | 2027-05-25 | 2027-05-31 |  |  |  |  |  |  |  |  |  |  |  |
| RHD4CZ5C061LV4100 |  | Leveling for Distribution Pillars for Low Voltage Network - (RD-C-6 /1)-Z5-C061-LV | 2d | 2027-05-25 | 2027-05-26 | RHD4CZ5C061LV3400 | -142d | 0d | Skilled labor [10.89 h]; Unskilled Labor [21.78 h]; Equipment Opreator [4.36 h]; Excavator-Poclain [2.18 h]; Boom Truck [2.18 h]; Supply and installation of KWH meter mounting frame including concrete block wall for installation of KWH meter according to the standards and specifications of SEC [0.3 Unit] | 1,415.7 | C061 | Z5 | CONS | LV | Leveling | AFT |
| RHD4CZ5C061LV4200 |  | Lean Concrete for Distribution Pillars for Low Voltage Network - (RD-C-6 /1)-Z5-C061-LV | 2d | 2027-05-27 | 2027-05-29 | RHD4CZ5C061LV4100 | -142d | 0d | Skilled labor [7.3 h]; Unskilled Labor [14.48 h]; Equipment Opreator [2.94 h]; Concrete Mixer Truck [1.42 h]; Concrete Pump [1.42 h]; Supply and installation of KWH meter mounting frame including concrete block wall for installation of KWH meter according to the standards and specifications of SEC [0.5 Unit] | 2,359.5 | C061 | Z5 | CONS | LV | Lean Concrete | AFT |
| RHD4CZ5C061LV4300 |  | Installation of Distribution Pillars for Low Voltage Network - (RD-C-6 /1)-Z5-C061-LV | 2d | 2027-05-30 | 2027-05-31 | RHD4CZ5C061LV4200, RHD4PRSHLDOSLV1200, RHD4PRSHLDOSLV1300, RHD4PRSHLSTAGLV1200, RHD4PRSHLSTAGLV1300 | -142d | 0d | Skilled labor [10.89 h]; Unskilled Labor [43.56 h]; Electrician [21.78 h]; Equipment Opreator [10.89 h]; Boom Truck [10.89 h]; Supply and installation of KWH meter mounting frame including concrete block wall for installation of KWH meter according to the standards and specifications of SEC [1.2 Unit] | 5,662.8 | C061 | Z5 | CONS | LV | Installation | AFT |
|  | 4638 | **RHD4-02-002-C061-(LV)-Low Voltage Distribution Pillars Earthing** |  |  |  |  |  |  |  |  |  |  |  |  |  |  |
|  | 4639 | **RHD4-02-002-Z5-C061-Street Lighting Network - SL** |  | 2027-05-01 | 2027-06-28 |  |  |  |  |  |  |  |  |  |  |  |
|  | 4640 | **RHD4-02-002-C061-(SL)-Street Lighting duct banks** |  | 2027-05-01 | 2027-05-24 |  |  |  |  |  |  |  |  |  |  |  |
| RHD4CZ5C061SL2100 |  | Excavation of Duct Banks for Street Lighting Network - (RD-C-6 /1)-Z5-C061-SL | 4d | 2027-05-01 | 2027-05-04 | RHD4CZ5C061LV2100, RHD4ENSDZ5APPSL170 | -142d | 0d | Skilled labor [42.04 h]; Unskilled Labor [42.04 h]; Equipment Opreator [84 h]; Excavator-Poclain [42.04 h]; Dump Truck [42.04 h]; Road Crossing Duct for Street Lighting cables UPVC (2x?110mm) [3.38 m]; Road Crossing Duct for Street Lighting cables UPVC (4x?110mm) [1.42 m]; Road Crossing Duct for Street Lighting cables UPVC (6x?110mm) [0.98 m] | 1,438.17 | C061 | Z5 | CONS | SL | Excavation | bef |
| RHD4CZ5C061SL2200 |  | Installation of Duct Banks for Street Lighting Network - (RD-C-6 /1)-Z5-C061-SL | 6d | 2027-05-05 | 2027-05-11 | RHD4CZ5C061SL2100, RHD4CZ5C061LV2200, RHD4PRSHLDOSSL1000, RHD4PRSHLSTAGSL1000 | -142d | 0d | Carpenter [6.32 h]; Skilled labor [63.06 h]; Unskilled Labor [63.06 h]; Steel Fixer [6.32 h]; Road Crossing Duct for Street Lighting cables UPVC (2x?110mm) [3.38 m]; Road Crossing Duct for Street Lighting cables UPVC (4x?110mm) [1.42 m]; Road Crossing Duct for Street Lighting cables UPVC (6x?110mm) [0.98 m] | 1,438.17 | C061 | Z5 | CONS | SL | Installing | bef |
| RHD4CZ5C061SL2300 |  | Pouring of Duct Banks for Street Lighting Network - (RD-C-6 /1)-Z5-C061-SL | 4d | 2027-05-12 | 2027-05-20 | RHD4CZ5C061SL2200, RHD4CZ5C061LV2300 | -142d | 0d | Skilled labor [42.04 h]; Unskilled Labor [42.04 h]; Equipment Opreator [16.8 h]; Concrete Mixer Truck [8.39 h]; Concrete Pump [8.39 h]; Road Crossing Duct for Street Lighting cables UPVC (2x?110mm) [21.98 m]; Road Crossing Duct for Street Lighting cables UPVC (4x?110mm) [9.26 m]; Road Crossing Duct for Street Lighting cables UPVC (6x?110mm) [6.36 m] | 9,346.25 | C061 | Z5 | CONS | SL | Pouring | bef |
| RHD4CZ5C061SL2400 |  | Backfilling of Duct Banks for Street Lighting Network - (RD-C-6 /1)-Z5-C061-SL | 3d | 2027-05-22 | 2027-05-24 | RHD4CZ5C061SL2300, RHD4CZ5C061LV2400 | -142d | 20.02d | Skilled labor [31.47 h]; Unskilled Labor [31.47 h]; Equipment Opreator [12.63 h]; Excavator-Poclain [12.63 h]; Road Crossing Duct for Street Lighting cables UPVC (2x?110mm) [5.07 m]; Road Crossing Duct for Street Lighting cables UPVC (4x?110mm) [2.14 m]; Road Crossing Duct for Street Lighting cables UPVC (6x?110mm) [1.47 m] | 2,157.25 | C061 | Z5 | CONS | SL | Backfilling | bef |
|  | 4641 | **RHD4-02-002-C061-(SL)-Street Lighting Drawpit** |  | 2027-06-01 | 2027-06-05 |  |  |  |  |  |  |  |  |  |  |  |
| RHD4CZ5C061SL5100 |  | Excavation of Drawpit size 600x600x900mm for Street Lighting Network - (RD-C-6 /1)-Z5-C061-SL | 2d | 2027-06-01 | 2027-06-02 | RHD4CZ5C061SL2300, RHD4ENSDZ5APPSL170, RHD4CZ5C061LV4300 | -142d | 0d | Skilled labor [5.45 h]; Unskilled Labor [5.45 h]; Equipment Opreator [4.36 h]; Excavator-Poclain [2.18 h]; Dump Truck [2.18 h]; Drawpit with medium duty steel cover, size600x600x900mm, [0.9 Unit] | 2,205.9 | C061 | Z5 | CONS | SL | Excavation | AFT |
| RHD4CZ5C061SL5200 |  | Installation of Drawpit size 600x600x900mm for Street Lighting Network - (RD-C-6 /1)-Z5-C061-SL | 2d | 2027-06-03 | 2027-06-05 | RHD4CZ5C061SL5100, RHD4PRSHLDOSSL1400, RHD4PRSHLSTAGSL1400 | -142d | 0d | Skilled labor [5.45 h]; Unskilled Labor [5.45 h]; Equipment Opreator [2.18 h]; Boom Truck [2.18 h]; Drawpit with medium duty steel cover, size600x600x900mm, [5.1 Unit] | 12,500.1 | C061 | Z5 | CONS | SL | Installation | AFT |
|  | 4642 | **RHD4-02-002-C061-(SL)-Street Lighting cables** |  | 2027-06-06 | 2027-06-14 |  |  |  |  |  |  |  |  |  |  |  |
| RHD4CZ5C061SL3100 |  | Excavation for Street Lighting Cables for Street Lighting Network - (RD-C-6 /1)-Z5-C061-SL | 2d | 2027-06-06 | 2027-06-07 | RHD4ENSDZ5APPSL170, RHD4CZ5C061SL5200 | -142d | 0d | Skilled labor [21.02 h]; Unskilled Labor [42.04 h]; Equipment Opreator [42.04 h]; Excavator-Poclain [21.02 h]; Boom Truck [21.02 h]; Cable, Copper 4x10mm2/ CU/XLPE/SWA/PVC + 1x10mm2 CU/PVC [96.4 m] | 4,723.6 | C061 | Z5 | CONS | SL | Excavation | AFT |
| RHD4CZ5C061SL3200 |  | Cable Laying of Street Lighting Cables for Street Lighting Network - (RD-C-6 /1)-Z5-C061-SL | 2d | 2027-06-08 | 2027-06-09 | RHD4CZ5C061SL3100, RHD4PRSHLDOSSL1100, RHD4ENMSSL2000, RHD4ENMSSL2010, RHD4PRSHLSTAGSL1100 | -142d | 0d | Skilled labor [17.53 h]; Unskilled Labor [70.02 h]; Electrician [34.96 h]; Equipment Opreator [52.49 h]; Boom Truck [17.53 h]; Cable Laying Machine [34.96 h]; Cable, Copper 4x10mm2/ CU/XLPE/SWA/PVC + 1x10mm2 CU/PVC [289.2 m] | 14,170.8 | C061 | Z5 | CONS | SL | Cable Laying | AFT |
| RHD4CZ5C061SL3300 |  | Warning tape and Backfill for Street Lighting Cables for Street Lighting Network - (RD-C-6 /1)-Z5-C061-SL | 2d | 2027-06-10 | 2027-06-12 | RHD4CZ5C061SL3200 | -142d | 0d | Skilled labor [17.53 h]; Unskilled Labor [70.02 h]; Electrician [34.96 h]; Equipment Opreator [17.53 h]; Boom Truck [17.53 h]; Cable, Copper 4x10mm2/ CU/XLPE/SWA/PVC + 1x10mm2 CU/PVC [72.3 m] | 3,542.7 | C061 | Z5 | CONS | SL | Warning tape and Backfill | AFT |
| RHD4CZ5C061SL3400 |  | Testing of Street Lighting Cables for Street Lighting Network - (RD-C-6 /1)-Z5-C061-SL | 2d | 2027-06-13 | 2027-06-14 | RHD4CZ5C061SL3300 | -142d | 0d | Skilled labor [10.45 h]; Unskilled Labor [42.04 h]; Electrician [21.02 h]; Equipment Opreator [10.45 h]; Boom Truck [10.45 h]; Cable, Copper 4x10mm2/ CU/XLPE/SWA/PVC + 1x10mm2 CU/PVC [24.1 m] | 1,180.9 | C061 | Z5 | CONS | SL | Testing | AFT |

| ID | WBS | Activity | Duration | Start | Finish | Predecessors | Total float | Free float | Resources | Cost | RDH4-01-001-Road and Block Names-1 | RDH4-01-001-Zones-1 | RDH4-01-001-Phases-1 | RDH4-01-001-Networks-1 | RDH4-01-001-Work Method-1 | RDH4-01-001-MENEM |
| --- | --- | --- | --- | --- | --- | --- | --- | --- | --- | --- | --- | --- | --- | --- | --- | --- |
|  | 4643 | **RHD4-02-002-C061-(SL)-Street Lighting Poles** |  | 2027-06-15 | 2027-06-26 |  |  |  |  |  |  |  |  |  |  |  |
| RHD4CZ5C061SL1100 |  | Excavation for RC Base for Lighting Poles for Street Lighting Network - (RD-C-6 /1)-Z5-C061-SL | 2d | 2027-06-15 | 2027-06-16 | RHD4ENSDZ5APPSL170, RHD4CZ5C061SL3400 | -142d | 0d | Skilled labor [7.3 h]; Unskilled Labor [7.3 h]; Equipment Opreator [14.48 h]; Excavator-Poclain [7.3 h]; Dump Truck [7.3 h]; Lighting polesdouble arms, height of ( 12 ) meters [1 Unit] | 4,572 | C061 | Z5 | CONS | SL | Excavation | AFT |
| RHD4CZ5C061SL1200 |  | Installation for RC Base for Lighting Poles for Street Lighting Network - (RD-C-6 /1)-Z5-C061-SL | 2d | 2027-06-17 | 2027-06-19 | RHD4CZ5C061SL1100 | -142d | 0d | Skilled labor [7.3 h]; Unskilled Labor [7.3 h]; Equipment Opreator [14.48 h]; Excavator-Poclain [7.3 h]; Dump Truck [7.3 h]; Lighting polesdouble arms, height of ( 12 ) meters [2.5 Unit] | 11,430 | C061 | Z5 | CONS | SL | RC Base | AFT |
| RHD4CZ5C061SL1300 |  | Backfill for RC Base for Lighting Poles for Street Lighting Network - (RD-C-6 /1)-Z5-C061-SL | 2d | 2027-06-20 | 2027-06-21 | RHD4CZ5C061SL1200 | -142d | 0d | Skilled labor [7.3 h]; Unskilled Labor [7.3 h]; Equipment Opreator [14.48 h]; Excavator-Poclain [7.3 h]; Dump Truck [7.3 h]; Lighting polesdouble arms, height of ( 12 ) meters [0.5 Unit] | 2,286 | C061 | Z5 | CONS | SL | Backfill | AFT |
| RHD4CZ5C061SL1400 |  | Installation for Lighting Poles for Street Lighting Network - (RD-C-6 /1)-Z5-C061-SL | 2d | 2027-06-22 | 2027-06-23 | RHD4CZ5C061SL1300, RHD4PRSHLDOSSL1200, RHD4ENMSSL2000, RHD4ENMSSL2010, RHD4PRSHLSTAGSL1200 | -142d | 0d | Skilled labor [10.89 h]; Unskilled Labor [10.89 h]; Electrician [10.89 h]; Equipment Opreator [10.89 h]; Boom Truck [10.89 h]; Lighting polesdouble arms, height of ( 12 ) meters [6 Unit] | 27,432 | C061 | Z5 | CONS | SL | Poles Installation | AFT |
| RHD4CZ5C061SL1500 |  | Luminaire Installation for Lighting Poles for Street Lighting Network - (RD-C-6 /1)-Z5-C061-SL | 2d | 2027-06-24 | 2027-06-26 | RHD4CZ5C061SL1400, RHD4PRSHLDOSSL1300, RHD4PRSHLSTAGSL1300 | -142d | 0d | Unskilled Labor [29.08 h]; Electrician [14.48 h]; Equipment Opreator [5.77 h]; Boom Truck [5.77 h]; Street Lighting( LED) Luminaire of Output ?18553 lumen [20 Unit] | 12,740 | C061 | Z5 | CONS | SL | Luminaire Installation | AFT |
|  | 4644 | **RHD4-02-002-C061-(SL)-Street Lighting Feeder Pillars** |  | 2027-06-13 | 2027-06-26 |  |  |  |  |  |  |  |  |  |  |  |
| RHD4CZ5C061SL4100 |  | Leveling for Distribution Pillars for Street Lighting Network - (RD-C-6 /1)-Z5-C061-SL | 2d | 2027-06-13 | 2027-06-14 | RHD4CZ5C061SL3300 | -136d | 0d | Skilled labor [10.89 h]; Unskilled Labor [21.78 h]; Equipment Opreator [4.36 h]; Excavator-Poclain [2.18 h]; Boom Truck [2.18 h]; 0.6/1 KV Steet Lighting Feeder Pillar [0.15 Unit] | 3,438.15 | C061 | Z5 | CONS | SL | Leveling | AFT |
| RHD4CZ5C061SL4200 |  | Lean Concrete for Distribution Pillars for Street Lighting Network - (RD-C-6 /1)-Z5-C061-SL | 2d | 2027-06-15 | 2027-06-16 | RHD4CZ5C061SL4100 | -136d | 6d | Skilled labor [10.89 h]; Unskilled Labor [21.78 h]; Equipment Opreator [4.36 h]; Concrete Mixer Truck [2.18 h]; Concrete Pump [2.18 h]; 0.6/1 KV Steet Lighting Feeder Pillar [0.25 Unit] | 5,730.25 | C061 | Z5 | CONS | SL | Lean Concrete | AFT |
| RHD4CZ5C061SL4300 |  | Installation of Distribution Pillars for Street Lighting Network - (RD-C-6 /1)-Z5-C061-SL | 2d | 2027-06-24 | 2027-06-26 | RHD4CZ5C061SL4200, RHD4CZ5C061SL1400 | -142d | 0d | Skilled labor [10.89 h]; Unskilled Labor [43.56 h]; Electrician [21.78 h]; Equipment Opreator [10.89 h]; Boom Truck [10.89 h]; 0.6/1 KV Steet Lighting Feeder Pillar [0.6 Unit] | 13,752.6 | C061 | Z5 | CONS | SL | Installation | AFT |
|  | 4645 | **RHD4-02-002-C061-(SL)-Street Lighting Earthing System** |  | 2027-06-27 | 2027-06-28 |  |  |  |  |  |  |  |  |  |  |  |
| RHD4CZ5C061SL6100 |  | Installation of Earthing for Lighting Poles and Fedder Pillers for Street Lighting Network - (RD-C-6 /1)-Z5-C061-SL | 2d | 2027-06-27 | 2027-06-28 | RHD4CZ5C061SL4300, RHD4ENMSER2000, RHD4ENMSER2010, RHD4CZ5C061SL1500 | -142d | 0d | Skilled labor [2.18 h]; Unskilled Labor [2.18 h]; Equipment Opreator [4.36 h]; Excavator-Poclain [2.18 h]; Dump Truck [2.18 h]; Street Lighting Feeder pillars - ER [1 Unit]; Including lighting poles circuits - ER [2 Unit] | 2,354 | C061 | Z5 | CONS | SL | Installation | AFT |
|  | 4651 | **RHD4-02-002-Z5-C061-Telecommunications Network - TC** |  | 2027-01-26 | 2027-07-14 |  |  |  |  |  |  |  |  |  |  |  |
|  | 4652 | **RHD4-02-002-C061-(TC)-Telecommunications Ducts** |  | 2027-06-29 | 2027-07-14 |  |  |  |  |  |  |  |  |  |  |  |
| RHD4CZ5C061TC2100 |  | Excavation of HDPE Ducts for Telecom Network - (RD-C-6 /1)-Z5-C061-TC | 4d | 2027-06-29 | 2027-07-03 | RHD4CZ5C061TC3400, RHD4ENSDZ5APPTC190, RHD4CZ5C061SL6100 | -142d | 0d | Skilled labor [39.2 h]; Unskilled Labor [39.2 h]; Equipment Opreator [78.52 h]; Excavator-Poclain [39.2 h]; Dump Truck [39.2 h]; (6*50mm) HDPE ducts -TC [99.6 m]; (6*50mm+2*32mm) HDPE ducts -TC [6.3 m]; (2*32mm) HDPE ducts -TC [2.22 m] | 9,526.98 | C061 | Z5 | CONS | TC | Excavation | AFT |
| RHD4CZ5C061TC2200 |  | Installation of HDPE Ducts for Telecom Network - (RD-C-6 /1)-Z5-C061-TC | 6d | 2027-07-04 | 2027-07-10 | RHD4CZ5C061TC2100, RHD4PRSHLDOSTC1000, RHD4PRSHLSTAGTC1000 | -142d | 0d | Carpenter [5.88 h]; Skilled labor [58.92 h]; Unskilled Labor [58.92 h]; Steel Fixer [5.88 h]; (6*50mm) HDPE ducts -TC [323.7 m]; (6*50mm+2*32mm) HDPE ducts -TC [20.48 m]; (2*32mm) HDPE ducts -TC [7.21 m] | 30,962.69 | C061 | Z5 | CONS | TC | Installing | AFT |
| RHD4CZ5C061TC2400 |  | Backfilling of HDPE Ducts for Telecom Network - (RD-C-6 /1)-Z5-C061-TC | 4d | 2027-07-11 | 2027-07-14 | RHD4CZ5C061TC2200, RHD4CZ5C061TC5200 | -141d | 44d | Skilled labor [39.2 h]; Unskilled Labor [39.2 h]; Equipment Opreator [15.68 h]; Excavator-Poclain [15.68 h]; (6*50mm) HDPE ducts -TC [74.7 m]; (6*50mm+2*32mm) HDPE ducts -TC [4.72 m]; (2*32mm) HDPE ducts -TC [1.67 m] | 7,145.23 | C061 | Z5 | CONS | TC | Backfilling | AFT |
|  | 4653 | **RHD4-02-002-C061-(TC)-Telecommunications Manholes** |  | 2027-07-04 | 2027-07-07 |  |  |  |  |  |  |  |  |  |  |  |
| RHD4CZ5C061TC5100 |  | Excavation for Manholes for Telecom Network - (RD-C-6 /1)-Z5-C061-TC | 2d | 2027-07-04 | 2027-07-05 | RHD4CZ5C061TC2100, RHD4ENSDZ5APPTC190 | -139d | 0d | Skilled labor [6.86 h]; Unskilled Labor [6.86 h]; Equipment Opreator [5.45 h]; Excavator-Poclain [2.72 h]; Dump Truck [2.72 h]; Manhole Type 1 - TC [0.15 nr]; Manhole Type 2 - TC [0.3 nr] | 3,033.45 | C061 | Z5 | CONS | TC | Excavation | AFT |
| RHD4CZ5C061TC5200 |  | Installation of Manholes for Telecom Network - (RD-C-6 /1)-Z5-C061-TC | 2d | 2027-07-06 | 2027-07-07 | RHD4CZ5C061TC5100, RHD4CZ5C061TC2200 SS, RHD4PRSHLDOSTC1200, RHD4PRSHLSTAGTC1200 | -139d | 2d | Skilled labor [6.86 h]; Unskilled Labor [6.86 h]; Equipment Opreator [2.72 h]; Boom Truck [2.72 h]; Manhole Type 1 - TC [0.85 nr]; Manhole Type 2 - TC [1.7 nr] | 17,189.55 | C061 | Z5 | CONS | TC | Installation | AFT |
|  | 4654 | **RHD4-02-002-C061-(TC)-Telecomminications Road Crossings** |  | 2027-01-26 | 2027-02-03 |  |  |  |  |  |  |  |  |  |  |  |
| RHD4CZ5C061TC3100 |  | Excavation for Road Crossings for Telecom Network - (RD-C-6 /1)-Z5-C061-TC | 2d | 2027-01-26 | 2027-01-27 | RHD4ENSDZ5APPTC190, RHD4CZ5C061ST3101 | -148d | 0d | Skilled labor [9.37 h]; Unskilled Labor [9.37 h]; Equipment Opreator [18.73 h]; Excavator-Poclain [9.37 h]; Dump Truck [9.37 h]; Road crossing ducts, (6*50mm) HDPE -TC [1.72 m] | 65.36 | C061 | Z5 | CONS | TC | Excavation | bef |
| RHD4CZ5C061TC3200 |  | Installation of Road Crossings for Telecom Network - (RD-C-6 /1)-Z5-C061-TC | 2d | 2027-01-28 | 2027-01-30 | RHD4CZ5C061TC3100, RHD4PRSHLDOSTC1100, RHD4PRSHLSTAGTC1100 | -148d | 0d | Carpenter [1.2 h]; Skilled labor [12.52 h]; Unskilled Labor [12.52 h]; Steel Fixer [1.2 h]; Road crossing ducts, (6*50mm) HDPE -TC [1.72 m] | 65.36 | C061 | Z5 | CONS | TC | Installing | bef |
| RHD4CZ5C061TC3300 |  | Pouring of Road Crossings for Telecom Network - (RD-C-6 /1)-Z5-C061-TC | 2d | 2027-01-31 | 2027-02-01 | RHD4CZ5C061TC3200, RHD4CZ5L07ST3502 | -148d | 0d | Skilled labor [12.52 h]; Unskilled Labor [12.52 h]; Equipment Opreator [5.01 h]; Concrete Mixer Truck [2.5 h]; Concrete Pump [2.5 h]; Road crossing ducts, (6*50mm) HDPE -TC [11.18 m] | 424.84 | C061 | Z5 | CONS | TC | Pouring | bef |
| RHD4CZ5C061TC3400 |  | Backfilling of Road Crossings for Telecom Network - (RD-C-6 /1)-Z5-C061-TC | 2d | 2027-02-02 | 2027-02-03 | RHD4CZ5C061TC3300 | -148d | 14d | Skilled labor [9.37 h]; Unskilled Labor [9.37 h]; Equipment Opreator [3.7 h]; Excavator-Poclain [3.7 h]; Road crossing ducts, (6*50mm) HDPE -TC [2.58 m] | 98.04 | C061 | Z5 | CONS | TC | Backfilling | bef |

| ID | WBS | Activity | Duration | Start | Finish | Predecessors | Total float | Free float | Resources | Cost | RDH4-01-001-Road and Block Names-1 | RDH4-01-001-Zones-1 | RDH4-01-001-Phases-1 | RDH4-01-001-Networks-1 | RDH4-01-001-Work Method-1 | RDH4-01-001-MENEM |
| --- | --- | --- | --- | --- | --- | --- | --- | --- | --- | --- | --- | --- | --- | --- | --- | --- |
|  | 4655 | **RHD4-02-002-Z5-C061-Information and Communication Technologies - ICT** |  | 2027-01-26 | 2027-08-30 |  |  |  |  |  |  |  |  |  |  |  |
|  | 4656 | **RHD4-02-002-C061-(ICT)-Information and Communication Technologies Ducts** |  | 2027-07-11 | 2027-08-30 |  |  |  |  |  |  |  |  |  |  |  |
| RHD4CZ5C061ICT2100 |  | Excavation of HDPE Ducts for ICT Network - (RD-C-6 /1)-Z5-C061-ICT | 4d | 2027-07-11 | 2027-07-14 | RHD4ENSDZ5APPICT200, RHD4CZ5C061TC2200 | -142d | 0d | Skilled labor [40.19 h]; Unskilled Labor [40.19 h]; Equipment Opreator [80.48 h]; Excavator-Poclain [40.19 h]; Dump Truck [40.19 h]; (2*50mm) HDPE ducts -ICT [96.1 m]; (2*50mm+2*32mm) HDPE ducts -ICT [7.5 m]; (2*32mm) HDPE ducts -ICT [7.22 m] | 4,437.42 | C061 | Z5 | CONS | ICT | Excavation | AFT |
| RHD4CZ5C061ICT2200 |  | Installation of HDPE Ducts for ICT Network - (RD-C-6 /1)-Z5-C061-ICT | 6d | 2027-07-15 | 2027-07-21 | RHD4CZ5C061ICT2100, RHD4PRSHLDOSICT1000, RHD4PRSHLSTAGICT1000 | -142d | 30d | Carpenter [5.99 h]; Skilled labor [60.33 h]; Unskilled Labor [60.33 h]; Steel Fixer [5.99 h]; (2*50mm) HDPE ducts -ICT [312.32 m]; (2*50mm+2*32mm) HDPE ducts -ICT [24.38 m]; (2*32mm) HDPE ducts -ICT [23.48 m] | 14,421.6 | C061 | Z5 | CONS | ICT | Installing | AFT |
| RHD4CZ5C061ICT2400 |  | Backfilling of HDPE Ducts for ICT Network - (RD-C-6 /1)-Z5-C061-ICT | 4d | 2027-08-26 | 2027-08-30 | RHD4CZ5C061ICT2200, RHD4CZ5C061ICT5200, RHD4CZ5C061MV5400, RHD4CZ5C061MV3400, RHD4CZ5C061MV3401 | -172d | 0d | Skilled labor [40.19 h]; Unskilled Labor [40.19 h]; Equipment Opreator [16.12 h]; Excavator-Poclain [16.12 h]; (2*50mm) HDPE ducts -ICT [72.08 m]; (2*50mm+2*32mm) HDPE ducts -ICT [5.62 m]; (2*32mm) HDPE ducts -ICT [5.42 m] | 3,328.06 | C061 | Z5 | CONS | ICT | Backfilling | AFT |
|  | 4657 | **RHD4-02-002-C061-(ICT)-Information and Communication Technologies Manholes** |  | 2027-07-15 | 2027-07-21 |  |  |  |  |  |  |  |  |  |  |  |
| RHD4CZ5C061ICT5100 |  | Excavation for Manholes for ICT Network - (RD-C-6 /1)-Z5-C061-ICT | 3d | 2027-07-15 | 2027-07-18 | RHD4CZ5C061ICT2100, RHD4ENSDZ5APPICT200 | -142d | 0d | Skilled labor [10.89 h]; Unskilled Labor [10.89 h]; Equipment Opreator [8.71 h]; Excavator-Poclain [4.36 h]; Dump Truck [4.36 h]; Manhole Type 1 - ICT [0.6 nr]; Manhole Type 2 - ICT [0.3 nr] | 4,853.7 | C061 | Z5 | CONS | ICT | Excavation | AFT |
| RHD4CZ5C061ICT5200 |  | Installation of Manholes for ICT Network - (RD-C-6 /1)-Z5-C061-ICT | 3d | 2027-07-19 | 2027-07-21 | RHD4CZ5C061ICT5100, RHD4PRSHLDOSICT1200, RHD4PRSHLSTAGICT1200 | -142d | 30d | Skilled labor [10.89 h]; Unskilled Labor [10.89 h]; Equipment Opreator [4.36 h]; Boom Truck [4.36 h]; Manhole Type 1 - ICT [3.4 nr]; Manhole Type 2 - ICT [1.7 nr] | 27,504.3 | C061 | Z5 | CONS | ICT | Installation | AFT |
|  | 4658 | **RHD4-02-002-C061-(ICT)-Information and Communication Technologies Road Crossings** |  | 2027-01-26 | 2027-02-20 |  |  |  |  |  |  |  |  |  |  |  |
| RHD4CZ5C061ICT3100 |  | Excavation for Road Crossings for ICT Network - (RD-C-6 /1)-Z5-C061-ICT | 2d | 2027-01-26 | 2027-01-27 | RHD4ENSDZ5APPICT200, RHD4CZ5C061ST3101 | -148d | 14d | Skilled labor [9.6 h]; Unskilled Labor [9.6 h]; Equipment Opreator [19.06 h]; Excavator-Poclain [9.6 h]; Dump Truck [9.6 h]; Road crossing ducts, (2*50mm) HDPE -ICT [1.75 m] | 66.5 | C061 | Z5 | CONS | ICT | Excavation | bef |
| RHD4CZ5C061ICT3200 |  | Installation of Road Crossings for ICT Network - (RD-C-6 /1)-Z5-C061-ICT | 2d | 2027-02-14 | 2027-02-15 | RHD4CZ5C061ICT3100, RHD4PRSHLDOSICT1100, RHD4PRSHLSTAGICT1100 | -162d | 0d | Carpenter [1.31 h]; Skilled labor [12.74 h]; Unskilled Labor [12.74 h]; Steel Fixer [1.31 h]; Road crossing ducts, (2*50mm) HDPE -ICT [1.75 m] | 66.5 | C061 | Z5 | CONS | ICT | Installing | bef |
| RHD4CZ5C061ICT3300 |  | Pouring of Road Crossings for ICT Network - (RD-C-6 /1)-Z5-C061-ICT | 2d | 2027-02-16 | 2027-02-17 | RHD4CZ5C061ICT3200 | -162d | 0d | Skilled labor [12.74 h]; Unskilled Labor [12.74 h]; Equipment Opreator [5.12 h]; Concrete Mixer Truck [2.5 h]; Concrete Pump [2.5 h]; Road crossing ducts, (2*50mm) HDPE -ICT [11.38 m] | 432.25 | C061 | Z5 | CONS | ICT | Pouring | bef |
| RHD4CZ5C061ICT3400 |  | Backfilling of Road Crossings for ICT Network - (RD-C-6 /1)-Z5-C061-ICT | 2d | 2027-02-18 | 2027-02-20 | RHD4CZ5C061ICT3300, RHD4CZ5C061ST2500 | -162d | 0d | Skilled labor [9.6 h]; Unskilled Labor [9.6 h]; Equipment Opreator [3.81 h]; Excavator-Poclain [3.81 h]; Road crossing ducts, (2*50mm) HDPE -ICT [2.62 m] | 99.75 | C061 | Z5 | CONS | ICT | Backfilling | bef |
|  | 4646 | **RHD4-02-002-Z5-C061-Landscape Network - LS** |  |  |  |  |  |  |  |  |  |  |  |  |  |  |
|  | 4647 | **RHD4-02-002-C061-(LS)-Landscape Lighting cables** |  |  |  |  |  |  |  |  |  |  |  |  |  |  |
|  | 4648 | **RHD4-02-002-C061-(LS)-Landscape Feeder Pillars** |  |  |  |  |  |  |  |  |  |  |  |  |  |  |
|  | 4649 | **RHD4-02-002-C061-(LS)-Landscape Bollard Poles** |  |  |  |  |  |  |  |  |  |  |  |  |  |  |
|  | 4650 | **RHD4-02-002-C061-(LS)-Landscape Feeder Pillars Earthing** |  |  |  |  |  |  |  |  |  |  |  |  |  |  |
|  | 4659 | **RHD4-02-002-Z5-C061-Security Network - CCTV** |  | 2027-08-31 | 2027-10-07 |  |  |  |  |  |  |  |  |  |  |  |
|  | 4660 | **RHD4-02-002-C061-(CCTV)-Civil Works** |  | 2027-08-31 | 2027-09-11 |  |  |  |  |  |  |  |  |  |  |  |
| RHD4CZ5C061CCTV2100 |  | Civil Works for Security Network - (RD-C-6 /1)-Z5-C061-CCTV | 10d | 2027-08-31 | 2027-09-11 | RHD4CZ5C061ICT2400 | -172d | 0d | Skilled labor [435.68 h]; Unskilled Labor [871.2 h]; Equipment Opreator [435.68 h]; Excavator-Poclain [108.9 h]; Dump Truck [108.9 h]; Civil works Digging, trenching, laying pipes Meter with supply and installation of Manholes and for power feeding sources related to all towers and poles – (from 35-meter pole to control room and from related UPS camersa distribution boards till overall 2 [300 m] | 34,800 | C061 | Z5 | CONS | CCTV | Civil Works | AFT |
|  | 4661 | **RHD4-02-002-C061-(CCTV)-CCTV Poles** |  | 2027-09-12 | 2027-09-22 |  |  |  |  |  |  |  |  |  |  |  |
| RHD4CZ5C061CCTV1100 |  | Excavation for RC Base for CCTV Poles for Security Network - (RD-C-6 /1)-Z5-C061-CCTV | 2d | 2027-09-12 | 2027-09-13 | RHD4CZ5C061CCTV2100, RHD4ENSDZ5APPCCTV210 | -172d | 0d | Skilled labor [4.32 h]; Unskilled Labor [4.32 h]; Equipment Opreator [8.64 h]; Excavator-Poclain [2.18 h]; Dump Truck [2.18 h]; 25 Meters pole for CCTV Cameras [0.1 nr] | 14,090.2 | C061 | Z5 | CONS | CCTV | Excavation | AFT |
| RHD4CZ5C061CCTV1200 |  | Installation for RC Base for CCTV Poles for Security Network - (RD-C-6 /1)-Z5-C061-CCTV | 2d | 2027-09-14 | 2027-09-15 | RHD4CZ5C061CCTV1100 | -172d | 0d | Skilled labor [4.32 h]; Unskilled Labor [4.32 h]; Equipment Opreator [8.64 h]; Excavator-Poclain [2.18 h]; Dump Truck [2.18 h]; 25 Meters pole for CCTV Cameras [0.25 nr] | 35,225.5 | C061 | Z5 | CONS | CCTV | RC Base | AFT |
| RHD4CZ5C061CCTV1300 |  | Backfill for RC Base for CCTV Poles for Security Network - (RD-C-6 /1)-Z5-C061-CCTV | 2d | 2027-09-16 | 2027-09-18 | RHD4CZ5C061CCTV1200 | -172d | 0d | Skilled labor [2.88 h]; Unskilled Labor [2.88 h]; Equipment Opreator [5.44 h]; Excavator-Poclain [1.42 h]; Dump Truck [1.42 h]; 25 Meters pole for CCTV Cameras [0.05 nr] | 7,045.1 | C061 | Z5 | CONS | CCTV | Backfill | AFT |
| RHD4CZ5C061CCTV1400 |  | Installation for CCTV Poles for Security Network - (RD-C-6 /1)-Z5-C061-CCTV | 2d | 2027-09-19 | 2027-09-20 | RHD4CZ5C061CCTV1300, RHD4PRSHLDOSCCTV1000, RHD4PRSHLSTACCTV1000 | -172d | 0d | Skilled labor [7.2 h]; Unskilled Labor [14.56 h]; Electrician [7.2 h]; Equipment Opreator [7.2 h]; Boom Truck [3.59 h]; 25 Meters pole for CCTV Cameras [0.6 nr] | 84,541.2 | C061 | Z5 | CONS | CCTV | Installation | AFT |
| RHD4CZ5C061CCTV1500 |  | Protection post Installation for CCTV Poles for Security Network - (RD-C-6 /1)-Z5-C061-CCTV | 2d | 2027-09-21 | 2027-09-22 | RHD4CZ5C061CCTV1400 | -172d | 0d | Skilled labor [21.76 h]; Unskilled Labor [43.52 h]; Supply and Installation of minimum 4 Protection Post for each pole or tower with pipe ?220*6mm THK. [1 nr] | 4,903 | C061 | Z5 | CONS | CCTV | Protection post | AFT |

| ID | WBS | Activity | Duration | Start | Finish | Predecessors | Complete | Planned start | Planned finish | Total float | Free float | Resources | Cost | Actual cost | RDH4-01-001-Road and Block Names-1 | RDH4-01-001-Zones-1 | RDH4-01-001-Phases-1 | RDH4-01-001-Networks-1 | RDH4-01-001-Work Method-1 | RDH4-01-001-MENEM |
| --- | --- | --- | --- | --- | --- | --- | --- | --- | --- | --- | --- | --- | --- | --- | --- | --- | --- | --- | --- | --- |
|  | 4662 | **RHD4-02-002-C061-(CCTV)-Camera** |  | 2027-09-25 | 2027-09-26 |  |  |  |  |  |  |  |  |  |  |  |  |  |  |  |
| RHD4CZ5C061CCTV3100 |  | Installation for Cameras for Security Network - (RD-C-6 /1)-Z5-C061-CCTV | 2d | 2027-09-25 | 2027-09-26 | RHD4CZ5C061CCTV1400, RHD4CZ5C061CCTV4100, RHD4PRSHLDOSCCTV1100, RHD4PRSHLSTACCTV1100, RHD4CZ5C061CCTV1500 |  |  |  | -172d | 0d | Unskilled Labor [32.64 h]; Electrician [16.32 h]; Outdoor Camera, 5MP resolution, day/night, fixed bullet camera providing Forensic WDR. [2 nr]; Outdoor PTZ with IR, HDTV 1080 and 31x optical, 12x digital, total 372x zoom, H264/265 with Motion JPEG. [1 nr] | 44,801 |  | C061 | Z5 | CONS | CCTV | Installation | AFT |
|  | 4663 | **RHD4-02-002-C061-(CCTV)-Power and Infrastructure** |  | 2027-09-21 | 2027-09-26 |  |  |  |  |  |  |  |  |  |  |  |  |  |  |  |
| RHD4CZ5C061CCTV4100 |  | Installation of Power outlet, UPS and midspan for PTZ Camerafor Cameras for Security Network - (RD-C-6 /1)-Z5-C061-CCTV | 2d | 2027-09-21 | 2027-09-22 | RHD4CZ5C061CCTV1400, RHD4PRSHLDOSCCTV1300, RHD4PRSHLSTACCTV1300 |  |  |  | -172d | 0d | Skilled labor [8.64 h]; Unskilled Labor [34.88 h]; Electrician [17.44 h]; Equipment Opreator [17.44 h]; Excavator-Poclain [4.36 h]; Dump Truck [4.36 h]; Outdoor ready IP66-rated midspan for PTZ Camera (The outdoor- ready midspan should be IP66/IP67- and NEMA 4X-rated [1 nr]; 1.2KVA Industrial type UPS located at FEC remote poles [1 nr] | 9,103 |  | C061 | Z5 | CONS | CCTV | Power | AFT |
| RHD4CZ5C061CCTV4200 |  | Short Range Wireless PoP wireless Bridgefor CCTV Poles for Security Network - (RD-C-6 /1)-Z5-C061-CCTV | 2d | 2027-09-25 | 2027-09-26 | RHD4CZ5C061CCTV4100 |  |  |  | -172d | 0d | Skilled labor [21.76 h]; Unskilled Labor [43.52 h]; Electrician [21.76 h]; Equipment Opreator [43.52 h]; Excavator-Poclain [10.89 h]; Dump Truck [10.89 h]; Short Range wireless point to point wireless bridge [4 nr] | 58,548 |  | C061 | Z5 | CONS | CCTV | Wireless Pop | AFT |
|  | 4665 | **RHD4-02-002-C061-(CCTV)-CCTV Panels and Components** |  | 2027-09-27 | 2027-10-07 |  |  |  |  |  |  |  |  |  |  |  |  |  |  |  |
| RHD4CZ5C061CCTV6100 |  | Installation for CCTV Panels for Security Network - (RD-C-6 /1)-Z5-C061-CCTV | 10d | 2027-09-27 | 2027-10-07 | RHD4CZ5C061CCTV4200, RHD4CZ5C061CCTV3100, RHD4PRSHLDOSCCTV1200, RHD4PRSHLSTACCTV1200, RHD4PRLOLSTACCTV1001 |  |  |  | -172d | 0d | Skilled labor [217.76 h]; Unskilled Labor [653.44 h]; Electrician [217.76 h]; Pole mounted Filed Equipment cabinet (FEC) , with fan and ventilation, NEMEX 4X ,door, minimum size (600x600x400mm) , the cabinet/enclosurE [1 nr]; 8 Port Industrial PoE Switch 10/1000BaseT (-40 deg to +70 deg. Celsius) for remote poles and as specifiedin item 15. [1 nr]; UTP CAT6 Patch Cord , connect the industrial switch with the cameras, and radio wireless antenna [8 nr] | 22,857 |  | C061 | Z5 | CONS | CCTV | Equipment | AFT |
|  | 4298 | **RHD4-02-002-Z5-L08** |  | 2026-05-20 | 2028-02-03 |  |  |  |  |  |  |  |  |  |  |  |  |  |  |  |
|  | 4329 | **RHD4-02-002-Z5-L08-Crossings Sewage Network - SWCr** |  |  |  |  |  |  |  |  |  |  |  |  |  |  |  |  |  |  |
|  | 4339 | **RHD4-02-002-L08-(SWCr)-MH Works - 1200 mm diameter** |  |  |  |  |  |  |  |  |  |  |  |  |  |  |  |  |  |  |
|  | 4340 | **RHD4-02-002-L08-(SWCr)-MH Works - 1200 mm diameter with Back drop** |  |  |  |  |  |  |  |  |  |  |  |  |  |  |  |  |  |  |
|  | 4330 | **RHD4-02-002-L08-(SWCr)-GRP Pipes - 300 mm diameter** |  |  |  |  |  |  |  |  |  |  |  |  |  |  |  |  |  |  |
|  | 4335 | **RHD4-02-002-L08-(SWCr)-UPVC Pipes - 200 mm diameter** |  |  |  |  |  |  |  |  |  |  |  |  |  |  |  |  |  |  |
|  | 4336 | **RHD4-02-002-L08-(SWCr)-HDPE Pipes - 250 mm diameter** |  |  |  |  |  |  |  |  |  |  |  |  |  |  |  |  |  |  |
|  | 4373 | **RHD4-02-002-Z5-L08-Crossings Potable Network - PTCr** |  |  |  |  |  |  |  |  |  |  |  |  |  |  |  |  |  |  |
|  | 4375 | **RHD4-02-002-L08-(PTCr)-HDPE Pipes - 160 mm diameter** |  |  |  |  |  |  |  |  |  |  |  |  |  |  |  |  |  |  |
|  | 4374 | **RHD4-02-002-L08-(PTCr)-HDPE Pipes - 110 mm diameter** |  |  |  |  |  |  |  |  |  |  |  |  |  |  |  |  |  |  |
|  | 4379 | **RHD4-02-002-L08-(PTCr)-Gate Valves (Direct Buried)** |  |  |  |  |  |  |  |  |  |  |  |  |  |  |  |  |  |  |
|  | 4420 | **RHD4-02-002-Z5-L08-Crossings Irrigation Network - IRRC** |  |  |  |  |  |  |  |  |  |  |  |  |  |  |  |  |  |  |
|  | 4421 | **RHD4-02-002-L08-(IRRC)-HDPE Pipes - 160 mm diameter** |  |  |  |  |  |  |  |  |  |  |  |  |  |  |  |  |  |  |
|  | 4429 | **RHD4-02-002-L08-(IRRC)-Gate Valves (Direct Buried)** |  |  |  |  |  |  |  |  |  |  |  |  |  |  |  |  |  |  |
|  | 4477 | **RHD4-02-002-Z5-L08-Road Works - RD** |  | 2026-05-20 | 2028-02-03 |  |  |  |  |  |  |  |  |  |  |  |  |  |  |  |
|  | 4478 | **RHD4-02-002-L08-(RD)-Subgrade** |  | 2026-05-20 | 2026-08-03 |  |  |  |  |  |  |  |  |  |  |  |  |  |  |  |
| RHD4CZ5L08RD1100 |  | Supply, lay and compaction subgrade compacted thickness 300 mm for Roads - (RD-L-8)-Z5-L08-RD(Completed) | 4d | 2026-05-20 A | 2026-08-03 A | RHD4ENSDZ5APPRD220, RHD4ENSDZ5APPEW100 SS, RHD4CZ5L08ST3302, RHD4CZ5L08ST3300, RHD4CZ5L08ST1509, RHD4CZ5L08TC3400 | 100% | 2026-08-15 | 2026-08-18 |  |  | Skilled labor [66.1 h]; Unskilled Labor [132.1 h]; Electrician [66.1 h]; Equipment Opreator [451.2 h]; Water Truck [21.78 h]; Roller compactor [33 h]; Grader [66.1 h]; Dump Truck [330.3 h]; Subgrade [4425.22 m3] | 84,079.18 | 84,079.18 | L08 | Z5 | CONS | RD | Subgrade | bef |

| ID | WBS | Activity | Duration | Start | Finish | Predecessors | Complete | Remaining | Planned start | Planned finish | Total float | Free float | Resources | Cost | Actual cost | RDH4-01-001-Road and Block Names-1 | RDH4-01-001-Zones-1 | RDH4-01-001-Phases-1 | RDH4-01-001-Networks-1 | RDH4-01-001-Work Method-1 | RDH4-01-001-MENEM |
| --- | --- | --- | --- | --- | --- | --- | --- | --- | --- | --- | --- | --- | --- | --- | --- | --- | --- | --- | --- | --- | --- |
|  | 4479 | **RHD4-02-002-L08-(RD)-Aggregate Base Course** |  | 2027-02-10 | 2027-02-17 |  |  |  |  |  |  |  |  |  |  |  |  |  |  |  |  |
| RHD4CZ5L08RD2100 |  | Supply, lay and compaction Aggregate base course compacted thickness 300 mmfor Roads - (RD-L-8)-Z5-L08-RD | 7d | 2027-02-10 | 2027-02-17 | RHD4PRSHLDOSRD1000, RHD4PRSHLSTAGRD1000, RHD4ENSDZ5APPRD220, RHD4ENSDZ5APPEW100 SS, RHD4CZ5L08RD1100 |  |  |  |  | -152d | 0d | Skilled labor [34.09 h]; Unskilled Labor [68.17 h]; Equipment Opreator [431.37 h]; Water Truck [22.54 h]; Roller compactor [68.17 h]; Grader [68.17 h]; Dump Truck [272.59 h]; Aggregate Base Courses [2779.48 m3] | 158,430.36 |  | L08 | Z5 | CONS | RD | ABC | bef |
|  | 4480 | **RHD4-02-002-L08-(RD)-Bituminous base course Two Layers, including (MC1)&(RC2)** |  | 2027-02-18 | 2027-11-13 |  |  |  |  |  |  |  |  |  |  |  |  |  |  |  |  |
| RHD4CZ5L08RD3100 |  | Supply, lay and Asphaltic base course including Prime Coat (MC1) for 1st Layer - (RD-L-8)-Z5-L08-RD | 2d | 2027-02-18 | 2027-02-20 | RHD4CZ5L08RD2100, RHD4PRSHLDOSRD1100, RHD4ENMSASPH2000, RHD4ENMSASPH2010, RHD4PRSHLSTAGRD1100 |  |  |  |  | -152d | 9d | Skilled labor [10.78 h]; Unskilled Labor [64.8 h]; Equipment Opreator [161.94 h]; Bobcat [10.78 h]; Roller compactor [10.78 h]; Asphalt Paver [10.78 h]; Rubber Compactor [21.6 h]; MC1/RC2 Sprinkler [10.78 h]; Dump Truck [97.14 h]; Bituminous base course (Grading I - Class A), including Prime coat (MC1) & tack coate (RC2) [395.06 m3] | 188,838.68 |  | L08 | Z5 | CONS | RD | 150 mm | AFT |
| RHD4CZ5L08RD3200 |  | Supply, lay and Asphaltic base course including Tack Coat (RC2) for 2nd Layer - (RD-L-8)-Z5-L08-RD | 2d | 2027-11-10 | 2027-11-13 | RHD4PRSHLDOSRD1100, RHD4PRSHLSTAGRD1100, RHD4CZ5L08ICT2400 |  |  |  |  | -138.02d | 0d | Skilled labor [10.78 h]; Unskilled Labor [64.8 h]; Equipment Opreator [161.94 h]; Bobcat [10.78 h]; Roller compactor [10.78 h]; Asphalt Paver [10.78 h]; Rubber Compactor [21.6 h]; MC1/RC2 Sprinkler [10.78 h]; Dump Truck [97.14 h]; Bituminous base course (Grading I - Class A), including Prime coat (MC1) & tack coate (RC2) [395.06 m3] | 188,838.68 |  | L08 | Z5 | CONS | RD | 150 mm | AFT |
|  | 4482 | **RHD4-02-002-L08-(RD)-Precast Concrete Curb** |  | 2027-11-13 | 2027-11-21 |  |  |  |  |  |  |  |  |  |  |  |  |  |  |  |  |
| RHD4CZ5L08RD5100 |  | Supply and installation Precast Concrete Kerb for Roads - (RD-L-8)-Z5-L08-RD | 7d | 2027-11-13 | 2027-11-21 | RHD4CZ5L08RD3200, RHD4PRSHLDOSRD1200, RHD4ENMSRD2000, RHD4ENMSRD2010, RHD4PRSHLSTAGRD1200 |  |  |  |  | -138.02d | 0d | Mason [213.23 h]; Skilled labor [71.11 h]; Unskilled Labor [213.23 h]; Equipment Opreator [142.12 h]; Bobcat [71.11 h]; Concrete Mixer Truck [71.11 h]; Precast Concrete Curbstone, type K1 [2119 m]; Precast Flush concrete Curbstone K3 [818.12 m] | 161,541.33 |  | L08 | Z5 | CONS | RD | Curbs | AFT |
|  | 4485 | **RHD4-02-002-L08-(RD)-Traffic Signage** |  | 2027-11-21 | 2027-11-29 |  |  |  |  |  |  |  |  |  |  |  |  |  |  |  |  |
| RHD4CZ5L08RD8100 |  | Installation of Traffic Signage for Road Network - (RD-L-8)-Z5-L08-RD | 7d | 2027-11-21 | 2027-11-29 | RHD4CZ5L08RD5100, RHD4PRSHLDOSRD1600, RHD4PRSHLSTAGRD1600 |  |  |  |  | -138.02d | 0d | Skilled labor [152.46 h]; Unskilled Labor [76.23 h]; Electrician [26.14 h]; Equipment Opreator [25.7 h]; Boom Truck [15.25 h]; Concrete Mixer Truck [10.45 h]; Traffic signs, ground mounted, 1 Sheet Aluminium, (breakaway)Single post [23 nr] | 28,198 |  | L08 | Z5 | CONS | RD | Traffic Signage | AFT |
|  | 4483 | **RHD4-02-002-L08-(RD)-Precast Interlocking Block Pavers** |  | 2027-11-29 | 2027-12-09 |  |  |  |  |  |  |  |  |  |  |  |  |  |  |  |  |
| RHD4CZ5L08RD6100 |  | Interlocking block pavers for sidewalk-footpath for Side walks and Parking areas - (RD-L-8)-Z5-L08-RD | 9d | 2027-11-29 | 2027-12-09 | RHD4CZ5L08RD8100, RHD4PRSHLDOSRD1300, RHD4ENMSRD2000, RHD4ENMSRD2010, RHD4PRSHLSTAGRD1300 |  |  |  |  | -122.02d | 0d | Skilled labor [177.84 h]; Unskilled Labor [266.7 h]; Equipment Opreator [288.92 h]; Boom Truck [88.87 h]; Bobcat [88.87 h]; Concrete Mixer Truck [88.87 h]; Water Truck [22.22 h]; Interlock 80 mm thick Pavers for parking including sand fill [2041 m2] | 151,034 |  | L08 | Z5 | CONS | RD | Interlocking | AFT |
|  | 4481 | **RHD4-02-002-L08-(RD)-Bituminous concrete wearing course including tack coat (RC2)** |  | 2027-12-09 | 2027-12-12 |  |  |  |  |  |  |  |  |  |  |  |  |  |  |  |  |
| RHD4CZ5L08RD4100 |  | Supply, lay and compaction Asphaltic wearing course including tack Coat (RC2)for Road Network - (RD-L-8)-Z5-L08-RD | 2d | 2027-12-09 | 2027-12-12 | RHD4CZ5L08RD5100, RHD4CZ5L08RD6100 |  |  |  |  | -122.02d | 7d | Skilled labor [11.87 h]; Unskilled Labor [71.55 h]; Equipment Opreator [178.82 h]; Bobcat [11.87 h]; Roller compactor [11.87 h]; Asphalt Paver [11.87 h]; Rubber Compactor [23.85 h]; MC1/RC2 Sprinkler [11.87 h]; Dump Truck [107.27 h]; Bituminous concrete wearing course, (Grading I - Class A), including tack coat (RC2) [568.52 m3] | 308,706.36 |  | L08 | Z5 | CONS | RD | 50 mm | AFT |
|  | 4484 | **RHD4-02-002-L08-(RD)-Pavement Marking** |  | 2028-01-31 | 2028-02-03 |  |  |  |  |  |  |  |  |  |  |  |  |  |  |  |  |
| RHD4CZ5L08RD7100 |  | Pavement Markings for Road Network - (RD-L-8)-Z5-L08-RD | 3d | 2028-01-31 | 2028-02-03 | RHD4PRSHLDOSRD1500, RHD4PRSHLSTAGRD1500, RHD4CZ6C062RD7100 |  |  |  |  | -190.02d | 5.98d | Skilled labor [26.79 h]; Unskilled Labor [53.6 h]; Equipment Opreator [26.79 h]; Road Marking Machine [26.79 h]; Retroreflective Thermoplastic White Traffic Markings [238.54 m2]; Retroreflective Thermoplastic Yellow, Traffic Markings [178.35 m2]; Retroreflective raised pavement markers (cat eyes) [226 nr] | 20,607.59 |  | L08 | Z5 | CONS | RD | Pavement Marking | AFT |
|  | 4302 | **RHD4-02-002-Z5-L08-Storm Network - ST** |  | 2026-08-04 | 2027-02-27 |  |  |  |  |  |  |  |  |  |  |  |  |  |  |  |  |
|  | 4321 | **RHD4-02-002-L08-(ST)-MH Works - 2000 mm diameter** |  | 2026-08-04 | 2027-02-14 |  |  |  |  |  |  |  |  |  |  |  |  |  |  |  |  |
| RHD4CZ5L08ST3102 |  | Excavation and PC Blinding works for MH 2000 mm - (RD-L-8)-Z5-L08-ST | 3d | 2026-08-04 A | 2027-01-28 | RHD4ENSDZ5APPST110, RHD4ENMSST2000, RHD4CZ5C051ST3101 | 71% | 3d | 2026-07-28 | 2026-07-30 | -193d | 0d | Skilled labor [25.37 h]; Unskilled Labor [25.37 h]; Equipment Opreator [40.62 h]; Excavator-Poclain [25.37 h]; Water Truck [2.5 h]; Dump Truck [12.74 h]; MH (2000mm Diameter) - ST - depth 2.51 - 3.5m [1.75 nr] | 38,232.25 |  | L08 | Z5 | CONS | ST | Excavation | bef |
| RHD4CZ5L08ST3202 |  | Installation of Base for MH 2000 mm - (RD-L-8)-Z5-L08-ST | 4d | 2026-10-27 A | 2027-02-02 | RHD4CZ5L08ST3102, RHD4PRSHLSTAGST1604 |  | 4d | 2026-10-27 | 2026-10-31 | -193d | 0d | Skilled labor [38.12 h]; Unskilled Labor [38.12 h]; Equipment Opreator [15.25 h]; Boom Truck [7.62 h]; Concrete Mixer Truck [7.62 h]; MH (2000mm Diameter) - ST - depth 2.51 - 3.5m [1.75 nr] | 38,232.25 | 27,309.3 | L08 | Z5 | CONS | ST | Installing Base | bef |
| RHD4CZ5L08ST3302 |  | MH Ring and C.Slab works and Backfilling works for MH 2000 mm - (RD-L-8)-Z5-L08-ST | 4d | 2027-02-03 | 2027-02-07 | RHD4CZ5L08ST3202, RHD4PRSHLDOSST1604 |  |  |  |  | -193d | 0d | Skilled labor [38.12 h]; Unskilled Labor [38.12 h]; Equipment Opreator [26.68 h]; Boom Truck [15.25 h]; Concrete Mixer Truck [11.43 h]; MH (2000mm Diameter) - ST - depth 2.51 - 3.5m [2.45 nr] | 53,525.15 |  | L08 | Z5 | CONS | ST | Installing Rings | bef |
| RHD4CZ5L08ST3402 |  | Steel Cover for MH 2000 mm - (RD-L-8)-Z5-L08-ST | 3d | 2027-02-08 | 2027-02-10 | RHD4PRSHLDOSST1704, RHD4PRSHLSTAGST1704, RHD4CZ5L08ST3302 |  |  |  |  | -193d | 0d | Skilled labor [25.37 h]; Unskilled Labor [50.86 h]; Equipment Opreator [5.12 h]; Boom Truck [5.12 h]; MH (2000mm Diameter) - ST - depth 2.51 - 3.5m [0.35 nr] | 7,646.45 |  | L08 | Z5 | CONS | ST | Steel Cover | bef |
| RHD4CZ5L08ST3502 |  | Finishing, Benching, Testing works for MH 2000 mm - (RD-L-8)-Z5-L08-ST | 3d | 2027-02-11 | 2027-02-14 | RHD4CZ5L08ST3402 |  |  |  |  | -193d | 4.02d | Skilled labor [25.37 h]; Unskilled Labor [50.86 h]; Plumber [25.37 h]; Equipment Opreator [5.12 h]; Water Truck [5.12 h]; MH (2000mm Diameter) - ST - depth 2.51 - 3.5m [0.7 nr] | 15,292.9 |  | L08 | Z5 | CONS | ST | Benching | bef |
|  | 4319 | **RHD4-02-002-L08-(ST)-MH Works - 1200 mm diameter** |  | 2026-08-04 | 2027-02-15 |  |  |  |  |  |  |  |  |  |  |  |  |  |  |  |  |
| RHD4CZ5L08ST3100 |  | Excavation and PC Blinding works for MH 1200 mm - (RD-L-8)-Z5-L08-ST | 2d | 2026-08-04 A | 2026-08-06 A | RHD4CZ5L08ST3102, RHD4ENSDZ5APPST110, RHD4ENMSST2000, RHD4ENMSST2010 | 100% |  | 2026-08-01 | 2026-08-02 |  |  | Skilled labor [7.3 h]; Unskilled Labor [7.3 h]; Equipment Opreator [11.65 h]; Excavator-Poclain [7.3 h]; Water Truck [0.8 h]; Dump Truck [3.59 h]; MH (1200mm Diameter) - ST - depth 1.50 - 2.5m [0.5 nr] | 5,161.5 | 5,161.5 | L08 | Z5 | CONS | ST | Excavation | bef |
| RHD4CZ5L08ST3200 |  | Installation of Base for MH 1200 mm - (RD-L-8)-Z5-L08-ST | 2d | 2026-10-18 A | 2027-01-31 | RHD4CZ5L08ST3100, RHD4PRSHLSTAGST1604 | 50% | 2d | 2026-10-27 | 2026-10-28 | -186d | 0d | Skilled labor [7.3 h]; Unskilled Labor [7.3 h]; Equipment Opreator [2.94 h]; Boom Truck [1.42 h]; Concrete Mixer Truck [1.42 h]; MH (1200mm Diameter) - ST - depth 1.50 - 2.5m [0.5 nr] | 5,161.5 |  | L08 | Z5 | CONS | ST | Installing Base | bef |
| RHD4CZ5L08ST3300 |  | MH Ring and C.Slab works and Backfilling works for MH 1200 mm - (RD-L-8)-Z5-L08-ST | 2d | 2027-02-01 | 2027-02-02 | RHD4CZ5L08ST3200, RHD4PRSHLDOSST1604 |  |  |  |  | -186d | 0d | Skilled labor [7.3 h]; Unskilled Labor [7.3 h]; Equipment Opreator [5.12 h]; Boom Truck [2.94 h]; Concrete Mixer Truck [2.18 h]; MH (1200mm Diameter) - ST - depth 1.50 - 2.5m [0.7 nr] | 7,226.1 |  | L08 | Z5 | CONS | ST | Installing Rings | bef |
| RHD4CZ5L08ST3400 |  | Steel Cover for MH 1200 mm - (RD-L-8)-Z5-L08-ST | 2d | 2027-02-11 | 2027-02-13 | RHD4CZ5L08ST3300, RHD4PRSHLDOSST1704, RHD4PRSHLSTAGST1704, RHD4CZ5L08ST3402 |  |  |  |  | -188d | 0d | Skilled labor [7.3 h]; Unskilled Labor [14.48 h]; Equipment Opreator [1.42 h]; Boom Truck [1.42 h]; MH (1200mm Diameter) - ST - depth 1.50 - 2.5m [0.1 nr] | 1,032.3 |  | L08 | Z5 | CONS | ST | Steel Cover | bef |
| RHD4CZ5L08ST3500 |  | Finishing, Benching, Testing works for MH 1200 mm - (RD-L-8)-Z5-L08-ST | 2d | 2027-02-14 | 2027-02-15 | RHD4CZ5L08ST3400 |  |  |  |  | -188d | 0d | Skilled labor [7.3 h]; Unskilled Labor [14.48 h]; Plumber [7.3 h]; Equipment Opreator [1.42 h]; Water Truck [1.42 h]; MH (1200mm Diameter) - ST - depth 1.50 - 2.5m [0.2 nr] | 2,064.6 |  | L08 | Z5 | CONS | ST | Benching | bef |

| ID | WBS | Activity | Duration | Start | Finish | Predecessors | Complete | Remaining | Planned start | Planned finish | Total float | Free float | Resources | Cost | Actual cost | RDH4-01-001-Road and Block Names-1 | RDH4-01-001-Zones-1 | RDH4-01-001-Phases-1 | RDH4-01-001-Networks-1 | RDH4-01-001-Work Method-1 | RDH4-01-001-MENEM |
| --- | --- | --- | --- | --- | --- | --- | --- | --- | --- | --- | --- | --- | --- | --- | --- | --- | --- | --- | --- | --- | --- |
|  | 4316 | **RHD4-02-002-L08-(ST)-GRP Pipes - 1800 mm diameter** |  |  |  |  |  |  |  |  |  |  |  |  |  |  |  |  |  |  |  |
|  | 6393 | **RHD4-02-002-L08-(ST)-GRP Pipes - 1300 mm diameter** |  | 2026-08-04 | 2027-02-09 |  |  |  |  |  |  |  |  |  |  |  |  |  |  |  |  |
| RHD4CZ5L08ST1109 |  | Excavation works for GRP Pipe Line 1300 mm - (RD-L-8)-Z5-L08-ST | 2d | 2026-08-04 A | 2027-01-31 | RHD4CZ5L08ST3100 | 64% | 2d | 2026-08-03 | 2026-08-04 | -171d | 0d | Skilled labor [20.26 h]; Unskilled Labor [20.26 h]; Equipment Opreator [24.29 h]; Excavator-Poclain [20.26 h]; Dump Truck [4 h]; GRP (1300mm Diameter) - ST - Depth less than 2.5 m [35.71 m]; GRP (1300mm Diameter) - ST - Depth: 2.51m - 3.5m [17.88 m]; GRP (1300mm Diameter) - ST - Depth: 3.51m - 4.5m [5.58 m] | 106,220.45 |  | L08 | Z5 | CONS | ST | Excavation | bef |
| RHD4CZ5L08ST1209 |  | Bedding works for GRP Pipe Line 1300 mm - (RD-L-8)-Z5-L08-ST | 2d | 2026-08-06 A | 2027-02-02 | RHD4CZ5L08ST1109 | 64% | 2d | 2026-08-05 | 2026-08-06 | -171d | 0d | Skilled labor [17.75 h]; Unskilled Labor [35.5 h]; Equipment Opreator [35.5 h]; Excavator-Poclain [17.75 h]; Dump Truck [17.75 h]; GRP (1300mm Diameter) - ST - Depth less than 2.5 m [11.9 m]; GRP (1300mm Diameter) - ST - Depth: 2.51m - 3.5m [5.96 m]; GRP (1300mm Diameter) - ST - Depth: 3.51m - 4.5m [1.86 m] | 35,400.94 |  | L08 | Z5 | CONS | ST | Bedding | bef |
| RHD4CZ5L08ST1309 |  | Installing for GRP Pipe Line 1300 mm - (RD-L-8)-Z5-L08-ST | 2d | 2026-08-08 A | 2027-02-04 | RHD4CZ5L08ST1209 | 64% | 2d | 2026-08-08 | 2026-08-09 | -171d | 0d | Unskilled Labor [27.66 h]; Plumber [13.83 h]; GRP (1300mm Diameter) - ST - Depth less than 2.5 m [95.21 m]; GRP (1300mm Diameter) - ST - Depth: 2.51m - 3.5m [47.67 m]; GRP (1300mm Diameter) - ST - Depth: 3.51m - 4.5m [14.89 m] | 283,226.88 | 242,385.56 | L08 | Z5 | CONS | ST | Installation | bef |
| RHD4CZ5L08ST1509 |  | Backfilling and warning tape works for GRP Pipe Line 1300 mm - (RD-L-8)-Z5-L08-ST | 2d | 2026-08-10 A | 2027-02-09 | RHD4CZ5L08ST1409 | 64% | 2d | 2026-08-12 | 2026-08-13 | -171d | 0d | Skilled labor [21.6 h]; Unskilled Labor [43.2 h]; Equipment Opreator [43.2 h]; Excavator-Poclain [21.6 h]; Dump Truck [21.6 h]; GRP (1300mm Diameter) - ST - Depth less than 2.5 m [47.61 m]; GRP (1300mm Diameter) - ST - Depth: 2.51m - 3.5m [23.84 m]; GRP (1300mm Diameter) - ST - Depth: 3.51m - 4.5m [7.44 m] | 141,621.39 |  | L08 | Z5 | CONS | ST | Backfilling | bef |
| RHD4CZ5L08ST1409 |  | Primary Test for GRP Pipe Line 1300 mm - (RD-L-8)-Z5-L08-ST | 2d | 2027-02-06 | 2027-02-07 | RHD4CZ5L08ST1309 |  |  |  |  | -171d | 0d | Unskilled Labor [10.45 h]; Plumber [10.45 h]; Equipment Opreator [10.45 h]; Water Truck [10.45 h]; GRP (1300mm Diameter) - ST - Depth less than 2.5 m [47.61 m]; GRP (1300mm Diameter) - ST - Depth: 2.51m - 3.5m [23.84 m]; GRP (1300mm Diameter) - ST - Depth: 3.51m - 4.5m [7.44 m] | 141,621.39 |  | L08 | Z5 | CONS | ST | Primary Test | bef |
|  | 2414 | **RHD4-02-002-L08-(ST)-GRP Pipes - 600 mm diameter** |  | 2026-10-13 | 2027-01-31 |  |  |  |  |  |  |  |  |  |  |  |  |  |  |  |  |
| RHD4CZ5L08ST1102 |  | Excavation works for GRP Pipe Line 600 mm - (RD-L-8)-Z5-L08-ST | 2d | 2026-10-13 A | 2026-10-14 A | RHD4CZ5L08ST3100 | 100% |  | 2027-02-06 | 2027-02-07 |  |  | Skilled labor [2.94 h]; Unskilled Labor [2.94 h]; Equipment Opreator [3.48 h]; Excavator-Poclain [2.94 h]; Dump Truck [0.54 h]; GRP (600mm Diameter) - ST - Depth: 1.51m - 2.5m [8.05 m] | 3,743.25 | 3,743.25 | L08 | Z5 | CONS | ST | Excavation | bef |
| RHD4CZ5L08ST1202 |  | Bedding works for GRP Pipe Line 600 mm - (RD-L-8)-Z5-L08-ST | 2d | 2026-10-15 A | 2026-10-17 A | RHD4CZ5L08ST1102 | 100% |  | 2027-02-08 | 2027-02-09 |  |  | Skilled labor [2.94 h]; Unskilled Labor [5.88 h]; Equipment Opreator [5.88 h]; Excavator-Poclain [2.94 h]; Dump Truck [2.94 h]; GRP (600mm Diameter) - ST - Depth: 1.51m - 2.5m [2.68 m] | 1,246.2 | 1,246.2 | L08 | Z5 | CONS | ST | Bedding | bef |
| RHD4CZ5L08ST1302 |  | Installing for GRP Pipe Line 600 mm - (RD-L-8)-Z5-L08-ST | 2d | 2026-10-18 A | 2026-10-19 A | RHD4CZ5L08ST1202 | 100% |  | 2027-02-10 | 2027-02-11 |  |  | Unskilled Labor [5.88 h]; Plumber [2.94 h]; GRP (600mm Diameter) - ST - Depth: 1.51m - 2.5m [21.47 m] | 9,983.55 | 9,983.55 | L08 | Z5 | CONS | ST | Installation | bef |
| RHD4CZ5L08ST1502 |  | Backfilling and warning tape works for GRP Pipe Line 600 mm - (RD-L-8)-Z5-L08-ST | 2d | 2026-10-20 A | 2026-10-21 A | RHD4CZ5L08ST1402 | 100% |  | 2027-02-15 | 2027-02-16 |  |  | Skilled labor [2.94 h]; Unskilled Labor [5.88 h]; Equipment Opreator [5.88 h]; Excavator-Poclain [2.94 h]; Dump Truck [2.94 h]; GRP (600mm Diameter) - ST - Depth: 1.51m - 2.5m [10.73 m] | 4,989.45 | 4,989.45 | L08 | Z5 | CONS | ST | Backfilling | bef |
| RHD4CZ5L08ST1402 |  | Primary Test for GRP Pipe Line 600 mm - (RD-L-8)-Z5-L08-ST | 2d | 2027-01-30 | 2027-01-31 | RHD4CZ5L08ST1302 |  |  |  |  | -158d | 0d | Unskilled Labor [2.94 h]; Plumber [2.94 h]; Equipment Opreator [2.94 h]; Water Truck [2.94 h]; GRP (600mm Diameter) - ST - Depth: 1.51m - 2.5m [10.73 m] | 4,989.45 |  | L08 | Z5 | CONS | ST | Primary Test | bef |
|  | 4304 | **RHD4-02-002-L08-(ST)-GRP Pipes - 500 mm diameter** |  | 2026-08-04 | 2027-01-31 |  |  |  |  |  |  |  |  |  |  |  |  |  |  |  |  |
| RHD4CZ5L08ST1101 |  | Excavation works for GRP Pipe Line 500 mm - (RD-L-8)-Z5-L08-ST | 2d | 2026-08-04 A | 2026-08-05 A | RHD4ENSDZ5APPST110, RHD4CZ5L08ST1102 | 100% |  | 2026-08-05 | 2026-08-06 |  |  | Skilled labor [3.27 h]; Unskilled Labor [3.27 h]; Equipment Opreator [3.92 h]; Excavator-Poclain [3.27 h]; Dump Truck [0.65 h]; GRP (500mm Diameter) - ST - Depth less than 1.5 m [6.07 m]; GRP (500mm Diameter) - ST - Depth: 1.51m - 2.5m | 2,154.85 | 2,154.85 | L08 | Z5 | CONS | ST | Excavation | bef |
| RHD4CZ5L08ST1201 |  | Bedding works for GRP Pipe Line 500 mm - (RD-L-8)-Z5-L08-ST | 2d | 2026-08-06 A | 2026-08-08 A | RHD4CZ5L08ST1101 | 100% |  | 2026-08-08 | 2026-08-09 |  |  | Skilled labor [3.27 h]; Unskilled Labor [6.64 h]; Equipment Opreator [6.64 h]; Excavator-Poclain [3.27 h]; Dump Truck [3.27 h]; GRP (500mm Diameter) - ST - Depth less than 1.5 m [3.04 m]; GRP (500mm Diameter) - ST - Depth: 1.51m - 2.5m | 1,079.2 | 1,079.2 | L08 | Z5 | CONS | ST | Bedding | bef |
| RHD4CZ5L08ST1301 |  | Installing for GRP Pipe Line 500 mm - (RD-L-8)-Z5-L08-ST | 2d | 2026-08-09 A | 2026-08-10 A | RHD4CZ5L08ST1201, RHD4PRSHLSTAGST1004, RHD4PRSHLDOSST1604, RHD4PRSHLPOST1000, RHD4PRSHLDOSST1004 | 100% |  | 2026-08-10 | 2026-08-11 |  |  | Unskilled Labor [6.64 h]; Plumber [3.27 h]; GRP (500mm Diameter) - ST - Depth less than 1.5 m [27.33 m]; GRP (500mm Diameter) - ST - Depth: 1.51m - 2.5m | 9,702.15 | 9,702.15 | L08 | Z5 | CONS | ST | Installation | bef |
| RHD4CZ5L08ST1501 |  | Backfilling and warning tape works for GRP Pipe Line 500 mm - (RD-L-8)-Z5-L08-ST | 2d | 2026-09-19 A | 2026-09-20 A | RHD4CZ5L08ST1401 | 100% |  | 2026-08-15 | 2026-08-16 |  |  | Skilled labor [3.27 h]; Unskilled Labor [6.64 h]; Equipment Opreator [6.64 h]; Excavator-Poclain [3.27 h]; Dump Truck [3.27 h]; GRP (500mm Diameter) - ST - Depth less than 1.5 m [12.14 m]; GRP (500mm Diameter) - ST - Depth: 1.51m - 2.5m | 4,309.7 | 4,309.7 | L08 | Z5 | CONS | ST | Backfilling | bef |
| RHD4CZ5L08ST1401 |  | Primary Test for GRP Pipe Line 500 mm - (RD-L-8)-Z5-L08-ST | 2d | 2027-01-30 | 2027-01-31 | RHD4CZ5L08ST1301 |  |  |  |  | -158d | 0d | Unskilled Labor [3.27 h]; Plumber [3.27 h]; Equipment Opreator [3.27 h]; Water Truck [3.27 h]; GRP (500mm Diameter) - ST - Depth less than 1.5 m [12.14 m]; GRP (500mm Diameter) - ST - Depth: 1.51m - 2.5m | 4,309.7 |  | L08 | Z5 | CONS | ST | Primary Test | bef |
|  | 4303 | **RHD4-02-002-L08-(ST)-GRP Pipes - 400 mm diameter** |  | 2026-09-19 | 2027-01-31 |  |  |  |  |  |  |  |  |  |  |  |  |  |  |  |  |
| RHD4CZ5L08ST1100 |  | Excavation works for GRP Pipe Line 400 mm - (RD-L-8)-Z5-L08-ST | 2d | 2026-09-19 A | 2026-09-20 A | RHD4CZ5L08ST1101, RHD4ENSDZ5APPST110 | 100% |  | 2026-08-08 | 2026-08-09 |  |  | Skilled labor [6.1 h]; Unskilled Labor [6.1 h]; Equipment Opreator [7.3 h]; Excavator-Poclain [6.1 h]; Dump Truck [1.2 h]; GRP (400mm Diameter) - ST - Depth: 2.51m - 3.5 m [12.6 m] | 5,657.4 | 5,657.4 | L08 | Z5 | CONS | ST | Excavation | bef |
| RHD4CZ5L08ST1200 |  | Bedding works for GRP Pipe Line 400 mm - (RD-L-8)-Z5-L08-ST | 2d | 2026-09-20 A | 2026-09-21 A | RHD4CZ5L08ST1100 | 100% |  | 2026-08-10 | 2026-08-11 |  |  | Skilled labor [6.1 h]; Unskilled Labor [12.2 h]; Equipment Opreator [12.2 h]; Excavator-Poclain [6.1 h]; Dump Truck [6.1 h]; GRP (400mm Diameter) - ST - Depth: 2.51m - 3.5 m [4.2 m] | 1,885.8 | 1,885.8 | L08 | Z5 | CONS | ST | Bedding | bef |
| RHD4CZ5L08ST1300 |  | Installing for GRP Pipe Line 400 mm - (RD-L-8)-Z5-L08-ST | 2d | 2026-09-21 A | 2026-09-22 A | RHD4CZ5L08ST1200, RHD4CZ5L08ST1301, RHD4PRSHLSTAGST1004, RHD4PRSHLDOSST1604, RHD4PRSHLPOST1000, RHD4PRSHLDOSST1004 | 100% |  | 2026-08-12 | 2026-08-13 |  |  | Unskilled Labor [12.2 h]; Plumber [6.1 h]; GRP (400mm Diameter) - ST - Depth: 2.51m - 3.5 m [33.61 m] | 15,090.89 | 15,090.89 | L08 | Z5 | CONS | ST | Installation | bef |
| RHD4CZ5L08ST1500 |  | Backfilling and warning tape works for GRP Pipe Line 400 mm - (RD-L-8)-Z5-L08-ST | 2d | 2026-09-22 A | 2026-09-24 A | RHD4CZ5L08ST1400, RHD4CZ5L08ST1501 | 100% |  | 2026-08-17 | 2026-08-18 |  |  | Skilled labor [6.1 h]; Unskilled Labor [12.2 h]; Equipment Opreator [12.2 h]; Excavator-Poclain [6.1 h]; Dump Truck [6.1 h]; GRP (400mm Diameter) - ST - Depth: 2.51m - 3.5 m [16.8 m] | 7,543.2 | 7,543.2 | L08 | Z5 | CONS | ST | Backfilling | bef |
| RHD4CZ5L08ST1400 |  | Primary Test for GRP Pipe Line 400 mm - (RD-L-8)-Z5-L08-ST | 2d | 2027-01-30 | 2027-01-31 | RHD4CZ5L08ST1300 |  |  |  |  | -158d | 0d | Unskilled Labor [6.1 h]; Plumber [6.1 h]; Equipment Opreator [6.1 h]; Water Truck [6.1 h]; GRP (400mm Diameter) - ST - Depth: 2.51m - 3.5 m [16.8 m] | 7,543.2 |  | L08 | Z5 | CONS | ST | Primary Test | bef |

| ID | WBS | Activity | Duration | Start | Finish | Predecessors | Complete | Remaining | Planned start | Planned finish | Total float | Free float | Resources | Cost | Actual cost | RDH4-01-001-Road and Block Names-1 | RDH4-01-001-Zones-1 | RDH4-01-001-Phases-1 | RDH4-01-001-Networks-1 | RDH4-01-001-Work Method-1 | RDH4-01-001-MENEM |
| --- | --- | --- | --- | --- | --- | --- | --- | --- | --- | --- | --- | --- | --- | --- | --- | --- | --- | --- | --- | --- | --- |
|  | 4317 | **RHD4-02-002-L08-(ST)-UPVC Pipes - 300 mm diameter** |  | 2026-08-04 | 2027-02-27 |  |  |  |  |  |  |  |  |  |  |  |  |  |  |  |  |
| RHD4CZ5L08ST2100 |  | Excavation works for UPVC Pipe Line 300 mm - (RD-L-8)-Z5-L08-ST | 2d | 2026-08-04 A | 2027-02-15 | RHD4CZ5L08ST3300, RHD4CZ5L08ST3202, RHD4CZ5L08ST7300, RHD4CZ5L08ST3302, RHD4ENSDZ5APPST110 | 92% | 2d | 2026-08-18 | 2026-08-19 | -177d | 0d | Skilled labor [17.97 h]; Unskilled Labor [17.97 h]; Equipment Opreator [21.6 h]; Excavator-Poclain [17.97 h]; Dump Truck [3.59 h]; UPVC (300mm Diameter) - ST - Depth less than 1.5 [40.81 m]; UPVC (300mm Diameter) - ST - Depth: 1.51m - 2.5m | 12,365.43 |  | L08 | Z5 | CONS | ST | Excavation | bef |
| RHD4CZ5L08ST2300 |  | Installing for UPVC Pipe Line 300 mm - (RD-L-8)-Z5-L08-ST | 2d | 2026-08-08 A | 2027-02-20 | RHD4CZ5L08ST2200, RHD4PRSHLDOSST1104, RHD4PRSHLSTAGST1104 | 92% | 2d | 2026-08-23 | 2026-08-24 | -177d | 0d | Unskilled Labor [36.05 h]; Plumber [17.97 h]; UPVC (300mm Diameter) - ST - Depth less than 1.5 [183.63 m]; UPVC (300mm Diameter) - ST - Depth: 1.51m - 2.5m | 55,639.89 |  | L08 | Z5 | CONS | ST | Installation | bef |
| RHD4CZ5L08ST2200 |  | Bedding works for UPVC Pipe Line 300 mm - (RD-L-8)-Z5-L08-ST | 2d | 2026-09-06 A | 2027-02-17 | RHD4CZ5L08ST2100 | 92% | 2d | 2026-08-20 | 2026-08-22 | -177d | 0d | Skilled labor [15.25 h]; Unskilled Labor [30.4 h]; Equipment Opreator [30.4 h]; Excavator-Poclain [15.25 h]; Dump Truck [15.25 h]; UPVC (300mm Diameter) - ST - Depth less than 1.5 [20.4 m]; UPVC (300mm Diameter) - ST - Depth: 1.51m - 2.5m | 6,181.2 |  | L08 | Z5 | CONS | ST | Bedding | bef |
| RHD4CZ5L08ST2400 |  | Primary Test for UPVC Pipe Line 300 mm - (RD-L-8)-Z5-L08-ST | 2d | 2027-02-21 | 2027-02-23 | RHD4CZ5L08ST2300 |  |  |  |  | -177d | 0d | Unskilled Labor [9.6 h]; Plumber [9.6 h]; Equipment Opreator [9.6 h]; Water Truck [9.6 h]; UPVC (300mm Diameter) - ST - Depth less than 1.5 [81.62 m]; UPVC (300mm Diameter) - ST - Depth: 1.51m - 2.5m | 24,730.86 |  | L08 | Z5 | CONS | ST | Primary Test | bef |
| RHD4CZ5L08ST2500 |  | Backfilling and warning tape works for UPVC Pipe Line 300 mm - (RD-L-8)-Z5-L08-ST | 3d | 2027-02-24 | 2027-02-27 | RHD4CZ5L08ST2400, RHD4CZ5L08ST6100, RHD4CZ5L08ST1500, RHD4CZ5L08ST1509, RHD4CZ5L08ST1502 |  |  |  |  | -177d | 0d | Skilled labor [22.22 h]; Unskilled Labor [44.43 h]; Equipment Opreator [44.43 h]; Excavator-Poclain [22.22 h]; Dump Truck [22.22 h]; UPVC (300mm Diameter) - ST - Depth less than 1.5 [81.62 m]; UPVC (300mm Diameter) - ST - Depth: 1.51m - 2.5m | 24,730.86 |  | L08 | Z5 | CONS | ST | Backfilling | bef |
|  | 4325 | **RHD4-02-002-L08-(ST)-Concrete Encasement** |  | 2027-02-18 | 2027-02-20 |  |  |  |  |  |  |  |  |  |  |  |  |  |  |  |  |
| RHD4CZ5L08ST6100 |  | Pipe Encasement for Storm Pipelines - (RD-L-8)-Z5-L08-ST | 2d | 2027-02-18 | 2027-02-20 | RHD4CZ5L08ST2300 SS, RHD4CZ5L08ST2300 FF, RHD4CZ5L08ST2200, RHD4CZ5L08ST3500 |  |  |  |  | -175d | 2d | Skilled labor [6.4 h]; Unskilled Labor [6.4 h]; Equipment Opreator [7.08 h]; Concrete Mixer Truck [0.65 h]; Dump Truck [6.4 h]; Pipe Encasement - ST [118.23 m3] | 59,824.38 |  | L08 | Z5 | CONS | ST | Pipe Encasement | bef |
|  | 4326 | **RHD4-02-002-Z5-L08-Catch Basin - ST** |  | 2026-08-04 | 2027-02-23 |  |  |  |  |  |  |  |  |  |  |  |  |  |  |  |  |
|  | 4327 | **RHD4-02-002-L08-(ST)-Single Catch Basin Works** |  | 2026-08-04 | 2027-02-23 |  |  |  |  |  |  |  |  |  |  |  |  |  |  |  |  |
| RHD4CZ5L08ST7100 |  | Excavation works for Single Catch Basin - (RD-L-8)-Z5-L08-ST | 3d | 2026-08-04 A | 2027-02-06 | RHD4CZ5L08ST3300, RHD4ENSDZ5APPST110 | 88% | 3d | 2026-08-08 | 2026-08-10 | -186d | 0d | Skilled labor [26.14 h]; Unskilled Labor [52.27 h]; Equipment Opreator [39.2 h]; Excavator-Poclain [26.14 h]; Dump Truck [13.07 h]; Single Catch basin - ST [6 nr] | 22,386 |  | L08 | Z5 | CONS | ST | Excavation | bef |
| RHD4CZ5L08ST7200 |  | PC Blinding, Installation and Pipe connection for Single Catch Basin - (RD-L-8)-Z5-L08-ST | 3d | 2026-08-06 A | 2027-02-09 | RHD4CZ5L08ST7100 | 88% | 3d | 2026-08-11 | 2026-08-13 | -186d | 0d | Skilled labor [26.14 h]; Unskilled Labor [52.27 h]; Plumber [13.07 h]; Equipment Opreator [5.23 h]; Boom Truck [5.23 h]; Single Catch basin - ST [4.8 nr] | 17,908.8 | 17,162 | L08 | Z5 | CONS | ST | Installation & Pipe Connection | bef |
| RHD4CZ5L08ST7300 |  | Rings & C.Slab & Final Backfill for Single Catch Basin - (RD-L-8)-Z5-L08-ST | 3d | 2026-10-28 A | 2027-02-13 | RHD4CZ5L08ST7200, RHD4PRSHLDOSST1304, RHD4PRSHLSTAGST1304 |  | 3d | 2026-10-28 | 2026-10-31 | -186d | 0d | Skilled labor [32.67 h]; Unskilled Labor [65.34 h]; Equipment Opreator [39.2 h]; Boom Truck [6.53 h]; Bobcat [32.67 h]; Single Catch basin - ST [8.4 nr] | 31,340.4 | 2,610.66 | L08 | Z5 | CONS | ST | Rings | bef |
| RHD4CZ5L08ST7400 |  | Steel Cover for Single Catch Basin - (RD-L-8)-Z5-L08-ST | 3d | 2027-02-14 | 2027-02-16 | RHD4CZ5L08ST7300, RHD4PRSHLDOSST1704 |  |  |  |  | -186d | 0d | Skilled labor [26.14 h]; Unskilled Labor [26.14 h]; Equipment Opreator [5.23 h]; Boom Truck [5.23 h]; Single Catch basin - ST [1.2 nr] | 4,477.2 |  | L08 | Z5 | CONS | ST | Steel Cover | bef |
| RHD4CZ5L08ST7500 |  | Finishing and Insulation works for Single Catch Basin - (RD-L-8)-Z5-L08-ST | 5d | 2027-02-17 | 2027-02-23 | RHD4CZ5L08ST7400 |  |  |  |  | -186d | 2d | Skilled labor [52.27 h]; Unskilled Labor [104.55 h]; Equipment Opreator [10.45 h]; Boom Truck [10.45 h]; Single Catch basin - ST [3.6 nr] | 13,431.6 |  | L08 | Z5 | CONS | ST | Insulation | bef |
|  | 4299 | **RHD4-02-002-Z5-L08-Concrete Box Culvert - ST** |  | 2026-06-11 | 2027-03-21 |  |  |  |  |  |  |  |  |  |  |  |  |  |  |  |  |
|  | 4300 | **RHD4-02-002-L08-(ST)-Concrete Box Culvert** |  | 2026-06-11 | 2027-03-21 |  |  |  |  |  |  |  |  |  |  |  |  |  |  |  |  |
| RHD4CZ5L08ST4100 |  | Excavation works for Box Culvert - (RD-L-8)-Z5-L08-ST(Completed) | 46d | 2026-06-11 A | 2026-06-13 A | RHD4ENSDZ5APPST110, RHD4CZ5L08ST3102, RHD4CZ7RA05RA3000 | 100% |  | 2026-08-01 | 2026-09-22 |  |  | Skilled labor [27.33 h]; Unskilled Labor [27.33 h]; Equipment Opreator [82.11 h]; Excavator-Poclain [27.33 h]; Water Truck [27.33 h]; Dump Truck [27.33 h]; Excavation for culverts (all types of soil) including backfilling - ST [410.15 m3] | 7,382.7 | 7,382.7 | L08 | Z5 | CONS | ST | Excavation | bef |
| RHD4CZ5L08ST4200 |  | PC works for Box Culvert - (RD-L-8)-Z5-L08-ST(Completed) | 43d | 2026-06-15 A | 2026-06-16 A | RHD4CZ5L08ST4100 SS | 100% |  | 2026-08-01 | 2026-09-19 |  |  | Skilled labor [0.33 h]; Unskilled Labor [0.33 h]; Equipment Opreator [0.33 h]; Concrete Mixer Truck [0.22 h]; Concrete Pump [0.22 h]; 100 mm thickness lean concrete under the base - ST [257.47 m2] | 10,041.33 | 10,041.33 | L08 | Z5 | CONS | ST | PC | bef |
| RHD4CZ5L08ST4400 |  | Raft works for Box Culvert - (RD-L-8)-Z5-L08-ST(Completed) | 21d | 2026-07-11 A | 2026-07-16 A | RHD4CZ5L08ST4200 SS | 100% |  | 2026-08-01 | 2026-08-24 |  |  | Carpenter [4.14 h]; Skilled labor [5.12 h]; Steel Fixer [0.98 h]; Equipment Opreator [8.49 h]; Boom Truck [0.22 h]; Concrete Mixer Truck [4.14 h]; Concrete Pump [4.14 h]; Supply and cast in place reinforced concrete for Box culverts - ST [81.79 m3]; Supply, placing, and fixing of high tensile reinforcement steel for Box culverts - ST [19.86 Ton] | 152,295.12 | 152,295.12 | L08 | Z5 | CONS | ST | Raft Works | bef |
| RHD4CZ5L08ST4500 |  | Wall and slab works for Box Culvert - (RD-L-8)-Z5-L08-ST | 2d | 2026-08-04 A | 2026-09-21 A | RHD4CZ5L08ST4400, RHD4CZ5L08ST4200, RHD4ENMSBC2000, RHD4ENMSBC2010, RHD4ENSDZ5APPST110, RHD4CZ5L08ST4100, RHD4CZ1C081ST3500, RHD4CZ2C082ST8500, RHD4CZ6C052SW3500, RHD4CZ9L05MV3300 | 100% |  | 2026-09-24 | 2026-09-26 |  |  | Carpenter [11.11 h]; Skilled labor [13.83 h]; Steel Fixer [2.72 h]; Equipment Opreator [22.76 h]; Boom Truck [0.54 h]; Concrete Mixer Truck [11.11 h]; Concrete Pump [11.11 h]; Supply and cast in place reinforced concrete for Box culverts - ST [102.24 m3]; Supply, placing, and fixing of high tensile reinforcement steel for Box culverts - ST [29.78 Ton] | 208,303.1 | 208,303.1 | L08 | Z5 | CONS | ST | Wall and slab Works | bef |
| RHD4CZ5L08ST4600 |  | Insulation and Testing for Box Culvert - (RD-L-8)-Z5-L08-ST | 2d | 2026-10-20 A | 2026-10-22 A | RHD4CZ5L08ST4700, RHD4CZ5L08ST5400 | 100% |  | 2026-10-13 | 2026-10-14 |  |  | Skilled labor [11.11 h]; Unskilled Labor [22.22 h]; Equipment Opreator [11.11 h]; Water Truck [11.11 h]; Supply and cast in place reinforced concrete for Box culverts - ST [20.45 m3] | 20,120.83 | 20,120.83 | L08 | Z5 | CONS | ST | Insulation and Testing | bef |
| RHD4CZ5L08ST4700 |  | Backfilling works for Box Culvert - (RD-L-8)-Z5-L08-ST | 3d | 2026-10-23 A | 2027-03-21 | RHD4CZ5L08ST4500, RHD4CZ5L08ST5300 |  | 3d | 2026-10-01 | 2026-10-04 | -161d | 0d | Skilled labor [31.91 h]; Unskilled Labor [63.82 h]; Equipment Opreator [51.08 h]; Boom Truck [15.9 h]; Water Truck [3.16 h]; Dump Truck [31.91 h]; Excavation for culverts (all types of soil) including backfilling - ST [175.78 m3] | 3,164.02 | 1,582.01 | L08 | Z5 | CONS | ST | Backfilling | bef |
|  | 4301 | **RHD4-02-002-L08-(ST)-Concrete Chambers** |  | 2026-08-20 | 2027-03-21 |  |  |  |  |  |  |  |  |  |  |  |  |  |  |  |  |
| RHD4CZ5L08ST5100 |  | Excavation and Bedding for Concrete Chambers - for Box Culvert - (RD-L-8)-Z5-L08-ST | 3d | 2026-08-20 A | 2027-03-07 | RHD4CZ5L08ST4500, RHD4ENSDZ5APPST110, RHD4CZ5L08RD3100 | 50% | 3d | 2026-09-27 | 2026-09-29 | -161d | 0d | Skilled labor [32.67 h]; Unskilled Labor [32.67 h]; Equipment Opreator [6.53 h]; Excavator-Poclain [3.27 h]; Dump Truck [3.27 h]; Concrete chambers - ST - Size 1.8 x 2.0 m, depth 4.51-5.5 m [0.45 nr] | 17,418.6 | 8,709.3 | L08 | Z5 | CONS | ST | Excavation & Bedding | bef |
| RHD4CZ5L08ST5200 |  | PC works for Concrete Chambers - for Box Culvert - (RD-L-8)-Z5-L08-ST | 3d | 2026-08-25 A | 2027-03-14 | RHD4CZ5L08ST5100, RHD4CZ5L08ST7500 | 50% | 3d | 2026-09-30 | 2026-10-03 | -161d | 0d | Skilled labor [32.67 h]; Unskilled Labor [32.67 h]; Equipment Opreator [6.53 h]; Excavator-Poclain [3.27 h]; Dump Truck [3.27 h]; Concrete chambers - ST - Size 1.8 x 2.0 m, depth 4.51-5.5 m [0.3 nr] | 11,612.4 | 5,806.2 | L08 | Z5 | CONS | ST | PC Works | bef |
| RHD4CZ5L08ST5300 |  | Installation for Concrete Chambers - for Box Culvert - (RD-L-8)-Z5-L08-ST | 3d | 2026-08-30 A | 2027-03-17 | RHD4CZ5L08ST5200 | 50% | 3d | 2026-10-04 | 2026-10-06 | -161d | 0d | Skilled labor [32.67 h]; Unskilled Labor [32.67 h]; Equipment Opreator [6.53 h]; Excavator-Poclain [3.27 h]; Dump Truck [3.27 h]; Concrete chambers - ST - Size 1.8 x 2.0 m, depth 4.51-5.5 m [1.65 nr] | 63,868.2 | 31,934.1 | L08 | Z5 | CONS | ST | Installation | bef |
| RHD4CZ5L08ST5400 |  | Backfilling works for Concrete Chambers - for Box Culvert - (RD-L-8)-Z5-L08-ST | 3d | 2027-03-18 | 2027-03-21 | RHD4CZ5L08ST5300 |  |  |  |  | -161d | 0d | Skilled labor [32.67 h]; Unskilled Labor [32.67 h]; Equipment Opreator [6.53 h]; Excavator-Poclain [3.27 h]; Dump Truck [3.27 h]; Concrete chambers - ST - Size 1.8 x 2.0 m, depth 4.51-5.5 m [0.6 nr] | 23,224.8 |  | L08 | Z5 | CONS | ST | Backfilling Works | bef |

| ID | WBS | Activity | Duration | Start | Finish | Predecessors | Complete | Remaining | Planned start | Planned finish | Total float | Free float | Resources | Cost | Actual cost | RDH4-01-001-Road and Block Names-1 | RDH4-01-001-Zones-1 | RDH4-01-001-Phases-1 | RDH4-01-001-Networks-1 | RDH4-01-001-Work Method-1 | RDH4-01-001-MENEM |
| --- | --- | --- | --- | --- | --- | --- | --- | --- | --- | --- | --- | --- | --- | --- | --- | --- | --- | --- | --- | --- | --- |
|  | 4351 | **RHD4-02-002-Z5-L08-Sewage Network - SW** |  | 2026-08-09 | 2027-05-19 |  |  |  |  |  |  |  |  |  |  |  |  |  |  |  |  |
|  | 957 | **RHD4-02-002-L08-(SW)-MH Works - 1200 mm diameter with Back drop** |  | 2026-08-11 | 2027-04-14 |  |  |  |  |  |  |  |  |  |  |  |  |  |  |  |  |
| RHD4CZ5L08SW3101 |  | Excavation and PC Blinding works for MH 1200 mm - (RD-L-8)-Z5-L08-SW | 4d | 2026-08-11 A | 2026-08-12 A | RHD4CZ5L08SW3100 SS, RHD4CZ5L08ST2500 | 100% |  | 2026-10-13 | 2026-10-17 |  |  | Skilled labor [38.12 h]; Unskilled Labor [38.12 h]; Equipment Opreator [60.99 h]; Excavator-Poclain [38.12 h]; Water Truck [3.81 h]; Dump Truck [19.06 h]; MH (1200mm Diameter) - SW - depth 2.51- 3.5 m with back drop [0.75 nr]; MH (1200mm Diameter) - SW - depth 3.51 -4.5 m with back drop [1 nr] | 29,650.25 | 29,650.25 | L08 | Z5 | CONS | SW | Excavation | bef |
| RHD4CZ5L08SW3201 |  | Installation of Base for MH 1200 mm - (RD-L-8)-Z5-L08-SW | 6d | 2026-09-20 A | 2027-03-28 | RHD4CZ5L08SW3101 | 40% | 6d | 2026-10-18 | 2026-10-24 | -148d | 0d | Skilled labor [59.9 h]; Unskilled Labor [59.9 h]; Equipment Opreator [23.96 h]; Boom Truck [12 h]; Concrete Mixer Truck [12 h]; MH (1200mm Diameter) - SW - depth 2.51- 3.5 m with back drop [0.75 nr]; MH (1200mm Diameter) - SW - depth 3.51 -4.5 m with back drop [1 nr] | 29,650.25 | 11,860.1 | L08 | Z5 | CONS | SW | Installing Base | bef |
| RHD4CZ5L08SW3301 |  | MH Ring and C.Slab works and Backfilling works for MH 1200 mm - (RD-L-8)-Z5-L08-SW | 6d | 2027-03-29 | 2027-04-04 | RHD4CZ5L08SW3201 |  |  |  |  | -148d | 0d | Skilled labor [59.9 h]; Unskilled Labor [59.9 h]; Equipment Opreator [41.93 h]; Boom Truck [23.96 h]; Concrete Mixer Truck [17.97 h]; MH (1200mm Diameter) - SW - depth 2.51- 3.5 m with back drop [1.05 nr]; MH (1200mm Diameter) - SW - depth 3.51 -4.5 m with back drop [1.4 nr] | 41,510.35 |  | L08 | Z5 | CONS | SW | Installing Rings | bef |
| RHD4CZ5L08SW3401 |  | Steel Cover for MH 1200 mm - (RD-L-8)-Z5-L08-SW | 3d | 2027-04-05 | 2027-04-07 | RHD4CZ5L08SW3301 |  |  |  |  | -148d | 0d | Skilled labor [25.37 h]; Unskilled Labor [50.86 h]; Equipment Opreator [5.12 h]; Boom Truck [5.12 h]; MH (1200mm Diameter) - SW - depth 2.51- 3.5 m with back drop [0.15 nr]; MH (1200mm Diameter) - SW - depth 3.51 -4.5 m with back drop [0.2 nr] | 5,930.05 |  | L08 | Z5 | CONS | SW | Steel Cover | bef |
| RHD4CZ5L08SW3501 |  | Finishing, Benching, Testing works for MH 1200 mm - (RD-L-8)-Z5-L08-SW | 6d | 2027-04-08 | 2027-04-14 | RHD4CZ5L08SW3401 |  |  |  |  | -148d | 6.02d | Skilled labor [59.9 h]; Unskilled Labor [119.79 h]; Plumber [59.9 h]; Equipment Opreator [12 h]; Water Truck [12 h]; MH (1200mm Diameter) - SW - depth 2.51- 3.5 m with back drop [0.3 nr]; MH (1200mm Diameter) - SW - depth 3.51 -4.5 m with back drop [0.4 nr] | 11,860.1 |  | L08 | Z5 | CONS | SW | Benching | bef |
|  | 4361 | **RHD4-02-002-L08-(SW)-MH Works - 1200 mm diameter** |  | 2026-08-11 | 2027-05-06 |  |  |  |  |  |  |  |  |  |  |  |  |  |  |  |  |
| RHD4CZ5L08SW3100 |  | Excavation and PC Blinding works for MH 1200 mm - (RD-L-8)-Z5-L08-SW | 7d | 2026-08-11 A | 2027-03-24 | RHD4ENSDZ5APPSW120, RHD4CZ5L08ST4600, RHD4CZ5L08ST1102 | 75% | 3d | 2026-10-13 | 2026-10-20 | -161d | 0d | Skilled labor [67.2 h]; Unskilled Labor [67.2 h]; Equipment Opreator [107.49 h]; Excavator-Poclain [67.2 h]; Water Truck [6.75 h]; Dump Truck [33.54 h]; MH (1200mm Diameter) - SW - depth 0 - 1.5m [0.5 nr]; MH (1200mm Diameter) - SW - depth 1.51 - 2.5m [1.25 nr]; MH (1200mm Diameter) - SW - depth 3.51 -4.5m [1.5 nr] | 36,139 | 27,104.25 | L08 | Z5 | CONS | SW | Excavation | bef |
| RHD4CZ5L08SW3200 |  | Installation of Base for MH 1200 mm - (RD-L-8)-Z5-L08-SW | 10d | 2026-08-12 A | 2027-03-30 | RHD4CZ5L08SW3100 | 75% | 5d | 2026-10-21 | 2026-11-01 | -161d | 0d | Skilled labor [103.46 h]; Unskilled Labor [103.46 h]; Equipment Opreator [41.38 h]; Boom Truck [20.69 h]; Concrete Mixer Truck [20.69 h]; MH (1200mm Diameter) - SW - depth 0 - 1.5m [0.5 nr]; MH (1200mm Diameter) - SW - depth 1.51 - 2.5m [1.25 nr]; MH (1200mm Diameter) - SW - depth 3.51 -4.5m [1.5 nr] | 36,139 | 27,104.25 | L08 | Z5 | CONS | SW | Installing Base | bef |
| RHD4CZ5L08SW3300 |  | MH Ring and C.Slab works and Backfilling works for MH 1200 mm - (RD-L-8)-Z5-L08-SW | 10d | 2027-04-07 | 2027-04-19 | RHD4CZ5L08SW3200, RHD4CZ8A011ST1201, RHD4CZ5L07SL2400 |  |  |  |  | -167.02d | 0d | Skilled labor [103.46 h]; Unskilled Labor [103.46 h]; Equipment Opreator [72.42 h]; Boom Truck [41.38 h]; Concrete Mixer Truck [31.04 h]; MH (1200mm Diameter) - SW - depth 0 - 1.5m [0.7 nr]; MH (1200mm Diameter) - SW - depth 1.51 - 2.5m [1.75 nr]; MH (1200mm Diameter) - SW - depth 3.51 -4.5m [2.1 nr] | 50,594.6 |  | L08 | Z5 | CONS | SW | Installing Rings | bef |
| RHD4CZ5L08SW3400 |  | Steel Cover for MH 1200 mm - (RD-L-8)-Z5-L08-SW | 5d | 2027-04-19 | 2027-04-25 | RHD4CZ5L08SW3300 |  |  |  |  | -152.02d | 0d | Skilled labor [47.16 h]; Unskilled Labor [94.4 h]; Equipment Opreator [9.47 h]; Boom Truck [9.47 h]; MH (1200mm Diameter) - SW - depth 0 - 1.5m [0.1 nr]; MH (1200mm Diameter) - SW - depth 1.51 - 2.5m [0.25 nr]; MH (1200mm Diameter) - SW - depth 3.51 -4.5m [0.3 nr] | 7,227.8 |  | L08 | Z5 | CONS | SW | Steel Cover | bef |
| RHD4CZ5L08SW3500 |  | Finishing, Benching, Testing works for MH 1200 mm - (RD-L-8)-Z5-L08-SW | 10d | 2027-04-25 | 2027-05-06 | RHD4CZ5L08SW3400 |  |  |  |  | -152.02d | 9.98d | Skilled labor [103.46 h]; Unskilled Labor [206.92 h]; Plumber [103.46 h]; Equipment Opreator [20.69 h]; Water Truck [20.69 h]; MH (1200mm Diameter) - SW - depth 0 - 1.5m [0.2 nr]; MH (1200mm Diameter) - SW - depth 1.51 - 2.5m [0.5 nr]; MH (1200mm Diameter) - SW - depth 3.51 -4.5m [0.6 nr] | 14,455.6 |  | L08 | Z5 | CONS | SW | Benching | bef |
|  | 4352 | **RHD4-02-002-L08-(SW)-GRP Pipes - 300 mm diameter** |  | 2026-08-09 | 2027-05-02 |  |  |  |  |  |  |  |  |  |  |  |  |  |  |  |  |
| RHD4CZ5L08SW1100 |  | Excavation works for GRP Pipe Line 300 mm - (RD-L-8)-Z5-L08-SW | 5d | 2026-08-09 A | 2027-04-03 | RHD4CZ5L08SW3200, RHD4ENSDZ5APPSW120 | 70% | 3d | 2026-11-02 | 2026-11-07 | -154d | 0d | Skilled labor [50.86 h]; Unskilled Labor [50.86 h]; Equipment Opreator [60.99 h]; Excavator-Poclain [50.86 h]; Dump Truck [10.13 h]; GRP (300mm Diameter) - SW - Depth: 1.51m - 2.5m; GRP (300mm Diameter) - SW - Depth: 2.51m - 3.5m [90.18 m]; GRP (300mm Diameter) - SW - Depth: 3.51m - 4.5m | 36,793.44 | 25,755.41 | L08 | Z5 | CONS | SW | Excavation | bef |
| RHD4CZ5L08SW1200 |  | Bedding works for GRP Pipe Line 300 mm - (RD-L-8)-Z5-L08-SW | 5d | 2026-08-11 A | 2027-04-06 | RHD4CZ5L08SW1100 | 70% | 3d | 2026-11-08 | 2026-11-12 | -154d | 0d | Skilled labor [50.86 h]; Unskilled Labor [101.6 h]; Equipment Opreator [101.6 h]; Excavator-Poclain [50.86 h]; Dump Truck [50.86 h]; GRP (300mm Diameter) - SW - Depth: 1.51m - 2.5m; GRP (300mm Diameter) - SW - Depth: 2.51m - 3.5m [30.06 m]; GRP (300mm Diameter) - SW - Depth: 3.51m - 4.5m | 12,264.48 | 8,585.14 | L08 | Z5 | CONS | SW | Bedding | bef |
| RHD4CZ5L08SW1300 |  | Installing for GRP Pipe Line 300 mm - (RD-L-8)-Z5-L08-SW | 5d | 2026-08-13 A | 2027-04-22 | RHD4CZ5L08SW1200, RHD4CZ5L08SW3300 | 70% | 3d | 2026-11-14 | 2026-11-18 | -164.02d | 0d | Unskilled Labor [101.6 h]; Plumber [50.86 h]; Equipment Opreator [50.86 h]; Boom Truck [50.86 h]; GRP (300mm Diameter) - SW - Depth: 1.51m - 2.5m; GRP (300mm Diameter) - SW - Depth: 2.51m - 3.5m [240.48 m]; GRP (300mm Diameter) - SW - Depth: 3.51m - 4.5m | 98,115.84 | 68,681.09 | L08 | Z5 | CONS | SW | Installation | bef |
| RHD4CZ5L08SW1500 |  | Backfilling and warning tape works for GRP Pipe Line 300 mm - (RD-L-8)-Z5-L08-SW | 5d | 2026-08-17 A | 2027-05-02 | RHD4CZ5L08SW1400 | 60% | 3d | 2026-11-25 | 2026-11-30 | -164.02d | 0d | Skilled labor [50.86 h]; Unskilled Labor [101.6 h]; Equipment Opreator [101.6 h]; Excavator-Poclain [50.86 h]; Dump Truck [50.86 h]; GRP (300mm Diameter) - SW - Depth: 1.51m - 2.5m; GRP (300mm Diameter) - SW - Depth: 2.51m - 3.5m [120.24 m]; GRP (300mm Diameter) - SW - Depth: 3.51m - 4.5m | 49,057.92 | 29,434.75 | L08 | Z5 | CONS | SW | Backfilling | bef |
| RHD4CZ5L08SW1400 |  | Primary Test for GRP Pipe Line 300 mm - (RD-L-8)-Z5-L08-SW | 5d | 2027-04-22 | 2027-04-28 | RHD4CZ5L08SW1300 |  |  |  |  | -164.02d | 0d | Unskilled Labor [50.86 h]; Plumber [50.86 h]; Equipment Opreator [50.86 h]; Water Truck [50.86 h]; GRP (300mm Diameter) - SW - Depth: 1.51m - 2.5m; GRP (300mm Diameter) - SW - Depth: 2.51m - 3.5m [120.24 m]; GRP (300mm Diameter) - SW - Depth: 3.51m - 4.5m | 49,057.92 |  | L08 | Z5 | CONS | SW | Primary Test | bef |
|  | 4357 | **RHD4-02-002-L08-(SW)-UPVC Pipes - 200 mm diameter** |  | 2026-08-13 | 2027-05-04 |  |  |  |  |  |  |  |  |  |  |  |  |  |  |  |  |
| RHD4CZ5L08SW2100 |  | Excavation works for UPVC Pipe Line 200 mm - (RD-L-8)-Z5-L08-SW | 2d | 2026-08-13 A | 2027-04-05 | RHD4CZ5L08SW1100, RHD4ENSDZ5APPSW120 | 70% | 2d | 2026-11-08 | 2026-11-09 | -142d | 1d | Skilled labor [10.67 h]; Unskilled Labor [10.67 h]; Equipment Opreator [12.85 h]; Excavator-Poclain [10.67 h]; Dump Truck [2.18 h]; UPVC (200mm Diameter) - SW - Depth: less than 1.5m [21.65 m]; UPVC (200mm Diameter) - SW - Depth: 1.51m - 2.5m | 3,897 | 2,727.9 | L08 | Z5 | CONS | SW | Excavation | bef |
| RHD4CZ5L08SW2200 |  | Bedding works for UPVC Pipe Line 200 mm - (RD-L-8)-Z5-L08-SW | 2d | 2026-08-15 A | 2027-04-08 | RHD4CZ5L08SW2100, RHD4CZ5L08SW1200 | 71% | 2d | 2026-11-14 | 2026-11-15 | -143d | 11.02d | Skilled labor [10.02 h]; Unskilled Labor [19.93 h]; Equipment Opreator [19.93 h]; Excavator-Poclain [10.02 h]; Dump Truck [10.02 h]; UPVC (200mm Diameter) - SW - Depth: less than 1.5m [10.83 m]; UPVC (200mm Diameter) - SW - Depth: 1.51m - 2.5m | 1,949.4 | 1,377.06 | L08 | Z5 | CONS | SW | Bedding | bef |
| RHD4CZ5L08SW2300 |  | Installing for UPVC Pipe Line 200 mm - (RD-L-8)-Z5-L08-SW | 2d | 2026-08-17 A | 2027-04-25 | RHD4CZ5L08SW2200, RHD4CZ5L08SW1300 | 72% | 2d | 2026-11-19 | 2026-11-21 | -154.02d | 0d | Unskilled Labor [27.2 h]; Plumber [13.6 h]; Equipment Opreator [13.6 h]; Boom Truck [13.6 h]; UPVC (200mm Diameter) - SW - Depth: less than 1.5m [97.45 m]; UPVC (200mm Diameter) - SW - Depth: 1.51m - 2.5m | 17,541 | 12,650.57 | L08 | Z5 | CONS | SW | Installation | bef |
| RHD4CZ5L08SW2500 |  | Backfilling and warning tape works for UPVC Pipe Line 200 mm - (RD-L-8)-Z5-L08-SW | 2d | 2026-08-19 A | 2027-05-04 | RHD4CZ5L08SW2400, RHD4CZ5L08SW1500 | 71% | 2d | 2026-12-01 | 2026-12-02 | -152.02d | 43.98d | Skilled labor [11.76 h]; Unskilled Labor [23.63 h]; Equipment Opreator [23.63 h]; Excavator-Poclain [11.76 h]; Dump Truck [11.76 h]; UPVC (200mm Diameter) - SW - Depth: less than 1.5m [43.31 m]; UPVC (200mm Diameter) - SW - Depth: 1.51m - 2.5m | 7,795.8 | 5,508.51 | L08 | Z5 | CONS | SW | Backfilling | bef |
| RHD4CZ5L08SW2400 |  | Primary Test for UPVC Pipe Line 200 mm - (RD-L-8)-Z5-L08-SW | 2d | 2027-04-28 | 2027-05-01 | RHD4CZ5L08SW2300, RHD4CZ5L08SW1400 |  |  |  |  | -151.02d | 1d | Unskilled Labor [6.4 h]; Plumber [6.4 h]; Equipment Opreator [6.4 h]; Water Truck [6.4 h]; UPVC (200mm Diameter) - SW - Depth: less than 1.5m [43.31 m]; UPVC (200mm Diameter) - SW - Depth: 1.51m - 2.5m | 7,795.8 |  | L08 | Z5 | CONS | SW | Primary Test | bef |

| ID | WBS | Activity | Duration | Start | Finish | Predecessors | Complete | Remaining | Planned start | Planned finish | Total float | Free float | Resources | Cost | RDH4-01-001-Road and Block Names-1 | RDH4-01-001-Zones-1 | RDH4-01-001-Phases-1 | RDH4-01-001-Networks-1 | RDH4-01-001-Work Method-1 | RDH4-01-001-MENEM |
| --- | --- | --- | --- | --- | --- | --- | --- | --- | --- | --- | --- | --- | --- | --- | --- | --- | --- | --- | --- | --- |
|  | 4358 | **RHD4-02-002-L08-(SW)-HDPE Pipes - 250 mm diameter** |  | 2027-03-31 | 2027-05-03 |  |  |  |  |  |  |  |  |  |  |  |  |  |  |  |
| RHD4CZ5L08SW2600 |  | Excavation works for HDPE Force Main Pipeline 250 mm - (RD-L-8)-Z5-L08-SW | 3d | 2027-03-31 | 2027-04-03 | RHD4CZ5L08SW1100 SS, RHD4ENSDZ5APPSW120 |  |  |  |  | -153d | 0d | Skilled labor [31.58 h]; Unskilled Labor [31.58 h]; Equipment Opreator [37.9 h]; Excavator-Poclain [31.58 h]; Dump Truck [6.32 h]; HDPE (250mm Diameter) - SW - in trenches depth:0- 1.5m [72.42 m] | 14,411.58 | L08 | Z5 | CONS | SW | Excavation | bef |
| RHD4CZ5L08SW2700 |  | Bedding works for HDPE Force Main Pipeline 250 mm - (RD-L-8)-Z5-L08-SW | 3d | 2027-04-04 | 2027-04-06 | RHD4CZ5L08SW2600, RHD4CZ5L08SW1200 SS |  |  |  |  | -153d | 10.02d | Skilled labor [26.25 h]; Unskilled Labor [52.6 h]; Equipment Opreator [52.6 h]; Excavator-Poclain [26.25 h]; Dump Truck [26.25 h]; HDPE (250mm Diameter) - SW - in trenches depth:0- 1.5m [36.21 m] | 7,205.79 | L08 | Z5 | CONS | SW | Bedding | bef |
| RHD4CZ5L08SW2800 |  | Installing for HDPE Force Main Pipeline 250 mm - (RD-L-8)-Z5-L08-SW | 5d | 2027-04-19 | 2027-04-25 | RHD4CZ5L08SW2700, RHD4CZ5L08SW1300 SS |  |  |  |  | -163.02d | 0d | Unskilled Labor [105.2 h]; Plumber [52.6 h]; Equipment Opreator [52.6 h]; Boom Truck [52.6 h]; HDPE (250mm Diameter) - SW - in trenches depth:0- 1.5m [325.9 m] | 64,854.1 | L08 | Z5 | CONS | SW | Installation | bef |
| RHD4CZ5L08SW2900 |  | Primary Test for HDPE Force Main Pipeline 250 mm - (RD-L-8)-Z5-L08-SW | 2d | 2027-04-25 | 2027-04-27 | RHD4CZ5L08SW2800, RHD4CZ5L08SW1400 SS |  |  |  |  | -163.02d | 1d | Unskilled Labor [15.79 h]; Plumber [15.79 h]; Equipment Opreator [15.79 h]; Water Truck [15.79 h]; HDPE (250mm Diameter) - SW - in trenches depth:0- 1.5m [144.84 m] | 28,823.16 | L08 | Z5 | CONS | SW | Primary Test | bef |
| RHD4CZ5L08SW3000 |  | Backfilling and warning tape works for HDPE Force Main Pipeline 250 mm - (RD-L-8)-Z5-L08-SW | 4d | 2027-04-28 | 2027-05-03 | RHD4CZ5L08SW2900, RHD4CZ5L08SW1500 SS |  |  |  |  | -164.02d | 3d | Skilled labor [39.42 h]; Unskilled Labor [78.85 h]; Equipment Opreator [78.85 h]; Excavator-Poclain [39.42 h]; Dump Truck [39.42 h]; HDPE (250mm Diameter) - SW - in trenches depth:0- 1.5m [144.84 m] | 28,823.16 | L08 | Z5 | CONS | SW | Backfilling | bef |
|  | 4360 | **RHD4-02-002-L08-(SW)-Concrete Encasement** |  | 2027-04-22 | 2027-05-19 |  |  |  |  |  |  |  |  |  |  |  |  |  |  |  |
| RHD4CZ5L08SW6100 |  | Pipe Encasement for Sewage Pipelines - (RD-L-8)-Z5-L08-SW | 19d | 2027-04-22 | 2027-05-19 | RHD4CZ5L08SW1300 FF, RHD4CZ5L08SW2300 FF, RHD4CZ5L08SW1300 SS, RHD4CZ5L08SW2300 SS, RHD4CZ5L08SW1200, RHD4CZ5L08SW2200, RHD4CZ5L08SW3501, RHD4CZ5L08ST2500 |  |  |  |  | -154.02d | 8d | Skilled labor [202.56 h]; Unskilled Labor [202.56 h]; Equipment Opreator [222.82 h]; Concrete Mixer Truck [20.26 h]; Dump Truck [202.56 h]; Pipe Encasement - SW [93 m3] | 114,018 | L08 | Z5 | CONS | SW | Pipe Encasement | bef |
|  | 4388 | **RHD4-02-002-Z5-L08-Potable Network - PT** |  | 2026-08-04 | 2027-05-27 |  |  |  |  |  |  |  |  |  |  |  |  |  |  |  |
|  | 4389 | **RHD4-02-002-L08-(PT)-HDPE Pipes - 110 mm diameter** |  | 2026-08-04 | 2027-05-01 |  |  |  |  |  |  |  |  |  |  |  |  |  |  |  |
| RHD4CZ5L08PT1100 |  | Excavation works for HDPE Pipline 110 mm - (RD-L-8)-Z5-L08-PT | 2d | 2026-08-04 A | 2027-04-21 | RHD4ENSDZ5APPPT130, RHD4ENMSPT2000, RHD4CZ5L08SW3300 | 66% | 2d | 2026-11-14 | 2026-11-15 | -167.02d | 0d | Skilled labor [4.14 h]; Unskilled Labor [4.14 h]; Equipment Opreator [5.01 h]; Excavator-Poclain [4.14 h]; Dump Truck [0.87 h]; HDPE (110mm Diameter) - PT - Depth: less than 1.5m [9.6 m] | 816 | L08 | Z5 | CONS | PT | Excavation | bef |
| RHD4CZ5L08PT1200 |  | Bedding works for HDPE Pipline 110 mm - (RD-L-8)-Z5-L08-PT | 2d | 2027-04-21 | 2027-04-24 | RHD4CZ5L08PT1100, RHD4CZ4C031ST8500 |  |  |  |  | -167.02d | 0d | Skilled labor [3.48 h]; Unskilled Labor [6.97 h]; Equipment Opreator [6.97 h]; Excavator-Poclain [3.48 h]; Dump Truck [3.48 h]; HDPE (110mm Diameter) - PT - Depth: less than 1.5m [4.8 m] | 408 | L08 | Z5 | CONS | PT | Bedding | bef |
| RHD4CZ5L08PT1300 |  | Installing for HDPE Pipline 110 mm - (RD-L-8)-Z5-L08-PT | 2d | 2027-04-24 | 2027-04-26 | RHD4CZ5L08PT1200, RHD4PRSHLDOSPT1000, RHD4PRSHLSTAGPT1000 |  |  |  |  | -167.02d | 0d | Unskilled Labor [13.94 h]; Plumber [6.97 h]; Equipment Opreator [6.97 h]; Boom Truck [6.97 h]; HDPE (110mm Diameter) - PT - Depth: less than 1.5m [43.2 m] | 3,672 | L08 | Z5 | CONS | PT | Installation | bef |
| RHD4CZ5L08PT1400 |  | Primary Test for HDPE Pipline 110 mm - (RD-L-8)-Z5-L08-PT | 2d | 2027-04-26 | 2027-04-28 | RHD4CZ5L08PT1300 |  |  |  |  | -167.02d | 0d | Unskilled Labor [2.07 h]; Plumber [2.07 h]; Equipment Opreator [2.07 h]; Water Truck [2.07 h]; HDPE (110mm Diameter) - PT - Depth: less than 1.5m [19.2 m] | 1,632 | L08 | Z5 | CONS | PT | Primary Test | bef |
| RHD4CZ5L08PT1500 |  | Backfilling and warning tape works for HDPE Pipline 110 mm - (RD-L-8)-Z5-L08-PT | 2d | 2027-04-28 | 2027-05-01 | RHD4CZ5L08PT1400 |  |  |  |  | -167.02d | 0d | Skilled labor [5.23 h]; Unskilled Labor [10.45 h]; Equipment Opreator [10.45 h]; Excavator-Poclain [5.23 h]; Dump Truck [5.23 h]; HDPE (110mm Diameter) - PT - Depth: less than 1.5m [19.2 m] | 1,632 | L08 | Z5 | CONS | PT | Backfilling | bef |
|  | 4390 | **RHD4-02-002-L08-(PT)-HDPE Pipes - 160 mm diameter** |  | 2027-04-21 | 2027-05-13 |  |  |  |  |  |  |  |  |  |  |  |  |  |  |  |
| RHD4CZ5L08PT1101 |  | Excavation works for HDPE Pipline 160 mm - (RD-L-8)-Z5-L08-PT | 4d | 2027-04-21 | 2027-04-26 | RHD4ENSDZ5APPPT130, RHD4ENMSPT2000, RHD4CZ5L08PT1100 |  |  |  |  | -156.02d | 0d | Skilled labor [33.87 h]; Unskilled Labor [33.87 h]; Equipment Opreator [40.73 h]; Excavator-Poclain [33.87 h]; Dump Truck [6.75 h]; HDPE (160mm Diameter) - PT - Depth: less than 1.5m [77.84 m] | 8,328.45 | L08 | Z5 | CONS | PT | Excavation | bef |
| RHD4CZ5L08PT1201 |  | Bedding works for HDPE Pipline 160 mm - (RD-L-8)-Z5-L08-PT | 3d | 2027-04-26 | 2027-04-29 | RHD4CZ5L08PT1101 |  |  |  |  | -156.02d | 0d | Skilled labor [28.21 h]; Unskilled Labor [56.52 h]; Equipment Opreator [56.52 h]; Excavator-Poclain [28.21 h]; Dump Truck [28.21 h]; HDPE (160mm Diameter) - PT - Depth: less than 1.5m [38.92 m] | 4,164.23 | L08 | Z5 | CONS | PT | Bedding | bef |
| RHD4CZ5L08PT1301 |  | Installing for HDPE Pipline 160 mm - (RD-L-8)-Z5-L08-PT | 6d | 2027-04-29 | 2027-05-06 | RHD4CZ5L08PT1201, RHD4PRSHLDOSPT1000, RHD4PRSHLSTAGPT1000 |  |  |  |  | -156.02d | 0d | Unskilled Labor [113.04 h]; Plumber [56.52 h]; Equipment Opreator [56.52 h]; Boom Truck [56.52 h]; HDPE (160mm Diameter) - PT - Depth: less than 1.5m [350.26 m] | 37,478.03 | L08 | Z5 | CONS | PT | Installation | bef |
| RHD4CZ5L08PT1401 |  | Primary Test for HDPE Pipline 160 mm - (RD-L-8)-Z5-L08-PT | 2d | 2027-05-06 | 2027-05-09 | RHD4CZ5L08PT1301, RHD4CZ5L08PT5100, RHD4CZ5L08PT3100 |  |  |  |  | -156.02d | 0d | Unskilled Labor [16.99 h]; Plumber [16.99 h]; Equipment Opreator [16.99 h]; Water Truck [16.99 h]; HDPE (160mm Diameter) - PT - Depth: less than 1.5m [155.67 m] | 16,656.9 | L08 | Z5 | CONS | PT | Primary Test | bef |
| RHD4CZ5L08PT1501 |  | Backfilling and warning tape works for HDPE Pipline 160 mm - (RD-L-8)-Z5-L08-PT | 4d | 2027-05-09 | 2027-05-13 | RHD4CZ5L08PT1401 |  |  |  |  | -156.02d | 6d | Skilled labor [42.4 h]; Unskilled Labor [84.73 h]; Equipment Opreator [84.73 h]; Excavator-Poclain [42.4 h]; Dump Truck [42.4 h]; HDPE (160mm Diameter) - PT - Depth: less than 1.5m [155.67 m] | 16,656.9 | L08 | Z5 | CONS | PT | Backfilling | bef |
|  | 4394 | **RHD4-02-002-L08-(PT)-Gate Valves (Direct Buried)** |  | 2027-04-29 | 2027-05-06 |  |  |  |  |  |  |  |  |  |  |  |  |  |  |  |
| RHD4CZ5L08PT3100 |  | Installation for Direct Buried Gate Valves - (RD-L-8)-Z5-L08-PT | 3d | 2027-04-29 | 2027-05-03 | RHD4CZ5L08PT1300 FF, RHD4CZ5L08PT1301 SS, RHD4CZ5L08PT1300 SS, RHD4PRSHLDOSPT1200, RHD4PRSHLSTAGPT1200 |  |  |  |  | -153.02d | 0d | Unskilled Labor [27.2 h]; Plumber [27.2 h]; Gate valves dia 100 mm - PT [2.7 nr]; Gate valves dia 150 mm - PT [1.8 nr] | 5,838.3 | L08 | Z5 | CONS | PT | Installation | bef |
| RHD4CZ5L08PT3200 |  | Stem and Service box for Direct Buried Gate Valves - (RD-L-8)-Z5-L08-PT | 3d | 2027-05-03 | 2027-05-06 | RHD4CZ5L08PT3100 |  |  |  |  | -152.02d | 9.98d | Unskilled Labor [27.2 h]; Plumber [27.2 h]; Gate valves dia 100 mm - PT [0.3 nr]; Gate valves dia 150 mm - PT [0.2 nr] | 648.7 | L08 | Z5 | CONS | PT | Stem and Service box | bef |

| ID | WBS | Activity | Duration | Start | Finish | Predecessors | Total float | Free float | Resources | Cost | RDH4-01-001-Road and Block Names-1 | RDH4-01-001-Zones-1 | RDH4-01-001-Phases-1 | RDH4-01-001-Networks-1 | RDH4-01-001-Work Method-1 | RDH4-01-001-MENEM |
| --- | --- | --- | --- | --- | --- | --- | --- | --- | --- | --- | --- | --- | --- | --- | --- | --- |
|  | 4399 | **RHD4-02-002-L08-(PT)-Air Valve Chambers** |  | 2027-04-26 | 2027-05-05 |  |  |  |  |  |  |  |  |  |  |  |
| RHD4CZ5L08PT2102 |  | Excavation and Bedding for Air Valve Chambers for Potable Water Network - (RD-L-8)-Z5-L08-PT | 2d | 2027-04-26 | 2027-04-28 | RHD4ENSDZ5APPPT130, RHD4CZ5L08PT1101 | -152.02d | 0d | Skilled labor [5.45 h]; Unskilled Labor [5.45 h]; Equipment Opreator [1.09 h]; Excavator-Poclain [0.54 h]; Dump Truck [0.54 h]; Air Valve chambers - PT [0.25 nr] | 1,193 | L08 | Z5 | CONS | PT | Excavation and Bedding | bef |
| RHD4CZ5L08PT2202 |  | PC works for Air Valve Chambers for Potable Water Network - (RD-L-8)-Z5-L08-PT | 2d | 2027-04-28 | 2027-05-01 | RHD4CZ5L08PT2102 | -152.02d | 0d | Skilled labor [5.45 h]; Unskilled Labor [10.89 h]; Equipment Opreator [0.54 h]; Concrete Pump [0.54 h]; Air Valve chambers - PT [0.1 nr] | 477.2 | L08 | Z5 | CONS | PT | PC Works | bef |
| RHD4CZ5L08PT2302 |  | Installation for Air Valve Chambers for Potable Water Network - (RD-L-8)-Z5-L08-PT | 2d | 2027-05-01 | 2027-05-03 | RHD4CZ5L08PT2202 | -152.02d | 0d | Skilled labor [5.45 h]; Unskilled Labor [10.89 h]; Equipment Opreator [1.09 h]; Boom Truck [1.09 h]; Air Valve chambers - PT [0.55 nr] | 2,624.6 | L08 | Z5 | CONS | PT | Installation | bef |
| RHD4CZ5L08PT2402 |  | Backfilling works for Air Valve Chambers for Potable Water Network - (RD-L-8)-Z5-L08-PT | 2d | 2027-05-03 | 2027-05-05 | RHD4CZ5L08PT2302 | -152.02d | 0d | Skilled labor [5.45 h]; Unskilled Labor [10.89 h]; Equipment Opreator [1.09 h]; Water Truck [0.54 h]; Dump Truck [0.54 h]; Air Valve chambers - PT [0.1 nr] | 477.2 | L08 | Z5 | CONS | PT | Backfilling Works | bef |
|  | 4400 | **RHD4-02-002-L08-(PT)-Air Valves** |  | 2027-05-03 | 2027-05-08 |  |  |  |  |  |  |  |  |  |  |  |
| RHD4CZ5L08PT3103 |  | Installation for Air Valves for Potable Water Network - (RD-L-8)-Z5-L08-PT | 2d | 2027-05-03 | 2027-05-05 | RHD4CZ5L08PT2302, RHD4PRSHLDOSPT1200, RHD4PRSHLSTAGPT1200 | -152.02d | 0d | Unskilled Labor [5.45 h]; Plumber [5.45 h]; Air valve diameter 50 mm - PT [0.9 nr] | 4,427.1 | L08 | Z5 | CONS | PT | Installation | bef |
| RHD4CZ5L08PT3203 |  | Stem and Service box for Air Valves for Potable Water Network - (RD-L-8)-Z5-L08-PT | 2d | 2027-05-05 | 2027-05-08 | RHD4CZ5L08PT3103, RHD4CZ5L08PT2402 | -152.02d | 0d | Unskilled Labor [5.45 h]; Plumber [5.45 h]; Air valve diameter 50 mm - PT [0.1 nr] | 491.9 | L08 | Z5 | CONS | PT | Stem and Service box | bef |
|  | 4401 | **RHD4-02-002-L08-(PT)-Fire Hydrant** |  | 2027-05-01 | 2027-05-27 |  |  |  |  |  |  |  |  |  |  |  |
| RHD4CZ5L08PT4100 |  | Excavation and Bedding and Pipe Installation for Fire Hydrant - (RD-L-8)-Z5-L08-PT | 5d | 2027-05-01 | 2027-05-06 | RHD4CZ5L08PT1500, RHD4ENSDZ5APPPT130 | -167.02d | 0d | Skilled labor [54.45 h]; Unskilled Labor [54.45 h]; Plumber [54.45 h]; Equipment Opreator [27.2 h]; Excavator-Poclain [27.2 h]; 3-outlet fire hydrant (2 x 2.5 inch and 1 x 4.5 inch) in the form of a separate dry vacuum cylinder [1 nr] | 12,620 | L08 | Z5 | CONS | PT | Excavation | bef |
| RHD4CZ5L08PT4200 |  | Valve Installation for Fire Hydrant - (RD-L-8)-Z5-L08-PT | 4d | 2027-05-06 | 2027-05-11 | RHD4CZ5L08PT4100, RHD4CZ5L07PT3202, RHD4CZ5L07PT3203, RHD4CZ5L08SW3000, RHD4CZ2C082PT3203 | -167.02d | 0d | Unskilled Labor [36.26 h]; Plumber [36.26 h]; 3-outlet fire hydrant (2 x 2.5 inch and 1 x 4.5 inch) in the form of a separate dry vacuum cylinder [2 nr] | 25,240 | L08 | Z5 | CONS | PT | Valve | bef |
| RHD4CZ5L08PT4300 |  | Stem for Fire Hydrant - (RD-L-8)-Z5-L08-PT | 4d | 2027-05-11 | 2027-05-20 | RHD4CZ5L08PT4200 | -167.02d | 0d | Unskilled Labor [36.26 h]; Plumber [36.26 h]; 3-outlet fire hydrant (2 x 2.5 inch and 1 x 4.5 inch) in the form of a separate dry vacuum cylinder [3 nr] | 37,860 | L08 | Z5 | CONS | PT | Stem | bef |
| RHD4CZ5L08PT4400 |  | Fire Installation for Fire Hydrant - (RD-L-8)-Z5-L08-PT | 4d | 2027-05-20 | 2027-05-25 | RHD4CZ5L08PT4300, RHD4PRSHLDOSPT1500, RHD4PRSHLSTAGPT1500, RHD4CZ5RA07PT4500, RHD4CZ5RA07PT3203, RHD4CZ5RA07PT3202, RHD4CZ5RA07IRR3202, RHD4CZ2C082IRR3200 | -167.02d | 0d | Unskilled Labor [36.26 h]; Plumber [36.26 h]; Equipment Opreator [36.26 h]; Boom Truck [36.26 h]; 3-outlet fire hydrant (2 x 2.5 inch and 1 x 4.5 inch) in the form of a separate dry vacuum cylinder [3.5 nr] | 44,170 | L08 | Z5 | CONS | PT | Fire | bef |
| RHD4CZ5L08PT4500 |  | Protection Barriers for Fire Hydrant - (RD-L-8)-Z5-L08-PT | 2d | 2027-05-25 | 2027-05-27 | RHD4CZ5L08PT4400 | -167.02d | 0d | Unskilled Labor [21.78 h]; Plumber [21.78 h]; 3-outlet fire hydrant (2 x 2.5 inch and 1 x 4.5 inch) in the form of a separate dry vacuum cylinder [0.5 nr] | 6,310 | L08 | Z5 | CONS | PT | Protection Barriers | bef |
|  | 4402 | **RHD4-02-002-L08-(PT)-Concrete Encasement** |  | 2027-05-04 | 2027-05-06 |  |  |  |  |  |  |  |  |  |  |  |
| RHD4CZ5L08PT5100 |  | Pipe Encasement for Potable Pipelines - (RD-L-8)-Z5-L08-PT | 2d | 2027-05-04 | 2027-05-06 | RHD4CZ5L08PT1301 FF, RHD4CZ5L08PT1300 FF, RHD4CZ5L08PT1301 SS, RHD4CZ5L08PT1300 SS, RHD4CZ5L08PT1200, RHD4CZ5L08PT1201 | -156.02d | 0d | Skilled labor [1.85 h]; Unskilled Labor [1.85 h]; Equipment Opreator [2.07 h]; Concrete Mixer Truck [0.22 h]; Dump Truck [1.85 h]; Pipe Encasement - PT [0.87 m3] | 1,066.62 | L08 | Z5 | CONS | PT | Pipe Encasement | bef |
|  | 4403 | **RHD4-02-002-Z5-L08-Irrigation Network - IRR** |  | 2027-05-01 | 2027-06-15 |  |  |  |  |  |  |  |  |  |  |  |
|  | 4404 | **RHD4-02-002-L08-(IRR)-HDPE Pipes - 160 mm diameter** |  | 2027-05-27 | 2027-06-08 |  |  |  |  |  |  |  |  |  |  |  |
| RHD4CZ5L08IRR1100 |  | Excavation works for HDPE Pipline 160 mm - (RD-L-8)-Z5-L08-IRR | 2d | 2027-05-27 | 2027-05-30 | RHD4CZ5L08PT1101, RHD4ENSDZ5APPIRR140, RHD4ENMSRR2000, RHD4CZ5L08PT1500, RHD4CZ5L08PT4500 | -167.02d | 0d | Skilled labor [6.1 h]; Unskilled Labor [6.1 h]; Equipment Opreator [7.3 h]; Excavator-Poclain [6.1 h]; Dump Truck [1.2 h]; HDPE (160mm Diameter) - TSE - Depth: less than 1.5m [8.4 m] | 1,033.2 | L08 | Z5 | CONS | IRR | Excavation | bef |
| RHD4CZ5L08IRR1200 |  | Bedding works for HDPE Pipline 160 mm - (RD-L-8)-Z5-L08-IRR | 2d | 2027-05-30 | 2027-06-01 | RHD4CZ5L08IRR1100 | -167.02d | 0d | Skilled labor [4.57 h]; Unskilled Labor [9.15 h]; Equipment Opreator [9.15 h]; Excavator-Poclain [4.57 h]; Dump Truck [4.57 h]; HDPE (160mm Diameter) - TSE - Depth: less than 1.5m [4.2 m] | 516.6 | L08 | Z5 | CONS | IRR | Bedding | bef |
| RHD4CZ5L08IRR1300 |  | Installing for HDPE Pipline 160 mm - (RD-L-8)-Z5-L08-IRR | 2d | 2027-06-01 | 2027-06-03 | RHD4CZ5L08IRR1200, RHD4PRSHLDOSIRR1000, RHD4PRSHLSTAGIRR1000 | -167.02d | 0d | Unskilled Labor [12.2 h]; Plumber [6.1 h]; Equipment Opreator [6.1 h]; Boom Truck [6.1 h]; HDPE (160mm Diameter) - TSE - Depth: less than 1.5m [37.8 m] | 4,649.4 | L08 | Z5 | CONS | IRR | Installation | bef |
| RHD4CZ5L08IRR1400 |  | Primary Test for HDPE Pipline 160 mm - (RD-L-8)-Z5-L08-IRR | 2d | 2027-06-03 | 2027-06-06 | RHD4CZ5L08IRR1300 | -156.02d | 0d | Unskilled Labor [1.85 h]; Plumber [1.85 h]; Equipment Opreator [1.85 h]; Water Truck [1.85 h]; HDPE (160mm Diameter) - TSE - Depth: less than 1.5m [16.8 m] | 2,066.4 | L08 | Z5 | CONS | IRR | Primary Test | bef |
| RHD4CZ5L08IRR1500 |  | Backfilling and warning tape works for HDPE Pipline 160 mm - (RD-L-8)-Z5-L08-IRR | 2d | 2027-06-06 | 2027-06-08 | RHD4CZ5L08IRR1400 | -156.02d | 0d | Skilled labor [4.57 h]; Unskilled Labor [9.15 h]; Equipment Opreator [9.15 h]; Excavator-Poclain [4.57 h]; Dump Truck [4.57 h]; HDPE (160mm Diameter) - TSE - Depth: less than 1.5m [16.8 m] | 2,066.4 | L08 | Z5 | CONS | IRR | Backfilling | bef |
|  | 4412 | **RHD4-02-002-L08-(IRR)-Gate Valves (Direct Buried)** |  | 2027-06-01 | 2027-06-10 |  |  |  |  |  |  |  |  |  |  |  |
| RHD4CZ5L08IRR3100 |  | Installation for Direct Buried Gate Valves - (RD-L-8)-Z5-L08-IRR | 2d | 2027-06-01 | 2027-06-03 | RHD4CZ5L08IRR1302 SS, RHD4CZ5L08IRR1302 FF, RHD4CZ5L08IRR1300 SS, RHD4CZ5L08IRR1300 FF, RHD4PRSHLDOSIRR1100, RHD4PRSHLSTAGIRR1100 | -167.02d | 0d | Unskilled Labor [16.34 h]; Plumber [16.34 h]; Gate valves dia 100 mm - TSE [2.7 nr] | 4,266 | L08 | Z5 | CONS | IRR | Installation | bef |
| RHD4CZ5L08IRR3200 |  | Stem and Service box for Direct Buried Gate Valves - (RD-L-8)-Z5-L08-IRR | 2d | 2027-06-08 | 2027-06-10 | RHD4CZ5L08IRR3100, RHD4CZ5L08IRR1500, RHD4PRSHLDOSIRR1300, RHD4PRSHLSTAGIRR1300 | -156.02d | 6d | Unskilled Labor [16.34 h]; Plumber [16.34 h]; Gate valves dia 100 mm - TSE [0.3 nr] | 474 | L08 | Z5 | CONS | IRR | Stem and Service box | bef |

| ID | WBS | Activity | Duration | Start | Finish | Predecessors | Total float | Free float | Resources | Cost | RDH4-01-001-Road and Block Names-1 | RDH4-01-001-Zones-1 | RDH4-01-001-Phases-1 | RDH4-01-001-Networks-1 | RDH4-01-001-Work Method-1 | RDH4-01-001-MENEM |
| --- | --- | --- | --- | --- | --- | --- | --- | --- | --- | --- | --- | --- | --- | --- | --- | --- |
|  | 6685 | **RHD4-02-002-L08-(IRR)-Wash out Chamber** |  | 2027-06-03 | 2027-06-13 |  |  |  |  |  |  |  |  |  |  |  |
| RHD4CZ5L08IRR2101 |  | Excavation and Bedding for Wash out Chamber for Irrigation Network - (RD-L-8)-Z5-L08-IRR | 2d | 2027-06-03 | 2027-06-06 | RHD4CZ5L08IRR3100 | -167.02d | 0d | Skilled labor [5.45 h]; Unskilled Labor [5.45 h]; Equipment Opreator [1.09 h]; Excavator-Poclain [0.54 h]; Dump Truck [0.54 h]; Wash out chambers - TSE [0.25 nr] | 4,686.25 | L08 | Z5 | CONS | IRR | Excavation and Bedding | bef |
| RHD4CZ5L08IRR2201 |  | PC works for Wash out Chamber for Irrigation Network - (RD-L-8)-Z5-L08-IRR | 2d | 2027-06-06 | 2027-06-08 | RHD4CZ5L08IRR2101 | -167.02d | 0d | Skilled labor [5.45 h]; Unskilled Labor [10.89 h]; Equipment Opreator [0.54 h]; Concrete Pump [0.54 h]; Wash out chambers - TSE [0.1 nr] | 1,874.5 | L08 | Z5 | CONS | IRR | PC Works | bef |
| RHD4CZ5L08IRR2301 |  | Installation for Wash out Chamber for Irrigation Network - (RD-L-8)-Z5-L08-IRR | 2d | 2027-06-08 | 2027-06-10 | RHD4CZ5L08IRR2201 | -167.02d | 0d | Skilled labor [5.45 h]; Unskilled Labor [10.89 h]; Equipment Opreator [1.09 h]; Boom Truck [1.09 h]; Wash out chambers - TSE [0.55 nr] | 10,309.75 | L08 | Z5 | CONS | IRR | Installation | bef |
| RHD4CZ5L08IRR2401 |  | Backfilling works for Wash out Chamber for Irrigation Network - (RD-L-8)-Z5-L08-IRR | 2d | 2027-06-10 | 2027-06-13 | RHD4CZ5L08IRR2301 | -167.02d | 0d | Skilled labor [5.45 h]; Unskilled Labor [10.89 h]; Equipment Opreator [1.09 h]; Water Truck [0.54 h]; Dump Truck [0.54 h]; Wash out chambers - TSE [0.1 nr] | 1,874.5 | L08 | Z5 | CONS | IRR | Backfilling Works | bef |
|  | 6686 | **RHD4-02-002-L08-(IRR)-Wash out Valves** |  | 2027-06-10 | 2027-06-15 |  |  |  |  |  |  |  |  |  |  |  |
| RHD4CZ5L08IRR3102 |  | Installation for Wash out Valve for Irrigation Network - (RD-L-8)-Z5-L08-IRR | 2d | 2027-06-10 | 2027-06-13 | RHD4CZ5L08IRR3100, RHD4CZ5L08IRR2301 | -167.02d | 0d | Unskilled Labor [5.45 h]; Plumber [5.45 h]; Wash out valve diameter 100 mm - TSE [0.9 nr] | 3,373.2 | L08 | Z5 | CONS | IRR | Installation | bef |
| RHD4CZ5L08IRR3202 |  | Stem and Service box for Wash out Valve for Irrigation Network - (RD-L-8)-Z5-L08-IRR | 2d | 2027-06-13 | 2027-06-15 | RHD4CZ5L08IRR3102, RHD4CZ5L08IRR2401 | -167.02d | 0d | Unskilled Labor [5.45 h]; Plumber [5.45 h]; Wash out valve diameter 100 mm - TSE [0.1 nr] | 374.8 | L08 | Z5 | CONS | IRR | Stem and Service box | bef |
|  | 4406 | **RHD4-02-002-L08-(IRR)-HDPE Pipes - 200 mm diameter** |  | 2027-05-01 | 2027-06-10 |  |  |  |  |  |  |  |  |  |  |  |
| RHD4CZ5L08IRR1102 |  | Excavation works for HDPE Pipline 200 mm - (RD-L-8)-Z5-L08-IRR | 5d | 2027-05-01 | 2027-05-06 | RHD4CZ5L08PT1101, RHD4CZ5L08PT1100, RHD4ENSDZ5APPIRR140, RHD4ENMSRR2000, RHD4CZ5L08PT1500, RHD4CZ5C061MV2400 | -156.02d | 0d | Skilled labor [50.97 h]; Unskilled Labor [50.97 h]; Equipment Opreator [61.09 h]; Excavator-Poclain [50.97 h]; Dump Truck [10.24 h]; HDPE (200mm Diameter) - TSE - Depth: less than 1.5m [64.25 m]; HDPE (200mm Diameter) - TSE - Depth: more than 1.51m [8.83 m] | 13,663.52 | L08 | Z5 | CONS | IRR | Excavation | bef |
| RHD4CZ5L08IRR1202 |  | Bedding works for HDPE Pipline 200 mm - (RD-L-8)-Z5-L08-IRR | 4d | 2027-05-06 | 2027-05-11 | RHD4CZ5L08IRR1102 | -156.02d | 0d | Skilled labor [39.2 h]; Unskilled Labor [78.52 h]; Equipment Opreator [78.52 h]; Excavator-Poclain [39.2 h]; Dump Truck [39.2 h]; HDPE (200mm Diameter) - TSE - Depth: less than 1.5m [32.12 m]; HDPE (200mm Diameter) - TSE - Depth: more than 1.51m [2.94 m] | 6,545.61 | L08 | Z5 | CONS | IRR | Bedding | bef |
| RHD4CZ5L08IRR1302 |  | Installing for HDPE Pipline 200 mm - (RD-L-8)-Z5-L08-IRR | 5d | 2027-05-11 | 2027-05-22 | RHD4CZ5L08IRR1202, RHD4PRSHLDOSIRR1000, RHD4PRSHLSTAGIRR1000 | -156.02d | 11d | Unskilled Labor [101.82 h]; Plumber [50.97 h]; Equipment Opreator [50.97 h]; Boom Truck [50.97 h]; HDPE (200mm Diameter) - TSE - Depth: less than 1.5m [289.12 m]; HDPE (200mm Diameter) - TSE - Depth: more than 1.51m [23.54 m] | 58,344.01 | L08 | Z5 | CONS | IRR | Installation | bef |
| RHD4CZ5L08IRR1402 |  | Primary Test for HDPE Pipline 200 mm - (RD-L-8)-Z5-L08-IRR | 2d | 2027-06-03 | 2027-06-06 | RHD4CZ5L08IRR1302, RHD4CZ5L08IRR3100 | -156.02d | 0d | Unskilled Labor [16.12 h]; Plumber [16.12 h]; Equipment Opreator [16.12 h]; Water Truck [16.12 h]; HDPE (200mm Diameter) - TSE - Depth: less than 1.5m [128.5 m]; HDPE (200mm Diameter) - TSE - Depth: more than 1.51m [11.77 m] | 26,184.38 | L08 | Z5 | CONS | IRR | Primary Test | bef |
| RHD4CZ5L08IRR1502 |  | Backfilling and warning tape works for HDPE Pipline 200 mm - (RD-L-8)-Z5-L08-IRR | 4d | 2027-06-06 | 2027-06-10 | RHD4CZ5L08IRR1402 | -156.02d | 6d | Skilled labor [39.2 h]; Unskilled Labor [78.52 h]; Equipment Opreator [78.52 h]; Excavator-Poclain [39.2 h]; Dump Truck [39.2 h]; HDPE (200mm Diameter) - TSE - Depth: less than 1.5m [128.5 m]; HDPE (200mm Diameter) - TSE - Depth: more than 1.51m [11.77 m] | 26,184.38 | L08 | Z5 | CONS | IRR | Backfilling | bef |
|  | 4437 | **RHD4-02-002-Z5-L08-Medium Voltage Network - MV** |  | 2027-08-04 | 2027-10-16 |  |  |  |  |  |  |  |  |  |  |  |
|  | 4438 | **RHD4-02-002-L08-(MV)-Medium Voltage cable trench** |  | 2027-08-04 | 2027-10-06 |  |  |  |  |  |  |  |  |  |  |  |
| RHD4CZ5L08MV1100 |  | Excavation for Medium Voltage Trench - (RD-L-8)-Z5-L08-MV | 15d | 2027-08-04 | 2027-08-21 | RHD4ENSDZ5APPMV150, RHD4CZ5L08RD3100, RHD4CZ5C061MV1100 | -153d | 0d | Skilled labor [154.21 h]; Unskilled Labor [308.52 h]; Equipment Opreator [462.73 h]; Excavator-Poclain [154.21 h]; Dump Truck [308.52 h]; Excavation for Trench size 40cm wide and 80cm deep ( for 1 cables) [441.41 m3]; Excavation for Trench size 60cm wide and 80cm deep ( for 2 cables) [522.06 m3]; Excavation for Trench size 120cm wide and 80cm deep (for 4 cables) [27.93 m3] | 9,913.95 | L08 | Z5 | CONS | MV | Excavation | AFT |
| RHD4CZ5L08MV1200 |  | Trench Backfilling for Medium Voltage Network - (RD-L-8)-Z5-L08-MV | 15d | 2027-09-19 | 2027-10-06 | RHD4CZ5L08MV1100, RHD4CZ5L08MV3300 | -153d | 0d | Skilled labor [154.21 h]; Unskilled Labor [154.21 h]; Equipment Opreator [308.52 h]; Dump Truck [308.52 h]; Excavation for Trench size 40cm wide and 80cm deep ( for 1 cables) [189.18 m3]; Excavation for Trench size 60cm wide and 80cm deep ( for 2 cables) [223.74 m3]; Excavation for Trench size 120cm wide and 80cm deep (for 4 cables) [11.97 m3] | 4,248.83 | L08 | Z5 | CONS | MV | Backfilling | AFT |
|  | 4439 | **RHD4-02-002-L08-(MV)-Medium Voltage duct banks** |  | 2027-10-07 | 2027-10-16 |  |  |  |  |  |  |  |  |  |  |  |
| RHD4CZ5L08MV2100 |  | Excavation of Duct Banks for Medium Voltage Network - (RD-L-8)-Z5-L08-MV | 2d | 2027-10-07 | 2027-10-09 | RHD4ENSDZ5APPMV150, RHD4CZ5L08MV1200 | -153d | 0d | Unskilled Labor [11.2 h]; Equipment Opreator [22.54 h]; Excavator-Poclain [11.2 h]; Dump Truck [11.2 h]; Duct bank for MV cables UPVC (4xø150mm) [1.55 m] | 617.78 | L08 | Z5 | CONS | MV | Excavation | bef |
| RHD4CZ5L08MV2200 |  | Installation of Duct Banks for Medium Voltage Network - (RD-L-8)-Z5-L08-MV | 2d | 2027-10-10 | 2027-10-11 | RHD4CZ5L08MV2100 | -153d | 0d | Unskilled Labor [16.88 h]; Equipment Opreator [33.76 h]; Excavator-Poclain [16.88 h]; Dump Truck [16.88 h]; Duct bank for MV cables UPVC (4xø150mm) [1.55 m] | 617.78 | L08 | Z5 | CONS | MV | Installing | bef |
| RHD4CZ5L08MV2300 |  | Pouring of Duct Banks for Medium Voltage Network - (RD-L-8)-Z5-L08-MV | 2d | 2027-10-12 | 2027-10-13 | RHD4CZ5L08MV2200 | -153d | 0d | Unskilled Labor [11.2 h]; Equipment Opreator [22.54 h]; Excavator-Poclain [11.2 h]; Dump Truck [11.2 h]; Duct bank for MV cables UPVC (4xø150mm) [10.09 m] | 4,015.54 | L08 | Z5 | CONS | MV | Pouring | bef |
| RHD4CZ5L08MV2400 |  | Backfilling of Duct Banks for Medium Voltage Network - (RD-L-8)-Z5-L08-MV | 2d | 2027-10-14 | 2027-10-16 | RHD4CZ5L08MV2300 | -153d | 13.02d | Unskilled Labor [8.49 h]; Equipment Opreator [16.88 h]; Excavator-Poclain [8.49 h]; Dump Truck [8.49 h]; Duct bank for MV cables UPVC (4xø150mm) [2.33 m] | 926.66 | L08 | Z5 | CONS | MV | Backfilling | bef |
|  | 4440 | **RHD4-02-002-L08-(MV)-Medium Voltage cables 3Cx 500 mm²** |  | 2027-08-22 | 2027-09-20 |  |  |  |  |  |  |  |  |  |  |  |
| RHD4CZ5L08MV3100 |  | Installation of Medium Voltage Cables 3Cx 500 mm² - (RD-L-8)-Z5-L08-MV | 16d | 2027-08-22 | 2027-09-08 | RHD4CZ5L08MV1100, RHD4ENMSMV2000, RHD4ENMSMV2010 | -153d | 0d | Skilled labor [173.16 h]; Unskilled Labor [692.52 h]; Electrician [346.31 h]; Equipment Opreator [519.47 h]; Boom Truck [173.16 h]; Cable Laying Machine [346.31 h]; Cable 13.8 kV 3Cx 500 mm² Al/XLPE,/LLDPE / Unarmored [2146.32 m] | 341,265.31 | L08 | Z5 | CONS | MV | Installation | AFT |
| RHD4CZ5L08MV3200 |  | Joints Installation of Medium Voltage Cables 3Cx 500 mm² - (RD-L-8)-Z5-L08-MV | 3d | 2027-09-09 | 2027-09-12 | RHD4PRSHLDOSMV1300, RHD4CZ5L08MV3100 | -153d | 0d | Skilled labor [27.2 h]; Unskilled Labor [108.9 h]; Electrician [54.45 h]; Equipment Opreator [27.2 h]; Boom Truck [27.2 h]; Straight joints cables for 13.8 kv 3Cx 500 mm², Al /XLPE/LLDPE [5 Unit] | 16,240 | L08 | Z5 | CONS | MV | Joints Installation | AFT |
| RHD4CZ5L08MV3300 |  | Testing of Medium Voltage Cables 3Cx 500 mm² - (RD-L-8)-Z5-L08-MV | 5d | 2027-09-13 | 2027-09-18 | RHD4CZ5L08MV3200 | -153d | 0d | Skilled labor [51.95 h]; Unskilled Labor [207.79 h]; Electrician [103.89 h]; Cable 13.8 kV 3Cx 500 mm² Al/XLPE,/LLDPE / Unarmored [238.48 m] | 37,918.37 | L08 | Z5 | CONS | MV | Testing | AFT |
| RHD4CZ5L08MV3400 |  | Termination of Medium Voltage Cables 3Cx 500 mm² - (RD-L-8)-Z5-L08-MV | 2d | 2027-09-19 | 2027-09-20 | RHD4CZ5L08MV3300 | -134d | 0d | Unskilled Labor [2.4 h]; Electrician [2.4 h]; Cable Termination for 13.8 kv 3Cx 500 mm², Al /XLPE/LLDPE [11.2 Unit] | 29,512 | L08 | Z5 | CONS | MV | Termination | AFT |

| ID | WBS | Activity | Duration | Start | Finish | Predecessors | Total float | Free float | Resources | Cost | RDH4-01-001-Road and Block Names-1 | RDH4-01-001-Zones-1 | RDH4-01-001-Phases-1 | RDH4-01-001-Networks-1 | RDH4-01-001-Work Method-1 | RDH4-01-001-MENEM |
| --- | --- | --- | --- | --- | --- | --- | --- | --- | --- | --- | --- | --- | --- | --- | --- | --- |
|  | 4441 | **RHD4-02-002-L08-(MV)-Medium Voltage cables 3Cx 50 mm²** |  | 2027-09-21 | 2027-09-22 |  |  |  |  |  |  |  |  |  |  |  |
| RHD4CZ5L08MV3401 |  | Termination of Medium Voltage Cables 3Cx 50 mm² - (RD-L-8)-Z5-L08-MV | 2d | 2027-09-21 | 2027-09-22 | RHD4CZ5L08MV3400 | -134d | 32.02d | Unskilled Labor [40.62 h]; Electrician [20.36 h]; Cable Termination for 13.8 kv 3Cx 500 mm², Al /XLPE/LLDPE [2.8 Unit] | 7,378 | L08 | Z5 | CONS | MV | Termination | AFT |
|  | 4442 | **RHD4-02-002-L08-(MV)-Normally open Point (Outdoor Type)** |  | 2027-09-07 | 2027-09-11 |  |  |  |  |  |  |  |  |  |  |  |
| RHD4CZ5L08MV4100 |  | Installation for Normally open Point - (RD-L-8)-Z5-L08-MV | 2d | 2027-09-07 | 2027-09-08 | RHD4CZ5L08MV3100 FF, RHD4PRSHLDOSMV1400, RHD4PRSHLSTAGMV1400 | -124d | 0d | Unskilled Labor [0.11 h]; Equipment Opreator [0.22 h]; Excavator-Poclain [0.11 h]; Dump Truck [0.11 h]; Normally Open Point 13.8 KV Outdoor type [0.9 Unit] | 77,219.1 | L08 | Z5 | CONS | MV | Installation | AFT |
| RHD4CZ5L08MV4200 |  | Termination for Normally open Point - (RD-L-8)-Z5-L08-MV | 2d | 2027-09-09 | 2027-09-11 | RHD4CZ5L08MV4100 | -124d | 42.02d | Unskilled Labor [3.59 h]; Equipment Opreator [7.3 h]; Excavator-Poclain [3.59 h]; Dump Truck [3.59 h]; Normally Open Point 13.8 KV Outdoor type [0.1 Unit] | 8,579.9 | L08 | Z5 | CONS | MV | Termination | AFT |
|  | 4444 | **RHD4-02-002-Z5-L08-Low Voltage Network - LV** |  | 2027-06-15 | 2027-06-29 |  |  |  |  |  |  |  |  |  |  |  |
|  | 4445 | **RHD4-02-002-L08-(LV)-Low Voltage duct banks** |  |  |  |  |  |  |  |  |  |  |  |  |  |  |
|  | 4257 | **RHD4-02-002-L08-(LV)-Low Voltage Drawpit** |  |  |  |  |  |  |  |  |  |  |  |  |  |  |
|  | 4447 | **RHD4-02-002-L08-(LV)-Low Voltage cables** |  | 2027-06-15 | 2027-06-29 |  |  |  |  |  |  |  |  |  |  |  |
| RHD4CZ5L08LV3100 |  | Excavation for Low Voltage Cables for Low Voltage Network - (RD-L-8)-Z5-L08-LV | 4d | 2027-06-15 | 2027-06-20 | RHD4ENSDZ5APPLV160, RHD4CZ5L08IRR3202 | -153.02d | 0d | Skilled labor [35.5 h]; Unskilled Labor [71.11 h]; Equipment Opreator [71.11 h]; Excavator-Poclain [35.5 h]; Boom Truck [35.5 h]; Cable, Copper 4x185mm2/ CU/XLPE/PVC [31.11 m]; Cable, Copper 4x50mm2/ CU/XLPE/PVC +1x25mm2 CU/PVC [132.06 m] | 28,251.84 | L08 | Z5 | CONS | LV | Excavation | AFT |
| RHD4CZ5L08LV3200 |  | Cable Laying of Low Voltage Cables for Low Voltage Network - (RD-L-8)-Z5-L08-LV | 3d | 2027-06-20 | 2027-06-23 | RHD4CZ5L08LV3100, RHD4PRSHLDOSLV1100, RHD4ENMSLV2000, RHD4ENMSLV2010, RHD4PRSHLSTAGLV1100 | -138.02d | 0d | Skilled labor [29.6 h]; Unskilled Labor [118.49 h]; Electrician [59.24 h]; Equipment Opreator [88.87 h]; Boom Truck [29.6 h]; Cable Laying Machine [59.24 h]; Cable, Copper 4x185mm2/ CU/XLPE/PVC [93.32 m]; Cable, Copper 4x50mm2/ CU/XLPE/PVC +1x25mm2 CU/PVC [396.17 m] | 84,750.43 | L08 | Z5 | CONS | LV | Cable Laying | AFT |
| RHD4CZ5L08LV3300 |  | Warning tape and Backfill for Low Voltage Cables for Low Voltage Network - (RD-L-8)-Z5-L08-LV | 3d | 2027-06-23 | 2027-06-27 | RHD4CZ5L08LV3200 | -138.02d | 0d | Skilled labor [29.6 h]; Unskilled Labor [118.49 h]; Electrician [59.24 h]; Equipment Opreator [29.6 h]; Boom Truck [29.6 h]; Cable, Copper 4x185mm2/ CU/XLPE/PVC [23.33 m]; Cable, Copper 4x50mm2/ CU/XLPE/PVC +1x25mm2 CU/PVC [99.04 m] | 21,187.3 | L08 | Z5 | CONS | LV | Warning tape and Backfill | AFT |
| RHD4CZ5L08LV3400 |  | Testing of Low Voltage Cables for Low Voltage Network - (RD-L-8)-Z5-L08-LV | 2d | 2027-06-27 | 2027-06-29 | RHD4CZ5L08LV3300 | -138.02d | 0d | Skilled labor [17.75 h]; Unskilled Labor [71.11 h]; Electrician [35.5 h]; Equipment Opreator [17.75 h]; Boom Truck [17.75 h]; Cable, Copper 4x185mm2/ CU/XLPE/PVC [7.78 m]; Cable, Copper 4x50mm2/ CU/XLPE/PVC +1x25mm2 CU/PVC [33.01 m] | 7,063.31 | L08 | Z5 | CONS | LV | Testing | AFT |
|  | 4259 | **RHD4-02-002-L08-(LV)-Low Voltage Distribution Pillars** |  | 2027-06-20 | 2027-06-27 |  |  |  |  |  |  |  |  |  |  |  |
| RHD4CZ5L08LV4100 |  | Leveling for Distribution Pillars for Low Voltage Network - (RD-L-8)-Z5-L08-LV | 2d | 2027-06-20 | 2027-06-22 | RHD4CZ5L08LV3100 | -136.02d | 0d | Skilled labor [10.89 h]; Unskilled Labor [21.78 h]; Equipment Opreator [4.36 h]; Excavator-Poclain [2.18 h]; Boom Truck [2.18 h]; 0.6/1 KV Low Voltage Distribution Pillars with main breaker MCCB type and 5 Outgoing feeders MCCB type [0.15 Unit]; Supply and installation of KWH meter mounting frame including concrete block wall for installation of KWH meter according to the standards and specifications of SEC [0.15 Unit] | 3,088.8 | L08 | Z5 | CONS | LV | Leveling | AFT |
| RHD4CZ5L08LV4200 |  | Lean Concrete for Distribution Pillars for Low Voltage Network - (RD-L-8)-Z5-L08-LV | 2d | 2027-06-22 | 2027-06-24 | RHD4CZ5L08LV4100 | -136.02d | 0d | Skilled labor [7.3 h]; Unskilled Labor [14.48 h]; Equipment Opreator [2.94 h]; Concrete Mixer Truck [1.42 h]; Concrete Pump [1.42 h]; 0.6/1 KV Low Voltage Distribution Pillars with main breaker MCCB type and 5 Outgoing feeders MCCB type [0.25 Unit]; Supply and installation of KWH meter mounting frame including concrete block wall for installation of KWH meter according to the standards and specifications of SEC [0.25 Unit] | 5,148 | L08 | Z5 | CONS | LV | Lean Concrete | AFT |
| RHD4CZ5L08LV4300 |  | Installation of Distribution Pillars for Low Voltage Network - (RD-L-8)-Z5-L08-LV | 2d | 2027-06-24 | 2027-06-27 | RHD4CZ5L08LV4200 | -136.02d | 2d | Skilled labor [10.89 h]; Unskilled Labor [43.56 h]; Electrician [21.78 h]; Equipment Opreator [10.89 h]; Boom Truck [10.89 h]; 0.6/1 KV Low Voltage Distribution Pillars with main breaker MCCB type and 5 Outgoing feeders MCCB type [0.6 Unit]; Supply and installation of KWH meter mounting frame including concrete block wall for installation of KWH meter according to the standards and specifications of SEC [0.6 Unit] | 12,355.2 | L08 | Z5 | CONS | LV | Installation | AFT |
|  | 4450 | **RHD4-02-002-Z5-L08-Street Lighting Network - SL** |  | 2027-06-20 | 2027-08-24 |  |  |  |  |  |  |  |  |  |  |  |
|  | 4451 | **RHD4-02-002-L08-(SL)-Street Lighting duct banks** |  | 2027-06-20 | 2027-06-29 |  |  |  |  |  |  |  |  |  |  |  |
| RHD4CZ5L08SL2100 |  | Excavation of Duct Banks for Street Lighting Network - (RD-L-8)-Z5-L08-SL | 2d | 2027-06-20 | 2027-06-22 | RHD4ENSDZ5APPSL170, RHD4CZ5L08LV3100 | -138.02d | 0d | Skilled labor [12.63 h]; Unskilled Labor [12.63 h]; Equipment Opreator [25.37 h]; Excavator-Poclain [12.63 h]; Dump Truck [12.63 h]; Road Crossing Duct for Street Lighting cables UPVC (2x?110mm) [1.75 m] | 352.71 | L08 | Z5 | CONS | SL | Excavation | bef |
| RHD4CZ5L08SL2200 |  | Installation of Duct Banks for Street Lighting Network - (RD-L-8)-Z5-L08-SL | 2d | 2027-06-22 | 2027-06-24 | RHD4CZ5L08SL2100 | -138.02d | 0d | Carpenter [1.85 h]; Skilled labor [19.06 h]; Unskilled Labor [19.06 h]; Steel Fixer [1.85 h]; Road Crossing Duct for Street Lighting cables UPVC (2x?110mm) [1.75 m] | 352.71 | L08 | Z5 | CONS | SL | Installing | bef |
| RHD4CZ5L08SL2300 |  | Pouring of Duct Banks for Street Lighting Network - (RD-L-8)-Z5-L08-SL | 2d | 2027-06-24 | 2027-06-27 | RHD4CZ5L08SL2200 | -138.02d | 0d | Skilled labor [12.63 h]; Unskilled Labor [12.63 h]; Equipment Opreator [5.12 h]; Concrete Mixer Truck [2.5 h]; Concrete Pump [2.5 h]; Road Crossing Duct for Street Lighting cables UPVC (2x?110mm) [11.35 m] | 2,292.64 | L08 | Z5 | CONS | SL | Pouring | bef |
| RHD4CZ5L08SL2400 |  | Backfilling of Duct Banks for Street Lighting Network - (RD-L-8)-Z5-L08-SL | 2d | 2027-06-27 | 2027-06-29 | RHD4CZ5L08SL2300 | -138.02d | 0d | Skilled labor [9.47 h]; Unskilled Labor [9.47 h]; Equipment Opreator [3.81 h]; Excavator-Poclain [3.81 h]; Road Crossing Duct for Street Lighting cables UPVC (2x?110mm) [2.62 m] | 529.07 | L08 | Z5 | CONS | SL | Backfilling | bef |
|  | 4452 | **RHD4-02-002-L08-(SL)-Street Lighting Drawpit** |  | 2027-06-29 | 2027-07-04 |  |  |  |  |  |  |  |  |  |  |  |
| RHD4CZ5L08SL5100 |  | Excavation of Drawpit size 600x600x900mm for Street Lighting Network - (RD-L-8)-Z5-L08-SL | 2d | 2027-06-29 | 2027-07-01 | RHD4CZ5L08SL2300, RHD4ENSDZ5APPSL170, RHD4CZ5L08LV3400, RHD4CZ5L08LV4300, RHD4CZ5L08SL2400 | -138.02d | 0d | Skilled labor [1.85 h]; Unskilled Labor [1.85 h]; Equipment Opreator [1.42 h]; Excavator-Poclain [0.8 h]; Dump Truck [0.8 h]; Drawpit with medium duty steel cover, size600x600x900mm, [0.3 Unit] | 735.3 | L08 | Z5 | CONS | SL | Excavation | AFT |
| RHD4CZ5L08SL5200 |  | Installation of Drawpit size 600x600x900mm for Street Lighting Network - (RD-L-8)-Z5-L08-SL | 2d | 2027-07-01 | 2027-07-04 | RHD4CZ5L08SL5100, RHD4PRSHLDOSSL1400, RHD4PRSHLSTAGSL1400 | -138.02d | 0d | Skilled labor [1.85 h]; Unskilled Labor [1.85 h]; Equipment Opreator [0.8 h]; Boom Truck [0.8 h]; Drawpit with medium duty steel cover, size600x600x900mm, [1.7 Unit] | 4,166.7 | L08 | Z5 | CONS | SL | Installation | AFT |

| ID | WBS | Activity | Duration | Start | Finish | Predecessors | Total float | Free float | Resources | Cost | RDH4-01-001-Road and Block Names-1 | RDH4-01-001-Zones-1 | RDH4-01-001-Phases-1 | RDH4-01-001-Networks-1 | RDH4-01-001-Work Method-1 | RDH4-01-001-MENEM |
| --- | --- | --- | --- | --- | --- | --- | --- | --- | --- | --- | --- | --- | --- | --- | --- | --- |
|  | 4453 | **RHD4-02-002-L08-(SL)-Street Lighting cables** |  | 2027-07-04 | 2027-07-31 |  |  |  |  |  |  |  |  |  |  |  |
| RHD4CZ5L08SL3100 |  | Excavation for Street Lighting Cables for Street Lighting Network - (RD-L-8)-Z5-L08-SL | 7d | 2027-07-04 | 2027-07-12 | RHD4ENSDZ5APPSL170, RHD4CZ5L08SL5200 | -138.02d | 0d | Skilled labor [67.85 h]; Unskilled Labor [135.69 h]; Equipment Opreator [135.69 h]; Excavator-Poclain [67.85 h]; Boom Truck [67.85 h]; Cable, Copper 4x10mm2/ CU/XLPE/SWA/PVC + 1x10mm2 CU/PVC [311.46 m] | 15,261.67 | L08 | Z5 | CONS | SL | Excavation | AFT |
| RHD4CZ5L08SL3200 |  | Cable Laying of Street Lighting Cables for Street Lighting Network - (RD-L-8)-Z5-L08-SL | 6d | 2027-07-12 | 2027-07-19 | RHD4CZ5L08SL3100, RHD4ENMSSL2000, RHD4ENMSSL2010 | -138.02d | 0d | Skilled labor [56.52 h]; Unskilled Labor [226.08 h]; Electrician [113.04 h]; Equipment Opreator [169.6 h]; Boom Truck [56.52 h]; Cable Laying Machine [113.04 h]; Cable, Copper 4x10mm2/ CU/XLPE/SWA/PVC + 1x10mm2 CU/PVC [934.39 m] | 45,785.02 | L08 | Z5 | CONS | SL | Cable Laying | AFT |
| RHD4CZ5L08SL3300 |  | Warning tape and Backfill for Street Lighting Cables for Street Lighting Network - (RD-L-8)-Z5-L08-SL | 6d | 2027-07-19 | 2027-07-26 | RHD4CZ5L08SL3200 | -138.02d | 0d | Skilled labor [56.52 h]; Unskilled Labor [226.08 h]; Electrician [113.04 h]; Equipment Opreator [56.52 h]; Boom Truck [56.52 h]; Cable, Copper 4x10mm2/ CU/XLPE/SWA/PVC + 1x10mm2 CU/PVC [233.6 m] | 11,446.4 | L08 | Z5 | CONS | SL | Warning tape and Backfill | AFT |
| RHD4CZ5L08SL3400 |  | Testing of Street Lighting Cables for Street Lighting Network - (RD-L-8)-Z5-L08-SL | 4d | 2027-07-26 | 2027-07-31 | RHD4CZ5L08SL3300 | -138.02d | 0d | Skilled labor [33.87 h]; Unskilled Labor [135.69 h]; Electrician [67.85 h]; Equipment Opreator [33.87 h]; Boom Truck [33.87 h]; Cable, Copper 4x10mm2/ CU/XLPE/SWA/PVC + 1x10mm2 CU/PVC [77.87 m] | 3,815.42 | L08 | Z5 | CONS | SL | Testing | AFT |
|  | 4454 | **RHD4-02-002-L08-(SL)-Street Lighting Poles** |  | 2027-07-31 | 2027-08-24 |  |  |  |  |  |  |  |  |  |  |  |
| RHD4CZ5L08SL1100 |  | Excavation for RC Base for Lighting Poles for Street Lighting Network - (RD-L-8)-Z5-L08-SL | 4d | 2027-07-31 | 2027-08-04 | RHD4ENSDZ5APPSL170, RHD4CZ5L08SL3400 | -138.02d | 0d | Skilled labor [36.26 h]; Unskilled Labor [36.26 h]; Equipment Opreator [72.64 h]; Excavator-Poclain [36.26 h]; Dump Truck [36.26 h]; Lighting poles single arms, height of ( 10 ) meters [5 Unit] | 17,035 | L08 | Z5 | CONS | SL | Excavation | AFT |
| RHD4CZ5L08SL1200 |  | Installation for RC Base for Lighting Poles for Street Lighting Network - (RD-L-8)-Z5-L08-SL | 4d | 2027-08-04 | 2027-08-09 | RHD4CZ5L08SL1100 | -138.02d | 0d | Skilled labor [36.26 h]; Unskilled Labor [36.26 h]; Equipment Opreator [72.64 h]; Excavator-Poclain [36.26 h]; Dump Truck [36.26 h]; Lighting poles single arms, height of ( 10 ) meters [12.5 Unit] | 42,587.5 | L08 | Z5 | CONS | SL | RC Base | AFT |
| RHD4CZ5L08SL1300 |  | Backfill for RC Base for Lighting Poles for Street Lighting Network - (RD-L-8)-Z5-L08-SL | 4d | 2027-08-09 | 2027-08-14 | RHD4CZ5L08SL1200 | -138.02d | 0d | Skilled labor [36.26 h]; Unskilled Labor [36.26 h]; Equipment Opreator [72.64 h]; Excavator-Poclain [36.26 h]; Dump Truck [36.26 h]; Lighting poles single arms, height of ( 10 ) meters [2.5 Unit] | 8,517.5 | L08 | Z5 | CONS | SL | Backfill | AFT |
| RHD4CZ5L08SL1400 |  | Installation for Lighting Poles for Street Lighting Network - (RD-L-8)-Z5-L08-SL | 5d | 2027-08-14 | 2027-08-19 | RHD4CZ5L08SL1300, RHD4ENMSSL2000, RHD4ENMSSL2010 | -138.02d | 0d | Skilled labor [54.45 h]; Unskilled Labor [54.45 h]; Electrician [54.45 h]; Equipment Opreator [54.45 h]; Boom Truck [54.45 h]; Lighting poles single arms, height of ( 10 ) meters [30 Unit] | 102,210 | L08 | Z5 | CONS | SL | Poles Installation | AFT |
| RHD4CZ5L08SL1500 |  | Luminaire Installation for Lighting Poles for Street Lighting Network - (RD-L-8)-Z5-L08-SL | 4d | 2027-08-19 | 2027-08-24 | RHD4CZ5L08SL1400, RHD4PRSHLDOSSL1300, RHD4PRSHLSTAGSL1300 | -138.02d | 0d | Unskilled Labor [72.64 h]; Electrician [36.26 h]; Equipment Opreator [7.3 h]; Boom Truck [14.48 h]; Street Lighting( LED) Luminaire of Output ?10898 lumen [50 Unit] | 29,400 | L08 | Z5 | CONS | SL | Luminaire Installation | AFT |
|  | 4462 | **RHD4-02-002-Z5-L08-Telecommunications Network - TC** |  | 2027-01-30 | 2027-10-02 |  |  |  |  |  |  |  |  |  |  |  |
|  | 4463 | **RHD4-02-002-L08-(TC)-Telecommunications Ducts** |  | 2027-08-24 | 2027-10-02 |  |  |  |  |  |  |  |  |  |  |  |
| RHD4CZ5L08TC2100 |  | Excavation of HDPE Ducts for Telecom Network - (RD-L-8)-Z5-L08-TC | 9d | 2027-08-24 | 2027-09-04 | RHD4CZ5L08TC3400, RHD4ENSDZ5APPTC190, RHD4CZ5L08SL1500 | -138.02d | 0d | Skilled labor [97.25 h]; Unskilled Labor [97.25 h]; Equipment Opreator [194.5 h]; Excavator-Poclain [97.25 h]; Dump Truck [97.25 h]; (6*50mm) HDPE ducts -TC [167.5 m]; (6*50mm+2*32mm) HDPE ducts -TC [94.42 m]; (2*32mm) HDPE ducts -TC [5.94 m] | 25,233.74 | L08 | Z5 | CONS | TC | Excavation | AFT |
| RHD4CZ5L08TC2200 |  | Installation of HDPE Ducts for Telecom Network - (RD-L-8)-Z5-L08-TC | 14d | 2027-09-04 | 2027-09-20 | RHD4CZ5L08TC2100, RHD4PRSHLDOSTC1000, RHD4PRSHLSTAGTC1000 | -138.02d | 0d | Carpenter [14.59 h]; Skilled labor [145.82 h]; Unskilled Labor [145.82 h]; Steel Fixer [14.59 h]; (6*50mm) HDPE ducts -TC [544.38 m]; (6*50mm+2*32mm) HDPE ducts -TC [306.87 m]; (2*32mm) HDPE ducts -TC [19.3 m] | 82,009.65 | L08 | Z5 | CONS | TC | Installing | AFT |
| RHD4CZ5L08TC2400 |  | Backfilling of HDPE Ducts for Telecom Network - (RD-L-8)-Z5-L08-TC | 9d | 2027-09-20 | 2027-10-02 | RHD4CZ5L08TC2200, RHD4CZ5L08TC5200, RHD4CZ5L08TC5200 FF | -138.02d | 0d | Skilled labor [97.25 h]; Unskilled Labor [97.25 h]; Equipment Opreator [38.88 h]; Excavator-Poclain [38.88 h]; (6*50mm) HDPE ducts -TC [125.62 m]; (6*50mm+2*32mm) HDPE ducts -TC [70.81 m]; (2*32mm) HDPE ducts -TC [4.46 m] | 18,925.31 | L08 | Z5 | CONS | TC | Backfilling | AFT |
|  | 4464 | **RHD4-02-002-L08-(TC)-Telecommunications Manholes** |  | 2027-09-04 | 2027-09-15 |  |  |  |  |  |  |  |  |  |  |  |
| RHD4CZ5L08TC5100 |  | Excavation for Manholes for Telecom Network - (RD-L-8)-Z5-L08-TC | 5d | 2027-09-04 | 2027-09-09 | RHD4CZ5L08TC2100, RHD4ENSDZ5APPTC190 | -134.02d | 0d | Skilled labor [16.34 h]; Unskilled Labor [16.34 h]; Equipment Opreator [13.07 h]; Excavator-Poclain [6.53 h]; Dump Truck [6.53 h]; Manhole Type 1 - TC [1.2 nr]; Manhole Type 2 - TC [0.3 nr] | 10,111.5 | L08 | Z5 | CONS | TC | Excavation | AFT |
| RHD4CZ5L08TC5200 |  | Installation of Manholes for Telecom Network - (RD-L-8)-Z5-L08-TC | 5d | 2027-09-09 | 2027-09-15 | RHD4CZ5L08TC5100, RHD4CZ5L08TC2200 SS, RHD4PRSHLDOSTC1200, RHD4PRSHLSTAGTC1200 | -134.02d | 4d | Skilled labor [16.34 h]; Unskilled Labor [16.34 h]; Equipment Opreator [6.53 h]; Boom Truck [6.53 h]; Manhole Type 1 - TC [6.8 nr]; Manhole Type 2 - TC [1.7 nr] | 57,298.5 | L08 | Z5 | CONS | TC | Installation | AFT |
|  | 4465 | **RHD4-02-002-L08-(TC)-Telecomminications Road Crossings** |  | 2027-01-30 | 2027-02-08 |  |  |  |  |  |  |  |  |  |  |  |
| RHD4CZ5L08TC3100 |  | Excavation for Road Crossings for Telecom Network - (RD-L-8)-Z5-L08-TC | 2d | 2027-01-30 | 2027-01-31 | RHD4ENSDZ5APPTC190, RHD4CZ5L08ST3102 | -169d | 0d | Skilled labor [10.89 h]; Unskilled Labor [10.89 h]; Equipment Opreator [21.78 h]; Excavator-Poclain [10.89 h]; Dump Truck [10.89 h]; Road crossing ducts, (6*50mm) HDPE -TC [2 m] | 76 | L08 | Z5 | CONS | TC | Excavation | bef |
| RHD4CZ5L08TC3200 |  | Installation of Road Crossings for Telecom Network - (RD-L-8)-Z5-L08-TC | 2d | 2027-02-01 | 2027-02-02 | RHD4CZ5L08TC3100, RHD4PRSHLDOSTC1100, RHD4PRSHLSTAGTC1100 | -169d | 0d | Carpenter [1.42 h]; Skilled labor [14.48 h]; Unskilled Labor [14.48 h]; Steel Fixer [1.42 h]; Road crossing ducts, (6*50mm) HDPE -TC [2 m] | 76 | L08 | Z5 | CONS | TC | Installing | bef |
| RHD4CZ5L08TC3300 |  | Pouring of Road Crossings for Telecom Network - (RD-L-8)-Z5-L08-TC | 2d | 2027-02-03 | 2027-02-04 | RHD4CZ5L08TC3200 | -169d | 1d | Skilled labor [14.48 h]; Unskilled Labor [14.48 h]; Equipment Opreator [5.77 h]; Concrete Mixer Truck [2.94 h]; Concrete Pump [2.94 h]; Road crossing ducts, (6*50mm) HDPE -TC [13 m] | 494 | L08 | Z5 | CONS | TC | Pouring | bef |
| RHD4CZ5L08TC3400 |  | Backfilling of Road Crossings for Telecom Network - (RD-L-8)-Z5-L08-TC | 2d | 2027-02-07 | 2027-02-08 | RHD4CZ5L08TC3300, RHD4CZ6A02ST7500 | -170d | 1d | Skilled labor [10.89 h]; Unskilled Labor [10.89 h]; Equipment Opreator [4.36 h]; Excavator-Poclain [4.36 h]; Road crossing ducts, (6*50mm) HDPE -TC [3 m] | 114 | L08 | Z5 | CONS | TC | Backfilling | bef |

| ID | WBS | Activity | Duration | Start | Finish | Predecessors | Complete | Planned start | Planned finish | Total float | Free float | Resources | Cost | Actual cost | RDH4-01-001-Road and Block Names-1 | RDH4-01-001-Zones-1 | RDH4-01-001-Phases-1 | RDH4-01-001-Networks-1 | RDH4-01-001-Work Method-1 | RDH4-01-001-MENEM |
| --- | --- | --- | --- | --- | --- | --- | --- | --- | --- | --- | --- | --- | --- | --- | --- | --- | --- | --- | --- | --- |
|  | 4466 | **RHD4-02-002-Z5-L08-Information and Communication Technologies - ICT** |  | 2027-10-02 | 2027-11-10 |  |  |  |  |  |  |  |  |  |  |  |  |  |  |  |
|  | 4467 | **RHD4-02-002-L08-(ICT)-Information and Communication Technologies Ducts** |  | 2027-10-02 | 2027-11-10 |  |  |  |  |  |  |  |  |  |  |  |  |  |  |  |
| RHD4CZ5L08ICT2100 |  | Excavation of HDPE Ducts for ICT Network - (RD-L-8)-Z5-L08-ICT | 10d | 2027-10-02 | 2027-10-13 | RHD4ENSDZ5APPICT200, RHD4CZ5L08TC2400 |  |  |  | -138.02d | 0d | Skilled labor [100.19 h]; Unskilled Labor [100.19 h]; Equipment Opreator [200.38 h]; Excavator-Poclain [100.19 h]; Dump Truck [100.19 h]; (2*50mm) HDPE ducts -ICT [162.06 m]; (2*50mm+2*32mm) HDPE ducts -ICT [104.62 m]; (2*32mm) HDPE ducts -ICT [9.34 m] | 14,008.48 |  | L08 | Z5 | CONS | ICT | Excavation | AFT |
| RHD4CZ5L08ICT2200 |  | Installation of HDPE Ducts for ICT Network - (RD-L-8)-Z5-L08-ICT | 14d | 2027-10-13 | 2027-10-30 | RHD4CZ5L08ICT2100, RHD4PRSHLDOSICT1000, RHD4PRSHLSTAGICT1000 |  |  |  | -138.02d | 0d | Carpenter [15.03 h]; Skilled labor [150.29 h]; Unskilled Labor [150.29 h]; Steel Fixer [15.03 h]; (2*50mm) HDPE ducts -ICT [526.7 m]; (2*50mm+2*32mm) HDPE ducts -ICT [340.01 m]; (2*32mm) HDPE ducts -ICT [30.36 m] | 45,527.75 |  | L08 | Z5 | CONS | ICT | Installing | AFT |
| RHD4CZ5L08ICT2400 |  | Backfilling of HDPE Ducts for ICT Network - (RD-L-8)-Z5-L08-ICT | 10d | 2027-10-30 | 2027-11-10 | RHD4CZ5L08ICT2200, RHD4CZ5L08ICT5200 |  |  |  | -138.02d | 0d | Skilled labor [100.19 h]; Unskilled Labor [100.19 h]; Equipment Opreator [40.08 h]; Excavator-Poclain [40.08 h]; (2*50mm) HDPE ducts -ICT [121.55 m]; (2*50mm+2*32mm) HDPE ducts -ICT [78.47 m]; (2*32mm) HDPE ducts -ICT [7 m] | 10,506.36 |  | L08 | Z5 | CONS | ICT | Backfilling | AFT |
|  | 4468 | **RHD4-02-002-L08-(ICT)-Information and Communication Technologies Manholes** |  | 2027-10-13 | 2027-10-25 |  |  |  |  |  |  |  |  |  |  |  |  |  |  |  |
| RHD4CZ5L08ICT5100 |  | Excavation for Manholes for ICT Network - (RD-L-8)-Z5-L08-ICT | 5d | 2027-10-13 | 2027-10-19 | RHD4CZ5L08ICT2100, RHD4ENSDZ5APPICT200 |  |  |  | -134.02d | 0d | Skilled labor [16.34 h]; Unskilled Labor [16.34 h]; Equipment Opreator [13.07 h]; Excavator-Poclain [6.53 h]; Dump Truck [6.53 h]; Manhole Type 1 - ICT [1.2 nr]; Manhole Type 2 - ICT [0.3 nr] | 8,089.5 |  | L08 | Z5 | CONS | ICT | Excavation | AFT |
| RHD4CZ5L08ICT5200 |  | Installation of Manholes for ICT Network - (RD-L-8)-Z5-L08-ICT | 5d | 2027-10-19 | 2027-10-25 | RHD4CZ5L08ICT5100, RHD4CZ5L08ICT2200 SS, RHD4PRSHLDOSICT1200, RHD4PRSHLSTAGICT1200 |  |  |  | -134.02d | 4d | Skilled labor [16.34 h]; Unskilled Labor [16.34 h]; Equipment Opreator [6.53 h]; Boom Truck [6.53 h]; Manhole Type 1 - ICT [6.8 nr]; Manhole Type 2 - ICT [1.7 nr] | 45,840.5 |  | L08 | Z5 | CONS | ICT | Installation | AFT |
|  | 5415 | **RHD4-02-002-L08-(ICT)-Information and Communication Technologies Road Crossings** |  |  |  |  |  |  |  |  |  |  |  |  |  |  |  |  |  |  |
|  | 4457 | **RHD4-02-002-Z5-L08-Landscape Network - LS** |  |  |  |  |  |  |  |  |  |  |  |  |  |  |  |  |  |  |
|  | 4458 | **RHD4-02-002-L08-(LS)-Landscape Lighting cables** |  |  |  |  |  |  |  |  |  |  |  |  |  |  |  |  |  |  |
|  | 4459 | **RHD4-02-002-L08-(LS)-Landscape Feeder Pillars** |  |  |  |  |  |  |  |  |  |  |  |  |  |  |  |  |  |  |
|  | 4460 | **RHD4-02-002-L08-(LS)-Landscape Bollard Poles** |  |  |  |  |  |  |  |  |  |  |  |  |  |  |  |  |  |  |
|  | 4461 | **RHD4-02-002-L08-(LS)-Landscape Feeder Pillars Earthing** |  |  |  |  |  |  |  |  |  |  |  |  |  |  |  |  |  |  |
|  | 4470 | **RHD4-02-002-Z5-L08-Security Network - CCTV** |  |  |  |  |  |  |  |  |  |  |  |  |  |  |  |  |  |  |
|  | 4471 | **RHD4-02-002-L08-(CCTV)-Civil Works** |  |  |  |  |  |  |  |  |  |  |  |  |  |  |  |  |  |  |
|  | 4851 | **RHD4-02-002-L08-(CCTV)-CCTV Poles** |  |  |  |  |  |  |  |  |  |  |  |  |  |  |  |  |  |  |
|  | 4852 | **RHD4-02-002-L08-(CCTV)-Camera** |  |  |  |  |  |  |  |  |  |  |  |  |  |  |  |  |  |  |
|  | 4853 | **RHD4-02-002-L08-(CCTV)-Power and Infrastructure** |  |  |  |  |  |  |  |  |  |  |  |  |  |  |  |  |  |  |
|  | 4855 | **RHD4-02-002-L08-(CCTV)-CCTV Panels and Components** |  |  |  |  |  |  |  |  |  |  |  |  |  |  |  |  |  |  |
|  | 3731 | **RHD4-02-002-Z5-L016** |  | 2026-06-03 | 2028-03-13 |  |  |  |  |  |  |  |  |  |  |  |  |  |  |  |
|  | 3762 | **RHD4-02-002-Z5-L016-Crossings Sewage Network - SWCr** |  |  |  |  |  |  |  |  |  |  |  |  |  |  |  |  |  |  |
|  | 3772 | **RHD4-02-002-L016-(SWCr)-MH Works - 1200 mm diameter** |  |  |  |  |  |  |  |  |  |  |  |  |  |  |  |  |  |  |
|  | 3763 | **RHD4-02-002-L016-(SWCr)-GRP Pipes - 300 mm diameter** |  |  |  |  |  |  |  |  |  |  |  |  |  |  |  |  |  |  |
|  | 3768 | **RHD4-02-002-L016-(SWCr)-UPVC Pipes - 200 mm diameter** |  |  |  |  |  |  |  |  |  |  |  |  |  |  |  |  |  |  |
|  | 3769 | **RHD4-02-002-L016-(SWCr)-HDPE Pipes - 250 mm diameter** |  |  |  |  |  |  |  |  |  |  |  |  |  |  |  |  |  |  |
|  | 3783 | **RHD4-02-002-L016-(SWCr)-Gate Valves (Direct Buried)** |  |  |  |  |  |  |  |  |  |  |  |  |  |  |  |  |  |  |
|  | 3806 | **RHD4-02-002-Z5-L016-Crossings Potable Network - PTCr** |  |  |  |  |  |  |  |  |  |  |  |  |  |  |  |  |  |  |
|  | 3809 | **RHD4-02-002-L016-(PTCr)-HDPE Pipes - 200 mm diameter** |  |  |  |  |  |  |  |  |  |  |  |  |  |  |  |  |  |  |
|  | 3808 | **RHD4-02-002-L016-(PTCr)-HDPE Pipes - 160 mm diameter** |  |  |  |  |  |  |  |  |  |  |  |  |  |  |  |  |  |  |
|  | 3807 | **RHD4-02-002-L016-(PTCr)-HDPE Pipes - 110 mm diameter** |  |  |  |  |  |  |  |  |  |  |  |  |  |  |  |  |  |  |
|  | 3812 | **RHD4-02-002-L016-(PTCr)-Gate Valves (Direct Buried)** |  |  |  |  |  |  |  |  |  |  |  |  |  |  |  |  |  |  |
|  | 3853 | **RHD4-02-002-Z5-L016-Crossings Irrigation Network - IRRC** |  |  |  |  |  |  |  |  |  |  |  |  |  |  |  |  |  |  |
|  | 3854 | **RHD4-02-002-L016-(IRRC)-HDPE Pipes - 160 mm diameter** |  |  |  |  |  |  |  |  |  |  |  |  |  |  |  |  |  |  |
|  | 3856 | **RHD4-02-002-L016-(IRRC)-HDPE Pipes - 200 mm diameter** |  |  |  |  |  |  |  |  |  |  |  |  |  |  |  |  |  |  |
|  | 3858 | **RHD4-02-002-L016-(IRRC)-HDPE Pipes - 315 mm diameter** |  |  |  |  |  |  |  |  |  |  |  |  |  |  |  |  |  |  |
|  | 3862 | **RHD4-02-002-L016-(IRRC)-Gate Valves (Direct Buried)** |  |  |  |  |  |  |  |  |  |  |  |  |  |  |  |  |  |  |
|  | 3863 | **RHD4-02-002-L016-(IRRC)-Butterfly Valve Chamber** |  |  |  |  |  |  |  |  |  |  |  |  |  |  |  |  |  |  |
|  | 3864 | **RHD4-02-002-L016-(IRRC)-Butterfly Valves** |  |  |  |  |  |  |  |  |  |  |  |  |  |  |  |  |  |  |
|  | 3867 | **RHD4-02-002-L016-(IRRC)-Air Valve Chamber** |  |  |  |  |  |  |  |  |  |  |  |  |  |  |  |  |  |  |
|  | 3868 | **RHD4-02-002-L016-(IRRC)-Air Valves** |  |  |  |  |  |  |  |  |  |  |  |  |  |  |  |  |  |  |
|  | 3910 | **RHD4-02-002-Z5-L016-Road Works - RD** |  | 2026-06-03 | 2028-03-13 |  |  |  |  |  |  |  |  |  |  |  |  |  |  |  |
|  | 3911 | **RHD4-02-002-L016-(RD)-Subgrade** |  | 2026-06-03 | 2026-08-03 |  |  |  |  |  |  |  |  |  |  |  |  |  |  |  |
| RHD4CZ5L016RD1100 |  | Supply, lay and compaction subgrade compacted thickness 300 mm for Roads - (RD-L-16)-Z5-L016-RD(Completed) | 7d | 2026-06-03 A | 2026-08-03 A | RHD4ENSDZ5APPRD220, RHD4ENSDZ5APPEW100 SS, RHD4CZ5L016ST3302, RHD4CZ5L016ST1508, RHD4CZ5L016ICT3400, RHD4CZ5L016TC3400 | 100% | 2026-08-24 | 2026-08-31 |  |  | Skilled labor [44.43 h]; Unskilled Labor [88.87 h]; Electrician [44.43 h]; Equipment Opreator [303.41 h]; Water Truck [14.7 h]; Roller compactor [22.22 h]; Grader [44.43 h]; Dump Truck [222.16 h]; Subgrade [3494.67 m3] | 66,398.73 | 66,398.73 | L016 | Z5 | CONS | RD | Subgrade | bef |

| ID | WBS | Activity | Duration | Start | Finish | Predecessors | Complete | Planned start | Planned finish | Total float | Free float | Resources | Cost | Actual cost | RDH4-01-001-Road and Block Names-1 | RDH4-01-001-Zones-1 | RDH4-01-001-Phases-1 | RDH4-01-001-Networks-1 | RDH4-01-001-Work Method-1 | RDH4-01-001-MENEM |
| --- | --- | --- | --- | --- | --- | --- | --- | --- | --- | --- | --- | --- | --- | --- | --- | --- | --- | --- | --- | --- |
|  | 3912 | **RHD4-02-002-L016-(RD)-Aggregate Base Course** |  | 2027-02-21 | 2027-02-27 |  |  |  |  |  |  |  |  |  |  |  |  |  |  |  |
| RHD4CZ5L016RD2100 |  | Supply, lay and compaction Aggregate base course compacted thickness 300 mmfor Roads - (RD-L-16)-Z5-L016-RD | 5d | 2027-02-21 | 2027-02-27 | RHD4PRSHLDOSRD1000, RHD4PRSHLSTAGRD1000, RHD4ENSDZ5APPRD220, RHD4ENSDZ5APPEW100 SS, RHD4CZ5L016RD1100 |  |  |  | -181d | 0d | Skilled labor [26.9 h]; Unskilled Labor [53.8 h]; Equipment Opreator [340.65 h]; Water Truck [17.75 h]; Roller compactor [53.8 h]; Grader [53.8 h]; Dump Truck [215.3 h]; Aggregate Base Courses [2195 m3] | 125,115 |  | L016 | Z5 | CONS | RD | ABC | bef |
|  | 3913 | **RHD4-02-002-L016-(RD)-Bituminous base course Two Layers, including (MC1)&(RC2)** |  | 2027-02-28 | 2028-02-07 |  |  |  |  |  |  |  |  |  |  |  |  |  |  |  |
| RHD4CZ5L016RD3100 |  | Supply, lay and Asphaltic base course including Prime Coat (MC1) for 1st Layer - (RD-L-16)-Z5-L016-RD | 2d | 2027-02-28 | 2027-03-01 | RHD4CZ5L016RD2100, RHD4PRSHLDOSRD1100, RHD4ENMSASPH2000, RHD4ENMSASPH2010, RHD4PRSHLSTAGRD1100 |  |  |  | -181d | 4d | Skilled labor [12.63 h]; Unskilled Labor [75.47 h]; Equipment Opreator [188.73 h]; Bobcat [12.63 h]; Roller compactor [12.63 h]; Asphalt Paver [12.63 h]; Rubber Compactor [25.16 h]; MC1/RC2 Sprinkler [12.63 h]; Dump Truck [113.26 h]; Bituminous base course (Grading I - Class A), including Prime coat (MC1) & tack coate (RC2) [460.31 m3] | 220,028.18 |  | L016 | Z5 | CONS | RD | 150 mm | AFT |
| RHD4CZ5L016RD3200 |  | Supply, lay and Asphaltic base course including Tack Coat (RC2) for 2nd Layer - (RD-L-16)-Z5-L016-RD | 2d | 2028-02-05 | 2028-02-07 | RHD4PRSHLDOSRD1100, RHD4PRSHLSTAGRD1100, RHD4CZ5L016CCTV6100 |  |  |  | -115.02d | 0d | Skilled labor [12.63 h]; Unskilled Labor [75.47 h]; Equipment Opreator [188.73 h]; Bobcat [12.63 h]; Roller compactor [12.63 h]; Asphalt Paver [12.63 h]; Rubber Compactor [25.16 h]; MC1/RC2 Sprinkler [12.63 h]; Dump Truck [113.26 h]; Bituminous base course (Grading I - Class A), including Prime coat (MC1) & tack coate (RC2) [460.31 m3] | 220,028.18 |  | L016 | Z5 | CONS | RD | 150 mm | AFT |
|  | 3915 | **RHD4-02-002-L016-(RD)-Precast Concrete Curb** |  | 2028-02-07 | 2028-02-13 |  |  |  |  |  |  |  |  |  |  |  |  |  |  |  |
| RHD4CZ5L016RD5100 |  | Supply and installation Precast Concrete Kerb for Roads - (RD-L-16)-Z5-L016-RD | 5d | 2028-02-07 | 2028-02-13 | RHD4CZ5L016RD3200, RHD4PRSHLDOSRD1200, RHD4ENMSRD2000, RHD4ENMSRD2010, RHD4PRSHLSTAGRD1200, RHD4CZ5L08RD5100 |  |  |  | -115.02d | 0d | Mason [162.7 h]; Skilled labor [54.23 h]; Unskilled Labor [162.7 h]; Equipment Opreator [108.47 h]; Bobcat [54.23 h]; Concrete Mixer Truck [54.23 h]; Precast Concrete Curbstone, type K1 [1727 m]; Precast Flush concrete Curbstone K3 [514.23 m] | 123,267.82 |  | L016 | Z5 | CONS | RD | Curbs | AFT |
|  | 3918 | **RHD4-02-002-L016-(RD)-Traffic Signage** |  | 2028-02-13 | 2028-02-20 |  |  |  |  |  |  |  |  |  |  |  |  |  |  |  |
| RHD4CZ5L016RD8100 |  | Installation of Traffic Signage for Road Network - (RD-L-16)-Z5-L016-RD | 6d | 2028-02-13 | 2028-02-20 | RHD4CZ5L016RD5100, RHD4PRSHLDOSRD1600, RHD4PRSHLSTAGRD1600, RHD4CZ5L08RD8100 |  |  |  | -115.02d | 0d | Skilled labor [130.68 h]; Unskilled Labor [65.34 h]; Electrician [7.62 h]; Equipment Opreator [16.12 h]; Boom Truck [13.07 h]; Concrete Mixer Truck [3.05 h]; Traffic signs, ground mounted, 1 Sheet Aluminium, (breakaway)Single post [7 nr] | 8,582 |  | L016 | Z5 | CONS | RD | Traffic Signage | AFT |
|  | 3916 | **RHD4-02-002-L016-(RD)-Precast Interlocking Block Pavers** |  | 2028-02-20 | 2028-03-02 |  |  |  |  |  |  |  |  |  |  |  |  |  |  |  |
| RHD4CZ5L016RD6100 |  | Interlocking block pavers for sidewalk-footpath for Side walks and Parking areas - (RD-L-16)-Z5-L016-RD | 6d | 2028-02-20 | 2028-03-02 | RHD4CZ5L016RD8100, RHD4PRSHLDOSRD1300, RHD4PRSHLDOSRD1400, RHD4ENMSRD2000, RHD4ENMSRD2010, RHD4PRSHLSTAGRD1300, RHD4PRSHLSTAGRD1400 |  |  |  | -115.02d | 0d | Skilled labor [113.26 h]; Unskilled Labor [169.89 h]; Equipment Opreator [184.05 h]; Boom Truck [56.63 h]; Bobcat [56.63 h]; Concrete Mixer Truck [56.63 h]; Water Truck [14.16 h]; Interlock 80 mm thick Pavers for parking including sand fill [1300 m2] | 96,200 |  | L016 | Z5 | CONS | RD | Interlocking | AFT |
|  | 3914 | **RHD4-02-002-L016-(RD)-Bituminous concrete wearing course including tack coat (RC2)** |  | 2028-03-02 | 2028-03-05 |  |  |  |  |  |  |  |  |  |  |  |  |  |  |  |
| RHD4CZ5L016RD4100 |  | Supply, lay and compaction Asphaltic wearing course including tack Coat (RC2)for Road Network - (RD-L-16)-Z5-L016-RD | 2d | 2028-03-02 | 2028-03-05 | RHD4CZ5L016RD5100, RHD4CZ5L016RD6100 |  |  |  | -115.02d | 0d | Skilled labor [9.69 h]; Unskilled Labor [58.4 h]; Equipment Opreator [145.82 h]; Bobcat [9.69 h]; Roller compactor [9.69 h]; Asphalt Paver [9.69 h]; Rubber Compactor [19.49 h]; MC1/RC2 Sprinkler [9.69 h]; Dump Truck [87.45 h]; Bituminous concrete wearing course, (Grading I - Class A), including tack coat (RC2) [463.7 m3] | 251,789.1 |  | L016 | Z5 | CONS | RD | 50 mm | AFT |
|  | 3917 | **RHD4-02-002-L016-(RD)-Pavement Marking** |  | 2028-03-05 | 2028-03-13 |  |  |  |  |  |  |  |  |  |  |  |  |  |  |  |
| RHD4CZ5L016RD7100 |  | Pavement Markings for Road Network - (RD-L-16)-Z5-L016-RD | 7d | 2028-03-05 | 2028-03-13 | RHD4CZ5L016RD4100, RHD4PRSHLDOSRD1500, RHD4PRSHLSTAGRD1500 |  |  |  | -115.02d | 0d | Skilled labor [66.21 h]; Unskilled Labor [132.43 h]; Equipment Opreator [66.21 h]; Road Marking Machine [66.21 h]; Retroreflective Thermoplastic White Traffic Markings [325.87 m2]; Retroreflective Thermoplastic Yellow, Traffic Markings [180.34 m2]; Rumble strip [152 m]; Retroreflective raised pavement markers (cat eyes) [900 nr] | 64,988.51 |  | L016 | Z5 | CONS | RD | Pavement Marking | AFT |
|  | 3735 | **RHD4-02-002-Z5-L016-Storm Network - ST** |  | 2026-08-04 | 2027-02-14 |  |  |  |  |  |  |  |  |  |  |  |  |  |  |  |
|  | 3754 | **RHD4-02-002-L016-(ST)-MH Works - 2000 mm diameter** |  | 2026-08-04 | 2027-02-01 |  |  |  |  |  |  |  |  |  |  |  |  |  |  |  |
| RHD4CZ5L016ST3102 |  | Excavation and PC Blinding works for MH 2000 mm - (RD-L-16)-Z5-L016-ST | 2d | 2026-08-04 A | 2026-08-13 A | RHD4ENSDZ5APPST110, RHD4ENMSST2000, RHD4ENSDZ5APPRD220, RHD4ENSDZ5APPEW100 SS, RHD4CZ5C051ST3101 | 100% | 2026-07-28 | 2026-07-29 |  |  | Skilled labor [12.74 h]; Unskilled Labor [12.74 h]; Equipment Opreator [20.36 h]; Excavator-Poclain [12.74 h]; Water Truck [1.31 h]; Dump Truck [6.32 h]; MH (2000mm Diameter) - ST - depth 2.51 - 3.5m [0.5 nr]; MH (2000mm Diameter) - ST - depth 3.51 -4.5m [0.25 nr] | 16,670.5 | 16,670.5 | L016 | Z5 | CONS | ST | Excavation | bef |
| RHD4CZ5L016ST3202 |  | Installation of Base for MH 2000 mm - (RD-L-16)-Z5-L016-ST | 2d | 2026-08-31 A | 2026-09-01 A | RHD4CZ5L016ST3102 | 100% | 2027-02-08 | 2027-02-09 |  |  | Skilled labor [16.34 h]; Unskilled Labor [16.34 h]; Equipment Opreator [6.53 h]; Boom Truck [3.27 h]; Concrete Mixer Truck [3.27 h]; MH (2000mm Diameter) - ST - depth 2.51 - 3.5m [0.5 nr]; MH (2000mm Diameter) - ST - depth 3.51 -4.5m [0.25 nr] | 16,670.5 | 16,670.5 | L016 | Z5 | CONS | ST | Installing Base | bef |
| RHD4CZ5L016ST3302 |  | MH Ring and C.Slab works and Backfilling works for MH 2000 mm - (RD-L-16)-Z5-L016-ST | 2d | 2027-01-26 | 2027-01-27 | RHD4CZ5L016ST3202, RHD4PRSHLDOSST1604 |  |  |  | -186d | 0d | Skilled labor [16.34 h]; Unskilled Labor [16.34 h]; Equipment Opreator [11.43 h]; Boom Truck [6.53 h]; Concrete Mixer Truck [4.9 h]; MH (2000mm Diameter) - ST - depth 2.51 - 3.5m [0.7 nr]; MH (2000mm Diameter) - ST - depth 3.51 -4.5m [0.35 nr] | 23,338.7 |  | L016 | Z5 | CONS | ST | Installing Rings | bef |
| RHD4CZ5L016ST3402 |  | Steel Cover for MH 2000 mm - (RD-L-16)-Z5-L016-ST | 2d | 2027-01-28 | 2027-01-30 | RHD4CZ5L016ST3302 |  |  |  | -186d | 0d | Skilled labor [10.89 h]; Unskilled Labor [21.78 h]; Equipment Opreator [2.18 h]; Boom Truck [2.18 h]; MH (2000mm Diameter) - ST - depth 2.51 - 3.5m [0.1 nr]; MH (2000mm Diameter) - ST - depth 3.51 -4.5m [0.05 nr] | 3,334.1 |  | L016 | Z5 | CONS | ST | Steel Cover | bef |
| RHD4CZ5L016ST3502 |  | Finishing, Benching, Testing works for MH 2000 mm - (RD-L-16)-Z5-L016-ST | 2d | 2027-01-31 | 2027-02-01 | RHD4CZ5L016ST3402 |  |  |  | -186d | 0d | Skilled labor [12.74 h]; Unskilled Labor [25.37 h]; Plumber [12.74 h]; Equipment Opreator [2.5 h]; Water Truck [2.5 h]; MH (2000mm Diameter) - ST - depth 2.51 - 3.5m [0.2 nr]; MH (2000mm Diameter) - ST - depth 3.51 -4.5m [0.1 nr] | 6,668.2 |  | L016 | Z5 | CONS | ST | Benching | bef |
|  | 1852 | **RHD4-02-002-L016-(ST)-GRP Pipes - 1200 mm diameter** |  | 2026-09-29 | 2027-02-07 |  |  |  |  |  |  |  |  |  |  |  |  |  |  |  |
| RHD4CZ5L016ST1108 |  | Excavation works for GRP Pipe Line 1200 mm - (RD-L-16)-Z5-L016-ST | 2d | 2026-09-29 A | 2026-11-02 A | RHD4CZ5A014ST8400, RHD4CZ5L016ST3102 | 100% | 2026-09-29 | 2026-09-30 |  |  | Skilled labor [2.94 h]; Unskilled Labor [2.94 h]; Equipment Opreator [3.48 h]; Excavator-Poclain [2.94 h]; Dump Truck [0.54 h]; GRP (1200mm Diameter) - ST - Depth: 2.51m - 3.5m [6.03 m] | 8,568.63 | 8,568.63 | L016 | Z5 | CONS | ST | Excavation | bef |
| RHD4CZ5L016ST1208 |  | Bedding works for GRP Pipe Line 1200 mm - (RD-L-16)-Z5-L016-ST | 2d | 2026-09-30 A | 2026-11-03 A | RHD4CZ6C062ST1506, RHD4CZ6A015PT1504, RHD4CZ5L07ST3500, RHD4CZ5L016ST1108 | 100% | 2026-09-30 | 2026-10-01 |  |  | Skilled labor [2.94 h]; Unskilled Labor [5.88 h]; Equipment Opreator [5.88 h]; Excavator-Poclain [2.94 h]; Dump Truck [2.94 h]; GRP (1200mm Diameter) - ST - Depth: 2.51m - 3.5m [2.01 m] | 2,856.21 | 2,856.21 | L016 | Z5 | CONS | ST | Bedding | bef |
| RHD4CZ5L016ST1308 |  | Installing for GRP Pipe Line 1200 mm - (RD-L-16)-Z5-L016-ST | 2d | 2026-11-04 A | 2026-11-05 A | RHD4CZ5L016ST1208 | 100% | 2027-02-08 | 2027-02-09 |  |  | Unskilled Labor [3.48 h]; Plumber [1.74 h]; GRP (1200mm Diameter) - ST - Depth: 2.51m - 3.5m [16.07 m] | 22,835.47 | 22,835.47 | L016 | Z5 | CONS | ST | Installation | bef |
| RHD4CZ5L016ST1408 |  | Primary Test for GRP Pipe Line 1200 mm - (RD-L-16)-Z5-L016-ST | 2d | 2027-02-02 | 2027-02-04 | RHD4CZ6A02ST3500, RHD4PRSHLSTAGTC1000, RHD4CZ5L016ST1308 |  |  |  | -197.02d | 0d | Unskilled Labor [1.42 h]; Plumber [1.42 h]; Equipment Opreator [1.42 h]; Water Truck [1.42 h]; GRP (1200mm Diameter) - ST - Depth: 2.51m - 3.5m [8.04 m] | 11,424.84 |  | L016 | Z5 | CONS | ST | Primary Test | bef |
| RHD4CZ5L016ST1508 |  | Backfilling and warning tape works for GRP Pipe Line 1200 mm - (RD-L-16)-Z5-L016-ST | 2d | 2027-02-04 | 2027-02-07 | RHD4CZ5L016ST1408 |  |  |  | -197.02d | 0d | Skilled labor [2.94 h]; Unskilled Labor [5.88 h]; Equipment Opreator [5.88 h]; Excavator-Poclain [2.94 h]; Dump Truck [2.94 h]; GRP (1200mm Diameter) - ST - Depth: 2.51m - 3.5m [8.04 m] | 11,424.84 |  | L016 | Z5 | CONS | ST | Backfilling | bef |

| ID | WBS | Activity | Duration | Start | Finish | Predecessors | Complete | Planned start | Planned finish | Total float | Free float | Resources | Cost | Actual cost | RDH4-01-001-Road and Block Names-1 | RDH4-01-001-Zones-1 | RDH4-01-001-Phases-1 | RDH4-01-001-Networks-1 | RDH4-01-001-Work Method-1 | RDH4-01-001-MENEM |
| --- | --- | --- | --- | --- | --- | --- | --- | --- | --- | --- | --- | --- | --- | --- | --- | --- | --- | --- | --- | --- |
|  | 3749 | **RHD4-02-002-L016-(ST)-GRP Pipes - 1800 mm diameter** |  |  |  |  |  |  |  |  |  |  |  |  |  |  |  |  |  |  |
|  | 1844 | **RHD4-02-002-L016-(ST)-GRP Pipes - 400 mm diameter** |  | 2026-08-04 | 2027-02-07 |  |  |  |  |  |  |  |  |  |  |  |  |  |  |  |
| RHD4CZ5L016ST1100 |  | Excavation works for GRP Pipe Line 400 mm - (RD-L-16)-Z5-L016-ST | 2d | 2026-08-04 A | 2026-08-05 A | RHD4CZ5L016ST1104 FF, RHD4CZ5L016ST1104 | 100% | 2026-08-06 | 2026-08-08 |  |  | Skilled labor [1.85 h]; Unskilled Labor [1.85 h]; Equipment Opreator [2.29 h]; Excavator-Poclain [1.85 h]; Dump Truck [0.33 h]; GRP (400mm Diameter) - ST - Depth less than 1.5 m [3.47 m]; GRP (400mm Diameter) - ST - Depth: 1.51m - 2.5 m | 1,006.3 | 1,006.3 | L016 | Z5 | CONS | ST | Excavation | bef |
| RHD4CZ5L016ST1200 |  | Bedding works for GRP Pipe Line 400 mm - (RD-L-16)-Z5-L016-ST | 2d | 2026-08-06 A | 2026-08-08 A | RHD4CZ5L016ST1100, RHD4CZ5L016ST1204 | 100% | 2026-08-09 | 2026-08-10 |  |  | Skilled labor [1.85 h]; Unskilled Labor [3.81 h]; Equipment Opreator [3.81 h]; Excavator-Poclain [1.85 h]; Dump Truck [1.85 h]; GRP (400mm Diameter) - ST - Depth less than 1.5 m [1.74 m]; GRP (400mm Diameter) - ST - Depth: 1.51m - 2.5 m | 504.6 | 504.6 | L016 | Z5 | CONS | ST | Bedding | bef |
| RHD4CZ5L016ST1300 |  | Installing for GRP Pipe Line 400 mm - (RD-L-16)-Z5-L016-ST | 2d | 2026-08-09 A | 2026-08-10 A | RHD4CZ5L016ST1200, RHD4CZ5L016ST1304 | 100% | 2026-08-11 | 2026-08-12 |  |  | Unskilled Labor [3.81 h]; Plumber [1.85 h]; GRP (400mm Diameter) - ST - Depth less than 1.5 m [15.64 m]; GRP (400mm Diameter) - ST - Depth: 1.51m - 2.5 m | 4,535.6 | 4,535.6 | L016 | Z5 | CONS | ST | Installation | bef |
| RHD4CZ5L016ST1500 |  | Backfilling and warning tape works for GRP Pipe Line 400 mm - (RD-L-16)-Z5-L016-ST | 2d | 2026-09-19 A | 2026-09-20 A | RHD4CZ5L016ST1400, RHD4CZ5L016ST1504 | 100% | 2026-08-16 | 2026-08-17 |  |  | Skilled labor [1.85 h]; Unskilled Labor [3.81 h]; Equipment Opreator [3.81 h]; Excavator-Poclain [1.85 h]; Dump Truck [1.85 h]; GRP (400mm Diameter) - ST - Depth less than 1.5 m [6.95 m]; GRP (400mm Diameter) - ST - Depth: 1.51m - 2.5 m | 2,015.5 | 2,015.5 | L016 | Z5 | CONS | ST | Backfilling | bef |
| RHD4CZ5L016ST1400 |  | Primary Test for GRP Pipe Line 400 mm - (RD-L-16)-Z5-L016-ST | 2d | 2027-02-04 | 2027-02-07 | RHD4CZ5L016ST1300, RHD4CZ5L016ST1404 |  |  |  | -180.02d | 0d | Unskilled Labor [1.85 h]; Plumber [1.85 h]; Equipment Opreator [1.85 h]; Water Truck [1.85 h]; GRP (400mm Diameter) - ST - Depth less than 1.5 m [6.95 m]; GRP (400mm Diameter) - ST - Depth: 1.51m - 2.5 m | 2,015.5 |  | L016 | Z5 | CONS | ST | Primary Test | bef |
|  | 1848 | **RHD4-02-002-L016-(ST)-GRP Pipes - 800 mm diameter** |  | 2026-08-04 | 2027-02-04 |  |  |  |  |  |  |  |  |  |  |  |  |  |  |  |
| RHD4CZ5L016ST1104 |  | Excavation works for GRP Pipe Line 800 mm - (RD-L-16)-Z5-L016-ST | 2d | 2026-08-04 A | 2026-08-05 A | RHD4CZ5L016ST1106 | 100% |  |  |  |  | Skilled labor [3.92 h]; Unskilled Labor [3.92 h]; Equipment Opreator [4.8 h]; Excavator-Poclain [3.92 h]; Dump Truck [0.8 h]; GRP (800mm Diameter) - ST - Depth: 1.51m - 2.5m [10.93 m] | 7,672.86 | 7,672.86 | L016 | Z5 | CONS | ST | Excavation | bef |
| RHD4CZ5L016ST1204 |  | Bedding works for GRP Pipe Line 800 mm - (RD-L-16)-Z5-L016-ST | 2d | 2026-08-06 A | 2026-08-08 A | RHD4CZ5L016ST1104 | 100% |  |  |  |  | Skilled labor [3.92 h]; Unskilled Labor [7.95 h]; Equipment Opreator [7.95 h]; Excavator-Poclain [3.92 h]; Dump Truck [3.92 h]; GRP (800mm Diameter) - ST - Depth: 1.51m - 2.5m [3.64 m] | 2,555.28 | 2,555.28 | L016 | Z5 | CONS | ST | Bedding | bef |
| RHD4CZ5L016ST1304 |  | Installing for GRP Pipe Line 800 mm - (RD-L-16)-Z5-L016-ST | 2d | 2026-08-09 A | 2026-08-10 A | RHD4CZ5L016ST1204 | 100% |  |  |  |  | Unskilled Labor [5.34 h]; Plumber [2.61 h]; GRP (800mm Diameter) - ST - Depth: 1.51m - 2.5m [29.14 m] | 20,456.28 | 20,456.28 | L016 | Z5 | CONS | ST | Installation | bef |
| RHD4CZ5L016ST1504 |  | Backfilling and warning tape works for GRP Pipe Line 800 mm - (RD-L-16)-Z5-L016-ST | 2d | 2026-09-19 A | 2026-09-20 A | RHD4CZ5L016ST1506, RHD4CZ5L016ST1404 | 100% | 2026-08-13 | 2026-08-15 |  |  | Skilled labor [3.92 h]; Unskilled Labor [7.95 h]; Equipment Opreator [7.95 h]; Excavator-Poclain [3.92 h]; Dump Truck [3.92 h]; GRP (800mm Diameter) - ST - Depth: 1.51m - 2.5m [14.57 m] | 10,228.14 | 10,228.14 | L016 | Z5 | CONS | ST | Backfilling | bef |
| RHD4CZ5L016ST1404 |  | Primary Test for GRP Pipe Line 800 mm - (RD-L-16)-Z5-L016-ST | 2d | 2027-02-02 | 2027-02-04 | RHD4CZ5L016ST1304 |  |  |  | -180.02d | 0d | Unskilled Labor [1.96 h]; Plumber [1.96 h]; Equipment Opreator [1.96 h]; Water Truck [1.96 h]; GRP (800mm Diameter) - ST - Depth: 1.51m - 2.5m [14.57 m] | 10,228.14 |  | L016 | Z5 | CONS | ST | Primary Test | bef |
|  | 2039 | **RHD4-02-002-L016-(ST)-GRP Pipes - 1000 mm diameter** |  | 2026-08-04 | 2027-02-04 |  |  |  |  |  |  |  |  |  |  |  |  |  |  |  |
| RHD4CZ5L016ST1106 |  | Excavation works for GRP Pipe Line 1000 mm - (RD-L-16)-Z5-L016-ST | 2d | 2026-08-04 A | 2026-08-05 A | RHD4CZ5L016ST1108 | 100% | 2026-08-02 | 2026-08-03 |  |  | Skilled labor [2.94 h]; Unskilled Labor [2.94 h]; Equipment Opreator [3.59 h]; Excavator-Poclain [2.94 h]; Dump Truck [0.54 h]; GRP (1000mm Diameter) - ST - Depth: 2.51m - 3.5m [6.16 m]; GRP (1000mm Diameter) - ST - Depth: 3.51m - 4.5m [0.89 m] | 8,640.39 | 8,640.39 | L016 | Z5 | CONS | ST | Excavation | bef |
| RHD4CZ5L016ST1206 |  | Bedding works for GRP Pipe Line 1000 mm - (RD-L-16)-Z5-L016-ST | 2d | 2026-08-06 A | 2026-08-08 A | RHD4CZ5L016ST1106 | 100% | 2026-08-04 | 2026-08-05 |  |  | Skilled labor [2.94 h]; Unskilled Labor [5.99 h]; Equipment Opreator [5.99 h]; Excavator-Poclain [2.94 h]; Dump Truck [2.94 h]; GRP (1000mm Diameter) - ST - Depth: 2.51m - 3.5m [2.05 m]; GRP (1000mm Diameter) - ST - Depth: 3.51m - 4.5m [0.3 m] | 2,880.7 | 2,880.7 | L016 | Z5 | CONS | ST | Bedding | bef |
| RHD4CZ5L016ST1306 |  | Installing for GRP Pipe Line 1000 mm - (RD-L-16)-Z5-L016-ST | 2d | 2026-08-09 A | 2026-08-10 A | RHD4CZ5L016ST1206 | 100% | 2026-08-06 | 2026-08-08 |  |  | Unskilled Labor [3.59 h]; Plumber [1.74 h]; GRP (1000mm Diameter) - ST - Depth: 2.51m - 3.5m [16.43 m]; GRP (1000mm Diameter) - ST - Depth: 3.51m - 4.5m [2.37 m] | 23,040.47 | 23,040.47 | L016 | Z5 | CONS | ST | Installation | bef |
| RHD4CZ5L016ST1506 |  | Backfilling and warning tape works for GRP Pipe Line 1000 mm - (RD-L-16)-Z5-L016-ST | 2d | 2026-09-26 A | 2026-09-27 A | RHD4CZ5L016ST1508, RHD4CZ5L016ST1406 | 100% | 2027-02-15 | 2027-02-16 |  |  | Skilled labor [2.94 h]; Unskilled Labor [5.99 h]; Equipment Opreator [5.99 h]; Excavator-Poclain [2.94 h]; Dump Truck [2.94 h]; GRP (1000mm Diameter) - ST - Depth: 2.51m - 3.5m [8.21 m]; GRP (1000mm Diameter) - ST - Depth: 3.51m - 4.5m [1.18 m] | 11,507.34 | 11,507.34 | L016 | Z5 | CONS | ST | Backfilling | bef |
| RHD4CZ5L016ST1406 |  | Primary Test for GRP Pipe Line 1000 mm - (RD-L-16)-Z5-L016-ST | 2d | 2027-02-02 | 2027-02-04 | RHD4CZ5L016ST1306 |  |  |  | -178.02d | 2d | Unskilled Labor [1.74 h]; Plumber [1.74 h]; Equipment Opreator [1.74 h]; Water Truck [1.74 h]; GRP (1000mm Diameter) - ST - Depth: 2.51m - 3.5m [8.21 m]; GRP (1000mm Diameter) - ST - Depth: 3.51m - 4.5m [1.18 m] | 11,507.34 |  | L016 | Z5 | CONS | ST | Primary Test | bef |
|  | 2414 | **RHD4-02-002-L016-(ST)-GRP Pipes - 600 mm diameter** |  | 2026-08-04 | 2027-02-04 |  |  |  |  |  |  |  |  |  |  |  |  |  |  |  |
| RHD4CZ5L016ST1102 |  | Excavation works for GRP Pipe Line 600 mm - (RD-L-16)-Z5-L016-ST | 2d | 2026-08-04 A | 2026-08-05 A | RHD4CZ5L016ST1100 | 100% | 2026-08-09 | 2026-08-10 |  |  | Skilled labor [4.36 h]; Unskilled Labor [4.36 h]; Equipment Opreator [5.23 h]; Excavator-Poclain [4.36 h]; Dump Truck [0.87 h]; GRP (600mm Diameter) - ST - Depth less than 1.5 m [8.05 m]; GRP (600mm Diameter) - ST - Depth: 1.51m - 2.5m | 3,469.55 | 3,469.55 | L016 | Z5 | CONS | ST | Excavation | bef |
| RHD4CZ5L016ST1202 |  | Bedding works for GRP Pipe Line 600 mm - (RD-L-16)-Z5-L016-ST | 2d | 2026-08-06 A | 2026-08-08 A | RHD4CZ5L016ST1102 | 100% | 2026-08-11 | 2026-08-12 |  |  | Skilled labor [4.36 h]; Unskilled Labor [8.8 h]; Equipment Opreator [8.8 h]; Excavator-Poclain [4.36 h]; Dump Truck [4.36 h]; GRP (600mm Diameter) - ST - Depth less than 1.5 m [4.03 m]; GRP (600mm Diameter) - ST - Depth: 1.51m - 2.5m | 1,736.93 | 1,736.93 | L016 | Z5 | CONS | ST | Bedding | bef |
| RHD4CZ5L016ST1302 |  | Installing for GRP Pipe Line 600 mm - (RD-L-16)-Z5-L016-ST | 2d | 2026-08-09 A | 2026-08-10 A | RHD4CZ5L016ST1202 | 100% | 2026-08-13 | 2026-08-15 |  |  | Unskilled Labor [8.8 h]; Plumber [4.36 h]; GRP (600mm Diameter) - ST - Depth less than 1.5 m [36.23 m]; GRP (600mm Diameter) - ST - Depth: 1.51m - 2.5m | 15,615.13 | 15,615.13 | L016 | Z5 | CONS | ST | Installation | bef |
| RHD4CZ5L016ST1502 |  | Backfilling and warning tape works for GRP Pipe Line 600 mm - (RD-L-16)-Z5-L016-ST | 2d | 2026-09-19 A | 2026-09-20 A | RHD4CZ5L016ST1402 | 100% | 2026-08-18 | 2026-08-19 |  |  | Skilled labor [4.36 h]; Unskilled Labor [8.8 h]; Equipment Opreator [8.8 h]; Excavator-Poclain [4.36 h]; Dump Truck [4.36 h]; GRP (600mm Diameter) - ST - Depth less than 1.5 m [16.1 m]; GRP (600mm Diameter) - ST - Depth: 1.51m - 2.5m | 6,939.1 | 6,939.1 | L016 | Z5 | CONS | ST | Backfilling | bef |
| RHD4CZ5L016ST1402 |  | Primary Test for GRP Pipe Line 600 mm - (RD-L-16)-Z5-L016-ST | 2d | 2027-02-02 | 2027-02-04 | RHD4CZ5L016ST1302 |  |  |  | -158.02d | 0d | Unskilled Labor [4.36 h]; Plumber [4.36 h]; Equipment Opreator [4.36 h]; Water Truck [4.36 h]; GRP (600mm Diameter) - ST - Depth less than 1.5 m [16.1 m]; GRP (600mm Diameter) - ST - Depth: 1.51m - 2.5m | 6,939.1 |  | L016 | Z5 | CONS | ST | Primary Test | bef |

| ID | WBS | Activity | Duration | Start | Finish | Predecessors | Complete | Remaining | Planned start | Planned finish | Total float | Free float | Resources | Cost | Actual cost | RDH4-01-001-Road and Block Names-1 | RDH4-01-001-Zones-1 | RDH4-01-001-Phases-1 | RDH4-01-001-Networks-1 | RDH4-01-001-Work Method-1 | RDH4-01-001-MENEM |
| --- | --- | --- | --- | --- | --- | --- | --- | --- | --- | --- | --- | --- | --- | --- | --- | --- | --- | --- | --- | --- | --- |
|  | 6393 | **RHD4-02-002-L016-(ST)-GRP Pipes - 1300 mm diameter** |  | 2027-02-02 | 2027-02-14 |  |  |  |  |  |  |  |  |  |  |  |  |  |  |  |  |
| RHD4CZ5L016ST1109 |  | Excavation works for GRP Pipe Line 1300 mm - (RD-L-16)-Z5-L016-ST | 2d | 2027-02-02 | 2027-02-04 | RHD4CZ5L016ST1102 |  |  |  |  | -166.02d | 0d | Skilled labor [5.34 h]; Unskilled Labor [5.34 h]; Equipment Opreator [6.32 h]; Excavator-Poclain [5.34 h]; Dump Truck [1.09 h]; GRP (1300mm Diameter) - ST - Depth: 2.51m - 3.5m [14.61 m] | 26,341.83 |  | L016 | Z5 | CONS | ST | Excavation | bef |
| RHD4CZ5L016ST1209 |  | Bedding works for GRP Pipe Line 1300 mm - (RD-L-16)-Z5-L016-ST | 2d | 2027-02-04 | 2027-02-07 | RHD4CZ5L016ST1109 |  |  |  |  | -166.02d | 0d | Skilled labor [5.34 h]; Unskilled Labor [10.56 h]; Equipment Opreator [10.56 h]; Excavator-Poclain [5.34 h]; Dump Truck [5.34 h]; GRP (1300mm Diameter) - ST - Depth: 2.51m - 3.5m [4.87 m] | 8,780.61 |  | L016 | Z5 | CONS | ST | Bedding | bef |
| RHD4CZ5L016ST1309 |  | Installing for GRP Pipe Line 1300 mm - (RD-L-16)-Z5-L016-ST | 2d | 2027-02-07 | 2027-02-09 | RHD4CZ5L016ST1209 |  |  |  |  | -166.02d | 0d | Unskilled Labor [7.08 h]; Plumber [3.48 h]; GRP (1300mm Diameter) - ST - Depth: 2.51m - 3.5m [38.97 m] | 70,262.91 |  | L016 | Z5 | CONS | ST | Installation | bef |
| RHD4CZ5L016ST1409 |  | Primary Test for GRP Pipe Line 1300 mm - (RD-L-16)-Z5-L016-ST | 2d | 2027-02-09 | 2027-02-11 | RHD4CZ5L016ST1309 |  |  |  |  | -166.02d | 0d | Unskilled Labor [2.61 h]; Plumber [2.61 h]; Equipment Opreator [2.61 h]; Water Truck [2.61 h]; GRP (1300mm Diameter) - ST - Depth: 2.51m - 3.5m [19.48 m] | 35,122.44 |  | L016 | Z5 | CONS | ST | Primary Test | bef |
| RHD4CZ5L016ST1509 |  | Backfilling and warning tape works for GRP Pipe Line 1300 mm - (RD-L-16)-Z5-L016-ST | 2d | 2027-02-11 | 2027-02-14 | RHD4CZ5L016ST1409 |  |  |  |  | -166.02d | 18.98d | Skilled labor [5.34 h]; Unskilled Labor [10.56 h]; Equipment Opreator [10.56 h]; Excavator-Poclain [5.34 h]; Dump Truck [5.34 h]; GRP (1300mm Diameter) - ST - Depth: 2.51m - 3.5m [19.48 m] | 35,122.44 |  | L016 | Z5 | CONS | ST | Backfilling | bef |
|  | 3753 | **RHD4-02-002-L016-(ST)-MH Works - 1500 mm diameter** |  | 2026-08-04 | 2027-02-03 |  |  |  |  |  |  |  |  |  |  |  |  |  |  |  |  |
| RHD4CZ5L016ST3101 |  | Excavation and PC Blinding works for MH 1500 mm - (RD-L-16)-Z5-L016-ST | 2d | 2026-08-04 A | 2026-08-06 A | RHD4CZ5L016ST3102, RHD4ENSDZ5APPST110, RHD4ENMSST2000 | 100% |  | 2026-07-30 | 2026-08-01 |  |  | Skilled labor [21.78 h]; Unskilled Labor [21.78 h]; Equipment Opreator [34.85 h]; Excavator-Poclain [21.78 h]; Water Truck [2.18 h]; Dump Truck [10.89 h]; MH (1500mm Diameter) - ST - depth 1.50 - 2.5m [0.5 nr]; MH (1500mm Diameter) - ST - depth 2.51 - 3.5m [0.5 nr] | 15,544 | 15,544 | L016 | Z5 | CONS | ST | Excavation | bef |
| RHD4CZ5L016ST3201 |  | Installation of Base for MH 1500 mm - (RD-L-16)-Z5-L016-ST | 2d | 2026-08-06 A | 2026-08-15 A | RHD4CZ5L016ST3101 | 100% |  | 2026-08-02 | 2026-08-03 |  |  | Skilled labor [21.78 h]; Unskilled Labor [21.78 h]; Equipment Opreator [8.71 h]; Boom Truck [4.36 h]; Concrete Mixer Truck [4.36 h]; MH (1500mm Diameter) - ST - depth 1.50 - 2.5m [0.5 nr]; MH (1500mm Diameter) - ST - depth 2.51 - 3.5m [0.5 nr] | 15,544 | 15,544 | L016 | Z5 | CONS | ST | Installing Base | bef |
| RHD4CZ5L016ST3301 |  | MH Ring and C.Slab works and Backfilling works for MH 1500 mm - (RD-L-16)-Z5-L016-ST | 2d | 2026-10-24 A | 2027-01-27 | RHD4CZ5L016ST3201 | 19% | 2d | 2027-02-10 | 2027-02-11 | -184d | 2d | Skilled labor [21.78 h]; Unskilled Labor [21.78 h]; Equipment Opreator [15.25 h]; Boom Truck [8.71 h]; Concrete Mixer Truck [6.53 h]; MH (1500mm Diameter) - ST - depth 1.50 - 2.5m [0.7 nr]; MH (1500mm Diameter) - ST - depth 2.51 - 3.5m [0.7 nr] | 21,761.6 |  | L016 | Z5 | CONS | ST | Installing Rings | bef |
| RHD4CZ5L016ST3401 |  | Steel Cover for MH 1500 mm - (RD-L-16)-Z5-L016-ST | 2d | 2027-01-31 | 2027-02-01 | RHD4CZ5L016ST3301, RHD4CZ5L016ST3402 |  |  |  |  | -186d | 0d | Skilled labor [14.48 h]; Unskilled Labor [29.08 h]; Equipment Opreator [2.94 h]; Boom Truck [2.94 h]; MH (1500mm Diameter) - ST - depth 1.50 - 2.5m [0.1 nr]; MH (1500mm Diameter) - ST - depth 2.51 - 3.5m [0.1 nr] | 3,108.8 |  | L016 | Z5 | CONS | ST | Steel Cover | bef |
| RHD4CZ5L016ST3501 |  | Finishing, Benching, Testing works for MH 1500 mm - (RD-L-16)-Z5-L016-ST | 2d | 2027-02-02 | 2027-02-03 | RHD4CZ5L016ST3401, RHD4CZ5L016ST3502 |  |  |  |  | -186d | 4.02d | Skilled labor [21.78 h]; Unskilled Labor [43.56 h]; Plumber [21.78 h]; Equipment Opreator [4.36 h]; Water Truck [4.36 h]; MH (1500mm Diameter) - ST - depth 1.50 - 2.5m [0.2 nr]; MH (1500mm Diameter) - ST - depth 2.51 - 3.5m [0.2 nr] | 6,217.6 |  | L016 | Z5 | CONS | ST | Benching | bef |
|  | 3752 | **RHD4-02-002-L016-(ST)-MH Works - 1200 mm diameter** |  | 2026-08-04 | 2027-02-06 |  |  |  |  |  |  |  |  |  |  |  |  |  |  |  |  |
| RHD4CZ5L016ST3100 |  | Excavation and PC Blinding works for MH 1200 mm - (RD-L-16)-Z5-L016-ST | 2d | 2026-08-04 A | 2026-08-06 A | RHD4CZ5L016ST3101, RHD4ENSDZ5APPST110, RHD4ENMSST2000, RHD4ENMSST2010, RHD4ENMSEW2000, RHD4ENMSEW2010, RHD4ENSDZ5APPEW100 SS, RHD4ENSDZ7APPEW100 SS, RHD4ENSDZ8APPEW100 SS | 100% |  | 2026-08-02 | 2026-08-03 |  |  | Skilled labor [7.3 h]; Unskilled Labor [7.3 h]; Equipment Opreator [11.65 h]; Excavator-Poclain [7.3 h]; Water Truck [0.8 h]; Dump Truck [3.59 h]; MH (1200mm Diameter) - ST - depth 1.50 - 2.5m [0.5 nr] | 5,161.5 | 5,161.5 | L016 | Z5 | CONS | ST | Excavation | bef |
| RHD4CZ5L016ST3200 |  | Installation of Base for MH 1200 mm - (RD-L-16)-Z5-L016-ST | 2d | 2027-01-26 | 2027-01-27 | RHD4CZ5L016ST3100, RHD4PRSHLSTAGST1604 |  |  |  |  | -152d | 0d | Skilled labor [7.3 h]; Unskilled Labor [7.3 h]; Equipment Opreator [2.94 h]; Boom Truck [1.42 h]; Concrete Mixer Truck [1.42 h]; MH (1200mm Diameter) - ST - depth 1.50 - 2.5m [0.5 nr] | 5,161.5 |  | L016 | Z5 | CONS | ST | Installing Base | bef |
| RHD4CZ5L016ST3300 |  | MH Ring and C.Slab works and Backfilling works for MH 1200 mm - (RD-L-16)-Z5-L016-ST | 2d | 2027-01-28 | 2027-01-30 | RHD4CZ5L016ST3200, RHD4PRSHLDOSST1604 |  |  |  |  | -152d | 0d | Skilled labor [7.3 h]; Unskilled Labor [7.3 h]; Equipment Opreator [5.12 h]; Boom Truck [2.94 h]; Concrete Mixer Truck [2.18 h]; MH (1200mm Diameter) - ST - depth 1.50 - 2.5m [0.7 nr] | 7,226.1 |  | L016 | Z5 | CONS | ST | Installing Rings | bef |
| RHD4CZ5L016ST3400 |  | Steel Cover for MH 1200 mm - (RD-L-16)-Z5-L016-ST | 2d | 2027-02-02 | 2027-02-03 | RHD4CZ5L016ST3300, RHD4CZ5L016ST3401 |  |  |  |  | -154d | 0d | Skilled labor [7.3 h]; Unskilled Labor [14.48 h]; Equipment Opreator [1.42 h]; Boom Truck [1.42 h]; MH (1200mm Diameter) - ST - depth 1.50 - 2.5m [0.1 nr] | 1,032.3 |  | L016 | Z5 | CONS | ST | Steel Cover | bef |
| RHD4CZ5L016ST3500 |  | Finishing, Benching, Testing works for MH 1200 mm - (RD-L-16)-Z5-L016-ST | 2d | 2027-02-04 | 2027-02-06 | RHD4CZ5L016ST3400 |  |  |  |  | -154d | 0.02d | Skilled labor [7.3 h]; Unskilled Labor [14.48 h]; Plumber [7.3 h]; Equipment Opreator [1.42 h]; Water Truck [1.42 h]; MH (1200mm Diameter) - ST - depth 1.50 - 2.5m [0.2 nr] | 2,064.6 |  | L016 | Z5 | CONS | ST | Benching | bef |
|  | 3747 | **RHD4-02-002-L016-(ST)-GRP Pipes - 1500 mm diameter** |  |  |  |  |  |  |  |  |  |  |  |  |  |  |  |  |  |  |  |
|  | 3743 | **RHD4-02-002-L016-(ST)-GRP Pipes - 1100 mm diameter** |  |  |  |  |  |  |  |  |  |  |  |  |  |  |  |  |  |  |  |
|  | 3739 | **RHD4-02-002-L016-(ST)-GRP Pipes - 700 mm diameter** |  | 2026-08-04 | 2027-02-02 |  |  |  |  |  |  |  |  |  |  |  |  |  |  |  |  |
| RHD4CZ5L016ST1103 |  | Excavation works for GRP Pipe Line 700 mm - (RD-L-16)-Z5-L016-ST | 2d | 2026-08-04 A | 2027-01-27 | RHD4ENSDZ5APPST110, RHD4CZ5C051ST3101 | 80% | 2d | 2026-07-28 | 2026-07-29 | -192d | 0d | Skilled labor [19.49 h]; Unskilled Labor [19.49 h]; Equipment Opreator [23.41 h]; Excavator-Poclain [19.49 h]; Dump Truck [3.92 h]; GRP (700mm Diameter) - ST - Depth less than 1.5 m [9.78 m]; GRP (700mm Diameter) - ST - Depth: 1.51m - 2.5m [4.21 m]; GRP (700mm Diameter) - ST - Depth: 2.51m - 3.5m [25.05 m] | 29,875.29 |  | L016 | Z5 | CONS | ST | Excavation | bef |
| RHD4CZ5L016ST1203 |  | Bedding works for GRP Pipe Line 700 mm - (RD-L-16)-Z5-L016-ST | 2d | 2026-08-06 A | 2027-01-28 | RHD4CZ5L016ST1103 | 80% | 1d | 2026-07-30 | 2026-08-01 | -192d | 0d | Skilled labor [19.49 h]; Unskilled Labor [38.99 h]; Equipment Opreator [38.99 h]; Excavator-Poclain [19.49 h]; Dump Truck [19.49 h]; GRP (700mm Diameter) - ST - Depth less than 1.5 m [4.89 m]; GRP (700mm Diameter) - ST - Depth: 1.51m - 2.5m [1.4 m]; GRP (700mm Diameter) - ST - Depth: 2.51m - 3.5m [8.35 m] | 10,859.46 | 5,429.73 | L016 | Z5 | CONS | ST | Bedding | bef |
| RHD4CZ5L016ST1303 |  | Installing for GRP Pipe Line 700 mm - (RD-L-16)-Z5-L016-ST | 2d | 2026-08-09 A | 2027-01-30 | RHD4CZ5L016ST1203, RHD4PRSHLSTAGST1004, RHD4PRSHLDOSST1604, RHD4PRSHLPOST1000, RHD4PRSHLDOSST1004 | 80% | 1d | 2026-08-02 | 2026-08-03 | -192d | 0d | Unskilled Labor [19.49 h]; Plumber [9.69 h]; GRP (700mm Diameter) - ST - Depth less than 1.5 m [44.02 m]; GRP (700mm Diameter) - ST - Depth: 1.51m - 2.5m [11.23 m]; GRP (700mm Diameter) - ST - Depth: 2.51m - 3.5m [66.79 m] | 89,599.43 | 44,799.72 | L016 | Z5 | CONS | ST | Installation | bef |
| RHD4CZ5L016ST1503 |  | Backfilling and warning tape works for GRP Pipe Line 700 mm - (RD-L-16)-Z5-L016-ST | 2d | 2026-08-11 A | 2027-02-02 | RHD4CZ5L016ST1403 | 80% | 1d | 2026-08-06 | 2026-08-08 | -192d | 4d | Skilled labor [19.49 h]; Unskilled Labor [38.99 h]; Equipment Opreator [38.99 h]; Excavator-Poclain [19.49 h]; Dump Truck [19.49 h]; GRP (700mm Diameter) - ST - Depth less than 1.5 m [19.57 m]; GRP (700mm Diameter) - ST - Depth: 1.51m - 2.5m [5.62 m]; GRP (700mm Diameter) - ST - Depth: 2.51m - 3.5m [33.4 m] | 43,455.32 | 21,727.66 | L016 | Z5 | CONS | ST | Backfilling | bef |
| RHD4CZ5L016ST1403 |  | Primary Test for GRP Pipe Line 700 mm - (RD-L-16)-Z5-L016-ST | 2d | 2027-01-31 | 2027-02-01 | RHD4CZ5L016ST1303 |  |  |  |  | -192d | 0d | Unskilled Labor [9.69 h]; Plumber [9.69 h]; Equipment Opreator [9.69 h]; Water Truck [9.69 h]; GRP (700mm Diameter) - ST - Depth less than 1.5 m [19.57 m]; GRP (700mm Diameter) - ST - Depth: 1.51m - 2.5m [5.62 m]; GRP (700mm Diameter) - ST - Depth: 2.51m - 3.5m [33.4 m] | 43,455.32 |  | L016 | Z5 | CONS | ST | Primary Test | bef |

| ID | WBS | Activity | Duration | Start | Finish | Predecessors | Complete | Remaining | Planned start | Planned finish | Total float | Free float | Resources | Cost | Actual cost | RDH4-01-001-Road and Block Names-1 | RDH4-01-001-Zones-1 | RDH4-01-001-Phases-1 | RDH4-01-001-Networks-1 | RDH4-01-001-Work Method-1 | RDH4-01-001-MENEM |
| --- | --- | --- | --- | --- | --- | --- | --- | --- | --- | --- | --- | --- | --- | --- | --- | --- | --- | --- | --- | --- | --- |
|  | 3737 | **RHD4-02-002-L016-(ST)-GRP Pipes - 500 mm diameter** |  |  |  |  |  |  |  |  |  |  |  |  |  |  |  |  |  |  |  |
|  | 3750 | **RHD4-02-002-L016-(ST)-UPVC Pipes - 300 mm diameter** |  | 2026-08-04 | 2027-02-06 |  |  |  |  |  |  |  |  |  |  |  |  |  |  |  |  |
| RHD4CZ5L016ST2100 |  | Excavation works for UPVC Pipe Line 300 mm - (RD-L-16)-Z5-L016-ST | 2d | 2026-08-04 A | 2027-01-28 | RHD4ENSDZ5APPST110, RHD4CZ5L016ST1103 | 75% | 1d | 2026-07-30 | 2026-08-01 | -188d | 0d | Skilled labor [12.74 h]; Unskilled Labor [12.74 h]; Equipment Opreator [15.25 h]; Excavator-Poclain [12.74 h]; Dump Truck [2.5 h]; UPVC (300mm Diameter) - ST - Depth less than 1.5 [28 m]; UPVC (300mm Diameter) - ST - Depth: 1.51m - 2.5m | 8,484 | 4,242 | L016 | Z5 | CONS | ST | Excavation | bef |
| RHD4CZ5L016ST2200 |  | Bedding works for UPVC Pipe Line 300 mm - (RD-L-16)-Z5-L016-ST | 2d | 2026-08-06 A | 2027-01-30 | RHD4CZ5L016ST2100 | 64% | 1d | 2026-08-02 | 2026-08-03 | -188d | 0d | Skilled labor [11 h]; Unskilled Labor [22 h]; Equipment Opreator [22 h]; Excavator-Poclain [11 h]; Dump Truck [11 h]; UPVC (300mm Diameter) - ST - Depth less than 1.5 [14 m]; UPVC (300mm Diameter) - ST - Depth: 1.51m - 2.5m | 4,242 | 2,121 | L016 | Z5 | CONS | ST | Bedding | bef |
| RHD4CZ5L016ST2300 |  | Installing for UPVC Pipe Line 300 mm - (RD-L-16)-Z5-L016-ST | 2d | 2026-09-19 A | 2027-02-01 | RHD4CZ5L016ST2200, RHD4PRSHLDOSST1104, RHD4PRSHLSTAGST1104 | 64% | 2d | 2026-08-04 | 2026-08-05 | -188d | 0d | Unskilled Labor [25.37 h]; Plumber [12.74 h]; UPVC (300mm Diameter) - ST - Depth less than 1.5 [125.99 m]; UPVC (300mm Diameter) - ST - Depth: 1.51m - 2.5m | 38,174.97 |  | L016 | Z5 | CONS | ST | Installation | bef |
| RHD4CZ5L016ST2500 |  | Backfilling and warning tape works for UPVC Pipe Line 300 mm - (RD-L-16)-Z5-L016-ST | 2d | 2026-09-21 A | 2027-02-06 | RHD4CZ5L016ST2400, RHD4CZ5L016ST6100 | 52% | 2d | 2026-08-09 | 2026-08-10 | -188d | 2.02d | Skilled labor [15.25 h]; Unskilled Labor [30.49 h]; Equipment Opreator [30.49 h]; Excavator-Poclain [15.25 h]; Dump Truck [15.25 h]; UPVC (300mm Diameter) - ST - Depth less than 1.5 [55.99 m]; UPVC (300mm Diameter) - ST - Depth: 1.51m - 2.5m | 16,964.97 |  | L016 | Z5 | CONS | ST | Backfilling | bef |
| RHD4CZ5L016ST2400 |  | Primary Test for UPVC Pipe Line 300 mm - (RD-L-16)-Z5-L016-ST | 2d | 2027-02-02 | 2027-02-03 | RHD4CZ5L016ST2300 |  |  |  |  | -188d | 0d | Unskilled Labor [7.62 h]; Plumber [7.62 h]; Equipment Opreator [7.62 h]; Water Truck [7.62 h]; UPVC (300mm Diameter) - ST - Depth less than 1.5 [55.99 m]; UPVC (300mm Diameter) - ST - Depth: 1.51m - 2.5m | 16,964.97 |  | L016 | Z5 | CONS | ST | Primary Test | bef |
|  | 3758 | **RHD4-02-002-L016-(ST)-Concrete Encasement** |  | 2027-01-31 | 2027-02-01 |  |  |  |  |  |  |  |  |  |  |  |  |  |  |  |  |
| RHD4CZ5L016ST6100 |  | Pipe Encasement for Storm Pipelines - (RD-L-16)-Z5-L016-ST | 2d | 2027-01-31 | 2027-02-01 | RHD4CZ5L016ST2300 SS, RHD4CZ5L016ST2300 FF, RHD4CZ5L016ST2200 |  |  |  |  | -186d | 2d | Skilled labor [0.65 h]; Unskilled Labor [0.65 h]; Equipment Opreator [0.65 h]; Concrete Mixer Truck [0.11 h]; Dump Truck [0.65 h]; Pipe Encasement - ST [11.71 m3] | 5,925.26 |  | L016 | Z5 | CONS | ST | Pipe Encasement | bef |
|  | 3759 | **RHD4-02-002-Z5-L016-Catch Basin - ST** |  | 2026-08-04 | 2027-02-10 |  |  |  |  |  |  |  |  |  |  |  |  |  |  |  |  |
|  | 6409 | **RHD4-02-002-L016-(ST)-Double Catch Basin Works** |  | 2026-08-04 | 2027-02-04 |  |  |  |  |  |  |  |  |  |  |  |  |  |  |  |  |
| RHD4CZ5L016ST8100 |  | Excavation works for Double Catch Basin - (RD-L-16)-Z5-L016-ST | 2d | 2026-08-04 A | 2026-08-06 A | RHD4CZ5L016ST2100 | 100% |  | 2026-08-02 | 2026-08-03 |  |  | Skilled labor [2.18 h]; Unskilled Labor [4.36 h]; Equipment Opreator [3.27 h]; Excavator-Poclain [2.18 h]; Dump Truck [1.09 h]; Double Catch basin - ST [0.25 nr] | 3,491.5 | 3,491.5 | L016 | Z5 | CONS | ST | Excavation | bef |
| RHD4CZ5L016ST8200 |  | PC Blinding, Installation and Pipe connection for Double Catch Basin - (RD-L-16)-Z5-L016-ST | 2d | 2026-09-22 A | 2026-09-24 A | RHD4CZ5L016ST8100 | 100% |  | 2027-02-06 | 2027-02-07 |  |  | Skilled labor [2.18 h]; Unskilled Labor [4.36 h]; Plumber [1.09 h]; Equipment Opreator [0.44 h]; Boom Truck [0.44 h]; Double Catch basin - ST [0.2 nr] | 2,793.2 | 2,793.2 | L016 | Z5 | CONS | ST | Installation & Pipe Connection | bef |
| RHD4CZ5L016ST8300 |  | Rings & C.Slab & Final Backfillfor Double Catch Basin - (RD-L-16)-Z5-L016-ST | 2d | 2027-01-30 | 2027-01-31 | RHD4CZ5L016ST8200 |  |  |  |  | -185d | 0d | Skilled labor [2.72 h]; Unskilled Labor [5.45 h]; Equipment Opreator [3.27 h]; Boom Truck [0.54 h]; Bobcat [2.72 h]; Double Catch basin - ST [0.35 nr] | 4,888.1 |  | L016 | Z5 | CONS | ST | Rings | bef |
| RHD4CZ5L016ST8400 |  | Steel Cover for Double Catch Basin - (RD-L-16)-Z5-L016-ST | 2d | 2027-02-01 | 2027-02-02 | RHD4CZ5L016ST8300 |  |  |  |  | -185d | 0d | Skilled labor [2.18 h]; Unskilled Labor [2.18 h]; Equipment Opreator [0.44 h]; Boom Truck [0.44 h]; Double Catch basin - ST [0.05 nr] | 698.3 |  | L016 | Z5 | CONS | ST | Steel Cover | bef |
| RHD4CZ5L016ST8500 |  | Finishing and Insulation works for Double Catch Basin - (RD-L-16)-Z5-L016-ST | 2d | 2027-02-03 | 2027-02-04 | RHD4CZ5L016ST8400 |  |  |  |  | -185d | 12.02d | Skilled labor [5.45 h]; Unskilled Labor [10.89 h]; Equipment Opreator [1.09 h]; Boom Truck [1.09 h]; Double Catch basin - ST [0.15 nr] | 2,094.9 |  | L016 | Z5 | CONS | ST | Insulation | bef |
|  | 3760 | **RHD4-02-002-L016-(ST)-Single Catch Basin Works** |  | 2026-08-04 | 2027-02-10 |  |  |  |  |  |  |  |  |  |  |  |  |  |  |  |  |
| RHD4CZ5L016ST7100 |  | Excavation works for Single Catch Basin - (RD-L-16)-Z5-L016-ST | 2d | 2026-08-04 A | 2026-09-26 A | RHD4CZ5L016ST3300, RHD4CZ5L016ST3301, RHD4ENSDZ5APPST110 | 100% |  | 2026-08-09 | 2026-08-10 |  |  | Skilled labor [16.34 h]; Unskilled Labor [32.67 h]; Equipment Opreator [24.5 h]; Excavator-Poclain [16.34 h]; Dump Truck [8.17 h]; Single Catch basin - ST [3.75 nr] | 13,991.25 | 13,991.25 | L016 | Z5 | CONS | ST | Excavation | bef |
| RHD4CZ5L016ST7200 |  | PC Blinding, Installation and Pipe connection for Single Catch Basin - (RD-L-16)-Z5-L016-ST | 2d | 2026-09-21 A | 2026-09-28 A | RHD4CZ5L016ST7100 | 100% |  | 2026-08-11 | 2026-08-12 |  |  | Skilled labor [16.34 h]; Unskilled Labor [32.67 h]; Plumber [8.17 h]; Equipment Opreator [3.27 h]; Boom Truck [3.27 h]; Single Catch basin - ST [3 nr] | 11,193 | 11,193 | L016 | Z5 | CONS | ST | Installation & Pipe Connection | bef |
| RHD4CZ5L016ST7300 |  | Rings & C.Slab & Final Backfill for Single Catch Basin - (RD-L-16)-Z5-L016-ST | 2d | 2026-10-27 A | 2027-02-01 | RHD4CZ5L016ST7200 |  | 2d | 2026-10-27 | 2026-10-28 | -152d | 2d | Skilled labor [20.47 h]; Unskilled Labor [40.8 h]; Equipment Opreator [24.5 h]; Boom Truck [4.14 h]; Bobcat [20.47 h]; Single Catch basin - ST [5.25 nr] | 19,587.75 | 2,611.05 | L016 | Z5 | CONS | ST | Rings | bef |
| RHD4CZ5L016ST7400 |  | Steel Cover for Single Catch Basin - (RD-L-16)-Z5-L016-ST | 2d | 2027-02-04 | 2027-02-06 | RHD4CZ5L016ST7300, RHD4PRSHLDOSST1704, RHD4CZ5L016ST3400 |  |  |  |  | -154d | 0.02d | Skilled labor [16.34 h]; Unskilled Labor [16.34 h]; Equipment Opreator [3.27 h]; Boom Truck [3.27 h]; Single Catch basin - ST [0.75 nr] | 2,798.25 |  | L016 | Z5 | CONS | ST | Steel Cover | bef |
| RHD4CZ5L016ST7500 |  | Finishing and Insulation works for Single Catch Basin - (RD-L-16)-Z5-L016-ST | 3d | 2027-02-07 | 2027-02-10 | RHD4CZ5L016ST7400, RHD4CZ5L016ST3500, RHD4CZ5L016ST1500 |  |  |  |  | -154.02d | 0d | Skilled labor [32.67 h]; Unskilled Labor [65.34 h]; Equipment Opreator [6.53 h]; Boom Truck [6.53 h]; Single Catch basin - ST [2.25 nr] | 8,394.75 |  | L016 | Z5 | CONS | ST | Insulation | bef |
|  | 4299 | **RHD4-02-002-Z5-L016-Concrete Box Culvert - ST** |  | 2026-06-11 | 2027-01-30 |  |  |  |  |  |  |  |  |  |  |  |  |  |  |  |  |
|  | 4300 | **RHD4-02-002-L016-(ST)-Concrete Box Culvert** |  | 2026-06-11 | 2027-01-30 |  |  |  |  |  |  |  |  |  |  |  |  |  |  |  |  |
| RHD4CZ5L016ST4100 |  | Excavation works for Box Culvert - (RD-L-16)-Z5-C016-ST(Completed) | 46d | 2026-06-11 A | 2026-08-03 A | RHD4PRSHLDOSST1003 SS, RHD4ENMSTUN2000 | 100% |  | 2026-06-13 | 2026-08-04 |  |  | Skilled labor [32 h]; Unskilled Labor [32 h]; Equipment Opreator [95.94 h]; Excavator-Poclain [32 h]; Water Truck [32 h]; Dump Truck [32 h]; Excavation for culverts (all types of soil) including backfilling - ST [479.21 m3] | 8,625.78 | 8,625.78 | L016 | Z5 | CONS | ST | Excavation | bef |
| RHD4CZ5L016ST4200 |  | PC works for Box Culvert - (RD-L-16)-Z5-C016-ST(Completed) | 43d | 2026-06-15 A | 2026-06-16 A | RHD4CZ5L016ST4100 SS | 100% |  | 2026-06-13 | 2026-08-01 |  |  | Skilled labor [0.87 h]; Unskilled Labor [0.87 h]; Equipment Opreator [0.87 h]; Concrete Mixer Truck [0.44 h]; Concrete Pump [0.44 h]; 100 mm thickness lean concrete under the base - ST [307.98 m2] | 12,011.22 | 12,011.22 | L016 | Z5 | CONS | ST | PC | bef |
| RHD4CZ5L016ST4400 |  | Raft works for Box Culvert - (RD-L-16)-Z5-C016-ST(Completed) | 21d | 2026-07-11 A | 2026-07-16 A | RHD4CZ5L016ST4200 SS, RHD4CZ5L08RW3000 | 100% |  | 2026-06-13 | 2026-07-06 |  |  | Carpenter [4.8 h]; Skilled labor [5.99 h]; Steel Fixer [1.2 h]; Equipment Opreator [9.8 h]; Boom Truck [0.22 h]; Concrete Mixer Truck [4.8 h]; Concrete Pump [4.8 h]; Supply and cast in place reinforced concrete for Box culverts - ST [94.62 m3]; Supply, placing, and fixing of high tensile reinforcement steel for Box culverts - ST [22.98 Ton] | 176,201.76 | 176,201.76 | L016 | Z5 | CONS | ST | Raft Works | bef |
| RHD4CZ5L016ST4500 |  | Wall and slab works for Box Culvert - (RD-L-16)-Z5-C016-ST | 2d | 2026-08-04 A | 2026-09-20 A | RHD4CZ5L016ST4400, RHD4CZ5L016ST4200, RHD4ENMSTUN2000, RHD4CZ5L016ST4100 | 100% |  | 2026-08-05 | 2026-08-06 |  |  | Carpenter [12.85 h]; Skilled labor [16 h]; Steel Fixer [3.16 h]; Equipment Opreator [26.35 h]; Boom Truck [0.65 h]; Concrete Mixer Truck [12.85 h]; Concrete Pump [12.85 h]; Supply and cast in place reinforced concrete for Box culverts - ST [118.28 m3]; Supply, placing, and fixing of high tensile reinforcement steel for Box culverts - ST [34.48 Ton] | 241,067.2 | 241,067.2 | L016 | Z5 | CONS | ST | Wall and slab Works | bef |
| RHD4CZ5L016ST4600 |  | Insulation and Testing for Box Culvert - (RD-L-16)-Z5-C016-ST | 2d | 2026-10-01 A | 2026-10-03 A | RHD4CZ5L016ST4700, RHD4CZ5L016ST5400 | 100% |  |  |  |  |  | Skilled labor [12.85 h]; Unskilled Labor [25.81 h]; Equipment Opreator [12.85 h]; Water Truck [12.85 h]; Supply and cast in place reinforced concrete for Box culverts - ST [23.66 m3] | 23,281.44 | 23,281.44 | L016 | Z5 | CONS | ST | Insulation and Testing | bef |
| RHD4CZ5L016ST4700 |  | Backfilling works for Box Culvert - (RD-L-16)-Z5-C016-ST | 4d | 2027-01-26 | 2027-01-30 | RHD4CZ5L016ST4500, RHD4CZ5L016ST5300 |  |  |  |  | -154d | 0d | Skilled labor [37.24 h]; Unskilled Labor [74.6 h]; Equipment Opreator [59.68 h]; Boom Truck [18.62 h]; Water Truck [3.7 h]; Dump Truck [37.24 h]; Excavation for culverts (all types of soil) including backfilling - ST [205.38 m3] | 3,696.84 |  | L016 | Z5 | CONS | ST | Backfilling | bef |

| ID | WBS | Activity | Duration | Start | Finish | Predecessors | Complete | Remaining | Planned start | Planned finish | Total float | Free float | Calendar | Resources | Cost | Actual cost | RDH4-01-001-Road and Block Names-1 | RDH4-01-001-Zones-1 | RDH4-01-001-Phases-1 | RDH4-01-001-Networks-1 | RDH4-01-001-Work Method-1 | RDH4-01-001-MENEM |
| --- | --- | --- | --- | --- | --- | --- | --- | --- | --- | --- | --- | --- | --- | --- | --- | --- | --- | --- | --- | --- | --- | --- |
|  | 4301 | **RHD4-02-002-L016-(ST)-Concrete Chambers** |  | 2026-08-20 | 2027-01-27 |  |  |  |  |  |  |  |  |  |  |  |  |  |  |  |  |  |
| RHD4CZ5L016ST5100 |  | Excavation and Bedding for Concrete Chambers - for Box Culvert - (RD-L-16)-Z5-C016-ST | 2d | 2026-08-20 A | 2027-01-20 | RHD4CZ5L016ST4500 | 50% | 2d | 2026-08-08 | 2026-08-09 | -154d | 0d |  | Skilled labor [21.78 h]; Unskilled Labor [21.78 h]; Equipment Opreator [4.36 h]; Excavator-Poclain [2.18 h]; Dump Truck [2.18 h]; Concrete chambers - ST - Size 1.8 x 2.0 m, depth 4.51-5.5 m [0.3 nr] | 11,612.4 | 5,806.2 | L016 | Z5 | CONS | ST | Excavation & Bedding | bef |
| RHD4CZ5L016ST5200 |  | PC works for Concrete Chambers - for Box Culvert - (RD-L-16)-Z5-C016-ST | 2d | 2026-08-25 A | 2027-01-23 | RHD4CZ5L016ST5100 | 50% | 2d | 2026-08-10 | 2026-08-11 | -154d | 0d |  | Skilled labor [21.78 h]; Unskilled Labor [21.78 h]; Equipment Opreator [4.36 h]; Excavator-Poclain [2.18 h]; Dump Truck [2.18 h]; Concrete chambers - ST - Size 1.8 x 2.0 m, depth 4.51-5.5 m [0.2 nr] | 7,741.6 | 3,870.8 | L016 | Z5 | CONS | ST | PC Works | bef |
| RHD4CZ5L016ST5300 |  | Installation for Concrete Chambers - for Box Culvert - (RD-L-16)-Z5-C016-ST | 2d | 2026-08-30 A | 2027-01-25 | RHD4CZ5L016ST5200 | 50% | 2d | 2026-08-12 | 2026-08-13 | -154d | 0d |  | Skilled labor [21.78 h]; Unskilled Labor [21.78 h]; Equipment Opreator [4.36 h]; Excavator-Poclain [2.18 h]; Dump Truck [2.18 h]; Concrete chambers - ST - Size 1.8 x 2.0 m, depth 4.51-5.5 m [1.1 nr] | 42,578.8 | 21,289.4 | L016 | Z5 | CONS | ST | Installation | bef |
| RHD4CZ5L016ST5400 |  | Backfilling works for Concrete Chambers - for Box Culvert - (RD-L-16)-Z5-C016-ST | 2d | 2027-01-26 | 2027-01-27 | RHD4CZ5L016ST5300 |  |  |  |  | -152d | 2d |  | Skilled labor [21.78 h]; Unskilled Labor [21.78 h]; Equipment Opreator [4.36 h]; Excavator-Poclain [2.18 h]; Dump Truck [2.18 h]; Concrete chambers - ST - Size 1.8 x 2.0 m, depth 4.51-5.5 m [0.4 nr] | 15,483.2 |  | L016 | Z5 | CONS | ST | Backfilling Works | bef |
|  | 3784 | **RHD4-02-002-Z5-L016-Sewage Network - SW** |  | 2026-08-10 | 2027-06-01 |  |  |  |  |  |  |  |  |  |  |  |  |  |  |  |  |  |
|  | 1 | **Missing ID** |  | 2027-04-12 | 2027-04-23 |  |  |  |  |  |  |  |  |  |  |  |  |  |  |  |  |  |
| RHD4CZ5L016SW4101 |  | Excavation and Bedding for Air Valve Chamber for HDPE force Main - (RD-L-16)-Z5-L016-SW | 2d | 2027-04-12 | 2027-04-13 | RHD4CZ5L016SW3101 SS, RHD4CZ5L016RD2100 |  |  |  |  | -175d | 0d | RHD4 - (7 Days - 8 Hours)-48 | Skilled labor [5.45 h]; Unskilled Labor [5.45 h]; Equipment Opreator [1.09 h]; Excavator-Poclain [0.54 h]; Dump Truck [0.54 h]; Air valve chamber - SW [0.25 nr] | 1,193 |  | L016 | Z5 | CONS | SW |  | bef |
| RHD4CZ5L016SW4201 |  | PC works for Air Valve Chamber for HDPE force Main - (RD-L-16)-Z5-L016-SW | 2d | 2027-04-14 | 2027-04-15 | RHD4CZ5L016SW4101 |  |  |  |  | -175d | 0d | RHD4 - (7 Days - 8 Hours)-48 | Skilled labor [5.45 h]; Unskilled Labor [10.89 h]; Equipment Opreator [0.54 h]; Concrete Pump [0.54 h]; Air valve chamber - SW [0.1 nr] | 477.2 |  | L016 | Z5 | CONS | SW |  | bef |
| RHD4CZ5L016SW4301 |  | Installation for Air Valve Chamber for HDPE force Main - (RD-L-16)-Z5-L016-SW | 2d | 2027-04-16 | 2027-04-17 | RHD4CZ5L016SW4201 |  |  |  |  | -175d | 0d | RHD4 - (7 Days - 8 Hours)-48 | Skilled labor [5.45 h]; Unskilled Labor [10.89 h]; Equipment Opreator [1.09 h]; Boom Truck [1.09 h]; Air valve chamber - SW [0.55 nr] | 2,624.6 |  | L016 | Z5 | CONS | SW |  | bef |
| RHD4CZ5L016SW4401 |  | Backfilling works for Air Valve Chamber for HDPE force Main - (RD-L-16)-Z5-L016-SW | 2d | 2027-04-18 | 2027-04-19 | RHD4CZ5L016SW4301 |  |  |  |  | -175d | 0d | RHD4 - (7 Days - 8 Hours)-48 | Skilled labor [5.45 h]; Unskilled Labor [10.89 h]; Equipment Opreator [1.09 h]; Water Truck [0.54 h]; Dump Truck [0.54 h]; Air valve chamber - SW [0.1 nr] | 477.2 |  | L016 | Z5 | CONS | SW |  | bef |
| RHD4CZ5L016SW5101 |  | Installation for Air Valves for HDPE force Main - (RD-L-16)-Z5-L016-SW | 2d | 2027-04-20 | 2027-04-21 | RHD4CZ5L016SW4401 |  |  |  |  | -175d | 0d | RHD4 - (7 Days - 8 Hours)-48 | Unskilled Labor [5.45 h]; Plumber [5.45 h]; Air valves with dia (50mm) - SW [0.9 nr] | 4,427.1 |  | L016 | Z5 | CONS | SW |  | bef |
| RHD4CZ5L016SW5201 |  | Stem and Service box for Air Valves for HDPE force Main - (RD-L-16)-Z5-L016-SW | 2d | 2027-04-22 | 2027-04-23 | RHD4CZ5L016SW5101, RHD4CZ5L016ST4600 |  |  |  |  | -175d | 0d | RHD4 - (7 Days - 8 Hours)-48 | Unskilled Labor [5.45 h]; Plumber [5.45 h]; Air valves with dia (50mm) - SW [0.1 nr] | 491.9 |  | L016 | Z5 | CONS | SW |  | bef |
|  | 957 | **RHD4-02-002-L016-(SW)-MH Works - 1200 mm diameter with Back drop** |  | 2026-08-10 | 2027-04-18 |  |  |  |  |  |  |  |  |  |  |  |  |  |  |  |  |  |
| RHD4CZ5L016SW3101 |  | Excavation and PC Blinding works for MH 1200 mm - (RD-L-16)-Z5-L016-SW | 2d | 2026-08-10 A | 2026-08-11 A | RHD4CZ5L08ST5400, RHD4CZ5L016ST7100, RHD4CZ7C013IRR3200 | 100% |  | 2026-10-11 | 2026-10-12 |  |  |  | Skilled labor [5.45 h]; Unskilled Labor [5.45 h]; Equipment Opreator [8.71 h]; Excavator-Poclain [5.45 h]; Water Truck [0.54 h]; Dump Truck [2.72 h]; MH (1200mm Diameter) - SW - depth 2.51- 3.5 m with back drop [0.25 nr] | 4,003.75 | 4,003.75 | L016 | Z5 | CONS | SW | Excavation | bef |
| RHD4CZ5L016SW3201 |  | Installation of Base for MH 1200 mm - (RD-L-16)-Z5-L016-SW | 2d | 2026-08-12 A | 2026-08-13 A | RHD4CZ5L016SW3101 | 100% |  | 2026-10-13 | 2026-10-14 |  |  |  | Skilled labor [5.45 h]; Unskilled Labor [5.45 h]; Equipment Opreator [2.18 h]; Boom Truck [1.09 h]; Concrete Mixer Truck [1.09 h]; MH (1200mm Diameter) - SW - depth 2.51- 3.5 m with back drop [0.25 nr] | 4,003.75 | 4,003.75 | L016 | Z5 | CONS | SW | Installing Base | bef |
| RHD4CZ5L016SW3301 |  | MH Ring and C.Slab works and Backfilling works for MH 1200 mm - (RD-L-16)-Z5-L016-SW | 2d | 2027-04-12 | 2027-04-13 | RHD4CZ5L016SW3201 |  |  |  |  | -177d | 0d |  | Skilled labor [5.45 h]; Unskilled Labor [5.45 h]; Equipment Opreator [3.81 h]; Boom Truck [2.18 h]; Concrete Mixer Truck [1.6 h]; MH (1200mm Diameter) - SW - depth 2.51- 3.5 m with back drop [0.35 nr] | 5,605.25 |  | L016 | Z5 | CONS | SW | Installing Rings | bef |
| RHD4CZ5L016SW3401 |  | Steel Cover for MH 1200 mm - (RD-L-16)-Z5-L016-SW | 2d | 2027-04-14 | 2027-04-15 | RHD4CZ5L016SW3301 |  |  |  |  | -177d | 0d |  | Skilled labor [3.59 h]; Unskilled Labor [7.3 h]; Equipment Opreator [0.8 h]; Boom Truck [0.8 h]; MH (1200mm Diameter) - SW - depth 2.51- 3.5 m with back drop [0.05 nr] | 800.75 |  | L016 | Z5 | CONS | SW | Steel Cover | bef |
| RHD4CZ5L016SW3501 |  | Finishing, Benching, Testing works for MH 1200 mm - (RD-L-16)-Z5-L016-SW | 2d | 2027-04-17 | 2027-04-18 | RHD4CZ5L016SW3401 |  |  |  |  | -177d | 0d |  | Skilled labor [5.45 h]; Unskilled Labor [10.89 h]; Plumber [5.45 h]; Equipment Opreator [1.09 h]; Water Truck [1.09 h]; MH (1200mm Diameter) - SW - depth 2.51- 3.5 m with back drop [0.1 nr] | 1,601.5 |  | L016 | Z5 | CONS | SW | Benching | bef |
|  | 4358 | **RHD4-02-002-L016-(SW)-HDPE Pipes - 250 mm diameter** |  | 2027-04-12 | 2027-04-22 |  |  |  |  |  |  |  |  |  |  |  |  |  |  |  |  |  |
| RHD4CZ5L016SW2600 |  | Excavation works for HDPE Force Main Pipeline 250 mm - (RD-L-16)-Z5-L016-SW | 2d | 2027-04-12 | 2027-04-13 | RHD4CZ5L016SW3101, RHD4CZ7C02ST5400 |  |  |  |  | -179d | 0d |  | Skilled labor [10.89 h]; Unskilled Labor [10.89 h]; Equipment Opreator [13.18 h]; Excavator-Poclain [10.89 h]; Dump Truck [2.18 h]; HDPE (250mm Diameter) - SW - in trenches depth:0- 1.5m [22.58 m]; HDPE (250mm Diameter) - SW - in trenches depth: 1.51 than 2.5m | 4,493.42 |  | L016 | Z5 | CONS | SW | Excavation | bef |
| RHD4CZ5L016SW2700 |  | Bedding works for HDPE Force Main Pipeline 250 mm - (RD-L-16)-Z5-L016-SW | 2d | 2027-04-14 | 2027-04-15 | RHD4CZ5L016SW2600 |  |  |  |  | -179d | 0d |  | Skilled labor [9.6 h]; Unskilled Labor [19.2 h]; Equipment Opreator [19.2 h]; Excavator-Poclain [9.6 h]; Dump Truck [9.6 h]; HDPE (250mm Diameter) - SW - in trenches depth:0- 1.5m [11.29 m]; HDPE (250mm Diameter) - SW - in trenches depth: 1.51 than 2.5m | 2,246.71 |  | L016 | Z5 | CONS | SW | Bedding | bef |
| RHD4CZ5L016SW2800 |  | Installing for HDPE Force Main Pipeline 250 mm - (RD-L-16)-Z5-L016-SW | 2d | 2027-04-17 | 2027-04-18 | RHD4CZ5L016SW2700 |  |  |  |  | -179d | 0d |  | Unskilled Labor [32.8 h]; Plumber [16.44 h]; Equipment Opreator [16.44 h]; Boom Truck [16.44 h]; HDPE (250mm Diameter) - SW - in trenches depth:0- 1.5m [101.6 m]; HDPE (250mm Diameter) - SW - in trenches depth: 1.51 than 2.5m | 20,218.4 |  | L016 | Z5 | CONS | SW | Installation | bef |
| RHD4CZ5L016SW2900 |  | Primary Test for HDPE Force Main Pipeline 250 mm - (RD-L-16)-Z5-L016-SW | 2d | 2027-04-19 | 2027-04-20 | RHD4CZ5L016SW2800 |  |  |  |  | -179d | 0d |  | Unskilled Labor [6.86 h]; Plumber [6.86 h]; Equipment Opreator [6.86 h]; Water Truck [6.86 h]; HDPE (250mm Diameter) - SW - in trenches depth:0- 1.5m [45.16 m]; HDPE (250mm Diameter) - SW - in trenches depth: 1.51 than 2.5m | 8,986.84 |  | L016 | Z5 | CONS | SW | Primary Test | bef |
| RHD4CZ5L016SW3000 |  | Backfilling and warning tape works for HDPE Force Main Pipeline 250 mm - (RD-L-16)-Z5-L016-SW | 2d | 2027-04-21 | 2027-04-22 | RHD4CZ5L016SW3301, RHD4CZ5L016SW2900 |  |  |  |  | -179d | 0d |  | Skilled labor [12.96 h]; Unskilled Labor [25.92 h]; Equipment Opreator [25.92 h]; Excavator-Poclain [12.96 h]; Dump Truck [12.96 h]; HDPE (250mm Diameter) - SW - in trenches depth:0- 1.5m [45.16 m]; HDPE (250mm Diameter) - SW - in trenches depth: 1.51 than 2.5m | 8,986.84 |  | L016 | Z5 | CONS | SW | Backfilling | bef |

| ID | WBS | Activity | Duration | Start | Finish | Predecessors | Complete | Remaining | Planned start | Planned finish | Total float | Free float | Resources | Cost | Actual cost | RDH4-01-001-Road and Block Names-1 | RDH4-01-001-Zones-1 | RDH4-01-001-Phases-1 | RDH4-01-001-Networks-1 | RDH4-01-001-Work Method-1 | RDH4-01-001-MENEM |
| --- | --- | --- | --- | --- | --- | --- | --- | --- | --- | --- | --- | --- | --- | --- | --- | --- | --- | --- | --- | --- | --- |
|  | 3794 | **RHD4-02-002-L016-(SW)-MH Works - 1200 mm diameter** |  | 2026-08-11 | 2027-06-01 |  |  |  |  |  |  |  |  |  |  |  |  |  |  |  |  |
| RHD4CZ5L016SW3100 |  | Excavation and PC Blinding works for MH 1200 mm - (RD-L-16)-Z5-L016-SW | 8d | 2026-08-11 A | 2027-04-15 | RHD4ENSDZ5APPSW120, RHD4CZ5L016SW2600 | 75% | 2d | 2026-10-15 | 2026-10-24 | -162d | 0d | Skilled labor [79.83 h]; Unskilled Labor [79.83 h]; Equipment Opreator [127.74 h]; Excavator-Poclain [79.83 h]; Water Truck [7.95 h]; Dump Truck [40 h]; MH (1200mm Diameter) - SW - depth 0 - 1.5m [1 nr]; MH (1200mm Diameter) - SW - depth 1.51 - 2.5m [1 nr]; MH (1200mm Diameter) - SW - depth 2.51 - 3.5m [0.75 nr]; MH (1200mm Diameter) - SW - depth 3.51 -4.5m [1.25 nr] | 43,412 | 32,559 | L016 | Z5 | CONS | SW | Excavation | bef |
| RHD4CZ5L016SW3200 |  | Installation of Base for MH 1200 mm - (RD-L-16)-Z5-L016-SW | 12d | 2026-08-12 A | 2027-04-22 | RHD4CZ5L016SW3100 | 50% | 6d | 2026-10-25 | 2026-11-07 | -162d | 0d | Skilled labor [130.68 h]; Unskilled Labor [130.68 h]; Equipment Opreator [52.27 h]; Boom Truck [26.14 h]; Concrete Mixer Truck [26.14 h]; MH (1200mm Diameter) - SW - depth 0 - 1.5m [1 nr]; MH (1200mm Diameter) - SW - depth 1.51 - 2.5m [1 nr]; MH (1200mm Diameter) - SW - depth 2.51 - 3.5m [0.75 nr]; MH (1200mm Diameter) - SW - depth 3.51 -4.5m [1.25 nr] | 43,412 | 21,706 | L016 | Z5 | CONS | SW | Installing Base | bef |
| RHD4CZ5L016SW3300 |  | MH Ring and C.Slab works and Backfilling works for MH 1200 mm - (RD-L-16)-Z5-L016-SW | 12d | 2027-04-24 | 2027-05-06 | RHD4CZ5L016SW3200 |  |  |  |  | -162d | 0d | Skilled labor [130.68 h]; Unskilled Labor [130.68 h]; Equipment Opreator [91.48 h]; Boom Truck [52.27 h]; Concrete Mixer Truck [39.2 h]; MH (1200mm Diameter) - SW - depth 0 - 1.5m [1.4 nr]; MH (1200mm Diameter) - SW - depth 1.51 - 2.5m [1.4 nr]; MH (1200mm Diameter) - SW - depth 2.51 - 3.5m [1.05 nr]; MH (1200mm Diameter) - SW - depth 3.51 -4.5m [1.75 nr] | 60,776.8 |  | L016 | Z5 | CONS | SW | Installing Rings | bef |
| RHD4CZ5L016SW3400 |  | Steel Cover for MH 1200 mm - (RD-L-16)-Z5-L016-SW | 6d | 2027-05-08 | 2027-05-13 | RHD4CZ5L016SW3300 |  |  |  |  | -159d | 0d | Skilled labor [58.05 h]; Unskilled Labor [116.2 h]; Equipment Opreator [11.65 h]; Boom Truck [11.65 h]; MH (1200mm Diameter) - SW - depth 0 - 1.5m [0.2 nr]; MH (1200mm Diameter) - SW - depth 1.51 - 2.5m [0.2 nr]; MH (1200mm Diameter) - SW - depth 2.51 - 3.5m [0.15 nr]; MH (1200mm Diameter) - SW - depth 3.51 -4.5m [0.25 nr] | 8,682.4 |  | L016 | Z5 | CONS | SW | Steel Cover | bef |
| RHD4CZ5L016SW3500 |  | Finishing, Benching, Testing works for MH 1200 mm - (RD-L-16)-Z5-L016-SW | 12d | 2027-05-19 | 2027-06-01 | RHD4CZ5L016SW3400 |  |  |  |  | -159d | 0d | Skilled labor [130.68 h]; Unskilled Labor [261.37 h]; Plumber [130.68 h]; Equipment Opreator [26.14 h]; Water Truck [26.14 h]; MH (1200mm Diameter) - SW - depth 0 - 1.5m [0.4 nr]; MH (1200mm Diameter) - SW - depth 1.51 - 2.5m [0.4 nr]; MH (1200mm Diameter) - SW - depth 2.51 - 3.5m [0.3 nr]; MH (1200mm Diameter) - SW - depth 3.51 -4.5m [0.5 nr] | 17,364.8 |  | L016 | Z5 | CONS | SW | Benching | bef |
|  | 3785 | **RHD4-02-002-L016-(SW)-GRP Pipes - 300 mm diameter** |  | 2027-04-24 | 2027-05-22 |  |  |  |  |  |  |  |  |  |  |  |  |  |  |  |  |
| RHD4CZ5L016SW1100 |  | Excavation works for GRP Pipe Line 300 mm - (RD-L-16)-Z5-L016-SW | 2d | 2027-04-24 | 2027-04-25 | RHD4CZ5L016SW3200, RHD4ENSDZ5APPSW120, RHD4CZ5L016SW3100 |  |  |  |  | -154d | 0d | Skilled labor [13.07 h]; Unskilled Labor [13.07 h]; Equipment Opreator [15.68 h]; Excavator-Poclain [13.07 h]; Dump Truck [2.61 h]; GRP (300mm Diameter) - SW - Depth: 2.51m - 3.5m [27.01 m]; GRP (300mm Diameter) - SW - Depth: 3.51m - 4.5m | 11,020.08 |  | L016 | Z5 | CONS | SW | Excavation | bef |
| RHD4CZ5L016SW1200 |  | Bedding works for GRP Pipe Line 300 mm - (RD-L-16)-Z5-L016-SW | 2d | 2027-04-26 | 2027-04-27 | RHD4CZ5L016SW1100 |  |  |  |  | -154d | 0d | Skilled labor [13.07 h]; Unskilled Labor [26.14 h]; Equipment Opreator [26.14 h]; Excavator-Poclain [13.07 h]; Dump Truck [13.07 h]; GRP (300mm Diameter) - SW - Depth: 2.51m - 3.5m [9 m]; GRP (300mm Diameter) - SW - Depth: 3.51m - 4.5m | 3,672 |  | L016 | Z5 | CONS | SW | Bedding | bef |
| RHD4CZ5L016SW1300 |  | Installing for GRP Pipe Line 300 mm - (RD-L-16)-Z5-L016-SW | 2d | 2027-05-08 | 2027-05-09 | RHD4CZ5L016SW1200, RHD4CZ5L016SW3300 |  |  |  |  | -162d | 0d | Unskilled Labor [26.14 h]; Plumber [13.07 h]; Equipment Opreator [13.07 h]; Boom Truck [13.07 h]; GRP (300mm Diameter) - SW - Depth: 2.51m - 3.5m [72.03 m]; GRP (300mm Diameter) - SW - Depth: 3.51m - 4.5m | 29,388.24 |  | L016 | Z5 | CONS | SW | Installation | bef |
| RHD4CZ5L016SW1400 |  | Primary Test for GRP Pipe Line 300 mm - (RD-L-16)-Z5-L016-SW | 2d | 2027-05-10 | 2027-05-11 | RHD4CZ5L016SW1300 |  |  |  |  | -162d | 0d | Unskilled Labor [13.07 h]; Plumber [13.07 h]; Equipment Opreator [13.07 h]; Water Truck [13.07 h]; GRP (300mm Diameter) - SW - Depth: 2.51m - 3.5m [36.02 m]; GRP (300mm Diameter) - SW - Depth: 3.51m - 4.5m | 14,696.16 |  | L016 | Z5 | CONS | SW | Primary Test | bef |
| RHD4CZ5L016SW1500 |  | Backfilling and warning tape works for GRP Pipe Line 300 mm - (RD-L-16)-Z5-L016-SW | 5d | 2027-05-12 | 2027-05-22 | RHD4CZ5L016SW1400, RHD4CZ4L014ST3501, RHD4CZ4C031ST7500 |  |  |  |  | -162d | 0d | Skilled labor [13.07 h]; Unskilled Labor [26.14 h]; Equipment Opreator [26.14 h]; Excavator-Poclain [13.07 h]; Dump Truck [13.07 h]; GRP (300mm Diameter) - SW - Depth: 2.51m - 3.5m [36.02 m]; GRP (300mm Diameter) - SW - Depth: 3.51m - 4.5m | 14,696.16 |  | L016 | Z5 | CONS | SW | Backfilling | bef |
|  | 3790 | **RHD4-02-002-L016-(SW)-UPVC Pipes - 200 mm diameter** |  | 2026-08-12 | 2027-05-19 |  |  |  |  |  |  |  |  |  |  |  |  |  |  |  |  |
| RHD4CZ5L016SW2100 |  | Excavation works for UPVC Pipe Line 200 mm - (RD-L-16)-Z5-L016-SW | 4d | 2026-08-12 A | 2026-09-16 A | RHD4CZ5L016SW1100, RHD4ENSDZ5APPSW120, RHD4CZ5L016SW1100 FF | 100% |  | 2026-11-10 | 2026-11-14 |  |  | Skilled labor [35.5 h]; Unskilled Labor [35.5 h]; Equipment Opreator [42.58 h]; Excavator-Poclain [35.5 h]; Dump Truck [7.08 h]; UPVC (200mm Diameter) - SW - Depth: less than 1.5m [24.51 m]; UPVC (200mm Diameter) - SW - Depth: 1.51m - 2.5m [21.65 m]; UPVC (200mm Diameter) - SW - Depth: 2.51m - 3.5m [31.08 m] | 18,620.33 | 18,620.33 | L016 | Z5 | CONS | SW | Excavation | bef |
| RHD4CZ5L016SW2200 |  | Bedding works for UPVC Pipe Line 200 mm - (RD-L-16)-Z5-L016-SW | 4d | 2026-08-15 A | 2026-09-19 A | RHD4CZ5L016SW2100, RHD4CZ5L016SW1200 | 100% |  | 2026-11-15 | 2026-11-18 |  |  | Skilled labor [34.52 h]; Unskilled Labor [69.04 h]; Equipment Opreator [69.04 h]; Excavator-Poclain [34.52 h]; Dump Truck [34.52 h]; UPVC (200mm Diameter) - SW - Depth: less than 1.5m [12.26 m]; UPVC (200mm Diameter) - SW - Depth: 1.51m - 2.5m [7.22 m]; UPVC (200mm Diameter) - SW - Depth: 2.51m - 3.5m [10.36 m] | 6,943.7 | 6,943.7 | L016 | Z5 | CONS | SW | Bedding | bef |
| RHD4CZ5L016SW2300 |  | Installing for UPVC Pipe Line 200 mm - (RD-L-16)-Z5-L016-SW | 4d | 2026-08-16 A | 2026-09-21 A | RHD4CZ5L016SW2200, RHD4CZ5L016SW1300 | 100% |  | 2026-11-24 | 2026-11-28 |  |  | Unskilled Labor [78.85 h]; Plumber [39.42 h]; Equipment Opreator [39.42 h]; Boom Truck [39.42 h]; UPVC (200mm Diameter) - SW - Depth: less than 1.5m [110.31 m]; UPVC (200mm Diameter) - SW - Depth: 1.51m - 2.5m [57.74 m]; UPVC (200mm Diameter) - SW - Depth: 2.51m - 3.5m [82.88 m] | 57,746.66 | 57,746.66 | L016 | Z5 | CONS | SW | Installation | bef |
| RHD4CZ5L016SW2500 |  | Backfilling and warning tape works for UPVC Pipe Line 200 mm - (RD-L-16)-Z5-L016-SW | 4d | 2026-08-18 A | 2026-08-22 A | RHD4CZ5L016SW2400, RHD4CZ5L016SW1500, RHD4CZ5L08SW3500, RHD4CZ5L08PT3200, RHD4CZ6C052SL6100 | 100% |  | 2026-12-02 | 2026-12-06 |  |  | Skilled labor [37.03 h]; Unskilled Labor [73.95 h]; Equipment Opreator [73.95 h]; Excavator-Poclain [37.03 h]; Dump Truck [37.03 h]; UPVC (200mm Diameter) - SW - Depth: less than 1.5m [49.03 m]; UPVC (200mm Diameter) - SW - Depth: 1.51m - 2.5m [28.87 m]; UPVC (200mm Diameter) - SW - Depth: 2.51m - 3.5m [41.44 m] | 27,770.83 | 27,770.83 | L016 | Z5 | CONS | SW | Backfilling | bef |
| RHD4CZ5L016SW2400 |  | Primary Test for UPVC Pipe Line 200 mm - (RD-L-16)-Z5-L016-SW | 3d | 2026-09-17 A | 2027-05-19 | RHD4CZ5L016SW2300, RHD4CZ5L016SW1400 | 8% | 3d | 2026-11-29 | 2026-12-01 | -160d | 2d | Unskilled Labor [24.18 h]; Plumber [24.18 h]; Equipment Opreator [24.18 h]; Water Truck [24.18 h]; UPVC (200mm Diameter) - SW - Depth: less than 1.5m [49.03 m]; UPVC (200mm Diameter) - SW - Depth: 1.51m - 2.5m [28.87 m]; UPVC (200mm Diameter) - SW - Depth: 2.51m - 3.5m [41.44 m] | 27,770.83 | 2,088 | L016 | Z5 | CONS | SW | Primary Test | bef |
|  | 3793 | **RHD4-02-002-L016-(SW)-Concrete Encasement** |  |  |  |  |  |  |  |  |  |  |  |  |  |  |  |  |  |  |  |
|  | 3821 | **RHD4-02-002-Z5-L016-Potable Network - PT** |  | 2026-08-04 | 2027-07-14 |  |  |  |  |  |  |  |  |  |  |  |  |  |  |  |  |
|  | 3824 | **RHD4-02-002-L016-(PT)-HDPE Pipes - 200 mm diameter** |  | 2027-05-23 | 2027-06-06 |  |  |  |  |  |  |  |  |  |  |  |  |  |  |  |  |
| RHD4CZ5L016PT1102 |  | Excavation works for HDPE Pipline 200 mm - (RD-L-16)-Z5-L016-PT | 2d | 2027-05-23 | 2027-05-25 | RHD4CZ5L016SW1500, RHD4CZ5L016SW2500, RHD4ENSDZ5APPPT130, RHD4ENMSPT2000, RHD4CZ4L09ST7500, RHD4CZ2C082PT3202, RHD4CZ2L011SL5200, RHD4CZ4C031SL5200 |  |  |  |  | -162.02d | 0d | Skilled labor [4 h]; Unskilled Labor [4 h]; Equipment Opreator [4.8 h]; Excavator-Poclain [4 h]; Dump Truck [0.8 h]; HDPE (200mm Diameter) - PT - Depth: less than 1.5m [9.19 m] | 1,286.32 |  | L016 | Z5 | CONS | PT | Excavation | bef |
| RHD4CZ5L016PT1202 |  | Bedding works for HDPE Pipline 200 mm - (RD-L-16)-Z5-L016-PT | 2d | 2027-05-25 | 2027-05-27 | RHD4CZ5L016PT1102 |  |  |  |  | -162.02d | 0d | Skilled labor [3.38 h]; Unskilled Labor [6.64 h]; Equipment Opreator [6.64 h]; Excavator-Poclain [3.38 h]; Dump Truck [3.38 h]; HDPE (200mm Diameter) - PT - Depth: less than 1.5m [4.59 m] | 643.16 |  | L016 | Z5 | CONS | PT | Bedding | bef |
| RHD4CZ5L016PT1302 |  | Installing for HDPE Pipline 200 mm - (RD-L-16)-Z5-L016-PT | 4d | 2027-05-27 | 2027-06-01 | RHD4CZ5L016PT1202, RHD4PRSHLDOSPT1000, RHD4PRSHLSTAGPT1000 |  |  |  |  | -162.02d | 0d | Unskilled Labor [13.4 h]; Plumber [6.64 h]; Equipment Opreator [6.64 h]; Boom Truck [6.64 h]; HDPE (200mm Diameter) - PT - Depth: less than 1.5m [41.35 m] | 5,788.44 |  | L016 | Z5 | CONS | PT | Installation | bef |
| RHD4CZ5L016PT1402 |  | Primary Test for HDPE Pipline 200 mm - (RD-L-16)-Z5-L016-PT | 2d | 2027-06-01 | 2027-06-03 | RHD4CZ5L016PT1302 |  |  |  |  | -150.02d | 0d | Unskilled Labor [1.96 h]; Plumber [1.96 h]; Equipment Opreator [1.96 h]; Water Truck [1.96 h]; HDPE (200mm Diameter) - PT - Depth: less than 1.5m [18.38 m] | 2,572.64 |  | L016 | Z5 | CONS | PT | Primary Test | bef |
| RHD4CZ5L016PT1502 |  | Backfilling and warning tape works for HDPE Pipline 200 mm - (RD-L-16)-Z5-L016-PT | 2d | 2027-06-03 | 2027-06-06 | RHD4CZ5L016PT1402 |  |  |  |  | -150.02d | 0d | Skilled labor [5.01 h]; Unskilled Labor [10.02 h]; Equipment Opreator [10.02 h]; Excavator-Poclain [5.01 h]; Dump Truck [5.01 h]; HDPE (200mm Diameter) - PT - Depth: less than 1.5m [18.38 m] | 2,572.64 |  | L016 | Z5 | CONS | PT | Backfilling | bef |

| ID | WBS | Activity | Duration | Start | Finish | Predecessors | Complete | Remaining | Planned start | Planned finish | Total float | Free float | Resources | Cost | RDH4-01-001-Road and Block Names-1 | RDH4-01-001-Zones-1 | RDH4-01-001-Phases-1 | RDH4-01-001-Networks-1 | RDH4-01-001-Work Method-1 | RDH4-01-001-MENEM |
| --- | --- | --- | --- | --- | --- | --- | --- | --- | --- | --- | --- | --- | --- | --- | --- | --- | --- | --- | --- | --- |
|  | 3823 | **RHD4-02-002-L016-(PT)-HDPE Pipes - 160 mm diameter** |  | 2027-05-25 | 2027-06-24 |  |  |  |  |  |  |  |  |  |  |  |  |  |  |  |
| RHD4CZ5L016PT1101 |  | Excavation works for HDPE Pipline 160 mm - (RD-L-16)-Z5-L016-PT | 3d | 2027-05-25 | 2027-05-29 | RHD4CZ5L016PT1102, RHD4CZ5L016SW1500, RHD4CZ5L016SW2500, RHD4ENSDZ5APPPT130, RHD4ENMSPT2000, RHD4CZ5L08PT1501 |  |  |  |  | -162.02d | 0d | Skilled labor [27.55 h]; Unskilled Labor [27.55 h]; Equipment Opreator [33.11 h]; Excavator-Poclain [27.55 h]; Dump Truck [5.55 h]; HDPE (160mm Diameter) - PT - Depth: less than 1.5m [63.34 m] | 6,776.85 | L016 | Z5 | CONS | PT | Excavation | bef |
| RHD4CZ5L016PT1201 |  | Bedding works for HDPE Pipline 160 mm - (RD-L-16)-Z5-L016-PT | 3d | 2027-05-29 | 2027-06-01 | RHD4CZ5L016PT1101, RHD4CZ5L016PT1202, RHD4CZ5L08SW6100 |  |  |  |  | -162.02d | 0d | Skilled labor [22.98 h]; Unskilled Labor [45.96 h]; Equipment Opreator [45.96 h]; Excavator-Poclain [22.98 h]; Dump Truck [22.98 h]; HDPE (160mm Diameter) - PT - Depth: less than 1.5m [31.67 m] | 3,388.42 | L016 | Z5 | CONS | PT | Bedding | bef |
| RHD4CZ5L016PT1301 |  | Installing for HDPE Pipline 160 mm - (RD-L-16)-Z5-L016-PT | 5d | 2027-06-01 | 2027-06-07 | RHD4CZ5L016PT1201, RHD4CZ5L016PT1302, RHD4PRSHLDOSPT1000, RHD4PRSHLSTAGPT1000 |  |  |  |  | -162.02d | 0d | Unskilled Labor [91.91 h]; Plumber [45.96 h]; Equipment Opreator [45.96 h]; Boom Truck [45.96 h]; HDPE (160mm Diameter) - PT - Depth: less than 1.5m [285.01 m] | 30,495.8 | L016 | Z5 | CONS | PT | Installation | bef |
| RHD4CZ5L016PT1401 |  | Primary Test for HDPE Pipline 160 mm - (RD-L-16)-Z5-L016-PT | 2d | 2027-06-17 | 2027-06-20 | RHD4CZ5L016PT1301, RHD4CZ5L016PT1402, RHD4CZ5L016PT5100, RHD4CZ5L08IRR1502, RHD4CZ5L08IRR3200, RHD4CZ5C061SL2400 |  |  |  |  | -162.02d | 0d | Unskilled Labor [13.83 h]; Plumber [13.83 h]; Equipment Opreator [13.83 h]; Water Truck [13.83 h]; HDPE (160mm Diameter) - PT - Depth: less than 1.5m [126.67 m] | 13,553.69 | L016 | Z5 | CONS | PT | Primary Test | bef |
| RHD4CZ5L016PT1501 |  | Backfilling and warning tape works for HDPE Pipline 160 mm - (RD-L-16)-Z5-L016-PT | 4d | 2027-06-20 | 2027-06-24 | RHD4CZ5L016PT1401, RHD4CZ5L016PT1502 |  |  |  |  | -162.02d | 0d | Skilled labor [34.52 h]; Unskilled Labor [68.94 h]; Equipment Opreator [68.94 h]; Excavator-Poclain [34.52 h]; Dump Truck [34.52 h]; HDPE (160mm Diameter) - PT - Depth: less than 1.5m [126.67 m] | 13,553.69 | L016 | Z5 | CONS | PT | Backfilling | bef |
|  | 3822 | **RHD4-02-002-L016-(PT)-HDPE Pipes - 110 mm diameter** |  | 2026-08-04 | 2027-06-27 |  |  |  |  |  |  |  |  |  |  |  |  |  |  |  |
| RHD4CZ5L016PT1100 |  | Excavation works for HDPE Pipline 110 mm - (RD-L-16)-Z5-L016-PT | 2d | 2026-08-04 A | 2027-05-31 | RHD4CZ5L016PT1101, RHD4CZ5L016SW1500, RHD4CZ5L016SW2500, RHD4ENSDZ5APPPT130, RHD4ENMSPT2000 | 66% | 2d | 2026-12-13 | 2026-12-14 | -162.02d | 0d | Skilled labor [4.14 h]; Unskilled Labor [4.14 h]; Equipment Opreator [5.01 h]; Excavator-Poclain [4.14 h]; Dump Truck [0.87 h]; HDPE (110mm Diameter) - PT - Depth: less than 1.5m [9.6 m] | 816 | L016 | Z5 | CONS | PT | Excavation | bef |
| RHD4CZ5L016PT1200 |  | Bedding works for HDPE Pipline 110 mm - (RD-L-16)-Z5-L016-PT | 2d | 2026-08-06 A | 2027-06-03 | RHD4CZ5L016PT1100, RHD4CZ5L016PT1201 | 66% | 2d | 2026-12-16 | 2026-12-17 | -159.02d | 3d | Skilled labor [3.48 h]; Unskilled Labor [6.97 h]; Equipment Opreator [6.97 h]; Excavator-Poclain [3.48 h]; Dump Truck [3.48 h]; HDPE (110mm Diameter) - PT - Depth: less than 1.5m [4.8 m] | 408 | L016 | Z5 | CONS | PT | Bedding | bef |
| RHD4CZ5L016PT1300 |  | Installing for HDPE Pipline 110 mm - (RD-L-16)-Z5-L016-PT | 2d | 2026-08-08 A | 2027-06-09 | RHD4CZ5L016PT1200, RHD4CZ5L016PT1301, RHD4PRSHLDOSPT1000, RHD4PRSHLSTAGPT1000, RHD4CZ1C081IRR3203 | 66% | 2d | 2026-12-22 | 2026-12-23 | -162.02d | 0d | Unskilled Labor [13.94 h]; Plumber [6.97 h]; Equipment Opreator [6.97 h]; Boom Truck [6.97 h]; HDPE (110mm Diameter) - PT - Depth: less than 1.5m [43.2 m] | 3,672 | L016 | Z5 | CONS | PT | Installation | bef |
| RHD4CZ5L016PT1400 |  | Primary Test for HDPE Pipline 110 mm - (RD-L-16)-Z5-L016-PT | 4d | 2027-06-20 | 2027-06-24 | RHD4CZ5L016PT1300, RHD4CZ5L016PT1401, RHD4CZ5L016PT5100 |  |  |  |  | -162.02d | 0d | Unskilled Labor [2.07 h]; Plumber [2.07 h]; Equipment Opreator [2.07 h]; Water Truck [2.07 h]; HDPE (110mm Diameter) - PT - Depth: less than 1.5m [19.2 m] | 1,632 | L016 | Z5 | CONS | PT | Primary Test | bef |
| RHD4CZ5L016PT1500 |  | Backfilling and warning tape works for HDPE Pipline 110 mm - (RD-L-16)-Z5-L016-PT | 2d | 2027-06-24 | 2027-06-27 | RHD4CZ5L016PT1400, RHD4CZ5L016PT1501 |  |  |  |  | -162.02d | 0d | Skilled labor [5.23 h]; Unskilled Labor [10.45 h]; Equipment Opreator [10.45 h]; Excavator-Poclain [5.23 h]; Dump Truck [5.23 h]; HDPE (110mm Diameter) - PT - Depth: less than 1.5m [19.2 m] | 1,632 | L016 | Z5 | CONS | PT | Backfilling | bef |
|  | 3827 | **RHD4-02-002-L016-(PT)-Gate Valves (Direct Buried)** |  | 2027-06-07 | 2027-06-30 |  |  |  |  |  |  |  |  |  |  |  |  |  |  |  |
| RHD4CZ5L016PT3100 |  | Installation for Direct Buried Gate Valves - (RD-L-16)-Z5-L016-PT | 3d | 2027-06-07 | 2027-06-10 | RHD4CZ5L016PT1302 FF, RHD4CZ5L016PT1301 FF, RHD4CZ5L016PT1300 FF, RHD4CZ5L016PT1302 SS, RHD4CZ5L016PT1301 SS, RHD4CZ5L016PT1300 SS, RHD4PRSHLDOSPT1200, RHD4PRSHLSTAGPT1200 |  |  |  |  | -148.02d | 14d | Unskilled Labor [32.67 h]; Plumber [32.67 h]; Gate valves dia 100 mm - PT [2.7 nr]; Gate valves dia 150 mm - PT [1.8 nr]; Gate valves dia 200 mm - PT [0.9 nr] | 7,847.1 | L016 | Z5 | CONS | PT | Installation | bef |
| RHD4CZ5L016PT3200 |  | Stem and Service box for Direct Buried Gate Valves - (RD-L-16)-Z5-L016-PT | 3d | 2027-06-27 | 2027-06-30 | RHD4CZ5L016PT3100, RHD4CZ5L016PT1502, RHD4CZ5L016PT1501, RHD4CZ5L016PT1500 |  |  |  |  | -162.02d | 0d | Unskilled Labor [32.67 h]; Plumber [32.67 h]; Gate valves dia 100 mm - PT [0.3 nr]; Gate valves dia 150 mm - PT [0.2 nr]; Gate valves dia 200 mm - PT [0.1 nr] | 871.9 | L016 | Z5 | CONS | PT | Stem and Service box | bef |
|  | 3830 | **RHD4-02-002-L016-(PT)-Wash out Valve Chambers** |  | 2027-06-06 | 2027-07-07 |  |  |  |  |  |  |  |  |  |  |  |  |  |  |  |
| RHD4CZ5L016PT2101 |  | Excavation and Bedding for Wash out Valve Chambers for Potable Water Network - (RD-L-16)-Z5-L016-PT | 2d | 2027-06-06 | 2027-06-08 | RHD4CZ5L016PT1502, RHD4ENSDZ5APPPT130 |  |  |  |  | -143.02d | 0d | Skilled labor [5.45 h]; Unskilled Labor [5.45 h]; Equipment Opreator [1.09 h]; Excavator-Poclain [0.54 h]; Dump Truck [0.54 h]; Wash out chambers - PT [0.25 nr] | 4,686.25 | L016 | Z5 | CONS | PT | Excavation and Bedding | bef |
| RHD4CZ5L016PT2201 |  | PC works for Wash out Valve Chambers for Potable Water Network - (RD-L-16)-Z5-L016-PT | 2d | 2027-06-30 | 2027-07-03 | RHD4CZ5L016PT2101, RHD4CZ5L016PT3200 |  |  |  |  | -162.02d | 0d | Skilled labor [5.45 h]; Unskilled Labor [10.89 h]; Equipment Opreator [0.54 h]; Concrete Pump [0.54 h]; Wash out chambers - PT [0.1 nr] | 1,874.5 | L016 | Z5 | CONS | PT | PC Works | bef |
| RHD4CZ5L016PT2301 |  | Installation for Wash out Valve Chambers for Potable Water Network - (RD-L-16)-Z5-L016-PT | 2d | 2027-07-03 | 2027-07-05 | RHD4CZ5L016PT2201, RHD4PRSHLDOSPT1100, RHD4PRSHLDOSPT1400, RHD4PRSHLSTAGPT1100, RHD4PRSHLSTAGPT1400 |  |  |  |  | -162.02d | 0d | Skilled labor [5.45 h]; Unskilled Labor [10.89 h]; Equipment Opreator [1.09 h]; Boom Truck [1.09 h]; Wash out chambers - PT [0.55 nr] | 10,309.75 | L016 | Z5 | CONS | PT | Installation | bef |
| RHD4CZ5L016PT2401 |  | Backfilling works for Wash out Valve Chambers for Potable Water Network - (RD-L-16)-Z5-L016-PT | 2d | 2027-07-05 | 2027-07-07 | RHD4CZ5L016PT2301 |  |  |  |  | -162.02d | 0d | Skilled labor [5.45 h]; Unskilled Labor [10.89 h]; Equipment Opreator [1.09 h]; Water Truck [0.54 h]; Dump Truck [0.54 h]; Wash out chambers - PT [0.1 nr] | 1,874.5 | L016 | Z5 | CONS | PT | Backfilling Works | bef |
|  | 3831 | **RHD4-02-002-L016-(PT)-Wash out Valves** |  | 2027-06-08 | 2027-07-10 |  |  |  |  |  |  |  |  |  |  |  |  |  |  |  |
| RHD4CZ5L016PT3102 |  | Installation for Wash out Valves for Potable Water Network - (RD-L-16)-Z5-L016-PT | 2d | 2027-06-08 | 2027-06-10 | RHD4PRSHLDOSPT1200, RHD4PRSHLSTAGPT1200, RHD4CZ5L016PT2101 |  |  |  |  | -139.02d | 23d | Unskilled Labor [5.45 h]; Plumber [5.45 h]; Wash out valve diameter 100 mm - PT [0.9 nr] | 3,373.2 | L016 | Z5 | CONS | PT | Installation | bef |
| RHD4CZ5L016PT3202 |  | Stem and Service box for Wash out Valves for Potable Water Network - (RD-L-16)-Z5-L016-PT | 2d | 2027-07-07 | 2027-07-10 | RHD4CZ5L016PT3102, RHD4CZ5L016PT2401, RHD4PRSHLDOSPT1300, RHD4PRSHLSTAGPT1300 |  |  |  |  | -162.02d | 24d | Unskilled Labor [5.45 h]; Plumber [5.45 h]; Wash out valve diameter 100 mm - PT [0.1 nr] | 374.8 | L016 | Z5 | CONS | PT | Stem and Service box | bef |
|  | 3834 | **RHD4-02-002-L016-(PT)-Fire Hydrant** |  | 2027-06-27 | 2027-07-14 |  |  |  |  |  |  |  |  |  |  |  |  |  |  |  |
| RHD4CZ5L016PT4100 |  | Excavation and Bedding and Pipe Installation for Fire Hydrant - (RD-L-16)-Z5-L016-PT | 4d | 2027-06-27 | 2027-07-01 | RHD4CZ5L016PT1502, RHD4CZ5L016PT1501, RHD4CZ5L016PT1500, RHD4ENSDZ5APPPT130 |  |  |  |  | -157.02d | 0d | Skilled labor [43.56 h]; Unskilled Labor [43.56 h]; Plumber [43.56 h]; Equipment Opreator [21.78 h]; Excavator-Poclain [21.78 h]; 3-outlet fire hydrant (2 x 2.5 inch and 1 x 4.5 inch) in the form of a separate dry vacuum cylinder [0.8 nr] | 10,096 | L016 | Z5 | CONS | PT | Excavation | bef |
| RHD4CZ5L016PT4200 |  | Valve Installation for Fire Hydrant - (RD-L-16)-Z5-L016-PT | 3d | 2027-07-01 | 2027-07-05 | RHD4CZ5L016PT4100 |  |  |  |  | -157.02d | 0d | Unskilled Labor [29.08 h]; Plumber [29.08 h]; 3-outlet fire hydrant (2 x 2.5 inch and 1 x 4.5 inch) in the form of a separate dry vacuum cylinder [1.6 nr] | 20,192 | L016 | Z5 | CONS | PT | Valve | bef |
| RHD4CZ5L016PT4300 |  | Stem for Fire Hydrant - (RD-L-16)-Z5-L016-PT | 3d | 2027-07-05 | 2027-07-08 | RHD4CZ5L016PT4200 |  |  |  |  | -157.02d | 0d | Unskilled Labor [29.08 h]; Plumber [29.08 h]; 3-outlet fire hydrant (2 x 2.5 inch and 1 x 4.5 inch) in the form of a separate dry vacuum cylinder [2.4 nr] | 30,288 | L016 | Z5 | CONS | PT | Stem | bef |
| RHD4CZ5L016PT4400 |  | Fire Installation for Fire Hydrant - (RD-L-16)-Z5-L016-PT | 3d | 2027-07-08 | 2027-07-12 | RHD4CZ5L016PT4300, RHD4CZ8L04SW3501, RHD4PRSHLDOSPT1500, RHD4PRSHLSTAGPT1500 |  |  |  |  | -157.02d | 0d | Unskilled Labor [29.08 h]; Plumber [29.08 h]; Equipment Opreator [29.08 h]; Boom Truck [29.08 h]; 3-outlet fire hydrant (2 x 2.5 inch and 1 x 4.5 inch) in the form of a separate dry vacuum cylinder [2.8 nr] | 35,336 | L016 | Z5 | CONS | PT | Fire | bef |
| RHD4CZ5L016PT4500 |  | Protection Barriers for Fire Hydrant - (RD-L-16)-Z5-L016-PT | 2d | 2027-07-12 | 2027-07-14 | RHD4CZ5L016PT4400 |  |  |  |  | -157.02d | 35d | Unskilled Labor [17.42 h]; Plumber [17.42 h]; 3-outlet fire hydrant (2 x 2.5 inch and 1 x 4.5 inch) in the form of a separate dry vacuum cylinder [0.4 nr] | 5,048 | L016 | Z5 | CONS | PT | Protection Barriers | bef |

| ID | WBS | Activity | Duration | Start | Finish | Predecessors | Complete | Planned start | Planned finish | Total float | Free float | Resources | Cost | Actual cost | RDH4-01-001-Road and Block Names-1 | RDH4-01-001-Zones-1 | RDH4-01-001-Phases-1 | RDH4-01-001-Networks-1 | RDH4-01-001-Work Method-1 | RDH4-01-001-MENEM |
| --- | --- | --- | --- | --- | --- | --- | --- | --- | --- | --- | --- | --- | --- | --- | --- | --- | --- | --- | --- | --- |
|  | 3835 | **RHD4-02-002-L016-(PT)-Concrete Encasement** |  | 2027-06-07 | 2027-06-17 |  |  |  |  |  |  |  |  |  |  |  |  |  |  |  |
| RHD4CZ5L016PT5100 |  | Pipe Encasement for Potable Pipelines - (RD-L-16)-Z5-L016-PT | 9d | 2027-06-07 | 2027-06-17 | RHD4CZ5L016PT1302 FF, RHD4CZ5L016PT1301 FF, RHD4CZ5L016PT1300 FF, RHD4CZ5L016PT1302 SS, RHD4CZ5L016PT1301 SS, RHD4CZ5L016PT1300 SS, RHD4CZ5L016PT1202, RHD4CZ5L016PT1201, RHD4CZ5L016PT1200 |  |  |  | -162.02d | 0d | Skilled labor [68.61 h]; Unskilled Labor [68.61 h]; Equipment Opreator [75.47 h]; Concrete Mixer Truck [6.86 h]; Dump Truck [68.61 h]; Pipe Encasement - PT [31.49 m3] | 38,606.74 |  | L016 | Z5 | CONS | PT | Pipe Encasement | bef |
|  | 3836 | **RHD4-02-002-Z5-L016-Irrigation Network - IRR** |  | 2026-08-04 | 2027-07-10 |  |  |  |  |  |  |  |  |  |  |  |  |  |  |  |
|  | 3839 | **RHD4-02-002-L016-(IRR)-HDPE Pipes - 200 mm diameter** |  | 2027-05-29 | 2027-06-16 |  |  |  |  |  |  |  |  |  |  |  |  |  |  |  |
| RHD4CZ5L016IRR1102 |  | Excavation works for HDPE Pipline 200 mm - (RD-L-16)-Z5-L016-IRR | 4d | 2027-05-29 | 2027-06-02 | RHD4CZ5L016PT1102, RHD4CZ5L016PT1101, RHD4ENSDZ5APPIRR140, RHD4ENMSRR2000 |  |  |  | -162.02d | 0d | Skilled labor [34.96 h]; Unskilled Labor [34.96 h]; Equipment Opreator [41.93 h]; Excavator-Poclain [34.96 h]; Dump Truck [6.97 h]; HDPE (200mm Diameter) - TSE - Depth: less than 1.5m [48.09 m] | 8,944.18 |  | L016 | Z5 | CONS | IRR | Excavation | bef |
| RHD4CZ5L016IRR1202 |  | Bedding works for HDPE Pipline 200 mm - (RD-L-16)-Z5-L016-IRR | 3d | 2027-06-02 | 2027-06-06 | RHD4CZ5L016IRR1102 |  |  |  | -162.02d | 0d | Skilled labor [26.14 h]; Unskilled Labor [52.38 h]; Equipment Opreator [52.38 h]; Excavator-Poclain [26.14 h]; Dump Truck [26.14 h]; HDPE (200mm Diameter) - TSE - Depth: less than 1.5m [24.04 m] | 4,472.09 |  | L016 | Z5 | CONS | IRR | Bedding | bef |
| RHD4CZ5L016IRR1302 |  | Installing for HDPE Pipline 200 mm - (RD-L-16)-Z5-L016-IRR | 4d | 2027-06-06 | 2027-06-10 | RHD4CZ5L016IRR1202, RHD4PRSHLDOSIRR1000, RHD4PRSHLSTAGIRR1000 |  |  |  | -162.02d | 0d | Unskilled Labor [69.81 h]; Plumber [34.96 h]; Equipment Opreator [34.96 h]; Boom Truck [34.96 h]; HDPE (200mm Diameter) - TSE - Depth: less than 1.5m [216.39 m] | 40,248.82 |  | L016 | Z5 | CONS | IRR | Installation | bef |
| RHD4CZ5L016IRR1402 |  | Primary Test for HDPE Pipline 200 mm - (RD-L-16)-Z5-L016-IRR | 2d | 2027-06-10 | 2027-06-13 | RHD4CZ5L016IRR1302 |  |  |  | -162.02d | 0d | Unskilled Labor [10.45 h]; Plumber [10.45 h]; Equipment Opreator [10.45 h]; Water Truck [10.45 h]; HDPE (200mm Diameter) - TSE - Depth: less than 1.5m [96.17 m] | 17,888.36 |  | L016 | Z5 | CONS | IRR | Primary Test | bef |
| RHD4CZ5L016IRR1502 |  | Backfilling and warning tape works for HDPE Pipline 200 mm - (RD-L-16)-Z5-L016-IRR | 3d | 2027-06-13 | 2027-06-16 | RHD4CZ5L016IRR1402 |  |  |  | -162.02d | 0d | Skilled labor [26.14 h]; Unskilled Labor [52.38 h]; Equipment Opreator [52.38 h]; Excavator-Poclain [26.14 h]; Dump Truck [26.14 h]; HDPE (200mm Diameter) - TSE - Depth: less than 1.5m [96.17 m] | 17,888.36 |  | L016 | Z5 | CONS | IRR | Backfilling | bef |
|  | 1770 | **RHD4-02-002-L016-(IRR)-Air Valves** |  | 2027-06-26 | 2027-06-30 |  |  |  |  |  |  |  |  |  |  |  |  |  |  |  |
| RHD4CZ5L016IRR3103 |  | Installation for Air Valves for Irrigation Network - (RD-L-16)-Z5-L016-IRR | 2d | 2027-06-26 | 2027-06-28 | RHD4CZ5L016IRR2302 |  |  |  | -162.02d | 0d | Unskilled Labor [5.45 h]; Plumber [5.45 h]; Air valve diameter 50 mm - TSE [0.9 nr] | 4,427.1 |  | L016 | Z5 | CONS | IRR | Installation | bef |
| RHD4CZ5L016IRR3203 |  | Stem and Service box for Air Valves for Irrigation Network - (RD-L-16)-Z5-L016-IRR | 2d | 2027-06-28 | 2027-06-30 | RHD4CZ5L016IRR3103, RHD4CZ5L016IRR2402 |  |  |  | -158.02d | 36d | Unskilled Labor [5.45 h]; Plumber [5.45 h]; Air valve diameter 50 mm - TSE [0.1 nr] | 491.9 |  | L016 | Z5 | CONS | IRR | Stem and Service box | bef |
|  | 3843 | **RHD4-02-002-L016-(IRR)-HDPE Pipes - 450 mm diameter** |  |  |  |  |  |  |  |  |  |  |  |  |  |  |  |  |  |  |
|  | 6107 | **RHD4-02-002-L016-(IRR)-HDPE Pipes - 160 mm diameter** |  | 2026-08-04 | 2027-07-03 |  |  |  |  |  |  |  |  |  |  |  |  |  |  |  |
| RHD4CZ5L016IRR1100 |  | Excavation works for HDPE Pipline 160 mm - (RD-L-16)-Z5-L016-IRR | 2d | 2026-08-04 A | 2026-08-05 A | RHD4CZ5L016IRR3103 | 100% | 2027-01-12 | 2027-01-13 |  |  | Skilled labor [8.17 h]; Unskilled Labor [8.17 h]; Equipment Opreator [9.8 h]; Excavator-Poclain [8.17 h]; Dump Truck [1.6 h]; HDPE (160mm Diameter) - TSE - Depth: less than 1.5m [11.2 m] | 1,377.6 | 1,377.6 | L016 | Z5 | CONS | IRR | Excavation | bef |
| RHD4CZ5L016IRR1200 |  | Bedding works for HDPE Pipline 160 mm - (RD-L-16)-Z5-L016-IRR | 2d | 2026-08-06 A | 2026-08-08 A | RHD4CZ5L016IRR1100 | 100% | 2027-01-14 | 2027-01-16 |  |  | Skilled labor [6.1 h]; Unskilled Labor [12.2 h]; Equipment Opreator [12.2 h]; Excavator-Poclain [6.1 h]; Dump Truck [6.1 h]; HDPE (160mm Diameter) - TSE - Depth: less than 1.5m [5.6 m] | 688.8 | 688.8 | L016 | Z5 | CONS | IRR | Bedding | bef |
| RHD4CZ5L016IRR1300 |  | Installing for HDPE Pipline 160 mm - (RD-L-16)-Z5-L016-IRR | 2d | 2026-08-08 A | 2026-08-09 A | RHD4CZ5L016IRR1200 | 100% | 2027-01-17 | 2027-01-18 |  |  | Unskilled Labor [16.23 h]; Plumber [8.17 h]; Equipment Opreator [8.17 h]; Boom Truck [8.17 h]; HDPE (160mm Diameter) - TSE - Depth: less than 1.5m [50.4 m] | 6,199.2 | 6,199.2 | L016 | Z5 | CONS | IRR | Installation | bef |
| RHD4CZ5L016IRR1400 |  | Primary Test for HDPE Pipline 160 mm - (RD-L-16)-Z5-L016-IRR | 2d | 2027-06-28 | 2027-06-30 | RHD4CZ5L016IRR1300 |  |  |  | -156.02d | 0d | Unskilled Labor [2.4 h]; Plumber [2.4 h]; Equipment Opreator [2.4 h]; Water Truck [2.4 h]; HDPE (160mm Diameter) - TSE - Depth: less than 1.5m [22.4 m] | 2,755.2 |  | L016 | Z5 | CONS | IRR | Primary Test | bef |
| RHD4CZ5L016IRR1500 |  | Backfilling and warning tape works for HDPE Pipline 160 mm - (RD-L-16)-Z5-L016-IRR | 2d | 2027-06-30 | 2027-07-03 | RHD4CZ5L016IRR1400 |  |  |  | -156.02d | 0d | Skilled labor [6.1 h]; Unskilled Labor [12.2 h]; Equipment Opreator [12.2 h]; Excavator-Poclain [6.1 h]; Dump Truck [6.1 h]; HDPE (160mm Diameter) - TSE - Depth: less than 1.5m [22.4 m] | 2,755.2 |  | L016 | Z5 | CONS | IRR | Backfilling | bef |
|  | 6115 | **RHD4-02-002-L016-(IRR)-Gate Valves (Direct Buried)** |  | 2027-06-28 | 2027-07-06 |  |  |  |  |  |  |  |  |  |  |  |  |  |  |  |
| RHD4CZ5L016IRR3100 |  | Installation for Direct Buried Gate Valves - (RD-L-16)-Z5-L016-IRR | 3d | 2027-06-28 | 2027-07-01 | RHD4CZ5L016IRR3103, RHD4CZ5L016IRR1300 SS, RHD4CZ5L016IRR1300 FF |  |  |  | -155.02d | 1d | Unskilled Labor [27.2 h]; Plumber [27.2 h]; Gate valves dia 100 mm - TSE [3.6 nr]; Gate valves dia 150 mm - TSE [0.9 nr] | 7,696.8 |  | L016 | Z5 | CONS | IRR | Installation | bef |
| RHD4CZ5L016IRR3200 |  | Stem and Service box for Direct Buried Gate Valves - (RD-L-16)-Z5-L016-IRR | 3d | 2027-07-03 | 2027-07-06 | RHD4CZ5L016SW5201, RHD4CZ5L016SW3501, RHD4CZ5L016IRR3100, RHD4CZ5L016IRR1500 |  |  |  | -156.02d | 1.98d | Unskilled Labor [27.2 h]; Plumber [27.2 h]; Gate valves dia 100 mm - TSE [0.4 nr]; Gate valves dia 150 mm - TSE [0.1 nr] | 855.2 |  | L016 | Z5 | CONS | IRR | Stem and Service box | bef |
|  | 6116 | **RHD4-02-002-L016-(IRR)-Butterfly Valve Chamber** |  | 2027-06-28 | 2027-07-07 |  |  |  |  |  |  |  |  |  |  |  |  |  |  |  |
| RHD4CZ5L016IRR2100 |  | Excavation and Bedding for Butterfly Valve Chamber for Irrigation Network - (RD-L-16)-Z5-L016-IRR | 2d | 2027-06-28 | 2027-06-30 | RHD4CZ5L016IRR3103 |  |  |  | -162.02d | 0d | Skilled labor [5.45 h]; Unskilled Labor [5.45 h]; Equipment Opreator [1.09 h]; Excavator-Poclain [0.54 h]; Dump Truck [0.54 h]; Valve chambers - TSE [0.25 nr] | 3,660.75 |  | L016 | Z5 | CONS | IRR | Excavation and Bedding | bef |
| RHD4CZ5L016IRR2200 |  | PC works for Butterfly Valve Chamber for Irrigation Network - (RD-L-16)-Z5-L016-IRR | 2d | 2027-06-30 | 2027-07-03 | RHD4CZ5L016IRR2100 |  |  |  | -162.02d | 0d | Skilled labor [5.45 h]; Unskilled Labor [10.89 h]; Equipment Opreator [0.54 h]; Concrete Pump [0.54 h]; Valve chambers - TSE [0.1 nr] | 1,464.3 |  | L016 | Z5 | CONS | IRR | PC Works | bef |
| RHD4CZ5L016IRR2300 |  | Installation for Butterfly Valve Chamber for Irrigation Network - (RD-L-16)-Z5-L016-IRR | 2d | 2027-07-03 | 2027-07-05 | RHD4CZ5L016IRR2200 |  |  |  | -162.02d | 0d | Skilled labor [5.45 h]; Unskilled Labor [10.89 h]; Equipment Opreator [1.09 h]; Boom Truck [1.09 h]; Valve chambers - TSE [0.55 nr] | 8,053.65 |  | L016 | Z5 | CONS | IRR | Installation | bef |
| RHD4CZ5L016IRR2400 |  | Backfilling works for Butterfly Valve Chamber for Irrigation Network - (RD-L-16)-Z5-L016-IRR | 2d | 2027-07-05 | 2027-07-07 | RHD4CZ5L016IRR2300 |  |  |  | -162.02d | 0d | Skilled labor [5.45 h]; Unskilled Labor [10.89 h]; Equipment Opreator [1.09 h]; Water Truck [0.54 h]; Dump Truck [0.54 h]; Valve chambers - TSE [0.1 nr] | 1,464.3 |  | L016 | Z5 | CONS | IRR | Backfilling Works | bef |

| ID | WBS | Activity | Duration | Start | Finish | Predecessors | Total float | Free float | Resources | Cost | RDH4-01-001-Road and Block Names-1 | RDH4-01-001-Zones-1 | RDH4-01-001-Phases-1 | RDH4-01-001-Networks-1 | RDH4-01-001-Work Method-1 | RDH4-01-001-MENEM |
| --- | --- | --- | --- | --- | --- | --- | --- | --- | --- | --- | --- | --- | --- | --- | --- | --- |
|  | 6117 | **RHD4-02-002-L016-(IRR)-Butterfly Valves** |  | 2027-07-05 | 2027-07-10 |  |  |  |  |  |  |  |  |  |  |  |
| RHD4CZ5L016IRR3101 |  | Installation for Butterfly Valves for Irrigation Network - (RD-L-16)-Z5-L016-IRR | 2d | 2027-07-05 | 2027-07-07 | RHD4CZ5L016IRR3103, RHD4CZ5L016IRR2300 | -162.02d | 0d | Unskilled Labor [5.45 h]; Plumber [5.45 h]; Butterfly valves dia 315 - TSE [0.9 nr] | 11,255.4 | L016 | Z5 | CONS | IRR | Installation | bef |
| RHD4CZ5L016IRR3201 |  | Stem and Service box for Butterfly Valves for Irrigation Network - (RD-L-16)-Z5-L016-IRR | 2d | 2027-07-07 | 2027-07-10 | RHD4CZ5L016IRR3101, RHD4CZ5L016IRR2400 | -162.02d | 24d | Unskilled Labor [5.45 h]; Plumber [5.45 h]; Butterfly valves dia 315 - TSE [0.1 nr] | 1,250.6 | L016 | Z5 | CONS | IRR | Stem and Service box | bef |
|  | 1769 | **RHD4-02-002-L016-(IRR)-Air Valve Chamber** |  | 2027-06-16 | 2027-06-28 |  |  |  |  |  |  |  |  |  |  |  |
| RHD4CZ5L016IRR2102 |  | Excavation and Bedding for Valve Chamber for Irrigation Network - (RD-L-16)-Z5-L016-IRR | 2d | 2027-06-16 | 2027-06-19 | RHD4CZ5L016IRR1502 | -162.02d | 0d | Skilled labor [5.45 h]; Unskilled Labor [5.45 h]; Equipment Opreator [1.09 h]; Excavator-Poclain [0.54 h]; Dump Truck [0.54 h]; Air Valve chambers - TSE [0.25 nr] | 1,193 | L016 | Z5 | CONS | IRR | Excavation and Bedding | bef |
| RHD4CZ5L016IRR2202 |  | PC works for Valve Chamber for Irrigation Network - (RD-L-16)-Z5-L016-IRR | 2d | 2027-06-19 | 2027-06-21 | RHD4CZ5L016IRR2102 | -162.02d | 0d | Skilled labor [5.45 h]; Unskilled Labor [10.89 h]; Equipment Opreator [0.54 h]; Concrete Pump [0.54 h]; Air Valve chambers - TSE [0.1 nr] | 477.2 | L016 | Z5 | CONS | IRR | PC Works | bef |
| RHD4CZ5L016IRR2302 |  | Installation for Valve Chamber for Irrigation Network - (RD-L-16)-Z5-L016-IRR | 4d | 2027-06-21 | 2027-06-26 | RHD4CZ5L016IRR2202 | -162.02d | 0d | Skilled labor [5.45 h]; Unskilled Labor [10.89 h]; Equipment Opreator [1.09 h]; Boom Truck [1.09 h]; Air Valve chambers - TSE [0.55 nr] | 2,624.6 | L016 | Z5 | CONS | IRR | Installation | bef |
| RHD4CZ5L016IRR2402 |  | Backfilling works for Valve Chamber for Irrigation Network - (RD-L-16)-Z5-L016-IRR | 2d | 2027-06-26 | 2027-06-28 | RHD4CZ5L016IRR2302 | -158.02d | 0d | Skilled labor [5.45 h]; Unskilled Labor [10.89 h]; Equipment Opreator [1.09 h]; Water Truck [0.54 h]; Dump Truck [0.54 h]; Air Valve chambers - TSE [0.1 nr] | 477.2 | L016 | Z5 | CONS | IRR | Backfilling Works | bef |
|  | 3842 | **RHD4-02-002-L016-(IRR)-HDPE Pipes - 400 mm diameter** |  |  |  |  |  |  |  |  |  |  |  |  |  |  |
|  | 3841 | **RHD4-02-002-L016-(IRR)-HDPE Pipes - 315 mm diameter** |  | 2027-05-31 | 2027-06-12 |  |  |  |  |  |  |  |  |  |  |  |
| RHD4CZ5L016IRR1104 |  | Excavation works for HDPE Pipline 315 mm - (RD-L-16)-Z5-L016-IRR | 2d | 2027-05-31 | 2027-06-02 | RHD4CZ5L016PT1102, RHD4CZ5L016PT1101, RHD4CZ5L016PT1100, RHD4ENSDZ5APPIRR140, RHD4ENMSRR2000 | -162.02d | 0d | Skilled labor [14.59 h]; Unskilled Labor [14.59 h]; Equipment Opreator [17.53 h]; Excavator-Poclain [14.59 h]; Dump Truck [2.94 h]; HDPE (315mm Diameter) - TSE - Depth: less than 1.5m [2.1 m]; HDPE (315mm Diameter) - TSE - Depth: more than 1.51m [26.96 m] | 9,377.3 | L016 | Z5 | CONS | IRR | Excavation | bef |
| RHD4CZ5L016IRR1204 |  | Bedding works for HDPE Pipline 315 mm - (RD-L-16)-Z5-L016-IRR | 2d | 2027-06-02 | 2027-06-05 | RHD4CZ5L016IRR1104 | -162.02d | 0d | Skilled labor [14.16 h]; Unskilled Labor [28.42 h]; Equipment Opreator [28.42 h]; Excavator-Poclain [14.16 h]; Dump Truck [14.16 h]; HDPE (315mm Diameter) - TSE - Depth: less than 1.5m [1.05 m]; HDPE (315mm Diameter) - TSE - Depth: more than 1.51m [8.99 m] | 3,229.84 | L016 | Z5 | CONS | IRR | Bedding | bef |
| RHD4CZ5L016IRR1304 |  | Installing for HDPE Pipline 315 mm - (RD-L-16)-Z5-L016-IRR | 2d | 2027-06-05 | 2027-06-07 | RHD4CZ5L016IRR1204, RHD4PRSHLDOSIRR1000, RHD4PRSHLSTAGIRR1000 | -162.02d | 0d | Unskilled Labor [29.19 h]; Plumber [14.59 h]; Equipment Opreator [14.59 h]; Boom Truck [14.59 h]; HDPE (315mm Diameter) - TSE - Depth: less than 1.5m [9.46 m]; HDPE (315mm Diameter) - TSE - Depth: more than 1.51m [71.9 m] | 26,140.31 | L016 | Z5 | CONS | IRR | Installation | bef |
| RHD4CZ5L016IRR1404 |  | Primary Test for HDPE Pipline 315 mm - (RD-L-16)-Z5-L016-IRR | 2d | 2027-06-07 | 2027-06-09 | RHD4CZ5L016IRR1304 | -162.02d | 0d | Unskilled Labor [6.97 h]; Plumber [6.97 h]; Equipment Opreator [6.97 h]; Water Truck [6.97 h]; HDPE (315mm Diameter) - TSE - Depth: less than 1.5m [4.21 m]; HDPE (315mm Diameter) - TSE - Depth: more than 1.51m [35.95 m] | 12,916.11 | L016 | Z5 | CONS | IRR | Primary Test | bef |
| RHD4CZ5L016IRR1504 |  | Backfilling and warning tape works for HDPE Pipline 315 mm - (RD-L-16)-Z5-L016-IRR | 2d | 2027-06-09 | 2027-06-12 | RHD4CZ5L016IRR1404 | -162.02d | 25d | Skilled labor [14.16 h]; Unskilled Labor [28.42 h]; Equipment Opreator [28.42 h]; Excavator-Poclain [14.16 h]; Dump Truck [14.16 h]; HDPE (315mm Diameter) - TSE - Depth: less than 1.5m [4.21 m]; HDPE (315mm Diameter) - TSE - Depth: more than 1.51m [35.95 m] | 12,916.11 | L016 | Z5 | CONS | IRR | Backfilling | bef |
|  | 3852 | **RHD4-02-002-L016-(IRR)-Concrete Encasement** |  |  |  |  |  |  |  |  |  |  |  |  |  |  |
|  | 3870 | **RHD4-02-002-Z5-L016-Medium Voltage Network - MV** |  | 2027-06-20 | 2027-07-29 |  |  |  |  |  |  |  |  |  |  |  |
|  | 3871 | **RHD4-02-002-L016-(MV)-Medium Voltage cable trench** |  | 2027-06-20 | 2027-07-20 |  |  |  |  |  |  |  |  |  |  |  |
| RHD4CZ5L016MV1100 |  | Excavation for Medium Voltage Trench - (RD-L-16)-Z5-L016-MV | 13d | 2027-06-20 | 2027-07-05 | RHD4ENSDZ5APPMV150, RHD4CZ5L016RD3100, RHD4CZ5L08LV3100 | -153.02d | 0d | Skilled labor [137.87 h]; Unskilled Labor [275.74 h]; Equipment Opreator [413.6 h]; Excavator-Poclain [137.87 h]; Dump Truck [275.74 h]; Excavation for Trench size 40cm wide and 80cm deep ( for 1 cables) [367.12 m3]; Excavation for Trench size 60cm wide and 80cm deep ( for 2 cables) [7.53 m3]; Excavation for Trench size 120cm wide and 80cm deep (for 4 cables) [511.63 m3] | 8,862.91 | L016 | Z5 | CONS | MV | Excavation | AFT |
| RHD4CZ5L016MV1200 |  | Trench Backfilling for Medium Voltage Network - (RD-L-16)-Z5-L016-MV | 13d | 2027-07-05 | 2027-07-20 | RHD4CZ5L016MV1100 | -116.02d | 0d | Skilled labor [137.87 h]; Unskilled Labor [137.87 h]; Equipment Opreator [275.74 h]; Dump Truck [275.74 h]; Excavation for Trench size 40cm wide and 80cm deep ( for 1 cables) [157.34 m3]; Excavation for Trench size 60cm wide and 80cm deep ( for 2 cables) [3.23 m3]; Excavation for Trench size 120cm wide and 80cm deep (for 4 cables) [219.27 m3] | 3,798.39 | L016 | Z5 | CONS | MV | Backfilling | AFT |
|  | 3873 | **RHD4-02-002-L016-(MV)-Medium Voltage cables 3Cx 500 mm²** |  | 2027-07-05 | 2027-07-29 |  |  |  |  |  |  |  |  |  |  |  |
| RHD4CZ5L016MV3100 |  | Installation of Medium Voltage Cables 3Cx 500 mm² - (RD-L-16)-Z5-L016-MV | 8d | 2027-07-05 | 2027-07-14 | RHD4CZ5L016MV1100, RHD4ENMSMV2000 | -153.02d | 0d | Skilled labor [76.67 h]; Unskilled Labor [306.45 h]; Electrician [153.23 h]; Equipment Opreator [229.9 h]; Boom Truck [76.67 h]; Cable Laying Machine [153.23 h]; Cable 13.8 kV 3Cx 500 mm² Al/XLPE,/LLDPE / Unarmored [3165.85 m] | 503,369.42 | L016 | Z5 | CONS | MV | Installation | AFT |
| RHD4CZ5L016MV3200 |  | Joints Installation of Medium Voltage Cables 3Cx 500 mm² - (RD-L-16)-Z5-L016-MV | 2d | 2027-07-14 | 2027-07-17 | RHD4CZ5L016MV3100, RHD4PRSHLDOSMV1300, RHD4PRSHLSTAGMV1300 | -113.02d | 3d | Skilled labor [16.34 h]; Unskilled Labor [65.34 h]; Electrician [32.67 h]; Equipment Opreator [16.34 h]; Boom Truck [16.34 h]; Straight joints cables for 13.8 kv 3Cx 500 mm², Al /XLPE/LLDPE [3 Unit] | 9,744 | L016 | Z5 | CONS | MV | Joints Installation | AFT |
| RHD4CZ5L016MV3300 |  | Testing of Medium Voltage Cables 3Cx 500 mm² - (RD-L-16)-Z5-L016-MV | 8d | 2027-07-20 | 2027-07-29 | RHD4CZ5L016MV3200, RHD4CZ5L016MV1200 | -116.02d | 0d | Skilled labor [76.67 h]; Unskilled Labor [306.45 h]; Electrician [153.23 h]; Cable 13.8 kV 3Cx 500 mm² Al/XLPE,/LLDPE / Unarmored [351.76 m] | 55,929.94 | L016 | Z5 | CONS | MV | Testing | AFT |

| ID | WBS | Activity | Duration | Start | Finish | Predecessors | Total float | Free float | Resources | Cost | RDH4-01-001-Road and Block Names-1 | RDH4-01-001-Zones-1 | RDH4-01-001-Phases-1 | RDH4-01-001-Networks-1 | RDH4-01-001-Work Method-1 | RDH4-01-001-MENEM |
| --- | --- | --- | --- | --- | --- | --- | --- | --- | --- | --- | --- | --- | --- | --- | --- | --- |
|  | 5388 | **RHD4-02-002-L07-(MV)-Normally open Point (Outdoor Type)** |  |  |  |  |  |  |  |  |  |  |  |  |  |  |
|  | 1982 | **RHD4-02-002-L07-(MV)-Medium Voltage cables 3Cx 50 mm²** |  | 2027-07-14 | 2027-07-17 |  |  |  |  |  |  |  |  |  |  |  |
| RHD4CZ5L016MV3401 |  | Termination of Medium Voltage Cables 3Cx 50 mm² - (RD-L-16)-Z5-L016-MV | 2d | 2027-07-14 | 2027-07-17 | RHD4CZ5L016MV3100 | -153.02d | 0d | Unskilled Labor [11.65 h]; Electrician [5.77 h]; Cable Termination for 13.8 kv 3Cx 500 mm², Al /XLPE/LLDPE [0.8 Unit] | 2,108 | L016 | Z5 | CONS | MV | Termination | AFT |
|  | 3877 | **RHD4-02-002-Z5-L016-Low Voltage Network - LV** |  | 2027-07-29 | 2027-08-08 |  |  |  |  |  |  |  |  |  |  |  |
|  | 3878 | **RHD4-02-002-L016-(LV)-Low Voltage duct banks** |  |  |  |  |  |  |  |  |  |  |  |  |  |  |
|  | 3880 | **RHD4-02-002-L016-(LV)-Low Voltage cables** |  | 2027-07-29 | 2027-08-08 |  |  |  |  |  |  |  |  |  |  |  |
| RHD4CZ5L016LV3100 |  | Excavation for Low Voltage Cables for Low Voltage Network - (RD-L-16)-Z5-L016-LV | 2d | 2027-07-29 | 2027-08-01 | RHD4ENSDZ5APPLV160, RHD4CZ5L016MV3300 | -116.02d | 0d | Skilled labor [3.81 h]; Unskilled Labor [7.51 h]; Equipment Opreator [7.51 h]; Excavator-Poclain [3.81 h]; Boom Truck [3.81 h]; Cable, Copper 3x10mm2/ CU/XLPE/SWA/PVC [17.31 m] | 675.11 | L016 | Z5 | CONS | LV | Excavation | AFT |
| RHD4CZ5L016LV3200 |  | Cable Laying of Low Voltage Cables for Low Voltage Network - (RD-L-16)-Z5-L016-LV | 2d | 2027-08-01 | 2027-08-03 | RHD4CZ5L016LV3100, RHD4PRSHLDOSLV1100, RHD4ENMSLV2000, RHD4ENMSLV2010, RHD4PRSHLSTAGLV1100 | -116.02d | 0d | Skilled labor [3.16 h]; Unskilled Labor [12.52 h]; Electrician [6.32 h]; Equipment Opreator [9.47 h]; Boom Truck [3.16 h]; Cable Laying Machine [6.32 h]; Cable, Copper 3x10mm2/ CU/XLPE/SWA/PVC [51.93 m] | 2,025.34 | L016 | Z5 | CONS | LV | Cable Laying | AFT |
| RHD4CZ5L016LV3300 |  | Warning tape and Backfill for Low Voltage Cables for Low Voltage Network - (RD-L-16)-Z5-L016-LV | 2d | 2027-08-03 | 2027-08-05 | RHD4CZ5L016LV3200 | -116.02d | 0d | Skilled labor [3.16 h]; Unskilled Labor [12.52 h]; Electrician [6.32 h]; Equipment Opreator [3.16 h]; Boom Truck [3.16 h]; Cable, Copper 3x10mm2/ CU/XLPE/SWA/PVC [12.98 m] | 506.34 | L016 | Z5 | CONS | LV | Warning tape and Backfill | AFT |
| RHD4CZ5L016LV3400 |  | Testing of Low Voltage Cables for Low Voltage Network - (RD-L-16)-Z5-L016-LV | 2d | 2027-08-05 | 2027-08-08 | RHD4CZ5L016LV3300 | -116.02d | 0d | Skilled labor [1.85 h]; Unskilled Labor [7.51 h]; Electrician [3.81 h]; Equipment Opreator [1.85 h]; Boom Truck [1.85 h]; Cable, Copper 3x10mm2/ CU/XLPE/SWA/PVC [4.33 m] | 168.78 | L016 | Z5 | CONS | LV | Testing | AFT |
|  | 3883 | **RHD4-02-002-Z5-L016-Street Lighting Network - SL** |  | 2027-06-16 | 2027-10-02 |  |  |  |  |  |  |  |  |  |  |  |
|  | 3884 | **RHD4-02-002-L016-(SL)-Street Lighting duct banks** |  | 2027-06-16 | 2027-06-26 |  |  |  |  |  |  |  |  |  |  |  |
| RHD4CZ5L016SL2100 |  | Excavation of Duct Banks for Street Lighting Network - (RD-L-16)-Z5-L016-SL | 2d | 2027-06-16 | 2027-06-19 | RHD4ENSDZ5APPSL170, RHD4CZ5L016IRR1502 | -161.02d | 0d | Skilled labor [12.63 h]; Unskilled Labor [12.63 h]; Equipment Opreator [25.16 h]; Excavator-Poclain [12.63 h]; Dump Truck [12.63 h]; Road Crossing Duct for Street Lighting cables UPVC (2x?110mm) [1.73 m] | 350.14 | L016 | Z5 | CONS | SL | Excavation | bef |
| RHD4CZ5L016SL2200 |  | Installation of Duct Banks for Street Lighting Network - (RD-L-16)-Z5-L016-SL | 2d | 2027-06-19 | 2027-06-21 | RHD4CZ5L016SL2100, RHD4PRSHLDOSSL1000, RHD4PRSHLSTAGSL1000 | -161.02d | 0d | Carpenter [1.85 h]; Skilled labor [18.84 h]; Unskilled Labor [18.84 h]; Steel Fixer [1.85 h]; Road Crossing Duct for Street Lighting cables UPVC (2x?110mm) [1.73 m] | 350.14 | L016 | Z5 | CONS | SL | Installing | bef |
| RHD4CZ5L016SL2300 |  | Pouring of Duct Banks for Street Lighting Network - (RD-L-16)-Z5-L016-SL | 2d | 2027-06-21 | 2027-06-23 | RHD4CZ5L016SL2200 | -161.02d | 0d | Skilled labor [12.63 h]; Unskilled Labor [12.63 h]; Equipment Opreator [5.01 h]; Concrete Mixer Truck [2.5 h]; Concrete Pump [2.5 h]; Road Crossing Duct for Street Lighting cables UPVC (2x?110mm) [11.27 m] | 2,275.94 | L016 | Z5 | CONS | SL | Pouring | bef |
| RHD4CZ5L016SL2400 |  | Backfilling of Duct Banks for Street Lighting Network - (RD-L-16)-Z5-L016-SL | 2d | 2027-06-23 | 2027-06-26 | RHD4CZ5L016SL2300 | -161.02d | 34.98d | Skilled labor [9.47 h]; Unskilled Labor [9.47 h]; Equipment Opreator [3.81 h]; Excavator-Poclain [3.81 h]; Road Crossing Duct for Street Lighting cables UPVC (2x?110mm) [2.6 m] | 525.2 | L016 | Z5 | CONS | SL | Backfilling | bef |
|  | 3885 | **RHD4-02-002-L016-(SL)-Street Lighting Drawpit** |  | 2027-08-08 | 2027-08-12 |  |  |  |  |  |  |  |  |  |  |  |
| RHD4CZ5L016SL5100 |  | Excavation of Drawpit size 600x600x900mm for Street Lighting Network - (RD-L-16)-Z5-L016-SL | 2d | 2027-08-08 | 2027-08-10 | RHD4CZ5L016SL2300, RHD4ENSDZ5APPSL170, RHD4CZ5L016LV3400 | -115.02d | 0d | Skilled labor [1.85 h]; Unskilled Labor [1.85 h]; Equipment Opreator [1.42 h]; Excavator-Poclain [0.8 h]; Dump Truck [0.8 h]; Drawpit with medium duty steel cover, size600x600x900mm, [0.3 Unit] | 735.3 | L016 | Z5 | CONS | SL | Excavation | AFT |
| RHD4CZ5L016SL5200 |  | Installation of Drawpit size 600x600x900mm for Street Lighting Network - (RD-L-16)-Z5-L016-SL | 2d | 2027-08-10 | 2027-08-12 | RHD4CZ5L016SL5100, RHD4PRSHLDOSSL1400, RHD4PRSHLSTAGSL1400 | -115.02d | 0d | Skilled labor [1.85 h]; Unskilled Labor [1.85 h]; Equipment Opreator [0.8 h]; Boom Truck [0.8 h]; Drawpit with medium duty steel cover, size600x600x900mm, [1.7 Unit] | 4,166.7 | L016 | Z5 | CONS | SL | Installation | AFT |
|  | 3886 | **RHD4-02-002-L016-(SL)-Street Lighting cables** |  | 2027-08-12 | 2027-09-04 |  |  |  |  |  |  |  |  |  |  |  |
| RHD4CZ5L016SL3100 |  | Excavation for Street Lighting Cables for Street Lighting Network - (RD-L-16)-Z5-L016-SL | 6d | 2027-08-12 | 2027-08-19 | RHD4ENSDZ5APPSL170, RHD4CZ5L016SL5200 | -115.02d | 0d | Skilled labor [55.32 h]; Unskilled Labor [110.75 h]; Equipment Opreator [110.75 h]; Excavator-Poclain [55.32 h]; Boom Truck [55.32 h]; Cable, Copper 4x10mm2/ CU/XLPE/SWA/PVC + 1x10mm2 CU/PVC [254.16 m] | 12,453.7 | L016 | Z5 | CONS | SL | Excavation | AFT |
| RHD4CZ5L016SL3200 |  | Cable Laying of Street Lighting Cables for Street Lighting Network - (RD-L-16)-Z5-L016-SL | 5d | 2027-08-19 | 2027-08-25 | RHD4CZ5L016SL3100, RHD4PRSHLDOSSL1100, RHD4ENMSSL2000, RHD4ENMSSL2010, RHD4PRSHLSTAGSL1100 | -115.02d | 0d | Skilled labor [46.18 h]; Unskilled Labor [184.48 h]; Electrician [92.24 h]; Equipment Opreator [138.4 h]; Boom Truck [46.18 h]; Cable Laying Machine [92.24 h]; Cable, Copper 4x10mm2/ CU/XLPE/SWA/PVC + 1x10mm2 CU/PVC [762.47 m] | 37,361.11 | L016 | Z5 | CONS | SL | Cable Laying | AFT |
| RHD4CZ5L016SL3300 |  | Warning tape and Backfill for Street Lighting Cables for Street Lighting Network - (RD-L-16)-Z5-L016-SL | 5d | 2027-08-25 | 2027-08-31 | RHD4CZ5L016SL3200 | -115.02d | 0d | Skilled labor [46.18 h]; Unskilled Labor [184.48 h]; Electrician [92.24 h]; Equipment Opreator [46.18 h]; Boom Truck [46.18 h]; Cable, Copper 4x10mm2/ CU/XLPE/SWA/PVC + 1x10mm2 CU/PVC [190.62 m] | 9,340.28 | L016 | Z5 | CONS | SL | Warning tape and Backfill | AFT |
| RHD4CZ5L016SL3400 |  | Testing of Street Lighting Cables for Street Lighting Network - (RD-L-16)-Z5-L016-SL | 3d | 2027-08-31 | 2027-09-04 | RHD4CZ5L016SL3300 | -115.02d | 0d | Skilled labor [27.66 h]; Unskilled Labor [110.75 h]; Electrician [55.32 h]; Equipment Opreator [27.66 h]; Boom Truck [27.66 h]; Cable, Copper 4x10mm2/ CU/XLPE/SWA/PVC + 1x10mm2 CU/PVC [63.54 m] | 3,113.43 | L016 | Z5 | CONS | SL | Testing | AFT |

| ID | WBS | Activity | Duration | Start | Finish | Predecessors | Total float | Free float | Resources | Cost | RDH4-01-001-Road and Block Names-1 | RDH4-01-001-Zones-1 | RDH4-01-001-Phases-1 | RDH4-01-001-Networks-1 | RDH4-01-001-Work Method-1 | RDH4-01-001-MENEM |
| --- | --- | --- | --- | --- | --- | --- | --- | --- | --- | --- | --- | --- | --- | --- | --- | --- |
|  | 3887 | **RHD4-02-002-L016-(SL)-Street Lighting Poles** |  | 2027-09-04 | 2027-10-02 |  |  |  |  |  |  |  |  |  |  |  |
| RHD4CZ5L016SL1100 |  | Excavation for RC Base for Lighting Poles for Street Lighting Network - (RD-L-16)-Z5-L016-SL | 4d | 2027-09-04 | 2027-09-08 | RHD4CZ5L016SL2400, RHD4ENSDZ5APPSL170, RHD4CZ5L016SL3400 | -115.02d | 0d | Skilled labor [34.85 h]; Unskilled Labor [34.85 h]; Equipment Opreator [69.7 h]; Excavator-Poclain [34.85 h]; Dump Truck [34.85 h]; Lighting poles single arms, height of ( 10 ) meters [4.8 Unit] | 16,353.6 | L016 | Z5 | CONS | SL | Excavation | AFT |
| RHD4CZ5L016SL1200 |  | Installation for RC Base for Lighting Poles for Street Lighting Network - (RD-L-16)-Z5-L016-SL | 4d | 2027-09-08 | 2027-09-13 | RHD4CZ5L016SL1100 | -115.02d | 0d | Skilled labor [34.85 h]; Unskilled Labor [34.85 h]; Equipment Opreator [69.7 h]; Excavator-Poclain [34.85 h]; Dump Truck [34.85 h]; Lighting poles single arms, height of ( 10 ) meters [12 Unit] | 40,884 | L016 | Z5 | CONS | SL | RC Base | AFT |
| RHD4CZ5L016SL1300 |  | Backfill for RC Base for Lighting Poles for Street Lighting Network - (RD-L-16)-Z5-L016-SL | 4d | 2027-09-13 | 2027-09-18 | RHD4CZ5L016SL1200 | -115.02d | 0d | Skilled labor [34.85 h]; Unskilled Labor [34.85 h]; Equipment Opreator [69.7 h]; Excavator-Poclain [34.85 h]; Dump Truck [34.85 h]; Lighting poles single arms, height of ( 10 ) meters [2.4 Unit] | 8,176.8 | L016 | Z5 | CONS | SL | Backfill | AFT |
| RHD4CZ5L016SL1400 |  | Installation for Lighting Poles for Street Lighting Network - (RD-L-16)-Z5-L016-SL | 5d | 2027-09-18 | 2027-09-25 | RHD4PRSHLDOSSL1200, RHD4ENMSSL2000, RHD4ENMSSL2010, RHD4PRSHLSTAGSL1200, RHD4CZ5L016SL1300 | -115.02d | 0d | Skilled labor [52.27 h]; Unskilled Labor [52.27 h]; Electrician [52.27 h]; Equipment Opreator [52.27 h]; Boom Truck [52.27 h]; Lighting poles single arms, height of ( 10 ) meters [28.8 Unit] | 98,121.6 | L016 | Z5 | CONS | SL | Poles Installation | AFT |
| RHD4CZ5L016SL1500 |  | Luminaire Installation for Lighting Poles for Street Lighting Network - (RD-L-16)-Z5-L016-SL | 4d | 2027-09-27 | 2027-10-02 | RHD4CZ5L016SL1400, RHD4CZ5L016SL6100, RHD4PRSHLDOSSL1300, RHD4PRSHLSTAGSL1300 | -115.02d | 0d | Unskilled Labor [69.7 h]; Electrician [34.85 h]; Equipment Opreator [6.97 h]; Boom Truck [13.94 h]; Street Lighting( LED) Luminaire of Output ?10898 lumen [48 Unit] | 28,224 | L016 | Z5 | CONS | SL | Luminaire Installation | AFT |
|  | 3889 | **RHD4-02-002-L016-(SL)-Street Lighting Earthing System** |  | 2027-09-25 | 2027-09-27 |  |  |  |  |  |  |  |  |  |  |  |
| RHD4CZ5L016SL6100 |  | Installation of Earthing for Lighting Poles and Fedder Pillers for Street Lighting Network - (RD-L-16)-Z5-L016-SL | 2d | 2027-09-25 | 2027-09-27 | RHD4CZ5L016SL1400, RHD4ENMSER2000, RHD4ENMSER2010 | -115.02d | 0d | Skilled labor [2.18 h]; Unskilled Labor [2.18 h]; Equipment Opreator [4.36 h]; Excavator-Poclain [2.18 h]; Dump Truck [2.18 h]; Including lighting poles circuits - ER [3 Unit] | 1,839 | L016 | Z5 | CONS | SL | Installation | AFT |
|  | 3895 | **RHD4-02-002-Z5-L016-Telecommunications Network - TC** |  | 2027-01-26 | 2027-11-07 |  |  |  |  |  |  |  |  |  |  |  |
|  | 3896 | **RHD4-02-002-L016-(TC)-Telecommunications Ducts** |  | 2027-10-02 | 2027-11-07 |  |  |  |  |  |  |  |  |  |  |  |
| RHD4CZ5L016TC2100 |  | Excavation of HDPE Ducts for Telecom Network - (RD-L-16)-Z5-L016-TC | 9d | 2027-10-02 | 2027-10-12 | RHD4ENSDZ5APPTC190, RHD4CZ5L016SL1500 | -115.02d | 0d | Skilled labor [91.04 h]; Unskilled Labor [91.04 h]; Equipment Opreator [182.2 h]; Excavator-Poclain [91.04 h]; Dump Truck [91.04 h]; (6*50mm) HDPE ducts -TC [157.92 m]; (6*50mm+2*32mm) HDPE ducts -TC [68.1 m]; (6*50mm+4*32mm) HDPE ducts -TC [15.74 m]; (2*32mm) HDPE ducts -TC [9.12 m] | 23,503 | L016 | Z5 | CONS | TC | Excavation | AFT |
| RHD4CZ5L016TC2200 |  | Installation of HDPE Ducts for Telecom Network - (RD-L-16)-Z5-L016-TC | 13d | 2027-10-12 | 2027-10-27 | RHD4CZ5L016TC2100, RHD4PRSHLDOSTC1000, RHD4PRSHLSTAGTC1000 | -115.02d | 0d | Carpenter [13.6 h]; Skilled labor [136.56 h]; Unskilled Labor [136.56 h]; Steel Fixer [13.6 h]; (6*50mm) HDPE ducts -TC [513.24 m]; (6*50mm+2*32mm) HDPE ducts -TC [221.32 m]; (6*50mm+4*32mm) HDPE ducts -TC [51.16 m]; (2*32mm) HDPE ducts -TC [29.64 m] | 76,384.75 | L016 | Z5 | CONS | TC | Installing | AFT |
| RHD4CZ5L016TC2400 |  | Backfilling of HDPE Ducts for Telecom Network - (RD-L-16)-Z5-L016-TC | 9d | 2027-10-27 | 2027-11-07 | RHD4CZ5L016TC2200, RHD4CZ5L016TC5200 | -115.02d | 0d | Skilled labor [91.04 h]; Unskilled Labor [91.04 h]; Equipment Opreator [36.48 h]; Excavator-Poclain [36.48 h]; (6*50mm) HDPE ducts -TC [118.44 m]; (6*50mm+2*32mm) HDPE ducts -TC [51.08 m]; (6*50mm+4*32mm) HDPE ducts -TC [11.8 m]; (2*32mm) HDPE ducts -TC [6.84 m] | 17,627.25 | L016 | Z5 | CONS | TC | Backfilling | AFT |
|  | 3897 | **RHD4-02-002-L016-(TC)-Telecommunications Manholes** |  | 2027-10-12 | 2027-10-21 |  |  |  |  |  |  |  |  |  |  |  |
| RHD4CZ5L016TC5100 |  | Excavation for Manholes for Telecom Network - (RD-L-16)-Z5-L016-TC | 4d | 2027-10-12 | 2027-10-17 | RHD4CZ5L016TC2100, RHD4ENSDZ5APPTC190 | -110.02d | 0d | Skilled labor [13.6 h]; Unskilled Labor [13.6 h]; Equipment Opreator [10.89 h]; Excavator-Poclain [5.45 h]; Dump Truck [5.45 h]; Manhole Type 1 - TC [0.9 nr]; Manhole Type 2 - TC [0.3 nr] | 8,089.2 | L016 | Z5 | CONS | TC | Excavation | AFT |
| RHD4CZ5L016TC5200 |  | Installation of Manholes for Telecom Network - (RD-L-16)-Z5-L016-TC | 4d | 2027-10-17 | 2027-10-21 | RHD4CZ5L016TC5100, RHD4CZ5L016TC2200 SS, RHD4PRSHLDOSTC1200, RHD4PRSHLSTAGTC1200 | -110.02d | 5d | Skilled labor [13.6 h]; Unskilled Labor [13.6 h]; Equipment Opreator [5.45 h]; Boom Truck [5.45 h]; Manhole Type 1 - TC [5.1 nr]; Manhole Type 2 - TC [1.7 nr] | 45,838.8 | L016 | Z5 | CONS | TC | Installation | AFT |
|  | 3898 | **RHD4-02-002-L016-(TC)-Telecomminications Road Crossings** |  | 2027-01-26 | 2027-02-03 |  |  |  |  |  |  |  |  |  |  |  |
| RHD4CZ5L016TC3100 |  | Excavation for Road Crossings for Telecom Network - (RD-L-16)-Z5-L016-TC | 2d | 2027-01-26 | 2027-01-27 | RHD4ENSDZ5APPTC190, RHD4CZ5L016ST3102 | -169d | 0d | Skilled labor [9.04 h]; Unskilled Labor [9.04 h]; Equipment Opreator [18.08 h]; Excavator-Poclain [9.04 h]; Dump Truck [9.04 h]; Road crossing ducts, (6*50mm) HDPE -TC [1.66 m] | 63.08 | L016 | Z5 | CONS | TC | Excavation | bef |
| RHD4CZ5L016TC3200 |  | Installation of Road Crossings for Telecom Network - (RD-L-16)-Z5-L016-TC | 2d | 2027-01-28 | 2027-01-30 | RHD4CZ5L016TC3100, RHD4PRSHLDOSTC1100, RHD4PRSHLSTAGTC1100 | -167d | 0d | Carpenter [1.2 h]; Skilled labor [12.09 h]; Unskilled Labor [12.09 h]; Steel Fixer [1.2 h]; Road crossing ducts, (6*50mm) HDPE -TC [1.66 m] | 63.08 | L016 | Z5 | CONS | TC | Installing | bef |
| RHD4CZ5L016TC3300 |  | Pouring of Road Crossings for Telecom Network - (RD-L-16)-Z5-L016-TC | 2d | 2027-01-31 | 2027-02-01 | RHD4CZ5L016TC3200 | -167d | 0d | Skilled labor [12.09 h]; Unskilled Labor [12.09 h]; Equipment Opreator [4.8 h]; Concrete Mixer Truck [2.4 h]; Concrete Pump [2.4 h]; Road crossing ducts, (6*50mm) HDPE -TC [10.79 m] | 410.02 | L016 | Z5 | CONS | TC | Pouring | bef |
| RHD4CZ5L016TC3400 |  | Backfilling of Road Crossings for Telecom Network - (RD-L-16)-Z5-L016-TC | 2d | 2027-02-02 | 2027-02-03 | RHD4CZ5L016TC3300 | -167d | 14d | Skilled labor [9.04 h]; Unskilled Labor [9.04 h]; Equipment Opreator [3.59 h]; Excavator-Poclain [3.59 h]; Road crossing ducts, (6*50mm) HDPE -TC [2.49 m] | 94.62 | L016 | Z5 | CONS | TC | Backfilling | bef |
|  | 3899 | **RHD4-02-002-Z5-L016-Information and Communication Technologies - ICT** |  | 2027-01-28 | 2027-12-23 |  |  |  |  |  |  |  |  |  |  |  |
|  | 3900 | **RHD4-02-002-L016-(ICT)-Information and Communication Technologies Ducts** |  | 2027-11-07 | 2027-12-14 |  |  |  |  |  |  |  |  |  |  |  |
| RHD4CZ5L016ICT2100 |  | Excavation of HDPE Ducts for ICT Network - (RD-L-16)-Z5-L016-ICT | 9d | 2027-11-07 | 2027-11-17 | RHD4CZ5L016ICT3400, RHD4ENSDZ5APPICT200, RHD4CZ5L016TC2400 | -115.02d | 0d | Skilled labor [97.8 h]; Unskilled Labor [97.8 h]; Equipment Opreator [195.7 h]; Excavator-Poclain [97.8 h]; Dump Truck [97.8 h]; (2*50mm) HDPE ducts -ICT [168.07 m]; (2*50mm+2*32mm) HDPE ducts -ICT [78.4 m]; (2*50mm+4*32mm) HDPE ducts -ICT [11.06 m]; (2*32mm) HDPE ducts -ICT [11.96 m] | 13,389.26 | L016 | Z5 | CONS | ICT | Excavation | AFT |
| RHD4CZ5L016ICT2200 |  | Installation of HDPE Ducts for ICT Network - (RD-L-16)-Z5-L016-ICT | 14d | 2027-11-17 | 2027-12-04 | RHD4CZ5L016ICT2100, RHD4PRSHLDOSICT1000, RHD4PRSHLSTAGICT1000 | -115.02d | 0d | Carpenter [14.7 h]; Skilled labor [146.69 h]; Unskilled Labor [146.69 h]; Steel Fixer [14.7 h]; (2*50mm) HDPE ducts -ICT [546.23 m]; (2*50mm+2*32mm) HDPE ducts -ICT [254.8 m]; (2*50mm+4*32mm) HDPE ducts -ICT [35.95 m]; (2*32mm) HDPE ducts -ICT [38.87 m] | 43,515.09 | L016 | Z5 | CONS | ICT | Installing | AFT |
| RHD4CZ5L016ICT2400 |  | Backfilling of HDPE Ducts for ICT Network - (RD-L-16)-Z5-L016-ICT | 9d | 2027-12-04 | 2027-12-14 | RHD4CZ5L016ICT2200 | -115.02d | 0d | Skilled labor [97.8 h]; Unskilled Labor [97.8 h]; Equipment Opreator [39.1 h]; Excavator-Poclain [39.1 h]; (2*50mm) HDPE ducts -ICT [126.05 m]; (2*50mm+2*32mm) HDPE ducts -ICT [58.8 m]; (2*50mm+4*32mm) HDPE ducts -ICT [8.3 m]; (2*32mm) HDPE ducts -ICT [8.97 m] | 10,042.38 | L016 | Z5 | CONS | ICT | Backfilling | AFT |

| ID | WBS | Activity | Duration | Start | Finish | Predecessors | Total float | Free float | Resources | Cost | RDH4-01-001-Road and Block Names-1 | RDH4-01-001-Zones-1 | RDH4-01-001-Phases-1 | RDH4-01-001-Networks-1 | RDH4-01-001-Work Method-1 | RDH4-01-001-MENEM |
| --- | --- | --- | --- | --- | --- | --- | --- | --- | --- | --- | --- | --- | --- | --- | --- | --- |
|  | 3901 | **RHD4-02-002-L016-(ICT)-Information and Communication Technologies Manholes** |  | 2027-12-14 | 2027-12-23 |  |  |  |  |  |  |  |  |  |  |  |
| RHD4CZ5L016ICT5100 |  | Excavation for Manholes for ICT Network - (RD-L-16)-Z5-L016-ICT | 4d | 2027-12-14 | 2027-12-19 | RHD4ENSDZ5APPICT200, RHD4CZ5L016ICT2400 | -115.02d | 0d | Skilled labor [13.6 h]; Unskilled Labor [13.6 h]; Equipment Opreator [10.89 h]; Excavator-Poclain [5.45 h]; Dump Truck [5.45 h]; Manhole Type 1 - ICT [0.9 nr]; Manhole Type 2 - ICT [0.3 nr] | 6,471.6 | L016 | Z5 | CONS | ICT | Excavation | AFT |
| RHD4CZ5L016ICT5200 |  | Installation of Manholes for ICT Network - (RD-L-16)-Z5-L016-ICT | 4d | 2027-12-19 | 2027-12-23 | RHD4CZ5L016ICT5100, RHD4CZ5L016ICT2200 SS, RHD4PRSHLDOSICT1200, RHD4PRSHLSTAGICT1200 | -115.02d | 0d | Skilled labor [13.6 h]; Unskilled Labor [13.6 h]; Equipment Opreator [5.45 h]; Boom Truck [5.45 h]; Manhole Type 1 - ICT [5.1 nr]; Manhole Type 2 - ICT [1.7 nr] | 36,672.4 | L016 | Z5 | CONS | ICT | Installation | AFT |
|  | 3902 | **RHD4-02-002-L016-(ICT)-Information and Communication Technologies Road Crossings** |  | 2027-01-28 | 2027-02-20 |  |  |  |  |  |  |  |  |  |  |  |
| RHD4CZ5L016ICT3100 |  | Excavation for Road Crossings for ICT Network - (RD-L-16)-Z5-L016-ICT | 2d | 2027-01-28 | 2027-01-30 | RHD4CZ5L016TC3100, RHD4ENSDZ5APPICT200 | -169d | 12d | Skilled labor [11.11 h]; Unskilled Labor [11.11 h]; Equipment Opreator [22.33 h]; Excavator-Poclain [11.11 h]; Dump Truck [11.11 h]; Road crossing ducts, (2*50mm) HDPE -ICT [2.05 m] | 77.9 | L016 | Z5 | CONS | ICT | Excavation | bef |
| RHD4CZ5L016ICT3200 |  | Installation of Road Crossings for ICT Network - (RD-L-16)-Z5-L016-ICT | 2d | 2027-02-14 | 2027-02-15 | RHD4CZ5L016ICT3100, RHD4PRSHLDOSICT1100, RHD4PRSHLSTAGICT1100 | -181d | 0d | Carpenter [1.52 h]; Skilled labor [14.92 h]; Unskilled Labor [14.92 h]; Steel Fixer [1.52 h]; Road crossing ducts, (2*50mm) HDPE -ICT [2.05 m] | 77.9 | L016 | Z5 | CONS | ICT | Installing | bef |
| RHD4CZ5L016ICT3300 |  | Pouring of Road Crossings for ICT Network - (RD-L-16)-Z5-L016-ICT | 2d | 2027-02-16 | 2027-02-17 | RHD4CZ5L016ICT3200 | -181d | 0d | Skilled labor [14.92 h]; Unskilled Labor [14.92 h]; Equipment Opreator [5.99 h]; Concrete Mixer Truck [2.94 h]; Concrete Pump [2.94 h]; Road crossing ducts, (2*50mm) HDPE -ICT [13.32 m] | 506.35 | L016 | Z5 | CONS | ICT | Pouring | bef |
| RHD4CZ5L016ICT3400 |  | Backfilling of Road Crossings for ICT Network - (RD-L-16)-Z5-L016-ICT | 2d | 2027-02-18 | 2027-02-20 | RHD4CZ5L016ICT3300 | -181d | 0d | Skilled labor [11.11 h]; Unskilled Labor [11.11 h]; Equipment Opreator [4.47 h]; Excavator-Poclain [4.47 h]; Road crossing ducts, (2*50mm) HDPE -ICT [3.08 m] | 116.85 | L016 | Z5 | CONS | ICT | Backfilling | bef |
|  | 3890 | **RHD4-02-002-Z5-L016-Landscape Network - LS** |  |  |  |  |  |  |  |  |  |  |  |  |  |  |
|  | 3891 | **RHD4-02-002-L016-(LS)-Landscape Lighting cables** |  |  |  |  |  |  |  |  |  |  |  |  |  |  |
|  | 3892 | **RHD4-02-002-L016-(LS)-Landscape Feeder Pillars** |  |  |  |  |  |  |  |  |  |  |  |  |  |  |
|  | 3893 | **RHD4-02-002-L016-(LS)-Landscape Bollard Poles** |  |  |  |  |  |  |  |  |  |  |  |  |  |  |
|  | 3894 | **RHD4-02-002-L016-(LS)-Landscape Feeder Pillars Earthing** |  |  |  |  |  |  |  |  |  |  |  |  |  |  |
|  | 3903 | **RHD4-02-002-Z5-L016-Security Network - CCTV** |  | 2027-12-23 | 2028-02-05 |  |  |  |  |  |  |  |  |  |  |  |
|  | 3904 | **RHD4-02-002-L016-(CCTV)-Civil Works** |  | 2027-12-23 | 2028-01-04 |  |  |  |  |  |  |  |  |  |  |  |
| RHD4CZ5L016CCTV2100 |  | Civil Works for Security Network - (RD-L-16)-Z5-L016-CCTV | 10d | 2027-12-23 | 2028-01-04 | RHD4CZ5L016ICT5200 | -115.02d | 0d | Skilled labor [435.68 h]; Unskilled Labor [871.2 h]; Equipment Opreator [435.68 h]; Excavator-Poclain [108.9 h]; Dump Truck [108.9 h]; Civil works Digging, trenching, laying pipes Meter with supply and installation of Manholes and for power feeding sources related to all towers and poles – (from 35-meter pole to control room and from related UPS camersa distribution boards till overall 2 [300 m] | 34,800 | L016 | Z5 | CONS | CCTV | Civil Works | AFT |
|  | 3905 | **RHD4-02-002-L016-(CCTV)-CCTV Poles** |  | 2028-01-04 | 2028-01-16 |  |  |  |  |  |  |  |  |  |  |  |
| RHD4CZ5L016CCTV1100 |  | Excavation for RC Base for CCTV Poles for Security Network - (RD-L-16)-Z5-L016-CCTV | 2d | 2028-01-04 | 2028-01-06 | RHD4CZ5L016CCTV2100, RHD4ENSDZ5APPCCTV210 | -115.02d | 0d | Skilled labor [4.32 h]; Unskilled Labor [4.32 h]; Equipment Opreator [8.64 h]; Excavator-Poclain [2.18 h]; Dump Truck [2.18 h]; 25 Meters pole for CCTV Cameras [0.1 nr] | 14,090.2 | L016 | Z5 | CONS | CCTV | Excavation | AFT |
| RHD4CZ5L016CCTV1200 |  | Installation for RC Base for CCTV Poles for Security Network - (RD-L-16)-Z5-L016-CCTV | 2d | 2028-01-06 | 2028-01-09 | RHD4CZ5L016CCTV1100 | -115.02d | 0d | Skilled labor [4.32 h]; Unskilled Labor [4.32 h]; Equipment Opreator [8.64 h]; Excavator-Poclain [2.18 h]; Dump Truck [2.18 h]; 25 Meters pole for CCTV Cameras [0.25 nr] | 35,225.5 | L016 | Z5 | CONS | CCTV | RC Base | AFT |
| RHD4CZ5L016CCTV1300 |  | Backfill for RC Base for CCTV Poles for Security Network - (RD-L-16)-Z5-L016-CCTV | 2d | 2028-01-09 | 2028-01-11 | RHD4CZ5L016CCTV1200 | -115.02d | 0d | Skilled labor [2.88 h]; Unskilled Labor [2.88 h]; Equipment Opreator [5.44 h]; Excavator-Poclain [1.42 h]; Dump Truck [1.42 h]; 25 Meters pole for CCTV Cameras [0.05 nr] | 7,045.1 | L016 | Z5 | CONS | CCTV | Backfill | AFT |
| RHD4CZ5L016CCTV1400 |  | Installation for CCTV Poles for Security Network - (RD-L-16)-Z5-L016-CCTV | 2d | 2028-01-11 | 2028-01-13 | RHD4CZ5L016CCTV1300, RHD4PRSHLDOSCCTV1000, RHD4PRSHLSTACCTV1000 | -115.02d | 0d | Skilled labor [7.2 h]; Unskilled Labor [14.56 h]; Electrician [7.2 h]; Equipment Opreator [7.2 h]; Boom Truck [3.59 h]; 25 Meters pole for CCTV Cameras [0.6 nr] | 84,541.2 | L016 | Z5 | CONS | CCTV | Installation | AFT |
| RHD4CZ5L016CCTV1500 |  | Protection post Installation for CCTV Poles for Security Network - (RD-L-16)-Z5-L016-CCTV | 2d | 2028-01-13 | 2028-01-16 | RHD4CZ5L016CCTV1400 | -115.02d | 0d | Skilled labor [21.76 h]; Unskilled Labor [43.52 h]; Supply and Installation of minimum 4 Protection Post for each pole or tower with pipe ?220*6mm THK. [1 nr] | 4,903 | L016 | Z5 | CONS | CCTV | Protection post | AFT |
|  | 3906 | **RHD4-02-002-L016-(CCTV)-Camera** |  | 2028-01-16 | 2028-01-18 |  |  |  |  |  |  |  |  |  |  |  |
| RHD4CZ5L016CCTV3100 |  | Installation for Cameras for Security Network - (RD-L-16)-Z5-L016-CCTV | 2d | 2028-01-16 | 2028-01-18 | RHD4CZ5L016CCTV1400, RHD4CZ5L016CCTV4100, RHD4PRSHLDOSCCTV1100, RHD4PRSHLSTACCTV1100, RHD4CZ5L016CCTV1500 | -115.02d | 0d | Unskilled Labor [32.64 h]; Electrician [16.32 h]; Outdoor Camera, 5MP resolution, day/night, fixed bullet camera providing Forensic WDR. [2 nr]; Outdoor PTZ with IR, HDTV 1080 and 31x optical, 12x digital, total 372x zoom, H264/265 with Motion JPEG. [1 nr] | 44,801 | L016 | Z5 | CONS | CCTV | Installation | AFT |

| ID | WBS | Activity | Duration | Start | Finish | Predecessors | Complete | Planned start | Planned finish | Total float | Free float | Resources | Cost | Actual cost | RDH4-01-001-Road and Block Names-1 | RDH4-01-001-Zones-1 | RDH4-01-001-Phases-1 | RDH4-01-001-Networks-1 | RDH4-01-001-Work Method-1 | RDH4-01-001-MENEM |
| --- | --- | --- | --- | --- | --- | --- | --- | --- | --- | --- | --- | --- | --- | --- | --- | --- | --- | --- | --- | --- |
|  | 3907 | **RHD4-02-002-L016-(CCTV)-Power and Infrastructure** |  | 2028-01-13 | 2028-01-18 |  |  |  |  |  |  |  |  |  |  |  |  |  |  |  |
| RHD4CZ5L016CCTV4100 |  | Installation of Power outlet, UPS and midspan for PTZ Camerafor Cameras for Security Network - (RD-L-16)-Z5-L016-CCTV | 2d | 2028-01-13 | 2028-01-16 | RHD4CZ5L016CCTV1400, RHD4PRSHLDOSCCTV1300, RHD4PRSHLSTACCTV1300 |  |  |  | -115.02d | 0d | Skilled labor [13.12 h]; Unskilled Labor [52.32 h]; Electrician [26.08 h]; Equipment Opreator [26.08 h]; Excavator-Poclain [6.53 h]; Dump Truck [6.53 h]; Outdoor ready IP66-rated midspan for PTZ Camera (The outdoor- ready midspan should be IP66/IP67- and NEMA 4X-rated [1 nr]; 1.2KVA Industrial type UPS located at FEC remote poles [2 nr] | 15,232 |  | L016 | Z5 | CONS | CCTV | Power | AFT |
| RHD4CZ5L016CCTV4200 |  | Short Range Wireless PoP wireless Bridgefor CCTV Poles for Security Network - (RD-L-16)-Z5-L016-CCTV | 2d | 2028-01-16 | 2028-01-18 | RHD4CZ5L016CCTV4100 |  |  |  | -115.02d | 0d | Skilled labor [21.76 h]; Unskilled Labor [43.52 h]; Electrician [21.76 h]; Equipment Opreator [43.52 h]; Excavator-Poclain [10.89 h]; Dump Truck [10.89 h]; Short Range wireless point to point wireless bridge [4 nr] | 58,548 |  | L016 | Z5 | CONS | CCTV | Wireless Pop | AFT |
|  | 3909 | **RHD4-02-002-L016-(CCTV)-CCTV Panels and Components** |  | 2028-01-18 | 2028-02-05 |  |  |  |  |  |  |  |  |  |  |  |  |  |  |  |
| RHD4CZ5L016CCTV6100 |  | Installation for CCTV Panels for Security Network - (RD-L-16)-Z5-L016-CCTV | 15d | 2028-01-18 | 2028-02-05 | RHD4CZ5L016CCTV4200, RHD4CZ5L016CCTV3100, RHD4PRSHLDOSCCTV1200, RHD4PRSHLSTACCTV1200, RHD4PRLOLSTACCTV1001 |  |  |  | -115.02d | 0d | Skilled labor [326.72 h]; Unskilled Labor [980.16 h]; Electrician [326.72 h]; Pole mounted Filed Equipment cabinet (FEC) , with fan and ventilation, NEMEX 4X ,door, minimum size (600x600x400mm) , the cabinet/enclosurE [2 nr]; 8 Port Industrial PoE Switch 10/1000BaseT (-40 deg to +70 deg. Celsius) for remote poles and as specifiedin item 15. [1 nr]; UTP CAT6 Patch Cord , connect the industrial switch with the cameras, and radio wireless antenna [12 nr] | 32,584 |  | L016 | Z5 | CONS | CCTV | Equipment | AFT |
|  | 3542 | **RHD4-02-002-Z5-A014** |  | 2026-06-09 | 2028-03-22 |  |  |  |  |  |  |  |  |  |  |  |  |  |  |  |
|  | 3573 | **RHD4-02-002-Z5-A014-Crossings Sewage Network - SWCr** |  |  |  |  |  |  |  |  |  |  |  |  |  |  |  |  |  |  |
|  | 3583 | **RHD4-02-002-A014-(SWCr)-MH Works - 1200 mm diameter** |  |  |  |  |  |  |  |  |  |  |  |  |  |  |  |  |  |  |
|  | 3579 | **RHD4-02-002-A014-(SWCr)-UPVC Pipes - 200 mm diameter** |  |  |  |  |  |  |  |  |  |  |  |  |  |  |  |  |  |  |
|  | 3617 | **RHD4-02-002-Z5-A014-Crossings Potable Network - PTCr** |  |  |  |  |  |  |  |  |  |  |  |  |  |  |  |  |  |  |
|  | 3620 | **RHD4-02-002-A014-(PTCr)-HDPE Pipes - 200 mm diameter** |  |  |  |  |  |  |  |  |  |  |  |  |  |  |  |  |  |  |
|  | 3623 | **RHD4-02-002-A014-(PTCr)-Gate Valves (Direct Buried)** |  |  |  |  |  |  |  |  |  |  |  |  |  |  |  |  |  |  |
|  | 3630 | **RHD4-02-002-A014-(PTCr)-Fire Hydrant** |  |  |  |  |  |  |  |  |  |  |  |  |  |  |  |  |  |  |
|  | 3664 | **RHD4-02-002-Z5-A014-Crossings Irrigation Network - IRRC** |  |  |  |  |  |  |  |  |  |  |  |  |  |  |  |  |  |  |
|  | 3665 | **RHD4-02-002-A014-(IRRC)-HDPE Pipes - 160 mm diameter** |  |  |  |  |  |  |  |  |  |  |  |  |  |  |  |  |  |  |
|  | 3668 | **RHD4-02-002-A014-(IRRC)-HDPE Pipes - 250 mm diameter** |  |  |  |  |  |  |  |  |  |  |  |  |  |  |  |  |  |  |
|  | 3673 | **RHD4-02-002-A014-(IRRC)-Gate Valves (Direct Buried)** |  |  |  |  |  |  |  |  |  |  |  |  |  |  |  |  |  |  |
|  | 3678 | **RHD4-02-002-A014-(IRRC)-Air Valve Chamber** |  |  |  |  |  |  |  |  |  |  |  |  |  |  |  |  |  |  |
|  | 3679 | **RHD4-02-002-A014-(IRRC)-Air Valves** |  |  |  |  |  |  |  |  |  |  |  |  |  |  |  |  |  |  |
|  | 3721 | **RHD4-02-002-Z5-A014-Road Works - RD** |  | 2026-06-09 | 2028-03-22 |  |  |  |  |  |  |  |  |  |  |  |  |  |  |  |
|  | 3722 | **RHD4-02-002-A014-(RD)-Subgrade** |  | 2026-06-09 | 2026-06-23 |  |  |  |  |  |  |  |  |  |  |  |  |  |  |  |
| RHD4CZ5A014RD1100 |  | Supply, lay and compaction subgrade compacted thickness 300 mm for Roads - (RD-A-1 /4)-Z5-A014-RD | 5d | 2026-06-09 A | 2026-06-23 A | RHD4ENSDZ5APPRD220, RHD4ENSDZ5APPEW100 SS, RHD4CZ5A014ST1506, RHD4CZ5A014ST3302 | 100% | 2026-06-28 | 2026-07-02 |  |  | Skilled labor [153.01 h]; Unskilled Labor [306.02 h]; Electrician [153.01 h]; Equipment Opreator [1045.04 h]; Water Truck [50.53 h]; Roller compactor [76.45 h]; Grader [153.01 h]; Dump Truck [765.05 h]; Subgrade [9566.34 m3] | 181,760.46 | 181,760.46 | A014 | Z5 | CONS | RD | Subgrade | bef |
|  | 3723 | **RHD4-02-002-A014-(RD)-Aggregate Base Course** |  | 2026-09-21 | 2026-10-03 |  |  |  |  |  |  |  |  |  |  |  |  |  |  |  |
| RHD4CZ5A014RD2100 |  | Supply, lay and compaction Aggregate base course compacted thickness 300 mmfor Roads - (RD-A-1 /4)-Z5-A014-RD | 6d | 2026-09-21 A | 2026-10-03 A | RHD4PRSHLDOSRD1000, RHD4PRSHLSTAGRD1000, RHD4CZ5A014RD1100 | 100% | 2026-07-04 | 2026-07-09 |  |  | Skilled labor [73.6 h]; Unskilled Labor [147.35 h]; Equipment Opreator [932.65 h]; Water Truck [48.57 h]; Roller compactor [147.35 h]; Grader [147.35 h]; Dump Truck [589.39 h]; Aggregate Base Courses [6008.62 m3] | 342,491.34 | 342,491.34 | A014 | Z5 | CONS | RD | ABC | bef |

| ID | WBS | Activity | Duration | Start | Finish | Predecessors | Complete | Remaining | Planned start | Planned finish | Total float | Free float | Resources | Cost | Actual cost | RDH4-01-001-Road and Block Names-1 | RDH4-01-001-Zones-1 | RDH4-01-001-Phases-1 | RDH4-01-001-Networks-1 | RDH4-01-001-Work Method-1 | RDH4-01-001-MENEM |
| --- | --- | --- | --- | --- | --- | --- | --- | --- | --- | --- | --- | --- | --- | --- | --- | --- | --- | --- | --- | --- | --- |
|  | 3724 | **RHD4-02-002-A014-(RD)-Bituminous base course Two Layers, including (MC1)&(RC2)** |  | 2026-10-20 | 2028-02-16 |  |  |  |  |  |  |  |  |  |  |  |  |  |  |  |  |
| RHD4CZ5A014RD3100 |  | Supply, lay and Asphaltic base course including Prime Coat (MC1) for 1st Layer - (RD-A-1 /4)-Z5-A014-RD | 7d | 2026-10-20 A | 2027-01-21 | RHD4PRSHLDOSRD1100, RHD4ENMSASPH2000, RHD4ENMSASPH2010, RHD4PRSHLSTAGRD1100, RHD4CZ5A014RD2100 | 85% | 7d | 2026-10-20 | 2026-10-27 | -177d | 0.02d | Skilled labor [74.27 h]; Unskilled Labor [445.85 h]; Equipment Opreator [1114.63 h]; Bobcat [74.27 h]; Roller compactor [74.27 h]; Asphalt Paver [74.27 h]; Rubber Compactor [148.65 h]; MC1/RC2 Sprinkler [74.27 h]; Dump Truck [668.8 h]; Bituminous base course (Grading I - Class A), including Prime coat (MC1) & tack coate (RC2) [2718.72 m3] | 1,299,548.16 | 1,104,615.94 | A014 | Z5 | CONS | RD | 150 mm | AFT |
| RHD4CZ5A014RD3200 |  | Supply, lay and Asphaltic base course including Tack Coat (RC2) for 2nd Layer - (RD-A-1 /4)-Z5-A014-RD | 7d | 2028-02-08 | 2028-02-16 | RHD4PRSHLDOSRD1100, RHD4PRSHLSTAGRD1100, RHD4CZ5A014ICT5200 |  |  |  |  | -109.02d | 0d | Skilled labor [74.27 h]; Unskilled Labor [445.85 h]; Equipment Opreator [1114.63 h]; Bobcat [74.27 h]; Roller compactor [74.27 h]; Asphalt Paver [74.27 h]; Rubber Compactor [148.65 h]; MC1/RC2 Sprinkler [74.27 h]; Dump Truck [668.8 h]; Bituminous base course (Grading I - Class A), including Prime coat (MC1) & tack coate (RC2) [2718.72 m3] | 1,299,548.16 |  | A014 | Z5 | CONS | RD | 150 mm | AFT |
|  | 3726 | **RHD4-02-002-A014-(RD)-Precast Concrete Curb** |  | 2028-02-16 | 2028-03-02 |  |  |  |  |  |  |  |  |  |  |  |  |  |  |  |  |
| RHD4CZ5A014RD5100 |  | Supply and installation Precast Concrete Kerb for Roads - (RD-A-1 /4)-Z5-A014-RD | 9d | 2028-02-16 | 2028-03-02 | RHD4CZ5A014RD3200, RHD4PRSHLDOSRD1200, RHD4ENMSRD2000, RHD4ENMSRD2010, RHD4PRSHLSTAGRD1200, RHD4CZ5L016RD5100 |  |  |  |  | -109.02d | 0d | Mason [283.26 h]; Skilled labor [94.4 h]; Unskilled Labor [283.26 h]; Equipment Opreator [188.8 h]; Bobcat [94.4 h]; Concrete Mixer Truck [94.4 h]; Precast Concrete Curbstone, type K1 [3901.79 m] | 214,598.29 |  | A014 | Z5 | CONS | RD | Curbs | AFT |
|  | 3729 | **RHD4-02-002-A014-(RD)-Traffic Signage** |  | 2028-03-02 | 2028-03-11 |  |  |  |  |  |  |  |  |  |  |  |  |  |  |  |  |
| RHD4CZ5A014RD8100 |  | Installation of Traffic Signage for Road Network - (RD-A-1 /4)-Z5-A014-RD | 7d | 2028-03-02 | 2028-03-11 | RHD4CZ5A014RD5100, RHD4PRSHLDOSRD1600, RHD4PRSHLSTAGRD1600, RHD4CZ5L016RD8100, RHD4CZ5A014LV3400, RHD4CZ5C061RD8100 |  |  |  |  | -105.02d | 47d | Skilled labor [152.46 h]; Unskilled Labor [76.23 h]; Electrician [26.14 h]; Equipment Opreator [25.7 h]; Boom Truck [15.25 h]; Concrete Mixer Truck [10.45 h]; Traffic signs, ground mounted, 1 Sheet Aluminium, (breakaway)Single post [23 nr] | 28,198 |  | A014 | Z5 | CONS | RD | Traffic Signage | AFT |
|  | 3727 | **RHD4-02-002-A014-(RD)-Precast Interlocking Block Pavers** |  |  |  |  |  |  |  |  |  |  |  |  |  |  |  |  |  |  |  |
|  | 3725 | **RHD4-02-002-A014-(RD)-Bituminous concrete wearing course including tack coat (RC2)** |  | 2028-03-05 | 2028-03-08 |  |  |  |  |  |  |  |  |  |  |  |  |  |  |  |  |
| RHD4CZ5A014RD4100 |  | Supply, lay and compaction Asphaltic wearing course including tack Coat (RC2)for Road Network - (RD-A-1 /4)-Z5-A014-RD | 3d | 2028-03-05 | 2028-03-08 | RHD4CZ5A014RD5100, RHD4CZ5L016RD4100 |  |  |  |  | -111.02d | 4d | Skilled labor [30.17 h]; Unskilled Labor [180.8 h]; Equipment Opreator [452.06 h]; Bobcat [30.17 h]; Roller compactor [30.17 h]; Asphalt Paver [30.17 h]; Rubber Compactor [60.22 h]; MC1/RC2 Sprinkler [30.17 h]; Dump Truck [271.28 h]; Bituminous concrete wearing course, (Grading I - Class A), including tack coat (RC2) [1437.37 m3] | 780,491.91 |  | A014 | Z5 | CONS | RD | 50 mm | AFT |
|  | 3730 | **RHD4-02-002-A014-(RD)-Speed Table and Wheel Stopper** |  |  |  |  |  |  |  |  |  |  |  |  |  |  |  |  |  |  |  |
|  | 3728 | **RHD4-02-002-A014-(RD)-Pavement Marking** |  | 2028-03-13 | 2028-03-22 |  |  |  |  |  |  |  |  |  |  |  |  |  |  |  |  |
| RHD4CZ5A014RD7100 |  | Pavement Markings for Road Network - (RD-A-1 /4)-Z5-A014-RD | 8d | 2028-03-13 | 2028-03-22 | RHD4CZ5A014RD4100, RHD4PRSHLDOSRD1500, RHD4PRSHLSTAGRD1500, RHD4CZ5L016RD7100 |  |  |  |  | -115.02d | 0d | Skilled labor [83.42 h]; Unskilled Labor [166.73 h]; Equipment Opreator [83.42 h]; Road Marking Machine [83.42 h]; Retroreflective Thermoplastic White Traffic Markings [1117.56 m2]; Retroreflective Thermoplastic Yellow, Traffic Markings [313.87 m2]; Retroreflective raised pavement markers (cat eyes) [615 nr] | 65,284.33 |  | A014 | Z5 | CONS | RD | Pavement Marking | AFT |
|  | 3546 | **RHD4-02-002-Z5-A014-Storm Network - ST** |  | 2026-08-04 | 2027-02-03 |  |  |  |  |  |  |  |  |  |  |  |  |  |  |  |  |
|  | 2039 | **RHD4-02-002-A014-(ST)-GRP Pipes - 1000 mm diameter** |  | 2026-08-04 | 2027-01-09 |  |  |  |  |  |  |  |  |  |  |  |  |  |  |  |  |
| RHD4CZ5A014ST1106 |  | Excavation works for GRP Pipe Line 1000 mm - (RD-A-1 /4)-Z5-A014-ST | 2d | 2026-08-04 A | 2026-08-05 A | RHD4CZ5A014ST3102 | 100% |  | 2026-06-16 | 2026-06-17 |  |  | Skilled labor [1.2 h]; Unskilled Labor [1.2 h]; Equipment Opreator [1.52 h]; Excavator-Poclain [1.2 h]; Dump Truck [0.22 h]; GRP (1000mm Diameter) - ST - Depth: 1.51m - 2.5m [3.4 m] | 3,114.4 | 3,114.4 | A014 | Z5 | CONS | ST | Excavation | bef |
| RHD4CZ5A014ST1206 |  | Bedding works for GRP Pipe Line 1000 mm - (RD-A-1 /4)-Z5-A014-ST | 2d | 2026-08-05 A | 2026-08-06 A | RHD4CZ5A014ST1106 | 100% |  | 2026-06-18 | 2026-06-20 |  |  | Skilled labor [1.2 h]; Unskilled Labor [2.5 h]; Equipment Opreator [2.5 h]; Excavator-Poclain [1.2 h]; Dump Truck [1.2 h]; GRP (1000mm Diameter) - ST - Depth: 1.51m - 2.5m [1.13 m] | 1,035.08 | 1,035.08 | A014 | Z5 | CONS | ST | Bedding | bef |
| RHD4CZ5A014ST1306 |  | Installing for GRP Pipe Line 1000 mm - (RD-A-1 /4)-Z5-A014-ST | 2d | 2026-08-08 A | 2026-08-09 A | RHD4CZ5A014ST1206 | 100% |  | 2026-06-21 | 2026-06-22 |  |  | Unskilled Labor [1.6 h]; Plumber [0.87 h]; GRP (1000mm Diameter) - ST - Depth: 1.51m - 2.5m [9.07 m] | 8,308.12 | 8,308.12 | A014 | Z5 | CONS | ST | Installation | bef |
| RHD4CZ5A014ST1506 |  | Backfilling and warning tape works for GRP Pipe Line 1000 mm - (RD-A-1 /4)-Z5-A014-ST | 2d | 2026-08-10 A | 2026-09-12 A | RHD4CZ5A014ST1406 | 100% |  | 2026-06-25 | 2026-06-27 |  |  | Skilled labor [1.2 h]; Unskilled Labor [2.5 h]; Equipment Opreator [2.5 h]; Excavator-Poclain [1.2 h]; Dump Truck [1.2 h]; GRP (1000mm Diameter) - ST - Depth: 1.51m - 2.5m [4.53 m] | 4,149.48 | 4,149.48 | A014 | Z5 | CONS | ST | Backfilling | bef |
| RHD4CZ5A014ST1406 |  | Primary Test for GRP Pipe Line 1000 mm - (RD-A-1 /4)-Z5-A014-ST | 2d | 2027-01-07 | 2027-01-09 | RHD4CZ5A014ST1306 |  |  |  |  | -173d | 0d | Unskilled Labor [0.65 h]; Plumber [0.65 h]; Equipment Opreator [0.65 h]; Water Truck [0.65 h]; GRP (1000mm Diameter) - ST - Depth: 1.51m - 2.5m [4.53 m] | 4,149.48 |  | A014 | Z5 | CONS | ST | Primary Test | bef |
|  | 2416 | **RHD4-02-002-A014-(ST)-GRP Pipes - 800 mm diameter** |  | 2026-08-04 | 2027-01-09 |  |  |  |  |  |  |  |  |  |  |  |  |  |  |  |  |
| RHD4CZ5A014ST1104 |  | Excavation works for GRP Pipe Line 800 mm - (RD-A-1 /4)-Z5-A014-ST | 2d | 2026-08-04 A | 2026-08-06 A | RHD4CZ5A014ST1106 | 100% |  | 2026-06-18 | 2026-06-20 |  |  | Skilled labor [8.49 h]; Unskilled Labor [8.49 h]; Equipment Opreator [10.24 h]; Excavator-Poclain [8.49 h]; Dump Truck [1.74 h]; GRP (800mm Diameter) - ST - Depth less than 1.5 m [15.7 m]; GRP (800mm Diameter) - ST - Depth: 1.51m - 2.5m | 10,252.1 | 10,252.1 | A014 | Z5 | CONS | ST | Excavation | bef |
| RHD4CZ5A014ST1204 |  | Bedding works for GRP Pipe Line 800 mm - (RD-A-1 /4)-Z5-A014-ST | 2d | 2026-08-06 A | 2026-08-08 A | RHD4CZ5A014ST1104 | 100% |  | 2026-06-21 | 2026-06-22 |  |  | Skilled labor [8.49 h]; Unskilled Labor [17.1 h]; Equipment Opreator [17.1 h]; Excavator-Poclain [8.49 h]; Dump Truck [8.49 h]; GRP (800mm Diameter) - ST - Depth less than 1.5 m [7.85 m]; GRP (800mm Diameter) - ST - Depth: 1.51m - 2.5m | 5,126.05 | 5,126.05 | A014 | Z5 | CONS | ST | Bedding | bef |
| RHD4CZ5A014ST1304 |  | Installing for GRP Pipe Line 800 mm - (RD-A-1 /4)-Z5-A014-ST | 2d | 2026-08-09 A | 2026-08-10 A | RHD4CZ5A014ST1204 | 100% |  | 2026-06-23 | 2026-06-24 |  |  | Unskilled Labor [11.43 h]; Plumber [5.66 h]; GRP (800mm Diameter) - ST - Depth less than 1.5 m [70.64 m]; GRP (800mm Diameter) - ST - Depth: 1.51m - 2.5m | 46,127.92 | 46,127.92 | A014 | Z5 | CONS | ST | Installation | bef |
| RHD4CZ5A014ST1504 |  | Backfilling and warning tape works for GRP Pipe Line 800 mm - (RD-A-1 /4)-Z5-A014-ST | 2d | 2026-08-11 A | 2026-08-12 A | RHD4CZ5A014ST1404 | 100% |  | 2026-06-28 | 2026-06-29 |  |  | Skilled labor [8.49 h]; Unskilled Labor [17.1 h]; Equipment Opreator [17.1 h]; Excavator-Poclain [8.49 h]; Dump Truck [8.49 h]; GRP (800mm Diameter) - ST - Depth less than 1.5 m [31.4 m]; GRP (800mm Diameter) - ST - Depth: 1.51m - 2.5m | 20,504.2 | 20,504.2 | A014 | Z5 | CONS | ST | Backfilling | bef |
| RHD4CZ5A014ST1404 |  | Primary Test for GRP Pipe Line 800 mm - (RD-A-1 /4)-Z5-A014-ST | 2d | 2027-01-07 | 2027-01-09 | RHD4CZ5A014ST1304 |  |  |  |  | -163d | 0d | Unskilled Labor [4.25 h]; Plumber [4.25 h]; Equipment Opreator [4.25 h]; Water Truck [4.25 h]; GRP (800mm Diameter) - ST - Depth less than 1.5 m [31.4 m]; GRP (800mm Diameter) - ST - Depth: 1.51m - 2.5m | 20,504.2 |  | A014 | Z5 | CONS | ST | Primary Test | bef |

| ID | WBS | Activity | Duration | Start | Finish | Predecessors | Complete | Remaining | Planned start | Planned finish | Total float | Free float | Resources | Cost | Actual cost | RDH4-01-001-Road and Block Names-1 | RDH4-01-001-Zones-1 | RDH4-01-001-Phases-1 | RDH4-01-001-Networks-1 | RDH4-01-001-Work Method-1 | RDH4-01-001-MENEM |
| --- | --- | --- | --- | --- | --- | --- | --- | --- | --- | --- | --- | --- | --- | --- | --- | --- | --- | --- | --- | --- | --- |
|  | 3565 | **RHD4-02-002-A014-(ST)-MH Works - 2000 mm diameter** |  | 2026-08-04 | 2027-01-19 |  |  |  |  |  |  |  |  |  |  |  |  |  |  |  |  |
| RHD4CZ5A014ST3102 |  | Excavation and PC Blinding works for MH 2000 mm - (RD-A-1 /4)-Z5-A014-ST | 3d | 2026-08-04 A | 2026-08-31 A | RHD4ENSDZ5APPST110, RHD4ENMSST2000, RHD4PRSHLDOSST1003 SS, RHD4PRSHLSTAGPT1300 | 100% |  | 2026-06-13 | 2026-06-15 |  |  | Skilled labor [27.2 h]; Unskilled Labor [27.2 h]; Equipment Opreator [43.56 h]; Excavator-Poclain [27.2 h]; Water Truck [2.72 h]; Dump Truck [13.6 h]; MH (2000mm Diameter) - ST - depth 1.50 - 2.5m [0.25 nr]; MH (2000mm Diameter) - ST - depth 2.51 - 3.5m [0.5 nr]; MH (2000mm Diameter) - ST - depth 3.51 -4.5m [0.5 nr]; MH (2000mm Diameter) - ST - depth 4.51 -5.5m [0.25 nr] | 32,913.25 | 32,913.25 | A014 | Z5 | CONS | ST | Excavation | bef |
| RHD4CZ5A014ST3202 |  | Installation of Base for MH 2000 mm - (RD-A-1 /4)-Z5-A014-ST | 4d | 2026-08-06 A | 2027-01-09 | RHD4CZ5A014ST3102, RHD4PRSHLSTAGST1604 | 80% | 2d | 2026-06-16 | 2026-06-20 | -198d | 0d | Skilled labor [36.26 h]; Unskilled Labor [36.26 h]; Equipment Opreator [14.48 h]; Boom Truck [7.3 h]; Concrete Mixer Truck [7.3 h]; MH (2000mm Diameter) - ST - depth 1.50 - 2.5m [0.25 nr]; MH (2000mm Diameter) - ST - depth 2.51 - 3.5m [0.5 nr]; MH (2000mm Diameter) - ST - depth 3.51 -4.5m [0.5 nr]; MH (2000mm Diameter) - ST - depth 4.51 -5.5m [0.25 nr] | 32,913.25 | 16,456.62 | A014 | Z5 | CONS | ST | Installing Base | bef |
| RHD4CZ5A014ST3302 |  | MH Ring and C.Slab works and Backfilling works for MH 2000 mm - (RD-A-1 /4)-Z5-A014-ST | 4d | 2026-09-05 A | 2027-01-13 | RHD4CZ5A014ST3202, RHD4PRSHLDOSST1604 | 80% | 4d | 2026-06-21 | 2026-06-24 | -198d | 0d | Skilled labor [36.26 h]; Unskilled Labor [36.26 h]; Equipment Opreator [25.37 h]; Boom Truck [14.48 h]; Concrete Mixer Truck [10.89 h]; MH (2000mm Diameter) - ST - depth 1.50 - 2.5m [0.35 nr]; MH (2000mm Diameter) - ST - depth 2.51 - 3.5m [0.7 nr]; MH (2000mm Diameter) - ST - depth 3.51 -4.5m [0.7 nr]; MH (2000mm Diameter) - ST - depth 4.51 -5.5m [0.35 nr] | 46,078.55 |  | A014 | Z5 | CONS | ST | Installing Rings | bef |
| RHD4CZ5A014ST3402 |  | Steel Cover for MH 2000 mm - (RD-A-1 /4)-Z5-A014-ST | 2d | 2027-01-14 | 2027-01-16 | RHD4CZ5A014ST3302, RHD4PRSHLDOSST1704, RHD4PRSHLSTAGST1704 |  |  |  |  | -198d | 0d | Skilled labor [21.78 h]; Unskilled Labor [43.56 h]; Equipment Opreator [4.36 h]; Boom Truck [4.36 h]; MH (2000mm Diameter) - ST - depth 1.50 - 2.5m [0.05 nr]; MH (2000mm Diameter) - ST - depth 2.51 - 3.5m [0.1 nr]; MH (2000mm Diameter) - ST - depth 3.51 -4.5m [0.1 nr]; MH (2000mm Diameter) - ST - depth 4.51 -5.5m [0.05 nr] | 6,582.65 |  | A014 | Z5 | CONS | ST | Steel Cover | bef |
| RHD4CZ5A014ST3502 |  | Finishing, Benching, Testing works for MH 2000 mm - (RD-A-1 /4)-Z5-A014-ST | 3d | 2027-01-17 | 2027-01-19 | RHD4CZ5A014ST3402 |  |  |  |  | -195d | 0d | Skilled labor [27.2 h]; Unskilled Labor [54.45 h]; Plumber [27.2 h]; Equipment Opreator [5.45 h]; Water Truck [5.45 h]; MH (2000mm Diameter) - ST - depth 1.50 - 2.5m [0.1 nr]; MH (2000mm Diameter) - ST - depth 2.51 - 3.5m [0.2 nr]; MH (2000mm Diameter) - ST - depth 3.51 -4.5m [0.2 nr]; MH (2000mm Diameter) - ST - depth 4.51 -5.5m [0.1 nr] | 13,165.3 |  | A014 | Z5 | CONS | ST | Benching | bef |
|  | 3564 | **RHD4-02-002-A014-(ST)-MH Works - 1500 mm diameter** |  | 2026-08-04 | 2027-01-25 |  |  |  |  |  |  |  |  |  |  |  |  |  |  |  |  |
| RHD4CZ5A014ST3101 |  | Excavation and PC Blinding works for MH 1500 mm - (RD-A-1 /4)-Z5-A014-ST | 5d | 2026-08-04 A | 2026-08-06 A | RHD4CZ5A014ST3102, RHD4ENSDZ5APPST110, RHD4ENMSST2000 | 100% |  | 2026-06-16 | 2026-06-21 |  |  | Skilled labor [49.01 h]; Unskilled Labor [49.01 h]; Equipment Opreator [78.4 h]; Excavator-Poclain [49.01 h]; Water Truck [4.9 h]; Dump Truck [24.5 h]; MH (1500mm Diameter) - ST - depth 1.50 - 2.5m [1.25 nr]; MH (1500mm Diameter) - ST - depth 2.51 - 3.5m [0.5 nr]; MH (1500mm Diameter) - ST - depth 3.51 - 4.5m [0.25 nr] | 31,757 | 31,757 | A014 | Z5 | CONS | ST | Excavation | bef |
| RHD4CZ5A014ST3201 |  | Installation of Base for MH 1500 mm - (RD-A-1 /4)-Z5-A014-ST | 5d | 2026-08-06 A | 2026-09-09 A | RHD4CZ5A014ST3101, RHD4PRSHLSTAGST1604 | 100% |  | 2026-06-22 | 2026-06-27 |  |  | Skilled labor [49.01 h]; Unskilled Labor [49.01 h]; Equipment Opreator [19.6 h]; Boom Truck [9.8 h]; Concrete Mixer Truck [9.8 h]; MH (1500mm Diameter) - ST - depth 1.50 - 2.5m [1.25 nr]; MH (1500mm Diameter) - ST - depth 2.51 - 3.5m [0.5 nr]; MH (1500mm Diameter) - ST - depth 3.51 - 4.5m [0.25 nr] | 31,757 | 31,757 | A014 | Z5 | CONS | ST | Installing Base | bef |
| RHD4CZ5A014ST3301 |  | MH Ring and C.Slab works and Backfilling works for MH 1500 mm - (RD-A-1 /4)-Z5-A014-ST | 5d | 2026-09-05 A | 2026-09-09 A | RHD4CZ5A014ST3201, RHD4PRSHLDOSST1604 | 100% |  | 2026-06-28 | 2026-07-02 |  |  | Skilled labor [49.01 h]; Unskilled Labor [49.01 h]; Equipment Opreator [34.3 h]; Boom Truck [19.6 h]; Concrete Mixer Truck [14.7 h]; MH (1500mm Diameter) - ST - depth 1.50 - 2.5m [1.75 nr]; MH (1500mm Diameter) - ST - depth 2.51 - 3.5m [0.7 nr]; MH (1500mm Diameter) - ST - depth 3.51 - 4.5m [0.35 nr] | 44,459.8 | 44,459.8 | A014 | Z5 | CONS | ST | Installing Rings | bef |
| RHD4CZ5A014ST3401 |  | Steel Cover for MH 1500 mm - (RD-A-1 /4)-Z5-A014-ST | 3d | 2027-01-17 | 2027-01-19 | RHD4CZ5A014ST3301, RHD4PRSHLDOSST1704, RHD4PRSHLSTAGST1704, RHD4CZ5A014ST3402 |  |  |  |  | -198d | 0d | Skilled labor [29.08 h]; Unskilled Labor [58.05 h]; Equipment Opreator [5.77 h]; Boom Truck [5.77 h]; MH (1500mm Diameter) - ST - depth 1.50 - 2.5m [0.25 nr]; MH (1500mm Diameter) - ST - depth 2.51 - 3.5m [0.1 nr]; MH (1500mm Diameter) - ST - depth 3.51 - 4.5m [0.05 nr] | 6,351.4 |  | A014 | Z5 | CONS | ST | Steel Cover | bef |
| RHD4CZ5A014ST3501 |  | Finishing, Benching, Testing works for MH 1500 mm - (RD-A-1 /4)-Z5-A014-ST | 5d | 2027-01-20 | 2027-01-25 | RHD4CZ5A014ST3401 |  |  |  |  | -198d | 0d | Skilled labor [49.01 h]; Unskilled Labor [98.01 h]; Plumber [49.01 h]; Equipment Opreator [9.8 h]; Water Truck [9.8 h]; MH (1500mm Diameter) - ST - depth 1.50 - 2.5m [0.5 nr]; MH (1500mm Diameter) - ST - depth 2.51 - 3.5m [0.2 nr]; MH (1500mm Diameter) - ST - depth 3.51 - 4.5m [0.1 nr] | 12,702.8 |  | A014 | Z5 | CONS | ST | Benching | bef |
|  | 3563 | **RHD4-02-002-A014-(ST)-MH Works - 1200 mm diameter** |  | 2026-08-04 | 2027-01-28 |  |  |  |  |  |  |  |  |  |  |  |  |  |  |  |  |
| RHD4CZ5A014ST3100 |  | Excavation and PC Blinding works for MH 1200 mm - (RD-A-1 /4)-Z5-A014-ST | 4d | 2026-08-04 A | 2027-01-14 | RHD4CZ5A014ST3101, RHD4ENSDZ5APPST110, RHD4ENMSST2000, RHD4ENMSST2010, RHD4PRSHLSTAGST1002, RHD4PRSHLSTAGST1008, RHD4PRSHLSTAGIRR1400, RHD4PRSHLSTAGIRR1300 | 90% | 2d | 2026-06-22 | 2026-06-25 | -196d | 1.02d | Skilled labor [34.85 h]; Unskilled Labor [34.85 h]; Equipment Opreator [55.76 h]; Excavator-Poclain [34.85 h]; Water Truck [3.48 h]; Dump Truck [17.42 h]; MH (1200mm Diameter) - ST - depth less than 1.5 [0.25 nr]; MH (1200mm Diameter) - ST - depth 1.50 - 2.5m [1.75 nr]; MH (1200mm Diameter) - ST - depth 2.51 - 3.5m [0.5 nr] | 26,195.25 | 23,575.72 | A014 | Z5 | CONS | ST | Excavation | bef |
| RHD4CZ5A014ST3200 |  | Installation of Base for MH 1200 mm - (RD-A-1 /4)-Z5-A014-ST | 4d | 2026-08-29 A | 2027-01-20 | RHD4CZ5A014ST3100, RHD4PRSHLSTAGST1604, RHD4CZ6A015RW3000, RHD4PRSHLSTAGLV1400 | 90% | 3d | 2026-06-27 | 2026-06-30 | -197.02d | 0d | Skilled labor [38.99 h]; Unskilled Labor [38.99 h]; Equipment Opreator [15.57 h]; Boom Truck [7.84 h]; Concrete Mixer Truck [7.84 h]; MH (1200mm Diameter) - ST - depth less than 1.5 [0.25 nr]; MH (1200mm Diameter) - ST - depth 1.50 - 2.5m [1.75 nr]; MH (1200mm Diameter) - ST - depth 2.51 - 3.5m [0.5 nr] | 26,195.25 | 23,575.72 | A014 | Z5 | CONS | ST | Installing Base | bef |
| RHD4CZ5A014ST3300 |  | MH Ring and C.Slab works and Backfilling works for MH 1200 mm - (RD-A-1 /4)-Z5-A014-ST | 4d | 2026-09-26 A | 2027-01-23 | RHD4CZ5A014ST3200, RHD4PRSHLDOSST1604, RHD4PRSHLSTAGSL1400 | 50% | 2d | 2026-10-01 | 2026-10-05 | -197.02d | 0d | Skilled labor [38.99 h]; Unskilled Labor [38.99 h]; Equipment Opreator [27.33 h]; Boom Truck [15.57 h]; Concrete Mixer Truck [11.76 h]; MH (1200mm Diameter) - ST - depth less than 1.5 [0.35 nr]; MH (1200mm Diameter) - ST - depth 1.50 - 2.5m [2.45 nr]; MH (1200mm Diameter) - ST - depth 2.51 - 3.5m [0.7 nr] | 36,673.35 | 18,336.67 | A014 | Z5 | CONS | ST | Installing Rings | bef |
| RHD4CZ5A014ST3500 |  | Finishing, Benching, Testing works for MH 1200 mm - (RD-A-1 /4)-Z5-A014-ST | 4d | 2027-01-20 | 2027-01-24 | RHD4CZ5A014ST3502 |  |  |  |  | -195d | 0d | Skilled labor [34.85 h]; Unskilled Labor [69.7 h]; Plumber [34.85 h]; Equipment Opreator [6.97 h]; Water Truck [6.97 h]; MH (1200mm Diameter) - ST - depth less than 1.5 [0.1 nr]; MH (1200mm Diameter) - ST - depth 1.50 - 2.5m [0.7 nr]; MH (1200mm Diameter) - ST - depth 2.51 - 3.5m [0.2 nr] | 10,478.1 |  | A014 | Z5 | CONS | ST | Benching | bef |
| RHD4CZ5A014ST3400 |  | Steel Cover for MH 1200 mm - (RD-A-1 /4)-Z5-A014-ST | 4d | 2027-01-25 | 2027-01-28 | RHD4CZ5A014ST3300, RHD4PRSHLDOSST1704, RHD4PRSHLSTAGST1704, RHD4CZ5A014ST3401, RHD4CZ5A014ST3500 |  |  |  |  | -195d | 0d | Skilled labor [36.26 h]; Unskilled Labor [72.64 h]; Equipment Opreator [7.3 h]; Boom Truck [7.3 h]; MH (1200mm Diameter) - ST - depth less than 1.5 [0.05 nr]; MH (1200mm Diameter) - ST - depth 1.50 - 2.5m [0.35 nr]; MH (1200mm Diameter) - ST - depth 2.51 - 3.5m [0.1 nr] | 5,239.05 |  | A014 | Z5 | CONS | ST | Steel Cover | bef |
|  | 3558 | **RHD4-02-002-A014-(ST)-GRP Pipes - 1500 mm diameter** |  | 2026-08-04 | 2027-01-25 |  |  |  |  |  |  |  |  |  |  |  |  |  |  |  |  |
| RHD4CZ5A014ST1111 |  | Excavation works for GRP Pipe Line 1500 mm - (RD-A-1 /4)-Z5-A014-ST | 2d | 2026-08-04 A | 2026-09-04 A | RHD4CZ5A014ST3202, RHD4CZ5A014ST3201, RHD4CZ5A014ST3200, RHD4ENSDZ5APPST110, RHD4CZ5A014ST1506 | 100% |  | 2026-07-01 | 2026-07-02 |  |  | Skilled labor [15.68 h]; Unskilled Labor [15.68 h]; Equipment Opreator [18.73 h]; Excavator-Poclain [15.68 h]; Dump Truck [3.16 h]; GRP (1500mm Diameter) - ST - Depth less than 2.5 m [4.06 m]; GRP (1500mm Diameter) - ST - Depth: 2.51m - 3.5m [12.87 m]; GRP (1500mm Diameter) - ST - Depth: 3.51m - 4.5m [16.4 m]; GRP (1500mm Diameter) - ST - Depth: 4.51m - 5.5m | 75,170.54 | 75,170.54 | A014 | Z5 | CONS | ST | Excavation | bef |
| RHD4CZ5A014ST1211 |  | Bedding works for GRP Pipe Line 1500 mm - (RD-A-1 /4)-Z5-A014-ST | 2d | 2026-08-06 A | 2026-09-06 A | RHD4CZ5A014ST1111 | 100% |  | 2026-07-04 | 2026-07-05 |  |  | Skilled labor [15.68 h]; Unskilled Labor [31.26 h]; Equipment Opreator [31.26 h]; Excavator-Poclain [15.68 h]; Dump Truck [15.68 h]; GRP (1500mm Diameter) - ST - Depth less than 2.5 m [1.35 m]; GRP (1500mm Diameter) - ST - Depth: 2.51m - 3.5m [4.29 m]; GRP (1500mm Diameter) - ST - Depth: 3.51m - 4.5m [5.47 m]; GRP (1500mm Diameter) - ST - Depth: 4.51m - 5.5m | 25,057.49 | 25,057.49 | A014 | Z5 | CONS | ST | Bedding | bef |
| RHD4CZ5A014ST1311 |  | Installing for GRP Pipe Line 1500 mm - (RD-A-1 /4)-Z5-A014-ST | 2d | 2026-08-08 A | 2026-09-07 A | RHD4CZ5A014ST1211, RHD4CZ5A014ST3302, RHD4CZ5A014ST3301, RHD4CZ5A014ST3300, RHD4PRSHLSTAGST1004 | 100% |  | 2026-07-06 | 2026-07-07 |  |  | Unskilled Labor [18.95 h]; Plumber [9.47 h]; GRP (1500mm Diameter) - ST - Depth less than 2.5 m [10.83 m]; GRP (1500mm Diameter) - ST - Depth: 2.51m - 3.5m [34.32 m]; GRP (1500mm Diameter) - ST - Depth: 3.51m - 4.5m [43.72 m]; GRP (1500mm Diameter) - ST - Depth: 4.51m - 5.5m | 200,430.77 | 200,430.77 | A014 | Z5 | CONS | ST | Installation | bef |
| RHD4CZ5A014ST1511 |  | Backfilling and warning tape works for GRP Pipe Line 1500 mm - (RD-A-1 /4)-Z5-A014-ST | 2d | 2026-09-07 A | 2026-09-08 A | RHD4CZ5A014ST1411, RHD4CZ5A014ST1504 | 100% |  | 2026-07-11 | 2026-07-12 |  |  | Skilled labor [15.68 h]; Unskilled Labor [31.26 h]; Equipment Opreator [31.26 h]; Excavator-Poclain [15.68 h]; Dump Truck [15.68 h]; GRP (1500mm Diameter) - ST - Depth less than 2.5 m [5.41 m]; GRP (1500mm Diameter) - ST - Depth: 2.51m - 3.5m [17.16 m]; GRP (1500mm Diameter) - ST - Depth: 3.51m - 4.5m [21.86 m]; GRP (1500mm Diameter) - ST - Depth: 4.51m - 5.5m | 100,204.67 | 100,204.67 | A014 | Z5 | CONS | ST | Backfilling | bef |
| RHD4CZ5A014ST1411 |  | Primary Test for GRP Pipe Line 1500 mm - (RD-A-1 /4)-Z5-A014-ST | 2d | 2027-01-23 | 2027-01-25 | RHD4CZ5A014ST1311 |  |  |  |  | -176.02d | 0d | Unskilled Labor [8.49 h]; Plumber [8.49 h]; Equipment Opreator [8.49 h]; Water Truck [8.49 h]; GRP (1500mm Diameter) - ST - Depth less than 2.5 m [5.41 m]; GRP (1500mm Diameter) - ST - Depth: 2.51m - 3.5m [17.16 m]; GRP (1500mm Diameter) - ST - Depth: 3.51m - 4.5m [21.86 m]; GRP (1500mm Diameter) - ST - Depth: 4.51m - 5.5m | 100,204.67 |  | A014 | Z5 | CONS | ST | Primary Test | bef |

| ID | WBS | Activity | Duration | Start | Finish | Predecessors | Complete | Planned start | Planned finish | Total float | Free float | Resources | Cost | Actual cost | RDH4-01-001-Road and Block Names-1 | RDH4-01-001-Zones-1 | RDH4-01-001-Phases-1 | RDH4-01-001-Networks-1 | RDH4-01-001-Work Method-1 | RDH4-01-001-MENEM |
| --- | --- | --- | --- | --- | --- | --- | --- | --- | --- | --- | --- | --- | --- | --- | --- | --- | --- | --- | --- | --- |
|  | 3555 | **RHD4-02-002-A014-(ST)-GRP Pipes - 1200 mm diameter** |  |  |  |  |  |  |  |  |  |  |  |  |  |  |  |  |  |  |
|  | 3554 | **RHD4-02-002-A014-(ST)-GRP Pipes - 1100 mm diameter** |  |  |  |  |  |  |  |  |  |  |  |  |  |  |  |  |  |  |
|  | 3550 | **RHD4-02-002-A014-(ST)-GRP Pipes - 700 mm diameter** |  | 2026-08-06 | 2027-01-23 |  |  |  |  |  |  |  |  |  |  |  |  |  |  |  |
| RHD4CZ5A014ST1103 |  | Excavation works for GRP Pipe Line 700 mm - (RD-A-1 /4)-Z5-A014-ST | 3d | 2026-08-06 A | 2026-09-04 A | RHD4ENSDZ5APPST110, RHD4CZ5A014ST1111 | 100% | 2026-07-04 | 2026-07-06 |  |  | Skilled labor [31.04 h]; Unskilled Labor [31.04 h]; Equipment Opreator [37.24 h]; Excavator-Poclain [31.04 h]; Dump Truck [6.21 h]; GRP (700mm Diameter) - ST - Depth less than 1.5 m [26.68 m]; GRP (700mm Diameter) - ST - Depth: 1.51m - 2.5m [23.23 m]; GRP (700mm Diameter) - ST - Depth: 2.51m - 3.5m [14.78 m] | 41,596.31 | 41,596.31 | A014 | Z5 | CONS | ST | Excavation | bef |
| RHD4CZ5A014ST1203 |  | Bedding works for GRP Pipe Line 700 mm - (RD-A-1 /4)-Z5-A014-ST | 3d | 2026-08-09 A | 2026-09-05 A | RHD4CZ5A014ST1103 | 100% | 2026-07-07 | 2026-07-09 |  |  | Skilled labor [31.04 h]; Unskilled Labor [62.18 h]; Equipment Opreator [62.18 h]; Excavator-Poclain [31.04 h]; Dump Truck [31.04 h]; GRP (700mm Diameter) - ST - Depth less than 1.5 m [13.34 m]; GRP (700mm Diameter) - ST - Depth: 1.51m - 2.5m [7.74 m]; GRP (700mm Diameter) - ST - Depth: 2.51m - 3.5m [4.93 m] | 16,329.82 | 16,329.82 | A014 | Z5 | CONS | ST | Bedding | bef |
| RHD4CZ5A014ST1303 |  | Installing for GRP Pipe Line 700 mm - (RD-A-1 /4)-Z5-A014-ST | 2d | 2026-08-11 A | 2026-09-06 A | RHD4CZ5A014ST1203, RHD4PRSHLSTAGST1004, RHD4PRSHLDOSST1604, RHD4PRSHLPOST1000, RHD4PRSHLDOSST1004 | 100% | 2026-07-11 | 2026-07-12 |  |  | Unskilled Labor [31.04 h]; Plumber [15.57 h]; GRP (700mm Diameter) - ST - Depth less than 1.5 m [120.08 m]; GRP (700mm Diameter) - ST - Depth: 1.51m - 2.5m [61.96 m]; GRP (700mm Diameter) - ST - Depth: 2.51m - 3.5m [39.4 m] | 138,028.84 | 138,028.84 | A014 | Z5 | CONS | ST | Installation | bef |
| RHD4CZ5A014ST1503 |  | Backfilling and warning tape works for GRP Pipe Line 700 mm - (RD-A-1 /4)-Z5-A014-ST | 3d | 2026-08-13 A | 2026-10-08 A | RHD4CZ5A014ST1403 | 100% | 2026-07-15 | 2026-07-18 |  |  | Skilled labor [31.04 h]; Unskilled Labor [62.18 h]; Equipment Opreator [62.18 h]; Excavator-Poclain [31.04 h]; Dump Truck [31.04 h]; GRP (700mm Diameter) - ST - Depth less than 1.5 m [53.37 m]; GRP (700mm Diameter) - ST - Depth: 1.51m - 2.5m [30.98 m]; GRP (700mm Diameter) - ST - Depth: 2.51m - 3.5m [19.7 m] | 65,319.24 | 65,319.24 | A014 | Z5 | CONS | ST | Backfilling | bef |
| RHD4CZ5A014ST1403 |  | Primary Test for GRP Pipe Line 700 mm - (RD-A-1 /4)-Z5-A014-ST | 2d | 2027-01-20 | 2027-01-23 | RHD4CZ5A014ST1303 |  |  |  | -167.02d | 0d | Unskilled Labor [15.57 h]; Plumber [15.57 h]; Equipment Opreator [15.57 h]; Water Truck [15.57 h]; GRP (700mm Diameter) - ST - Depth less than 1.5 m [53.37 m]; GRP (700mm Diameter) - ST - Depth: 1.51m - 2.5m [30.98 m]; GRP (700mm Diameter) - ST - Depth: 2.51m - 3.5m [19.7 m] | 65,319.24 |  | A014 | Z5 | CONS | ST | Primary Test | bef |
|  | 3549 | **RHD4-02-002-A014-(ST)-GRP Pipes - 600 mm diameter** |  | 2026-08-05 | 2027-01-23 |  |  |  |  |  |  |  |  |  |  |  |  |  |  |  |
| RHD4CZ5A014ST1102 |  | Excavation works for GRP Pipe Line 600 mm - (RD-A-1 /4)-Z5-A014-ST | 2d | 2026-08-05 A | 2026-08-06 A | RHD4CZ5A014ST1103, RHD4ENSDZ5APPST110 | 100% | 2026-07-07 | 2026-07-08 |  |  | Skilled labor [17.86 h]; Unskilled Labor [17.86 h]; Equipment Opreator [21.45 h]; Excavator-Poclain [17.86 h]; Dump Truck [3.59 h]; GRP (600mm Diameter) - ST - Depth less than 1.5 m [7.81 m]; GRP (600mm Diameter) - ST - Depth: 1.51m - 2.5m [29.97 m]; GRP (600mm Diameter) - ST - Depth: 2.51m - 3.5m | 17,302.16 | 17,302.16 | A014 | Z5 | CONS | ST | Excavation | bef |
| RHD4CZ5A014ST1202 |  | Bedding works for GRP Pipe Line 600 mm - (RD-A-1 /4)-Z5-A014-ST | 2d | 2026-08-08 A | 2026-08-09 A | RHD4CZ5A014ST1102 | 100% | 2026-07-09 | 2026-07-11 |  |  | Skilled labor [17.86 h]; Unskilled Labor [35.83 h]; Equipment Opreator [35.83 h]; Excavator-Poclain [17.86 h]; Dump Truck [17.86 h]; GRP (600mm Diameter) - ST - Depth less than 1.5 m [3.9 m]; GRP (600mm Diameter) - ST - Depth: 1.51m - 2.5m [9.99 m]; GRP (600mm Diameter) - ST - Depth: 2.51m - 3.5m | 6,326.25 | 6,326.25 | A014 | Z5 | CONS | ST | Bedding | bef |
| RHD4CZ5A014ST1302 |  | Installing for GRP Pipe Line 600 mm - (RD-A-1 /4)-Z5-A014-ST | 2d | 2026-08-10 A | 2026-08-11 A | RHD4CZ5A014ST1202, RHD4PRSHLSTAGST1004, RHD4PRSHLDOSST1604, RHD4PRSHLPOST1000, RHD4PRSHLDOSST1004 | 100% | 2026-07-12 | 2026-07-13 |  |  | Unskilled Labor [35.83 h]; Plumber [17.86 h]; GRP (600mm Diameter) - ST - Depth less than 1.5 m [35.14 m]; GRP (600mm Diameter) - ST - Depth: 1.51m - 2.5m [79.92 m]; GRP (600mm Diameter) - ST - Depth: 2.51m - 3.5m | 52,308.14 | 52,308.14 | A014 | Z5 | CONS | ST | Installation | bef |
| RHD4CZ5A014ST1502 |  | Backfilling and warning tape works for GRP Pipe Line 600 mm - (RD-A-1 /4)-Z5-A014-ST | 2d | 2026-08-12 A | 2026-09-08 A | RHD4CZ5A014ST1402, RHD4CZ5A014ST1503 | 100% | 2026-07-19 | 2026-07-20 |  |  | Skilled labor [17.86 h]; Unskilled Labor [35.83 h]; Equipment Opreator [35.83 h]; Excavator-Poclain [17.86 h]; Dump Truck [17.86 h]; GRP (600mm Diameter) - ST - Depth less than 1.5 m [15.62 m]; GRP (600mm Diameter) - ST - Depth: 1.51m - 2.5m [39.96 m]; GRP (600mm Diameter) - ST - Depth: 2.51m - 3.5m | 25,313.62 | 25,313.62 | A014 | Z5 | CONS | ST | Backfilling | bef |
| RHD4CZ5A014ST1402 |  | Primary Test for GRP Pipe Line 600 mm - (RD-A-1 /4)-Z5-A014-ST | 2d | 2027-01-20 | 2027-01-23 | RHD4CZ5A014ST1302 |  |  |  | -167.02d | 0d | Unskilled Labor [17.86 h]; Plumber [17.86 h]; Equipment Opreator [17.86 h]; Water Truck [17.86 h]; GRP (600mm Diameter) - ST - Depth less than 1.5 m [15.62 m]; GRP (600mm Diameter) - ST - Depth: 1.51m - 2.5m [39.96 m]; GRP (600mm Diameter) - ST - Depth: 2.51m - 3.5m | 25,313.62 |  | A014 | Z5 | CONS | ST | Primary Test | bef |
|  | 3548 | **RHD4-02-002-A014-(ST)-GRP Pipes - 500 mm diameter** |  | 2026-08-06 | 2027-01-27 |  |  |  |  |  |  |  |  |  |  |  |  |  |  |  |
| RHD4CZ5A014ST1101 |  | Excavation works for GRP Pipe Line 500 mm - (RD-A-1 /4)-Z5-A014-ST | 2d | 2026-08-06 A | 2026-09-05 A | RHD4CZ5A014ST1102, RHD4ENSDZ5APPST110 | 100% | 2026-07-09 | 2026-07-11 |  |  | Skilled labor [10.78 h]; Unskilled Labor [10.78 h]; Equipment Opreator [12.96 h]; Excavator-Poclain [10.78 h]; Dump Truck [2.18 h]; GRP (500mm Diameter) - ST - Depth less than 1.5 m [9.86 m]; GRP (500mm Diameter) - ST - Depth: 1.51m - 2.5m [14.89 m] | 9,381.85 | 9,381.85 | A014 | Z5 | CONS | ST | Excavation | bef |
| RHD4CZ5A014ST1201 |  | Bedding works for GRP Pipe Line 500 mm - (RD-A-1 /4)-Z5-A014-ST | 2d | 2026-08-08 A | 2026-09-07 A | RHD4CZ5A014ST1101 | 100% | 2026-07-12 | 2026-07-13 |  |  | Skilled labor [10.78 h]; Unskilled Labor [21.6 h]; Equipment Opreator [21.6 h]; Excavator-Poclain [10.78 h]; Dump Truck [10.78 h]; GRP (500mm Diameter) - ST - Depth less than 1.5 m [4.93 m]; GRP (500mm Diameter) - ST - Depth: 1.51m - 2.5m [4.96 m] | 3,709.35 | 3,709.35 | A014 | Z5 | CONS | ST | Bedding | bef |
| RHD4CZ5A014ST1301 |  | Installing for GRP Pipe Line 500 mm - (RD-A-1 /4)-Z5-A014-ST | 2d | 2026-08-10 A | 2026-09-08 A | RHD4CZ5A014ST1201, RHD4PRSHLSTAGST1004, RHD4PRSHLDOSST1604, RHD4PRSHLPOST1000, RHD4PRSHLDOSST1004 | 100% | 2026-07-14 | 2026-07-15 |  |  | Unskilled Labor [21.6 h]; Plumber [10.78 h]; GRP (500mm Diameter) - ST - Depth less than 1.5 m [44.39 m]; GRP (500mm Diameter) - ST - Depth: 1.51m - 2.5m [39.7 m] | 31,439.95 | 31,439.95 | A014 | Z5 | CONS | ST | Installation | bef |
| RHD4CZ5A014ST1401 |  | Primary Test for GRP Pipe Line 500 mm - (RD-A-1 /4)-Z5-A014-ST | 2d | 2026-09-08 A | 2026-09-09 A | RHD4CZ5A014ST1301 | 100% | 2026-07-16 | 2026-07-18 |  |  | Unskilled Labor [10.78 h]; Plumber [10.78 h]; Equipment Opreator [10.78 h]; Water Truck [10.78 h]; GRP (500mm Diameter) - ST - Depth less than 1.5 m [19.73 m]; GRP (500mm Diameter) - ST - Depth: 1.51m - 2.5m [19.85 m] | 14,844.9 | 14,844.9 | A014 | Z5 | CONS | ST | Primary Test | bef |
| RHD4CZ5A014ST1501 |  | Backfilling and warning tape works for GRP Pipe Line 500 mm - (RD-A-1 /4)-Z5-A014-ST | 2d | 2027-01-25 | 2027-01-27 | RHD4CZ5A014ST1401, RHD4CZ5A014ST1511 |  |  |  | -176.02d | 0d | Skilled labor [10.78 h]; Unskilled Labor [21.6 h]; Equipment Opreator [21.6 h]; Excavator-Poclain [10.78 h]; Dump Truck [10.78 h]; GRP (500mm Diameter) - ST - Depth less than 1.5 m [19.73 m]; GRP (500mm Diameter) - ST - Depth: 1.51m - 2.5m [19.85 m] | 14,844.9 |  | A014 | Z5 | CONS | ST | Backfilling | bef |
|  | 3547 | **RHD4-02-002-A014-(ST)-GRP Pipes - 400 mm diameter** |  | 2026-08-06 | 2027-01-23 |  |  |  |  |  |  |  |  |  |  |  |  |  |  |  |
| RHD4CZ5A014ST1100 |  | Excavation works for GRP Pipe Line 400 mm - (RD-A-1 /4)-Z5-A014-ST | 2d | 2026-08-06 A | 2026-09-04 A | RHD4CZ5A014ST1101, RHD4ENSDZ5APPST110 | 100% | 2026-07-12 | 2026-07-13 |  |  | Skilled labor [9.04 h]; Unskilled Labor [9.04 h]; Equipment Opreator [10.78 h]; Excavator-Poclain [9.04 h]; Dump Truck [1.85 h]; GRP (400mm Diameter) - ST - Depth less than 1.5 m [18.19 m]; GRP (400mm Diameter) - ST - Depth: 1.51m - 2.5 m | 5,275.1 | 5,275.1 | A014 | Z5 | CONS | ST | Excavation | bef |
| RHD4CZ5A014ST1200 |  | Bedding works for GRP Pipe Line 400 mm - (RD-A-1 /4)-Z5-A014-ST | 2d | 2026-08-08 A | 2026-09-06 A | RHD4CZ5A014ST1100 | 100% | 2026-07-14 | 2026-07-15 |  |  | Skilled labor [8.39 h]; Unskilled Labor [16.8 h]; Equipment Opreator [16.8 h]; Excavator-Poclain [8.39 h]; Dump Truck [8.39 h]; GRP (400mm Diameter) - ST - Depth less than 1.5 m [9.1 m]; GRP (400mm Diameter) - ST - Depth: 1.51m - 2.5 m | 2,639 | 2,639 | A014 | Z5 | CONS | ST | Bedding | bef |
| RHD4CZ5A014ST1300 |  | Installing for GRP Pipe Line 400 mm - (RD-A-1 /4)-Z5-A014-ST | 2d | 2026-08-10 A | 2026-09-07 A | RHD4CZ5A014ST1200, RHD4PRSHLSTAGST1004, RHD4PRSHLDOSST1604, RHD4PRSHLPOST1000, RHD4PRSHLDOSST1004 | 100% | 2026-07-16 | 2026-07-18 |  |  | Unskilled Labor [22.87 h]; Plumber [11.43 h]; GRP (400mm Diameter) - ST - Depth less than 1.5 m [81.87 m]; GRP (400mm Diameter) - ST - Depth: 1.51m - 2.5 m | 23,742.3 | 23,742.3 | A014 | Z5 | CONS | ST | Installation | bef |
| RHD4CZ5A014ST1500 |  | Backfilling and warning tape works for GRP Pipe Line 400 mm - (RD-A-1 /4)-Z5-A014-ST | 2d | 2026-08-12 A | 2026-09-08 A | RHD4CZ5A014ST1400, RHD4CZ5A014ST1501 | 100% | 2026-07-21 | 2026-07-22 |  |  | Skilled labor [9.91 h]; Unskilled Labor [19.82 h]; Equipment Opreator [19.82 h]; Excavator-Poclain [9.91 h]; Dump Truck [9.91 h]; GRP (400mm Diameter) - ST - Depth less than 1.5 m [36.39 m]; GRP (400mm Diameter) - ST - Depth: 1.51m - 2.5 m | 10,553.1 | 10,553.1 | A014 | Z5 | CONS | ST | Backfilling | bef |
| RHD4CZ5A014ST1400 |  | Primary Test for GRP Pipe Line 400 mm - (RD-A-1 /4)-Z5-A014-ST | 2d | 2027-01-20 | 2027-01-23 | RHD4CZ5A014ST1300 |  |  |  | -172.02d | 4d | Unskilled Labor [7.2 h]; Plumber [7.2 h]; Equipment Opreator [7.2 h]; Water Truck [7.2 h]; GRP (400mm Diameter) - ST - Depth less than 1.5 m [36.39 m]; GRP (400mm Diameter) - ST - Depth: 1.51m - 2.5 m | 10,553.1 |  | A014 | Z5 | CONS | ST | Primary Test | bef |

| ID | WBS | Activity | Duration | Start | Finish | Predecessors | Complete | Remaining | Planned start | Planned finish | Total float | Free float | Resources | Cost | Actual cost | RDH4-01-001-Road and Block Names-1 | RDH4-01-001-Zones-1 | RDH4-01-001-Phases-1 | RDH4-01-001-Networks-1 | RDH4-01-001-Work Method-1 | RDH4-01-001-MENEM |
| --- | --- | --- | --- | --- | --- | --- | --- | --- | --- | --- | --- | --- | --- | --- | --- | --- | --- | --- | --- | --- | --- |
|  | 3562 | **RHD4-02-002-A014-(ST)-UPVC Pipes - 400 mm diameter** |  | 2026-08-17 | 2027-01-25 |  |  |  |  |  |  |  |  |  |  |  |  |  |  |  |  |
| RHD4CZ5A014ST2101 |  | Excavation works for UPVC Pipe Line 400 mm - (RD-A-1 /4)-Z5-A014-ST | 2d | 2026-08-17 A | 2026-08-18 A | RHD4CZ5A014ST3300, RHD4CZ5A014ST3301, RHD4ENSDZ5APPST110 | 100% |  | 2026-07-06 | 2026-07-07 |  |  | Skilled labor [1.31 h]; Unskilled Labor [1.31 h]; Equipment Opreator [1.6 h]; Excavator-Poclain [1.31 h]; Dump Truck [0.22 h]; UPVC (400mm Diameter) - ST - Depth less than 1.5 [2.46 m]; UPVC (400mm Diameter) - ST - Depth: 1.51m - 2.5m | 1,111.92 | 1,111.92 | A014 | Z5 | CONS | ST | Excavation | bef |
| RHD4CZ5A014ST2201 |  | Bedding works for UPVC Pipe Line 400 mm - (RD-A-1 /4)-Z5-A014-ST | 2d | 2026-08-20 A | 2026-08-22 A | RHD4CZ5A014ST2101 | 100% |  | 2026-07-08 | 2026-07-09 |  |  | Skilled labor [1.31 h]; Unskilled Labor [2.72 h]; Equipment Opreator [2.72 h]; Excavator-Poclain [1.31 h]; Dump Truck [1.31 h]; UPVC (400mm Diameter) - ST - Depth less than 1.5 [1.23 m]; UPVC (400mm Diameter) - ST - Depth: 1.51m - 2.5m | 555.96 | 555.96 | A014 | Z5 | CONS | ST | Bedding | bef |
| RHD4CZ5A014ST2301 |  | Installing for UPVC Pipe Line 400 mm - (RD-A-1 /4)-Z5-A014-ST | 2d | 2026-08-22 A | 2026-08-23 A | RHD4CZ5A014ST2201, RHD4PRSHLDOSST1104, RHD4PRSHLSTAGST1104 | 100% |  | 2026-07-11 | 2026-07-12 |  |  | Unskilled Labor [2.72 h]; Plumber [1.31 h]; UPVC (400mm Diameter) - ST - Depth less than 1.5 [11.08 m]; UPVC (400mm Diameter) - ST - Depth: 1.51m - 2.5m | 5,008.16 | 5,008.16 | A014 | Z5 | CONS | ST | Installation | bef |
| RHD4CZ5A014ST2501 |  | Backfilling and warning tape works for UPVC Pipe Line 400 mm - (RD-A-1 /4)-Z5-A014-ST | 2d | 2026-09-01 A | 2026-09-02 A | RHD4CZ5A014ST2401, RHD4CZ5A014ST6100 | 100% |  | 2026-07-23 | 2026-07-25 |  |  | Skilled labor [1.31 h]; Unskilled Labor [2.72 h]; Equipment Opreator [2.72 h]; Excavator-Poclain [1.31 h]; Dump Truck [1.31 h]; UPVC (400mm Diameter) - ST - Depth less than 1.5 [4.93 m]; UPVC (400mm Diameter) - ST - Depth: 1.51m - 2.5m | 2,228.36 | 2,228.36 | A014 | Z5 | CONS | ST | Backfilling | bef |
| RHD4CZ5A014ST2401 |  | Primary Test for UPVC Pipe Line 400 mm - (RD-A-1 /4)-Z5-A014-ST | 2d | 2027-01-23 | 2027-01-25 | RHD4CZ5A014ST2301 |  |  |  |  | -176.02d | 1d | Unskilled Labor [1.31 h]; Plumber [1.31 h]; Equipment Opreator [1.31 h]; Water Truck [1.31 h]; UPVC (400mm Diameter) - ST - Depth less than 1.5 [4.93 m]; UPVC (400mm Diameter) - ST - Depth: 1.51m - 2.5m | 2,228.36 |  | A014 | Z5 | CONS | ST | Primary Test | bef |
|  | 3561 | **RHD4-02-002-A014-(ST)-UPVC Pipes - 300 mm diameter** |  | 2026-08-04 | 2027-02-01 |  |  |  |  |  |  |  |  |  |  |  |  |  |  |  |  |
| RHD4CZ5A014ST2100 |  | Excavation works for UPVC Pipe Line 300 mm - (RD-A-1 /4)-Z5-A014-ST | 6d | 2026-08-04 A | 2027-01-24 | RHD4CZ5A014ST2101, RHD4CZ5A014ST3300, RHD4CZ5A014ST3301, RHD4ENSDZ5APPST110 | 66% | 1d | 2026-07-08 | 2026-07-14 | -177.02d | 0d | Skilled labor [59.46 h]; Unskilled Labor [59.46 h]; Equipment Opreator [71.33 h]; Excavator-Poclain [59.46 h]; Dump Truck [11.87 h]; UPVC (300mm Diameter) - ST - Depth less than 1.5 [128.97 m]; UPVC (300mm Diameter) - ST - Depth: 1.51m - 2.5m | 39,077.91 | 32,564.92 | A014 | Z5 | CONS | ST | Excavation | bef |
| RHD4CZ5A014ST2200 |  | Bedding works for UPVC Pipe Line 300 mm - (RD-A-1 /4)-Z5-A014-ST | 5d | 2026-08-06 A | 2027-01-25 | RHD4CZ5A014ST2100, RHD4CZ5A014ST2201 | 74% | 1d | 2026-07-15 | 2026-07-20 | -177.02d | 0d | Skilled labor [52.27 h]; Unskilled Labor [104.55 h]; Equipment Opreator [104.55 h]; Excavator-Poclain [52.27 h]; Dump Truck [52.27 h]; UPVC (300mm Diameter) - ST - Depth less than 1.5 [64.48 m]; UPVC (300mm Diameter) - ST - Depth: 1.51m - 2.5m | 19,537.44 | 15,629.95 | A014 | Z5 | CONS | ST | Bedding | bef |
| RHD4CZ5A014ST2300 |  | Installing for UPVC Pipe Line 300 mm - (RD-A-1 /4)-Z5-A014-ST | 6d | 2026-08-08 A | 2027-01-26 | RHD4CZ5A014ST2200, RHD4CZ5A014ST2301, RHD4PRSHLDOSST1104, RHD4PRSHLSTAGST1104 | 76% | 1d | 2026-07-21 | 2026-07-27 | -177.02d | 0d | Unskilled Labor [118.92 h]; Plumber [59.46 h]; UPVC (300mm Diameter) - ST - Depth less than 1.5 [580.35 m]; UPVC (300mm Diameter) - ST - Depth: 1.51m - 2.5m | 175,846.05 | 146,538.38 | A014 | Z5 | CONS | ST | Installation | bef |
| RHD4CZ5A014ST2500 |  | Backfilling and warning tape works for UPVC Pipe Line 300 mm - (RD-A-1 /4)-Z5-A014-ST | 7d | 2026-08-10 A | 2027-02-01 | RHD4CZ5A014ST2400, RHD4CZ5A014ST2501, RHD4CZ5A014ST6100, RHD4CZ5A014ST5401 | 74% | 1d | 2026-08-02 | 2026-08-09 | -177.02d | 0d | Skilled labor [70.24 h]; Unskilled Labor [140.49 h]; Equipment Opreator [140.49 h]; Excavator-Poclain [70.24 h]; Dump Truck [70.24 h]; UPVC (300mm Diameter) - ST - Depth less than 1.5 [257.93 m]; UPVC (300mm Diameter) - ST - Depth: 1.51m - 2.5m | 78,152.79 | 66,988.11 | A014 | Z5 | CONS | ST | Backfilling | bef |
| RHD4CZ5A014ST2400 |  | Primary Test for UPVC Pipe Line 300 mm - (RD-A-1 /4)-Z5-A014-ST | 4d | 2027-01-26 | 2027-01-31 | RHD4CZ5A014ST2300, RHD4CZ5A014ST2401 |  |  |  |  | -177.02d | 0d | Unskilled Labor [37.9 h]; Plumber [37.9 h]; Equipment Opreator [37.9 h]; Water Truck [37.9 h]; UPVC (300mm Diameter) - ST - Depth less than 1.5 [257.93 m]; UPVC (300mm Diameter) - ST - Depth: 1.51m - 2.5m | 78,152.79 |  | A014 | Z5 | CONS | ST | Primary Test | bef |
|  | 3566 | **RHD4-02-002-A014-(ST)-Discharge Chamber - 1500*1200 mm** |  | 2027-01-20 | 2027-01-30 |  |  |  |  |  |  |  |  |  |  |  |  |  |  |  |  |
| RHD4CZ5A014ST5101 |  | Excavation+Bedding for Discharge Chamber With GRP 800 mm Dia - 1500*1200 mm - (RD-A-1 /4)-Z5-A014-ST | 2d | 2027-01-20 | 2027-01-23 | RHD4CZ5A014ST1300, RHD4ENSDZ5APPST110, RHD4ENMSEW2000, RHD4ENMSEW2010, RHD4ENSDZ7APPEW100 SS |  |  |  |  | -177.02d | 0d | Skilled labor [5.45 h]; Unskilled Labor [5.45 h]; Equipment Opreator [1.09 h]; Excavator-Poclain [0.54 h]; Dump Truck [0.54 h]; Discharge chamber, size 1500*2000mm - ST [0.25 nr] | 4,288 |  | A014 | Z5 | CONS | ST | Excavation and Bedding | bef |
| RHD4CZ5A014ST5201 |  | PC works for Discharge Chamber With GRP 800 mm Dia - 1500*1200 mm - (RD-A-1 /4)-Z5-A014-ST | 2d | 2027-01-23 | 2027-01-25 | RHD4CZ5A014ST5101 |  |  |  |  | -176.02d | 0d | Skilled labor [5.45 h]; Unskilled Labor [10.89 h]; Equipment Opreator [1.09 h]; Boom Truck [1.09 h]; Discharge chamber, size 1500*2000mm - ST [0.1 nr] | 1,715.2 |  | A014 | Z5 | CONS | ST | PC Works | bef |
| RHD4CZ5A014ST5301 |  | Installation for Discharge Chamber With GRP 800 mm Dia - 1500*1200 mm - (RD-A-1 /4)-Z5-A014-ST | 2d | 2027-01-25 | 2027-01-27 | RHD4CZ5A014ST5201 |  |  |  |  | -176.02d | 0d | Skilled labor [5.45 h]; Unskilled Labor [10.89 h]; Equipment Opreator [1.09 h]; Boom Truck [1.09 h]; Discharge chamber, size 1500*2000mm - ST [0.55 nr] | 9,433.6 |  | A014 | Z5 | CONS | ST | Installation | bef |
| RHD4CZ5A014ST5401 |  | Backfilling works for Discharge Chamber With GRP 800 mm Dia - 1500*1200 mm - (RD-A-1 /4)-Z5-A014-ST | 2d | 2027-01-27 | 2027-01-30 | RHD4CZ5A014ST5301, RHD4CZ5A014ST1500 |  |  |  |  | -176.02d | 1d | Skilled labor [5.45 h]; Unskilled Labor [10.89 h]; Equipment Opreator [1.09 h]; Boom Truck [1.09 h]; Discharge chamber, size 1500*2000mm - ST [0.1 nr] | 1,715.2 |  | A014 | Z5 | CONS | ST | Backfilling Works | bef |
|  | 3567 | **RHD4-02-002-A014-(ST)-HDPE Force Main Pipeline - 200 mm diameter** |  | 2027-01-23 | 2027-02-03 |  |  |  |  |  |  |  |  |  |  |  |  |  |  |  |  |
| RHD4CZ5A014ST9100 |  | Excavation works for HDPE Force Main Pipeline 200 mm - (RD-A-1 /4)-Z5-A014-ST | 2d | 2027-01-23 | 2027-01-25 | RHD4ENSDZ5APPST110, RHD4CZ5A014ST5101, RHD4CZ5A014RD3100 |  |  |  |  | -177.02d | 0d | Skilled labor [0.98 h]; Unskilled Labor [0.98 h]; Equipment Opreator [1.42 h]; Excavator-Poclain [0.98 h]; Dump Truck [0.44 h]; HDPE (200mm Diameter) - ST - in trenches depth less than 1.5m [2.3 m] | 420.9 |  | A014 | Z5 | CONS | ST | Excavation | bef |
| RHD4CZ5A014ST9200 |  | Bedding works for HDPE Force Main Pipeline 200 mm - (RD-A-1 /4)-Z5-A014-ST | 2d | 2027-01-25 | 2027-01-27 | RHD4CZ5A014ST9100 |  |  |  |  | -177.02d | 0d | Skilled labor [0.87 h]; Unskilled Labor [1.6 h]; Equipment Opreator [1.6 h]; Bobcat [0.87 h]; Dump Truck [0.87 h]; HDPE (200mm Diameter) - ST - in trenches depth less than 1.5m [1.15 m] | 210.45 |  | A014 | Z5 | CONS | ST | Bedding | bef |
| RHD4CZ5A014ST9300 |  | Installing for HDPE Force Main Pipeline 200 mm - (RD-A-1 /4)-Z5-A014-ST | 2d | 2027-01-27 | 2027-01-30 | RHD4CZ5A014ST9200, RHD4CZ7C02ST4600 |  |  |  |  | -177.02d | 0d | Unskilled Labor [1.96 h]; Plumber [0.98 h]; HDPE (200mm Diameter) - ST - in trenches depth less than 1.5m [10.35 m] | 1,894.05 |  | A014 | Z5 | CONS | ST | Installation | bef |
| RHD4CZ5A014ST9400 |  | Primary Test for HDPE Force Main Pipeline 200 mm - (RD-A-1 /4)-Z5-A014-ST | 2d | 2027-01-30 | 2027-02-01 | RHD4CZ5A014ST9300 |  |  |  |  | -177.02d | 0d | Unskilled Labor [0.54 h]; Plumber [0.54 h]; Equipment Opreator [0.54 h]; Water Truck [0.54 h]; HDPE (200mm Diameter) - ST - in trenches depth less than 1.5m [4.6 m] | 841.8 |  | A014 | Z5 | CONS | ST | Primary Test | bef |
| RHD4CZ5A014ST9500 |  | Backfilling and warning tape works for HDPE Force Main Pipeline 200 mm - (RD-A-1 /4)-Z5-A014-ST | 2d | 2027-02-01 | 2027-02-03 | RHD4CZ5A014ST9400 |  |  |  |  | -177.02d | 0d | Skilled labor [1.31 h]; Unskilled Labor [2.5 h]; Equipment Opreator [1.85 h]; Bobcat [1.31 h]; Dump Truck [0.65 h]; HDPE (200mm Diameter) - ST - in trenches depth less than 1.5m [4.6 m] | 841.8 |  | A014 | Z5 | CONS | ST | Backfilling | bef |
|  | 3569 | **RHD4-02-002-A014-(ST)-Concrete Encasement** |  | 2026-09-05 | 2027-01-27 |  |  |  |  |  |  |  |  |  |  |  |  |  |  |  |  |
| RHD4CZ5A014ST6100 |  | Pipe Encasement for Storm Pipelines - (RD-A-1 /4)-Z5-A014-ST | 2d | 2026-09-05 A | 2027-01-27 | RHD4CZ5A014ST2201, RHD4CZ5A014ST2200 | 50% | 2d | 2026-07-21 | 2026-07-22 | -174.02d | 0d | Skilled labor [7.84 h]; Unskilled Labor [7.84 h]; Equipment Opreator [8.71 h]; Concrete Mixer Truck [0.8 h]; Dump Truck [7.84 h]; Pipe Encasement - ST [144.67 m3] | 73,203.02 |  | A014 | Z5 | CONS | ST | Pipe Encasement | bef |

| ID | WBS | Activity | Duration | Start | Finish | Predecessors | Complete | Remaining | Planned start | Planned finish | Total float | Free float | Resources | Cost | Actual cost | RDH4-01-001-Road and Block Names-1 | RDH4-01-001-Zones-1 | RDH4-01-001-Phases-1 | RDH4-01-001-Networks-1 | RDH4-01-001-Work Method-1 | RDH4-01-001-MENEM |
| --- | --- | --- | --- | --- | --- | --- | --- | --- | --- | --- | --- | --- | --- | --- | --- | --- | --- | --- | --- | --- | --- |
|  | 3570 | **RHD4-02-002-Z5-A014-Catch Basin - ST** |  | 2026-08-04 | 2027-02-20 |  |  |  |  |  |  |  |  |  |  |  |  |  |  |  |  |
|  | 3571 | **RHD4-02-002-A014-(ST)-Single Catch Basin Works** |  | 2026-08-04 | 2027-02-17 |  |  |  |  |  |  |  |  |  |  |  |  |  |  |  |  |
| RHD4CZ5A014ST7100 |  | Excavation works for Single Catch Basin - (RD-A-1 /4)-Z5-A014-ST | 5d | 2026-08-04 A | 2026-09-04 A | RHD4CZ5A014ST3300, RHD4CZ5A014ST3301, RHD4ENSDZ5APPST110 | 100% |  | 2026-07-06 | 2026-07-11 |  |  | Skilled labor [54.45 h]; Unskilled Labor [108.9 h]; Equipment Opreator [81.68 h]; Excavator-Poclain [54.45 h]; Dump Truck [27.2 h]; Single Catch basin - ST [12.5 nr] | 46,637.5 | 46,637.5 | A014 | Z5 | CONS | ST | Excavation | bef |
| RHD4CZ5A014ST7200 |  | PC Blinding, Installation and Pipe connection for Single Catch Basin - (RD-A-1 /4)-Z5-A014-ST | 5d | 2026-08-06 A | 2026-09-06 A | RHD4CZ5A014ST7100 | 100% |  | 2026-07-12 | 2026-07-16 |  |  | Skilled labor [54.45 h]; Unskilled Labor [108.9 h]; Plumber [27.2 h]; Equipment Opreator [10.89 h]; Boom Truck [10.89 h]; Single Catch basin - ST [10 nr] | 37,310 | 37,310 | A014 | Z5 | CONS | ST | Installation & Pipe Connection | bef |
| RHD4CZ5A014ST7300 |  | Rings & C.Slab & Final Backfill for Single Catch Basin - (RD-A-1 /4)-Z5-A014-ST | 7d | 2026-09-07 A | 2027-01-31 | RHD4CZ5A014ST7200 | 50% | 7d | 2026-07-18 | 2026-07-25 | -197.02d | 0d | Skilled labor [68.06 h]; Unskilled Labor [136.13 h]; Equipment Opreator [81.68 h]; Boom Truck [13.6 h]; Bobcat [68.06 h]; Single Catch basin - ST [17.5 nr] | 65,292.5 |  | A014 | Z5 | CONS | ST | Rings | bef |
| RHD4CZ5A014ST7400 |  | Steel Cover for Single Catch Basin - (RD-A-1 /4)-Z5-A014-ST | 5d | 2027-01-31 | 2027-02-06 | RHD4CZ5A014ST7300, RHD4PRSHLDOSST1704 |  |  |  |  | -197.02d | 0d | Skilled labor [54.45 h]; Unskilled Labor [54.45 h]; Equipment Opreator [10.89 h]; Boom Truck [10.89 h]; Single Catch basin - ST [2.5 nr] | 9,327.5 |  | A014 | Z5 | CONS | ST | Steel Cover | bef |
| RHD4CZ5A014ST7500 |  | Finishing and Insulation works for Single Catch Basin - (RD-A-1 /4)-Z5-A014-ST | 10d | 2027-02-06 | 2027-02-17 | RHD4CZ5A014ST7400 |  |  |  |  | -197.02d | 0d | Skilled labor [108.9 h]; Unskilled Labor [217.81 h]; Equipment Opreator [21.78 h]; Boom Truck [21.78 h]; Single Catch basin - ST [7.5 nr] | 27,982.5 |  | A014 | Z5 | CONS | ST | Insulation | bef |
|  | 3572 | **RHD4-02-002-A014-(ST)-Double Catch Basin Works** |  | 2026-08-04 | 2027-02-20 |  |  |  |  |  |  |  |  |  |  |  |  |  |  |  |  |
| RHD4CZ5A014ST8100 |  | Excavation works for Double Catch Basin - (RD-A-1 /4)-Z5-A014-ST | 2d | 2026-08-04 A | 2026-08-06 A | RHD4CZ5A014ST3300, RHD4CZ5A014ST3301, RHD4ENSDZ5APPST110, RHD4CZ5A014ST7100 | 100% |  | 2026-07-12 | 2026-07-13 |  |  | Skilled labor [2.18 h]; Unskilled Labor [4.36 h]; Equipment Opreator [3.27 h]; Excavator-Poclain [2.18 h]; Dump Truck [1.09 h]; Double Catch basin - ST [0.25 nr] | 3,491.5 | 3,491.5 | A014 | Z5 | CONS | ST | Excavation | bef |
| RHD4CZ5A014ST8200 |  | PC Blinding, Installation and Pipe connection for Double Catch Basin - (RD-A-1 /4)-Z5-A014-ST | 2d | 2026-08-18 A | 2026-08-19 A | RHD4CZ5A014ST8100, RHD4CZ5A014ST7200 | 100% |  | 2026-07-18 | 2026-07-19 |  |  | Skilled labor [2.18 h]; Unskilled Labor [4.36 h]; Plumber [1.09 h]; Equipment Opreator [0.44 h]; Boom Truck [0.44 h]; Double Catch basin - ST [0.2 nr] | 2,793.2 | 2,793.2 | A014 | Z5 | CONS | ST | Installation & Pipe Connection | bef |
| RHD4CZ5A014ST8300 |  | Rings & C.Slab & Final Backfillfor Double Catch Basin - (RD-A-1 /4)-Z5-A014-ST | 2d | 2026-09-05 A | 2026-09-06 A | RHD4CZ5A014ST8200, RHD4PRSHLDOSST1304, RHD4CZ5A014ST7300, RHD4PRSHLSTAGST1304 | 100% |  | 2026-07-26 | 2026-07-27 |  |  | Skilled labor [2.72 h]; Unskilled Labor [5.45 h]; Equipment Opreator [3.27 h]; Boom Truck [0.54 h]; Bobcat [2.72 h]; Double Catch basin - ST [0.35 nr] | 4,888.1 | 4,888.1 | A014 | Z5 | CONS | ST | Rings | bef |
| RHD4CZ5A014ST8400 |  | Steel Cover for Double Catch Basin - (RD-A-1 /4)-Z5-A014-ST | 2d | 2027-01-31 | 2027-02-02 | RHD4CZ5A014ST8300, RHD4CZ5A014ST7400 SS, RHD4PRSHLDOSST1704 |  |  |  |  | -197.02d | 0d | Skilled labor [2.18 h]; Unskilled Labor [2.18 h]; Equipment Opreator [0.44 h]; Boom Truck [0.44 h]; Double Catch basin - ST [0.05 nr] | 698.3 |  | A014 | Z5 | CONS | ST | Steel Cover | bef |
| RHD4CZ5A014ST8500 |  | Finishing and Insulation works for Double Catch Basin - (RD-A-1 /4)-Z5-A014-ST | 2d | 2027-02-17 | 2027-02-20 | RHD4CZ5A014ST8400, RHD4CZ5A014ST7500 |  |  |  |  | -197.02d | 0d | Skilled labor [5.45 h]; Unskilled Labor [10.89 h]; Equipment Opreator [1.09 h]; Boom Truck [1.09 h]; Double Catch basin - ST [0.15 nr] | 2,094.9 |  | A014 | Z5 | CONS | ST | Insulation | bef |
|  | 3595 | **RHD4-02-002-Z5-A014-Sewage Network - SW** |  | 2026-08-11 | 2027-02-17 |  |  |  |  |  |  |  |  |  |  |  |  |  |  |  |  |
|  | 4361 | **RHD4-02-002-A014-(SW)-MH Works - 1200 mm diameter** |  | 2026-09-05 | 2027-02-17 |  |  |  |  |  |  |  |  |  |  |  |  |  |  |  |  |
| RHD4CZ5A014SW3100 |  | Excavation and PC Blinding works for MH 1200 mm - (RD-A-1 /4)-Z5-A014-SW | 3d | 2026-09-05 A | 2027-02-04 | RHD4CZ5A014SW2100, RHD4CZ5A014ST2500 | 80% | 3d | 2026-08-12 | 2026-08-15 | -148.02d | 0d | Skilled labor [23.63 h]; Unskilled Labor [23.63 h]; Equipment Opreator [37.79 h]; Excavator-Poclain [23.63 h]; Water Truck [2.4 h]; Dump Truck [11.76 h]; MH (1200mm Diameter) - SW - depth 0 - 1.5m [0.5 nr]; MH (1200mm Diameter) - SW - depth 1.51 - 2.5m [0.5 nr]; MH (1200mm Diameter) - SW - depth 2.51 - 3.5m [0.25 nr] | 11,921.5 |  | A014 | Z5 | CONS | SW | Excavation | bef |
| RHD4CZ5A014SW3200 |  | Installation of Base for MH 1200 mm - (RD-A-1 /4)-Z5-A014-SW | 3d | 2026-09-06 A | 2027-02-08 | RHD4CZ5A014SW3100 | 80% | 3d | 2026-08-16 | 2026-08-18 | -148.02d | 0d | Skilled labor [32.67 h]; Unskilled Labor [32.67 h]; Equipment Opreator [13.07 h]; Boom Truck [6.53 h]; Concrete Mixer Truck [6.53 h]; MH (1200mm Diameter) - SW - depth 0 - 1.5m [0.5 nr]; MH (1200mm Diameter) - SW - depth 1.51 - 2.5m [0.5 nr]; MH (1200mm Diameter) - SW - depth 2.51 - 3.5m [0.25 nr] | 11,921.5 |  | A014 | Z5 | CONS | SW | Installing Base | bef |
| RHD4CZ5A014SW3300 |  | MH Ring and C.Slab works and Backfilling works for MH 1200 mm - (RD-A-1 /4)-Z5-A014-SW | 3d | 2026-09-07 A | 2027-02-11 | RHD4CZ5A014SW3200 | 80% | 3d | 2026-08-19 | 2026-08-22 | -148.02d | 0d | Skilled labor [32.67 h]; Unskilled Labor [32.67 h]; Equipment Opreator [22.87 h]; Boom Truck [13.07 h]; Concrete Mixer Truck [9.8 h]; MH (1200mm Diameter) - SW - depth 0 - 1.5m [0.7 nr]; MH (1200mm Diameter) - SW - depth 1.51 - 2.5m [0.7 nr]; MH (1200mm Diameter) - SW - depth 2.51 - 3.5m [0.35 nr] | 16,690.1 |  | A014 | Z5 | CONS | SW | Installing Rings | bef |
| RHD4CZ5A014SW3400 |  | Steel Cover for MH 1200 mm - (RD-A-1 /4)-Z5-A014-SW | 2d | 2027-02-11 | 2027-02-14 | RHD4CZ5A014SW3300 |  |  |  |  | -148.02d | 0d | Skilled labor [18.19 h]; Unskilled Labor [36.26 h]; Equipment Opreator [3.59 h]; Boom Truck [3.59 h]; MH (1200mm Diameter) - SW - depth 0 - 1.5m [0.1 nr]; MH (1200mm Diameter) - SW - depth 1.51 - 2.5m [0.1 nr]; MH (1200mm Diameter) - SW - depth 2.51 - 3.5m [0.05 nr] | 2,384.3 |  | A014 | Z5 | CONS | SW | Steel Cover | bef |
| RHD4CZ5A014SW3500 |  | Finishing, Benching, Testing works for MH 1200 mm - (RD-A-1 /4)-Z5-A014-SW | 3d | 2027-02-14 | 2027-02-17 | RHD4CZ5A014SW3400 |  |  |  |  | -148.02d | 19d | Skilled labor [32.67 h]; Unskilled Labor [65.34 h]; Plumber [32.67 h]; Equipment Opreator [6.53 h]; Water Truck [6.53 h]; MH (1200mm Diameter) - SW - depth 0 - 1.5m [0.2 nr]; MH (1200mm Diameter) - SW - depth 1.51 - 2.5m [0.2 nr]; MH (1200mm Diameter) - SW - depth 2.51 - 3.5m [0.1 nr] | 4,768.6 |  | A014 | Z5 | CONS | SW | Benching | bef |
|  | 3601 | **RHD4-02-002-A014-(SW)-UPVC Pipes - 200 mm diameter** |  | 2026-08-11 | 2027-02-03 |  |  |  |  |  |  |  |  |  |  |  |  |  |  |  |  |
| RHD4CZ5A014SW2100 |  | Excavation works for UPVC Pipe Line 200 mm - (RD-A-1 /4)-Z5-A014-SW | 2d | 2026-08-11 A | 2026-09-06 A | RHD4ENSDZ5APPSW120, RHD4CZ5A014ST3101, RHD4CZ5A014ST2500 | 100% |  | 2026-08-10 | 2026-08-11 |  |  | Skilled labor [16.8 h]; Unskilled Labor [16.8 h]; Equipment Opreator [20.15 h]; Excavator-Poclain [16.8 h]; Dump Truck [3.38 h]; UPVC (200mm Diameter) - SW - Depth: less than 1.5m [14.99 m]; UPVC (200mm Diameter) - SW - Depth: 1.51m - 2.5m [24.11 m]; UPVC (200mm Diameter) - SW - Depth: 2.51m - 3.5m | 7,930.07 | 7,930.07 | A014 | Z5 | CONS | SW | Excavation | bef |
| RHD4CZ5A014SW2200 |  | Bedding works for UPVC Pipe Line 200 mm - (RD-A-1 /4)-Z5-A014-SW | 2d | 2026-08-12 A | 2026-09-08 A | RHD4CZ5A014SW2100 | 100% |  | 2026-08-12 | 2026-08-13 |  |  | Skilled labor [15.68 h]; Unskilled Labor [31.47 h]; Equipment Opreator [31.47 h]; Excavator-Poclain [15.68 h]; Dump Truck [15.68 h]; UPVC (200mm Diameter) - SW - Depth: less than 1.5m [7.5 m]; UPVC (200mm Diameter) - SW - Depth: 1.51m - 2.5m [8.04 m]; UPVC (200mm Diameter) - SW - Depth: 2.51m - 3.5m | 3,094.68 | 3,094.68 | A014 | Z5 | CONS | SW | Bedding | bef |
| RHD4CZ5A014SW2300 |  | Installing for UPVC Pipe Line 200 mm - (RD-A-1 /4)-Z5-A014-SW | 2d | 2026-08-15 A | 2026-09-09 A | RHD4CZ5A014SW2200, RHD4PRSHLPOSW1000, RHD4PRSHLDOSSW1004, RHD4PRSHLDOSSW1304, RHD4PRSHLPOSW1100, RHD4PRSHLDOSSW1104 | 100% |  | 2026-08-15 | 2026-08-16 |  |  | Unskilled Labor [42.25 h]; Plumber [21.13 h]; Equipment Opreator [21.13 h]; Boom Truck [21.13 h]; UPVC (200mm Diameter) - SW - Depth: less than 1.5m [67.46 m]; UPVC (200mm Diameter) - SW - Depth: 1.51m - 2.5m [64.29 m]; UPVC (200mm Diameter) - SW - Depth: 2.51m - 3.5m | 26,093.73 | 26,093.73 | A014 | Z5 | CONS | SW | Installation | bef |
| RHD4CZ5A014SW2500 |  | Backfilling and warning tape works for UPVC Pipe Line 200 mm - (RD-A-1 /4)-Z5-A014-SW | 2d | 2026-08-17 A | 2026-09-19 A | RHD4CZ5A014SW2400 | 100% |  | 2026-08-19 | 2026-08-20 |  |  | Skilled labor [18.4 h]; Unskilled Labor [36.8 h]; Equipment Opreator [36.8 h]; Excavator-Poclain [18.4 h]; Dump Truck [18.4 h]; UPVC (200mm Diameter) - SW - Depth: less than 1.5m [29.98 m]; UPVC (200mm Diameter) - SW - Depth: 1.51m - 2.5m [32.15 m]; UPVC (200mm Diameter) - SW - Depth: 2.51m - 3.5m | 12,372.95 | 12,372.95 | A014 | Z5 | CONS | SW | Backfilling | bef |
| RHD4CZ5A014SW2400 |  | Primary Test for UPVC Pipe Line 200 mm - (RD-A-1 /4)-Z5-A014-SW | 2d | 2027-02-01 | 2027-02-03 | RHD4CZ5A014SW2300 |  |  |  |  | -177.02d | 0d | Unskilled Labor [10.56 h]; Plumber [10.56 h]; Equipment Opreator [10.56 h]; Water Truck [10.56 h]; UPVC (200mm Diameter) - SW - Depth: less than 1.5m [29.98 m]; UPVC (200mm Diameter) - SW - Depth: 1.51m - 2.5m [32.15 m]; UPVC (200mm Diameter) - SW - Depth: 2.51m - 3.5m | 12,372.95 |  | A014 | Z5 | CONS | SW | Primary Test | bef |

| ID | WBS | Activity | Duration | Start | Finish | Predecessors | Total float | Free float | Resources | Cost | RDH4-01-001-Road and Block Names-1 | RDH4-01-001-Zones-1 | RDH4-01-001-Phases-1 | RDH4-01-001-Networks-1 | RDH4-01-001-Work Method-1 | RDH4-01-001-MENEM |
| --- | --- | --- | --- | --- | --- | --- | --- | --- | --- | --- | --- | --- | --- | --- | --- | --- |
|  | 3604 | **RHD4-02-002-A014-(SW)-Concrete Encasement** |  |  |  |  |  |  |  |  |  |  |  |  |  |  |
|  | 3632 | **RHD4-02-002-Z5-A014-Potable Network - PT** |  | 2027-02-03 | 2027-04-01 |  |  |  |  |  |  |  |  |  |  |  |
|  | 3635 | **RHD4-02-002-A014-(PT)-HDPE Pipes - 200 mm diameter** |  | 2027-02-03 | 2027-03-06 |  |  |  |  |  |  |  |  |  |  |  |
| RHD4CZ5A014PT1102 |  | Excavation works for HDPE Pipline 200 mm - (RD-A-1 /4)-Z5-A014-PT | 5d | 2027-02-03 | 2027-02-09 | RHD4CZ5A014SW2500, RHD4ENSDZ5APPPT130, RHD4ENMSPT2000, RHD4CZ5A014ST9500, RHD4CZ5A014ST1502 | -177.02d | 0d | Skilled labor [47.37 h]; Unskilled Labor [47.37 h]; Equipment Opreator [56.85 h]; Excavator-Poclain [47.37 h]; Dump Truck [9.47 h]; HDPE (200mm Diameter) - PT - Depth: less than 1.5m [98.03 m]; HDPE (200mm Diameter) - PT - Depth: more than 1.5m [0.58 m] | 13,827.44 | A014 | Z5 | CONS | PT | Excavation | bef |
| RHD4CZ5A014PT1202 |  | Bedding works for HDPE Pipline 200 mm - (RD-A-1 /4)-Z5-A014-PT | 4d | 2027-02-09 | 2027-02-14 | RHD4CZ5A014PT1102 | -170.02d | 0d | Skilled labor [41.38 h]; Unskilled Labor [82.77 h]; Equipment Opreator [82.77 h]; Excavator-Poclain [41.38 h]; Dump Truck [41.38 h]; HDPE (200mm Diameter) - PT - Depth: less than 1.5m [49.01 m]; HDPE (200mm Diameter) - PT - Depth: more than 1.5m [0.19 m] | 6,895.22 | A014 | Z5 | CONS | PT | Bedding | bef |
| RHD4CZ5A014PT1302 |  | Installing for HDPE Pipline 200 mm - (RD-A-1 /4)-Z5-A014-PT | 7d | 2027-02-14 | 2027-02-23 | RHD4CZ5A014PT1202, RHD4PRSHLDOSPT1000, RHD4PRSHLSTAGPT1000 | -170.02d | 0d | Unskilled Labor [142.88 h]; Plumber [71.44 h]; Equipment Opreator [71.44 h]; Boom Truck [71.44 h]; HDPE (200mm Diameter) - PT - Depth: less than 1.5m [441.12 m]; HDPE (200mm Diameter) - PT - Depth: more than 1.5m [1.54 m] | 62,030.92 | A014 | Z5 | CONS | PT | Installation | bef |
| RHD4CZ5A014PT1402 |  | Primary Test for HDPE Pipline 200 mm - (RD-A-1 /4)-Z5-A014-PT | 3d | 2027-02-23 | 2027-02-27 | RHD4CZ5A014PT1302 | -170.02d | 0d | Unskilled Labor [29.3 h]; Plumber [29.3 h]; Equipment Opreator [29.3 h]; Water Truck [29.3 h]; HDPE (200mm Diameter) - PT - Depth: less than 1.5m [196.05 m]; HDPE (200mm Diameter) - PT - Depth: more than 1.5m [0.77 m] | 27,584.06 | A014 | Z5 | CONS | PT | Primary Test | bef |
| RHD4CZ5A014PT1502 |  | Backfilling and warning tape works for HDPE Pipline 200 mm - (RD-A-1 /4)-Z5-A014-PT | 6d | 2027-02-27 | 2027-03-06 | RHD4CZ5A014PT1402 | -170.02d | 0d | Skilled labor [56.41 h]; Unskilled Labor [112.8 h]; Equipment Opreator [112.8 h]; Excavator-Poclain [56.41 h]; Dump Truck [56.41 h]; HDPE (200mm Diameter) - PT - Depth: less than 1.5m [196.05 m]; HDPE (200mm Diameter) - PT - Depth: more than 1.5m [0.77 m] | 27,584.06 | A014 | Z5 | CONS | PT | Backfilling | bef |
|  | 2692 | **RHD4-02-002-A014-(PT)-Gate Valves (Direct Buried)** |  | 2027-02-23 | 2027-02-28 |  |  |  |  |  |  |  |  |  |  |  |
| RHD4CZ5A014PT3100 |  | Installation for Direct Buried Gate Valves - (RD-A-1 /4)-Z5-A014-PT | 2d | 2027-02-23 | 2027-02-25 | RHD4CZ5A014PT1302 | -168.02d | 0d | Unskilled Labor [5.45 h]; Plumber [5.45 h]; Gate valves dia 200 mm - PT [0.9 nr] | 2,008.8 | A014 | Z5 | CONS | PT | Installation | bef |
| RHD4CZ5A014PT3200 |  | Stem and Service box for Direct Buried Gate Valves - (RD-A-1 /4)-Z5-A014-PT | 2d | 2027-02-25 | 2027-02-28 | RHD4CZ5A014PT3100 | -168.02d | 0d | Unskilled Labor [5.45 h]; Plumber [5.45 h]; Gate valves dia 200 mm - PT [0.1 nr] | 223.2 | A014 | Z5 | CONS | PT | Stem and Service box | bef |
|  | 3642 | **RHD4-02-002-A014-(PT)-Wash out Valves** |  | 2027-03-16 | 2027-03-24 |  |  |  |  |  |  |  |  |  |  |  |
| RHD4CZ5A014PT3102 |  | Installation for Wash out Valves for Potable Water Network - (RD-A-1 /4)-Z5-A014-PT | 2d | 2027-03-16 | 2027-03-18 | RHD4CZ5A014PT2301, RHD4PRSHLDOSPT1200, RHD4PRSHLSTAGPT1200, RHD4CZ5A014SW3500 | -167.02d | 3d | Unskilled Labor [5.45 h]; Plumber [5.45 h]; Wash out valve diameter 100 mm - PT [0.9 nr] | 3,373.2 | A014 | Z5 | CONS | PT | Installation | bef |
| RHD4CZ5A014PT3202 |  | Stem and Service box for Wash out Valves for Potable Water Network - (RD-A-1 /4)-Z5-A014-PT | 2d | 2027-03-22 | 2027-03-24 | RHD4CZ5A014PT3102, RHD4CZ5A014PT2401, RHD4PRSHLDOSPT1300, RHD4PRSHLSTAGPT1300, RHD4CZ5A014LV2400, RHD4CZ5A014SL2400 | -170.02d | 7d | Unskilled Labor [5.45 h]; Plumber [5.45 h]; Wash out valve diameter 100 mm - PT [0.1 nr] | 374.8 | A014 | Z5 | CONS | PT | Stem and Service box | bef |
|  | 3643 | **RHD4-02-002-A014-(PT)-Air Valve Chambers** |  | 2027-03-06 | 2027-03-18 |  |  |  |  |  |  |  |  |  |  |  |
| RHD4CZ5A014PT2102 |  | Excavation and Bedding for Air Valve Chambers for Potable Water Network - (RD-A-1 /4)-Z5-A014-PT | 2d | 2027-03-06 | 2027-03-08 | RHD4CZ5A014PT1502, RHD4ENSDZ5APPPT130 | -168.02d | 0d | Skilled labor [5.45 h]; Unskilled Labor [5.45 h]; Equipment Opreator [1.09 h]; Excavator-Poclain [0.54 h]; Dump Truck [0.54 h]; Air Valve chambers - PT [0.25 nr] | 1,193 | A014 | Z5 | CONS | PT | Excavation and Bedding | bef |
| RHD4CZ5A014PT2202 |  | PC works for Air Valve Chambers for Potable Water Network - (RD-A-1 /4)-Z5-A014-PT | 2d | 2027-03-08 | 2027-03-14 | RHD4CZ5A014PT2102 | -168.02d | 0d | Skilled labor [5.45 h]; Unskilled Labor [10.89 h]; Equipment Opreator [0.54 h]; Concrete Pump [0.54 h]; Air Valve chambers - PT [0.1 nr] | 477.2 | A014 | Z5 | CONS | PT | PC Works | bef |
| RHD4CZ5A014PT2302 |  | Installation for Air Valve Chambers for Potable Water Network - (RD-A-1 /4)-Z5-A014-PT | 2d | 2027-03-14 | 2027-03-16 | RHD4CZ5A014PT2202, RHD4PRSHLDOSPT1100, RHD4PRSHLDOSPT1400, RHD4PRSHLSTAGPT1100, RHD4PRSHLSTAGPT1400 | -168.02d | 0d | Skilled labor [5.45 h]; Unskilled Labor [10.89 h]; Equipment Opreator [1.09 h]; Boom Truck [1.09 h]; Air Valve chambers - PT [0.55 nr] | 2,624.6 | A014 | Z5 | CONS | PT | Installation | bef |
| RHD4CZ5A014PT2402 |  | Backfilling works for Air Valve Chambers for Potable Water Network - (RD-A-1 /4)-Z5-A014-PT | 2d | 2027-03-16 | 2027-03-18 | RHD4CZ5A014PT2302 | -168.02d | 9d | Skilled labor [5.45 h]; Unskilled Labor [10.89 h]; Equipment Opreator [1.09 h]; Water Truck [0.54 h]; Dump Truck [0.54 h]; Air Valve chambers - PT [0.1 nr] | 477.2 | A014 | Z5 | CONS | PT | Backfilling Works | bef |
|  | 3644 | **RHD4-02-002-A014-(PT)-Air Valves** |  | 2027-03-16 | 2027-04-01 |  |  |  |  |  |  |  |  |  |  |  |
| RHD4CZ5A014PT3103 |  | Installation for Air Valves for Potable Water Network - (RD-A-1 /4)-Z5-A014-PT | 2d | 2027-03-16 | 2027-03-18 | RHD4CZ5A014PT2302, RHD4PRSHLDOSPT1200, RHD4PRSHLSTAGPT1200 | -168.02d | 9d | Unskilled Labor [5.45 h]; Plumber [5.45 h]; Air valve diameter 50 mm - PT [0.9 nr] | 4,427.1 | A014 | Z5 | CONS | PT | Installation | bef |
| RHD4CZ5A014PT3203 |  | Stem and Service box for Air Valves for Potable Water Network - (RD-A-1 /4)-Z5-A014-PT | 3d | 2027-03-29 | 2027-04-01 | RHD4CZ5A014PT3103, RHD4CZ5A014PT2402, RHD4PRSHLDOSPT1300, RHD4PRSHLSTAGPT1300, RHD4CZ5A014IRR1503 | -177.02d | 0d | Unskilled Labor [5.45 h]; Plumber [5.45 h]; Air valve diameter 50 mm - PT [0.1 nr] | 491.9 | A014 | Z5 | CONS | PT | Stem and Service box | bef |
|  | 3645 | **RHD4-02-002-A014-(PT)-Fire Hydrant** |  | 2027-03-06 | 2027-03-22 |  |  |  |  |  |  |  |  |  |  |  |
| RHD4CZ5A014PT4100 |  | Excavation and Bedding and Pipe Installation for Fire Hydrant - (RD-A-1 /4)-Z5-A014-PT | 3d | 2027-03-06 | 2027-03-13 | RHD4CZ5A014PT1502, RHD4ENSDZ5APPPT130 | -168.02d | 0d | Skilled labor [32.67 h]; Unskilled Labor [32.67 h]; Plumber [32.67 h]; Equipment Opreator [16.34 h]; Excavator-Poclain [16.34 h]; 3-outlet fire hydrant (2 x 2.5 inch and 1 x 4.5 inch) in the form of a separate dry vacuum cylinder [0.6 nr] | 7,572 | A014 | Z5 | CONS | PT | Excavation | bef |
| RHD4CZ5A014PT4200 |  | Valve Installation for Fire Hydrant - (RD-A-1 /4)-Z5-A014-PT | 2d | 2027-03-13 | 2027-03-15 | RHD4CZ5A014PT4100 | -168.02d | 0d | Unskilled Labor [21.78 h]; Plumber [21.78 h]; 3-outlet fire hydrant (2 x 2.5 inch and 1 x 4.5 inch) in the form of a separate dry vacuum cylinder [1.2 nr] | 15,144 | A014 | Z5 | CONS | PT | Valve | bef |
| RHD4CZ5A014PT4300 |  | Stem for Fire Hydrant - (RD-A-1 /4)-Z5-A014-PT | 2d | 2027-03-15 | 2027-03-17 | RHD4CZ5A014PT4200 | -168.02d | 0d | Unskilled Labor [21.78 h]; Plumber [21.78 h]; 3-outlet fire hydrant (2 x 2.5 inch and 1 x 4.5 inch) in the form of a separate dry vacuum cylinder [1.8 nr] | 22,716 | A014 | Z5 | CONS | PT | Stem | bef |
| RHD4CZ5A014PT4400 |  | Fire Installation for Fire Hydrant - (RD-A-1 /4)-Z5-A014-PT | 2d | 2027-03-17 | 2027-03-20 | RHD4CZ5A014PT4300, RHD4PRSHLDOSPT1500, RHD4PRSHLSTAGPT1500 | -168.02d | 0d | Unskilled Labor [21.78 h]; Plumber [21.78 h]; Equipment Opreator [21.78 h]; Boom Truck [21.78 h]; 3-outlet fire hydrant (2 x 2.5 inch and 1 x 4.5 inch) in the form of a separate dry vacuum cylinder [2.1 nr] | 26,502 | A014 | Z5 | CONS | PT | Fire | bef |
| RHD4CZ5A014PT4500 |  | Protection Barriers for Fire Hydrant - (RD-A-1 /4)-Z5-A014-PT | 2d | 2027-03-20 | 2027-03-22 | RHD4CZ5A014PT4400 | -168.02d | 9d | Unskilled Labor [13.07 h]; Plumber [13.07 h]; 3-outlet fire hydrant (2 x 2.5 inch and 1 x 4.5 inch) in the form of a separate dry vacuum cylinder [0.3 nr] | 3,786 | A014 | Z5 | CONS | PT | Protection Barriers | bef |

| ID | WBS | Activity | Duration | Start | Finish | Predecessors | Complete | Planned start | Planned finish | Total float | Free float | Resources | Cost | Actual cost | RDH4-01-001-Road and Block Names-1 | RDH4-01-001-Zones-1 | RDH4-01-001-Phases-1 | RDH4-01-001-Networks-1 | RDH4-01-001-Work Method-1 | RDH4-01-001-MENEM |
| --- | --- | --- | --- | --- | --- | --- | --- | --- | --- | --- | --- | --- | --- | --- | --- | --- | --- | --- | --- | --- |
|  | 3646 | **RHD4-02-002-A014-(PT)-Concrete Encasement** |  |  |  |  |  |  |  |  |  |  |  |  |  |  |  |  |  |  |
|  | 3641 | **RHD4-02-002-A014-(PT)-Wash out Valve Chambers** |  | 2027-03-06 | 2027-03-22 |  |  |  |  |  |  |  |  |  |  |  |  |  |  |  |
| RHD4CZ5A014PT2101 |  | Excavation and Bedding for Wash out Valve Chambers for Potable Water Network - (RD-A-1 /4)-Z5-A014-PT | 2d | 2027-03-06 | 2027-03-08 | RHD4CZ5A014PT1502, RHD4ENSDZ5APPPT130, RHD4CZ5A014PT1502 FF, RHD4CZ5A014PT3200 |  |  |  | -170.02d | 0d | Skilled labor [5.45 h]; Unskilled Labor [5.45 h]; Equipment Opreator [1.09 h]; Excavator-Poclain [0.54 h]; Dump Truck [0.54 h]; Wash out chambers - PT [0.25 nr] | 4,686.25 |  | A014 | Z5 | CONS | PT | Excavation and Bedding | bef |
| RHD4CZ5A014PT2201 |  | PC works for Wash out Valve Chambers for Potable Water Network - (RD-A-1 /4)-Z5-A014-PT | 2d | 2027-03-08 | 2027-03-14 | RHD4CZ5A014PT2101 |  |  |  | -170.02d | 0d | Skilled labor [5.45 h]; Unskilled Labor [10.89 h]; Equipment Opreator [0.54 h]; Concrete Pump [0.54 h]; Wash out chambers - PT [0.1 nr] | 1,874.5 |  | A014 | Z5 | CONS | PT | PC Works | bef |
| RHD4CZ5A014PT2301 |  | Installation for Wash out Valve Chambers for Potable Water Network - (RD-A-1 /4)-Z5-A014-PT | 2d | 2027-03-14 | 2027-03-16 | RHD4CZ5A014PT2201, RHD4PRSHLDOSPT1100, RHD4PRSHLDOSPT1400, RHD4PRSHLSTAGPT1100, RHD4PRSHLSTAGPT1400 |  |  |  | -170.02d | 0d | Skilled labor [5.45 h]; Unskilled Labor [10.89 h]; Equipment Opreator [1.09 h]; Boom Truck [1.09 h]; Wash out chambers - PT [0.55 nr] | 10,309.75 |  | A014 | Z5 | CONS | PT | Installation | bef |
| RHD4CZ5A014PT2401 |  | Backfilling works for Wash out Valve Chambers for Potable Water Network - (RD-A-1 /4)-Z5-A014-PT | 5d | 2027-03-16 | 2027-03-22 | RHD4CZ5A014PT2301 |  |  |  | -170.02d | 0d | Skilled labor [5.45 h]; Unskilled Labor [10.89 h]; Equipment Opreator [1.09 h]; Water Truck [0.54 h]; Dump Truck [0.54 h]; Wash out chambers - PT [0.1 nr] | 1,874.5 |  | A014 | Z5 | CONS | PT | Backfilling Works | bef |
|  | 3647 | **RHD4-02-002-Z5-A014-Irrigation Network - IRR** |  | 2026-08-04 | 2027-03-29 |  |  |  |  |  |  |  |  |  |  |  |  |  |  |  |
|  | 3651 | **RHD4-02-002-A014-(IRR)-HDPE Pipes - 250 mm diameter** |  | 2027-02-09 | 2027-03-29 |  |  |  |  |  |  |  |  |  |  |  |  |  |  |  |
| RHD4CZ5A014IRR1103 |  | Excavation works for HDPE Pipline 250 mm - (RD-A-1 /4)-Z5-A014-IRR | 7d | 2027-02-09 | 2027-02-17 | RHD4ENSDZ5APPIRR140, RHD4ENMSRR2000, RHD4CZ5A014PT1102 |  |  |  | -177.02d | 0d | Skilled labor [72.31 h]; Unskilled Labor [72.31 h]; Equipment Opreator [86.8 h]; Excavator-Poclain [72.31 h]; Dump Truck [14.48 h]; HDPE (250mm Diameter) - TSE - Depth: less than 1.5m [97.57 m]; HDPE (250mm Diameter) - TSE - Depth: more than 1.51m [3.06 m] | 21,952.34 |  | A014 | Z5 | CONS | IRR | Excavation | bef |
| RHD4CZ5A014IRR1203 |  | Bedding works for HDPE Pipline 250 mm - (RD-A-1 /4)-Z5-A014-IRR | 6d | 2027-02-17 | 2027-02-25 | RHD4CZ5A014IRR1103 |  |  |  | -171.02d | 0d | Skilled labor [54.56 h]; Unskilled Labor [109.23 h]; Equipment Opreator [109.23 h]; Excavator-Poclain [54.56 h]; Dump Truck [54.56 h]; HDPE (250mm Diameter) - TSE - Depth: less than 1.5m [48.78 m]; HDPE (250mm Diameter) - TSE - Depth: more than 1.51m [1.02 m] | 10,846.12 |  | A014 | Z5 | CONS | IRR | Bedding | bef |
| RHD4CZ5A014IRR1303 |  | Installing for HDPE Pipline 250 mm - (RD-A-1 /4)-Z5-A014-IRR | 7d | 2027-02-25 | 2027-03-06 | RHD4CZ5A014IRR1203 |  |  |  | -171.02d | 0d | Unskilled Labor [144.62 h]; Plumber [72.31 h]; Equipment Opreator [72.31 h]; Boom Truck [72.31 h]; HDPE (250mm Diameter) - TSE - Depth: less than 1.5m [439.05 m]; HDPE (250mm Diameter) - TSE - Depth: more than 1.51m [8.16 m] | 97,354.98 |  | A014 | Z5 | CONS | IRR | Installation | bef |
| RHD4CZ5A014IRR1403 |  | Primary Test for HDPE Pipline 250 mm - (RD-A-1 /4)-Z5-A014-IRR | 3d | 2027-03-06 | 2027-03-13 | RHD4CZ5A014IRR1303 |  |  |  | -171.02d | 6d | Unskilled Labor [22 h]; Plumber [22 h]; Equipment Opreator [22 h]; Water Truck [22 h]; HDPE (250mm Diameter) - TSE - Depth: less than 1.5m [195.13 m]; HDPE (250mm Diameter) - TSE - Depth: more than 1.51m [4.08 m] | 43,384.48 |  | A014 | Z5 | CONS | IRR | Primary Test | bef |
| RHD4CZ5A014IRR1503 |  | Backfilling and warning tape works for HDPE Pipline 250 mm - (RD-A-1 /4)-Z5-A014-IRR | 8d | 2027-03-20 | 2027-03-29 | RHD4CZ5A014IRR1403, RHD4CZ5A014MV2400 |  |  |  | -177.02d | 0d | Skilled labor [54.56 h]; Unskilled Labor [109.23 h]; Equipment Opreator [109.23 h]; Excavator-Poclain [54.56 h]; Dump Truck [54.56 h]; HDPE (250mm Diameter) - TSE - Depth: less than 1.5m [195.13 m]; HDPE (250mm Diameter) - TSE - Depth: more than 1.51m [4.08 m] | 43,384.48 |  | A014 | Z5 | CONS | IRR | Backfilling | bef |
|  | 1770 | **RHD4-02-002-A014-(IRR)-Air Valves** |  | 2027-02-25 | 2027-03-02 |  |  |  |  |  |  |  |  |  |  |  |  |  |  |  |
| RHD4CZ5A014IRR3103 |  | Installation for Air Valves for Irrigation Network - (RD-A-1 /4)-Z5-A014-IRR | 2d | 2027-02-25 | 2027-02-28 | RHD4CZ5A014IRR2302 |  |  |  | -162.02d | 0d | Unskilled Labor [5.45 h]; Plumber [5.45 h]; Air valve diameter 50 mm - TSE [0.9 nr] | 4,427.1 |  | A014 | Z5 | CONS | IRR | Installation | bef |
| RHD4CZ5A014IRR3203 |  | Stem and Service box for Air Valves for Irrigation Network - (RD-A-1 /4)-Z5-A014-IRR | 2d | 2027-02-28 | 2027-03-02 | RHD4CZ5A014IRR3103, RHD4CZ5A014IRR2402 |  |  |  | -162.02d | 13.98d | Unskilled Labor [5.45 h]; Plumber [5.45 h]; Air valve diameter 50 mm - TSE [0.1 nr] | 491.9 |  | A014 | Z5 | CONS | IRR | Stem and Service box | bef |
|  | 3663 | **RHD4-02-002-A014-(IRR)-Concrete Encasement** |  |  |  |  |  |  |  |  |  |  |  |  |  |  |  |  |  |  |
|  | 6107 | **RHD4-02-002-A014-(IRR)-HDPE Pipes - 160 mm diameter** |  | 2026-08-04 | 2027-02-20 |  |  |  |  |  |  |  |  |  |  |  |  |  |  |  |
| RHD4CZ5A014IRR1100 |  | Excavation works for HDPE Pipline 160 mm - (RD-A-1 /4)-Z5-A014-IRR | 2d | 2026-08-04 A | 2026-08-05 A | RHD4CZ5A014IRR1103 | 100% | 2026-09-01 | 2026-09-02 |  |  | Skilled labor [10.13 h]; Unskilled Labor [10.13 h]; Equipment Opreator [12.2 h]; Excavator-Poclain [10.13 h]; Dump Truck [2.07 h]; HDPE (160mm Diameter) - TSE - Depth: less than 1.5m [14 m] | 1,722 | 1,722 | A014 | Z5 | CONS | IRR | Excavation | bef |
| RHD4CZ5A014IRR1200 |  | Bedding works for HDPE Pipline 160 mm - (RD-A-1 /4)-Z5-A014-IRR | 2d | 2026-08-06 A | 2026-08-08 A | RHD4CZ5A014IRR1100 | 100% | 2026-09-03 | 2026-09-05 |  |  | Skilled labor [7.62 h]; Unskilled Labor [15.25 h]; Equipment Opreator [15.25 h]; Excavator-Poclain [7.62 h]; Dump Truck [7.62 h]; HDPE (160mm Diameter) - TSE - Depth: less than 1.5m [7 m] | 861 | 861 | A014 | Z5 | CONS | IRR | Bedding | bef |
| RHD4CZ5A014IRR1300 |  | Installing for HDPE Pipline 160 mm - (RD-A-1 /4)-Z5-A014-IRR | 2d | 2026-08-08 A | 2026-08-09 A | RHD4CZ5A014IRR1200 | 100% | 2026-09-06 | 2026-09-07 |  |  | Unskilled Labor [20.36 h]; Plumber [10.13 h]; Equipment Opreator [10.13 h]; Boom Truck [10.13 h]; HDPE (160mm Diameter) - TSE - Depth: less than 1.5m [63 m] | 7,749 | 7,749 | A014 | Z5 | CONS | IRR | Installation | bef |
| RHD4CZ5A014IRR1500 |  | Backfilling and warning tape works for HDPE Pipline 160 mm - (RD-A-1 /4)-Z5-A014-IRR | 2d | 2026-09-05 A | 2026-09-06 A | RHD4CZ5A014IRR1400 | 100% | 2026-09-10 | 2026-09-12 |  |  | Skilled labor [7.62 h]; Unskilled Labor [15.25 h]; Equipment Opreator [15.25 h]; Excavator-Poclain [7.62 h]; Dump Truck [7.62 h]; HDPE (160mm Diameter) - TSE - Depth: less than 1.5m [28 m] | 3,444 | 3,444 | A014 | Z5 | CONS | IRR | Backfilling | bef |
| RHD4CZ5A014IRR1400 |  | Primary Test for HDPE Pipline 160 mm - (RD-A-1 /4)-Z5-A014-IRR | 2d | 2027-02-17 | 2027-02-20 | RHD4CZ5A014IRR1300 |  |  |  | -162.02d | 0d | Unskilled Labor [3.05 h]; Plumber [3.05 h]; Equipment Opreator [3.05 h]; Water Truck [3.05 h]; HDPE (160mm Diameter) - TSE - Depth: less than 1.5m [28 m] | 3,444 |  | A014 | Z5 | CONS | IRR | Primary Test | bef |
|  | 6115 | **RHD4-02-002-A014-(IRR)-Gate Valves (Direct Buried)** |  | 2027-02-17 | 2027-02-25 |  |  |  |  |  |  |  |  |  |  |  |  |  |  |  |
| RHD4CZ5A014IRR3100 |  | Installation for Direct Buried Gate Valves - (RD-A-1 /4)-Z5-A014-IRR | 3d | 2027-02-17 | 2027-02-21 | RHD4CZ5A014IRR1300 SS, RHD4CZ5A014IRR1300 FF |  |  |  | -158.02d | 0d | Unskilled Labor [27.2 h]; Plumber [27.2 h]; Gate valves dia 100 mm - TSE [4.5 nr] | 7,110 |  | A014 | Z5 | CONS | IRR | Installation | bef |
| RHD4CZ5A014IRR3200 |  | Stem and Service box for Direct Buried Gate Valves - (RD-A-1 /4)-Z5-A014-IRR | 3d | 2027-02-21 | 2027-02-25 | RHD4CZ5A014IRR3100, RHD4CZ5A014IRR1500 |  |  |  | -158.02d | 17.98d | Unskilled Labor [27.2 h]; Plumber [27.2 h]; Gate valves dia 100 mm - TSE [0.5 nr] | 790 |  | A014 | Z5 | CONS | IRR | Stem and Service box | bef |

| ID | WBS | Activity | Duration | Start | Finish | Predecessors | Complete | Remaining | Planned start | Planned finish | Total float | Free float | Resources | Cost | RDH4-01-001-Road and Block Names-1 | RDH4-01-001-Zones-1 | RDH4-01-001-Phases-1 | RDH4-01-001-Networks-1 | RDH4-01-001-Work Method-1 | RDH4-01-001-MENEM |
| --- | --- | --- | --- | --- | --- | --- | --- | --- | --- | --- | --- | --- | --- | --- | --- | --- | --- | --- | --- | --- |
|  | 1769 | **RHD4-02-002-A014-(IRR)-Air Valve Chamber** |  | 2027-02-17 | 2027-02-28 |  |  |  |  |  |  |  |  |  |  |  |  |  |  |  |
| RHD4CZ5A014IRR2102 |  | Excavation and Bedding for Valve Chamber for Irrigation Network - (RD-A-1 /4)-Z5-A014-IRR | 2d | 2027-02-17 | 2027-02-20 | RHD4CZ5A014IRR1103 |  |  |  |  | -162.02d | 0d | Skilled labor [5.45 h]; Unskilled Labor [5.45 h]; Equipment Opreator [1.09 h]; Excavator-Poclain [0.54 h]; Dump Truck [0.54 h]; Air Valve chambers - TSE [0.25 nr] | 1,193 | A014 | Z5 | CONS | IRR | Excavation and Bedding | bef |
| RHD4CZ5A014IRR2202 |  | PC works for Valve Chamber for Irrigation Network - (RD-A-1 /4)-Z5-A014-IRR | 2d | 2027-02-20 | 2027-02-23 | RHD4CZ5A014IRR2102 |  |  |  |  | -162.02d | 0d | Skilled labor [5.45 h]; Unskilled Labor [10.89 h]; Equipment Opreator [0.54 h]; Concrete Pump [0.54 h]; Air Valve chambers - TSE [0.1 nr] | 477.2 | A014 | Z5 | CONS | IRR | PC Works | bef |
| RHD4CZ5A014IRR2302 |  | Installation for Valve Chamber for Irrigation Network - (RD-A-1 /4)-Z5-A014-IRR | 2d | 2027-02-23 | 2027-02-25 | RHD4CZ5A014IRR2202 |  |  |  |  | -162.02d | 0d | Skilled labor [5.45 h]; Unskilled Labor [10.89 h]; Equipment Opreator [1.09 h]; Boom Truck [1.09 h]; Air Valve chambers - TSE [0.55 nr] | 2,624.6 | A014 | Z5 | CONS | IRR | Installation | bef |
| RHD4CZ5A014IRR2402 |  | Backfilling works for Valve Chamber for Irrigation Network - (RD-A-1 /4)-Z5-A014-IRR | 2d | 2027-02-25 | 2027-02-28 | RHD4CZ5A014IRR2302 |  |  |  |  | -162.02d | 0d | Skilled labor [5.45 h]; Unskilled Labor [10.89 h]; Equipment Opreator [1.09 h]; Water Truck [0.54 h]; Dump Truck [0.54 h]; Air Valve chambers - TSE [0.1 nr] | 477.2 | A014 | Z5 | CONS | IRR | Backfilling Works | bef |
|  | 3681 | **RHD4-02-002-Z5-A014-Medium Voltage Network - MV** |  | 2026-08-04 | 2027-09-07 |  |  |  |  |  |  |  |  |  |  |  |  |  |  |  |
|  | 3682 | **RHD4-02-002-A014-(MV)-Medium Voltage cable trench** |  | 2027-07-17 | 2027-09-07 |  |  |  |  |  |  |  |  |  |  |  |  |  |  |  |
| RHD4CZ5A014MV1100 |  | Excavation for Medium Voltage Trench - (RD-A-1 /4)-Z5-A014-MV | 6d | 2027-07-17 | 2027-07-24 | RHD4ENSDZ5APPMV150, RHD4CZ5A014RD3100, RHD4CZ5L016MV3401 |  |  |  |  | -153.02d | 0d | Skilled labor [60 h]; Unskilled Labor [120 h]; Equipment Opreator [180 h]; Excavator-Poclain [60 h]; Dump Truck [120 h]; Excavation for Trench size 60cm wide and 80cm deep ( for 2 cables) [589.14 m3]; Excavation for Trench size 120cm wide and 80cm deep (for 4 cables) [90.57 m3]; Excavation for Trench size 240cm wide and 80cm deep (for 9 cables) [137.41 m3]; Excavation for Trench size 300cm wide and 80cm deep (for 10 cables) [532.61 m3] | 13,497.38 | A014 | Z5 | CONS | MV | Excavation | AFT |
| RHD4CZ5A014MV1200 |  | Trench Backfilling for Medium Voltage Network - (RD-A-1 /4)-Z5-A014-MV | 6d | 2027-08-31 | 2027-09-07 | RHD4CZ5A014MV4200 |  |  |  |  | -109.02d | 0d | Skilled labor [60 h]; Unskilled Labor [60 h]; Equipment Opreator [120 h]; Dump Truck [120 h]; Excavation for Trench size 60cm wide and 80cm deep ( for 2 cables) [252.49 m3]; Excavation for Trench size 120cm wide and 80cm deep (for 4 cables) [38.81 m3]; Excavation for Trench size 240cm wide and 80cm deep (for 9 cables) [58.89 m3]; Excavation for Trench size 300cm wide and 80cm deep (for 10 cables) [228.26 m3] | 5,784.52 | A014 | Z5 | CONS | MV | Backfilling | AFT |
|  | 3683 | **RHD4-02-002-A014-(MV)-Medium Voltage duct banks** |  | 2026-08-04 | 2027-03-20 |  |  |  |  |  |  |  |  |  |  |  |  |  |  |  |
| RHD4CZ5A014MV2100 |  | Excavation of Duct Banks for Medium Voltage Network - (RD-A-1 /4)-Z5-A014-MV | 2d | 2026-08-04 A | 2027-02-23 | RHD4ENSDZ5APPMV150, RHD4CZ5A014IRR1100 SS | 38% | 4d | 2026-09-01 | 2026-09-02 | -177.02d | 0d | Unskilled Labor [39.86 h]; Equipment Opreator [79.72 h]; Excavator-Poclain [39.86 h]; Dump Truck [39.86 h]; Duct bank for MV cables UPVC (4xø150mm) [4.26 m]; Duct bank for MV cables UPVC (12xø150mm) [1.23 m] | 3,164.86 | A014 | Z5 | CONS | MV | Excavation | bef |
| RHD4CZ5A014MV2200 |  | Installation of Duct Banks for Medium Voltage Network - (RD-A-1 /4)-Z5-A014-MV | 2d | 2026-08-06 A | 2027-03-02 | RHD4CZ5A014MV2100, RHD4PRSHLDOSMV1000, RHD4PRSHLSTAGMV1000 | 38% | 6d | 2026-09-03 | 2026-09-05 | -177.02d | 0d | Unskilled Labor [59.79 h]; Equipment Opreator [119.58 h]; Excavator-Poclain [59.79 h]; Dump Truck [59.79 h]; Duct bank for MV cables UPVC (4xø150mm) [4.26 m]; Duct bank for MV cables UPVC (12xø150mm) [1.23 m] | 3,164.86 | A014 | Z5 | CONS | MV | Installing | bef |
| RHD4CZ5A014MV2300 |  | Pouring of Duct Banks for Medium Voltage Network - (RD-A-1 /4)-Z5-A014-MV | 2d | 2026-08-09 A | 2027-03-13 | RHD4CZ5A014MV2200 | 38% | 6d | 2026-09-06 | 2026-09-07 | -177.02d | 0d | Unskilled Labor [39.86 h]; Equipment Opreator [79.72 h]; Excavator-Poclain [39.86 h]; Dump Truck [39.86 h]; Duct bank for MV cables UPVC (4xø150mm) [27.7 m]; Duct bank for MV cables UPVC (12xø150mm) [7.97 m] | 20,540.78 | A014 | Z5 | CONS | MV | Pouring | bef |
| RHD4CZ5A014MV2400 |  | Backfilling of Duct Banks for Medium Voltage Network - (RD-A-1 /4)-Z5-A014-MV | 2d | 2026-08-11 A | 2027-03-20 | RHD4CZ5A014MV2300 | 38% | 6d | 2026-09-08 | 2026-09-09 | -177.02d | 0d | Unskilled Labor [29.84 h]; Equipment Opreator [59.79 h]; Excavator-Poclain [29.84 h]; Dump Truck [29.84 h]; Duct bank for MV cables UPVC (4xø150mm) [6.39 m]; Duct bank for MV cables UPVC (12xø150mm) [1.84 m] | 4,741.31 | A014 | Z5 | CONS | MV | Backfilling | bef |
|  | 3684 | **RHD4-02-002-A014-(MV)-Medium Voltage cables 3Cx 500 mm²** |  | 2027-07-24 | 2027-08-25 |  |  |  |  |  |  |  |  |  |  |  |  |  |  |  |
| RHD4CZ5A014MV3100 |  | Installation of Medium Voltage Cables 3Cx 500 mm² - (RD-A-1 /4)-Z5-A014-MV | 12d | 2027-07-24 | 2027-08-07 | RHD4CZ5A014MV1100, RHD4PRSHLDOSMV1100, RHD4ENMSMV2000, RHD4ENMSMV2010, RHD4PRSHLSTAGMV1100 |  |  |  |  | -109.02d | 0d | Skilled labor [127.74 h]; Unskilled Labor [511.08 h]; Electrician [255.49 h]; Equipment Opreator [383.34 h]; Boom Truck [127.74 h]; Cable Laying Machine [255.49 h]; Cable 13.8 kV 3Cx 500 mm² Al/XLPE,/LLDPE / Unarmored [10558.7 m] | 1,678,830.88 | A014 | Z5 | CONS | MV | Installation | AFT |
| RHD4CZ5A014MV3200 |  | Joints Installation of Medium Voltage Cables 3Cx 500 mm² - (RD-A-1 /4)-Z5-A014-MV | 6d | 2027-08-07 | 2027-08-14 | RHD4CZ5A014MV3100, RHD4PRSHLDOSMV1300, RHD4PRSHLSTAGMV1300 |  |  |  |  | -109.02d | 0d | Skilled labor [59.9 h]; Unskilled Labor [239.59 h]; Electrician [119.79 h]; Equipment Opreator [59.9 h]; Boom Truck [59.9 h]; Straight joints cables for 13.8 kv 3Cx 500 mm², Al /XLPE/LLDPE [11 Unit] | 35,728 | A014 | Z5 | CONS | MV | Joints Installation | AFT |
| RHD4CZ5A014MV3300 |  | Testing of Medium Voltage Cables 3Cx 500 mm² - (RD-A-1 /4)-Z5-A014-MV | 8d | 2027-08-14 | 2027-08-23 | RHD4CZ5A014MV3200 |  |  |  |  | -109.02d | 0d | Skilled labor [79.83 h]; Unskilled Labor [319.41 h]; Electrician [159.65 h]; Cable 13.8 kV 3Cx 500 mm² Al/XLPE,/LLDPE / Unarmored [1173.19 m] | 186,536.76 | A014 | Z5 | CONS | MV | Testing | AFT |
| RHD4CZ5A014MV3400 |  | Termination of Medium Voltage Cables 3Cx 500 mm² - (RD-A-1 /4)-Z5-A014-MV | 2d | 2027-08-23 | 2027-08-25 | RHD4CZ5A014MV3300 |  |  |  |  | -108.02d | 1d | Unskilled Labor [5.55 h]; Electrician [5.55 h]; Cable Termination for 13.8 kv 3Cx 500 mm², Al /XLPE/LLDPE [25.6 Unit] | 67,456 | A014 | Z5 | CONS | MV | Termination | AFT |
|  | 3685 | **RHD4-02-002-A014-(MV)-Medium Voltage cables 3Cx 50 mm²** |  | 2027-08-23 | 2027-08-26 |  |  |  |  |  |  |  |  |  |  |  |  |  |  |  |
| RHD4CZ5A014MV3401 |  | Termination of Medium Voltage Cables 3Cx 50 mm² - (RD-A-1 /4)-Z5-A014-MV | 3d | 2027-08-23 | 2027-08-26 | RHD4CZ5A014MV3300 |  |  |  |  | -109.02d | 0d | Unskilled Labor [92.89 h]; Electrician [46.5 h]; Cable Termination for 13.8 kv 3Cx 500 mm², Al /XLPE/LLDPE [6.4 Unit] | 16,864 | A014 | Z5 | CONS | MV | Termination | AFT |
|  | 3686 | **RHD4-02-002-A014-(MV)-Normally open Point (Outdoor Type)** |  | 2027-08-26 | 2027-08-31 |  |  |  |  |  |  |  |  |  |  |  |  |  |  |  |
| RHD4CZ5A014MV4100 |  | Installation for Normally open Point - (RD-A-1 /4)-Z5-A014-MV | 2d | 2027-08-26 | 2027-08-29 | RHD4PRSHLDOSMV1400, RHD4PRSHLSTAGMV1400, RHD4CZ5A014MV3400, RHD4CZ5A014MV3401 |  |  |  |  | -109.02d | 0d | Unskilled Labor [0.22 h]; Equipment Opreator [0.44 h]; Excavator-Poclain [0.22 h]; Dump Truck [0.22 h]; Normally Open Point 13.8 KV Outdoor type [1.8 Unit] | 154,438.2 | A014 | Z5 | CONS | MV | Installation | AFT |
| RHD4CZ5A014MV4200 |  | Termination for Normally open Point - (RD-A-1 /4)-Z5-A014-MV | 2d | 2027-08-29 | 2027-08-31 | RHD4CZ5A014MV4100 |  |  |  |  | -109.02d | 0d | Unskilled Labor [7.3 h]; Equipment Opreator [14.48 h]; Excavator-Poclain [7.3 h]; Dump Truck [7.3 h]; Normally Open Point 13.8 KV Outdoor type [0.2 Unit] | 17,159.8 | A014 | Z5 | CONS | MV | Termination | AFT |

| ID | WBS | Activity | Duration | Start | Finish | Predecessors | Total float | Free float | Resources | Cost | RDH4-01-001-Road and Block Names-1 | RDH4-01-001-Zones-1 | RDH4-01-001-Phases-1 | RDH4-01-001-Networks-1 | RDH4-01-001-Work Method-1 | RDH4-01-001-MENEM |
| --- | --- | --- | --- | --- | --- | --- | --- | --- | --- | --- | --- | --- | --- | --- | --- | --- |
|  | 4255 | **RHD4-02-002-Z5-A014-Low Voltage Network - LV** |  | 2027-02-23 | 2027-10-07 |  |  |  |  |  |  |  |  |  |  |  |
|  | 4256 | **RHD4-02-002-A014-(LV)-Low Voltage duct banks** |  | 2027-02-23 | 2027-03-20 |  |  |  |  |  |  |  |  |  |  |  |
| RHD4CZ5A014LV2100 |  | Excavation of Duct Banks for Low Voltage Network - (RD-A-1 /4)-Z5-A014-LV | 4d | 2027-02-23 | 2027-02-28 | RHD4CZ5A014IRR1100, RHD4CZ5A014MV2100 | -168.02d | 0d | Skilled labor [38.55 h]; Unskilled Labor [38.55 h]; Equipment Opreator [76.99 h]; Excavator-Poclain [38.55 h]; Dump Truck [38.55 h]; Duct bank for LV cables UPVC (2xø110mm) [4.17 m]; Duct bank for LV cables UPVC (4xø110mm) [1.13 m] | 1,180.21 | A014 | Z5 | CONS | LV | Excavation | bef |
| RHD4CZ5A014LV2200 |  | Installation of Duct Banks for Low Voltage Network - (RD-A-1 /4)-Z5-A014-LV | 6d | 2027-02-28 | 2027-03-07 | RHD4CZ5A014LV2100 | -168.02d | 0d | Carpenter [5.77 h]; Skilled labor [57.72 h]; Unskilled Labor [57.72 h]; Steel Fixer [5.77 h]; Duct bank for LV cables UPVC (2xø110mm) [4.17 m]; Duct bank for LV cables UPVC (4xø110mm) [1.13 m] | 1,180.21 | A014 | Z5 | CONS | LV | Installing | bef |
| RHD4CZ5A014LV2300 |  | Pouring of Duct Banks for Low Voltage Network - (RD-A-1 /4)-Z5-A014-LV | 4d | 2027-03-07 | 2027-03-15 | RHD4CZ5A014LV2200 | -168.02d | 0d | Skilled labor [38.55 h]; Unskilled Labor [38.55 h]; Equipment Opreator [15.36 h]; Concrete Mixer Truck [7.73 h]; Concrete Pump [7.73 h]; Duct bank for LV cables UPVC (2xø110mm) [27.11 m]; Duct bank for LV cables UPVC (4xø110mm) [7.37 m] | 7,679.85 | A014 | Z5 | CONS | LV | Pouring | bef |
| RHD4CZ5A014LV2400 |  | Backfilling of Duct Banks for Low Voltage Network - (RD-A-1 /4)-Z5-A014-LV | 4d | 2027-03-15 | 2027-03-20 | RHD4CZ5A014LV2300 | -168.02d | 2d | Skilled labor [28.86 h]; Unskilled Labor [28.86 h]; Equipment Opreator [11.54 h]; Excavator-Poclain [11.54 h]; Duct bank for LV cables UPVC (2xø110mm) [6.26 m]; Duct bank for LV cables UPVC (4xø110mm) [1.7 m] | 1,772.82 | A014 | Z5 | CONS | LV | Backfilling | bef |
|  | 4257 | **RHD4-02-002-A014-(LV)-Low Voltage Drawpit** |  | 2027-09-07 | 2027-09-12 |  |  |  |  |  |  |  |  |  |  |  |
| RHD4CZ5A014LV5100 |  | Excavation of Drawpit size 900x900x1000mm for Low Voltage Network - (RD-A-1 /4)-Z5-A014-LV | 2d | 2027-09-07 | 2027-09-09 | RHD4CZ5A014MV1200, RHD4CZ5A014LV2300 | -109.02d | 0d | Skilled labor [9.04 h]; Unskilled Labor [9.04 h]; Equipment Opreator [7.3 h]; Excavator-Poclain [3.59 h]; Dump Truck [3.59 h]; Drawpit with medium duty steel cover, size900x900x1000mm, [1.5 Unit] | 5,515.5 | A014 | Z5 | CONS | LV | Excavation | AFT |
| RHD4CZ5A014LV5200 |  | Installation of Drawpit size 900x900x1000mm for Low Voltage Network - (RD-A-1 /4)-Z5-A014-LV | 2d | 2027-09-09 | 2027-09-12 | RHD4CZ5A014LV5100 | -109.02d | 0d | Skilled labor [9.04 h]; Unskilled Labor [9.04 h]; Equipment Opreator [3.59 h]; Boom Truck [3.59 h]; Drawpit with medium duty steel cover, size900x900x1000mm, [8.5 Unit] | 31,254.5 | A014 | Z5 | CONS | LV | Installation | AFT |
|  | 4258 | **RHD4-02-002-A014-(LV)-Low Voltage cables** |  | 2027-09-12 | 2027-10-04 |  |  |  |  |  |  |  |  |  |  |  |
| RHD4CZ5A014LV3100 |  | Excavation for Low Voltage Cables for Low Voltage Network - (RD-A-1 /4)-Z5-A014-LV | 5d | 2027-09-12 | 2027-09-18 | RHD4CZ5A014LV5200, RHD4CZ5A014LV2400 | -109.02d | 0d | Skilled labor [54.23 h]; Unskilled Labor [108.47 h]; Equipment Opreator [108.47 h]; Excavator-Poclain [54.23 h]; Boom Truck [54.23 h]; Cable, Copper 4x185mm2/ CU/XLPE/PVC [91.66 m]; Cable, Copper 4x70mm2/ CU/XLPE/PVC [1.39 m]; Cable, Copper 4x50mm2/ CU/XLPE/PVC +1x25mm2 CU/PVC [148.69 m]; Cable, Copper 3x10mm2/ CU/XLPE/SWA/PVC [7.19 m] | 54,184.95 | A014 | Z5 | CONS | LV | Excavation | AFT |
| RHD4CZ5A014LV3200 |  | Cable Laying of Low Voltage Cables for Low Voltage Network - (RD-A-1 /4)-Z5-A014-LV | 5d | 2027-09-18 | 2027-09-25 | RHD4CZ5A014LV3100 | -109.02d | 0d | Skilled labor [45.19 h]; Unskilled Labor [180.8 h]; Electrician [90.4 h]; Equipment Opreator [135.58 h]; Boom Truck [45.19 h]; Cable Laying Machine [90.4 h]; Cable, Copper 4x185mm2/ CU/XLPE/PVC [202.5 m]; Cable, Copper 4x70mm2/ CU/XLPE/PVC [4.17 m]; Cable, Copper 4x50mm2/ CU/XLPE/PVC +1x25mm2 CU/PVC [211 m]; Cable, Copper 3x10mm2/ CU/XLPE/SWA/PVC [21.56 m] | 105,663.57 | A014 | Z5 | CONS | LV | Cable Laying | AFT |
| RHD4CZ5A014LV3300 |  | Warning tape and Backfill for Low Voltage Cables for Low Voltage Network - (RD-A-1 /4)-Z5-A014-LV | 5d | 2027-09-25 | 2027-09-30 | RHD4CZ5A014LV3200 | -109.02d | 0d | Skilled labor [45.19 h]; Unskilled Labor [180.8 h]; Electrician [90.4 h]; Equipment Opreator [45.19 h]; Boom Truck [45.19 h]; Cable, Copper 4x185mm2/ CU/XLPE/PVC [68.75 m]; Cable, Copper 4x70mm2/ CU/XLPE/PVC [1.04 m]; Cable, Copper 4x50mm2/ CU/XLPE/PVC +1x25mm2 CU/PVC [111.52 m]; Cable, Copper 3x10mm2/ CU/XLPE/SWA/PVC [5.39 m] | 40,640.43 | A014 | Z5 | CONS | LV | Warning tape and Backfill | AFT |
| RHD4CZ5A014LV3400 |  | Testing of Low Voltage Cables for Low Voltage Network - (RD-A-1 /4)-Z5-A014-LV | 3d | 2027-09-30 | 2027-10-04 | RHD4CZ5A014ST2500, RHD4CZ5A014LV3300 | -108.02d | 1d | Skilled labor [27.12 h]; Unskilled Labor [108.47 h]; Electrician [54.23 h]; Equipment Opreator [27.12 h]; Boom Truck [27.12 h]; Cable, Copper 4x185mm2/ CU/XLPE/PVC [22.92 m]; Cable, Copper 4x70mm2/ CU/XLPE/PVC [0.35 m]; Cable, Copper 4x50mm2/ CU/XLPE/PVC +1x25mm2 CU/PVC [37.17 m]; Cable, Copper 3x10mm2/ CU/XLPE/SWA/PVC [1.8 m] | 13,548.38 | A014 | Z5 | CONS | LV | Testing | AFT |
|  | 4259 | **RHD4-02-002-A014-(LV)-Low Voltage Distribution Pillars** |  | 2027-09-30 | 2027-10-07 |  |  |  |  |  |  |  |  |  |  |  |
| RHD4CZ5A014LV4100 |  | Leveling for Distribution Pillars for Low Voltage Network - (RD-A-1 /4)-Z5-A014-LV | 2d | 2027-09-30 | 2027-10-03 | RHD4CZ5A014LV3300 | -109.02d | 0d | Skilled labor [21.78 h]; Unskilled Labor [43.56 h]; Equipment Opreator [8.71 h]; Excavator-Poclain [4.36 h]; Boom Truck [4.36 h]; 0.6/1 KV Low Voltage Distribution Pillars with main breaker MCCB type and 5 Outgoing feeders MCCB type [0.3 Unit]; Supply and installation of KWH meter mounting frame including concrete block wall for installation of KWH meter according to the standards and specifications of SEC [0.3 Unit] | 6,177.6 | A014 | Z5 | CONS | LV | Leveling | AFT |
| RHD4CZ5A014LV4200 |  | Lean Concrete for Distribution Pillars for Low Voltage Network - (RD-A-1 /4)-Z5-A014-LV | 2d | 2027-10-03 | 2027-10-05 | RHD4CZ5A014LV4100 | -109.02d | 0d | Skilled labor [14.48 h]; Unskilled Labor [29.08 h]; Equipment Opreator [5.77 h]; Concrete Mixer Truck [2.94 h]; Concrete Pump [2.94 h]; 0.6/1 KV Low Voltage Distribution Pillars with main breaker MCCB type and 5 Outgoing feeders MCCB type [0.5 Unit]; Supply and installation of KWH meter mounting frame including concrete block wall for installation of KWH meter according to the standards and specifications of SEC [0.5 Unit] | 10,296 | A014 | Z5 | CONS | LV | Lean Concrete | AFT |
| RHD4CZ5A014LV4300 |  | Installation of Distribution Pillars for Low Voltage Network - (RD-A-1 /4)-Z5-A014-LV | 2d | 2027-10-05 | 2027-10-07 | RHD4CZ5A014LV3400, RHD4CZ5A014LV4200 | -109.02d | 0d | Skilled labor [21.78 h]; Unskilled Labor [87.12 h]; Electrician [43.56 h]; Equipment Opreator [21.78 h]; Boom Truck [21.78 h]; 0.6/1 KV Low Voltage Distribution Pillars with main breaker MCCB type and 5 Outgoing feeders MCCB type [1.2 Unit]; Supply and installation of KWH meter mounting frame including concrete block wall for installation of KWH meter according to the standards and specifications of SEC [1.2 Unit] | 24,710.4 | A014 | Z5 | CONS | LV | Installation | AFT |
|  | 3694 | **RHD4-02-002-Z5-A014-Street Lighting Network - SL** |  | 2027-02-28 | 2027-11-10 |  |  |  |  |  |  |  |  |  |  |  |
|  | 3695 | **RHD4-02-002-A014-(SL)-Street Lighting duct banks** |  | 2027-02-28 | 2027-03-20 |  |  |  |  |  |  |  |  |  |  |  |
| RHD4CZ5A014SL2100 |  | Excavation of Duct Banks for Street Lighting Network - (RD-A-1 /4)-Z5-A014-SL | 2d | 2027-02-28 | 2027-03-02 | RHD4ENSDZ5APPSL170, RHD4CZ5A014IRR1100, RHD4CZ5A014LV2100, RHD4CZ5A014PT3200, RHD4CZ5A014IRR1500 | -168.02d | 0d | Skilled labor [11.11 h]; Unskilled Labor [11.11 h]; Equipment Opreator [22.33 h]; Excavator-Poclain [11.11 h]; Dump Truck [11.11 h]; Road Crossing Duct for Street Lighting cables UPVC (2x?110mm) [1.54 m] | 310.34 | A014 | Z5 | CONS | SL | Excavation | bef |
| RHD4CZ5A014SL2200 |  | Installation of Duct Banks for Street Lighting Network - (RD-A-1 /4)-Z5-A014-SL | 4d | 2027-03-02 | 2027-03-07 | RHD4CZ5A014SL2100 | -168.02d | 0d | Carpenter [1.6 h]; Skilled labor [16.8 h]; Unskilled Labor [16.8 h]; Steel Fixer [1.6 h]; Road Crossing Duct for Street Lighting cables UPVC (2x?110mm) [1.54 m] | 310.34 | A014 | Z5 | CONS | SL | Installing | bef |
| RHD4CZ5A014SL2300 |  | Pouring of Duct Banks for Street Lighting Network - (RD-A-1 /4)-Z5-A014-SL | 4d | 2027-03-07 | 2027-03-15 | RHD4CZ5A014SL2200 | -168.02d | 0d | Skilled labor [11.11 h]; Unskilled Labor [11.11 h]; Equipment Opreator [4.47 h]; Concrete Mixer Truck [2.18 h]; Concrete Pump [2.18 h]; Road Crossing Duct for Street Lighting cables UPVC (2x?110mm) [9.99 m] | 2,017.23 | A014 | Z5 | CONS | SL | Pouring | bef |
| RHD4CZ5A014SL2400 |  | Backfilling of Duct Banks for Street Lighting Network - (RD-A-1 /4)-Z5-A014-SL | 4d | 2027-03-15 | 2027-03-20 | RHD4CZ5A014SL2300 | -168.02d | 2d | Skilled labor [8.39 h]; Unskilled Labor [8.39 h]; Equipment Opreator [3.38 h]; Excavator-Poclain [3.38 h]; Road Crossing Duct for Street Lighting cables UPVC (2x?110mm) [2.3 m] | 464.6 | A014 | Z5 | CONS | SL | Backfilling | bef |

| ID | WBS | Activity | Duration | Start | Finish | Predecessors | Total float | Free float | Resources | Cost | RDH4-01-001-Road and Block Names-1 | RDH4-01-001-Zones-1 | RDH4-01-001-Phases-1 | RDH4-01-001-Networks-1 | RDH4-01-001-Work Method-1 | RDH4-01-001-MENEM |
| --- | --- | --- | --- | --- | --- | --- | --- | --- | --- | --- | --- | --- | --- | --- | --- | --- |
|  | 3696 | **RHD4-02-002-A014-(SL)-Street Lighting Drawpit** |  | 2027-10-07 | 2027-10-12 |  |  |  |  |  |  |  |  |  |  |  |
| RHD4CZ5A014SL5100 |  | Excavation of Drawpit size 600x600x900mm for Street Lighting Network - (RD-A-1 /4)-Z5-A014-SL | 2d | 2027-10-07 | 2027-10-10 | RHD4CZ5A014SL2300, RHD4ENSDZ5APPSL170, RHD4CZ5A014LV4300 | -109.02d | 0d | Skilled labor [3.59 h]; Unskilled Labor [3.59 h]; Equipment Opreator [2.94 h]; Excavator-Poclain [1.42 h]; Dump Truck [1.42 h]; Drawpit with medium duty steel cover, size600x600x900mm, [0.6 Unit] | 1,470.6 | A014 | Z5 | CONS | SL | Excavation | AFT |
| RHD4CZ5A014SL5200 |  | Installation of Drawpit size 600x600x900mm for Street Lighting Network - (RD-A-1 /4)-Z5-A014-SL | 2d | 2027-10-10 | 2027-10-12 | RHD4CZ5A014SL5100, RHD4PRSHLDOSSL1400, RHD4PRSHLSTAGSL1400 | -109.02d | 0d | Skilled labor [3.59 h]; Unskilled Labor [3.59 h]; Equipment Opreator [1.42 h]; Boom Truck [1.42 h]; Drawpit with medium duty steel cover, size600x600x900mm, [3.4 Unit] | 8,333.4 | A014 | Z5 | CONS | SL | Installation | AFT |
|  | 3698 | **RHD4-02-002-A014-(SL)-Street Lighting Poles** |  | 2027-10-12 | 2027-11-04 |  |  |  |  |  |  |  |  |  |  |  |
| RHD4CZ5A014SL1100 |  | Excavation for RC Base for Lighting Poles for Street Lighting Network - (RD-A-1 /4)-Z5-A014-SL | 3d | 2027-10-12 | 2027-10-16 | RHD4CZ5A014SL2400, RHD4ENSDZ5APPSL170, RHD4CZ5A014SL5200 | -109.02d | 0d | Skilled labor [23.96 h]; Unskilled Labor [23.96 h]; Equipment Opreator [47.92 h]; Excavator-Poclain [23.96 h]; Dump Truck [23.96 h]; Lighting polesdouble arms, height of ( 12 ) meters [3.3 Unit] | 15,087.6 | A014 | Z5 | CONS | SL | Excavation | AFT |
| RHD4CZ5A014SL1200 |  | Installation for RC Base for Lighting Poles for Street Lighting Network - (RD-A-1 /4)-Z5-A014-SL | 3d | 2027-10-16 | 2027-10-19 | RHD4CZ5A014SL1100 | -109.02d | 0d | Skilled labor [23.96 h]; Unskilled Labor [23.96 h]; Equipment Opreator [47.92 h]; Excavator-Poclain [23.96 h]; Dump Truck [23.96 h]; Lighting polesdouble arms, height of ( 12 ) meters [8.25 Unit] | 37,719 | A014 | Z5 | CONS | SL | RC Base | AFT |
| RHD4CZ5A014SL1300 |  | Backfill for RC Base for Lighting Poles for Street Lighting Network - (RD-A-1 /4)-Z5-A014-SL | 3d | 2027-10-19 | 2027-10-23 | RHD4CZ5A014SL1200 | -109.02d | 0d | Skilled labor [23.96 h]; Unskilled Labor [23.96 h]; Equipment Opreator [47.92 h]; Excavator-Poclain [23.96 h]; Dump Truck [23.96 h]; Lighting polesdouble arms, height of ( 12 ) meters [1.65 Unit] | 7,543.8 | A014 | Z5 | CONS | SL | Backfill | AFT |
| RHD4CZ5A014SL1400 |  | Installation for Lighting Poles for Street Lighting Network - (RD-A-1 /4)-Z5-A014-SL | 4d | 2027-10-23 | 2027-10-27 | RHD4CZ5A014SL1300, RHD4PRSHLDOSSL1200, RHD4ENMSSL2000, RHD4ENMSSL2010, RHD4PRSHLSTAGSL1200 | -107.02d | 0d | Skilled labor [35.94 h]; Unskilled Labor [35.94 h]; Electrician [35.94 h]; Equipment Opreator [35.94 h]; Boom Truck [35.94 h]; Lighting polesdouble arms, height of ( 12 ) meters [19.8 Unit] | 90,525.6 | A014 | Z5 | CONS | SL | Poles Installation | AFT |
| RHD4CZ5A014SL1500 |  | Luminaire Installation for Lighting Poles for Street Lighting Network - (RD-A-1 /4)-Z5-A014-SL | 5d | 2027-10-30 | 2027-11-04 | RHD4CZ5A014SL1400, RHD4CZ5A014SL6100, RHD4PRSHLDOSSL1300, RHD4PRSHLSTAGSL1300 | -107.02d | 2d | Unskilled Labor [95.84 h]; Electrician [47.92 h]; Equipment Opreator [19.2 h]; Boom Truck [19.2 h]; Street Lighting( LED) Luminaire of Output ?39018 lumen [66 Unit] | 68,772 | A014 | Z5 | CONS | SL | Luminaire Installation | AFT |
|  | 3697 | **RHD4-02-002-A014-(SL)-Street Lighting cables** |  | 2027-10-23 | 2027-11-10 |  |  |  |  |  |  |  |  |  |  |  |
| RHD4CZ5A014SL3100 |  | Excavation for Street Lighting Cables for Street Lighting Network - (RD-A-1 /4)-Z5-A014-SL | 5d | 2027-10-23 | 2027-10-28 | RHD4CZ5A014SL1300, RHD4ENSDZ5APPSL170 | -109.02d | 0d | Skilled labor [46.28 h]; Unskilled Labor [92.46 h]; Equipment Opreator [92.46 h]; Excavator-Poclain [46.28 h]; Boom Truck [46.28 h]; Cable, Copper 4x25mm2/ CU/XLPE/SWA/PVC + 1x16mm2 CU/PVC [212.35 m] | 18,262.52 | A014 | Z5 | CONS | SL | Excavation | AFT |
| RHD4CZ5A014SL3200 |  | Cable Laying of Street Lighting Cables for Street Lighting Network - (RD-A-1 /4)-Z5-A014-SL | 4d | 2027-10-28 | 2027-11-02 | RHD4CZ5A014SL3100, RHD4PRSHLDOSSL1100, RHD4ENMSSL2000, RHD4ENMSSL2010, RHD4PRSHLSTAGSL1100 | -109.02d | 0d | Skilled labor [38.55 h]; Unskilled Labor [154.21 h]; Electrician [77.1 h]; Equipment Opreator [115.66 h]; Boom Truck [38.55 h]; Cable Laying Machine [77.1 h]; Cable, Copper 4x25mm2/ CU/XLPE/SWA/PVC + 1x16mm2 CU/PVC [637.06 m] | 54,787.56 | A014 | Z5 | CONS | SL | Cable Laying | AFT |
| RHD4CZ5A014SL3300 |  | Warning tape and Backfill for Street Lighting Cables for Street Lighting Network - (RD-A-1 /4)-Z5-A014-SL | 4d | 2027-11-02 | 2027-11-07 | RHD4CZ5A014SL3200, RHD4CZ5A014SL6100 | -109.02d | 0d | Skilled labor [38.55 h]; Unskilled Labor [154.21 h]; Electrician [77.1 h]; Equipment Opreator [38.55 h]; Boom Truck [38.55 h]; Cable, Copper 4x25mm2/ CU/XLPE/SWA/PVC + 1x16mm2 CU/PVC [159.27 m] | 13,696.89 | A014 | Z5 | CONS | SL | Warning tape and Backfill | AFT |
| RHD4CZ5A014SL3400 |  | Testing of Street Lighting Cables for Street Lighting Network - (RD-A-1 /4)-Z5-A014-SL | 3d | 2027-11-07 | 2027-11-10 | RHD4CZ5A014SL3300, RHD4CZ5A014SL1500 | -109.02d | 0d | Skilled labor [23.09 h]; Unskilled Labor [92.46 h]; Electrician [46.28 h]; Equipment Opreator [23.09 h]; Boom Truck [23.09 h]; Cable, Copper 4x25mm2/ CU/XLPE/SWA/PVC + 1x16mm2 CU/PVC [53.09 m] | 4,565.63 | A014 | Z5 | CONS | SL | Testing | AFT |
|  | 3700 | **RHD4-02-002-A014-(SL)-Street Lighting Earthing System** |  | 2027-10-27 | 2027-10-30 |  |  |  |  |  |  |  |  |  |  |  |
| RHD4CZ5A014SL6100 |  | Installation of Earthing for Lighting Poles and Fedder Pillers for Street Lighting Network - (RD-A-1 /4)-Z5-A014-SL | 2d | 2027-10-27 | 2027-10-30 | RHD4CZ5A014SL1400, RHD4ENMSER2000, RHD4ENMSER2010 | -107.02d | 0d | Skilled labor [0.8 h]; Unskilled Labor [0.8 h]; Equipment Opreator [1.42 h]; Excavator-Poclain [0.8 h]; Dump Truck [0.8 h]; Including lighting poles circuits - ER [1 Unit] | 613 | A014 | Z5 | CONS | SL | Installation | AFT |
|  | 3706 | **RHD4-02-002-Z5-A014-Telecommunications Network - TC** |  | 2027-11-10 | 2027-12-08 |  |  |  |  |  |  |  |  |  |  |  |
|  | 3707 | **RHD4-02-002-A014-(TC)-Telecommunications Ducts** |  | 2027-11-10 | 2027-12-04 |  |  |  |  |  |  |  |  |  |  |  |
| RHD4CZ5A014TC2100 |  | Excavation of HDPE Ducts for Telecom Network - (RD-A-1 /4)-Z5-A014-TC | 6d | 2027-11-10 | 2027-11-17 | RHD4ENSDZ5APPTC190, RHD4CZ5A014SL3400 | -109.02d | 0d | Skilled labor [57.5 h]; Unskilled Labor [57.5 h]; Equipment Opreator [115 h]; Excavator-Poclain [57.5 h]; Dump Truck [57.5 h]; (6*50mm) HDPE ducts -TC [158.34 m] | 13,933.92 | A014 | Z5 | CONS | TC | Excavation | AFT |
| RHD4CZ5A014TC2200 |  | Installation of HDPE Ducts for Telecom Network - (RD-A-1 /4)-Z5-A014-TC | 8d | 2027-11-17 | 2027-11-27 | RHD4CZ5A014TC2100, RHD4PRSHLDOSTC1000, RHD4PRSHLSTAGTC1000 | -109.02d | 0d | Carpenter [8.6 h]; Skilled labor [86.25 h]; Unskilled Labor [86.25 h]; Steel Fixer [8.6 h]; (6*50mm) HDPE ducts -TC [514.61 m] | 45,285.24 | A014 | Z5 | CONS | TC | Installing | AFT |
| RHD4CZ5A014TC2400 |  | Backfilling of HDPE Ducts for Telecom Network - (RD-A-1 /4)-Z5-A014-TC | 6d | 2027-11-27 | 2027-12-04 | RHD4CZ5A014TC2200 | -109.02d | 0d | Skilled labor [57.5 h]; Unskilled Labor [57.5 h]; Equipment Opreator [22.98 h]; Excavator-Poclain [22.98 h]; (6*50mm) HDPE ducts -TC [118.75 m] | 10,450.44 | A014 | Z5 | CONS | TC | Backfilling | AFT |
|  | 3708 | **RHD4-02-002-A014-(TC)-Telecommunications Manholes** |  | 2027-12-04 | 2027-12-08 |  |  |  |  |  |  |  |  |  |  |  |
| RHD4CZ5A014TC5100 |  | Excavation for Manholes for Telecom Network - (RD-A-1 /4)-Z5-A014-TC | 2d | 2027-12-04 | 2027-12-06 | RHD4ENSDZ5APPTC190, RHD4CZ5A014TC2400 | -109.02d | 0d | Skilled labor [5.45 h]; Unskilled Labor [5.45 h]; Equipment Opreator [4.36 h]; Excavator-Poclain [2.18 h]; Dump Truck [2.18 h]; Manhole Type 1 - TC [0.6 nr] | 4,044.6 | A014 | Z5 | CONS | TC | Excavation | AFT |
| RHD4CZ5A014TC5200 |  | Installation of Manholes for Telecom Network - (RD-A-1 /4)-Z5-A014-TC | 2d | 2027-12-06 | 2027-12-08 | RHD4CZ5A014TC5100, RHD4PRSHLDOSTC1200, RHD4PRSHLSTAGTC1200 | -109.02d | 0d | Skilled labor [5.45 h]; Unskilled Labor [5.45 h]; Equipment Opreator [2.18 h]; Boom Truck [2.18 h]; Manhole Type 1 - TC [3.4 nr] | 22,919.4 | A014 | Z5 | CONS | TC | Installation | AFT |

| ID | WBS | Activity | Duration | Start | Finish | Predecessors | Complete | Planned start | Planned finish | Total float | Free float | Resources | Cost | Actual cost | RDH4-01-001-Road and Block Names-1 | RDH4-01-001-Zones-1 | RDH4-01-001-Phases-1 | RDH4-01-001-Networks-1 | RDH4-01-001-Work Method-1 | RDH4-01-001-MENEM |
| --- | --- | --- | --- | --- | --- | --- | --- | --- | --- | --- | --- | --- | --- | --- | --- | --- | --- | --- | --- | --- |
|  | 3709 | **RHD4-02-002-A014-(TC)-Telecomminications Road Crossings** |  |  |  |  |  |  |  |  |  |  |  |  |  |  |  |  |  |  |
|  | 3710 | **RHD4-02-002-Z5-A014-Information and Communication Technologies - ICT** |  | 2027-12-08 | 2028-02-08 |  |  |  |  |  |  |  |  |  |  |  |  |  |  |  |
|  | 3711 | **RHD4-02-002-A014-(ICT)-Information and Communication Technologies Ducts** |  | 2027-12-08 | 2028-01-30 |  |  |  |  |  |  |  |  |  |  |  |  |  |  |  |
| RHD4CZ5A014ICT2100 |  | Excavation of HDPE Ducts for ICT Network - (RD-A-1 /4)-Z5-A014-ICT | 13d | 2027-12-08 | 2027-12-23 | RHD4ENSDZ5APPICT200, RHD4CZ5A014TC5200 |  |  |  | -109.02d | 0d | Skilled labor [134.71 h]; Unskilled Labor [134.71 h]; Equipment Opreator [269.32 h]; Excavator-Poclain [134.71 h]; Dump Truck [134.71 h]; (2*50mm) HDPE ducts -ICT [371.02 m] | 14,098.76 |  | A014 | Z5 | CONS | ICT | Excavation | AFT |
| RHD4CZ5A014ICT2200 |  | Installation of HDPE Ducts for ICT Network - (RD-A-1 /4)-Z5-A014-ICT | 19d | 2027-12-23 | 2028-01-15 | RHD4CZ5A014ICT2100, RHD4PRSHLDOSICT1000, RHD4PRSHLSTAGICT1000 |  |  |  | -109.02d | 0d | Carpenter [20.26 h]; Skilled labor [202.02 h]; Unskilled Labor [202.02 h]; Steel Fixer [20.26 h]; (2*50mm) HDPE ducts -ICT [1205.82 m] | 45,820.97 |  | A014 | Z5 | CONS | ICT | Installing | AFT |
| RHD4CZ5A014ICT2400 |  | Backfilling of HDPE Ducts for ICT Network - (RD-A-1 /4)-Z5-A014-ICT | 13d | 2028-01-15 | 2028-01-30 | RHD4CZ5A014ICT2200 |  |  |  | -109.02d | 0d | Skilled labor [134.71 h]; Unskilled Labor [134.71 h]; Equipment Opreator [53.91 h]; Excavator-Poclain [53.91 h]; (2*50mm) HDPE ducts -ICT [278.26 m] | 10,574.07 |  | A014 | Z5 | CONS | ICT | Backfilling | AFT |
|  | 3712 | **RHD4-02-002-A014-(ICT)-Information and Communication Technologies Manholes** |  | 2028-01-30 | 2028-02-08 |  |  |  |  |  |  |  |  |  |  |  |  |  |  |  |
| RHD4CZ5A014ICT5100 |  | Excavation for Manholes for ICT Network - (RD-A-1 /4)-Z5-A014-ICT | 4d | 2028-01-30 | 2028-02-03 | RHD4ENSDZ5APPICT200, RHD4CZ5A014ICT2400 |  |  |  | -109.02d | 0d | Skilled labor [10.89 h]; Unskilled Labor [10.89 h]; Equipment Opreator [8.71 h]; Excavator-Poclain [4.36 h]; Dump Truck [4.36 h]; Manhole Type 1 - ICT [1.2 nr] | 6,471.6 |  | A014 | Z5 | CONS | ICT | Excavation | AFT |
| RHD4CZ5A014ICT5200 |  | Installation of Manholes for ICT Network - (RD-A-1 /4)-Z5-A014-ICT | 4d | 2028-02-03 | 2028-02-08 | RHD4CZ5A014ICT5100, RHD4PRSHLDOSICT1200, RHD4PRSHLSTAGICT1200 |  |  |  | -109.02d | 0d | Skilled labor [10.89 h]; Unskilled Labor [10.89 h]; Equipment Opreator [4.36 h]; Boom Truck [4.36 h]; Manhole Type 1 - ICT [6.8 nr] | 36,672.4 |  | A014 | Z5 | CONS | ICT | Installation | AFT |
|  | 3713 | **RHD4-02-002-A014-(ICT)-Information and Communication Technologies Road Crossings** |  |  |  |  |  |  |  |  |  |  |  |  |  |  |  |  |  |  |
|  | 3701 | **RHD4-02-002-Z5-A014-Landscape Network - LS** |  |  |  |  |  |  |  |  |  |  |  |  |  |  |  |  |  |  |
|  | 3702 | **RHD4-02-002-A014-(LS)-Landscape Lighting cables** |  |  |  |  |  |  |  |  |  |  |  |  |  |  |  |  |  |  |
|  | 3703 | **RHD4-02-002-A014-(LS)-Landscape Feeder Pillars** |  |  |  |  |  |  |  |  |  |  |  |  |  |  |  |  |  |  |
|  | 3704 | **RHD4-02-002-A014-(LS)-Landscape Bollard Poles** |  |  |  |  |  |  |  |  |  |  |  |  |  |  |  |  |  |  |
|  | 3705 | **RHD4-02-002-A014-(LS)-Landscape Feeder Pillars Earthing** |  |  |  |  |  |  |  |  |  |  |  |  |  |  |  |  |  |  |
|  | 3714 | **RHD4-02-002-Z5-A014-Security Network - CCTV** |  | 2028-02-08 | 2028-02-20 |  |  |  |  |  |  |  |  |  |  |  |  |  |  |  |
|  | 2959 | **RHD4-02-002-A014-(CCTV)-CCTV Poles** |  | 2028-02-08 | 2028-02-20 |  |  |  |  |  |  |  |  |  |  |  |  |  |  |  |
| RHD4CZ5A014CCTV1100 |  | Excavation for RC Base for CCTV Poles for Security Network - (RD-A-1 /4)-Z5-A014-CCTV | 2d | 2028-02-08 | 2028-02-10 | RHD4CZ5A014ICT5200 |  |  |  | -99.06d | 0d | Skilled labor [4.32 h]; Unskilled Labor [4.32 h]; Equipment Opreator [8.64 h]; Excavator-Poclain [2.16 h]; Dump Truck [2.16 h]; 25 Meters pole for CCTV Cameras [0.2 nr] | 28,180.4 |  | C031 | Z4 | CONS | CCTV | Excavation | AFT |
| RHD4CZ5A014CCTV1200 |  | Installation for RC Base for CCTV Poles for Security Network - (RD-A-1 /4)-Z5-A014-CCTV | 2d | 2028-02-10 | 2028-02-13 | RHD4CZ5A014CCTV1100 |  |  |  | -99.06d | 0d | Skilled labor [4.32 h]; Unskilled Labor [4.32 h]; Equipment Opreator [8.64 h]; Excavator-Poclain [2.16 h]; Dump Truck [2.16 h]; 25 Meters pole for CCTV Cameras [0.5 nr] | 70,451 |  | C031 | Z4 | CONS | CCTV | RC Base | AFT |
| RHD4CZ5A014CCTV1300 |  | Backfill for RC Base for CCTV Poles for Security Network - (RD-A-1 /4)-Z5-A014-CCTV | 2.03d | 2028-02-13 | 2028-02-15 | RHD4CZ5A014CCTV1200 |  |  |  | -99.06d | 0d | Skilled labor [2.88 h]; Unskilled Labor [2.88 h]; Equipment Opreator [5.44 h]; Excavator-Poclain [1.44 h]; Dump Truck [1.44 h]; 25 Meters pole for CCTV Cameras [0.1 nr] | 14,090.2 |  | C031 | Z4 | CONS | CCTV | Backfill | AFT |
| RHD4CZ5A014CCTV1400 |  | Installation for CCTV Poles for Security Network - (RD-A-1 /4)-Z5-A014-CCTV | 2d | 2028-02-15 | 2028-02-17 | RHD4CZ5A014CCTV1300 |  |  |  | -99.06d | 0d | Skilled labor [7.2 h]; Unskilled Labor [14.56 h]; Electrician [7.2 h]; Equipment Opreator [7.2 h]; Boom Truck [3.6 h]; 25 Meters pole for CCTV Cameras [1.2 nr] | 169,082.4 |  | C031 | Z4 | CONS | CCTV | Installation | AFT |
| RHD4CZ5A014CCTV1500 |  | Protection post Installation for CCTV Poles for Security Network - (RD-A-1 /4)-Z5-A014-CCTV | 2d | 2028-02-17 | 2028-02-20 | RHD4CZ5A014CCTV1400 |  |  |  | -99.06d | 47.94d | Skilled labor [21.76 h]; Unskilled Labor [43.52 h]; Supply and Installation of minimum 4 Protection Post for each pole or tower with pipe ?220*6mm THK. [1 nr] | 4,903 |  | C031 | Z4 | CONS | CCTV | Protection post | AFT |
|  | 3715 | **RHD4-02-002-A014-(CCTV)-Civil Works** |  |  |  |  |  |  |  |  |  |  |  |  |  |  |  |  |  |  |
|  | 3353 | **RHD4-02-002-Z5-L07** |  | 2026-06-03 | 2028-07-08 |  |  |  |  |  |  |  |  |  |  |  |  |  |  |  |
|  | 3384 | **RHD4-02-002-Z5-L07-Crossings Sewage Network - SWCr** |  |  |  |  |  |  |  |  |  |  |  |  |  |  |  |  |  |  |
|  | 3394 | **RHD4-02-002-L07-(SWCr)-MH Works - 1200 mm diameter** |  |  |  |  |  |  |  |  |  |  |  |  |  |  |  |  |  |  |
|  | 3390 | **RHD4-02-002-L07-(SWCr)-UPVC Pipes - 200 mm diameter** |  |  |  |  |  |  |  |  |  |  |  |  |  |  |  |  |  |  |
|  | 3428 | **RHD4-02-002-Z5-L07-Crossings Potable Network - PTCr** |  |  |  |  |  |  |  |  |  |  |  |  |  |  |  |  |  |  |
|  | 3430 | **RHD4-02-002-L07-(PTCr)-HDPE Pipes - 160 mm diameter** |  |  |  |  |  |  |  |  |  |  |  |  |  |  |  |  |  |  |
|  | 3429 | **RHD4-02-002-L07-(PTCr)-HDPE Pipes - 110 mm diameter** |  |  |  |  |  |  |  |  |  |  |  |  |  |  |  |  |  |  |
|  | 3434 | **RHD4-02-002-L07-(PTCr)-Gate Valves (Direct Buried)** |  |  |  |  |  |  |  |  |  |  |  |  |  |  |  |  |  |  |
|  | 3475 | **RHD4-02-002-Z5-L07-Crossings Irrigation Network - IRRC** |  |  |  |  |  |  |  |  |  |  |  |  |  |  |  |  |  |  |
|  | 3476 | **RHD4-02-002-L07-(IRRC)-HDPE Pipes - 160 mm diameter** |  |  |  |  |  |  |  |  |  |  |  |  |  |  |  |  |  |  |
|  | 3484 | **RHD4-02-002-L07-(IRRC)-Gate Valves (Direct Buried)** |  |  |  |  |  |  |  |  |  |  |  |  |  |  |  |  |  |  |
|  | 3487 | **RHD4-02-002-L07-(IRRC)-Wash out Chamber** |  |  |  |  |  |  |  |  |  |  |  |  |  |  |  |  |  |  |
|  | 3488 | **RHD4-02-002-L07-(IRRC)-Wash out Valves** |  |  |  |  |  |  |  |  |  |  |  |  |  |  |  |  |  |  |
|  | 3532 | **RHD4-02-002-Z5-L07-Road Works - RD** |  | 2026-06-03 | 2028-07-08 |  |  |  |  |  |  |  |  |  |  |  |  |  |  |  |
|  | 3533 | **RHD4-02-002-L07-(RD)-Subgrade** |  | 2026-06-03 | 2026-08-03 |  |  |  |  |  |  |  |  |  |  |  |  |  |  |  |
| RHD4CZ5L07RD1100 |  | Supply, lay and compaction subgrade compacted thickness 300 mm for Roads - (RD-L-7)-Z5-L07-RD(Completed) | 5d | 2026-06-03 A | 2026-08-03 A | RHD4ENSDZ5APPRD220, RHD4ENSDZ5APPEW100 SS, RHD4CZ5L07ST3301, RHD4CZ5L07ST3302, RHD4CZ5L07ICT3400, RHD4CZ5L07ICT3400 FF | 100% | 2026-08-30 | 2026-09-03 |  |  | Skilled labor [129.6 h]; Unskilled Labor [259.2 h]; Electrician [129.6 h]; Equipment Opreator [885.06 h]; Water Truck [42.8 h]; Roller compactor [64.8 h]; Grader [129.6 h]; Dump Truck [648 h]; Subgrade [6929.62 m3] | 131,662.78 | 131,662.78 | L07 | Z5 | CONS | RD | Subgrade | bef |

| ID | WBS | Activity | Duration | Start | Finish | Predecessors | Complete | Remaining | Planned start | Planned finish | Total float | Free float | Resources | Cost | Actual cost | RDH4-01-001-Road and Block Names-1 | RDH4-01-001-Zones-1 | RDH4-01-001-Phases-1 | RDH4-01-001-Networks-1 | RDH4-01-001-Work Method-1 | RDH4-01-001-MENEM |
| --- | --- | --- | --- | --- | --- | --- | --- | --- | --- | --- | --- | --- | --- | --- | --- | --- | --- | --- | --- | --- | --- |
|  | 3534 | **RHD4-02-002-L07-(RD)-Aggregate Base Course** |  | 2026-10-13 | 2027-03-02 |  |  |  |  |  |  |  |  |  |  |  |  |  |  |  |  |
| RHD4CZ5L07RD2100 |  | Supply, lay and compaction Aggregate base course compacted thickness 300 mmfor Roads - (RD-L-7)-Z5-L07-RD | 10d | 2026-10-13 A | 2027-03-02 | RHD4PRSHLDOSRD1000, RHD4PRSHLSTAGRD1000, RHD4ENSDZ5APPRD220, RHD4ENSDZ5APPEW100 SS, RHD4CZ5L07RD1100 | 50% | 3d | 2026-10-20 | 2026-10-31 | -181d | 0d | Skilled labor [53.36 h]; Unskilled Labor [106.73 h]; Equipment Opreator [675.53 h]; Water Truck [35.2 h]; Roller compactor [106.73 h]; Grader [106.73 h]; Dump Truck [426.9 h]; Aggregate Base Courses [4352.5 m3] | 248,092.5 | 124,046.25 | L07 | Z5 | CONS | RD | ABC | bef |
|  | 3535 | **RHD4-02-002-L07-(RD)-Bituminous base course Two Layers, including (MC1)&(RC2)** |  | 2027-03-03 | 2028-06-11 |  |  |  |  |  |  |  |  |  |  |  |  |  |  |  |  |
| RHD4CZ5L07RD3100 |  | Supply, lay and Asphaltic base course including Prime Coat (MC1) for 1st Layer - (RD-L-7)-Z5-L07-RD | 2d | 2027-03-03 | 2027-03-04 | RHD4CZ5L07RD2100, RHD4PRSHLDOSRD1100, RHD4ENMSASPH2000, RHD4ENMSASPH2010, RHD4PRSHLSTAGRD1100 |  |  |  |  | -181d | 17d | Skilled labor [17.42 h]; Unskilled Labor [104.55 h]; Equipment Opreator [261.26 h]; Bobcat [17.42 h]; Roller compactor [17.42 h]; Asphalt Paver [17.42 h]; Rubber Compactor [34.85 h]; MC1/RC2 Sprinkler [17.42 h]; Dump Truck [156.71 h]; Bituminous base course (Grading I - Class A), including Prime coat (MC1) & tack coate (RC2) [637.21 m3] | 304,586.38 |  | L07 | Z5 | CONS | RD | 150 mm | AFT |
| RHD4CZ5L07RD3200 |  | Supply, lay and Asphaltic base course including Tack Coat (RC2) for 2nd Layer - (RD-L-7)-Z5-L07-RD | 2d | 2028-06-10 | 2028-06-11 | RHD4PRSHLDOSRD1100, RHD4PRSHLSTAGRD1100, RHD4CZ5L07CCTV6100 |  |  |  |  | -147d | 0d | Skilled labor [17.42 h]; Unskilled Labor [104.55 h]; Equipment Opreator [261.26 h]; Bobcat [17.42 h]; Roller compactor [17.42 h]; Asphalt Paver [17.42 h]; Rubber Compactor [34.85 h]; MC1/RC2 Sprinkler [17.42 h]; Dump Truck [156.71 h]; Bituminous base course (Grading I - Class A), including Prime coat (MC1) & tack coate (RC2) [637.21 m3] | 304,586.38 |  | L07 | Z5 | CONS | RD | 150 mm | AFT |
|  | 3537 | **RHD4-02-002-L07-(RD)-Precast Concrete Curb** |  | 2028-06-12 | 2028-06-18 |  |  |  |  |  |  |  |  |  |  |  |  |  |  |  |  |
| RHD4CZ5L07RD5100 |  | Supply and installation Precast Concrete Kerb for Roads - (RD-L-7)-Z5-L07-RD | 6d | 2028-06-12 | 2028-06-18 | RHD4CZ5L07RD3200, RHD4PRSHLDOSRD1200, RHD4ENMSRD2000, RHD4ENMSRD2010, RHD4PRSHLSTAGRD1200, RHD4GNTCZ7FT1800 |  |  |  |  | -147d | 0d | Mason [282.06 h]; Skilled labor [93.98 h]; Unskilled Labor [282.06 h]; Equipment Opreator [188.08 h]; Bobcat [93.98 h]; Concrete Mixer Truck [93.98 h]; Precast Concrete Curbstone, type K1 [2835.51 m]; Precast Flush concrete Curbstone K3 [1049.93 m] | 213,699.57 |  | L07 | Z5 | CONS | RD | Curbs | AFT |
|  | 3540 | **RHD4-02-002-L07-(RD)-Traffic Signage** |  | 2028-06-19 | 2028-06-25 |  |  |  |  |  |  |  |  |  |  |  |  |  |  |  |  |
| RHD4CZ5L07RD8100 |  | Installation of Traffic Signage for Road Network - (RD-L-7)-Z5-L07-RD | 6d | 2028-06-19 | 2028-06-25 | RHD4CZ5L07RD5100, RHD4CZ7L03RD7100 |  |  |  |  | -147d | 0d | Skilled labor [130.68 h]; Unskilled Labor [65.34 h]; Electrician [17.42 h]; Equipment Opreator [20 h]; Boom Truck [13.07 h]; Concrete Mixer Truck [6.97 h]; Traffic signs, ground mounted, 1 Sheet Aluminium, (breakaway)Single post [14 nr]; Traffic signs, ground mounted, 1 Sheets Aluminium, (breakaway)Double post [1 nr] | 19,003 |  | L07 | Z5 | CONS | RD | Traffic Signage | AFT |
|  | 3538 | **RHD4-02-002-L07-(RD)-Precast Interlocking Block Pavers** |  | 2028-06-26 | 2028-07-02 |  |  |  |  |  |  |  |  |  |  |  |  |  |  |  |  |
| RHD4CZ5L07RD6100 |  | Interlocking block pavers for sidewalk-footpath for Side walks and Parking areas - (RD-L-7)-Z5-L07-RD | 6d | 2028-06-26 | 2028-07-02 | RHD4PRSHLDOSRD1300, RHD4PRSHLDOSRD1400, RHD4ENMSRD2000, RHD4ENMSRD2010, RHD4PRSHLSTAGRD1300, RHD4CZ5L07RD8100 |  |  |  |  | -147d | 0d | Skilled labor [229.13 h]; Unskilled Labor [343.7 h]; Equipment Opreator [372.34 h]; Boom Truck [114.57 h]; Bobcat [114.57 h]; Concrete Mixer Truck [114.57 h]; Water Truck [28.64 h]; Interlock 80 mm thick Pavers for parking including sand fill [2630 m2] | 194,620 |  | L07 | Z5 | CONS | RD | Interlocking | AFT |
|  | 3536 | **RHD4-02-002-L07-(RD)-Bituminous concrete wearing course including tack coat (RC2)** |  | 2028-07-03 | 2028-07-04 |  |  |  |  |  |  |  |  |  |  |  |  |  |  |  |  |
| RHD4CZ5L07RD4100 |  | Supply, lay and compaction Asphaltic wearing course including tack Coat (RC2)for Road Network - (RD-L-7)-Z5-L07-RD | 2d | 2028-07-03 | 2028-07-04 | RHD4CZ5L07RD6100 |  |  |  |  | -147d | 0d | Skilled labor [19.28 h]; Unskilled Labor [115.33 h]; Equipment Opreator [288.38 h]; Bobcat [19.28 h]; Roller compactor [19.28 h]; Asphalt Paver [19.28 h]; Rubber Compactor [38.44 h]; MC1/RC2 Sprinkler [19.28 h]; Dump Truck [173.05 h]; Bituminous concrete wearing course, (Grading I - Class A), including tack coat (RC2) [917.01 m3] | 497,936.43 |  | L07 | Z5 | CONS | RD | 50 mm | AFT |
|  | 3539 | **RHD4-02-002-L07-(RD)-Pavement Marking** |  | 2028-07-05 | 2028-07-08 |  |  |  |  |  |  |  |  |  |  |  |  |  |  |  |  |
| RHD4CZ5L07RD7100 |  | Pavement Markings for Road Network - (RD-L-7)-Z5-L07-RD | 3d | 2028-07-05 | 2028-07-08 | RHD4CZ5L07RD4100, RHD4PRSHLDOSRD1500, RHD4PRSHLSTAGRD1500 |  |  |  |  | -147d | 0d | Skilled labor [22.54 h]; Unskilled Labor [45.09 h]; Equipment Opreator [22.54 h]; Road Marking Machine [22.54 h]; Retroreflective Thermoplastic White Traffic Markings [308.3 m2]; Retroreflective Thermoplastic Yellow, Traffic Markings [138.63 m2]; Retroreflective raised pavement markers (cat eyes) [107 nr] | 17,492.83 |  | L07 | Z5 | CONS | RD | Pavement Marking | AFT |
|  | 3357 | **RHD4-02-002-Z5-L07-Storm Network - ST** |  | 2026-08-04 | 2027-01-14 |  |  |  |  |  |  |  |  |  |  |  |  |  |  |  |  |
|  | 3375 | **RHD4-02-002-L07-(ST)-MH Works - 1500 mm diameter** |  | 2026-08-04 | 2027-01-05 |  |  |  |  |  |  |  |  |  |  |  |  |  |  |  |  |
| RHD4CZ5L07ST3101 |  | Excavation and PC Blinding works for MH 1500 mm - (RD-L-7)-Z5-L07-ST | 2d | 2026-08-04 A | 2026-08-06 A | RHD4ENSDZ5APPST110, RHD4ENMSST2000, RHD4PRSHLDOSST1003, RHD4ENSDZ5APPRD220, RHD4ENSDZ5APPEW100 SS | 100% |  | 2026-07-12 | 2026-07-13 |  |  | Skilled labor [10.89 h]; Unskilled Labor [10.89 h]; Equipment Opreator [17.42 h]; Excavator-Poclain [10.89 h]; Water Truck [1.09 h]; Dump Truck [5.45 h]; MH (1500mm Diameter) - ST - depth 1.50 - 2.5m [0.25 nr]; MH (1500mm Diameter) - ST - depth 2.51 - 3.5m [0.25 nr] | 7,772 | 7,772 | L07 | Z5 | CONS | ST | Excavation | bef |
| RHD4CZ5L07ST3201 |  | Installation of Base for MH 1500 mm - (RD-L-7)-Z5-L07-ST | 4d | 2026-09-19 A | 2026-09-22 A | RHD4CZ5L07ST3101, RHD4PRSHLSTAGST1604 | 100% |  | 2026-07-14 | 2026-07-18 |  |  | Skilled labor [10.89 h]; Unskilled Labor [10.89 h]; Equipment Opreator [4.36 h]; Boom Truck [2.18 h]; Concrete Mixer Truck [2.18 h]; MH (1500mm Diameter) - ST - depth 1.50 - 2.5m [0.25 nr]; MH (1500mm Diameter) - ST - depth 2.51 - 3.5m [0.25 nr] | 7,772 | 7,772 | L07 | Z5 | CONS | ST | Installing Base | bef |
| RHD4CZ5L07ST3301 |  | MH Ring and C.Slab works and Backfilling works for MH 1500 mm - (RD-L-7)-Z5-L07-ST | 2d | 2026-10-01 A | 2026-10-03 A | RHD4CZ5L07ST3201, RHD4PRSHLDOSST1604 | 100% |  | 2026-10-27 | 2026-10-28 |  |  | Skilled labor [10.89 h]; Unskilled Labor [10.89 h]; Equipment Opreator [7.62 h]; Boom Truck [4.36 h]; Concrete Mixer Truck [3.27 h]; MH (1500mm Diameter) - ST - depth 1.50 - 2.5m [0.35 nr]; MH (1500mm Diameter) - ST - depth 2.51 - 3.5m [0.35 nr] | 10,880.8 | 10,880.8 | L07 | Z5 | CONS | ST | Installing Rings | bef |
| RHD4CZ5L07ST3401 |  | Steel Cover for MH 1500 mm - (RD-L-7)-Z5-L07-ST | 2d | 2027-01-02 | 2027-01-03 | RHD4CZ5L07ST3301, RHD4PRSHLDOSST1704, RHD4PRSHLSTAGST1704 |  |  |  |  | -129d | 0d | Skilled labor [7.3 h]; Unskilled Labor [14.48 h]; Equipment Opreator [1.42 h]; Boom Truck [1.42 h]; MH (1500mm Diameter) - ST - depth 1.50 - 2.5m [0.05 nr]; MH (1500mm Diameter) - ST - depth 2.51 - 3.5m [0.05 nr] | 1,554.4 |  | L07 | Z5 | CONS | ST | Steel Cover | bef |
| RHD4CZ5L07ST3501 |  | Finishing, Benching, Testing works for MH 1500 mm - (RD-L-7)-Z5-L07-ST | 2d | 2027-01-04 | 2027-01-05 | RHD4CZ5L07ST3401 |  |  |  |  | -128d | 1d | Skilled labor [10.89 h]; Unskilled Labor [21.78 h]; Plumber [10.89 h]; Equipment Opreator [2.18 h]; Water Truck [2.18 h]; MH (1500mm Diameter) - ST - depth 1.50 - 2.5m [0.1 nr]; MH (1500mm Diameter) - ST - depth 2.51 - 3.5m [0.1 nr] | 3,108.8 |  | L07 | Z5 | CONS | ST | Benching | bef |
|  | 3376 | **RHD4-02-002-L07-(ST)-MH Works - 2000 mm diameter** |  | 2026-08-04 | 2027-01-07 |  |  |  |  |  |  |  |  |  |  |  |  |  |  |  |  |
| RHD4CZ5L07ST3102 |  | Excavation and PC Blinding works for MH 2000 mm - (RD-L-7)-Z5-L07-ST | 5d | 2026-08-04 A | 2026-08-08 A | RHD4CZ5L07ST3101, RHD4ENSDZ5APPST110, RHD4ENMSST2000 | 100% |  | 2026-07-14 | 2026-07-19 |  |  | Skilled labor [25.37 h]; Unskilled Labor [25.37 h]; Equipment Opreator [40.62 h]; Excavator-Poclain [25.37 h]; Water Truck [2.5 h]; Dump Truck [12.74 h]; MH (2000mm Diameter) - ST - depth 2.51 - 3.5m [1.75 nr] | 38,232.25 | 38,232.25 | L07 | Z5 | CONS | ST | Excavation | bef |
| RHD4CZ5L07ST3202 |  | Installation of Base for MH 2000 mm - (RD-L-7)-Z5-L07-ST | 4d | 2026-08-09 A | 2026-08-21 A | RHD4CZ5L07ST3102, RHD4PRSHLSTAGST1604 | 100% |  | 2026-07-20 | 2026-07-23 |  |  | Skilled labor [38.12 h]; Unskilled Labor [38.12 h]; Equipment Opreator [15.25 h]; Boom Truck [7.62 h]; Concrete Mixer Truck [7.62 h]; MH (2000mm Diameter) - ST - depth 2.51 - 3.5m [1.75 nr] | 38,232.25 | 38,232.25 | L07 | Z5 | CONS | ST | Installing Base | bef |
| RHD4CZ5L07ST3302 |  | MH Ring and C.Slab works and Backfilling works for MH 2000 mm - (RD-L-7)-Z5-L07-ST | 4d | 2026-10-01 A | 2026-10-05 A | RHD4CZ5L07ST3202, RHD4PRSHLDOSST1604 | 100% |  | 2026-10-28 | 2026-11-01 |  |  | Skilled labor [38.12 h]; Unskilled Labor [38.12 h]; Equipment Opreator [26.68 h]; Boom Truck [15.25 h]; Concrete Mixer Truck [11.43 h]; MH (2000mm Diameter) - ST - depth 2.51 - 3.5m [2.45 nr] | 53,525.15 | 53,525.15 | L07 | Z5 | CONS | ST | Installing Rings | bef |
| RHD4CZ5L07ST3402 |  | Steel Cover for MH 2000 mm - (RD-L-7)-Z5-L07-ST | 3d | 2027-01-02 | 2027-01-04 | RHD4CZ5L07ST3302, RHD4CZ5L07ST3401 SS, RHD4PRSHLDOSST1704, RHD4PRSHLSTAGST1704 |  |  |  |  | -129d | 0d | Skilled labor [25.37 h]; Unskilled Labor [50.86 h]; Equipment Opreator [5.12 h]; Boom Truck [5.12 h]; MH (2000mm Diameter) - ST - depth 2.51 - 3.5m [0.35 nr] | 7,646.45 |  | L07 | Z5 | CONS | ST | Steel Cover | bef |
| RHD4CZ5L07ST3502 |  | Finishing, Benching, Testing works for MH 2000 mm - (RD-L-7)-Z5-L07-ST | 3d | 2027-01-05 | 2027-01-07 | RHD4CZ5L07ST3402, RHD4CZ5L07ST3501 SS |  |  |  |  | -129d | 19d | Skilled labor [25.37 h]; Unskilled Labor [50.86 h]; Plumber [25.37 h]; Equipment Opreator [5.12 h]; Water Truck [5.12 h]; MH (2000mm Diameter) - ST - depth 2.51 - 3.5m [0.7 nr] | 15,292.9 |  | L07 | Z5 | CONS | ST | Benching | bef |

| ID | WBS | Activity | Duration | Start | Finish | Predecessors | Complete | Planned start | Planned finish | Total float | Free float | Resources | Cost | Actual cost | RDH4-01-001-Road and Block Names-1 | RDH4-01-001-Zones-1 | RDH4-01-001-Phases-1 | RDH4-01-001-Networks-1 | RDH4-01-001-Work Method-1 | RDH4-01-001-MENEM |
| --- | --- | --- | --- | --- | --- | --- | --- | --- | --- | --- | --- | --- | --- | --- | --- | --- | --- | --- | --- | --- |
|  | 3374 | **RHD4-02-002-L07-(ST)-MH Works - 1200 mm diameter** |  | 2026-08-04 | 2027-01-05 |  |  |  |  |  |  |  |  |  |  |  |  |  |  |  |
| RHD4CZ5L07ST3100 |  | Excavation and PC Blinding works for MH 1200 mm - (RD-L-7)-Z5-L07-ST | 2d | 2026-08-04 A | 2026-08-10 A | RHD4CZ5L07ST3102, RHD4ENSDZ5APPST110, RHD4ENMSST2000, RHD4ENMSST2010 | 100% | 2026-07-20 | 2026-07-21 |  |  | Skilled labor [18.19 h]; Unskilled Labor [18.19 h]; Equipment Opreator [29.08 h]; Excavator-Poclain [18.19 h]; Water Truck [1.85 h]; Dump Truck [9.04 h]; MH (1200mm Diameter) - ST - depth 1.50 - 2.5m [1.25 nr] | 12,903.75 | 12,903.75 | L07 | Z5 | CONS | ST | Excavation | bef |
| RHD4CZ5L07ST3200 |  | Installation of Base for MH 1200 mm - (RD-L-7)-Z5-L07-ST | 2d | 2026-09-19 A | 2026-09-20 A | RHD4CZ5L07ST3100, RHD4PRSHLSTAGST1604 | 100% | 2026-07-22 | 2026-07-23 |  |  | Skilled labor [18.19 h]; Unskilled Labor [18.19 h]; Equipment Opreator [7.3 h]; Boom Truck [3.59 h]; Concrete Mixer Truck [3.59 h]; MH (1200mm Diameter) - ST - depth 1.50 - 2.5m [1.25 nr] | 12,903.75 | 12,903.75 | L07 | Z5 | CONS | ST | Installing Base | bef |
| RHD4CZ5L07ST3300 |  | MH Ring and C.Slab works and Backfilling works for MH 1200 mm - (RD-L-7)-Z5-L07-ST | 2d | 2026-10-01 A | 2026-10-03 A | RHD4CZ5L07ST3200, RHD4PRSHLDOSST1604 | 100% | 2026-10-27 | 2026-10-28 |  |  | Skilled labor [18.19 h]; Unskilled Labor [18.19 h]; Equipment Opreator [12.74 h]; Boom Truck [7.3 h]; Concrete Mixer Truck [5.45 h]; MH (1200mm Diameter) - ST - depth 1.50 - 2.5m [1.75 nr] | 18,065.25 | 18,065.25 | L07 | Z5 | CONS | ST | Installing Rings | bef |
| RHD4CZ5L07ST3400 |  | Steel Cover for MH 1200 mm - (RD-L-7)-Z5-L07-ST | 2d | 2027-01-02 | 2027-01-03 | RHD4CZ5L07ST3300, RHD4PRSHLDOSST1704, RHD4PRSHLSTAGST1704 |  |  |  | -174d | 0d | Skilled labor [18.19 h]; Unskilled Labor [36.26 h]; Equipment Opreator [3.59 h]; Boom Truck [3.59 h]; MH (1200mm Diameter) - ST - depth 1.50 - 2.5m [0.25 nr] | 2,580.75 |  | L07 | Z5 | CONS | ST | Steel Cover | bef |
| RHD4CZ5L07ST3500 |  | Finishing, Benching, Testing works for MH 1200 mm - (RD-L-7)-Z5-L07-ST | 2d | 2027-01-04 | 2027-01-05 | RHD4CZ5L07ST3400 |  |  |  | -174d | 23.02d | Skilled labor [18.19 h]; Unskilled Labor [36.26 h]; Plumber [18.19 h]; Equipment Opreator [3.59 h]; Water Truck [3.59 h]; MH (1200mm Diameter) - ST - depth 1.50 - 2.5m [0.5 nr] | 5,161.5 |  | L07 | Z5 | CONS | ST | Benching | bef |
|  | 3366 | **RHD4-02-002-L07-(ST)-GRP Pipes - 1200 mm diameter** |  | 2026-08-04 | 2027-01-03 |  |  |  |  |  |  |  |  |  |  |  |  |  |  |  |
| RHD4CZ5L07ST1108 |  | Excavation works for GRP Pipe Line 1200 mm - (RD-L-7)-Z5-L07-ST | 4d | 2026-08-04 A | 2026-08-05 A | RHD4CZ5L07ST3202, RHD4CZ5L07ST3201, RHD4CZ5L07ST3200, RHD4ENSDZ5APPST110, RHD4ENSDZ7APPEW100, RHD4ENSDZ7APPRD220, RHD4CZ7L03RW3000 | 100% | 2026-07-25 | 2026-07-28 |  |  | Skilled labor [10.56 h]; Unskilled Labor [10.56 h]; Equipment Opreator [12.74 h]; Excavator-Poclain [10.56 h]; Dump Truck [2.07 h]; GRP (1200mm Diameter) - ST - Depth: 1.51m - 2.5m [21.89 m]; GRP (1200mm Diameter) - ST - Depth: 2.51m - 3.5m | 25,786.42 | 25,786.42 | L07 | Z5 | CONS | ST | Excavation | bef |
| RHD4CZ5L07ST1208 |  | Bedding works for GRP Pipe Line 1200 mm - (RD-L-7)-Z5-L07-ST | 2d | 2026-08-06 A | 2026-08-08 A | RHD4CZ5L07ST1108 | 100% | 2026-07-29 | 2026-07-30 |  |  | Skilled labor [10.56 h]; Unskilled Labor [21.24 h]; Equipment Opreator [21.24 h]; Excavator-Poclain [10.56 h]; Dump Truck [10.56 h]; GRP (1200mm Diameter) - ST - Depth: 1.51m - 2.5m [7.3 m]; GRP (1200mm Diameter) - ST - Depth: 2.51m - 3.5m | 8,599.4 | 8,599.4 | L07 | Z5 | CONS | ST | Bedding | bef |
| RHD4CZ5L07ST1308 |  | Installing for GRP Pipe Line 1200 mm - (RD-L-7)-Z5-L07-ST | 2d | 2026-08-09 A | 2026-08-10 A | RHD4CZ5L07ST1208, RHD4CZ5L07ST3302, RHD4CZ5L07ST3301, RHD4CZ5L07ST3300, RHD4PRSHLSTAGST1004, RHD4PRSHLDOSST1604, RHD4PRSHLPOST1000, RHD4PRSHLDOSST1004 | 100% | 2026-08-01 | 2026-08-02 |  |  | Unskilled Labor [12.74 h]; Plumber [6.32 h]; GRP (1200mm Diameter) - ST - Depth: 1.51m - 2.5m [58.37 m]; GRP (1200mm Diameter) - ST - Depth: 2.51m - 3.5m | 68,759.86 | 68,759.86 | L07 | Z5 | CONS | ST | Installation | bef |
| RHD4CZ5L07ST1508 |  | Backfilling and warning tape works for GRP Pipe Line 1200 mm - (RD-L-7)-Z5-L07-ST | 2d | 2026-09-24 A | 2026-09-26 A | RHD4CZ5L07ST1408 | 100% | 2026-08-05 | 2026-08-06 |  |  | Skilled labor [10.56 h]; Unskilled Labor [21.24 h]; Equipment Opreator [21.24 h]; Excavator-Poclain [10.56 h]; Dump Truck [10.56 h]; GRP (1200mm Diameter) - ST - Depth: 1.51m - 2.5m [29.18 m]; GRP (1200mm Diameter) - ST - Depth: 2.51m - 3.5m | 34,374.04 | 34,374.04 | L07 | Z5 | CONS | ST | Backfilling | bef |
| RHD4CZ5L07ST1408 |  | Primary Test for GRP Pipe Line 1200 mm - (RD-L-7)-Z5-L07-ST | 2d | 2027-01-02 | 2027-01-03 | RHD4CZ5L07ST1308 |  |  |  | -149d | 0d | Unskilled Labor [5.34 h]; Plumber [5.34 h]; Equipment Opreator [5.34 h]; Water Truck [5.34 h]; GRP (1200mm Diameter) - ST - Depth: 1.51m - 2.5m [29.18 m]; GRP (1200mm Diameter) - ST - Depth: 2.51m - 3.5m | 34,374.04 |  | L07 | Z5 | CONS | ST | Primary Test | bef |
|  | 3365 | **RHD4-02-002-L07-(ST)-GRP Pipes - 1100 mm diameter** |  | 2026-08-04 | 2027-01-03 |  |  |  |  |  |  |  |  |  |  |  |  |  |  |  |
| RHD4CZ5L07ST1107 |  | Excavation works for GRP Pipe Line 1100 mm - (RD-L-7)-Z5-L07-ST | 4d | 2026-08-04 A | 2026-08-05 A | RHD4CZ5L07ST1108, RHD4ENSDZ5APPST110 | 100% | 2026-07-29 | 2026-08-02 |  |  | Skilled labor [10.45 h]; Unskilled Labor [10.45 h]; Equipment Opreator [12.52 h]; Excavator-Poclain [10.45 h]; Dump Truck [2.07 h]; GRP (1100mm Diameter) - ST - Depth: 1.51m - 2.5m [28.75 m] | 30,414.85 | 30,414.85 | L07 | Z5 | CONS | ST | Excavation | bef |
| RHD4CZ5L07ST1207 |  | Bedding works for GRP Pipe Line 1100 mm - (RD-L-7)-Z5-L07-ST | 2d | 2026-08-06 A | 2026-08-08 A | RHD4CZ5L07ST1107 | 100% | 2026-08-03 | 2026-08-04 |  |  | Skilled labor [10.45 h]; Unskilled Labor [20.91 h]; Equipment Opreator [20.91 h]; Excavator-Poclain [10.45 h]; Dump Truck [10.45 h]; GRP (1100mm Diameter) - ST - Depth: 1.51m - 2.5m [9.58 m] | 10,138.28 | 10,138.28 | L07 | Z5 | CONS | ST | Bedding | bef |
| RHD4CZ5L07ST1307 |  | Installing for GRP Pipe Line 1100 mm - (RD-L-7)-Z5-L07-ST | 2d | 2026-08-09 A | 2026-08-10 A | RHD4CZ5L07ST1207, RHD4CZ5L07ST1308, RHD4PRSHLSTAGST1004, RHD4PRSHLDOSST1604, RHD4PRSHLPOST1000, RHD4PRSHLDOSST1004 | 100% | 2026-08-05 | 2026-08-06 |  |  | Unskilled Labor [13.94 h]; Plumber [6.97 h]; GRP (1100mm Diameter) - ST - Depth: 1.51m - 2.5m [76.66 m] | 81,106.28 | 81,106.28 | L07 | Z5 | CONS | ST | Installation | bef |
| RHD4CZ5L07ST1507 |  | Backfilling and warning tape works for GRP Pipe Line 1100 mm - (RD-L-7)-Z5-L07-ST | 2d | 2026-09-24 A | 2026-09-26 A | RHD4CZ5L07ST1407, RHD4CZ5L07ST1508 | 100% | 2026-08-10 | 2026-08-11 |  |  | Skilled labor [10.45 h]; Unskilled Labor [20.91 h]; Equipment Opreator [20.91 h]; Excavator-Poclain [10.45 h]; Dump Truck [10.45 h]; GRP (1100mm Diameter) - ST - Depth: 1.51m - 2.5m [38.33 m] | 40,553.14 | 40,553.14 | L07 | Z5 | CONS | ST | Backfilling | bef |
| RHD4CZ5L07ST1407 |  | Primary Test for GRP Pipe Line 1100 mm - (RD-L-7)-Z5-L07-ST | 2d | 2027-01-02 | 2027-01-03 | RHD4CZ5L07ST1307 |  |  |  | -149d | 0d | Unskilled Labor [5.23 h]; Plumber [5.23 h]; Equipment Opreator [5.23 h]; Water Truck [5.23 h]; GRP (1100mm Diameter) - ST - Depth: 1.51m - 2.5m [38.33 m] | 40,553.14 |  | L07 | Z5 | CONS | ST | Primary Test | bef |
|  | 3364 | **RHD4-02-002-L07-(ST)-GRP Pipes - 1000 mm diameter** |  | 2026-08-04 | 2027-01-03 |  |  |  |  |  |  |  |  |  |  |  |  |  |  |  |
| RHD4CZ5L07ST1106 |  | Excavation works for GRP Pipe Line 1000 mm - (RD-L-7)-Z5-L07-ST | 4d | 2026-08-04 A | 2026-08-05 A | RHD4CZ5L07ST1107, RHD4ENSDZ5APPST110 | 100% | 2026-08-03 | 2026-08-06 |  |  | Skilled labor [2.61 h]; Unskilled Labor [2.61 h]; Equipment Opreator [3.05 h]; Excavator-Poclain [2.61 h]; Dump Truck [0.54 h]; GRP (1000mm Diameter) - ST - Depth: 1.51m - 2.5m [7.12 m] | 6,523.75 | 6,523.75 | L07 | Z5 | CONS | ST | Excavation | bef |
| RHD4CZ5L07ST1206 |  | Bedding works for GRP Pipe Line 1000 mm - (RD-L-7)-Z5-L07-ST | 2d | 2026-09-15 A | 2026-09-16 A | RHD4CZ5L07ST1106 | 100% | 2026-08-08 | 2026-08-09 |  |  | Skilled labor [2.61 h]; Unskilled Labor [5.12 h]; Equipment Opreator [5.12 h]; Excavator-Poclain [2.61 h]; Dump Truck [2.61 h]; GRP (1000mm Diameter) - ST - Depth: 1.51m - 2.5m [2.37 m] | 2,174.58 | 2,174.58 | L07 | Z5 | CONS | ST | Bedding | bef |
| RHD4CZ5L07ST1306 |  | Installing for GRP Pipe Line 1000 mm - (RD-L-7)-Z5-L07-ST | 2d | 2026-09-17 A | 2026-09-19 A | RHD4CZ5L07ST1206, RHD4CZ5L07ST1307, RHD4PRSHLSTAGST1004, RHD4PRSHLDOSST1604, RHD4PRSHLPOST1000, RHD4PRSHLDOSST1004 | 100% | 2026-08-10 | 2026-08-11 |  |  | Unskilled Labor [3.48 h]; Plumber [1.74 h]; GRP (1000mm Diameter) - ST - Depth: 1.51m - 2.5m [18.99 m] | 17,396.67 | 17,396.67 | L07 | Z5 | CONS | ST | Installation | bef |
| RHD4CZ5L07ST1506 |  | Backfilling and warning tape works for GRP Pipe Line 1000 mm - (RD-L-7)-Z5-L07-ST | 2d | 2026-10-17 A | 2026-10-18 A | RHD4CZ5L07ST1406, RHD4CZ5L07ST1507 | 100% | 2027-01-10 | 2027-01-11 |  |  | Skilled labor [2.61 h]; Unskilled Labor [5.12 h]; Equipment Opreator [5.12 h]; Excavator-Poclain [2.61 h]; Dump Truck [2.61 h]; GRP (1000mm Diameter) - ST - Depth: 1.51m - 2.5m [9.49 m] | 8,692.84 | 8,692.84 | L07 | Z5 | CONS | ST | Backfilling | bef |
| RHD4CZ5L07ST1406 |  | Primary Test for GRP Pipe Line 1000 mm - (RD-L-7)-Z5-L07-ST | 2d | 2027-01-02 | 2027-01-03 | RHD4CZ5L07ST1306 |  |  |  | -149d | 0d | Unskilled Labor [1.31 h]; Plumber [1.31 h]; Equipment Opreator [1.31 h]; Water Truck [1.31 h]; GRP (1000mm Diameter) - ST - Depth: 1.51m - 2.5m [9.49 m] | 8,692.84 |  | L07 | Z5 | CONS | ST | Primary Test | bef |

| ID | WBS | Activity | Duration | Start | Finish | Predecessors | Complete | Planned start | Planned finish | Total float | Free float | Resources | Cost | Actual cost | RDH4-01-001-Road and Block Names-1 | RDH4-01-001-Zones-1 | RDH4-01-001-Phases-1 | RDH4-01-001-Networks-1 | RDH4-01-001-Work Method-1 | RDH4-01-001-MENEM |
| --- | --- | --- | --- | --- | --- | --- | --- | --- | --- | --- | --- | --- | --- | --- | --- | --- | --- | --- | --- | --- |
|  | 3361 | **RHD4-02-002-L07-(ST)-GRP Pipes - 700 mm diameter** |  | 2026-08-04 | 2027-01-03 |  |  |  |  |  |  |  |  |  |  |  |  |  |  |  |
| RHD4CZ5L07ST1103 |  | Excavation works for GRP Pipe Line 700 mm - (RD-L-7)-Z5-L07-ST | 2d | 2026-08-04 A | 2026-08-05 A | RHD4CZ5L07ST1106, RHD4ENSDZ5APPST110 | 100% | 2026-08-08 | 2026-08-09 |  |  | Skilled labor [4.36 h]; Unskilled Labor [4.36 h]; Equipment Opreator [5.23 h]; Excavator-Poclain [4.36 h]; Dump Truck [0.87 h]; GRP (700mm Diameter) - ST - Depth: 1.51m - 2.5m [12.05 m] | 7,193.85 | 7,193.85 | L07 | Z5 | CONS | ST | Excavation | bef |
| RHD4CZ5L07ST1203 |  | Bedding works for GRP Pipe Line 700 mm - (RD-L-7)-Z5-L07-ST | 2d | 2026-08-06 A | 2026-08-08 A | RHD4CZ5L07ST1103 | 100% | 2026-08-10 | 2026-08-11 |  |  | Skilled labor [4.36 h]; Unskilled Labor [8.71 h]; Equipment Opreator [8.71 h]; Excavator-Poclain [4.36 h]; Dump Truck [4.36 h]; GRP (700mm Diameter) - ST - Depth: 1.51m - 2.5m [4.02 m] | 2,399.04 | 2,399.04 | L07 | Z5 | CONS | ST | Bedding | bef |
| RHD4CZ5L07ST1303 |  | Installing for GRP Pipe Line 700 mm - (RD-L-7)-Z5-L07-ST | 2d | 2026-08-09 A | 2026-08-10 A | RHD4CZ5L07ST1203, RHD4CZ5L07ST1306, RHD4PRSHLSTAGST1004, RHD4PRSHLDOSST1604, RHD4PRSHLPOST1000, RHD4PRSHLDOSST1004 | 100% | 2026-08-12 | 2026-08-13 |  |  | Unskilled Labor [4.36 h]; Plumber [2.18 h]; GRP (700mm Diameter) - ST - Depth: 1.51m - 2.5m [32.15 m] | 19,192.36 | 19,192.36 | L07 | Z5 | CONS | ST | Installation | bef |
| RHD4CZ5L07ST1503 |  | Backfilling and warning tape works for GRP Pipe Line 700 mm - (RD-L-7)-Z5-L07-ST | 2d | 2026-10-17 A | 2026-10-18 A | RHD4CZ5L07ST1403, RHD4CZ5L07ST1506 | 100% | 2027-01-12 | 2027-01-13 |  |  | Skilled labor [4.36 h]; Unskilled Labor [8.71 h]; Equipment Opreator [8.71 h]; Excavator-Poclain [4.36 h]; Dump Truck [4.36 h]; GRP (700mm Diameter) - ST - Depth: 1.51m - 2.5m [16.07 m] | 9,596.18 | 9,596.18 | L07 | Z5 | CONS | ST | Backfilling | bef |
| RHD4CZ5L07ST1403 |  | Primary Test for GRP Pipe Line 700 mm - (RD-L-7)-Z5-L07-ST | 2d | 2027-01-02 | 2027-01-03 | RHD4CZ5L07ST1303 |  |  |  | -149d | 0d | Unskilled Labor [2.18 h]; Plumber [2.18 h]; Equipment Opreator [2.18 h]; Water Truck [2.18 h]; GRP (700mm Diameter) - ST - Depth: 1.51m - 2.5m [16.07 m] | 9,596.18 |  | L07 | Z5 | CONS | ST | Primary Test | bef |
|  | 3360 | **RHD4-02-002-L07-(ST)-GRP Pipes - 600 mm diameter** |  | 2026-08-04 | 2026-10-18 |  |  |  |  |  |  |  |  |  |  |  |  |  |  |  |
| RHD4CZ5L07ST1102 |  | Excavation works for GRP Pipe Line 600 mm - (RD-L-7)-Z5-L07-ST | 2d | 2026-08-04 A | 2026-08-05 A | RHD4CZ5L07ST1103, RHD4ENSDZ5APPST110 | 100% | 2026-08-10 | 2026-08-11 |  |  | Skilled labor [5.34 h]; Unskilled Labor [5.34 h]; Equipment Opreator [6.4 h]; Excavator-Poclain [5.34 h]; Dump Truck [1.09 h]; GRP (600mm Diameter) - ST - Depth: 1.51m - 2.5m [14.67 m] | 6,823.64 | 6,823.64 | L07 | Z5 | CONS | ST | Excavation | bef |
| RHD4CZ5L07ST1202 |  | Bedding works for GRP Pipe Line 600 mm - (RD-L-7)-Z5-L07-ST | 2d | 2026-08-06 A | 2026-08-08 A | RHD4CZ5L07ST1102 | 100% | 2026-08-12 | 2026-08-13 |  |  | Skilled labor [5.34 h]; Unskilled Labor [10.67 h]; Equipment Opreator [10.67 h]; Excavator-Poclain [5.34 h]; Dump Truck [5.34 h]; GRP (600mm Diameter) - ST - Depth: 1.51m - 2.5m [4.89 m] | 2,274.55 | 2,274.55 | L07 | Z5 | CONS | ST | Bedding | bef |
| RHD4CZ5L07ST1302 |  | Installing for GRP Pipe Line 600 mm - (RD-L-7)-Z5-L07-ST | 2d | 2026-08-09 A | 2026-08-10 A | RHD4CZ5L07ST1202, RHD4CZ5L07ST1303, RHD4PRSHLSTAGST1004, RHD4PRSHLDOSST1604, RHD4PRSHLPOST1000, RHD4PRSHLDOSST1004 | 100% | 2026-08-15 | 2026-08-16 |  |  | Unskilled Labor [10.67 h]; Plumber [5.34 h]; GRP (600mm Diameter) - ST - Depth: 1.51m - 2.5m [39.13 m] | 18,196.38 | 18,196.38 | L07 | Z5 | CONS | ST | Installation | bef |
| RHD4CZ5L07ST1502 |  | Backfilling and warning tape works for GRP Pipe Line 600 mm - (RD-L-7)-Z5-L07-ST | 2d | 2026-09-30 A | 2026-10-01 A | RHD4CZ5L07ST1402, RHD4CZ5L07ST1503 | 100% | 2026-08-19 | 2026-08-20 |  |  | Skilled labor [5.34 h]; Unskilled Labor [10.67 h]; Equipment Opreator [10.67 h]; Excavator-Poclain [5.34 h]; Dump Truck [5.34 h]; GRP (600mm Diameter) - ST - Depth: 1.51m - 2.5m [19.56 m] | 9,095.4 | 9,095.4 | L07 | Z5 | CONS | ST | Backfilling | bef |
| RHD4CZ5L07ST1402 |  | Primary Test for GRP Pipe Line 600 mm - (RD-L-7)-Z5-L07-ST | 2d | 2026-10-17 A | 2026-10-18 A | RHD4CZ5L07ST1302 | 100% | 2027-01-07 | 2027-01-09 |  |  | Unskilled Labor [5.34 h]; Plumber [5.34 h]; Equipment Opreator [5.34 h]; Water Truck [5.34 h]; GRP (600mm Diameter) - ST - Depth: 1.51m - 2.5m [19.56 m] | 9,095.4 | 9,095.4 | L07 | Z5 | CONS | ST | Primary Test | bef |
|  | 3359 | **RHD4-02-002-L07-(ST)-GRP Pipes - 500 mm diameter** |  | 2026-08-04 | 2027-01-03 |  |  |  |  |  |  |  |  |  |  |  |  |  |  |  |
| RHD4CZ5L07ST1101 |  | Excavation works for GRP Pipe Line 500 mm - (RD-L-7)-Z5-L07-ST | 2d | 2026-08-04 A | 2026-08-05 A | RHD4CZ5L07ST1102, RHD4ENSDZ5APPST110 | 100% | 2026-08-12 | 2026-08-13 |  |  | Skilled labor [9.6 h]; Unskilled Labor [9.6 h]; Equipment Opreator [11.43 h]; Excavator-Poclain [9.6 h]; Dump Truck [1.96 h]; GRP (500mm Diameter) - ST - Depth less than 1.5 m [17.56 m]; GRP (500mm Diameter) - ST - Depth: 1.51m - 2.5m | 6,233.8 | 6,233.8 | L07 | Z5 | CONS | ST | Excavation | bef |
| RHD4CZ5L07ST1201 |  | Bedding works for GRP Pipe Line 500 mm - (RD-L-7)-Z5-L07-ST | 2d | 2026-08-06 A | 2026-08-08 A | RHD4CZ5L07ST1101 | 100% | 2026-08-15 | 2026-08-16 |  |  | Skilled labor [9.6 h]; Unskilled Labor [19.2 h]; Equipment Opreator [19.2 h]; Excavator-Poclain [9.6 h]; Dump Truck [9.6 h]; GRP (500mm Diameter) - ST - Depth less than 1.5 m [8.78 m]; GRP (500mm Diameter) - ST - Depth: 1.51m - 2.5m | 3,116.9 | 3,116.9 | L07 | Z5 | CONS | ST | Bedding | bef |
| RHD4CZ5L07ST1301 |  | Installing for GRP Pipe Line 500 mm - (RD-L-7)-Z5-L07-ST | 2d | 2026-08-09 A | 2026-08-22 A | RHD4CZ5L07ST1201, RHD4CZ5L07ST1302, RHD4PRSHLSTAGST1004, RHD4PRSHLDOSST1604, RHD4PRSHLPOST1000, RHD4PRSHLDOSST1004 | 100% | 2026-08-17 | 2026-08-18 |  |  | Unskilled Labor [19.2 h]; Plumber [9.6 h]; GRP (500mm Diameter) - ST - Depth less than 1.5 m [79.01 m]; GRP (500mm Diameter) - ST - Depth: 1.51m - 2.5m | 28,048.55 | 28,048.55 | L07 | Z5 | CONS | ST | Installation | bef |
| RHD4CZ5L07ST1501 |  | Backfilling and warning tape works for GRP Pipe Line 500 mm - (RD-L-7)-Z5-L07-ST | 2d | 2026-10-17 A | 2026-10-18 A | RHD4CZ5L07ST1401, RHD4CZ5L07ST1502 | 100% | 2027-01-14 | 2027-01-16 |  |  | Skilled labor [9.6 h]; Unskilled Labor [19.2 h]; Equipment Opreator [19.2 h]; Excavator-Poclain [9.6 h]; Dump Truck [9.6 h]; GRP (500mm Diameter) - ST - Depth less than 1.5 m [35.12 m]; GRP (500mm Diameter) - ST - Depth: 1.51m - 2.5m | 12,467.6 | 12,467.6 | L07 | Z5 | CONS | ST | Backfilling | bef |
| RHD4CZ5L07ST1401 |  | Primary Test for GRP Pipe Line 500 mm - (RD-L-7)-Z5-L07-ST | 2d | 2027-01-02 | 2027-01-03 | RHD4CZ5L07ST1301 |  |  |  | -149d | 0d | Unskilled Labor [9.6 h]; Plumber [9.6 h]; Equipment Opreator [9.6 h]; Water Truck [9.6 h]; GRP (500mm Diameter) - ST - Depth less than 1.5 m [35.12 m]; GRP (500mm Diameter) - ST - Depth: 1.51m - 2.5m | 12,467.6 |  | L07 | Z5 | CONS | ST | Primary Test | bef |
|  | 3373 | **RHD4-02-002-L07-(ST)-UPVC Pipes - 400 mm diameter** |  | 2027-01-04 | 2027-01-14 |  |  |  |  |  |  |  |  |  |  |  |  |  |  |  |
| RHD4CZ5L07ST2101 |  | Excavation works for UPVC Pipe Line 400 mm - (RD-L-7)-Z5-L07-ST | 2d | 2027-01-04 | 2027-01-05 | RHD4CZ5L07ST3300, RHD4CZ5L07ST3301, RHD4CZ5L07ST7300, RHD4CZ5L07ST8300, RHD4ENSDZ5APPST110 |  |  |  | -159d | 0d | Skilled labor [1.09 h]; Unskilled Labor [1.09 h]; Equipment Opreator [1.31 h]; Excavator-Poclain [1.09 h]; Dump Truck [0.22 h]; UPVC (400mm Diameter) - ST - Depth less than 1.5 [0.41 m]; UPVC (400mm Diameter) - ST - Depth: 1.51m - 2.5m [2.47 m] | 1,421.22 |  | L07 | Z5 | CONS | ST | Excavation | bef |
| RHD4CZ5L07ST2201 |  | Bedding works for UPVC Pipe Line 400 mm - (RD-L-7)-Z5-L07-ST | 2d | 2027-01-06 | 2027-01-07 | RHD4CZ5L07ST2101 |  |  |  | -159d | 0d | Skilled labor [1.09 h]; Unskilled Labor [2.07 h]; Equipment Opreator [2.07 h]; Excavator-Poclain [1.09 h]; Dump Truck [1.09 h]; UPVC (400mm Diameter) - ST - Depth less than 1.5 [0.21 m]; UPVC (400mm Diameter) - ST - Depth: 1.51m - 2.5m [0.82 m] | 503.11 |  | L07 | Z5 | CONS | ST | Bedding | bef |
| RHD4CZ5L07ST2301 |  | Installing for UPVC Pipe Line 400 mm - (RD-L-7)-Z5-L07-ST | 2d | 2027-01-09 | 2027-01-10 | RHD4CZ5L07ST2201, RHD4PRSHLDOSST1104, RHD4PRSHLSTAGST1104 |  |  |  | -159d | 0d | Unskilled Labor [2.4 h]; Plumber [1.2 h]; UPVC (400mm Diameter) - ST - Depth less than 1.5 [1.85 m]; UPVC (400mm Diameter) - ST - Depth: 1.51m - 2.5m [6.58 m] | 4,128.01 |  | L07 | Z5 | CONS | ST | Installation | bef |
| RHD4CZ5L07ST2401 |  | Primary Test for UPVC Pipe Line 400 mm - (RD-L-7)-Z5-L07-ST | 2d | 2027-01-11 | 2027-01-12 | RHD4CZ5L07ST2301 |  |  |  | -159d | 0d | Unskilled Labor [0.98 h]; Plumber [0.98 h]; Equipment Opreator [0.98 h]; Water Truck [0.98 h]; UPVC (400mm Diameter) - ST - Depth less than 1.5 [0.82 m]; UPVC (400mm Diameter) - ST - Depth: 1.51m - 2.5m [3.29 m] | 2,017.45 |  | L07 | Z5 | CONS | ST | Primary Test | bef |
| RHD4CZ5L07ST2501 |  | Backfilling and warning tape works for UPVC Pipe Line 400 mm - (RD-L-7)-Z5-L07-ST | 2d | 2027-01-13 | 2027-01-14 | RHD4CZ5L07ST2401, RHD4CZ5L07ST6100 |  |  |  | -159d | 0d | Skilled labor [1.09 h]; Unskilled Labor [2.29 h]; Equipment Opreator [2.29 h]; Excavator-Poclain [1.09 h]; Dump Truck [1.09 h]; UPVC (400mm Diameter) - ST - Depth less than 1.5 [0.82 m]; UPVC (400mm Diameter) - ST - Depth: 1.51m - 2.5m [3.29 m] | 2,017.45 |  | L07 | Z5 | CONS | ST | Backfilling | bef |

| ID | WBS | Activity | Duration | Start | Finish | Predecessors | Complete | Planned start | Planned finish | Total float | Free float | Resources | Cost | Actual cost | RDH4-01-001-Road and Block Names-1 | RDH4-01-001-Zones-1 | RDH4-01-001-Phases-1 | RDH4-01-001-Networks-1 | RDH4-01-001-Work Method-1 | RDH4-01-001-MENEM |
| --- | --- | --- | --- | --- | --- | --- | --- | --- | --- | --- | --- | --- | --- | --- | --- | --- | --- | --- | --- | --- |
|  | 3372 | **RHD4-02-002-L07-(ST)-UPVC Pipes - 300 mm diameter** |  | 2026-08-04 | 2027-01-12 |  |  |  |  |  |  |  |  |  |  |  |  |  |  |  |
| RHD4CZ5L07ST2100 |  | Excavation works for UPVC Pipe Line 300 mm - (RD-L-7)-Z5-L07-ST | 2d | 2026-08-04 A | 2026-09-19 A | RHD4CZ5L07ST2101, RHD4CZ5L07ST3300, RHD4CZ5L07ST3301, RHD4ENSDZ5APPST110 | 100% | 2026-08-11 | 2026-08-12 |  |  | Skilled labor [15.79 h]; Unskilled Labor [15.79 h]; Equipment Opreator [18.95 h]; Excavator-Poclain [15.79 h]; Dump Truck [3.16 h]; UPVC (300mm Diameter) - ST - Depth less than 1.5 [34.44 m]; UPVC (300mm Diameter) - ST - Depth: 1.51m - 2.5m | 10,435.32 | 10,435.32 | L07 | Z5 | CONS | ST | Excavation | bef |
| RHD4CZ5L07ST2200 |  | Bedding works for UPVC Pipe Line 300 mm - (RD-L-7)-Z5-L07-ST | 2d | 2026-09-19 A | 2026-09-20 A | RHD4CZ5L07ST2100 | 100% | 2026-08-13 | 2026-08-15 |  |  | Skilled labor [13.72 h]; Unskilled Labor [27.55 h]; Equipment Opreator [27.55 h]; Excavator-Poclain [13.72 h]; Dump Truck [13.72 h]; UPVC (300mm Diameter) - ST - Depth less than 1.5 [17.22 m]; UPVC (300mm Diameter) - ST - Depth: 1.51m - 2.5m | 5,217.66 | 5,217.66 | L07 | Z5 | CONS | ST | Bedding | bef |
| RHD4CZ5L07ST2300 |  | Installing for UPVC Pipe Line 300 mm - (RD-L-7)-Z5-L07-ST | 2d | 2026-09-21 A | 2026-09-22 A | RHD4CZ5L07ST2200, RHD4CZ5L07ST2301, RHD4PRSHLDOSST1104, RHD4PRSHLSTAGST1104 | 100% | 2026-08-16 | 2026-08-17 |  |  | Unskilled Labor [31.47 h]; Plumber [15.79 h]; UPVC (300mm Diameter) - ST - Depth less than 1.5 [154.96 m]; UPVC (300mm Diameter) - ST - Depth: 1.51m - 2.5m | 46,952.88 | 46,952.88 | L07 | Z5 | CONS | ST | Installation | bef |
| RHD4CZ5L07ST2500 |  | Backfilling and warning tape works for UPVC Pipe Line 300 mm - (RD-L-7)-Z5-L07-ST | 2d | 2026-10-01 A | 2026-10-03 A | RHD4CZ5L07ST2400, RHD4CZ5L07ST2501, RHD4CZ5L07ST6100, RHD4CZ5L07ST1501 | 100% | 2027-01-21 | 2027-01-23 |  |  | Skilled labor [18.73 h]; Unskilled Labor [37.46 h]; Equipment Opreator [37.46 h]; Excavator-Poclain [18.73 h]; Dump Truck [18.73 h]; UPVC (300mm Diameter) - ST - Depth less than 1.5 [68.87 m]; UPVC (300mm Diameter) - ST - Depth: 1.51m - 2.5m | 20,867.61 | 20,867.61 | L07 | Z5 | CONS | ST | Backfilling | bef |
| RHD4CZ5L07ST2400 |  | Primary Test for UPVC Pipe Line 300 mm - (RD-L-7)-Z5-L07-ST | 2d | 2027-01-11 | 2027-01-12 | RHD4CZ5L07ST2300 |  |  |  | -157d | 2d | Unskilled Labor [9.8 h]; Plumber [9.8 h]; Equipment Opreator [9.8 h]; Water Truck [9.8 h]; UPVC (300mm Diameter) - ST - Depth less than 1.5 [68.87 m]; UPVC (300mm Diameter) - ST - Depth: 1.51m - 2.5m | 20,867.61 |  | L07 | Z5 | CONS | ST | Primary Test | bef |
|  | 3380 | **RHD4-02-002-L07-(ST)-Concrete Encasement** |  | 2027-01-11 | 2027-01-12 |  |  |  |  |  |  |  |  |  |  |  |  |  |  |  |
| RHD4CZ5L07ST6100 |  | Pipe Encasement for Storm Pipelines - (RD-L-7)-Z5-L07-ST | 2d | 2027-01-11 | 2027-01-12 | RHD4CZ5L07ST2301 SS, RHD4CZ5L07ST2300 SS, RHD4CZ5L07ST2300 FF, RHD4CZ5L07ST2301 FF, RHD4CZ5L07ST2201, RHD4CZ5L07ST2200 |  |  |  | -159d | 0d | Skilled labor [2.5 h]; Unskilled Labor [2.5 h]; Equipment Opreator [2.83 h]; Concrete Mixer Truck [0.22 h]; Dump Truck [2.5 h]; Pipe Encasement - ST [46.65 m3] | 23,604.9 |  | L07 | Z5 | CONS | ST | Pipe Encasement | bef |
|  | 3381 | **RHD4-02-002-Z5-L07-Catch Basin - ST** |  | 2026-08-04 | 2027-01-10 |  |  |  |  |  |  |  |  |  |  |  |  |  |  |  |
|  | 3382 | **RHD4-02-002-L07-(ST)-Single Catch Basin Works** |  | 2026-08-04 | 2027-01-10 |  |  |  |  |  |  |  |  |  |  |  |  |  |  |  |
| RHD4CZ5L07ST7100 |  | Excavation works for Single Catch Basin - (RD-L-7)-Z5-L07-ST | 3d | 2026-08-04 A | 2026-08-06 A | RHD4CZ5L07ST3300, RHD4CZ5L07ST3301, RHD4ENSDZ5APPST110 | 100% | 2026-07-27 | 2026-07-29 |  |  | Skilled labor [25.05 h]; Unskilled Labor [50.1 h]; Equipment Opreator [37.6 h]; Excavator-Poclain [25.05 h]; Dump Truck [12.52 h]; Single Catch basin - ST [5.75 nr] | 21,453.25 | 21,453.25 | L07 | Z5 | CONS | ST | Excavation | bef |
| RHD4CZ5L07ST7200 |  | PC Blinding, Installation and Pipe connection for Single Catch Basin - (RD-L-7)-Z5-L07-ST | 3d | 2026-09-19 A | 2026-09-21 A | RHD4CZ5L07ST7100 | 100% | 2026-07-30 | 2026-08-02 |  |  | Skilled labor [25.05 h]; Unskilled Labor [50.1 h]; Plumber [12.52 h]; Equipment Opreator [5.01 h]; Boom Truck [5.01 h]; Single Catch basin - ST [4.6 nr] | 17,162.6 | 17,162.6 | L07 | Z5 | CONS | ST | Installation & Pipe Connection | bef |
| RHD4CZ5L07ST7300 |  | Rings & C.Slab & Final Backfill for Single Catch Basin - (RD-L-7)-Z5-L07-ST | 3d | 2026-10-24 A | 2026-10-26 A | RHD4CZ5L07ST7200, RHD4PRSHLDOSST1304, RHD4PRSHLSTAGST1304 | 100% | 2026-10-27 | 2026-10-29 |  |  | Skilled labor [31.36 h]; Unskilled Labor [62.62 h]; Equipment Opreator [37.6 h]; Boom Truck [6.21 h]; Bobcat [31.36 h]; Single Catch basin - ST [8.05 nr] | 30,034.55 | 30,034.55 | L07 | Z5 | CONS | ST | Rings | bef |
| RHD4CZ5L07ST7400 |  | Steel Cover for Single Catch Basin - (RD-L-7)-Z5-L07-ST | 3d | 2027-01-02 | 2027-01-04 | RHD4CZ5L07ST7300, RHD4PRSHLDOSST1704 |  |  |  | -160d | 0d | Skilled labor [25.05 h]; Unskilled Labor [25.05 h]; Equipment Opreator [5.01 h]; Boom Truck [5.01 h]; Single Catch basin - ST [1.15 nr] | 4,290.65 |  | L07 | Z5 | CONS | ST | Steel Cover | bef |
| RHD4CZ5L07ST7500 |  | Finishing and Insulation works for Single Catch Basin - (RD-L-7)-Z5-L07-ST | 5d | 2027-01-05 | 2027-01-10 | RHD4CZ5L07ST7400 |  |  |  | -160d | 1d | Skilled labor [50.1 h]; Unskilled Labor [100.19 h]; Equipment Opreator [10.02 h]; Boom Truck [10.02 h]; Single Catch basin - ST [3.45 nr] | 12,871.95 |  | L07 | Z5 | CONS | ST | Insulation | bef |
|  | 3383 | **RHD4-02-002-L07-(ST)-Double Catch Basin Works** |  | 2026-08-04 | 2027-01-07 |  |  |  |  |  |  |  |  |  |  |  |  |  |  |  |
| RHD4CZ5L07ST8100 |  | Excavation works for Double Catch Basin - (RD-L-7)-Z5-L07-ST | 2d | 2026-08-04 A | 2026-08-06 A | RHD4CZ5L07ST7100, RHD4CZ5L07ST3300, RHD4CZ5L07ST3301, RHD4ENSDZ5APPST110 | 100% | 2026-07-30 | 2026-08-01 |  |  | Skilled labor [2.18 h]; Unskilled Labor [4.36 h]; Equipment Opreator [3.27 h]; Excavator-Poclain [2.18 h]; Dump Truck [1.09 h]; Double Catch basin - ST [0.25 nr] | 3,491.5 | 3,491.5 | L07 | Z5 | CONS | ST | Excavation | bef |
| RHD4CZ5L07ST8200 |  | PC Blinding, Installation and Pipe connection for Double Catch Basin - (RD-L-7)-Z5-L07-ST | 2d | 2026-09-19 A | 2026-09-20 A | RHD4CZ5L07ST8100, RHD4CZ5L07ST7200 | 100% | 2026-08-03 | 2026-08-04 |  |  | Skilled labor [2.18 h]; Unskilled Labor [4.36 h]; Plumber [1.09 h]; Equipment Opreator [0.44 h]; Boom Truck [0.44 h]; Double Catch basin - ST [0.2 nr] | 2,793.2 | 2,793.2 | L07 | Z5 | CONS | ST | Installation & Pipe Connection | bef |
| RHD4CZ5L07ST8300 |  | Rings & C.Slab & Final Backfillfor Double Catch Basin - (RD-L-7)-Z5-L07-ST | 2d | 2027-01-02 | 2027-01-03 | RHD4CZ5L07ST8200, RHD4CZ5L07ST7300, RHD4PRSHLDOSST1304, RHD4PRSHLSTAGST1304 |  |  |  | -161d | 0d | Skilled labor [2.72 h]; Unskilled Labor [5.45 h]; Equipment Opreator [3.27 h]; Boom Truck [0.54 h]; Bobcat [2.72 h]; Double Catch basin - ST [0.35 nr] | 4,888.1 |  | L07 | Z5 | CONS | ST | Rings | bef |
| RHD4CZ5L07ST8400 |  | Steel Cover for Double Catch Basin - (RD-L-7)-Z5-L07-ST | 2d | 2027-01-04 | 2027-01-05 | RHD4CZ5L07ST8300, RHD4CZ5L07ST7400 SS, RHD4PRSHLDOSST1704 |  |  |  | -161d | 0d | Skilled labor [2.18 h]; Unskilled Labor [2.18 h]; Equipment Opreator [0.44 h]; Boom Truck [0.44 h]; Double Catch basin - ST [0.05 nr] | 698.3 |  | L07 | Z5 | CONS | ST | Steel Cover | bef |
| RHD4CZ5L07ST8500 |  | Finishing and Insulation works for Double Catch Basin - (RD-L-7)-Z5-L07-ST | 2d | 2027-01-06 | 2027-01-07 | RHD4CZ5L07ST8400, RHD4CZ5L07ST7500 SS |  |  |  | -161d | 36.02d | Skilled labor [5.45 h]; Unskilled Labor [10.89 h]; Equipment Opreator [1.09 h]; Boom Truck [1.09 h]; Double Catch basin - ST [0.15 nr] | 2,094.9 |  | L07 | Z5 | CONS | ST | Insulation | bef |
|  | 3406 | **RHD4-02-002-Z5-L07-Sewage Network - SW** |  | 2026-08-10 | 2027-06-07 |  |  |  |  |  |  |  |  |  |  |  |  |  |  |  |
|  | 3416 | **RHD4-02-002-L07-(SW)-MH Works - 1200 mm diameter** |  | 2026-08-10 | 2027-06-07 |  |  |  |  |  |  |  |  |  |  |  |  |  |  |  |
| RHD4CZ5L07SW3100 |  | Excavation and PC Blinding works for MH 1200 mm - (RD-L-7)-Z5-L07-SW | 9d | 2026-08-10 A | 2026-08-15 A | RHD4ENSDZ5APPSW120, RHD4CZ5L07ST1106 | 100% | 2026-08-08 | 2026-08-17 |  |  | Skilled labor [98.01 h]; Unskilled Labor [98.01 h]; Equipment Opreator [156.8 h]; Excavator-Poclain [98.01 h]; Water Truck [9.8 h]; Dump Truck [49.01 h]; MH (1200mm Diameter) - SW - depth 0 - 1.5m [1.5 nr]; MH (1200mm Diameter) - SW - depth 1.51 - 2.5m [3.5 nr] | 46,091.5 | 46,091.5 | L07 | Z5 | CONS | SW | Excavation | bef |
| RHD4CZ5L07SW3200 |  | Installation of Base for MH 1200 mm - (RD-L-7)-Z5-L07-SW | 10d | 2026-08-11 A | 2026-09-20 A | RHD4CZ5L07SW3100 | 100% | 2026-08-18 | 2026-08-29 |  |  | Skilled labor [108.9 h]; Unskilled Labor [108.9 h]; Equipment Opreator [43.56 h]; Boom Truck [21.78 h]; Concrete Mixer Truck [21.78 h]; MH (1200mm Diameter) - SW - depth 0 - 1.5m [1.5 nr]; MH (1200mm Diameter) - SW - depth 1.51 - 2.5m [3.5 nr] | 46,091.5 | 46,091.5 | L07 | Z5 | CONS | SW | Installing Base | bef |
| RHD4CZ5L07SW3300 |  | MH Ring and C.Slab works and Backfilling works for MH 1200 mm - (RD-L-7)-Z5-L07-SW | 5d | 2026-10-20 A | 2026-10-25 A | RHD4CZ5L07SW3200 | 100% |  |  |  |  | Skilled labor [108.9 h]; Unskilled Labor [108.9 h]; Equipment Opreator [76.23 h]; Boom Truck [43.56 h]; Concrete Mixer Truck [32.67 h]; MH (1200mm Diameter) - SW - depth 0 - 1.5m [2.1 nr]; MH (1200mm Diameter) - SW - depth 1.51 - 2.5m [4.9 nr] | 64,528.1 | 64,528.1 | L07 | Z5 | CONS | SW | Installing Rings | bef |
| RHD4CZ5L07SW3400 |  | Steel Cover for MH 1200 mm - (RD-L-7)-Z5-L07-SW | 7d | 2027-05-19 | 2027-05-26 | RHD4CZ5L07SW3300, RHD4PRSHLDOSSW1404, RHD4PRSHLSTAGSW1404, RHD4CZ5L016SW3400 |  |  |  | -159d | 0d | Skilled labor [72.64 h]; Unskilled Labor [145.17 h]; Equipment Opreator [14.48 h]; Boom Truck [14.48 h]; MH (1200mm Diameter) - SW - depth 0 - 1.5m [0.3 nr]; MH (1200mm Diameter) - SW - depth 1.51 - 2.5m [0.7 nr] | 9,218.3 |  | L07 | Z5 | CONS | SW | Steel Cover | bef |
| RHD4CZ5L07SW3500 |  | Finishing, Benching, Testing works for MH 1200 mm - (RD-L-7)-Z5-L07-SW | 10d | 2027-05-27 | 2027-06-07 | RHD4CZ5L07SW3400 |  |  |  | -159d | 20d | Skilled labor [108.9 h]; Unskilled Labor [217.81 h]; Plumber [108.9 h]; Equipment Opreator [21.78 h]; Water Truck [21.78 h]; MH (1200mm Diameter) - SW - depth 0 - 1.5m [0.6 nr]; MH (1200mm Diameter) - SW - depth 1.51 - 2.5m [1.4 nr] | 18,436.6 |  | L07 | Z5 | CONS | SW | Benching | bef |

| ID | WBS | Activity | Duration | Start | Finish | Predecessors | Complete | Remaining | Planned start | Planned finish | Total float | Free float | Resources | Cost | Actual cost | RDH4-01-001-Road and Block Names-1 | RDH4-01-001-Zones-1 | RDH4-01-001-Phases-1 | RDH4-01-001-Networks-1 | RDH4-01-001-Work Method-1 | RDH4-01-001-MENEM |
| --- | --- | --- | --- | --- | --- | --- | --- | --- | --- | --- | --- | --- | --- | --- | --- | --- | --- | --- | --- | --- | --- |
|  | 3412 | **RHD4-02-002-L07-(SW)-UPVC Pipes - 200 mm diameter** |  | 2026-08-11 | 2027-02-15 |  |  |  |  |  |  |  |  |  |  |  |  |  |  |  |  |
| RHD4CZ5L07SW2100 |  | Excavation works for UPVC Pipe Line 200 mm - (RD-L-7)-Z5-L07-SW | 4d | 2026-08-11 A | 2026-08-15 A | RHD4ENSDZ5APPSW120, RHD4CZ5L07SW3100 | 100% |  | 2026-08-18 | 2026-08-22 |  |  | Skilled labor [43.45 h]; Unskilled Labor [43.45 h]; Equipment Opreator [52.16 h]; Excavator-Poclain [43.45 h]; Dump Truck [8.71 h]; UPVC (200mm Diameter) - SW - Depth: less than 1.5m [94.59 m]; UPVC (200mm Diameter) - SW - Depth: 1.51m - 2.5m | 17,026.2 | 17,026.2 | L07 | Z5 | CONS | SW | Excavation | bef |
| RHD4CZ5L07SW2200 |  | Bedding works for UPVC Pipe Line 200 mm - (RD-L-7)-Z5-L07-SW | 4d | 2026-08-13 A | 2026-08-17 A | RHD4CZ5L07SW2100 | 100% |  | 2026-08-23 | 2026-08-26 |  |  | Skilled labor [38.23 h]; Unskilled Labor [76.34 h]; Equipment Opreator [76.34 h]; Excavator-Poclain [38.23 h]; Dump Truck [38.23 h]; UPVC (200mm Diameter) - SW - Depth: less than 1.5m [47.29 m]; UPVC (200mm Diameter) - SW - Depth: 1.51m - 2.5m | 8,512.2 | 8,512.2 | L07 | Z5 | CONS | SW | Bedding | bef |
| RHD4CZ5L07SW2500 |  | Backfilling and warning tape works for UPVC Pipe Line 200 mm - (RD-L-7)-Z5-L07-SW | 5d | 2026-08-13 A | 2026-08-22 A | RHD4CZ5L07SW2400 | 100% |  | 2026-09-21 | 2026-09-27 |  |  | Skilled labor [51.51 h]; Unskilled Labor [103.02 h]; Equipment Opreator [103.02 h]; Excavator-Poclain [51.51 h]; Dump Truck [51.51 h]; UPVC (200mm Diameter) - SW - Depth: less than 1.5m [189.17 m]; UPVC (200mm Diameter) - SW - Depth: 1.51m - 2.5m | 34,050.6 | 34,050.6 | L07 | Z5 | CONS | SW | Backfilling | bef |
| RHD4CZ5L07SW2300 |  | Installing for UPVC Pipe Line 200 mm - (RD-L-7)-Z5-L07-SW | 6d | 2026-08-15 A | 2026-08-19 A | RHD4CZ5L07SW2200, RHD4CZ5L07SW3300 | 100% |  | 2026-09-10 | 2026-09-16 |  |  | Unskilled Labor [129.7 h]; Plumber [64.8 h]; Equipment Opreator [64.8 h]; Boom Truck [64.8 h]; UPVC (200mm Diameter) - SW - Depth: less than 1.5m [425.64 m]; UPVC (200mm Diameter) - SW - Depth: 1.51m - 2.5m | 76,615.2 | 76,615.2 | L07 | Z5 | CONS | SW | Installation | bef |
| RHD4CZ5L07SW2400 |  | Primary Test for UPVC Pipe Line 200 mm - (RD-L-7)-Z5-L07-SW | 3d | 2026-10-27 A | 2027-02-15 | RHD4CZ5L07SW2300, RHD4CZ7L015ST1505 | 80% | 3d | 2026-10-27 | 2026-10-29 | -156.02d | 0d | Unskilled Labor [23.63 h]; Plumber [23.63 h]; Equipment Opreator [23.63 h]; Water Truck [23.63 h]; UPVC (200mm Diameter) - SW - Depth: less than 1.5m [189.17 m]; UPVC (200mm Diameter) - SW - Depth: 1.51m - 2.5m | 34,050.6 | 27,240.48 | L07 | Z5 | CONS | SW | Primary Test | bef |
|  | 3415 | **RHD4-02-002-L07-(SW)-Concrete Encasement** |  |  |  |  |  |  |  |  |  |  |  |  |  |  |  |  |  |  |  |
|  | 3443 | **RHD4-02-002-Z5-L07-Potable Network - PT** |  | 2026-08-04 | 2027-05-02 |  |  |  |  |  |  |  |  |  |  |  |  |  |  |  |  |
|  | 3447 | **RHD4-02-002-L07-(PT)-HDPE Pipes - 400 mm diameter** |  | 2027-02-15 | 2027-02-28 |  |  |  |  |  |  |  |  |  |  |  |  |  |  |  |  |
| RHD4CZ5L07PT1103 |  | Excavation works for HDPE Pipline 400 mm - (RD-L-7)-Z5-L07-PT | 2d | 2027-02-15 | 2027-02-17 | RHD4ENSDZ5APPPT130, RHD4ENMSPT2000, RHD4CZ5L07SW2500, RHD4ENMSEW2000, RHD4ENMSEW2010, RHD4ENSDZ5APPEW100 SS |  |  |  |  | -156.02d | 0d | Skilled labor [9.47 h]; Unskilled Labor [9.47 h]; Equipment Opreator [11.33 h]; Excavator-Poclain [9.47 h]; Dump Truck [1.85 h]; HDPE (400mm Diameter) - PT - Depth: 1.51m - 2.5m [19.5 m] | 7,098 |  | L07 | Z5 | CONS | PT | Excavation | bef |
| RHD4CZ5L07PT1203 |  | Bedding works for HDPE Pipline 400 mm - (RD-L-7)-Z5-L07-PT | 2d | 2027-02-17 | 2027-02-20 | RHD4CZ5L07PT1103 |  |  |  |  | -156.02d | 0d | Skilled labor [9.47 h]; Unskilled Labor [18.84 h]; Equipment Opreator [18.84 h]; Excavator-Poclain [9.47 h]; Dump Truck [9.47 h]; HDPE (400mm Diameter) - PT - Depth: 1.51m - 2.5m [6.5 m] | 2,366 |  | L07 | Z5 | CONS | PT | Bedding | bef |
| RHD4CZ5L07PT1303 |  | Installing for HDPE Pipline 400 mm - (RD-L-7)-Z5-L07-PT | 2d | 2027-02-20 | 2027-02-23 | RHD4CZ5L07PT1203, RHD4PRSHLDOSPT1000, RHD4PRSHLSTAGPT1000 |  |  |  |  | -156.02d | 0d | Unskilled Labor [18.84 h]; Plumber [9.47 h]; Equipment Opreator [9.47 h]; Boom Truck [9.47 h]; HDPE (400mm Diameter) - PT - Depth: 1.51m - 2.5m [52.01 m] | 18,932.37 |  | L07 | Z5 | CONS | PT | Installation | bef |
| RHD4CZ5L07PT1403 |  | Primary Test for HDPE Pipline 400 mm - (RD-L-7)-Z5-L07-PT | 2d | 2027-02-23 | 2027-02-25 | RHD4CZ5L07PT1303 |  |  |  |  | -156.02d | 0d | Unskilled Labor [9.47 h]; Plumber [9.47 h]; Equipment Opreator [9.47 h]; Water Truck [9.47 h]; HDPE (400mm Diameter) - PT - Depth: 1.51m - 2.5m [26.01 m] | 9,466.18 |  | L07 | Z5 | CONS | PT | Primary Test | bef |
| RHD4CZ5L07PT1503 |  | Backfilling and warning tape works for HDPE Pipline 400 mm - (RD-L-7)-Z5-L07-PT | 2d | 2027-02-25 | 2027-02-28 | RHD4CZ5L07PT1403 |  |  |  |  | -156.02d | 0d | Skilled labor [9.47 h]; Unskilled Labor [18.84 h]; Equipment Opreator [18.84 h]; Excavator-Poclain [9.47 h]; Dump Truck [9.47 h]; HDPE (400mm Diameter) - PT - Depth: 1.51m - 2.5m [26.01 m] | 9,466.18 |  | L07 | Z5 | CONS | PT | Backfilling | bef |
|  | 2687 | **RHD4-02-002-L07-(PT)-HDPE Pipes - 110 mm diameter** |  | 2027-02-15 | 2027-02-28 |  |  |  |  |  |  |  |  |  |  |  |  |  |  |  |  |
| RHD4CZ5L07PT1100 |  | Excavation works for HDPE Pipline 110 mm - (RD-L-7)-Z5-L07-PT | 2d | 2027-02-15 | 2027-02-17 | RHD4CZ5L07SW2500 |  |  |  |  | -156.02d | 0d | Skilled labor [2.83 h]; Unskilled Labor [2.83 h]; Equipment Opreator [3.38 h]; Excavator-Poclain [2.83 h]; Dump Truck [0.54 h]; HDPE (110mm Diameter) - PT - Depth: less than 1.5m [6.4 m] | 544 |  | L07 | Z5 | CONS | PT | Excavation | bef |
| RHD4CZ5L07PT1200 |  | Bedding works for HDPE Pipline 110 mm - (RD-L-7)-Z5-L07-PT | 2d | 2027-02-17 | 2027-02-20 | RHD4CZ5L07PT1100 |  |  |  |  | -124.02d | 0d | Skilled labor [2.29 h]; Unskilled Labor [4.68 h]; Equipment Opreator [4.68 h]; Excavator-Poclain [2.29 h]; Dump Truck [2.29 h]; HDPE (110mm Diameter) - PT - Depth: less than 1.5m [3.2 m] | 272 |  | L07 | Z5 | CONS | PT | Bedding | bef |
| RHD4CZ5L07PT1300 |  | Installing for HDPE Pipline 110 mm - (RD-L-7)-Z5-L07-PT | 2d | 2027-02-20 | 2027-02-23 | RHD4CZ5L07PT1200 |  |  |  |  | -124.02d | 0d | Unskilled Labor [9.26 h]; Plumber [4.68 h]; Equipment Opreator [4.68 h]; Boom Truck [4.68 h]; HDPE (110mm Diameter) - PT - Depth: less than 1.5m [28.8 m] | 2,448 |  | L07 | Z5 | CONS | PT | Installation | bef |
| RHD4CZ5L07PT1400 |  | Primary Test for HDPE Pipline 110 mm - (RD-L-7)-Z5-L07-PT | 2d | 2027-02-23 | 2027-02-25 | RHD4CZ5L07PT1300 |  |  |  |  | -124.02d | 0d | Unskilled Labor [1.42 h]; Plumber [1.42 h]; Equipment Opreator [1.42 h]; Water Truck [1.42 h]; HDPE (110mm Diameter) - PT - Depth: less than 1.5m [12.8 m] | 1,088 |  | L07 | Z5 | CONS | PT | Primary Test | bef |
| RHD4CZ5L07PT1500 |  | Backfilling and warning tape works for HDPE Pipline 110 mm - (RD-L-7)-Z5-L07-PT | 2d | 2027-02-25 | 2027-02-28 | RHD4CZ5L07PT1400 |  |  |  |  | -124.02d | 26d | Skilled labor [3.48 h]; Unskilled Labor [6.97 h]; Equipment Opreator [6.97 h]; Excavator-Poclain [3.48 h]; Dump Truck [3.48 h]; HDPE (110mm Diameter) - PT - Depth: less than 1.5m [12.8 m] | 1,088 |  | L07 | Z5 | CONS | PT | Backfilling | bef |
|  | 3445 | **RHD4-02-002-L07-(PT)-HDPE Pipes - 160 mm diameter** |  | 2026-08-04 | 2027-04-03 |  |  |  |  |  |  |  |  |  |  |  |  |  |  |  |  |
| RHD4CZ5L07PT1101 |  | Excavation works for HDPE Pipline 160 mm - (RD-L-7)-Z5-L07-PT | 8d | 2026-08-04 A | 2027-02-23 | RHD4ENSDZ5APPPT130, RHD4ENMSPT2000, RHD4CZ5L07PT1103 | 4% | 4d | 2026-09-30 | 2026-10-08 | -152.02d | 0d | Skilled labor [48.46 h]; Unskilled Labor [48.46 h]; Equipment Opreator [58.15 h]; Excavator-Poclain [48.46 h]; Dump Truck [9.69 h]; HDPE (160mm Diameter) - PT - Depth: less than 1.5m [98.4 m]; HDPE (160mm Diameter) - PT - Depth: 1.51m - 2.5m [13.46 m]; HDPE (160mm Diameter) - PT - Depth: more than 2.5m | 12,440.12 | 6,220.06 | L07 | Z5 | CONS | PT | Excavation | bef |
| RHD4CZ5L07PT1201 |  | Bedding works for HDPE Pipline 160 mm - (RD-L-7)-Z5-L07-PT | 4d | 2026-08-06 A | 2027-02-28 | RHD4CZ5L07PT1101 | 4% | 4d | 2026-10-10 | 2026-10-13 | -152.02d | 0d | Skilled labor [41.82 h]; Unskilled Labor [83.64 h]; Equipment Opreator [83.64 h]; Excavator-Poclain [41.82 h]; Dump Truck [41.82 h]; HDPE (160mm Diameter) - PT - Depth: less than 1.5m [49.2 m]; HDPE (160mm Diameter) - PT - Depth: 1.51m - 2.5m [4.49 m]; HDPE (160mm Diameter) - PT - Depth: more than 2.5m | 5,901.98 |  | L07 | Z5 | CONS | PT | Bedding | bef |
| RHD4CZ5L07PT1301 |  | Installing for HDPE Pipline 160 mm - (RD-L-7)-Z5-L07-PT | 7d | 2026-08-08 A | 2027-03-08 | RHD4CZ5L07PT1201, RHD4PRSHLDOSPT1000, RHD4PRSHLSTAGPT1000 | 5% | 7d | 2026-10-14 | 2026-10-21 | -152.02d | 0d | Unskilled Labor [150.29 h]; Plumber [75.14 h]; Equipment Opreator [75.14 h]; Boom Truck [75.14 h]; HDPE (160mm Diameter) - PT - Depth: less than 1.5m [442.8 m]; HDPE (160mm Diameter) - PT - Depth: 1.51m - 2.5m [35.88 m]; HDPE (160mm Diameter) - PT - Depth: more than 2.5m | 52,474.56 |  | L07 | Z5 | CONS | PT | Installation | bef |
| RHD4CZ5L07PT1401 |  | Primary Test for HDPE Pipline 160 mm - (RD-L-7)-Z5-L07-PT | 3d | 2027-03-23 | 2027-03-27 | RHD4CZ5L07PT1301, RHD4CZ5L07PT5100 |  |  |  |  | -152.02d | 0d | Unskilled Labor [28.42 h]; Plumber [28.42 h]; Equipment Opreator [28.42 h]; Water Truck [28.42 h]; HDPE (160mm Diameter) - PT - Depth: less than 1.5m [196.8 m]; HDPE (160mm Diameter) - PT - Depth: 1.51m - 2.5m [17.94 m]; HDPE (160mm Diameter) - PT - Depth: more than 2.5m | 23,605.08 |  | L07 | Z5 | CONS | PT | Primary Test | bef |
| RHD4CZ5L07PT1501 |  | Backfilling and warning tape works for HDPE Pipline 160 mm - (RD-L-7)-Z5-L07-PT | 6d | 2027-03-27 | 2027-04-03 | RHD4CZ5L07PT1401 |  |  |  |  | -152.02d | 0d | Skilled labor [58.48 h]; Unskilled Labor [116.96 h]; Equipment Opreator [116.96 h]; Excavator-Poclain [58.48 h]; Dump Truck [58.48 h]; HDPE (160mm Diameter) - PT - Depth: less than 1.5m [196.8 m]; HDPE (160mm Diameter) - PT - Depth: 1.51m - 2.5m [17.94 m]; HDPE (160mm Diameter) - PT - Depth: more than 2.5m | 23,605.08 |  | L07 | Z5 | CONS | PT | Backfilling | bef |

| ID | WBS | Activity | Duration | Start | Finish | Predecessors | Total float | Free float | Resources | Cost | RDH4-01-001-Road and Block Names-1 | RDH4-01-001-Zones-1 | RDH4-01-001-Phases-1 | RDH4-01-001-Networks-1 | RDH4-01-001-Work Method-1 | RDH4-01-001-MENEM |
| --- | --- | --- | --- | --- | --- | --- | --- | --- | --- | --- | --- | --- | --- | --- | --- | --- |
|  | 3449 | **RHD4-02-002-L07-(PT)-Gate Valves (Direct Buried)** |  | 2027-03-06 | 2027-04-05 |  |  |  |  |  |  |  |  |  |  |  |
| RHD4CZ5L07PT3100 |  | Installation for Direct Buried Gate Valves - (RD-L-7)-Z5-L07-PT | 2d | 2027-03-06 | 2027-03-08 | RHD4CZ5L07PT1303 FF, RHD4CZ5L07PT1301 FF, RHD4CZ5L07PT1303 SS, RHD4CZ5L07PT1301 SS, RHD4PRSHLDOSPT1200, RHD4PRSHLSTAGPT1200, RHD4CZ5L07RD2100 | -131.02d | 19d | Unskilled Labor [16.34 h]; Plumber [16.34 h]; Gate valves dia 100 mm - PT [1.8 nr]; Gate valves dia 150 mm - PT [0.9 nr] | 3,418.2 | L07 | Z5 | CONS | PT | Installation | bef |
| RHD4CZ5L07PT3200 |  | Stem and Service box for Direct Buried Gate Valves - (RD-L-7)-Z5-L07-PT | 2d | 2027-04-03 | 2027-04-05 | RHD4CZ5L07PT3100, RHD4CZ5L07PT1503, RHD4CZ5L07PT1501, RHD4CZ5L07PT1500 | -150.02d | 2d | Unskilled Labor [16.34 h]; Plumber [16.34 h]; Gate valves dia 100 mm - PT [0.2 nr]; Gate valves dia 150 mm - PT [0.1 nr] | 379.8 | L07 | Z5 | CONS | PT | Stem and Service box | bef |
|  | 3450 | **RHD4-02-002-L07-(PT)-Butterfly Valve Chamber** |  | 2027-02-17 | 2027-02-28 |  |  |  |  |  |  |  |  |  |  |  |
| RHD4CZ5L07PT2100 |  | Excavation and Bedding for Butterfly Valve Chamber for Potable Water Network - (RD-L-7)-Z5-L07-PT | 2d | 2027-02-17 | 2027-02-20 | RHD4ENSDZ5APPPT130, RHD4CZ5L07PT1100 | -156.02d | 0d | Skilled labor [5.45 h]; Unskilled Labor [5.45 h]; Equipment Opreator [1.09 h]; Excavator-Poclain [0.54 h]; Dump Truck [0.54 h]; Valve chambers - PT [0.25 nr] | 3,121 | L07 | Z5 | CONS | PT | Excavation and Bedding | bef |
| RHD4CZ5L07PT2200 |  | PC works for Butterfly Valve Chamber for Potable Water Network - (RD-L-7)-Z5-L07-PT | 2d | 2027-02-20 | 2027-02-23 | RHD4CZ5L07PT2100 | -156.02d | 0d | Skilled labor [5.45 h]; Unskilled Labor [10.89 h]; Equipment Opreator [0.54 h]; Concrete Pump [0.54 h]; Valve chambers - PT [0.1 nr] | 1,248.4 | L07 | Z5 | CONS | PT | PC Works | bef |
| RHD4CZ5L07PT2300 |  | Installation for Butterfly Valve Chamber for Potable Water Network - (RD-L-7)-Z5-L07-PT | 2d | 2027-02-23 | 2027-02-25 | RHD4CZ5L07PT2200, RHD4PRSHLDOSPT1100 | -156.02d | 0d | Skilled labor [5.45 h]; Unskilled Labor [10.89 h]; Equipment Opreator [1.09 h]; Boom Truck [1.09 h]; Valve chambers - PT [0.55 nr] | 6,866.2 | L07 | Z5 | CONS | PT | Installation | bef |
| RHD4CZ5L07PT2400 |  | Backfilling works for Butterfly Valve Chamber for Potable Water Network - (RD-L-7)-Z5-L07-PT | 2d | 2027-02-25 | 2027-02-28 | RHD4CZ5L07PT2300 | -156.02d | 0d | Skilled labor [5.45 h]; Unskilled Labor [10.89 h]; Equipment Opreator [1.09 h]; Water Truck [0.54 h]; Dump Truck [0.54 h]; Valve chambers - PT [0.1 nr] | 1,248.4 | L07 | Z5 | CONS | PT | Backfilling Works | bef |
|  | 3451 | **RHD4-02-002-L07-(PT)-Butterfly Valves** |  | 2027-02-25 | 2027-03-02 |  |  |  |  |  |  |  |  |  |  |  |
| RHD4CZ5L07PT3101 |  | Installation for Butterfly Valves for Potable Water Network - (RD-L-7)-Z5-L07-PT | 2d | 2027-02-25 | 2027-02-28 | RHD4CZ5L07PT2300, RHD4PRSHLDOSPT1200, RHD4PRSHLSTAGPT1200 | -124.02d | 0d | Unskilled Labor [5.45 h]; Plumber [5.45 h]; Butterfly valves dia 400 - PT [0.9 nr] | 27,578.7 | L07 | Z5 | CONS | PT | Installation | bef |
| RHD4CZ5L07PT3201 |  | Stem and Service box for Butterfly Valves for Potable Water Network - (RD-L-7)-Z5-L07-PT | 2d | 2027-02-28 | 2027-03-02 | RHD4CZ5L07PT3101, RHD4CZ5L07PT2400 | -124.02d | 28d | Unskilled Labor [5.45 h]; Plumber [5.45 h]; Butterfly valves dia 400 - PT [0.1 nr] | 3,064.3 | L07 | Z5 | CONS | PT | Stem and Service box | bef |
|  | 3452 | **RHD4-02-002-L07-(PT)-Wash out Valve Chambers** |  | 2027-04-03 | 2027-04-14 |  |  |  |  |  |  |  |  |  |  |  |
| RHD4CZ5L07PT2101 |  | Excavation and Bedding for Wash out Valve Chambers for Potable Water Network - (RD-L-7)-Z5-L07-PT | 2d | 2027-04-03 | 2027-04-05 | RHD4CZ5L07PT1503, RHD4CZ5L07PT1501, RHD4ENSDZ5APPPT130 | -152.02d | 0d | Skilled labor [10.89 h]; Unskilled Labor [10.89 h]; Equipment Opreator [2.18 h]; Excavator-Poclain [1.09 h]; Dump Truck [1.09 h]; Wash out chambers - PT [0.5 nr] | 9,372.5 | L07 | Z5 | CONS | PT | Excavation and Bedding | bef |
| RHD4CZ5L07PT2201 |  | PC works for Wash out Valve Chambers for Potable Water Network - (RD-L-7)-Z5-L07-PT | 2d | 2027-04-05 | 2027-04-07 | RHD4CZ5L07PT2101 | -152.02d | 0d | Skilled labor [10.89 h]; Unskilled Labor [21.78 h]; Equipment Opreator [1.09 h]; Concrete Pump [1.09 h]; Wash out chambers - PT [0.2 nr] | 3,749 | L07 | Z5 | CONS | PT | PC Works | bef |
| RHD4CZ5L07PT2301 |  | Installation for Wash out Valve Chambers for Potable Water Network - (RD-L-7)-Z5-L07-PT | 2d | 2027-04-07 | 2027-04-10 | RHD4CZ5L07PT2201, RHD4CZ5L07PT3201, RHD4CZ5L07PT3200 | -152.02d | 0d | Skilled labor [10.89 h]; Unskilled Labor [21.78 h]; Equipment Opreator [2.18 h]; Boom Truck [2.18 h]; Wash out chambers - PT [1.1 nr] | 20,619.5 | L07 | Z5 | CONS | PT | Installation | bef |
| RHD4CZ5L07PT2401 |  | Backfilling works for Wash out Valve Chambers for Potable Water Network - (RD-L-7)-Z5-L07-PT | 4d | 2027-04-10 | 2027-04-14 | RHD4CZ5L07PT2301 | -152.02d | 0d | Skilled labor [10.89 h]; Unskilled Labor [21.78 h]; Equipment Opreator [2.18 h]; Water Truck [1.09 h]; Dump Truck [1.09 h]; Wash out chambers - PT [0.2 nr] | 3,749 | L07 | Z5 | CONS | PT | Backfilling Works | bef |
|  | 3453 | **RHD4-02-002-L07-(PT)-Wash out Valves** |  | 2027-04-10 | 2027-04-19 |  |  |  |  |  |  |  |  |  |  |  |
| RHD4CZ5L07PT3102 |  | Installation for Wash out Valves for Potable Water Network - (RD-L-7)-Z5-L07-PT | 4d | 2027-04-10 | 2027-04-14 | RHD4CZ5L07PT2301, RHD4PRSHLDOSPT1200, RHD4PRSHLSTAGPT1200 | -152.02d | 0d | Unskilled Labor [10.89 h]; Plumber [10.89 h]; Wash out valve diameter 100 mm - PT [1.8 nr] | 6,746.4 | L07 | Z5 | CONS | PT | Installation | bef |
| RHD4CZ5L07PT3202 |  | Stem and Service box for Wash out Valves for Potable Water Network - (RD-L-7)-Z5-L07-PT | 4d | 2027-04-14 | 2027-04-19 | RHD4CZ5L07PT3102, RHD4CZ5L07PT2401 | -152.02d | 15d | Unskilled Labor [10.89 h]; Plumber [10.89 h]; Wash out valve diameter 100 mm - PT [0.2 nr] | 749.6 | L07 | Z5 | CONS | PT | Stem and Service box | bef |
|  | 3454 | **RHD4-02-002-L07-(PT)-Air Valve Chambers** |  | 2027-04-03 | 2027-04-17 |  |  |  |  |  |  |  |  |  |  |  |
| RHD4CZ5L07PT2102 |  | Excavation and Bedding for Air Valve Chambers for Potable Water Network - (RD-L-7)-Z5-L07-PT | 2d | 2027-04-03 | 2027-04-05 | RHD4CZ5L07PT1503, RHD4CZ5L07PT1501, RHD4ENSDZ5APPPT130 | -152.02d | 0d | Skilled labor [5.45 h]; Unskilled Labor [5.45 h]; Equipment Opreator [1.09 h]; Excavator-Poclain [0.54 h]; Dump Truck [0.54 h]; Air Valve chambers - PT [0.25 nr] | 1,193 | L07 | Z5 | CONS | PT | Excavation and Bedding | bef |
| RHD4CZ5L07PT2202 |  | PC works for Air Valve Chambers for Potable Water Network - (RD-L-7)-Z5-L07-PT | 2d | 2027-04-05 | 2027-04-07 | RHD4CZ5L07PT2102 | -152.02d | 0d | Skilled labor [5.45 h]; Unskilled Labor [10.89 h]; Equipment Opreator [0.54 h]; Concrete Pump [0.54 h]; Air Valve chambers - PT [0.1 nr] | 477.2 | L07 | Z5 | CONS | PT | PC Works | bef |
| RHD4CZ5L07PT2302 |  | Installation for Air Valve Chambers for Potable Water Network - (RD-L-7)-Z5-L07-PT | 4d | 2027-04-07 | 2027-04-12 | RHD4CZ5L07PT2202, RHD4PRSHLDOSPT1100, RHD4PRSHLDOSPT1400, RHD4PRSHLSTAGPT1100, RHD4PRSHLSTAGPT1400 | -152.02d | 0d | Skilled labor [5.45 h]; Unskilled Labor [10.89 h]; Equipment Opreator [1.09 h]; Boom Truck [1.09 h]; Air Valve chambers - PT [0.55 nr] | 2,624.6 | L07 | Z5 | CONS | PT | Installation | bef |
| RHD4CZ5L07PT2402 |  | Backfilling works for Air Valve Chambers for Potable Water Network - (RD-L-7)-Z5-L07-PT | 4d | 2027-04-12 | 2027-04-17 | RHD4CZ5L07PT2302 | -152.02d | 0d | Skilled labor [5.45 h]; Unskilled Labor [10.89 h]; Equipment Opreator [1.09 h]; Water Truck [0.54 h]; Dump Truck [0.54 h]; Air Valve chambers - PT [0.1 nr] | 477.2 | L07 | Z5 | CONS | PT | Backfilling Works | bef |

| ID | WBS | Activity | Duration | Start | Finish | Predecessors | Complete | Remaining | Planned start | Planned finish | Total float | Free float | Resources | Cost | RDH4-01-001-Road and Block Names-1 | RDH4-01-001-Zones-1 | RDH4-01-001-Phases-1 | RDH4-01-001-Networks-1 | RDH4-01-001-Work Method-1 | RDH4-01-001-MENEM |
| --- | --- | --- | --- | --- | --- | --- | --- | --- | --- | --- | --- | --- | --- | --- | --- | --- | --- | --- | --- | --- |
|  | 3455 | **RHD4-02-002-L07-(PT)-Air Valves** |  | 2027-03-08 | 2027-04-19 |  |  |  |  |  |  |  |  |  |  |  |  |  |  |  |
| RHD4CZ5L07PT3103 |  | Installation for Air Valves for Potable Water Network - (RD-L-7)-Z5-L07-PT | 2d | 2027-03-08 | 2027-03-14 | RHD4PRSHLDOSPT1200, RHD4PRSHLSTAGPT1200, RHD4CZ5L07PT1301, RHD4CZ5L07PT1300, RHD4CZ5L07PT1303 |  |  |  |  | -123.02d | 29d | Unskilled Labor [5.45 h]; Plumber [5.45 h]; Air valve diameter 50 mm - PT [0.9 nr] | 4,427.1 | L07 | Z5 | CONS | PT | Installation | bef |
| RHD4CZ5L07PT3203 |  | Stem and Service box for Air Valves for Potable Water Network - (RD-L-7)-Z5-L07-PT | 2d | 2027-04-17 | 2027-04-19 | RHD4CZ5L07PT3103, RHD4CZ5L07PT2402 |  |  |  |  | -152.02d | 15d | Unskilled Labor [5.45 h]; Plumber [5.45 h]; Air valve diameter 50 mm - PT [0.1 nr] | 491.9 | L07 | Z5 | CONS | PT | Stem and Service box | bef |
|  | 3456 | **RHD4-02-002-L07-(PT)-Fire Hydrant** |  | 2027-04-03 | 2027-05-02 |  |  |  |  |  |  |  |  |  |  |  |  |  |  |  |
| RHD4CZ5L07PT4100 |  | Excavation and Bedding and Pipe Installation for Fire Hydrant - (RD-L-7)-Z5-L07-PT | 7d | 2027-04-03 | 2027-04-11 | RHD4CZ5L07PT1503, RHD4CZ5L07PT1501, RHD4ENSDZ5APPPT130 |  |  |  |  | -151.02d | 0d | Skilled labor [76.23 h]; Unskilled Labor [76.23 h]; Plumber [76.23 h]; Equipment Opreator [38.12 h]; Excavator-Poclain [38.12 h]; 3-outlet fire hydrant (2 x 2.5 inch and 1 x 4.5 inch) in the form of a separate dry vacuum cylinder [1.4 nr] | 17,668 | L07 | Z5 | CONS | PT | Excavation | bef |
| RHD4CZ5L07PT4200 |  | Valve Installation for Fire Hydrant - (RD-L-7)-Z5-L07-PT | 5d | 2027-04-11 | 2027-04-17 | RHD4CZ5L07PT4100 |  |  |  |  | -151.02d | 0d | Unskilled Labor [50.86 h]; Plumber [50.86 h]; 3-outlet fire hydrant (2 x 2.5 inch and 1 x 4.5 inch) in the form of a separate dry vacuum cylinder [2.8 nr] | 35,336 | L07 | Z5 | CONS | PT | Valve | bef |
| RHD4CZ5L07PT4300 |  | Stem for Fire Hydrant - (RD-L-7)-Z5-L07-PT | 5d | 2027-04-17 | 2027-04-22 | RHD4CZ5L07PT4200 |  |  |  |  | -151.02d | 0d | Unskilled Labor [50.86 h]; Plumber [50.86 h]; 3-outlet fire hydrant (2 x 2.5 inch and 1 x 4.5 inch) in the form of a separate dry vacuum cylinder [4.2 nr] | 53,004 | L07 | Z5 | CONS | PT | Stem | bef |
| RHD4CZ5L07PT4400 |  | Fire Installation for Fire Hydrant - (RD-L-7)-Z5-L07-PT | 5d | 2027-04-22 | 2027-04-28 | RHD4CZ5L07PT4300, RHD4PRSHLDOSPT1500, RHD4PRSHLSTAGPT1500 |  |  |  |  | -151.02d | 0d | Unskilled Labor [50.86 h]; Plumber [50.86 h]; Equipment Opreator [50.86 h]; Boom Truck [50.86 h]; 3-outlet fire hydrant (2 x 2.5 inch and 1 x 4.5 inch) in the form of a separate dry vacuum cylinder [4.9 nr] | 61,838 | L07 | Z5 | CONS | PT | Fire | bef |
| RHD4CZ5L07PT4500 |  | Protection Barriers for Fire Hydrant - (RD-L-7)-Z5-L07-PT | 3d | 2027-04-28 | 2027-05-02 | RHD4CZ5L07PT4400, RHD4CZ5L07IRR3202 |  |  |  |  | -151.02d | 15d | Unskilled Labor [30.49 h]; Plumber [30.49 h]; 3-outlet fire hydrant (2 x 2.5 inch and 1 x 4.5 inch) in the form of a separate dry vacuum cylinder [0.7 nr] | 8,834 | L07 | Z5 | CONS | PT | Protection Barriers | bef |
|  | 3457 | **RHD4-02-002-L07-(PT)-Concrete Encasement** |  | 2027-02-28 | 2027-03-23 |  |  |  |  |  |  |  |  |  |  |  |  |  |  |  |
| RHD4CZ5L07PT5100 |  | Pipe Encasement for Potable Pipelines - (RD-L-7)-Z5-L07-PT | 17d | 2027-02-28 | 2027-03-23 | RHD4CZ5L07PT1303 FF, RHD4CZ5L07PT1301 FF, RHD4CZ5L07PT1303 SS, RHD4CZ5L07PT1301 SS, RHD4CZ5L07PT1203, RHD4CZ5L07PT1201 |  |  |  |  | -152.02d | 0d | Skilled labor [177.29 h]; Unskilled Labor [177.29 h]; Equipment Opreator [195.05 h]; Concrete Mixer Truck [17.75 h]; Dump Truck [177.29 h]; Pipe Encasement - PT [81.4 m3] | 99,796.4 | L07 | Z5 | CONS | PT | Pipe Encasement | bef |
|  | 3458 | **RHD4-02-002-Z5-L07-Irrigation Network - IRR** |  | 2026-08-04 | 2027-04-10 |  |  |  |  |  |  |  |  |  |  |  |  |  |  |  |
|  | 3459 | **RHD4-02-002-L07-(IRR)-HDPE Pipes - 160 mm diameter** |  | 2026-08-04 | 2027-03-29 |  |  |  |  |  |  |  |  |  |  |  |  |  |  |  |
| RHD4CZ5L07IRR1100 |  | Excavation works for HDPE Pipline 160 mm - (RD-L-7)-Z5-L07-IRR | 6d | 2026-08-04 A | 2027-03-07 | RHD4CZ5L07PT1101, RHD4ENSDZ5APPIRR140, RHD4ENMSRR2000, RHD4CZ5L07PT1503 | 6% | 6d | 2026-10-10 | 2026-10-15 | -156.02d | 0d | Skilled labor [57.6 h]; Unskilled Labor [57.6 h]; Equipment Opreator [69.15 h]; Excavator-Poclain [57.6 h]; Dump Truck [11.54 h]; HDPE (160mm Diameter) - TSE - Depth: less than 1.5m [78.68 m]; HDPE (160mm Diameter) - TSE - Depth: more than 1.51m [0.97 m] | 9,824.48 | L07 | Z5 | CONS | IRR | Excavation | bef |
| RHD4CZ5L07IRR1200 |  | Bedding works for HDPE Pipline 160 mm - (RD-L-7)-Z5-L07-IRR | 4d | 2026-08-06 A | 2027-03-15 | RHD4CZ5L07IRR1100 | 6% | 4d | 2026-10-17 | 2026-10-20 | -145.02d | 0d | Skilled labor [43.34 h]; Unskilled Labor [86.58 h]; Equipment Opreator [86.58 h]; Excavator-Poclain [43.34 h]; Dump Truck [43.34 h]; HDPE (160mm Diameter) - TSE - Depth: less than 1.5m [39.34 m]; HDPE (160mm Diameter) - TSE - Depth: more than 1.51m [0.32 m] | 4,887.32 | L07 | Z5 | CONS | IRR | Bedding | bef |
| RHD4CZ5L07IRR1300 |  | Installing for HDPE Pipline 160 mm - (RD-L-7)-Z5-L07-IRR | 6d | 2026-08-08 A | 2027-03-22 | RHD4CZ5L07IRR1200, RHD4PRSHLDOSIRR1000, RHD4PRSHLSTAGIRR1000 | 6% | 6d | 2026-10-21 | 2026-10-27 | -145.02d | 0d | Unskilled Labor [115.2 h]; Plumber [57.6 h]; Equipment Opreator [57.6 h]; Boom Truck [57.6 h]; HDPE (160mm Diameter) - TSE - Depth: less than 1.5m [354.07 m]; HDPE (160mm Diameter) - TSE - Depth: more than 1.51m [2.6 m] | 43,943.64 | L07 | Z5 | CONS | IRR | Installation | bef |
| RHD4CZ5L07IRR1400 |  | Primary Test for HDPE Pipline 160 mm - (RD-L-7)-Z5-L07-IRR | 2d | 2027-03-22 | 2027-03-24 | RHD4CZ5L07IRR1300 |  |  |  |  | -145.02d | 0d | Unskilled Labor [17.42 h]; Plumber [17.42 h]; Equipment Opreator [17.42 h]; Water Truck [17.42 h]; HDPE (160mm Diameter) - TSE - Depth: less than 1.5m [157.37 m]; HDPE (160mm Diameter) - TSE - Depth: more than 1.51m [1.3 m] | 19,552.32 | L07 | Z5 | CONS | IRR | Primary Test | bef |
| RHD4CZ5L07IRR1500 |  | Backfilling and warning tape works for HDPE Pipline 160 mm - (RD-L-7)-Z5-L07-IRR | 4d | 2027-03-24 | 2027-03-29 | RHD4CZ5L07IRR1400 |  |  |  |  | -145.02d | 0d | Skilled labor [43.34 h]; Unskilled Labor [86.58 h]; Equipment Opreator [86.58 h]; Excavator-Poclain [43.34 h]; Dump Truck [43.34 h]; HDPE (160mm Diameter) - TSE - Depth: less than 1.5m [157.37 m]; HDPE (160mm Diameter) - TSE - Depth: more than 1.51m [1.3 m] | 19,552.32 | L07 | Z5 | CONS | IRR | Backfilling | bef |
|  | 1770 | **RHD4-02-002-L07-(IRR)-Air Valves** |  | 2027-03-17 | 2027-03-22 |  |  |  |  |  |  |  |  |  |  |  |  |  |  |  |
| RHD4CZ5L07IRR3103 |  | Installation for Air Valves for Irrigation Network - (RD-L-7)-Z5-L07-IRR | 2d | 2027-03-17 | 2027-03-20 | RHD4CZ5L07IRR1100, RHD4CZ5L07IRR2302 |  |  |  |  | -156.02d | 0d | Unskilled Labor [5.45 h]; Plumber [5.45 h]; Air valve diameter 50 mm - TSE [0.9 nr] | 4,427.1 | L07 | Z5 | CONS | IRR | Installation | bef |
| RHD4CZ5L07IRR3203 |  | Stem and Service box for Air Valves for Irrigation Network - (RD-L-7)-Z5-L07-IRR | 2d | 2027-03-20 | 2027-03-22 | RHD4CZ5L07IRR3103, RHD4CZ5L07IRR2402 |  |  |  |  | -156.02d | 0d | Unskilled Labor [5.45 h]; Plumber [5.45 h]; Air valve diameter 50 mm - TSE [0.1 nr] | 491.9 | L07 | Z5 | CONS | IRR | Stem and Service box | bef |
|  | 1769 | **RHD4-02-002-L07-(IRR)-Air Valve Chamber** |  | 2027-03-07 | 2027-03-20 |  |  |  |  |  |  |  |  |  |  |  |  |  |  |  |
| RHD4CZ5L07IRR2102 |  | Excavation and Bedding for Valve Chamber for Irrigation Network - (RD-L-7)-Z5-L07-IRR | 2d | 2027-03-07 | 2027-03-13 | RHD4CZ5L07IRR1100 |  |  |  |  | -156.02d | 0d | Skilled labor [5.45 h]; Unskilled Labor [5.45 h]; Equipment Opreator [1.09 h]; Excavator-Poclain [0.54 h]; Dump Truck [0.54 h]; Air Valve chambers - TSE [0.25 nr] | 1,193 | L07 | Z5 | CONS | IRR | Excavation and Bedding | bef |
| RHD4CZ5L07IRR2202 |  | PC works for Valve Chamber for Irrigation Network - (RD-L-7)-Z5-L07-IRR | 2d | 2027-03-13 | 2027-03-15 | RHD4CZ5L07IRR2102 |  |  |  |  | -156.02d | 0d | Skilled labor [5.45 h]; Unskilled Labor [10.89 h]; Equipment Opreator [0.54 h]; Concrete Pump [0.54 h]; Air Valve chambers - TSE [0.1 nr] | 477.2 | L07 | Z5 | CONS | IRR | PC Works | bef |
| RHD4CZ5L07IRR2302 |  | Installation for Valve Chamber for Irrigation Network - (RD-L-7)-Z5-L07-IRR | 2d | 2027-03-15 | 2027-03-17 | RHD4CZ5L07IRR2202 |  |  |  |  | -156.02d | 0d | Skilled labor [5.45 h]; Unskilled Labor [10.89 h]; Equipment Opreator [1.09 h]; Boom Truck [1.09 h]; Air Valve chambers - TSE [0.55 nr] | 2,624.6 | L07 | Z5 | CONS | IRR | Installation | bef |
| RHD4CZ5L07IRR2402 |  | Backfilling works for Valve Chamber for Irrigation Network - (RD-L-7)-Z5-L07-IRR | 2d | 2027-03-17 | 2027-03-20 | RHD4CZ5L07IRR2302 |  |  |  |  | -156.02d | 0d | Skilled labor [5.45 h]; Unskilled Labor [10.89 h]; Equipment Opreator [1.09 h]; Water Truck [0.54 h]; Dump Truck [0.54 h]; Air Valve chambers - TSE [0.1 nr] | 477.2 | L07 | Z5 | CONS | IRR | Backfilling Works | bef |

| ID | WBS | Activity | Duration | Start | Finish | Predecessors | Total float | Free float | Resources | Cost | RDH4-01-001-Road and Block Names-1 | RDH4-01-001-Zones-1 | RDH4-01-001-Phases-1 | RDH4-01-001-Networks-1 | RDH4-01-001-Work Method-1 | RDH4-01-001-MENEM |
| --- | --- | --- | --- | --- | --- | --- | --- | --- | --- | --- | --- | --- | --- | --- | --- | --- |
|  | 3467 | **RHD4-02-002-L07-(IRR)-Gate Valves (Direct Buried)** |  | 2027-03-18 | 2027-04-01 |  |  |  |  |  |  |  |  |  |  |  |
| RHD4CZ5L07IRR3100 |  | Installation for Direct Buried Gate Valves - (RD-L-7)-Z5-L07-IRR | 3d | 2027-03-18 | 2027-03-22 | RHD4CZ5L07IRR1300 SS, RHD4CZ5L07IRR1300 FF, RHD4PRSHLDOSIRR1100, RHD4PRSHLSTAGIRR1100 | -139.02d | 6d | Unskilled Labor [27.2 h]; Plumber [27.2 h]; Gate valves dia 100 mm - TSE [4.5 nr] | 7,110 | L07 | Z5 | CONS | IRR | Installation | bef |
| RHD4CZ5L07IRR3200 |  | Stem and Service box for Direct Buried Gate Valves - (RD-L-7)-Z5-L07-IRR | 3d | 2027-03-29 | 2027-04-01 | RHD4CZ5L07IRR3100, RHD4CZ5L07IRR1500, RHD4PRSHLDOSIRR1300, RHD4PRSHLSTAGIRR1300 | -145.02d | 44d | Unskilled Labor [27.2 h]; Plumber [27.2 h]; Gate valves dia 100 mm - TSE [0.5 nr] | 790 | L07 | Z5 | CONS | IRR | Stem and Service box | bef |
|  | 3470 | **RHD4-02-002-L07-(IRR)-Wash out Chamber** |  | 2027-03-29 | 2027-04-07 |  |  |  |  |  |  |  |  |  |  |  |
| RHD4CZ5L07IRR2101 |  | Excavation and Bedding for Wash out Chamber for Irrigation Network - (RD-L-7)-Z5-L07-IRR | 2d | 2027-03-29 | 2027-03-31 | RHD4CZ5L07IRR1500, RHD4ENSDZ5APPIRR140 | -135.02d | 0d | Skilled labor [5.45 h]; Unskilled Labor [5.45 h]; Equipment Opreator [1.09 h]; Excavator-Poclain [0.54 h]; Dump Truck [0.54 h]; Wash out chambers - TSE [0.25 nr] | 4,686.25 | L07 | Z5 | CONS | IRR | Excavation and Bedding | bef |
| RHD4CZ5L07IRR2201 |  | PC works for Wash out Chamber for Irrigation Network - (RD-L-7)-Z5-L07-IRR | 2d | 2027-03-31 | 2027-04-03 | RHD4CZ5L07IRR2101 | -135.02d | 0d | Skilled labor [5.45 h]; Unskilled Labor [10.89 h]; Equipment Opreator [0.54 h]; Concrete Pump [0.54 h]; Wash out chambers - TSE [0.1 nr] | 1,874.5 | L07 | Z5 | CONS | IRR | PC Works | bef |
| RHD4CZ5L07IRR2301 |  | Installation for Wash out Chamber for Irrigation Network - (RD-L-7)-Z5-L07-IRR | 2d | 2027-04-03 | 2027-04-05 | RHD4CZ5L07IRR2201, RHD4PRSHLDOSIRR1200, RHD4PRSHLDOSIRR1400, RHD4PRSHLSTAGIRR1200, RHD4PRSHLSTAGIRR1400 | -135.02d | 0d | Skilled labor [5.45 h]; Unskilled Labor [10.89 h]; Equipment Opreator [1.09 h]; Boom Truck [1.09 h]; Wash out chambers - TSE [0.55 nr] | 10,309.75 | L07 | Z5 | CONS | IRR | Installation | bef |
| RHD4CZ5L07IRR2401 |  | Backfilling works for Wash out Chamber for Irrigation Network - (RD-L-7)-Z5-L07-IRR | 2d | 2027-04-05 | 2027-04-07 | RHD4CZ5L07IRR2301 | -135.02d | 0d | Skilled labor [5.45 h]; Unskilled Labor [10.89 h]; Equipment Opreator [1.09 h]; Water Truck [0.54 h]; Dump Truck [0.54 h]; Wash out chambers - TSE [0.1 nr] | 1,874.5 | L07 | Z5 | CONS | IRR | Backfilling Works | bef |
|  | 3471 | **RHD4-02-002-L07-(IRR)-Wash out Valves** |  | 2027-04-05 | 2027-04-10 |  |  |  |  |  |  |  |  |  |  |  |
| RHD4CZ5L07IRR3102 |  | Installation for Wash out Valve for Irrigation Network - (RD-L-7)-Z5-L07-IRR | 2d | 2027-04-05 | 2027-04-07 | RHD4CZ5L07IRR2301, RHD4PRSHLDOSIRR1100, RHD4PRSHLSTAGIRR1100 | -135.02d | 0d | Unskilled Labor [5.45 h]; Plumber [5.45 h]; Wash out valve diameter 100 mm - TSE [0.9 nr] | 3,373.2 | L07 | Z5 | CONS | IRR | Installation | bef |
| RHD4CZ5L07IRR3202 |  | Stem and Service box for Wash out Valve for Irrigation Network - (RD-L-7)-Z5-L07-IRR | 2d | 2027-04-07 | 2027-04-10 | RHD4CZ5L07IRR3102, RHD4CZ5L07IRR2401, RHD4PRSHLDOSIRR1300, RHD4PRSHLSTAGIRR1300 | -135.02d | 16d | Unskilled Labor [5.45 h]; Plumber [5.45 h]; Wash out valve diameter 100 mm - TSE [0.1 nr] | 374.8 | L07 | Z5 | CONS | IRR | Stem and Service box | bef |
|  | 3474 | **RHD4-02-002-L07-(IRR)-Concrete Encasement** |  |  |  |  |  |  |  |  |  |  |  |  |  |  |
|  | 3492 | **RHD4-02-002-Z5-L07-Medium Voltage Network - MV** |  | 2027-07-24 | 2027-09-19 |  |  |  |  |  |  |  |  |  |  |  |
|  | 3493 | **RHD4-02-002-L07-(MV)-Medium Voltage cable trench** |  | 2027-07-24 | 2027-08-19 |  |  |  |  |  |  |  |  |  |  |  |
| RHD4CZ5L07MV1100 |  | Excavation for Medium Voltage Trench - (RD-L-7)-Z5-L07-MV | 11d | 2027-07-24 | 2027-08-05 | RHD4ENSDZ5APPMV150, RHD4CZ5L07RD3100, RHD4CZ3C083ST1501, RHD4CZ3C083ST1502, RHD4CZ5A014MV1100 | -153.02d | 0d | Skilled labor [116.74 h]; Unskilled Labor [233.49 h]; Equipment Opreator [350.34 h]; Excavator-Poclain [116.74 h]; Dump Truck [233.49 h]; Excavation for Trench size 60cm wide and 80cm deep ( for 2 cables) [340.35 m3]; Excavation for Trench size 120cm wide and 80cm deep (for 4 cables) [410.2 m3] | 7,505.46 | L07 | Z5 | CONS | MV | Excavation | AFT |
| RHD4CZ5L07MV1200 |  | Trench Backfilling for Medium Voltage Network - (RD-L-7)-Z5-L07-MV | 12d | 2027-08-05 | 2027-08-19 | RHD4CZ5L07MV1100 | -113.02d | 0d | Skilled labor [116.74 h]; Unskilled Labor [116.74 h]; Equipment Opreator [233.49 h]; Dump Truck [233.49 h]; Excavation for Trench size 60cm wide and 80cm deep ( for 2 cables) [145.86 m3]; Excavation for Trench size 120cm wide and 80cm deep (for 4 cables) [175.8 m3] | 3,216.62 | L07 | Z5 | CONS | MV | Backfilling | AFT |
|  | 1982 | **RHD4-02-002-L07-(MV)-Medium Voltage cables 3Cx 50 mm²** |  | 2027-08-29 | 2027-08-31 |  |  |  |  |  |  |  |  |  |  |  |
| RHD4CZ5L07MV3401 |  | Termination of Medium Voltage Cables 3Cx 50 mm² - (RD-L-7)-Z5-L07-MV | 2d | 2027-08-29 | 2027-08-31 | RHD4CZ5L07MV3300 | -111.02d | 20d | Unskilled Labor [17.42 h]; Electrician [8.71 h]; Cable Termination for 13.8 kv 3Cx 500 mm², Al /XLPE/LLDPE [1.2 Unit] | 3,162 | L07 | Z5 | CONS | MV | Termination | AFT |
|  | 3494 | **RHD4-02-002-L07-(MV)-Medium Voltage duct banks** |  | 2027-08-05 | 2027-09-19 |  |  |  |  |  |  |  |  |  |  |  |
| RHD4CZ5L07MV2100 |  | Excavation of Duct Banks for Medium Voltage Network - (RD-L-7)-Z5-L07-MV | 9d | 2027-08-05 | 2027-08-16 | RHD4ENSDZ5APPMV150, RHD4CZ5L07MV1100 | -115.02d | 0d | Unskilled Labor [92.13 h]; Equipment Opreator [184.26 h]; Excavator-Poclain [92.13 h]; Dump Truck [92.13 h]; Duct bank for MV cables UPVC (4xø150mm) [1.6 m]; Duct bank for MV cables UPVC (6xø150mm) [11.09 m] | 7,257.53 | L07 | Z5 | CONS | MV | Excavation | bef |
| RHD4CZ5L07MV2200 |  | Installation of Duct Banks for Medium Voltage Network - (RD-L-7)-Z5-L07-MV | 13d | 2027-08-16 | 2027-08-31 | RHD4CZ5L07MV2100, RHD4PRSHLDOSMV1000, RHD4PRSHLSTAGMV1000 | -115.02d | 0d | Unskilled Labor [138.2 h]; Equipment Opreator [276.51 h]; Excavator-Poclain [138.2 h]; Dump Truck [138.2 h]; Duct bank for MV cables UPVC (4xø150mm) [1.6 m]; Duct bank for MV cables UPVC (6xø150mm) [11.09 m] | 7,257.53 | L07 | Z5 | CONS | MV | Installing | bef |
| RHD4CZ5L07MV2300 |  | Pouring of Duct Banks for Medium Voltage Network - (RD-L-7)-Z5-L07-MV | 9d | 2027-08-31 | 2027-09-11 | RHD4CZ5L07MV2200, RHD4CTUN1Z5STG21900, RHD4CZ5L07MV3300 | -115.02d | 0d | Unskilled Labor [92.13 h]; Equipment Opreator [184.26 h]; Excavator-Poclain [92.13 h]; Dump Truck [92.13 h]; Duct bank for MV cables UPVC (4xø150mm) [10.4 m]; Duct bank for MV cables UPVC (6xø150mm) [72.1 m] | 47,182.9 | L07 | Z5 | CONS | MV | Pouring | bef |
| RHD4CZ5L07MV2400 |  | Backfilling of Duct Banks for Medium Voltage Network - (RD-L-7)-Z5-L07-MV | 7d | 2027-09-11 | 2027-09-19 | RHD4CZ5L07MV2300 | -115.02d | 16d | Unskilled Labor [69.15 h]; Equipment Opreator [138.2 h]; Excavator-Poclain [69.15 h]; Dump Truck [69.15 h]; Duct bank for MV cables UPVC (4xø150mm) [2.4 m]; Duct bank for MV cables UPVC (6xø150mm) [16.64 m] | 10,889.28 | L07 | Z5 | CONS | MV | Backfilling | bef |
|  | 3495 | **RHD4-02-002-L07-(MV)-Medium Voltage cables 3Cx 500 mm²** |  | 2027-08-05 | 2027-08-29 |  |  |  |  |  |  |  |  |  |  |  |
| RHD4CZ5L07MV3100 |  | Installation of Medium Voltage Cables 3Cx 500 mm² - (RD-L-7)-Z5-L07-MV | 9d | 2027-08-05 | 2027-08-16 | RHD4CZ5L07MV1100, RHD4ENMSMV2000, RHD4ENMSMV2010 | -113.02d | 0d | Skilled labor [278.79 h]; Unskilled Labor [1115.2 h]; Electrician [557.6 h]; Equipment Opreator [836.38 h]; Boom Truck [278.79 h]; Cable Laying Machine [557.6 h]; Cable 13.8 kV 3Cx 500 mm² Al/XLPE,/LLDPE / Unarmored [3456.09 m] | 549,518.02 | L07 | Z5 | CONS | MV | Installation | AFT |
| RHD4CZ5L07MV3200 |  | Joints Installation of Medium Voltage Cables 3Cx 500 mm² - (RD-L-7)-Z5-L07-MV | 3d | 2027-08-16 | 2027-08-19 | RHD4CZ5L07MV3100, RHD4PRSHLDOSMV1300, RHD4PRSHLSTAGMV1300 | -113.02d | 0d | Skilled labor [27.2 h]; Unskilled Labor [108.9 h]; Electrician [54.45 h]; Equipment Opreator [27.2 h]; Boom Truck [27.2 h]; Straight joints cables for 13.8 kv 3Cx 500 mm², Al /XLPE/LLDPE [5 Unit] | 16,240 | L07 | Z5 | CONS | MV | Joints Installation | AFT |
| RHD4CZ5L07MV3300 |  | Testing of Medium Voltage Cables 3Cx 500 mm² - (RD-L-7)-Z5-L07-MV | 8d | 2027-08-19 | 2027-08-29 | RHD4CZ5L07MV3200, RHD4CZ5L07MV1200 | -113.02d | 0d | Skilled labor [83.64 h]; Unskilled Labor [334.55 h]; Electrician [167.28 h]; Cable 13.8 kV 3Cx 500 mm² Al/XLPE,/LLDPE / Unarmored [384.01 m] | 61,057.56 | L07 | Z5 | CONS | MV | Testing | AFT |

| ID | WBS | Activity | Duration | Start | Finish | Predecessors | Total float | Free float | Resources | Cost | RDH4-01-001-Road and Block Names-1 | RDH4-01-001-Zones-1 | RDH4-01-001-Phases-1 | RDH4-01-001-Networks-1 | RDH4-01-001-Work Method-1 | RDH4-01-001-MENEM |
| --- | --- | --- | --- | --- | --- | --- | --- | --- | --- | --- | --- | --- | --- | --- | --- | --- |
|  | 1984 | **RHD4-02-002-L07-(MV)-Unit Substations** |  |  |  |  |  |  |  |  |  |  |  |  |  |  |
|  | 5388 | **RHD4-02-002-L07-(MV)-Normally open Point (Outdoor Type)** |  |  |  |  |  |  |  |  |  |  |  |  |  |  |
|  | 3499 | **RHD4-02-002-Z5-L07-Low Voltage Network - LV** |  | 2027-02-28 | 2027-09-19 |  |  |  |  |  |  |  |  |  |  |  |
|  | 3500 | **RHD4-02-002-L07-(LV)-Low Voltage duct banks** |  | 2027-02-28 | 2027-03-13 |  |  |  |  |  |  |  |  |  |  |  |
| RHD4CZ5L07LV2100 |  | Excavation of Duct Banks for Low Voltage Network - (RD-L-7)-Z5-L07-LV | 2d | 2027-02-28 | 2027-03-02 | RHD4ENSDZ5APPLV160, RHD4CZ5L07PT2400 | -156.02d | 0d | Skilled labor [11.76 h]; Unskilled Labor [11.76 h]; Equipment Opreator [23.52 h]; Excavator-Poclain [11.76 h]; Dump Truck [11.76 h]; Duct bank for LV cables UPVC (2xø110mm) [1.62 m] | 327.24 | L07 | Z5 | CONS | LV | Excavation | bef |
| RHD4CZ5L07LV2200 |  | Installation of Duct Banks for Low Voltage Network - (RD-L-7)-Z5-L07-LV | 2d | 2027-03-02 | 2027-03-04 | RHD4CZ5L07LV2100, RHD4PRSHLDOSLV1000, RHD4PRSHLSTAGLV1000 | -154.02d | 0d | Carpenter [1.74 h]; Skilled labor [17.64 h]; Unskilled Labor [17.64 h]; Steel Fixer [1.74 h]; Duct bank for LV cables UPVC (2xø110mm) [1.62 m] | 327.24 | L07 | Z5 | CONS | LV | Installing | bef |
| RHD4CZ5L07LV2300 |  | Pouring of Duct Banks for Low Voltage Network - (RD-L-7)-Z5-L07-LV | 2d | 2027-03-04 | 2027-03-07 | RHD4CZ5L07LV2200 | -150.02d | 0d | Skilled labor [11.76 h]; Unskilled Labor [11.76 h]; Equipment Opreator [4.68 h]; Concrete Mixer Truck [2.4 h]; Concrete Pump [2.4 h]; Duct bank for LV cables UPVC (2xø110mm) [10.53 m] | 2,127.06 | L07 | Z5 | CONS | LV | Pouring | bef |
| RHD4CZ5L07LV2400 |  | Backfilling of Duct Banks for Low Voltage Network - (RD-L-7)-Z5-L07-LV | 2d | 2027-03-07 | 2027-03-13 | RHD4CZ5L07LV2300 | -148.02d | 8d | Skilled labor [8.8 h]; Unskilled Labor [8.8 h]; Equipment Opreator [3.48 h]; Excavator-Poclain [3.48 h]; Duct bank for LV cables UPVC (2xø110mm) [2.43 m] | 490.86 | L07 | Z5 | CONS | LV | Backfilling | bef |
|  | 3502 | **RHD4-02-002-L07-(LV)-Low Voltage cables** |  | 2027-08-05 | 2027-09-07 |  |  |  |  |  |  |  |  |  |  |  |
| RHD4CZ5L07LV3100 |  | Excavation for Low Voltage Cables for Low Voltage Network - (RD-L-7)-Z5-L07-LV | 9d | 2027-08-05 | 2027-08-16 | RHD4ENSDZ5APPLV160, RHD4CZ5L07IRR3202, RHD4CZ5L07SW3500, RHD4CZ5L07MV1100 | -153.02d | 0d | Skilled labor [88.54 h]; Unskilled Labor [177.08 h]; Equipment Opreator [177.08 h]; Excavator-Poclain [88.54 h]; Boom Truck [88.54 h]; Cable, Copper 4x185mm2/ CU/XLPE/PVC [139.92 m]; Cable, Copper 4x70mm2/ CU/XLPE/PVC [119.84 m]; Cable, Copper 3x10mm2/ CU/XLPE/SWA/PVC [146.69 m] | 79,982.96 | L07 | Z5 | CONS | LV | Excavation | AFT |
| RHD4CZ5L07LV3200 |  | Cable Laying of Low Voltage Cables for Low Voltage Network - (RD-L-7)-Z5-L07-LV | 7d | 2027-08-16 | 2027-08-24 | RHD4CZ5L07LV3100, RHD4PRSHLDOSLV1100, RHD4ENMSLV2000, RHD4ENMSLV2010, RHD4PRSHLSTAGLV1100 | -148.02d | 0d | Skilled labor [73.73 h]; Unskilled Labor [295.13 h]; Electrician [147.56 h]; Equipment Opreator [221.29 h]; Boom Truck [73.73 h]; Cable Laying Machine [147.56 h]; Cable, Copper 4x185mm2/ CU/XLPE/PVC [199 m]; Cable, Copper 4x70mm2/ CU/XLPE/PVC [172.6 m]; Cable, Copper 3x10mm2/ CU/XLPE/SWA/PVC [440.06 m] | 123,145.74 | L07 | Z5 | CONS | LV | Cable Laying | AFT |
| RHD4CZ5L07LV3300 |  | Warning tape and Backfill for Low Voltage Cables for Low Voltage Network - (RD-L-7)-Z5-L07-LV | 7d | 2027-08-24 | 2027-09-01 | RHD4CZ5L07LV3200 | -148.02d | 0d | Skilled labor [73.73 h]; Unskilled Labor [295.13 h]; Electrician [147.56 h]; Equipment Opreator [73.73 h]; Boom Truck [73.73 h]; Cable, Copper 4x185mm2/ CU/XLPE/PVC [104.94 m]; Cable, Copper 4x70mm2/ CU/XLPE/PVC [89.88 m]; Cable, Copper 3x10mm2/ CU/XLPE/SWA/PVC [110.01 m] | 59,987.22 | L07 | Z5 | CONS | LV | Warning tape and Backfill | AFT |
| RHD4CZ5L07LV3400 |  | Testing of Low Voltage Cables for Low Voltage Network - (RD-L-7)-Z5-L07-LV | 5d | 2027-09-01 | 2027-09-07 | RHD4CZ5L07LV3300 | -148.02d | 0d | Skilled labor [44.21 h]; Unskilled Labor [177.08 h]; Electrician [88.54 h]; Equipment Opreator [44.21 h]; Boom Truck [44.21 h]; Cable, Copper 4x185mm2/ CU/XLPE/PVC [34.98 m]; Cable, Copper 4x70mm2/ CU/XLPE/PVC [29.96 m]; Cable, Copper 3x10mm2/ CU/XLPE/SWA/PVC [36.67 m] | 19,995.74 | L07 | Z5 | CONS | LV | Testing | AFT |
|  | 3503 | **RHD4-02-002-L07-(LV)-Low Voltage Distribution Pillars** |  | 2027-09-07 | 2027-09-14 |  |  |  |  |  |  |  |  |  |  |  |
| RHD4CZ5L07LV4100 |  | Leveling for Distribution Pillars for Low Voltage Network - (RD-L-7)-Z5-L07-LV | 2d | 2027-09-07 | 2027-09-09 | RHD4CZ5L07LV3400 | -148.02d | 0d | Skilled labor [10.89 h]; Unskilled Labor [21.78 h]; Equipment Opreator [4.36 h]; Excavator-Poclain [2.18 h]; Boom Truck [2.18 h]; 0.6/1 KV Low Voltage Distribution Pillars with main breaker MCCB type and 5 Outgoing feeders MCCB type [0.15 Unit]; Supply and installation of KWH meter mounting frame including concrete block wall for installation of KWH meter according to the standards and specifications of SEC [0.15 Unit] | 3,088.8 | L07 | Z5 | CONS | LV | Leveling | AFT |
| RHD4CZ5L07LV4200 |  | Lean Concrete for Distribution Pillars for Low Voltage Network - (RD-L-7)-Z5-L07-LV | 2d | 2027-09-09 | 2027-09-12 | RHD4CZ5L07LV4100 | -148.02d | 0d | Skilled labor [7.3 h]; Unskilled Labor [14.48 h]; Equipment Opreator [2.94 h]; Concrete Mixer Truck [1.42 h]; Concrete Pump [1.42 h]; 0.6/1 KV Low Voltage Distribution Pillars with main breaker MCCB type and 5 Outgoing feeders MCCB type [0.25 Unit]; Supply and installation of KWH meter mounting frame including concrete block wall for installation of KWH meter according to the standards and specifications of SEC [0.25 Unit] | 5,148 | L07 | Z5 | CONS | LV | Lean Concrete | AFT |
| RHD4CZ5L07LV4300 |  | Installation of Distribution Pillars for Low Voltage Network - (RD-L-7)-Z5-L07-LV | 2d | 2027-09-12 | 2027-09-14 | RHD4CZ5L07LV4200, RHD4PRSHLDOSLV1200, RHD4PRSHLDOSLV1300, RHD4PRSHLSTAGLV1200, RHD4PRSHLSTAGLV1300 | -148.02d | 0d | Skilled labor [10.89 h]; Unskilled Labor [43.56 h]; Electrician [21.78 h]; Equipment Opreator [10.89 h]; Boom Truck [10.89 h]; 0.6/1 KV Low Voltage Distribution Pillars with main breaker MCCB type and 5 Outgoing feeders MCCB type [0.6 Unit]; Supply and installation of KWH meter mounting frame including concrete block wall for installation of KWH meter according to the standards and specifications of SEC [0.6 Unit] | 12,355.2 | L07 | Z5 | CONS | LV | Installation | AFT |
|  | 3504 | **RHD4-02-002-L07-(LV)-Low Voltage Distribution Pillars Earthing** |  |  |  |  |  |  |  |  |  |  |  |  |  |  |
|  | 4257 | **RHD4-02-002-L07-(LV)-Low Voltage Drawpit** |  | 2027-09-14 | 2027-09-19 |  |  |  |  |  |  |  |  |  |  |  |
| RHD4CZ5L07LV5100 |  | Excavation of Drawpit size 900x900x1000mm for Low Voltage Network - (RD-L-7)-Z5-L07-LV | 2d | 2027-09-14 | 2027-09-16 | RHD4CZ5L07LV2400, RHD4CZ5L07LV4300 | -131.02d | 0d | Skilled labor [1.85 h]; Unskilled Labor [1.85 h]; Equipment Opreator [1.42 h]; Excavator-Poclain [0.8 h]; Dump Truck [0.8 h]; Drawpit with medium duty steel cover, size900x900x1000mm, [0.3 Unit] | 1,103.1 | L07 | Z5 | CONS | LV | Excavation | AFT |
| RHD4CZ5L07LV5200 |  | Installation of Drawpit size 900x900x1000mm for Low Voltage Network - (RD-L-7)-Z5-L07-LV | 2d | 2027-09-16 | 2027-09-19 | RHD4CZ5L07LV5100 | -131.02d | 0d | Skilled labor [1.85 h]; Unskilled Labor [1.85 h]; Equipment Opreator [0.8 h]; Boom Truck [0.8 h]; Drawpit with medium duty steel cover, size900x900x1000mm, [1.7 Unit] | 6,250.9 | L07 | Z5 | CONS | LV | Installation | AFT |
|  | 3505 | **RHD4-02-002-Z5-L07-Street Lighting Network - SL** |  | 2027-03-02 | 2027-12-26 |  |  |  |  |  |  |  |  |  |  |  |
|  | 3506 | **RHD4-02-002-L07-(SL)-Street Lighting duct banks** |  | 2027-03-02 | 2027-03-25 |  |  |  |  |  |  |  |  |  |  |  |
| RHD4CZ5L07SL2100 |  | Excavation of Duct Banks for Street Lighting Network - (RD-L-7)-Z5-L07-SL | 4d | 2027-03-02 | 2027-03-07 | RHD4CZ5L07LV2100, RHD4ENSDZ5APPSL170 | -156.02d | 0d | Skilled labor [43.45 h]; Unskilled Labor [43.45 h]; Equipment Opreator [86.9 h]; Excavator-Poclain [43.45 h]; Dump Truck [43.45 h]; Road Crossing Duct for Street Lighting cables UPVC (2x?110mm) [4.36 m]; Road Crossing Duct for Street Lighting cables UPVC (4x?110mm) [1.62 m] | 1,308.46 | L07 | Z5 | CONS | SL | Excavation | bef |
| RHD4CZ5L07SL2200 |  | Installation of Duct Banks for Street Lighting Network - (RD-L-7)-Z5-L07-SL | 6d | 2027-03-07 | 2027-03-17 | RHD4CZ5L07SL2100, RHD4CZ5L07LV2200, RHD4PRSHLDOSSL1000, RHD4PRSHLSTAGSL1000 | -156.02d | 0d | Carpenter [6.53 h]; Skilled labor [65.12 h]; Unskilled Labor [65.12 h]; Steel Fixer [6.53 h]; Road Crossing Duct for Street Lighting cables UPVC (2x?110mm) [4.36 m]; Road Crossing Duct for Street Lighting cables UPVC (4x?110mm) [1.62 m] | 1,308.46 | L07 | Z5 | CONS | SL | Installing | bef |
| RHD4CZ5L07SL2300 |  | Pouring of Duct Banks for Street Lighting Network - (RD-L-7)-Z5-L07-SL | 4d | 2027-03-17 | 2027-03-22 | RHD4CZ5L07SL2200, RHD4CZ5L07LV2300 | -156.02d | 0d | Skilled labor [43.45 h]; Unskilled Labor [43.45 h]; Equipment Opreator [17.42 h]; Concrete Mixer Truck [8.71 h]; Concrete Pump [8.71 h]; Road Crossing Duct for Street Lighting cables UPVC (2x?110mm) [28.34 m]; Road Crossing Duct for Street Lighting cables UPVC (4x?110mm) [10.55 m] | 8,510.29 | L07 | Z5 | CONS | SL | Pouring | bef |
| RHD4CZ5L07SL2400 |  | Backfilling of Duct Banks for Street Lighting Network - (RD-L-7)-Z5-L07-SL | 3d | 2027-03-22 | 2027-03-25 | RHD4CZ5L07SL2300, RHD4CZ5L07LV2400, RHD4CZ5L07IRR3203 | -156.02d | 11d | Skilled labor [32.56 h]; Unskilled Labor [32.56 h]; Equipment Opreator [13.07 h]; Excavator-Poclain [13.07 h]; Road Crossing Duct for Street Lighting cables UPVC (2x?110mm) [6.54 m]; Road Crossing Duct for Street Lighting cables UPVC (4x?110mm) [2.44 m] | 1,965.33 | L07 | Z5 | CONS | SL | Backfilling | bef |

| ID | WBS | Activity | Duration | Start | Finish | Predecessors | Total float | Free float | Resources | Cost | RDH4-01-001-Road and Block Names-1 | RDH4-01-001-Zones-1 | RDH4-01-001-Phases-1 | RDH4-01-001-Networks-1 | RDH4-01-001-Work Method-1 | RDH4-01-001-MENEM |
| --- | --- | --- | --- | --- | --- | --- | --- | --- | --- | --- | --- | --- | --- | --- | --- | --- |
|  | 3507 | **RHD4-02-002-L07-(SL)-Street Lighting Drawpit** |  | 2027-09-19 | 2027-09-25 |  |  |  |  |  |  |  |  |  |  |  |
| RHD4CZ5L07SL5100 |  | Excavation of Drawpit size 600x600x900mm for Street Lighting Network - (RD-L-7)-Z5-L07-SL | 2d | 2027-09-19 | 2027-09-21 | RHD4CZ5L07SL2300, RHD4ENSDZ5APPSL170, RHD4CZ5L07LV5200 | -131.02d | 0d | Skilled labor [3.59 h]; Unskilled Labor [3.59 h]; Equipment Opreator [2.94 h]; Excavator-Poclain [1.42 h]; Dump Truck [1.42 h]; Drawpit with medium duty steel cover, size600x600x900mm, [0.6 Unit] | 1,470.6 | L07 | Z5 | CONS | SL | Excavation | AFT |
| RHD4CZ5L07SL5200 |  | Installation of Drawpit size 600x600x900mm for Street Lighting Network - (RD-L-7)-Z5-L07-SL | 2d | 2027-09-21 | 2027-09-25 | RHD4CZ5L07SL5100, RHD4PRSHLDOSSL1400, RHD4PRSHLSTAGSL1400 | -131.02d | 0d | Skilled labor [3.59 h]; Unskilled Labor [3.59 h]; Equipment Opreator [1.42 h]; Boom Truck [1.42 h]; Drawpit with medium duty steel cover, size600x600x900mm, [3.4 Unit] | 8,333.4 | L07 | Z5 | CONS | SL | Installation | AFT |
|  | 3508 | **RHD4-02-002-L07-(SL)-Street Lighting cables** |  | 2027-09-25 | 2027-11-08 |  |  |  |  |  |  |  |  |  |  |  |
| RHD4CZ5L07SL3100 |  | Excavation for Street Lighting Cables for Street Lighting Network - (RD-L-7)-Z5-L07-SL | 12d | 2027-09-25 | 2027-10-09 | RHD4ENSDZ5APPSL170, RHD4CZ5L07SL5200, RHD4CZ5L07MV3401 | -131.02d | 0d | Skilled labor [120.67 h]; Unskilled Labor [241.44 h]; Equipment Opreator [241.44 h]; Excavator-Poclain [120.67 h]; Boom Truck [120.67 h]; Cable, Copper 4x16mm2/ CU/XLPE/SWA/PVC + 1x16mm2 CU/PVC [37.76 m]; Cable, Copper 4x10mm2/ CU/XLPE/SWA/PVC + 1x10mm2 CU/PVC [516.38 m] | 27,832.59 | L07 | Z5 | CONS | SL | Excavation | AFT |
| RHD4CZ5L07SL3200 |  | Cable Laying of Street Lighting Cables for Street Lighting Network - (RD-L-7)-Z5-L07-SL | 10d | 2027-10-09 | 2027-10-20 | RHD4CZ5L07SL3100, RHD4PRSHLDOSSL1100, RHD4ENMSSL2000, RHD4ENMSSL2010, RHD4PRSHLSTAGSL1100, RHD4CZ5L07MV2400 | -131.02d | 0d | Skilled labor [100.63 h]; Unskilled Labor [402.29 h]; Electrician [201.14 h]; Equipment Opreator [301.77 h]; Boom Truck [100.63 h]; Cable Laying Machine [201.14 h]; Cable, Copper 4x16mm2/ CU/XLPE/SWA/PVC + 1x16mm2 CU/PVC [113.29 m]; Cable, Copper 4x10mm2/ CU/XLPE/SWA/PVC + 1x10mm2 CU/PVC [1549.14 m] | 83,498.45 | L07 | Z5 | CONS | SL | Cable Laying | AFT |
| RHD4CZ5L07SL3300 |  | Warning tape and Backfill for Street Lighting Cables for Street Lighting Network - (RD-L-7)-Z5-L07-SL | 10d | 2027-10-20 | 2027-11-01 | RHD4CZ5L07SL3200 | -131.02d | 0d | Skilled labor [100.63 h]; Unskilled Labor [402.29 h]; Electrician [201.14 h]; Equipment Opreator [100.63 h]; Boom Truck [100.63 h]; Cable, Copper 4x16mm2/ CU/XLPE/SWA/PVC + 1x16mm2 CU/PVC [28.32 m]; Cable, Copper 4x10mm2/ CU/XLPE/SWA/PVC + 1x10mm2 CU/PVC [387.29 m] | 20,874.45 | L07 | Z5 | CONS | SL | Warning tape and Backfill | AFT |
| RHD4CZ5L07SL3400 |  | Testing of Street Lighting Cables for Street Lighting Network - (RD-L-7)-Z5-L07-SL | 6d | 2027-11-01 | 2027-11-08 | RHD4CZ5L07SL3300 | -131.02d | 0d | Skilled labor [60.33 h]; Unskilled Labor [241.44 h]; Electrician [120.67 h]; Equipment Opreator [60.33 h]; Boom Truck [60.33 h]; Cable, Copper 4x16mm2/ CU/XLPE/SWA/PVC + 1x16mm2 CU/PVC [9.44 m]; Cable, Copper 4x10mm2/ CU/XLPE/SWA/PVC + 1x10mm2 CU/PVC [129.1 m] | 6,958.38 | L07 | Z5 | CONS | SL | Testing | AFT |
|  | 3509 | **RHD4-02-002-L07-(SL)-Street Lighting Poles** |  | 2027-11-08 | 2027-12-19 |  |  |  |  |  |  |  |  |  |  |  |
| RHD4CZ5L07SL1100 |  | Excavation for RC Base for Lighting Poles for Street Lighting Network - (RD-L-7)-Z5-L07-SL | 6d | 2027-11-08 | 2027-11-15 | RHD4ENSDZ5APPSL170, RHD4CZ5L07SL3400 | -131.02d | 0d | Skilled labor [61.75 h]; Unskilled Labor [61.75 h]; Equipment Opreator [123.39 h]; Excavator-Poclain [61.75 h]; Dump Truck [61.75 h]; Lighting poles single arms, height of ( 10 ) meters [8.5 Unit] | 28,959.5 | L07 | Z5 | CONS | SL | Excavation | AFT |
| RHD4CZ5L07SL1200 |  | Installation for RC Base for Lighting Poles for Street Lighting Network - (RD-L-7)-Z5-L07-SL | 6d | 2027-11-15 | 2027-11-22 | RHD4CZ5L07SL1100 | -131.02d | 0d | Skilled labor [61.75 h]; Unskilled Labor [61.75 h]; Equipment Opreator [123.39 h]; Excavator-Poclain [61.75 h]; Dump Truck [61.75 h]; Lighting poles single arms, height of ( 10 ) meters [21.25 Unit] | 72,398.75 | L07 | Z5 | CONS | SL | RC Base | AFT |
| RHD4CZ5L07SL1300 |  | Backfill for RC Base for Lighting Poles for Street Lighting Network - (RD-L-7)-Z5-L07-SL | 6d | 2027-11-22 | 2027-11-29 | RHD4CZ5L07SL1200 | -131.02d | 0d | Skilled labor [61.75 h]; Unskilled Labor [61.75 h]; Equipment Opreator [123.39 h]; Excavator-Poclain [61.75 h]; Dump Truck [61.75 h]; Lighting poles single arms, height of ( 10 ) meters [4.25 Unit] | 14,479.75 | L07 | Z5 | CONS | SL | Backfill | AFT |
| RHD4CZ5L07SL1400 |  | Installation for Lighting Poles for Street Lighting Network - (RD-L-7)-Z5-L07-SL | 9d | 2027-11-29 | 2027-12-09 | RHD4CZ5L07SL1300, RHD4CZ5L07SL3400, RHD4PRSHLDOSSL1200, RHD4ENMSSL2000, RHD4ENMSSL2010, RHD4PRSHLSTAGSL1200 | -131.02d | 0d | Skilled labor [92.57 h]; Unskilled Labor [92.57 h]; Electrician [92.57 h]; Equipment Opreator [92.57 h]; Boom Truck [92.57 h]; Lighting poles single arms, height of ( 10 ) meters [68.97 Unit] | 234,991.69 | L07 | Z5 | CONS | SL | Poles Installation | AFT |
| RHD4CZ5L07SL1500 |  | Luminaire Installation for Lighting Poles for Street Lighting Network - (RD-L-7)-Z5-L07-SL | 6d | 2027-12-12 | 2027-12-19 | RHD4CZ5L07SL1400, RHD4CZ5L07SL6100, RHD4PRSHLDOSSL1300, RHD4PRSHLSTAGSL1300 | -131.02d | 0d | Unskilled Labor [123.39 h]; Electrician [61.75 h]; Equipment Opreator [12.31 h]; Boom Truck [24.72 h]; Street Lighting( LED) Luminaire of Output ?10898 lumen [85 Unit] | 49,980 | L07 | Z5 | CONS | SL | Luminaire Installation | AFT |
|  | 3511 | **RHD4-02-002-L07-(SL)-Street Lighting Earthing System** |  | 2027-12-09 | 2027-12-12 |  |  |  |  |  |  |  |  |  |  |  |
| RHD4CZ5L07SL6100 |  | Installation of Earthing for Lighting Poles and Fedder Pillers for Street Lighting Network - (RD-L-7)-Z5-L07-SL | 2d | 2027-12-09 | 2027-12-12 | RHD4CZ5L07SL1400, RHD4ENMSER2000, RHD4ENMSER2010 | -131.02d | 0d | Skilled labor [0.8 h]; Unskilled Labor [0.8 h]; Equipment Opreator [1.42 h]; Excavator-Poclain [0.8 h]; Dump Truck [0.8 h]; Including lighting poles circuits - ER [1 Unit] | 613 | L07 | Z5 | CONS | SL | Installation | AFT |
|  | 5023 | **RHD4-02-002-L07-(SL)-Street Lighting Feeder Pillars** |  | 2027-12-19 | 2027-12-26 |  |  |  |  |  |  |  |  |  |  |  |
| RHD4CZ5L07SL4100 |  | Leveling for Distribution Pillars for Street Lighting Network - (RD-L-7)-Z5-L07-SL | 2d | 2027-12-19 | 2027-12-21 | RHD4CZ5L07SL1500, RHD4CZ1C081CCTV6100 | -131.02d | 0d | Skilled labor [10.89 h]; Unskilled Labor [21.78 h]; Equipment Opreator [4.36 h]; Excavator-Poclain [2.18 h]; Boom Truck [2.18 h]; 0.6/1 KV Steet Lighting Feeder Pillar [0.15 Unit] | 3,438.15 | L07 | Z5 | CONS | SL | Leveling | AFT |
| RHD4CZ5L07SL4200 |  | Lean Concrete for Distribution Pillars for Street Lighting Network - (RD-L-7)-Z5-L07-SL | 2d | 2027-12-21 | 2027-12-23 | RHD4CZ5L07SL4100 | -131.02d | 0d | Skilled labor [10.89 h]; Unskilled Labor [21.78 h]; Equipment Opreator [4.36 h]; Concrete Mixer Truck [2.18 h]; Concrete Pump [2.18 h]; 0.6/1 KV Steet Lighting Feeder Pillar [0.25 Unit] | 5,730.25 | L07 | Z5 | CONS | SL | Lean Concrete | AFT |
| RHD4CZ5L07SL4300 |  | Installation of Distribution Pillars for Street Lighting Network - (RD-L-7)-Z5-L07-SL | 2d | 2027-12-23 | 2027-12-26 | RHD4CZ5L07SL4200 | -131.02d | 0d | Skilled labor [10.89 h]; Unskilled Labor [43.56 h]; Electrician [21.78 h]; Equipment Opreator [10.89 h]; Boom Truck [10.89 h]; 0.6/1 KV Steet Lighting Feeder Pillar [0.6 Unit] | 13,752.6 | L07 | Z5 | CONS | SL | Installation | AFT |
|  | 3517 | **RHD4-02-002-Z5-L07-Telecommunications Network - TC** |  | 2027-12-26 | 2028-03-15 |  |  |  |  |  |  |  |  |  |  |  |
|  | 3518 | **RHD4-02-002-L07-(TC)-Telecommunications Ducts** |  | 2027-12-26 | 2028-03-15 |  |  |  |  |  |  |  |  |  |  |  |
| RHD4CZ5L07TC2100 |  | Excavation of HDPE Ducts for Telecom Network - (RD-L-7)-Z5-L07-TC | 9d | 2027-12-26 | 2028-01-05 | RHD4ENSDZ5APPTC190, RHD4CZ5L07SL4300, RHD4CZ9L06ICT5200 | -131.02d | 0d | Skilled labor [93.22 h]; Unskilled Labor [93.22 h]; Equipment Opreator [186.33 h]; Excavator-Poclain [93.22 h]; Dump Truck [93.22 h]; (6*50mm) HDPE ducts -TC [164.88 m]; (6*50mm+2*32mm) HDPE ducts -TC [86.88 m]; (2*32mm) HDPE ducts -TC [4.92 m] | 24,146.64 | L07 | Z5 | CONS | TC | Excavation | AFT |
| RHD4CZ5L07TC2200 |  | Installation of HDPE Ducts for Telecom Network - (RD-L-7)-Z5-L07-TC | 13d | 2028-01-05 | 2028-01-20 | RHD4CZ5L07TC2100, RHD4PRSHLDOSTC1000, RHD4PRSHLSTAGTC1000 | -131.02d | 34.98d | Carpenter [13.94 h]; Skilled labor [139.72 h]; Unskilled Labor [139.72 h]; Steel Fixer [13.94 h]; (6*50mm) HDPE ducts -TC [535.86 m]; (6*50mm+2*32mm) HDPE ducts -TC [282.36 m]; (2*32mm) HDPE ducts -TC [15.99 m] | 78,476.58 | L07 | Z5 | CONS | TC | Installing | AFT |
| RHD4CZ5L07TC2400 |  | Backfilling of HDPE Ducts for Telecom Network - (RD-L-7)-Z5-L07-TC | 9d | 2028-03-06 | 2028-03-15 | RHD4CZ5L07TC2200, RHD4CZ5L07TC5200, RHD4CZ5L07SL1500, RHD4CZ4CH5ST1320, RHD4CZ7A012ICT5200 | -166d | 0d | Skilled labor [93.22 h]; Unskilled Labor [93.22 h]; Equipment Opreator [37.24 h]; Excavator-Poclain [37.24 h]; (6*50mm) HDPE ducts -TC [123.66 m]; (6*50mm+2*32mm) HDPE ducts -TC [65.16 m]; (2*32mm) HDPE ducts -TC [3.69 m] | 18,109.98 | L07 | Z5 | CONS | TC | Backfilling | AFT |

| ID | WBS | Activity | Duration | Start | Finish | Predecessors | Total float | Free float | Resources | Cost | RDH4-01-001-Road and Block Names-1 | RDH4-01-001-Zones-1 | RDH4-01-001-Phases-1 | RDH4-01-001-Networks-1 | RDH4-01-001-Work Method-1 | RDH4-01-001-MENEM |
| --- | --- | --- | --- | --- | --- | --- | --- | --- | --- | --- | --- | --- | --- | --- | --- | --- |
|  | 3519 | **RHD4-02-002-L07-(TC)-Telecommunications Manholes** |  | 2028-02-03 | 2028-03-05 |  |  |  |  |  |  |  |  |  |  |  |
| RHD4CZ5L07TC5100 |  | Excavation for Manholes for Telecom Network - (RD-L-7)-Z5-L07-TC | 6d | 2028-02-03 | 2028-02-10 | RHD4CZ5L07TC2100, RHD4ENSDZ5APPTC190, RHD4CZ4A013RD7100 | -156.02d | 9.98d | Skilled labor [15.03 h]; Unskilled Labor [15.03 h]; Equipment Opreator [12 h]; Excavator-Poclain [5.99 h]; Dump Truck [5.99 h]; Manhole Type 1 - TC [1.05 nr]; Manhole Type 2 - TC [0.3 nr] | 9,100.35 | L07 | Z5 | CONS | TC | Excavation | AFT |
| RHD4CZ5L07TC5200 |  | Installation of Manholes for Telecom Network - (RD-L-7)-Z5-L07-TC | 7d | 2028-02-23 | 2028-03-05 | RHD4CZ5L07TC5100, RHD4CZ5L07TC2200 SS, RHD4PRSHLDOSTC1200, RHD4PRSHLSTAGTC1200, RHD4CZ1C081RD8100 | -166d | 0d | Skilled labor [15.03 h]; Unskilled Labor [15.03 h]; Equipment Opreator [5.99 h]; Boom Truck [5.99 h]; Manhole Type 1 - TC [5.95 nr]; Manhole Type 2 - TC [1.7 nr] | 51,568.65 | L07 | Z5 | CONS | TC | Installation | AFT |
|  | 3520 | **RHD4-02-002-L07-(TC)-Telecomminications Road Crossings** |  |  |  |  |  |  |  |  |  |  |  |  |  |  |
|  | 3521 | **RHD4-02-002-Z5-L07-Information and Communication Technologies - ICT** |  | 2027-01-02 | 2028-05-03 |  |  |  |  |  |  |  |  |  |  |  |
|  | 3522 | **RHD4-02-002-L07-(ICT)-Information and Communication Technologies Ducts** |  | 2028-03-16 | 2028-05-03 |  |  |  |  |  |  |  |  |  |  |  |
| RHD4CZ5L07ICT2100 |  | Excavation of HDPE Ducts for ICT Network - (RD-L-7)-Z5-L07-ICT | 12d | 2028-03-16 | 2028-03-29 | RHD4CZ5L07ICT3400, RHD4ENSDZ5APPICT200, RHD4CZ5L07TC2400, RHD4CZ5L07TC5200, RHD4GNSLZ8FT1600, RHD4GNSLZ1FT1600 | -147d | 0d | Skilled labor [124.69 h]; Unskilled Labor [124.69 h]; Equipment Opreator [249.39 h]; Excavator-Poclain [124.69 h]; Dump Truck [124.69 h]; (2*50mm) HDPE ducts -ICT [248.8 m]; (2*50mm+2*32mm) HDPE ducts -ICT [85.66 m]; (2*32mm) HDPE ducts -ICT [9.08 m] | 15,930.64 | L07 | Z5 | CONS | ICT | Excavation | AFT |
| RHD4CZ5L07ICT2200 |  | Installation of HDPE Ducts for ICT Network - (RD-L-7)-Z5-L07-ICT | 18d | 2028-03-30 | 2028-04-19 | RHD4CZ5L07ICT2100, RHD4PRSHLDOSICT1000, RHD4PRSHLSTAGICT1000, RHD4CZ8C014RD3200 | -147d | 0d | Carpenter [18.73 h]; Skilled labor [187.1 h]; Unskilled Labor [187.1 h]; Steel Fixer [18.73 h]; (2*50mm) HDPE ducts -ICT [808.6 m]; (2*50mm+2*32mm) HDPE ducts -ICT [278.39 m]; (2*32mm) HDPE ducts -ICT [29.51 m] | 51,774.58 | L07 | Z5 | CONS | ICT | Installing | AFT |
| RHD4CZ5L07ICT2400 |  | Backfilling of HDPE Ducts for ICT Network - (RD-L-7)-Z5-L07-ICT | 12d | 2028-04-20 | 2028-05-03 | RHD4CZ5L07ICT2200, RHD4CZ5L07ICT5200, RHD4GNLVZ8FT1500, RHD4GNCCTVZ6FT2000, RHD4CZ5A014CCTV1500 | -147d | 0d | Skilled labor [124.69 h]; Unskilled Labor [124.69 h]; Equipment Opreator [49.88 h]; Excavator-Poclain [49.88 h]; (2*50mm) HDPE ducts -ICT [186.6 m]; (2*50mm+2*32mm) HDPE ducts -ICT [64.25 m]; (2*32mm) HDPE ducts -ICT [6.81 m] | 11,947.98 | L07 | Z5 | CONS | ICT | Backfilling | AFT |
|  | 3523 | **RHD4-02-002-L07-(ICT)-Information and Communication Technologies Manholes** |  | 2028-03-30 | 2028-04-12 |  |  |  |  |  |  |  |  |  |  |  |
| RHD4CZ5L07ICT5100 |  | Excavation for Manholes for ICT Network - (RD-L-7)-Z5-L07-ICT | 6d | 2028-03-30 | 2028-04-05 | RHD4CZ5L07ICT2100, RHD4ENSDZ5APPICT200 | -141d | 0d | Skilled labor [19.06 h]; Unskilled Labor [19.06 h]; Equipment Opreator [15.25 h]; Excavator-Poclain [7.62 h]; Dump Truck [7.62 h]; Manhole Type 1 - ICT [1.5 nr]; Manhole Type 2 - ICT [0.3 nr] | 9,707.4 | L07 | Z5 | CONS | ICT | Excavation | AFT |
| RHD4CZ5L07ICT5200 |  | Installation of Manholes for ICT Network - (RD-L-7)-Z5-L07-ICT | 6d | 2028-04-06 | 2028-04-12 | RHD4CZ5L07ICT5100, RHD4CZ5L07ICT2200 SS, RHD4PRSHLDOSICT1200, RHD4PRSHLSTAGICT1200 | -141d | 6d | Skilled labor [19.06 h]; Unskilled Labor [19.06 h]; Equipment Opreator [7.62 h]; Boom Truck [7.62 h]; Manhole Type 1 - ICT [8.5 nr]; Manhole Type 2 - ICT [1.7 nr] | 55,008.6 | L07 | Z5 | CONS | ICT | Installation | AFT |
|  | 3524 | **RHD4-02-002-L07-(ICT)-Information and Communication Technologies Road Crossings** |  | 2027-01-02 | 2027-02-27 |  |  |  |  |  |  |  |  |  |  |  |
| RHD4CZ5L07ICT3100 |  | Excavation for Road Crossings for ICT Network - (RD-L-7)-Z5-L07-ICT | 3d | 2027-01-02 | 2027-01-04 | RHD4ENSDZ5APPICT200, RHD4CZ5L07ST3101 | -147d | 34d | Skilled labor [28 h]; Unskilled Labor [28 h]; Equipment Opreator [56 h]; Excavator-Poclain [28 h]; Dump Truck [28 h]; Road crossing ducts, (2*50mm) HDPE -ICT [5.14 m] | 195.32 | L07 | Z5 | CONS | ICT | Excavation | bef |
| RHD4CZ5L07ICT3200 |  | Installation of Road Crossings for ICT Network - (RD-L-7)-Z5-L07-ICT | 4d | 2027-02-14 | 2027-02-17 | RHD4CZ5L07ICT3100, RHD4PRSHLDOSICT1100, RHD4PRSHLSTAGICT1100 | -181d | 0d | Carpenter [3.7 h]; Skilled labor [37.35 h]; Unskilled Labor [37.35 h]; Steel Fixer [3.7 h]; Road crossing ducts, (2*50mm) HDPE -ICT [5.14 m] | 195.32 | L07 | Z5 | CONS | ICT | Installing | bef |
| RHD4CZ5L07ICT3300 |  | Pouring of Road Crossings for ICT Network - (RD-L-7)-Z5-L07-ICT | 4d | 2027-02-18 | 2027-02-23 | RHD4CZ5L07ICT3200 | -181d | 0d | Skilled labor [37.35 h]; Unskilled Labor [37.35 h]; Equipment Opreator [14.92 h]; Concrete Mixer Truck [7.51 h]; Concrete Pump [7.51 h]; Road crossing ducts, (2*50mm) HDPE -ICT [33.41 m] | 1,269.58 | L07 | Z5 | CONS | ICT | Pouring | bef |
| RHD4CZ5L07ICT3400 |  | Backfilling of Road Crossings for ICT Network - (RD-L-7)-Z5-L07-ICT | 3d | 2027-02-24 | 2027-02-27 | RHD4CZ5L07ICT3300 | -181d | 0d | Skilled labor [28 h]; Unskilled Labor [28 h]; Equipment Opreator [11.2 h]; Excavator-Poclain [11.2 h]; Road crossing ducts, (2*50mm) HDPE -ICT [7.71 m] | 292.98 | L07 | Z5 | CONS | ICT | Backfilling | bef |
|  | 3512 | **RHD4-02-002-Z5-L07-Landscape Network - LS** |  |  |  |  |  |  |  |  |  |  |  |  |  |  |
|  | 3513 | **RHD4-02-002-L07-(LS)-Landscape Lighting cables** |  |  |  |  |  |  |  |  |  |  |  |  |  |  |
|  | 3514 | **RHD4-02-002-L07-(LS)-Landscape Feeder Pillars** |  |  |  |  |  |  |  |  |  |  |  |  |  |  |
|  | 3515 | **RHD4-02-002-L07-(LS)-Landscape Bollard Poles** |  |  |  |  |  |  |  |  |  |  |  |  |  |  |
|  | 3516 | **RHD4-02-002-L07-(LS)-Landscape Feeder Pillars Earthing** |  |  |  |  |  |  |  |  |  |  |  |  |  |  |
|  | 3525 | **RHD4-02-002-Z5-L07-Security Network - CCTV** |  | 2028-05-08 | 2028-06-08 |  |  |  |  |  |  |  |  |  |  |  |
|  | 3526 | **RHD4-02-002-L07-(CCTV)-Civil Works** |  | 2028-05-08 | 2028-05-18 |  |  |  |  |  |  |  |  |  |  |  |
| RHD4CZ5L07CCTV2100 |  | Civil Works for Security Network - (RD-L-7)-Z5-L07-CCTV | 10d | 2028-05-08 | 2028-05-18 | RHD4CZ5L07TC2400, RHD4CZ5L07ICT2400 | -147d | 0d | Skilled labor [435.68 h]; Unskilled Labor [871.2 h]; Equipment Opreator [435.68 h]; Excavator-Poclain [108.9 h]; Dump Truck [108.9 h]; Civil works Digging, trenching, laying pipes Meter with supply and installation of Manholes and for power feeding sources related to all towers and poles – (from 35-meter pole to control room and from related UPS camersa distribution boards till overall 2 [300 m] | 34,800 | L07 | Z5 | CONS | CCTV | Civil Works | AFT |

| ID | WBS | Activity | Duration | Start | Finish | Predecessors | Total float | Free float | Resources | Cost | RDH4-01-001-Road and Block Names-1 | RDH4-01-001-Zones-1 | RDH4-01-001-Phases-1 | RDH4-01-001-Networks-1 | RDH4-01-001-Work Method-1 | RDH4-01-001-MENEM |
| --- | --- | --- | --- | --- | --- | --- | --- | --- | --- | --- | --- | --- | --- | --- | --- | --- |
|  | 3527 | **RHD4-02-002-L07-(CCTV)-CCTV Poles** |  | 2028-05-20 | 2028-05-30 |  |  |  |  |  |  |  |  |  |  |  |
| RHD4CZ5L07CCTV1100 |  | Excavation for RC Base for CCTV Poles for Security Network - (RD-L-7)-Z5-L07-CCTV | 2d | 2028-05-20 | 2028-05-21 | RHD4CZ5L07CCTV2100, RHD4ENSDZ5APPCCTV210 | -147d | 0d | Skilled labor [4.32 h]; Unskilled Labor [4.32 h]; Equipment Opreator [8.64 h]; Excavator-Poclain [2.18 h]; Dump Truck [2.18 h]; 25 Meters pole for CCTV Cameras [0.1 nr] | 14,090.2 | L07 | Z5 | CONS | CCTV | Excavation | AFT |
| RHD4CZ5L07CCTV1200 |  | Installation for RC Base for CCTV Poles for Security Network - (RD-L-7)-Z5-L07-CCTV | 2d | 2028-05-22 | 2028-05-23 | RHD4CZ5L07CCTV1100 | -147d | 0d | Skilled labor [4.32 h]; Unskilled Labor [4.32 h]; Equipment Opreator [8.64 h]; Excavator-Poclain [2.18 h]; Dump Truck [2.18 h]; 25 Meters pole for CCTV Cameras [0.25 nr] | 35,225.5 | L07 | Z5 | CONS | CCTV | RC Base | AFT |
| RHD4CZ5L07CCTV1300 |  | Backfill for RC Base for CCTV Poles for Security Network - (RD-L-7)-Z5-L07-CCTV | 2d | 2028-05-24 | 2028-05-25 | RHD4CZ5L07CCTV1200 | -147d | 0d | Skilled labor [2.88 h]; Unskilled Labor [2.88 h]; Equipment Opreator [5.44 h]; Excavator-Poclain [1.42 h]; Dump Truck [1.42 h]; 25 Meters pole for CCTV Cameras [0.05 nr] | 7,045.1 | L07 | Z5 | CONS | CCTV | Backfill | AFT |
| RHD4CZ5L07CCTV1400 |  | Installation for CCTV Poles for Security Network - (RD-L-7)-Z5-L07-CCTV | 2d | 2028-05-27 | 2028-05-28 | RHD4CZ5L07CCTV1300, RHD4PRSHLDOSCCTV1000, RHD4PRSHLSTACCTV1000 | -147d | 0d | Skilled labor [7.2 h]; Unskilled Labor [14.56 h]; Electrician [7.2 h]; Equipment Opreator [7.2 h]; Boom Truck [3.59 h]; 25 Meters pole for CCTV Cameras [0.6 nr] | 84,541.2 | L07 | Z5 | CONS | CCTV | Installation | AFT |
| RHD4CZ5L07CCTV1500 |  | Protection post Installation for CCTV Poles for Security Network - (RD-L-7)-Z5-L07-CCTV | 2d | 2028-05-29 | 2028-05-30 | RHD4CZ5L07CCTV1400 | -139d | 8d | Skilled labor [21.76 h]; Unskilled Labor [43.52 h]; Supply and Installation of minimum 4 Protection Post for each pole or tower with pipe ?220*6mm THK. [1 nr] | 4,903 | L07 | Z5 | CONS | CCTV | Protection post | AFT |
|  | 3528 | **RHD4-02-002-L07-(CCTV)-Camera** |  | 2028-05-31 | 2028-06-01 |  |  |  |  |  |  |  |  |  |  |  |
| RHD4CZ5L07CCTV3100 |  | Installation for Cameras for Security Network - (RD-L-7)-Z5-L07-CCTV | 2d | 2028-05-31 | 2028-06-01 | RHD4CZ5L07CCTV1400, RHD4CZ5L07CCTV4100, RHD4PRSHLDOSCCTV1100, RHD4PRSHLSTACCTV1100, RHD4CZ6A02CCTV6100 | -147d | 0d | Unskilled Labor [54.4 h]; Electrician [27.2 h]; Outdoor Camera, 5MP resolution, day/night, fixed bullet camera providing Forensic WDR. [4 nr]; Outdoor PTZ with IR, HDTV 1080 and 31x optical, 12x digital, total 372x zoom, H264/265 with Motion JPEG. [1 nr] | 61,727 | L07 | Z5 | CONS | CCTV | Installation | AFT |
|  | 3529 | **RHD4-02-002-L07-(CCTV)-Power and Infrastructure** |  | 2028-05-29 | 2028-06-01 |  |  |  |  |  |  |  |  |  |  |  |
| RHD4CZ5L07CCTV4100 |  | Installation of Power outlet, UPS and midspan for PTZ Camerafor Cameras for Security Network - (RD-L-7)-Z5-L07-CCTV | 2d | 2028-05-29 | 2028-05-30 | RHD4CZ5L07CCTV1400, RHD4PRSHLDOSCCTV1300, RHD4PRSHLSTACCTV1300, RHD4HOASZ6APPSL170, RHD4CZ9L02CCTV6100 | -147d | 0d | Skilled labor [13.12 h]; Unskilled Labor [52.32 h]; Electrician [26.08 h]; Equipment Opreator [26.08 h]; Excavator-Poclain [6.53 h]; Dump Truck [6.53 h]; Outdoor ready IP66-rated midspan for PTZ Camera (The outdoor- ready midspan should be IP66/IP67- and NEMA 4X-rated [1 nr]; 1.2KVA Industrial type UPS located at FEC remote poles [2 nr] | 15,232 | L07 | Z5 | CONS | CCTV | Power | AFT |
| RHD4CZ5L07CCTV4200 |  | Short Range Wireless PoP wireless Bridgefor CCTV Poles for Security Network - (RD-L-7)-Z5-L07-CCTV | 2d | 2028-05-31 | 2028-06-01 | RHD4CZ5L07CCTV4100 | -147d | 0d | Skilled labor [21.76 h]; Unskilled Labor [43.52 h]; Electrician [21.76 h]; Equipment Opreator [43.52 h]; Excavator-Poclain [10.89 h]; Dump Truck [10.89 h]; Short Range wireless point to point wireless bridge [4 nr] | 58,548 | L07 | Z5 | CONS | CCTV | Wireless Pop | AFT |
|  | 3531 | **RHD4-02-002-L07-(CCTV)-CCTV Panels and Components** |  | 2028-06-03 | 2028-06-08 |  |  |  |  |  |  |  |  |  |  |  |
| RHD4CZ5L07CCTV6100 |  | Installation for CCTV Panels for Security Network - (RD-L-7)-Z5-L07-CCTV | 6d | 2028-06-03 | 2028-06-08 | RHD4CZ5L07CCTV4200, RHD4CZ5L07CCTV3100, RHD4PRSHLDOSCCTV1200, RHD4PRSHLSTACCTV1200, RHD4PRLOLSTACCTV1001 | -147d | 0d | Skilled labor [326.72 h]; Unskilled Labor [980.16 h]; Electrician [326.72 h]; Pole mounted Filed Equipment cabinet (FEC) , with fan and ventilation, NEMEX 4X ,door, minimum size (600x600x400mm) , the cabinet/enclosurE [2 nr]; 8 Port Industrial PoE Switch 10/1000BaseT (-40 deg to +70 deg. Celsius) for remote poles and as specifiedin item 15. [1 nr]; UTP CAT6 Patch Cord , connect the industrial switch with the cameras, and radio wireless antenna [12 nr] | 32,584 | L07 | Z5 | CONS | CCTV | Equipment | AFT |
|  | 2217 | **RHD4-02-002-Z4** |  | 2026-06-30 | 2028-03-09 |  |  |  |  |  |  |  |  |  |  |  |
|  | 8270 | **RHD4-02-002-Z4-L01** |  | 2027-01-10 | 2027-10-17 |  |  |  |  |  |  |  |  |  |  |  |
|  | 8301 | **RHD4-02-002-Z4-L01-Crossings Sewage Network - SWCr** |  |  |  |  |  |  |  |  |  |  |  |  |  |  |
|  | 8311 | **RHD4-02-002-L01-(SWCr)-MH Works - 1200 mm diameter** |  |  |  |  |  |  |  |  |  |  |  |  |  |  |
|  | 8312 | **RHD4-02-002-L01-(SWCr)-MH Works - 1200 mm diameter with Back drop** |  |  |  |  |  |  |  |  |  |  |  |  |  |  |
|  | 8307 | **RHD4-02-002-L01-(SWCr)-UPVC Pipes - 200 mm diameter** |  |  |  |  |  |  |  |  |  |  |  |  |  |  |
|  | 8345 | **RHD4-02-002-Z4-L01-Crossings Potable Network - PTCr** |  |  |  |  |  |  |  |  |  |  |  |  |  |  |
|  | 8347 | **RHD4-02-002-L01-(PTCr)-HDPE Pipes - 160 mm diameter** |  |  |  |  |  |  |  |  |  |  |  |  |  |  |
|  | 8346 | **RHD4-02-002-L01-(PTCr)-HDPE Pipes - 110 mm diameter** |  |  |  |  |  |  |  |  |  |  |  |  |  |  |
|  | 8351 | **RHD4-02-002-L01-(PTCr)-Gate Valves (Direct Buried)** |  |  |  |  |  |  |  |  |  |  |  |  |  |  |
|  | 8392 | **RHD4-02-002-Z4-L01-Crossings Irrigation Network - IRRC** |  |  |  |  |  |  |  |  |  |  |  |  |  |  |
|  | 8393 | **RHD4-02-002-L01-(IRRC)-HDPE Pipes - 160 mm diameter** |  |  |  |  |  |  |  |  |  |  |  |  |  |  |
|  | 8401 | **RHD4-02-002-L01-(IRRC)-Gate Valves (Direct Buried)** |  |  |  |  |  |  |  |  |  |  |  |  |  |  |
|  | 8404 | **RHD4-02-002-L01-(IRRC)-Wash out Chamber** |  |  |  |  |  |  |  |  |  |  |  |  |  |  |
|  | 8405 | **RHD4-02-002-L01-(IRRC)-Wash out Valves** |  |  |  |  |  |  |  |  |  |  |  |  |  |  |
|  | 8449 | **RHD4-02-002-Z4-L01-Road Works - RD** |  | 2027-01-21 | 2027-10-02 |  |  |  |  |  |  |  |  |  |  |  |
|  | 8450 | **RHD4-02-002-L01-(RD)-Subgrade** |  | 2027-01-21 | 2027-01-23 |  |  |  |  |  |  |  |  |  |  |  |
| RHD4CZ4L01RD1100 |  | Supply, lay and compaction subgrade compacted thickness 300 mm for Roads - (RD-L-1)-Z4-L01-RD | 2d | 2027-01-21 | 2027-01-23 | RHD4ENSDZ8APPEW100, RHD4ENSDZ8APPRD220, RHD4CZ4L01MV2400, RHD4CZ4L01LV2400 | -136d | 0d | Skilled labor [13.07 h]; Unskilled Labor [26.14 h]; Electrician [13.07 h]; Equipment Opreator [89.3 h]; Water Truck [4.36 h]; Roller compactor [6.53 h]; Grader [13.07 h]; Dump Truck [65.34 h]; Subgrade [628.54 m3] | 11,942.26 | L01 | Z4 | CONS | RD | Subgrade | bef |

| ID | WBS | Activity | Duration | Start | Finish | Predecessors | Total float | Free float | Resources | Cost | RDH4-01-001-Road and Block Names-1 | RDH4-01-001-Zones-1 | RDH4-01-001-Phases-1 | RDH4-01-001-Networks-1 | RDH4-01-001-Work Method-1 | RDH4-01-001-MENEM |
| --- | --- | --- | --- | --- | --- | --- | --- | --- | --- | --- | --- | --- | --- | --- | --- | --- |
|  | 8451 | **RHD4-02-002-L01-(RD)-Aggregate Base Course** |  | 2027-01-24 | 2027-01-25 |  |  |  |  |  |  |  |  |  |  |  |
| RHD4CZ4L01RD2100 |  | Supply, lay and compaction Aggregate base course compacted thickness 300 mmfor Roads - (RD-L-1)-Z4-L01-RD | 2d | 2027-01-24 | 2027-01-25 | RHD4CZ4L01RD1100, RHD4PRSHLDOSRD1000, RHD4PRSHLSTAGRD1000 | -136d | 53.02d | Skilled labor [4.8 h]; Unskilled Labor [9.69 h]; Equipment Opreator [61.31 h]; Water Truck [3.16 h]; Roller compactor [9.69 h]; Grader [9.69 h]; Dump Truck [38.77 h]; Aggregate Base Courses [394.78 m3] | 22,502.46 | L01 | Z4 | CONS | RD | ABC | bef |
|  | 8452 | **RHD4-02-002-L01-(RD)-Bituminous base course Two Layers, including (MC1)&(RC2)** |  | 2027-04-03 | 2027-09-18 |  |  |  |  |  |  |  |  |  |  |  |
| RHD4CZ4L01RD3100 |  | Supply, lay and Asphaltic base course including Prime Coat (MC1) for 1st Layer - (RD-L-1)-Z4-L01-RD | 2d | 2027-04-03 | 2027-04-05 | RHD4CZ4L01RD2100, RHD4PRSHLDOSRD1100, RHD4ENMSASPH2000, RHD4ENMSASPH2010, RHD4PRSHLSTAGRD1100, RHD4CZ4C012RD3100, RHD4CZ4RA02RD2100 | -189.02d | 0d | Skilled labor [1.74 h]; Unskilled Labor [10.78 h]; Equipment Opreator [26.9 h]; Bobcat [1.74 h]; Roller compactor [1.74 h]; Asphalt Paver [1.74 h]; Rubber Compactor [3.59 h]; MC1/RC2 Sprinkler [1.74 h]; Dump Truck [16.12 h]; Bituminous base course (Grading I - Class A), including Prime coat (MC1) & tack coate (RC2) [65.62 m3] | 31,366.36 | L01 | Z4 | CONS | RD | 150 mm | AFT |
| RHD4CZ4L01RD3200 |  | Supply, lay and Asphaltic base course including Tack Coat (RC2) for 2nd Layer - (RD-L-1)-Z4-L01-RD | 2d | 2027-09-15 | 2027-09-18 | RHD4CZ4L01RD3100, RHD4PRSHLDOSRD1100, RHD4PRSHLSTAGRD1100, RHD4CZ4L01CCTV2100 | -163.02d | 0d | Skilled labor [1.74 h]; Unskilled Labor [10.78 h]; Equipment Opreator [26.9 h]; Bobcat [1.74 h]; Roller compactor [1.74 h]; Asphalt Paver [1.74 h]; Rubber Compactor [3.59 h]; MC1/RC2 Sprinkler [1.74 h]; Dump Truck [16.12 h]; Bituminous base course (Grading I - Class A), including Prime coat (MC1) & tack coate (RC2) [65.62 m3] | 31,366.36 | L01 | Z4 | CONS | RD | 150 mm | AFT |
|  | 8454 | **RHD4-02-002-L01-(RD)-Precast Concrete Curb** |  | 2027-09-18 | 2027-09-25 |  |  |  |  |  |  |  |  |  |  |  |
| RHD4CZ4L01RD5100 |  | Supply and installation Precast Concrete Kerb for Roads - (RD-L-1)-Z4-L01-RD | 5d | 2027-09-18 | 2027-09-25 | RHD4CZ4L01RD3200, RHD4PRSHLDOSRD1200, RHD4ENMSRD2000, RHD4ENMSRD2010, RHD4PRSHLSTAGRD1200 | -163.02d | 0d | Mason [141.6 h]; Skilled labor [47.16 h]; Unskilled Labor [141.6 h]; Equipment Opreator [94.4 h]; Bobcat [47.16 h]; Concrete Mixer Truck [47.16 h]; Precast Concrete Curbstone, type K1 [1950 m] | 107,250 | L01 | Z4 | CONS | RD | Curbs | AFT |
|  | 8457 | **RHD4-02-002-L01-(RD)-Traffic Signage** |  | 2027-09-25 | 2027-10-02 |  |  |  |  |  |  |  |  |  |  |  |
| RHD4CZ4L01RD8100 |  | Installation of Traffic Signage for Road Network - (RD-L-1)-Z4-L01-RD | 6d | 2027-09-25 | 2027-10-02 | RHD4CZ4L01RD5100, RHD4CZ4L01TC2400, RHD4CZ4L01ICT2400, RHD4PRSHLDOSRD1600, RHD4PRSHLSTAGRD1600, RHD4CZ4L01SL5200 | -158.02d | 0d | Skilled labor [130.68 h]; Unskilled Labor [65.34 h]; Electrician [1.09 h]; Equipment Opreator [13.5 h]; Boom Truck [13.07 h]; Concrete Mixer Truck [0.44 h]; Traffic signs, ground mounted, 1 Sheet Aluminium, (breakaway)Single post [1 nr] | 1,226 | L01 | Z4 | CONS | RD | Traffic Signage | AFT |
|  | 8455 | **RHD4-02-002-L01-(RD)-Precast Interlocking Block Pavers** |  |  |  |  |  |  |  |  |  |  |  |  |  |  |
|  | 8453 | **RHD4-02-002-L01-(RD)-Bituminous concrete wearing course including tack coat (RC2)** |  | 2027-09-25 | 2027-09-27 |  |  |  |  |  |  |  |  |  |  |  |
| RHD4CZ4L01RD4100 |  | Supply, lay and compaction Asphaltic wearing course including tack Coat (RC2)for Road Network - (RD-L-1)-Z4-L01-RD | 2d | 2027-09-25 | 2027-09-27 | RHD4CZ4L01RD5100 | -163.02d | 0d | Skilled labor [1.96 h]; Unskilled Labor [11.87 h]; Equipment Opreator [29.73 h]; Bobcat [1.96 h]; Roller compactor [1.96 h]; Asphalt Paver [1.96 h]; Rubber Compactor [3.92 h]; MC1/RC2 Sprinkler [1.96 h]; Dump Truck [17.86 h]; Bituminous concrete wearing course, (Grading I - Class A), including tack coat (RC2) [94.44 m3] | 51,280.92 | L01 | Z4 | CONS | RD | 50 mm | AFT |
|  | 8456 | **RHD4-02-002-L01-(RD)-Pavement Marking** |  | 2027-09-27 | 2027-10-02 |  |  |  |  |  |  |  |  |  |  |  |
| RHD4CZ4L01RD7100 |  | Pavement Markings for Road Network - (RD-L-1)-Z4-L01-RD | 4d | 2027-09-27 | 2027-10-02 | RHD4CZ4L01RD4100, RHD4PRSHLDOSRD1500, RHD4PRSHLSTAGRD1500 | -163.02d | 34.98d | Skilled labor [42.47 h]; Unskilled Labor [84.94 h]; Equipment Opreator [42.47 h]; Road Marking Machine [42.47 h]; Retroreflective Thermoplastic White Traffic Markings [56.71 m2]; Retroreflective Thermoplastic Yellow, Traffic Markings [20 m2]; Rumble strip [122 m]; Retroreflective raised pavement markers (cat eyes) [783 nr] | 44,006.01 | L01 | Z4 | CONS | RD | Pavement Marking | AFT |
|  | 8274 | **RHD4-02-002-Z4-L01-Storm Network - ST** |  |  |  |  |  |  |  |  |  |  |  |  |  |  |
|  | 8291 | **RHD4-02-002-L01-(ST)-MH Works - 1200 mm diameter** |  |  |  |  |  |  |  |  |  |  |  |  |  |  |
|  | 8293 | **RHD4-02-002-L01-(ST)-MH Works - 2000 mm diameter** |  |  |  |  |  |  |  |  |  |  |  |  |  |  |
|  | 8282 | **RHD4-02-002-L01-(ST)-GRP Pipes - 1100 mm diameter** |  |  |  |  |  |  |  |  |  |  |  |  |  |  |
|  | 8276 | **RHD4-02-002-L01-(ST)-GRP Pipes - 500 mm diameter** |  |  |  |  |  |  |  |  |  |  |  |  |  |  |
|  | 8275 | **RHD4-02-002-L01-(ST)-GRP Pipes - 400 mm diameter** |  |  |  |  |  |  |  |  |  |  |  |  |  |  |
|  | 8289 | **RHD4-02-002-L01-(ST)-UPVC Pipes - 300 mm diameter** |  |  |  |  |  |  |  |  |  |  |  |  |  |  |
|  | 8297 | **RHD4-02-002-L01-(ST)-Concrete Encasement** |  |  |  |  |  |  |  |  |  |  |  |  |  |  |
|  | 8298 | **RHD4-02-002-Z4-L01-Catch Basin - ST** |  |  |  |  |  |  |  |  |  |  |  |  |  |  |
|  | 8299 | **RHD4-02-002-L01-(ST)-Single Catch Basin Works** |  |  |  |  |  |  |  |  |  |  |  |  |  |  |
|  | 8323 | **RHD4-02-002-Z4-L01-Sewage Network - SW** |  |  |  |  |  |  |  |  |  |  |  |  |  |  |
|  | 8333 | **RHD4-02-002-L01-(SW)-MH Works - 1200 mm diameter** |  |  |  |  |  |  |  |  |  |  |  |  |  |  |
|  | 8329 | **RHD4-02-002-L01-(SW)-UPVC Pipes - 200 mm diameter** |  |  |  |  |  |  |  |  |  |  |  |  |  |  |
|  | 8360 | **RHD4-02-002-Z4-L01-Potable Network - PT** |  | 2027-06-14 | 2027-07-10 |  |  |  |  |  |  |  |  |  |  |  |
|  | 8362 | **RHD4-02-002-L01-(PT)-HDPE Pipes - 160 mm diameter** |  | 2027-06-14 | 2027-06-28 |  |  |  |  |  |  |  |  |  |  |  |
| RHD4CZ4L01PT1101 |  | Excavation works for HDPE Pipline 160 mm - (RD-L-1)-Z4-L01-PT | 2d | 2027-06-14 | 2027-06-16 | RHD4ENSDZ8APPPT130, RHD4ENMSPT2000, RHD4CZ4A013PT1103, RHD4CZ3C083PT3202 | -153.02d | 0d | Skilled labor [11.76 h]; Unskilled Labor [11.76 h]; Equipment Opreator [14.05 h]; Excavator-Poclain [11.76 h]; Dump Truck [2.4 h]; HDPE (160mm Diameter) - PT - Depth: less than 1.5m [5.19 m]; HDPE (160mm Diameter) - PT - Depth: 1.51m - 2.5m [25 m] | 4,105.33 | L01 | Z4 | CONS | PT | Excavation | bef |
| RHD4CZ4L01PT1201 |  | Bedding works for HDPE Pipline 160 mm - (RD-L-1)-Z4-L01-PT | 2d | 2027-06-16 | 2027-06-19 | RHD4CZ4L01PT1101 | -153.02d | 0d | Skilled labor [11.65 h]; Unskilled Labor [23.31 h]; Equipment Opreator [23.31 h]; Excavator-Poclain [11.65 h]; Dump Truck [11.65 h]; HDPE (160mm Diameter) - PT - Depth: less than 1.5m [2.6 m]; HDPE (160mm Diameter) - PT - Depth: 1.51m - 2.5m [8.33 m] | 1,461.06 | L01 | Z4 | CONS | PT | Bedding | bef |
| RHD4CZ4L01PT1301 |  | Installing for HDPE Pipline 160 mm - (RD-L-1)-Z4-L01-PT | 2d | 2027-06-19 | 2027-06-21 | RHD4CZ4L01PT1201, RHD4PRSHLDOSPT1000, RHD4PRSHLSTAGPT1000 | -153.02d | 0d | Unskilled Labor [24.29 h]; Plumber [12.2 h]; Equipment Opreator [12.2 h]; Boom Truck [12.2 h]; HDPE (160mm Diameter) - PT - Depth: less than 1.5m [23.37 m]; HDPE (160mm Diameter) - PT - Depth: 1.51m - 2.5m [66.66 m] | 11,966.31 | L01 | Z4 | CONS | PT | Installation | bef |
| RHD4CZ4L01PT1401 |  | Primary Test for HDPE Pipline 160 mm - (RD-L-1)-Z4-L01-PT | 2d | 2027-06-23 | 2027-06-26 | RHD4CZ4L01PT1301, RHD4CZ4L01PT3100 | -153.02d | 0d | Unskilled Labor [11.43 h]; Plumber [11.43 h]; Equipment Opreator [11.43 h]; Water Truck [11.43 h]; HDPE (160mm Diameter) - PT - Depth: less than 1.5m [10.39 m]; HDPE (160mm Diameter) - PT - Depth: 1.51m - 2.5m [33.33 m] | 5,844.59 | L01 | Z4 | CONS | PT | Primary Test | bef |
| RHD4CZ4L01PT1501 |  | Backfilling and warning tape works for HDPE Pipline 160 mm - (RD-L-1)-Z4-L01-PT | 2d | 2027-06-26 | 2027-06-28 | RHD4CZ4L01PT1401 | -153.02d | 0d | Skilled labor [11.87 h]; Unskilled Labor [23.85 h]; Equipment Opreator [23.85 h]; Excavator-Poclain [11.87 h]; Dump Truck [11.87 h]; HDPE (160mm Diameter) - PT - Depth: less than 1.5m [10.39 m]; HDPE (160mm Diameter) - PT - Depth: 1.51m - 2.5m [33.33 m] | 5,844.59 | L01 | Z4 | CONS | PT | Backfilling | bef |

| ID | WBS | Activity | Duration | Start | Finish | Predecessors | Total float | Free float | Resources | Cost | RDH4-01-001-Road and Block Names-1 | RDH4-01-001-Zones-1 | RDH4-01-001-Phases-1 | RDH4-01-001-Networks-1 | RDH4-01-001-Work Method-1 | RDH4-01-001-MENEM |
| --- | --- | --- | --- | --- | --- | --- | --- | --- | --- | --- | --- | --- | --- | --- | --- | --- |
|  | 8366 | **RHD4-02-002-L01-(PT)-Gate Valves (Direct Buried)** |  | 2027-06-21 | 2027-06-30 |  |  |  |  |  |  |  |  |  |  |  |
| RHD4CZ4L01PT3100 |  | Installation for Direct Buried Gate Valves - (RD-L-1)-Z4-L01-PT | 2d | 2027-06-21 | 2027-06-23 | RHD4CZ4L01PT1301, RHD4PRSHLDOSPT1200, RHD4PRSHLSTAGPT1200 | -153.02d | 0d | Unskilled Labor [5.45 h]; Plumber [5.45 h]; Gate valves dia 150 mm - PT [0.9 nr] | 1,422 | L01 | Z4 | CONS | PT | Installation | bef |
| RHD4CZ4L01PT3200 |  | Stem and Service box for Direct Buried Gate Valves - (RD-L-1)-Z4-L01-PT | 2d | 2027-06-28 | 2027-06-30 | RHD4CZ4L01PT3100, RHD4CZ4L01PT1501, RHD4PRSHLDOSPT1300 | -149.02d | 0d | Unskilled Labor [5.45 h]; Plumber [5.45 h]; Gate valves dia 150 mm - PT [0.1 nr] | 158 | L01 | Z4 | CONS | PT | Stem and Service box | bef |
|  | 8369 | **RHD4-02-002-L01-(PT)-Wash out Valve Chambers** |  |  |  |  |  |  |  |  |  |  |  |  |  |  |
|  | 8370 | **RHD4-02-002-L01-(PT)-Wash out Valves** |  |  |  |  |  |  |  |  |  |  |  |  |  |  |
|  | 8371 | **RHD4-02-002-L01-(PT)-Air Valve Chambers** |  |  |  |  |  |  |  |  |  |  |  |  |  |  |
|  | 8372 | **RHD4-02-002-L01-(PT)-Air Valves** |  |  |  |  |  |  |  |  |  |  |  |  |  |  |
|  | 8373 | **RHD4-02-002-L01-(PT)-Fire Hydrant** |  | 2027-06-28 | 2027-07-10 |  |  |  |  |  |  |  |  |  |  |  |
| RHD4CZ4L01PT4100 |  | Excavation and Bedding and Pipe Installation for Fire Hydrant - (RD-L-1)-Z4-L01-PT | 2d | 2027-06-28 | 2027-06-30 | RHD4CZ4L01PT1501, RHD4ENSDZ8APPPT130 | -153.02d | 0d | Skilled labor [10.89 h]; Unskilled Labor [10.89 h]; Plumber [10.89 h]; Equipment Opreator [5.45 h]; Excavator-Poclain [5.45 h]; 3-outlet fire hydrant (2 x 2.5 inch and 1 x 4.5 inch) in the form of a separate dry vacuum cylinder [0.2 nr] | 2,524 | L01 | Z4 | CONS | PT | Excavation | bef |
| RHD4CZ4L01PT4200 |  | Valve Installation for Fire Hydrant - (RD-L-1)-Z4-L01-PT | 2d | 2027-06-30 | 2027-07-03 | RHD4CZ4L01PT4100 | -153.02d | 0d | Unskilled Labor [7.3 h]; Plumber [7.3 h]; 3-outlet fire hydrant (2 x 2.5 inch and 1 x 4.5 inch) in the form of a separate dry vacuum cylinder [0.4 nr] | 5,048 | L01 | Z4 | CONS | PT | Valve | bef |
| RHD4CZ4L01PT4300 |  | Stem for Fire Hydrant - (RD-L-1)-Z4-L01-PT | 2d | 2027-07-03 | 2027-07-05 | RHD4CZ4L01PT4200 | -153.02d | 0d | Unskilled Labor [7.3 h]; Plumber [7.3 h]; 3-outlet fire hydrant (2 x 2.5 inch and 1 x 4.5 inch) in the form of a separate dry vacuum cylinder [0.6 nr] | 7,572 | L01 | Z4 | CONS | PT | Stem | bef |
| RHD4CZ4L01PT4400 |  | Fire Installation for Fire Hydrant - (RD-L-1)-Z4-L01-PT | 2d | 2027-07-05 | 2027-07-07 | RHD4CZ4L01PT4300, RHD4PRSHLDOSPT1500, RHD4PRSHLSTAGPT1500 | -153.02d | 0d | Unskilled Labor [7.3 h]; Plumber [7.3 h]; Equipment Opreator [7.3 h]; Boom Truck [7.3 h]; 3-outlet fire hydrant (2 x 2.5 inch and 1 x 4.5 inch) in the form of a separate dry vacuum cylinder [0.7 nr] | 8,834 | L01 | Z4 | CONS | PT | Fire | bef |
| RHD4CZ4L01PT4500 |  | Protection Barriers for Fire Hydrant - (RD-L-1)-Z4-L01-PT | 2d | 2027-07-07 | 2027-07-10 | RHD4CZ4L01PT4400 | -153.02d | 8.98d | Unskilled Labor [4.36 h]; Plumber [4.36 h]; 3-outlet fire hydrant (2 x 2.5 inch and 1 x 4.5 inch) in the form of a separate dry vacuum cylinder [0.1 nr] | 1,262 | L01 | Z4 | CONS | PT | Protection Barriers | bef |
|  | 8375 | **RHD4-02-002-Z4-L01-Irrigation Network - IRR** |  |  |  |  |  |  |  |  |  |  |  |  |  |  |
|  | 8376 | **RHD4-02-002-L01-(IRR)-HDPE Pipes - 160 mm diameter** |  |  |  |  |  |  |  |  |  |  |  |  |  |  |
|  | 8384 | **RHD4-02-002-L01-(IRR)-Gate Valves (Direct Buried)** |  |  |  |  |  |  |  |  |  |  |  |  |  |  |
|  | 8389 | **RHD4-02-002-L01-(IRR)-Air Valve Chamber** |  |  |  |  |  |  |  |  |  |  |  |  |  |  |
|  | 8390 | **RHD4-02-002-L01-(IRR)-Air Valves** |  |  |  |  |  |  |  |  |  |  |  |  |  |  |
|  | 8409 | **RHD4-02-002-Z4-L01-Medium Voltage Network - MV** |  | 2027-01-10 | 2027-04-22 |  |  |  |  |  |  |  |  |  |  |  |
|  | 8410 | **RHD4-02-002-L01-(MV)-Medium Voltage cable trench** |  | 2027-04-05 | 2027-04-20 |  |  |  |  |  |  |  |  |  |  |  |
| RHD4CZ4L01MV1100 |  | Excavation for Medium Voltage Trench - (RD-L-1)-Z4-L01-MV | 2d | 2027-04-05 | 2027-04-07 | RHD4ENSDZ8APPMV150, RHD4CZ4L01RD3100 | -189.02d | 0d | Skilled labor [19.28 h]; Unskilled Labor [38.55 h]; Equipment Opreator [57.83 h]; Excavator-Poclain [19.28 h]; Dump Truck [38.55 h]; Excavation for Trench size 60cm wide and 80cm deep ( for 2 cables) [25.75 m3]; Excavation for Trench size 180cm wide and 80cm deep (for 6 cables) [98.06 m3] | 1,238.06 | L01 | Z4 | CONS | MV | Excavation | AFT |
| RHD4CZ4L01MV1200 |  | Trench Backfilling for Medium Voltage Network - (RD-L-1)-Z4-L01-MV | 2d | 2027-04-18 | 2027-04-20 | RHD4CZ4L01MV3200 | -189.02d | 0d | Skilled labor [19.28 h]; Unskilled Labor [19.28 h]; Equipment Opreator [38.55 h]; Dump Truck [38.55 h]; Excavation for Trench size 60cm wide and 80cm deep ( for 2 cables) [11.03 m3]; Excavation for Trench size 180cm wide and 80cm deep (for 6 cables) [42.02 m3] | 530.54 | L01 | Z4 | CONS | MV | Backfilling | AFT |
|  | 8411 | **RHD4-02-002-L01-(MV)-Medium Voltage duct banks** |  | 2027-01-10 | 2027-01-19 |  |  |  |  |  |  |  |  |  |  |  |
| RHD4CZ4L01MV2100 |  | Excavation of Duct Banks for Medium Voltage Network - (RD-L-1)-Z4-L01-MV | 2d | 2027-01-10 | 2027-01-11 | RHD4ENSDZ8APPMV150, RHD4CZ3C083ST1102 | -136d | 0d | Unskilled Labor [15.36 h]; Equipment Opreator [30.71 h]; Excavator-Poclain [15.36 h]; Dump Truck [15.36 h]; Duct bank for MV cables UPVC (4xø150mm) [2.12 m] | 842.13 | L01 | Z4 | CONS | MV | Excavation | bef |
| RHD4CZ4L01MV2200 |  | Installation of Duct Banks for Medium Voltage Network - (RD-L-1)-Z4-L01-MV | 3d | 2027-01-12 | 2027-01-14 | RHD4CZ4L01MV2100, RHD4PRSHLDOSMV1000, RHD4PRSHLSTAGMV1000 | -135d | 0d | Unskilled Labor [23.09 h]; Equipment Opreator [46.07 h]; Excavator-Poclain [23.09 h]; Dump Truck [23.09 h]; Duct bank for MV cables UPVC (4xø150mm) [2.12 m] | 842.13 | L01 | Z4 | CONS | MV | Installing | bef |
| RHD4CZ4L01MV2300 |  | Pouring of Duct Banks for Medium Voltage Network - (RD-L-1)-Z4-L01-MV | 2d | 2027-01-16 | 2027-01-17 | RHD4CZ4L01MV2200 | -135d | 0d | Unskilled Labor [15.36 h]; Equipment Opreator [30.71 h]; Excavator-Poclain [15.36 h]; Dump Truck [15.36 h]; Duct bank for MV cables UPVC (4xø150mm) [13.75 m] | 5,473.83 | L01 | Z4 | CONS | MV | Pouring | bef |
| RHD4CZ4L01MV2400 |  | Backfilling of Duct Banks for Medium Voltage Network - (RD-L-1)-Z4-L01-MV | 2d | 2027-01-18 | 2027-01-19 | RHD4CZ4L01MV2300 | -135d | 1d | Unskilled Labor [11.54 h]; Equipment Opreator [23.09 h]; Excavator-Poclain [11.54 h]; Dump Truck [11.54 h]; Duct bank for MV cables UPVC (4xø150mm) [3.17 m] | 1,263.19 | L01 | Z4 | CONS | MV | Backfilling | bef |

| ID | WBS | Activity | Duration | Start | Finish | Predecessors | Total float | Free float | Resources | Cost | RDH4-01-001-Road and Block Names-1 | RDH4-01-001-Zones-1 | RDH4-01-001-Phases-1 | RDH4-01-001-Networks-1 | RDH4-01-001-Work Method-1 | RDH4-01-001-MENEM |
| --- | --- | --- | --- | --- | --- | --- | --- | --- | --- | --- | --- | --- | --- | --- | --- | --- |
|  | 8412 | **RHD4-02-002-L01-(MV)-Medium Voltage cables 3Cx 500 mm²** |  | 2027-04-07 | 2027-04-22 |  |  |  |  |  |  |  |  |  |  |  |
| RHD4CZ4L01MV3100 |  | Installation of Medium Voltage Cables 3Cx 500 mm² - (RD-L-1)-Z4-L01-MV | 7d | 2027-04-07 | 2027-04-15 | RHD4CZ4L01MV1100, RHD4PRSHLDOSMV1100, RHD4ENMSMV2000, RHD4ENMSMV2010, RHD4PRSHLSTAGMV1100 | -189.02d | 0d | Skilled labor [69.48 h]; Unskilled Labor [277.7 h]; Electrician [138.85 h]; Equipment Opreator [208.33 h]; Boom Truck [69.48 h]; Cable Laying Machine [138.85 h]; Cable 13.8 kV 3Cx 500 mm² Al/XLPE,/LLDPE / Unarmored [860.72 m] | 136,853.97 | L01 | Z4 | CONS | MV | Installation | AFT |
| RHD4CZ4L01MV3200 |  | Joints Installation of Medium Voltage Cables 3Cx 500 mm² - (RD-L-1)-Z4-L01-MV | 2d | 2027-04-15 | 2027-04-18 | RHD4CZ4L01MV3100, RHD4PRSHLDOSMV1300, RHD4PRSHLSTAGMV1300 | -189.02d | 0d | Skilled labor [5.45 h]; Unskilled Labor [21.78 h]; Electrician [10.89 h]; Equipment Opreator [5.45 h]; Boom Truck [5.45 h]; Straight joints cables for 13.8 kv 3Cx 500 mm², Al /XLPE/LLDPE [1 Unit] | 3,248 | L01 | Z4 | CONS | MV | Joints Installation | AFT |
| RHD4CZ4L01MV3300 |  | Testing of Medium Voltage Cables 3Cx 500 mm² - (RD-L-1)-Z4-L01-MV | 2d | 2027-04-20 | 2027-04-22 | RHD4CZ4L01MV3200, RHD4CZ4L01MV1200 | -189.02d | 0d | Skilled labor [20.8 h]; Unskilled Labor [83.31 h]; Electrician [41.71 h]; Cable 13.8 kV 3Cx 500 mm² Al/XLPE,/LLDPE / Unarmored [95.64 m] | 15,206 | L01 | Z4 | CONS | MV | Testing | AFT |
|  | 8413 | **RHD4-02-002-L01-(MV)-Medium Voltage cables 3Cx 50 mm²** |  |  |  |  |  |  |  |  |  |  |  |  |  |  |
|  | 8414 | **RHD4-02-002-L01-(MV)-Normally open Point (Outdoor Type)** |  |  |  |  |  |  |  |  |  |  |  |  |  |  |
|  | 8416 | **RHD4-02-002-Z4-L01-Low Voltage Network - LV** |  | 2027-01-12 | 2027-08-18 |  |  |  |  |  |  |  |  |  |  |  |
|  | 8417 | **RHD4-02-002-L01-(LV)-Low Voltage duct banks** |  | 2027-01-12 | 2027-01-20 |  |  |  |  |  |  |  |  |  |  |  |
| RHD4CZ4L01LV2100 |  | Excavation of Duct Banks for Low Voltage Network - (RD-L-1)-Z4-L01-LV | 2d | 2027-01-12 | 2027-01-13 | RHD4ENSDZ8APPLV160, RHD4CZ4L01MV2100 | -136d | 0d | Skilled labor [12.52 h]; Unskilled Labor [12.52 h]; Equipment Opreator [25.05 h]; Excavator-Poclain [12.52 h]; Dump Truck [12.52 h]; Duct bank for LV cables UPVC (4xø110mm) [1.73 m] | 517.27 | L01 | Z4 | CONS | LV | Excavation | bef |
| RHD4CZ4L01LV2200 |  | Installation of Duct Banks for Low Voltage Network - (RD-L-1)-Z4-L01-LV | 2d | 2027-01-14 | 2027-01-16 | RHD4CZ4L01LV2100, RHD4PRSHLDOSLV1000, RHD4PRSHLSTAGLV1000 | -136d | 0d | Carpenter [1.85 h]; Skilled labor [18.84 h]; Unskilled Labor [18.84 h]; Steel Fixer [1.85 h]; Duct bank for LV cables UPVC (4xø110mm) [1.73 m] | 517.27 | L01 | Z4 | CONS | LV | Installing | bef |
| RHD4CZ4L01LV2300 |  | Pouring of Duct Banks for Low Voltage Network - (RD-L-1)-Z4-L01-LV | 2d | 2027-01-17 | 2027-01-18 | RHD4CZ4L01LV2200 | -136d | 0d | Skilled labor [12.52 h]; Unskilled Labor [12.52 h]; Equipment Opreator [5.01 h]; Concrete Mixer Truck [2.5 h]; Concrete Pump [2.5 h]; Duct bank for LV cables UPVC (4xø110mm) [11.21 m] | 3,351.79 | L01 | Z4 | CONS | LV | Pouring | bef |
| RHD4CZ4L01LV2400 |  | Backfilling of Duct Banks for Low Voltage Network - (RD-L-1)-Z4-L01-LV | 2d | 2027-01-19 | 2027-01-20 | RHD4CZ4L01LV2300 | -136d | 0d | Skilled labor [9.37 h]; Unskilled Labor [9.37 h]; Equipment Opreator [3.81 h]; Excavator-Poclain [3.81 h]; Duct bank for LV cables UPVC (4xø110mm) [2.59 m] | 774.41 | L01 | Z4 | CONS | LV | Backfilling | bef |
|  | 8419 | **RHD4-02-002-L01-(LV)-Low Voltage cables** |  | 2027-08-09 | 2027-08-18 |  |  |  |  |  |  |  |  |  |  |  |
| RHD4CZ4L01LV3100 |  | Excavation for Low Voltage Cables for Low Voltage Network - (RD-L-1)-Z4-L01-LV | 2d | 2027-08-09 | 2027-08-11 | RHD4CZ4L01LV2400, RHD4CZ4L01MV1200, RHD4ENSDZ8APPLV160, RHD4CZ4L01SL3300 | -163.02d | 0d | Skilled labor [15.14 h]; Unskilled Labor [30.17 h]; Equipment Opreator [30.17 h]; Excavator-Poclain [15.14 h]; Boom Truck [15.14 h]; Cable, Copper 4x50mm2/ CU/XLPE/PVC +1x25mm2 CU/PVC [38 m]; Cable, Copper 3x10mm2/ CU/XLPE/SWA/PVC [31.3 m] | 5,894.7 | L01 | Z4 | CONS | LV | Excavation | AFT |
| RHD4CZ4L01LV3200 |  | Cable Laying of Low Voltage Cables for Low Voltage Network - (RD-L-1)-Z4-L01-LV | 2d | 2027-08-11 | 2027-08-14 | RHD4CZ4L01LV3100, RHD4PRSHLDOSLV1100, RHD4ENMSLV2000, RHD4ENMSLV2010, RHD4PRSHLSTAGLV1100 | -163.02d | 0d | Skilled labor [12.52 h]; Unskilled Labor [50.31 h]; Electrician [25.16 h]; Equipment Opreator [37.68 h]; Boom Truck [12.52 h]; Cable Laying Machine [25.16 h]; Cable, Copper 4x50mm2/ CU/XLPE/PVC +1x25mm2 CU/PVC [114 m]; Cable, Copper 3x10mm2/ CU/XLPE/SWA/PVC [93.89 m] | 17,683.75 | L01 | Z4 | CONS | LV | Cable Laying | AFT |
| RHD4CZ4L01LV3300 |  | Warning tape and Backfill for Low Voltage Cables for Low Voltage Network - (RD-L-1)-Z4-L01-LV | 2d | 2027-08-14 | 2027-08-16 | RHD4CZ4L01LV3200 | -163.02d | 0d | Skilled labor [12.52 h]; Unskilled Labor [50.31 h]; Electrician [25.16 h]; Equipment Opreator [12.52 h]; Boom Truck [12.52 h]; Cable, Copper 4x50mm2/ CU/XLPE/PVC +1x25mm2 CU/PVC [28.5 m]; Cable, Copper 3x10mm2/ CU/XLPE/SWA/PVC [23.47 m] | 4,420.94 | L01 | Z4 | CONS | LV | Warning tape and Backfill | AFT |
| RHD4CZ4L01LV3400 |  | Testing of Low Voltage Cables for Low Voltage Network - (RD-L-1)-Z4-L01-LV | 2d | 2027-08-16 | 2027-08-18 | RHD4CZ4L01LV3300 | -163.02d | 0d | Skilled labor [7.51 h]; Unskilled Labor [30.17 h]; Electrician [15.14 h]; Equipment Opreator [7.51 h]; Boom Truck [7.51 h]; Cable, Copper 4x50mm2/ CU/XLPE/PVC +1x25mm2 CU/PVC [9.5 m]; Cable, Copper 3x10mm2/ CU/XLPE/SWA/PVC [7.82 m] | 1,473.65 | L01 | Z4 | CONS | LV | Testing | AFT |
|  | 8422 | **RHD4-02-002-Z4-L01-Street Lighting Network - SL** |  | 2027-06-30 | 2027-08-28 |  |  |  |  |  |  |  |  |  |  |  |
|  | 8423 | **RHD4-02-002-L01-(SL)-Street Lighting duct banks** |  | 2027-06-30 | 2027-07-10 |  |  |  |  |  |  |  |  |  |  |  |
| RHD4CZ4L01SL2100 |  | Excavation of Duct Banks for Street Lighting Network - (RD-L-1)-Z4-L01-SL | 2d | 2027-06-30 | 2027-07-03 | RHD4CZ4L01LV2100, RHD4ENSDZ8APPSL170, RHD4CZ4L01PT3200 | -149.02d | 0d | Skilled labor [14.05 h]; Unskilled Labor [14.05 h]; Equipment Opreator [28 h]; Excavator-Poclain [14.05 h]; Dump Truck [14.05 h]; Road Crossing Duct for Street Lighting cables UPVC (2x?110mm) [1.93 m] | 390.06 | L01 | Z4 | CONS | SL | Excavation | bef |
| RHD4CZ4L01SL2200 |  | Installation of Duct Banks for Street Lighting Network - (RD-L-1)-Z4-L01-SL | 2d | 2027-07-03 | 2027-07-05 | RHD4CZ4L01SL2100, RHD4PRSHLDOSSL1000, RHD4PRSHLSTAGSL1000 | -149.02d | 0d | Carpenter [2.07 h]; Skilled labor [21.02 h]; Unskilled Labor [21.02 h]; Steel Fixer [2.07 h]; Road Crossing Duct for Street Lighting cables UPVC (2x?110mm) [1.93 m] | 390.06 | L01 | Z4 | CONS | SL | Installing | bef |
| RHD4CZ4L01SL2300 |  | Pouring of Duct Banks for Street Lighting Network - (RD-L-1)-Z4-L01-SL | 2d | 2027-07-05 | 2027-07-07 | RHD4CZ4L01SL2200 | -149.02d | 0d | Skilled labor [14.05 h]; Unskilled Labor [14.05 h]; Equipment Opreator [5.55 h]; Concrete Mixer Truck [2.83 h]; Concrete Pump [2.83 h]; Road Crossing Duct for Street Lighting cables UPVC (2x?110mm) [12.55 m] | 2,535.42 | L01 | Z4 | CONS | SL | Pouring | bef |
| RHD4CZ4L01SL2400 |  | Backfilling of Duct Banks for Street Lighting Network - (RD-L-1)-Z4-L01-SL | 2d | 2027-07-07 | 2027-07-10 | RHD4CZ4L01SL2300, RHD4CZ4L01LV2400 | -149.02d | 14d | Skilled labor [10.56 h]; Unskilled Labor [10.56 h]; Equipment Opreator [4.25 h]; Excavator-Poclain [4.25 h]; Road Crossing Duct for Street Lighting cables UPVC (2x?110mm) [2.9 m] | 585.8 | L01 | Z4 | CONS | SL | Backfilling | bef |
|  | 8424 | **RHD4-02-002-L01-(SL)-Street Lighting Drawpit** |  | 2027-08-23 | 2027-08-28 |  |  |  |  |  |  |  |  |  |  |  |
| RHD4CZ4L01SL5100 |  | Excavation of Drawpit size 600x600x900mm for Street Lighting Network - (RD-L-1)-Z4-L01-SL | 2d | 2027-08-23 | 2027-08-25 | RHD4ENSDZ8APPSL170, RHD4CZ4L01SL1400 | -163.02d | 0d | Skilled labor [1.85 h]; Unskilled Labor [1.85 h]; Equipment Opreator [1.42 h]; Excavator-Poclain [0.8 h]; Dump Truck [0.8 h]; Drawpit with medium duty steel cover, size600x600x900mm, [0.3 Unit] | 735.3 | L01 | Z4 | CONS | SL | Excavation | AFT |
| RHD4CZ4L01SL5200 |  | Installation of Drawpit size 600x600x900mm for Street Lighting Network - (RD-L-1)-Z4-L01-SL | 2d | 2027-08-25 | 2027-08-28 | RHD4CZ4L01SL5100, RHD4PRSHLDOSSL1400, RHD4PRSHLSTAGSL1400, RHD4CZ4A013ST1503 | -157.02d | 23d | Skilled labor [1.85 h]; Unskilled Labor [1.85 h]; Equipment Opreator [0.8 h]; Boom Truck [0.8 h]; Drawpit with medium duty steel cover, size600x600x900mm, [1.7 Unit] | 4,166.7 | L01 | Z4 | CONS | SL | Installation | AFT |

| ID | WBS | Activity | Duration | Start | Finish | Predecessors | Total float | Free float | Resources | Cost | RDH4-01-001-Road and Block Names-1 | RDH4-01-001-Zones-1 | RDH4-01-001-Phases-1 | RDH4-01-001-Networks-1 | RDH4-01-001-Work Method-1 | RDH4-01-001-MENEM |
| --- | --- | --- | --- | --- | --- | --- | --- | --- | --- | --- | --- | --- | --- | --- | --- | --- |
|  | 8425 | **RHD4-02-002-L01-(SL)-Street Lighting cables** |  | 2027-08-02 | 2027-08-21 |  |  |  |  |  |  |  |  |  |  |  |
| RHD4CZ4L01SL3100 |  | Excavation for Street Lighting Cables for Street Lighting Network - (RD-L-1)-Z4-L01-SL | 2d | 2027-08-02 | 2027-08-04 | RHD4CZ4L01SL1300, RHD4ENSDZ8APPSL170 | -163.02d | 0d | Skilled labor [13.4 h]; Unskilled Labor [26.68 h]; Equipment Opreator [26.68 h]; Excavator-Poclain [13.4 h]; Boom Truck [13.4 h]; Cable, Copper 4x10mm2/ CU/XLPE/SWA/PVC + 1x10mm2 CU/PVC [61.28 m] | 3,002.73 | L01 | Z4 | CONS | SL | Excavation | AFT |
| RHD4CZ4L01SL3200 |  | Cable Laying of Street Lighting Cables for Street Lighting Network - (RD-L-1)-Z4-L01-SL | 2d | 2027-08-04 | 2027-08-07 | RHD4CZ4L01SL3100, RHD4PRSHLDOSSL1100, RHD4ENMSSL2000, RHD4ENMSSL2010, RHD4PRSHLSTAGSL1100 | -163.02d | 0d | Skilled labor [11.11 h]; Unskilled Labor [44.54 h]; Electrician [22.22 h]; Equipment Opreator [33.32 h]; Boom Truck [11.11 h]; Cable Laying Machine [22.22 h]; Cable, Copper 4x10mm2/ CU/XLPE/SWA/PVC + 1x10mm2 CU/PVC [183.84 m] | 9,008.18 | L01 | Z4 | CONS | SL | Cable Laying | AFT |
| RHD4CZ4L01SL3300 |  | Warning tape and Backfill for Street Lighting Cables for Street Lighting Network - (RD-L-1)-Z4-L01-SL | 2d | 2027-08-07 | 2027-08-09 | RHD4CZ4L01SL3200 | -163.02d | 0d | Skilled labor [11.11 h]; Unskilled Labor [44.54 h]; Electrician [22.22 h]; Equipment Opreator [11.11 h]; Boom Truck [11.11 h]; Cable, Copper 4x10mm2/ CU/XLPE/SWA/PVC + 1x10mm2 CU/PVC [45.96 m] | 2,252.05 | L01 | Z4 | CONS | SL | Warning tape and Backfill | AFT |
| RHD4CZ4L01SL3400 |  | Testing of Street Lighting Cables for Street Lighting Network - (RD-L-1)-Z4-L01-SL | 2d | 2027-08-18 | 2027-08-21 | RHD4CZ4L01SL3300, RHD4CZ4L01LV3400 | -163.02d | 0d | Skilled labor [6.64 h]; Unskilled Labor [26.68 h]; Electrician [13.4 h]; Equipment Opreator [6.64 h]; Boom Truck [6.64 h]; Cable, Copper 4x10mm2/ CU/XLPE/SWA/PVC + 1x10mm2 CU/PVC [15.32 m] | 750.68 | L01 | Z4 | CONS | SL | Testing | AFT |
|  | 8426 | **RHD4-02-002-L01-(SL)-Street Lighting Poles** |  | 2027-07-26 | 2027-08-25 |  |  |  |  |  |  |  |  |  |  |  |
| RHD4CZ4L01SL1100 |  | Excavation for RC Base for Lighting Poles for Street Lighting Network - (RD-L-1)-Z4-L01-SL | 2d | 2027-07-26 | 2027-07-28 | RHD4CZ4L01SL2400, RHD4CZ4L01MV1200, RHD4ENSDZ8APPSL170, RHD4CZ3C083SL1100 | -163.02d | 0d | Skilled labor [5.12 h]; Unskilled Labor [5.12 h]; Equipment Opreator [10.13 h]; Excavator-Poclain [5.12 h]; Dump Truck [5.12 h]; Lighting poles single arms, height of ( 10 ) meters [0.7 Unit] | 2,384.9 | L01 | Z4 | CONS | SL | Excavation | AFT |
| RHD4CZ4L01SL1200 |  | Installation for RC Base for Lighting Poles for Street Lighting Network - (RD-L-1)-Z4-L01-SL | 2d | 2027-07-28 | 2027-07-31 | RHD4CZ4L01SL1100 | -163.02d | 0d | Skilled labor [5.12 h]; Unskilled Labor [5.12 h]; Equipment Opreator [10.13 h]; Excavator-Poclain [5.12 h]; Dump Truck [5.12 h]; Lighting poles single arms, height of ( 10 ) meters [1.75 Unit] | 5,962.25 | L01 | Z4 | CONS | SL | RC Base | AFT |
| RHD4CZ4L01SL1300 |  | Backfill for RC Base for Lighting Poles for Street Lighting Network - (RD-L-1)-Z4-L01-SL | 2d | 2027-07-31 | 2027-08-02 | RHD4CZ4L01SL1200 | -163.02d | 0d | Skilled labor [5.12 h]; Unskilled Labor [5.12 h]; Equipment Opreator [10.13 h]; Excavator-Poclain [5.12 h]; Dump Truck [5.12 h]; Lighting poles single arms, height of ( 10 ) meters [0.35 Unit] | 1,192.45 | L01 | Z4 | CONS | SL | Backfill | AFT |
| RHD4CZ4L01SL1400 |  | Installation for Lighting Poles for Street Lighting Network - (RD-L-1)-Z4-L01-SL | 2d | 2027-08-21 | 2027-08-23 | RHD4CZ4L01SL1300, RHD4CZ4L01SL3400, RHD4PRSHLDOSSL1200, RHD4ENMSSL2000, RHD4ENMSSL2010, RHD4PRSHLSTAGSL1200 | -163.02d | 0d | Skilled labor [7.62 h]; Unskilled Labor [7.62 h]; Electrician [7.62 h]; Equipment Opreator [7.62 h]; Boom Truck [7.62 h]; Lighting poles single arms, height of ( 10 ) meters [4.2 Unit] | 14,309.4 | L01 | Z4 | CONS | SL | Poles Installation | AFT |
| RHD4CZ4L01SL1500 |  | Luminaire Installation for Lighting Poles for Street Lighting Network - (RD-L-1)-Z4-L01-SL | 2d | 2027-08-23 | 2027-08-25 | RHD4CZ4L01SL1400, RHD4PRSHLDOSSL1300, RHD4PRSHLSTAGSL1300 | -135.02d | 0d | Unskilled Labor [10.13 h]; Electrician [5.12 h]; Equipment Opreator [0.98 h]; Boom Truck [2.07 h]; Street Lighting( LED) Luminaire of Output ?10898 lumen [7 Unit] | 4,116 | L01 | Z4 | CONS | SL | Luminaire Installation | AFT |
|  | 8428 | **RHD4-02-002-L01-(SL)-Street Lighting Earthing System** |  |  |  |  |  |  |  |  |  |  |  |  |  |  |
|  | 8434 | **RHD4-02-002-Z4-L01-Telecommunications Network - TC** |  | 2027-08-25 | 2027-09-01 |  |  |  |  |  |  |  |  |  |  |  |
|  | 8435 | **RHD4-02-002-L01-(TC)-Telecommunications Ducts** |  | 2027-08-25 | 2027-09-01 |  |  |  |  |  |  |  |  |  |  |  |
| RHD4CZ4L01TC2100 |  | Excavation of HDPE Ducts for Telecom Network - (RD-L-1)-Z4-L01-TC | 2d | 2027-08-25 | 2027-08-28 | RHD4ENSDZ8APPTC190, RHD4CZ4L01SL2100, RHD4CZ4L01SL5100 | -163.02d | 0d | Skilled labor [10.02 h]; Unskilled Labor [10.02 h]; Equipment Opreator [19.93 h]; Excavator-Poclain [10.02 h]; Dump Truck [10.02 h]; (6*50mm) HDPE ducts -TC [27.5 m] | 2,420 | L01 | Z4 | CONS | TC | Excavation | AFT |
| RHD4CZ4L01TC2200 |  | Installation of HDPE Ducts for Telecom Network - (RD-L-1)-Z4-L01-TC | 2d | 2027-08-28 | 2027-08-30 | RHD4CZ4L01TC2100, RHD4PRSHLDOSTC1000, RHD4PRSHLSTAGTC1000 | -161.02d | 0d | Carpenter [1.52 h]; Skilled labor [15.03 h]; Unskilled Labor [15.03 h]; Steel Fixer [1.52 h]; (6*50mm) HDPE ducts -TC [89.38 m] | 7,865 | L01 | Z4 | CONS | TC | Installing | AFT |
| RHD4CZ4L01TC2400 |  | Backfilling of HDPE Ducts for Telecom Network - (RD-L-1)-Z4-L01-TC | 2d | 2027-08-30 | 2027-09-01 | RHD4CZ4L01TC2200 | -161.02d | 2d | Skilled labor [10.02 h]; Unskilled Labor [10.02 h]; Equipment Opreator [4 h]; Excavator-Poclain [4 h]; (6*50mm) HDPE ducts -TC [20.62 m] | 1,815 | L01 | Z4 | CONS | TC | Backfilling | AFT |
|  | 8436 | **RHD4-02-002-L01-(TC)-Telecommunications Manholes** |  |  |  |  |  |  |  |  |  |  |  |  |  |  |
|  | 8437 | **RHD4-02-002-L01-(TC)-Telecomminications Road Crossings** |  |  |  |  |  |  |  |  |  |  |  |  |  |  |
|  | 8438 | **RHD4-02-002-Z4-L01-Information and Communication Technologies - ICT** |  | 2027-08-28 | 2027-09-04 |  |  |  |  |  |  |  |  |  |  |  |
|  | 8439 | **RHD4-02-002-L01-(ICT)-Information and Communication Technologies Ducts** |  | 2027-08-28 | 2027-09-04 |  |  |  |  |  |  |  |  |  |  |  |
| RHD4CZ4L01ICT2100 |  | Excavation of HDPE Ducts for ICT Network - (RD-L-1)-Z4-L01-ICT | 2d | 2027-08-28 | 2027-08-30 | RHD4ENSDZ8APPICT200, RHD4CZ4L01TC2100 | -163.02d | 0d | Skilled labor [9.8 h]; Unskilled Labor [9.8 h]; Equipment Opreator [19.6 h]; Excavator-Poclain [9.8 h]; Dump Truck [9.8 h]; (2*50mm) HDPE ducts -ICT [27 m] | 1,026 | L01 | Z4 | CONS | ICT | Excavation | AFT |
| RHD4CZ4L01ICT2200 |  | Installation of HDPE Ducts for ICT Network - (RD-L-1)-Z4-L01-ICT | 2d | 2027-08-30 | 2027-09-01 | RHD4CZ4L01ICT2100, RHD4PRSHLDOSICT1000, RHD4PRSHLSTAGICT1000 | -163.02d | 0d | Carpenter [1.52 h]; Skilled labor [14.7 h]; Unskilled Labor [14.7 h]; Steel Fixer [1.52 h]; (2*50mm) HDPE ducts -ICT [87.75 m] | 3,334.5 | L01 | Z4 | CONS | ICT | Installing | AFT |
| RHD4CZ4L01ICT2400 |  | Backfilling of HDPE Ducts for ICT Network - (RD-L-1)-Z4-L01-ICT | 2d | 2027-09-01 | 2027-09-04 | RHD4CZ4L01ICT2200 | -163.02d | 0d | Skilled labor [9.8 h]; Unskilled Labor [9.8 h]; Equipment Opreator [3.92 h]; Excavator-Poclain [3.92 h]; (2*50mm) HDPE ducts -ICT [20.25 m] | 769.5 | L01 | Z4 | CONS | ICT | Backfilling | AFT |

| ID | WBS | Activity | Duration | Start | Finish | Predecessors | Complete | Planned start | Planned finish | Total float | Free float | Resources | Cost | Actual cost | RDH4-01-001-Road and Block Names-1 | RDH4-01-001-Zones-1 | RDH4-01-001-Phases-1 | RDH4-01-001-Networks-1 | RDH4-01-001-Work Method-1 | RDH4-01-001-MENEM |
| --- | --- | --- | --- | --- | --- | --- | --- | --- | --- | --- | --- | --- | --- | --- | --- | --- | --- | --- | --- | --- |
|  | 8440 | **RHD4-02-002-L01-(ICT)-Information and Communication Technologies Manholes** |  |  |  |  |  |  |  |  |  |  |  |  |  |  |  |  |  |  |
|  | 8441 | **RHD4-02-002-L01-(ICT)-Information and Communication Technologies Road Crossings** |  |  |  |  |  |  |  |  |  |  |  |  |  |  |  |  |  |  |
|  | 8429 | **RHD4-02-002-Z4-L01-Landscape Network - LS** |  |  |  |  |  |  |  |  |  |  |  |  |  |  |  |  |  |  |
|  | 8430 | **RHD4-02-002-L01-(LS)-Landscape Lighting cables** |  |  |  |  |  |  |  |  |  |  |  |  |  |  |  |  |  |  |
|  | 8432 | **RHD4-02-002-L01-(LS)-Landscape Bollard Poles** |  |  |  |  |  |  |  |  |  |  |  |  |  |  |  |  |  |  |
|  | 8442 | **RHD4-02-002-Z4-L01-Security Network - CCTV** |  | 2027-09-04 | 2027-10-17 |  |  |  |  |  |  |  |  |  |  |  |  |  |  |  |
|  | 8443 | **RHD4-02-002-L01-(CCTV)-Civil Works** |  | 2027-09-04 | 2027-09-15 |  |  |  |  |  |  |  |  |  |  |  |  |  |  |  |
| RHD4CZ4L01CCTV2100 |  | Civil Works for Security Network - (RD-L-1)-Z4-L01-CCTV | 10d | 2027-09-04 | 2027-09-15 | RHD4CZ4L01ICT2400, RHD4CZ4L01TC2400 |  |  |  | -163.02d | 0d | Skilled labor [435.68 h]; Unskilled Labor [871.2 h]; Equipment Opreator [435.68 h]; Excavator-Poclain [108.9 h]; Dump Truck [108.9 h]; Civil works Digging, trenching, laying pipes Meter with supply and installation of Manholes and for power feeding sources related to all towers and poles – (from 35-meter pole to control room and from related UPS camersa distribution boards till overall 2 [300 m] | 34,800 |  | L01 | Z4 | CONS | CCTV | Civil Works | AFT |
|  | 2959 | **RHD4-02-002-L01-(CCTV)-CCTV Poles** |  | 2027-09-15 | 2027-09-28 |  |  |  |  |  |  |  |  |  |  |  |  |  |  |  |
| RHD4CZ4L01CCTV1100 |  | Excavation for RC Base for CCTV Poles for Security Network - (RD-L-1)-Z4-L01-CCTV | 2d | 2027-09-15 | 2027-09-18 | RHD4CZ4L01CCTV2100 |  |  |  | -140.06d | 0d | Skilled labor [4.32 h]; Unskilled Labor [4.32 h]; Equipment Opreator [8.64 h]; Excavator-Poclain [2.16 h]; Dump Truck [2.16 h]; 25 Meters pole for CCTV Cameras [0.1 nr] | 14,090.2 |  | C031 | Z4 | CONS | CCTV | Excavation | AFT |
| RHD4CZ4L01CCTV1200 |  | Installation for RC Base for CCTV Poles for Security Network - (RD-L-1)-Z4-L01-CCTV | 2d | 2027-09-18 | 2027-09-20 | RHD4CZ4L01CCTV1100 |  |  |  | -140.06d | 0d | Skilled labor [4.32 h]; Unskilled Labor [4.32 h]; Equipment Opreator [8.64 h]; Excavator-Poclain [2.16 h]; Dump Truck [2.16 h]; 25 Meters pole for CCTV Cameras [0.25 nr] | 35,225.5 |  | C031 | Z4 | CONS | CCTV | RC Base | AFT |
| RHD4CZ4L01CCTV1300 |  | Backfill for RC Base for CCTV Poles for Security Network - (RD-L-1)-Z4-L01-CCTV | 2.03d | 2027-09-20 | 2027-09-22 | RHD4CZ4L01CCTV1200 |  |  |  | -140.06d | 0d | Skilled labor [2.88 h]; Unskilled Labor [2.88 h]; Equipment Opreator [5.44 h]; Excavator-Poclain [1.44 h]; Dump Truck [1.44 h]; 25 Meters pole for CCTV Cameras [0.05 nr] | 7,045.1 |  | C031 | Z4 | CONS | CCTV | Backfill | AFT |
| RHD4CZ4L01CCTV1400 |  | Installation for CCTV Poles for Security Network - (RD-L-1)-Z4-L01-CCTV | 2d | 2027-09-22 | 2027-09-26 | RHD4CZ4L01CCTV1300 |  |  |  | -140.06d | 0d | Skilled labor [7.2 h]; Unskilled Labor [14.56 h]; Electrician [7.2 h]; Equipment Opreator [7.2 h]; Boom Truck [3.6 h]; 25 Meters pole for CCTV Cameras [0.6 nr] | 84,541.2 |  | C031 | Z4 | CONS | CCTV | Installation | AFT |
| RHD4CZ4L01CCTV1500 |  | Protection post Installation for CCTV Poles for Security Network - (RD-L-1)-Z4-L01-CCTV | 2d | 2027-09-26 | 2027-09-28 | RHD4CZ4L01SL1500, RHD4CZ4L01CCTV1400 |  |  |  | -138.06d | 2.01d | Skilled labor [21.76 h]; Unskilled Labor [43.52 h]; Supply and Installation of minimum 4 Protection Post for each pole or tower with pipe ?220*6mm THK. [1 nr] | 4,903 |  | C031 | Z4 | CONS | CCTV | Protection post | AFT |
|  | 2960 | **RHD4-02-002-L01-(CCTV)-Camera** |  | 2027-09-28 | 2027-09-30 |  |  |  |  |  |  |  |  |  |  |  |  |  |  |  |
| RHD4CZ4L01CCTV3100 |  | Installation for Cameras for Security Network - (RD-L-1)-Z4-L01-CCTV | 2d | 2027-09-28 | 2027-09-30 | RHD4CZ4L01CCTV1400, RHD4CZ4L01CCTV4100 |  |  |  | -140.06d | 0d | Unskilled Labor [54.4 h]; Electrician [27.2 h]; Outdoor Camera, 5MP resolution, day/night, fixed bullet camera providing Forensic WDR. [4 nr]; Outdoor PTZ with IR, HDTV 1080 and 31x optical, 12x digital, total 372x zoom, H264/265 with Motion JPEG. [1 nr] | 61,727 |  | C031 | Z4 | CONS | CCTV | Installation | AFT |
|  | 2961 | **RHD4-02-002-L01-(CCTV)-Power and Infrastructure** |  | 2027-09-26 | 2027-09-30 |  |  |  |  |  |  |  |  |  |  |  |  |  |  |  |
| RHD4CZ4L01CCTV4100 |  | Installation of Power outlet, UPS and midspan for PTZ Camerafor Cameras for Security Network - (RD-L-1)-Z4-L01-CCTV | 2.01d | 2027-09-26 | 2027-09-28 | RHD4CZ4L01CCTV1400 |  |  |  | -140.06d | 0d | Skilled labor [13.12 h]; Unskilled Labor [52.32 h]; Electrician [26.08 h]; Equipment Opreator [26.08 h]; Excavator-Poclain [6.56 h]; Dump Truck [6.56 h]; Outdoor ready IP66-rated midspan for PTZ Camera (The outdoor- ready midspan should be IP66/IP67- and NEMA 4X-rated [1 nr]; 1.2KVA Industrial type UPS located at FEC remote poles [2 nr] | 15,232 |  | C031 | Z4 | CONS | CCTV | Power | AFT |
| RHD4CZ4L01CCTV4200 |  | Short Range Wireless PoP wireless Bridgefor CCTV Poles for Security Network - (RD-L-1)-Z4-L01-CCTV | 2d | 2027-09-28 | 2027-09-30 | RHD4CZ4L01CCTV4100 |  |  |  | -140.06d | 0d | Skilled labor [10.88 h]; Unskilled Labor [21.76 h]; Electrician [10.88 h]; Equipment Opreator [21.76 h]; Excavator-Poclain [5.44 h]; Dump Truck [5.44 h]; Short Range wireless point to point wireless bridge [2 nr] | 29,274 |  | C031 | Z4 | CONS | CCTV | Wireless Pop | AFT |
|  | 2963 | **RHD4-02-002-L01-(CCTV)-CCTV Panels and Components** |  | 2027-09-30 | 2027-10-17 |  |  |  |  |  |  |  |  |  |  |  |  |  |  |  |
| RHD4CZ4L01CCTV6100 |  | Installation for CCTV Panels for Security Network - (RD-L-1)-Z4-L01-CCTV | 14d | 2027-09-30 | 2027-10-17 | RHD4CZ4L01CCTV4200, RHD4CZ4L01CCTV3100, RHD4CZ4L01CCTV1500 |  |  |  | -140.06d | 28.95d | Skilled labor [326.72 h]; Unskilled Labor [980.16 h]; Electrician [326.72 h]; Pole mounted Filed Equipment cabinet (FEC) , with fan and ventilation, NEMEX 4X ,door, minimum size (600x600x400mm) , the cabinet/enclosurE [2 nr]; 8 Port Industrial PoE Switch 10/1000BaseT (-40 deg to +70 deg. Celsius) for remote poles and as specifiedin item 15. [1 nr]; UTP CAT6 Patch Cord , connect the industrial switch with the cameras, and radio wireless antenna [12 nr] | 32,584 |  | C031 | Z4 | CONS | CCTV | Equipment | AFT |
|  | 2974 | **RHD4-02-002-Z4-A013** |  | 2026-06-30 | 2028-02-03 |  |  |  |  |  |  |  |  |  |  |  |  |  |  |  |
|  | 3005 | **RHD4-02-002-Z4-A013-Crossings Sewage Network - SWCr** |  |  |  |  |  |  |  |  |  |  |  |  |  |  |  |  |  |  |
|  | 3015 | **RHD4-02-002-A013-(SWCr)-MH Works - 1200 mm diameter** |  |  |  |  |  |  |  |  |  |  |  |  |  |  |  |  |  |  |
|  | 3009 | **RHD4-02-002-A013-(SWCr)-GRP Pipes - 600 mm diameter** |  |  |  |  |  |  |  |  |  |  |  |  |  |  |  |  |  |  |
|  | 3021 | **RHD4-02-002-A013-(SWCr)-Air Valve Chambers** |  |  |  |  |  |  |  |  |  |  |  |  |  |  |  |  |  |  |
|  | 3022 | **RHD4-02-002-A013-(SWCr)-Air Valves** |  |  |  |  |  |  |  |  |  |  |  |  |  |  |  |  |  |  |
|  | 3025 | **RHD4-02-002-A013-(SWCr)-Discharge Chambers** |  |  |  |  |  |  |  |  |  |  |  |  |  |  |  |  |  |  |
|  | 3049 | **RHD4-02-002-Z4-A013-Crossings Potable Network - PTCr** |  |  |  |  |  |  |  |  |  |  |  |  |  |  |  |  |  |  |
|  | 3053 | **RHD4-02-002-A013-(PTCr)-HDPE Pipes - 400 mm diameter** |  |  |  |  |  |  |  |  |  |  |  |  |  |  |  |  |  |  |
|  | 3056 | **RHD4-02-002-A013-(PTCr)-Butterfly Valve Chamber** |  |  |  |  |  |  |  |  |  |  |  |  |  |  |  |  |  |  |
|  | 3057 | **RHD4-02-002-A013-(PTCr)-Butterfly Valves** |  |  |  |  |  |  |  |  |  |  |  |  |  |  |  |  |  |  |
|  | 3060 | **RHD4-02-002-A013-(PTCr)-Air Valve Chambers** |  |  |  |  |  |  |  |  |  |  |  |  |  |  |  |  |  |  |
|  | 3061 | **RHD4-02-002-A013-(PTCr)-Air Valves** |  |  |  |  |  |  |  |  |  |  |  |  |  |  |  |  |  |  |
|  | 3062 | **RHD4-02-002-A013-(PTCr)-Fire Hydrant** |  |  |  |  |  |  |  |  |  |  |  |  |  |  |  |  |  |  |
|  | 3096 | **RHD4-02-002-Z4-A013-Crossings Irrigation Network - IRRC** |  |  |  |  |  |  |  |  |  |  |  |  |  |  |  |  |  |  |
|  | 3097 | **RHD4-02-002-A013-(IRRC)-HDPE Pipes - 160 mm diameter** |  |  |  |  |  |  |  |  |  |  |  |  |  |  |  |  |  |  |
|  | 3100 | **RHD4-02-002-A013-(IRRC)-HDPE Pipes - 250 mm diameter** |  |  |  |  |  |  |  |  |  |  |  |  |  |  |  |  |  |  |
|  | 3105 | **RHD4-02-002-A013-(IRRC)-Gate Valves (Direct Buried)** |  |  |  |  |  |  |  |  |  |  |  |  |  |  |  |  |  |  |
|  | 3110 | **RHD4-02-002-A013-(IRRC)-Air Valve Chamber** |  |  |  |  |  |  |  |  |  |  |  |  |  |  |  |  |  |  |
|  | 3111 | **RHD4-02-002-A013-(IRRC)-Air Valves** |  |  |  |  |  |  |  |  |  |  |  |  |  |  |  |  |  |  |
|  | 3153 | **RHD4-02-002-Z4-A013-Road Works - RD** |  | 2026-06-30 | 2028-02-03 |  |  |  |  |  |  |  |  |  |  |  |  |  |  |  |
|  | 3154 | **RHD4-02-002-A013-(RD)-Subgrade** |  | 2026-06-30 | 2026-07-09 |  |  |  |  |  |  |  |  |  |  |  |  |  |  |  |
| RHD4CZ4A013RD1100 |  | Supply, lay and compaction subgrade compacted thickness 300 mm for Roads - (RD-A-1 /3)-Z4-A013-RD | 5d | 2026-06-30 A | 2026-07-09 A | RHD4ENSDZ4APPRD220, RHD4ENSDZ4APPEW100 SS, RHD4CZ4A013ST3300 | 100% | 2026-08-18 | 2026-08-23 |  |  | Skilled labor [197.22 h]; Unskilled Labor [394.45 h]; Electrician [197.22 h]; Equipment Opreator [1347.14 h]; Water Truck [65.12 h]; Roller compactor [98.67 h]; Grader [197.22 h]; Dump Truck [986.12 h]; Subgrade [12331.9 m3] | 234,306.1 | 234,306.1 | A013 | Z4 | CONS | RD | Subgrade | bef |

| ID | WBS | Activity | Duration | Start | Finish | Predecessors | Complete | Remaining | Planned start | Planned finish | Total float | Free float | Resources | Cost | Actual cost | RDH4-01-001-Road and Block Names-1 | RDH4-01-001-Zones-1 | RDH4-01-001-Phases-1 | RDH4-01-001-Networks-1 | RDH4-01-001-Work Method-1 | RDH4-01-001-MENEM |
| --- | --- | --- | --- | --- | --- | --- | --- | --- | --- | --- | --- | --- | --- | --- | --- | --- | --- | --- | --- | --- | --- |
|  | 3155 | **RHD4-02-002-A013-(RD)-Aggregate Base Course** |  | 2026-09-30 | 2026-10-27 |  |  |  |  |  |  |  |  |  |  |  |  |  |  |  |  |
| RHD4CZ4A013RD2100 |  | Supply, lay and compaction Aggregate base course compacted thickness 300 mmfor Roads - (RD-A-1 /3)-Z4-A013-RD | 5d | 2026-09-30 A | 2026-10-27 A | RHD4PRSHLDOSRD1000, RHD4PRSHLSTAGRD1000, RHD4CZ4A013RD1100 | 100% |  | 2026-08-24 | 2026-08-29 |  |  | Skilled labor [94.96 h]; Unskilled Labor [189.93 h]; Equipment Opreator [1202.29 h]; Water Truck [62.73 h]; Roller compactor [189.93 h]; Grader [189.93 h]; Dump Truck [759.71 h]; Aggregate Base Courses [7745.67 m3] | 441,503.19 | 441,503.19 | A013 | Z4 | CONS | RD | ABC | bef |
|  | 3156 | **RHD4-02-002-A013-(RD)-Bituminous base course Two Layers, including (MC1)&(RC2)** |  | 2026-10-14 | 2027-08-10 |  |  |  |  |  |  |  |  |  |  |  |  |  |  |  |  |
| RHD4CZ4A013RD3100 |  | Supply, lay and Asphaltic base course including Prime Coat (MC1) for 1st Layer - (RD-A-1 /3)-Z4-A013-RD | 10d | 2026-10-14 A | 2027-02-18 | RHD4CZ4A013RD2100, RHD4PRSHLDOSRD1100, RHD4ENMSASPH2000, RHD4ENMSASPH2010, RHD4PRSHLSTAGRD1100 | 82% | 4d | 2026-10-14 | 2026-10-25 | -147.02d | 3d | Skilled labor [100.52 h]; Unskilled Labor [603.33 h]; Equipment Opreator [1508.2 h]; Bobcat [100.52 h]; Roller compactor [100.52 h]; Asphalt Paver [100.52 h]; Rubber Compactor [201.14 h]; MC1/RC2 Sprinkler [100.52 h]; Dump Truck [904.99 h]; Bituminous base course (Grading I - Class A), including Prime coat (MC1) & tack coate (RC2) [3678.71 m3] | 1,758,423.38 | 1,433,994.27 | A013 | Z4 | CONS | RD | 150 mm | AFT |
| RHD4CZ4A013RD3200 |  | Supply, lay and Asphaltic base course including Tack Coat (RC2) for 2nd Layer - (RD-A-1 /3)-Z4-A013-RD | 10d | 2027-07-29 | 2027-08-10 | RHD4CZ4A013RD3100, RHD4PRSHLDOSRD1100, RHD4PRSHLSTAGRD1100, RHD4CZ4A013ICT2400 |  |  |  |  | -122.02d | 0d | Skilled labor [100.52 h]; Unskilled Labor [603.33 h]; Equipment Opreator [1508.2 h]; Bobcat [100.52 h]; Roller compactor [100.52 h]; Asphalt Paver [100.52 h]; Rubber Compactor [201.14 h]; MC1/RC2 Sprinkler [100.52 h]; Dump Truck [904.99 h]; Bituminous base course (Grading I - Class A), including Prime coat (MC1) & tack coate (RC2) [3678.71 m3] | 1,758,423.38 |  | A013 | Z4 | CONS | RD | 150 mm | AFT |
|  | 3158 | **RHD4-02-002-A013-(RD)-Precast Concrete Curb** |  | 2027-08-10 | 2027-08-19 |  |  |  |  |  |  |  |  |  |  |  |  |  |  |  |  |
| RHD4CZ4A013RD5100 |  | Supply and installation Precast Concrete Kerb for Roads - (RD-A-1 /3)-Z4-A013-RD | 8d | 2027-08-10 | 2027-08-19 | RHD4CZ4A013RD3200, RHD4PRSHLDOSRD1200, RHD4ENMSRD2000, RHD4ENMSRD2010, RHD4PRSHLSTAGRD1200 |  |  |  |  | -122.02d | 0d | Mason [742.94 h]; Skilled labor [247.65 h]; Unskilled Labor [742.94 h]; Equipment Opreator [495.29 h]; Bobcat [247.65 h]; Concrete Mixer Truck [247.65 h]; Precast Concrete Curbstone, type K1 [7597.57 m]; Precast Flush concrete Curbstone K3 [2635.8 m] | 562,835.57 |  | A013 | Z4 | CONS | RD | Curbs | AFT |
|  | 3161 | **RHD4-02-002-A013-(RD)-Traffic Signage** |  | 2027-10-02 | 2027-10-12 |  |  |  |  |  |  |  |  |  |  |  |  |  |  |  |  |
| RHD4CZ4A013RD8100 |  | Installation of Traffic Signage for Road Network - (RD-A-1 /3)-Z4-A013-RD | 9d | 2027-10-02 | 2027-10-12 | RHD4CZ4A013RD5100, RHD4PRSHLDOSRD1600, RHD4PRSHLSTAGRD1600, RHD4CZ4L01RD8100 |  |  |  |  | -158.02d | 39.98d | Skilled labor [196 h]; Unskilled Labor [98.01 h]; Electrician [50.1 h]; Equipment Opreator [39.64 h]; Boom Truck [19.6 h]; Concrete Mixer Truck [20 h]; Traffic signs, ground mounted, 1 Sheet Aluminium, (breakaway)Single post [43 nr]; Traffic signs, ground mounted, 1 Sheets Aluminium, (breakaway)Double post [1 nr] | 54,557 |  | A013 | Z4 | CONS | RD | Traffic Signage | AFT |
|  | 3159 | **RHD4-02-002-A013-(RD)-Precast Interlocking Block Pavers** |  |  |  |  |  |  |  |  |  |  |  |  |  |  |  |  |  |  |  |
|  | 3157 | **RHD4-02-002-A013-(RD)-Bituminous concrete wearing course including tack coat (RC2)** |  | 2027-08-19 | 2027-08-24 |  |  |  |  |  |  |  |  |  |  |  |  |  |  |  |  |
| RHD4CZ4A013RD4100 |  | Supply, lay and compaction Asphaltic wearing course including tack Coat (RC2)for Road Network - (RD-A-1 /3)-Z4-A013-RD | 4d | 2027-08-19 | 2027-08-24 | RHD4CZ4A013RD5100 |  |  |  |  | -121.02d | 76.98d | Skilled labor [38.88 h]; Unskilled Labor [233.05 h]; Equipment Opreator [582.74 h]; Bobcat [38.88 h]; Roller compactor [38.88 h]; Asphalt Paver [38.88 h]; Rubber Compactor [77.65 h]; MC1/RC2 Sprinkler [38.88 h]; Dump Truck [349.69 h]; Bituminous concrete wearing course, (Grading I - Class A), including tack coat (RC2) [1852.9 m3] | 1,006,124.7 |  | A013 | Z4 | CONS | RD | 50 mm | AFT |
|  | 3162 | **RHD4-02-002-A013-(RD)-Speed Table and Wheel Stopper** |  |  |  |  |  |  |  |  |  |  |  |  |  |  |  |  |  |  |  |
|  | 3160 | **RHD4-02-002-A013-(RD)-Pavement Marking** |  | 2028-01-31 | 2028-02-03 |  |  |  |  |  |  |  |  |  |  |  |  |  |  |  |  |
| RHD4CZ4A013RD7100 |  | Pavement Markings for Road Network - (RD-A-1 /3)-Z4-A013-RD | 3d | 2028-01-31 | 2028-02-03 | RHD4CZ4A013RD4100, RHD4PRSHLDOSRD1500, RHD4PRSHLSTAGRD1500, RHD4CZ6C062RD7100 |  |  |  |  | -156.02d | 0d | Skilled labor [31.58 h]; Unskilled Labor [63.27 h]; Equipment Opreator [31.58 h]; Road Marking Machine [31.58 h]; Retroreflective Thermoplastic White Traffic Markings [340.25 m2]; Retroreflective Thermoplastic Yellow, Traffic Markings [280 m2]; Retroreflective raised pavement markers (cat eyes) [146 nr] | 24,191.75 |  | A013 | Z4 | CONS | RD | Pavement Marking | AFT |
|  | 2978 | **RHD4-02-002-Z4-A013-Storm Network - ST** |  | 2026-08-04 | 2027-03-25 |  |  |  |  |  |  |  |  |  |  |  |  |  |  |  |  |
|  | 2428 | **RHD4-02-002-A013-(ST)-MH Works - 1200 mm diameter** |  | 2026-08-04 | 2027-02-18 |  |  |  |  |  |  |  |  |  |  |  |  |  |  |  |  |
| RHD4CZ4A013ST3100 |  | Excavation and PC Blinding works for MH 1200 mm - (RD-A-1 /3)-Z4-A013-ST | 2d | 2026-08-04 A | 2027-02-09 | RHD4CZ5L016ST1508 | 64% | 2d | 2026-08-11 | 2026-08-12 | -197.02d | 0d | Skilled labor [15.25 h]; Unskilled Labor [15.25 h]; Equipment Opreator [24.39 h]; Excavator-Poclain [15.25 h]; Water Truck [1.52 h]; Dump Truck [7.62 h]; MH (1200mm Diameter) - ST - depth less than 1.5 [0.5 nr]; MH (1200mm Diameter) - ST - depth 1.50 - 2.5m [0.75 nr] | 12,125.25 |  | A013 | Z4 | CONS | ST | Excavation | bef |
| RHD4CZ4A013ST3200 |  | Installation of Base for MH 1200 mm - (RD-A-1 /3)-Z4-A013-ST | 2d | 2026-09-05 A | 2027-02-11 | RHD4CZ4A013ST3100 | 64% | 2d | 2026-08-13 | 2026-08-15 | -157.02d | 0d | Skilled labor [16.34 h]; Unskilled Labor [16.34 h]; Equipment Opreator [6.53 h]; Boom Truck [3.27 h]; Concrete Mixer Truck [3.27 h]; MH (1200mm Diameter) - ST - depth less than 1.5 [0.5 nr]; MH (1200mm Diameter) - ST - depth 1.50 - 2.5m [0.75 nr] | 12,125.25 |  | A013 | Z4 | CONS | ST | Installing Base | bef |
| RHD4CZ4A013ST3300 |  | MH Ring and C.Slab works and Backfilling works for MH 1200 mm - (RD-A-1 /3)-Z4-A013-ST | 2d | 2026-09-07 A | 2027-02-14 | RHD4CZ4A013ST3200 | 64% | 2d | 2026-08-16 | 2026-08-17 | -157.02d | 0d | Skilled labor [16.34 h]; Unskilled Labor [16.34 h]; Equipment Opreator [11.43 h]; Boom Truck [6.53 h]; Concrete Mixer Truck [4.9 h]; MH (1200mm Diameter) - ST - depth less than 1.5 [0.7 nr]; MH (1200mm Diameter) - ST - depth 1.50 - 2.5m [1.05 nr] | 16,975.35 |  | A013 | Z4 | CONS | ST | Installing Rings | bef |
| RHD4CZ4A013ST3400 |  | Steel Cover for MH 1200 mm - (RD-A-1 /3)-Z4-A013-ST | 2d | 2027-02-14 | 2027-02-16 | RHD4CZ4A013ST3300 |  |  |  |  | -142.02d | 0d | Skilled labor [18.19 h]; Unskilled Labor [36.26 h]; Equipment Opreator [3.59 h]; Boom Truck [3.59 h]; MH (1200mm Diameter) - ST - depth less than 1.5 [0.1 nr]; MH (1200mm Diameter) - ST - depth 1.50 - 2.5m [0.15 nr] | 2,425.05 |  | A013 | Z4 | CONS | ST | Steel Cover | bef |
| RHD4CZ4A013ST3500 |  | Finishing, Benching, Testing works for MH 1200 mm - (RD-A-1 /3)-Z4-A013-ST | 2d | 2027-02-16 | 2027-02-18 | RHD4CZ4A013ST3400 |  |  |  |  | -142.02d | 0d | Skilled labor [15.25 h]; Unskilled Labor [30.49 h]; Plumber [15.25 h]; Equipment Opreator [3.05 h]; Water Truck [3.05 h]; MH (1200mm Diameter) - ST - depth less than 1.5 [0.2 nr]; MH (1200mm Diameter) - ST - depth 1.50 - 2.5m [0.3 nr] | 4,850.1 |  | A013 | Z4 | CONS | ST | Benching | bef |
|  | 2416 | **RHD4-02-002-A013-(ST)-GRP Pipes - 800 mm diameter** |  | 2026-08-26 | 2027-02-16 |  |  |  |  |  |  |  |  |  |  |  |  |  |  |  |  |
| RHD4CZ4A013ST1104 |  | Excavation works for GRP Pipe Line 800 mm - (RD-A-1 /3)-Z4-A013-ST | 3d | 2026-08-26 A | 2026-08-29 A | RHD4CZ4A013ST3100 | 100% |  | 2026-08-13 | 2026-08-16 |  |  | Skilled labor [32.13 h]; Unskilled Labor [32.13 h]; Equipment Opreator [38.55 h]; Excavator-Poclain [32.13 h]; Dump Truck [6.4 h]; GRP (800mm Diameter) - ST - Depth less than 1.5 m [19.7 m]; GRP (800mm Diameter) - ST - Depth: 1.51m - 2.5m [14.76 m]; GRP (800mm Diameter) - ST - Depth: 2.51m - 3.5m [29.52 m]; GRP (800mm Diameter) - ST - Depth: 3.51m - 4.5m [22.13 m] | 75,678.65 | 75,678.65 | A013 | Z4 | CONS | ST | Excavation | bef |
| RHD4CZ4A013ST1204 |  | Bedding works for GRP Pipe Line 800 mm - (RD-A-1 /3)-Z4-A013-ST | 3d | 2026-08-30 A | 2026-09-01 A | RHD4CZ4A013ST1104 | 100% |  | 2026-08-17 | 2026-08-19 |  |  | Skilled labor [32.13 h]; Unskilled Labor [64.36 h]; Equipment Opreator [64.36 h]; Excavator-Poclain [32.13 h]; Dump Truck [32.13 h]; GRP (800mm Diameter) - ST - Depth less than 1.5 m [9.85 m]; GRP (800mm Diameter) - ST - Depth: 1.51m - 2.5m [4.92 m]; GRP (800mm Diameter) - ST - Depth: 2.51m - 3.5m [9.84 m]; GRP (800mm Diameter) - ST - Depth: 3.51m - 4.5m [7.38 m] | 27,374.03 | 27,374.03 | A013 | Z4 | CONS | ST | Bedding | bef |
| RHD4CZ4A013ST1304 |  | Installing for GRP Pipe Line 800 mm - (RD-A-1 /3)-Z4-A013-ST | 2d | 2026-09-01 A | 2026-09-06 A | RHD4CZ4A013ST1204 | 100% |  | 2026-08-20 | 2026-08-22 |  |  | Unskilled Labor [40.08 h]; Plumber [20 h]; GRP (800mm Diameter) - ST - Depth less than 1.5 m [88.67 m]; GRP (800mm Diameter) - ST - Depth: 1.51m - 2.5m [39.35 m]; GRP (800mm Diameter) - ST - Depth: 2.51m - 3.5m [78.73 m]; GRP (800mm Diameter) - ST - Depth: 3.51m - 4.5m [59 m] | 225,394 | 225,394 | A013 | Z4 | CONS | ST | Installation | bef |
| RHD4CZ4A013ST1504 |  | Backfilling and warning tape works for GRP Pipe Line 800 mm - (RD-A-1 /3)-Z4-A013-ST | 3d | 2026-09-02 A | 2026-09-08 A | RHD4CZ4A013ST1404 | 100% |  | 2026-08-25 | 2026-08-27 |  |  | Skilled labor [32.13 h]; Unskilled Labor [64.36 h]; Equipment Opreator [64.36 h]; Excavator-Poclain [32.13 h]; Dump Truck [32.13 h]; GRP (800mm Diameter) - ST - Depth less than 1.5 m [39.41 m]; GRP (800mm Diameter) - ST - Depth: 1.51m - 2.5m [19.68 m]; GRP (800mm Diameter) - ST - Depth: 2.51m - 3.5m [39.36 m]; GRP (800mm Diameter) - ST - Depth: 3.51m - 4.5m [29.5 m] | 109,479.87 | 109,479.87 | A013 | Z4 | CONS | ST | Backfilling | bef |
| RHD4CZ4A013ST1404 |  | Primary Test for GRP Pipe Line 800 mm - (RD-A-1 /3)-Z4-A013-ST | 2d | 2027-02-14 | 2027-02-16 | RHD4CZ4A013ST3300, RHD4CZ4A013ST1304 |  |  |  |  | -150.02d | 0d | Unskilled Labor [16.8 h]; Plumber [16.8 h]; Equipment Opreator [16.8 h]; Water Truck [16.8 h]; GRP (800mm Diameter) - ST - Depth less than 1.5 m [39.41 m]; GRP (800mm Diameter) - ST - Depth: 1.51m - 2.5m [19.68 m]; GRP (800mm Diameter) - ST - Depth: 2.51m - 3.5m [39.36 m]; GRP (800mm Diameter) - ST - Depth: 3.51m - 4.5m [29.5 m] | 109,479.87 |  | A013 | Z4 | CONS | ST | Primary Test | bef |

| ID | WBS | Activity | Duration | Start | Finish | Predecessors | Complete | Planned start | Planned finish | Total float | Free float | Resources | Cost | Actual cost | RDH4-01-001-Road and Block Names-1 | RDH4-01-001-Zones-1 | RDH4-01-001-Phases-1 | RDH4-01-001-Networks-1 | RDH4-01-001-Work Method-1 | RDH4-01-001-MENEM |
| --- | --- | --- | --- | --- | --- | --- | --- | --- | --- | --- | --- | --- | --- | --- | --- | --- | --- | --- | --- | --- |
|  | 2414 | **RHD4-02-002-A013-(ST)-GRP Pipes - 600 mm diameter** |  | 2026-08-18 | 2027-02-11 |  |  |  |  |  |  |  |  |  |  |  |  |  |  |  |
| RHD4CZ4A013ST1102 |  | Excavation works for GRP Pipe Line 600 mm - (RD-A-1 /3)-Z4-A013-ST | 2d | 2026-08-18 A | 2026-08-19 A | RHD4CZ4A013ST1104 | 100% | 2026-08-17 | 2026-08-18 |  |  | Skilled labor [5.34 h]; Unskilled Labor [5.34 h]; Equipment Opreator [6.4 h]; Excavator-Poclain [5.34 h]; Dump Truck [1.09 h]; GRP (600mm Diameter) - ST - Depth less than 1.5 m [9.88 m]; GRP (600mm Diameter) - ST - Depth: 1.51m - 2.5m | 4,258 | 4,258 | A013 | Z4 | CONS | ST | Excavation | bef |
| RHD4CZ4A013ST1202 |  | Bedding works for GRP Pipe Line 600 mm - (RD-A-1 /3)-Z4-A013-ST | 2d | 2026-09-05 A | 2026-09-06 A | RHD4CZ4A013ST1102 | 100% | 2026-08-19 | 2026-08-20 |  |  | Skilled labor [5.34 h]; Unskilled Labor [10.78 h]; Equipment Opreator [10.78 h]; Excavator-Poclain [5.34 h]; Dump Truck [5.34 h]; GRP (600mm Diameter) - ST - Depth less than 1.5 m [4.94 m]; GRP (600mm Diameter) - ST - Depth: 1.51m - 2.5m | 2,129.14 | 2,129.14 | A013 | Z4 | CONS | ST | Bedding | bef |
| RHD4CZ4A013ST1302 |  | Installing for GRP Pipe Line 600 mm - (RD-A-1 /3)-Z4-A013-ST | 2d | 2026-09-06 A | 2026-09-07 A | RHD4CZ4A013ST1202 | 100% | 2026-08-22 | 2026-08-23 |  |  | Unskilled Labor [10.78 h]; Plumber [5.34 h]; GRP (600mm Diameter) - ST - Depth less than 1.5 m [44.48 m]; GRP (600mm Diameter) - ST - Depth: 1.51m - 2.5m | 19,170.88 | 19,170.88 | A013 | Z4 | CONS | ST | Installation | bef |
| RHD4CZ4A013ST1502 |  | Backfilling and warning tape works for GRP Pipe Line 600 mm - (RD-A-1 /3)-Z4-A013-ST | 2d | 2026-09-08 A | 2026-09-09 A | RHD4CZ4A013ST1402 | 100% | 2026-08-26 | 2026-08-27 |  |  | Skilled labor [5.34 h]; Unskilled Labor [10.78 h]; Equipment Opreator [10.78 h]; Excavator-Poclain [5.34 h]; Dump Truck [5.34 h]; GRP (600mm Diameter) - ST - Depth less than 1.5 m [19.77 m]; GRP (600mm Diameter) - ST - Depth: 1.51m - 2.5m | 8,520.87 | 8,520.87 | A013 | Z4 | CONS | ST | Backfilling | bef |
| RHD4CZ4A013ST1402 |  | Primary Test for GRP Pipe Line 600 mm - (RD-A-1 /3)-Z4-A013-ST | 2d | 2027-02-09 | 2027-02-11 | RHD4CZ4A013ST1302 |  |  |  | -146.02d | 0d | Unskilled Labor [5.34 h]; Plumber [5.34 h]; Equipment Opreator [5.34 h]; Water Truck [5.34 h]; GRP (600mm Diameter) - ST - Depth less than 1.5 m [19.77 m]; GRP (600mm Diameter) - ST - Depth: 1.51m - 2.5m | 8,520.87 |  | A013 | Z4 | CONS | ST | Primary Test | bef |
|  | 2412 | **RHD4-02-002-A013-(ST)-GRP Pipes - 400 mm diameter** |  | 2026-08-19 | 2027-02-11 |  |  |  |  |  |  |  |  |  |  |  |  |  |  |  |
| RHD4CZ4A013ST1100 |  | Excavation works for GRP Pipe Line 400 mm - (RD-A-1 /3)-Z4-A013-ST | 2d | 2026-08-19 A | 2026-08-20 A | RHD4CZ4A013ST1102 | 100% |  |  |  |  | Skilled labor [10.89 h]; Unskilled Labor [10.89 h]; Equipment Opreator [13.07 h]; Excavator-Poclain [10.89 h]; Dump Truck [2.18 h]; GRP (400mm Diameter) - ST - Depth less than 1.5 m [25.07 m] | 7,270.3 | 7,270.3 | A013 | Z4 | CONS | ST | Excavation | bef |
| RHD4CZ4A013ST1200 |  | Bedding works for GRP Pipe Line 400 mm - (RD-A-1 /3)-Z4-A013-ST | 2d | 2026-09-05 A | 2026-10-23 A | RHD4CZ4A013ST1100 | 100% | 2026-08-22 | 2026-08-23 |  |  | Skilled labor [9.15 h]; Unskilled Labor [18.19 h]; Equipment Opreator [18.19 h]; Excavator-Poclain [9.15 h]; Dump Truck [9.15 h]; GRP (400mm Diameter) - ST - Depth less than 1.5 m [12.54 m] | 3,636.6 | 3,636.6 | A013 | Z4 | CONS | ST | Bedding | bef |
| RHD4CZ4A013ST1300 |  | Installing for GRP Pipe Line 400 mm - (RD-A-1 /3)-Z4-A013-ST | 2d | 2026-09-07 A | 2026-10-24 A | RHD4CZ4A013ST1200 | 100% | 2026-08-24 | 2026-08-25 |  |  | Unskilled Labor [36.37 h]; Plumber [18.19 h]; GRP (400mm Diameter) - ST - Depth less than 1.5 m [112.82 m] | 32,717.8 | 32,717.8 | A013 | Z4 | CONS | ST | Installation | bef |
| RHD4CZ4A013ST1500 |  | Backfilling and warning tape works for GRP Pipe Line 400 mm - (RD-A-1 /3)-Z4-A013-ST | 2d | 2026-09-08 A | 2026-10-25 A | RHD4CZ4A013ST1504, RHD4CZ4A013ST1502, RHD4CZ4A013ST1400 | 100% | 2026-08-29 | 2026-08-30 |  |  | Skilled labor [13.6 h]; Unskilled Labor [27.33 h]; Equipment Opreator [27.33 h]; Excavator-Poclain [13.6 h]; Dump Truck [13.6 h]; GRP (400mm Diameter) - ST - Depth less than 1.5 m [50.14 m] | 14,540.6 | 14,540.6 | A013 | Z4 | CONS | ST | Backfilling | bef |
| RHD4CZ4A013ST1400 |  | Primary Test for GRP Pipe Line 400 mm - (RD-A-1 /3)-Z4-A013-ST | 2d | 2027-02-09 | 2027-02-11 | RHD4CZ4A013ST1300 |  |  |  | -146.02d | 4d | Unskilled Labor [5.45 h]; Plumber [5.45 h]; Equipment Opreator [5.45 h]; Water Truck [5.45 h]; GRP (400mm Diameter) - ST - Depth less than 1.5 m [50.14 m] | 14,540.6 |  | A013 | Z4 | CONS | ST | Primary Test | bef |
|  | 2413 | **RHD4-02-002-A013-(ST)-GRP Pipes - 500 mm diameter** |  | 2026-08-08 | 2027-02-11 |  |  |  |  |  |  |  |  |  |  |  |  |  |  |  |
| RHD4CZ4A013ST1101 |  | Excavation works for GRP Pipe Line 500 mm - (RD-A-1 /3)-Z4-A013-ST | 2d | 2026-08-08 A | 2026-08-09 A | RHD4CZ4A013ST1100 | 100% | 2026-08-22 | 2026-08-23 |  |  | Skilled labor [4.25 h]; Unskilled Labor [4.25 h]; Equipment Opreator [5.12 h]; Excavator-Poclain [4.25 h]; Dump Truck [0.87 h]; GRP (500mm Diameter) - ST - Depth less than 1.5 m [9.87 m] | 3,503.85 | 3,503.85 | A013 | Z4 | CONS | ST | Excavation | bef |
| RHD4CZ4A013ST1201 |  | Bedding works for GRP Pipe Line 500 mm - (RD-A-1 /3)-Z4-A013-ST | 2d | 2026-08-10 A | 2026-08-11 A | RHD4CZ4A013ST1101 | 100% | 2026-08-24 | 2026-08-25 |  |  | Skilled labor [3.59 h]; Unskilled Labor [7.2 h]; Equipment Opreator [7.2 h]; Excavator-Poclain [3.59 h]; Dump Truck [3.59 h]; GRP (500mm Diameter) - ST - Depth less than 1.5 m [4.93 m] | 1,750.15 | 1,750.15 | A013 | Z4 | CONS | ST | Bedding | bef |
| RHD4CZ4A013ST1301 |  | Installing for GRP Pipe Line 500 mm - (RD-A-1 /3)-Z4-A013-ST | 2d | 2026-08-13 A | 2026-08-15 A | RHD4CZ4A013ST1201 | 100% | 2026-08-26 | 2026-08-27 |  |  | Unskilled Labor [14.4 h]; Plumber [7.2 h]; GRP (500mm Diameter) - ST - Depth less than 1.5 m [44.4 m] | 15,762 | 15,762 | A013 | Z4 | CONS | ST | Installation | bef |
| RHD4CZ4A013ST1501 |  | Backfilling and warning tape works for GRP Pipe Line 500 mm - (RD-A-1 /3)-Z4-A013-ST | 2d | 2026-08-17 A | 2026-08-18 A | RHD4CZ4A013ST1500, RHD4CZ4A013ST1401 | 100% | 2026-08-31 | 2026-09-01 |  |  | Skilled labor [5.34 h]; Unskilled Labor [10.78 h]; Equipment Opreator [10.78 h]; Excavator-Poclain [5.34 h]; Dump Truck [5.34 h]; GRP (500mm Diameter) - ST - Depth less than 1.5 m [19.73 m] | 7,004.15 | 7,004.15 | A013 | Z4 | CONS | ST | Backfilling | bef |
| RHD4CZ4A013ST1401 |  | Primary Test for GRP Pipe Line 500 mm - (RD-A-1 /3)-Z4-A013-ST | 2d | 2027-02-09 | 2027-02-11 | RHD4CZ4A013ST1301 |  |  |  | -146.02d | 4d | Unskilled Labor [2.18 h]; Plumber [2.18 h]; Equipment Opreator [2.18 h]; Water Truck [2.18 h]; GRP (500mm Diameter) - ST - Depth less than 1.5 m [19.73 m] | 7,004.15 |  | A013 | Z4 | CONS | ST | Primary Test | bef |
|  | 2997 | **RHD4-02-002-A013-(ST)-MH Works - 2000 mm diameter** |  | 2026-08-06 | 2027-03-02 |  |  |  |  |  |  |  |  |  |  |  |  |  |  |  |
| RHD4CZ4A013ST3102 |  | Excavation and PC Blinding works for MH 2000 mm - (RD-A-1 /3)-Z4-A013-ST | 6d | 2026-08-06 A | 2026-09-04 A | RHD4ENSDZ4APPST110, RHD4ENMSST2000, RHD4CZ4A013ST1101 | 100% | 2026-08-24 | 2026-08-30 |  |  | Skilled labor [65.34 h]; Unskilled Labor [65.34 h]; Equipment Opreator [104.55 h]; Excavator-Poclain [65.34 h]; Water Truck [6.53 h]; Dump Truck [32.67 h]; MH (2000mm Diameter) - ST - depth 1.50 - 2.5m [0.25 nr]; MH (2000mm Diameter) - ST - depth 2.51 - 3.5m [1.25 nr]; MH (2000mm Diameter) - ST - depth 3.51 -4.5m [1.75 nr]; MH (2000mm Diameter) - ST - depth 4.51 -5.5m [0.25 nr] | 78,033.5 | 78,033.5 | A013 | Z4 | CONS | ST | Excavation | bef |
| RHD4CZ4A013ST3202 |  | Installation of Base for MH 2000 mm - (RD-A-1 /3)-Z4-A013-ST | 3d | 2026-09-19 A | 2026-10-24 A | RHD4CZ4A013ST3102, RHD4PRSHLSTAGST1603 | 100% | 2026-08-31 | 2026-09-02 |  |  | Skilled labor [79.83 h]; Unskilled Labor [79.83 h]; Equipment Opreator [31.91 h]; Boom Truck [16 h]; Concrete Mixer Truck [16 h]; MH (2000mm Diameter) - ST - depth 1.50 - 2.5m [0.25 nr]; MH (2000mm Diameter) - ST - depth 2.51 - 3.5m [1.25 nr]; MH (2000mm Diameter) - ST - depth 3.51 -4.5m [1.75 nr]; MH (2000mm Diameter) - ST - depth 4.51 -5.5m [0.25 nr] | 78,033.5 | 78,033.5 | A013 | Z4 | CONS | ST | Installing Base | bef |
| RHD4CZ4A013ST3302 |  | MH Ring and C.Slab works and Backfilling works for MH 2000 mm - (RD-A-1 /3)-Z4-A013-ST | 8d | 2026-10-05 A | 2026-10-25 A | RHD4CZ4A013ST3202, RHD4PRSHLDOSST1603, RHD4CZ4A013ST1501 | 100% | 2027-02-25 | 2027-03-06 |  |  | Skilled labor [79.83 h]; Unskilled Labor [79.83 h]; Equipment Opreator [55.87 h]; Boom Truck [31.91 h]; Concrete Mixer Truck [23.96 h]; MH (2000mm Diameter) - ST - depth 1.50 - 2.5m [0.35 nr]; MH (2000mm Diameter) - ST - depth 2.51 - 3.5m [1.75 nr]; MH (2000mm Diameter) - ST - depth 3.51 -4.5m [2.45 nr]; MH (2000mm Diameter) - ST - depth 4.51 -5.5m [0.35 nr] | 109,246.9 | 109,246.9 | A013 | Z4 | CONS | ST | Installing Rings | bef |
| RHD4CZ4A013ST3402 |  | Steel Cover for MH 2000 mm - (RD-A-1 /3)-Z4-A013-ST | 5d | 2027-02-16 | 2027-02-23 | RHD4CZ4A013ST3302, RHD4PRSHLDOSST1703, RHD4PRSHLSTAGST1703 |  |  |  | -150.02d | 0d | Skilled labor [50.86 h]; Unskilled Labor [101.6 h]; Equipment Opreator [10.13 h]; Boom Truck [10.13 h]; MH (2000mm Diameter) - ST - depth 1.50 - 2.5m [0.05 nr]; MH (2000mm Diameter) - ST - depth 2.51 - 3.5m [0.25 nr]; MH (2000mm Diameter) - ST - depth 3.51 -4.5m [0.35 nr]; MH (2000mm Diameter) - ST - depth 4.51 -5.5m [0.05 nr] | 15,606.7 |  | A013 | Z4 | CONS | ST | Steel Cover | bef |
| RHD4CZ4A013ST3502 |  | Finishing, Benching, Testing works for MH 2000 mm - (RD-A-1 /3)-Z4-A013-ST | 6d | 2027-02-23 | 2027-03-02 | RHD4CZ4A013ST3402, RHD4CZ4A013RD3100 |  |  |  | -150.02d | 0d | Skilled labor [65.34 h]; Unskilled Labor [130.68 h]; Plumber [65.34 h]; Equipment Opreator [13.07 h]; Water Truck [13.07 h]; MH (2000mm Diameter) - ST - depth 1.50 - 2.5m [0.1 nr]; MH (2000mm Diameter) - ST - depth 2.51 - 3.5m [0.5 nr]; MH (2000mm Diameter) - ST - depth 3.51 -4.5m [0.7 nr]; MH (2000mm Diameter) - ST - depth 4.51 -5.5m [0.1 nr] | 31,213.4 |  | A013 | Z4 | CONS | ST | Benching | bef |

| ID | WBS | Activity | Duration | Start | Finish | Predecessors | Complete | Remaining | Planned start | Planned finish | Total float | Free float | Resources | Cost | Actual cost | RDH4-01-001-Road and Block Names-1 | RDH4-01-001-Zones-1 | RDH4-01-001-Phases-1 | RDH4-01-001-Networks-1 | RDH4-01-001-Work Method-1 | RDH4-01-001-MENEM |
| --- | --- | --- | --- | --- | --- | --- | --- | --- | --- | --- | --- | --- | --- | --- | --- | --- | --- | --- | --- | --- | --- |
|  | 2996 | **RHD4-02-002-A013-(ST)-MH Works - 1500 mm diameter** |  | 2026-09-05 | 2027-03-16 |  |  |  |  |  |  |  |  |  |  |  |  |  |  |  |  |
| RHD4CZ4A013ST3101 |  | Excavation and PC Blinding works for MH 1500 mm - (RD-A-1 /3)-Z4-A013-ST | 3d | 2026-09-05 A | 2026-09-19 A | RHD4CZ4A013ST3102, RHD4ENSDZ4APPST110, RHD4ENMSST2000, RHD4CZ4A013ST3502 | 100% |  | 2026-09-27 | 2026-09-29 |  |  | Skilled labor [65.34 h]; Unskilled Labor [65.34 h]; Equipment Opreator [104.55 h]; Excavator-Poclain [65.34 h]; Water Truck [6.53 h]; Dump Truck [32.67 h]; MH (1500mm Diameter) - ST - depth 1.50 - 2.5m [1 nr]; MH (1500mm Diameter) - ST - depth 2.51 - 3.5m [0.5 nr]; MH (1500mm Diameter) - ST - depth 3.51 - 4.5m [0.75 nr] | 38,657.5 | 38,657.5 | A013 | Z4 | CONS | ST | Excavation | bef |
| RHD4CZ4A013ST3201 |  | Installation of Base for MH 1500 mm - (RD-A-1 /3)-Z4-A013-ST | 6d | 2026-09-06 A | 2026-09-22 A | RHD4CZ4A013ST3101, RHD4CZ4A013ST3202, RHD4PRSHLSTAGST1603 | 100% |  | 2026-09-30 | 2026-10-06 |  |  | Skilled labor [65.34 h]; Unskilled Labor [65.34 h]; Equipment Opreator [26.14 h]; Boom Truck [13.07 h]; Concrete Mixer Truck [13.07 h]; MH (1500mm Diameter) - ST - depth 1.50 - 2.5m [1 nr]; MH (1500mm Diameter) - ST - depth 2.51 - 3.5m [0.5 nr]; MH (1500mm Diameter) - ST - depth 3.51 - 4.5m [0.75 nr] | 38,657.5 | 38,657.5 | A013 | Z4 | CONS | ST | Installing Base | bef |
| RHD4CZ4A013ST3301 |  | MH Ring and C.Slab works and Backfilling works for MH 1500 mm - (RD-A-1 /3)-Z4-A013-ST | 6d | 2026-10-01 A | 2026-10-24 A | RHD4CZ4A013ST3201, RHD4CZ4A013ST3302, RHD4PRSHLDOSST1603 | 100% |  | 2027-03-23 | 2027-03-29 |  |  | Skilled labor [65.34 h]; Unskilled Labor [65.34 h]; Equipment Opreator [45.74 h]; Boom Truck [26.14 h]; Concrete Mixer Truck [19.6 h]; MH (1500mm Diameter) - ST - depth 1.50 - 2.5m [1.4 nr]; MH (1500mm Diameter) - ST - depth 2.51 - 3.5m [0.7 nr]; MH (1500mm Diameter) - ST - depth 3.51 - 4.5m [1.05 nr] | 54,120.5 | 54,120.5 | A013 | Z4 | CONS | ST | Installing Rings | bef |
| RHD4CZ4A013ST3401 |  | Steel Cover for MH 1500 mm - (RD-A-1 /3)-Z4-A013-ST | 3d | 2027-03-02 | 2027-03-06 | RHD4CZ4A013ST3301, RHD4PRSHLDOSST1703, RHD4PRSHLSTAGST1703 |  |  |  |  | -113.02d | 0d | Skilled labor [32.67 h]; Unskilled Labor [65.34 h]; Equipment Opreator [6.53 h]; Boom Truck [6.53 h]; MH (1500mm Diameter) - ST - depth 1.50 - 2.5m [0.2 nr]; MH (1500mm Diameter) - ST - depth 2.51 - 3.5m [0.1 nr]; MH (1500mm Diameter) - ST - depth 3.51 - 4.5m [0.15 nr] | 7,731.5 |  | A013 | Z4 | CONS | ST | Steel Cover | bef |
| RHD4CZ4A013ST3501 |  | Finishing, Benching, Testing works for MH 1500 mm - (RD-A-1 /3)-Z4-A013-ST | 6d | 2027-03-06 | 2027-03-16 | RHD4CZ4A013ST3401, RHD4CZ4A013ST3502 |  |  |  |  | -113.02d | 32.98d | Skilled labor [65.34 h]; Unskilled Labor [130.68 h]; Plumber [65.34 h]; Equipment Opreator [13.07 h]; Water Truck [13.07 h]; MH (1500mm Diameter) - ST - depth 1.50 - 2.5m [0.4 nr]; MH (1500mm Diameter) - ST - depth 2.51 - 3.5m [0.2 nr]; MH (1500mm Diameter) - ST - depth 3.51 - 4.5m [0.3 nr] | 15,463 |  | A013 | Z4 | CONS | ST | Benching | bef |
|  | 2990 | **RHD4-02-002-A013-(ST)-GRP Pipes - 1500 mm diameter** |  |  |  |  |  |  |  |  |  |  |  |  |  |  |  |  |  |  |  |
|  | 2987 | **RHD4-02-002-A013-(ST)-GRP Pipes - 1200 mm diameter** |  | 2026-08-04 | 2027-03-06 |  |  |  |  |  |  |  |  |  |  |  |  |  |  |  |  |
| RHD4CZ4A013ST1108 |  | Excavation works for GRP Pipe Line 1200 mm - (RD-A-1 /3)-Z4-A013-ST | 4d | 2026-08-04 A | 2026-09-05 A | RHD4ENSDZ4APPST110, RHD4PRSHLSTAGST1003, RHD4CZ4A013ST3301 | 100% |  | 2026-10-14 | 2026-10-18 |  |  | Skilled labor [43.2 h]; Unskilled Labor [43.2 h]; Equipment Opreator [51.95 h]; Excavator-Poclain [43.2 h]; Dump Truck [8.6 h]; GRP (1200mm Diameter) - ST - Depth: 2.51m - 3.5m [89.39 m]; GRP (1200mm Diameter) - ST - Depth: 3.51m - 4.5m | 127,023.19 | 127,023.19 | A013 | Z4 | CONS | ST | Excavation | bef |
| RHD4CZ4A013ST1208 |  | Bedding works for GRP Pipe Line 1200 mm - (RD-A-1 /3)-Z4-A013-ST | 4d | 2026-08-09 A | 2026-09-06 A | RHD4CZ4A013ST1108 | 100% |  | 2026-10-19 | 2026-10-22 |  |  | Skilled labor [43.2 h]; Unskilled Labor [86.58 h]; Equipment Opreator [86.58 h]; Excavator-Poclain [43.2 h]; Dump Truck [43.2 h]; GRP (1200mm Diameter) - ST - Depth: 2.51m - 3.5m [29.8 m]; GRP (1200mm Diameter) - ST - Depth: 3.51m - 4.5m | 42,345.8 | 42,345.8 | A013 | Z4 | CONS | ST | Bedding | bef |
| RHD4CZ4A013ST1308 |  | Installing for GRP Pipe Line 1200 mm - (RD-A-1 /3)-Z4-A013-ST | 3d | 2026-08-13 A | 2026-09-08 A | RHD4CZ4A013ST1208, RHD4PRSHLSTAGST1003, RHD4PRSHLDOSST1603, RHD4PRSHLPOST1000, RHD4PRSHLDOSST1003 | 100% |  | 2026-10-24 | 2026-10-26 |  |  | Unskilled Labor [51.95 h]; Plumber [25.92 h]; GRP (1200mm Diameter) - ST - Depth: 2.51m - 3.5m [238.37 m]; GRP (1200mm Diameter) - ST - Depth: 3.51m - 4.5m | 338,723.77 | 338,723.77 | A013 | Z4 | CONS | ST | Installation | bef |
| RHD4CZ4A013ST1508 |  | Backfilling and warning tape works for GRP Pipe Line 1200 mm - (RD-A-1 /3)-Z4-A013-ST | 4d | 2026-08-15 A | 2026-10-22 A | RHD4CZ4A013ST1408 | 100% |  | 2026-10-31 | 2026-11-03 |  |  | Skilled labor [43.2 h]; Unskilled Labor [86.58 h]; Equipment Opreator [86.58 h]; Excavator-Poclain [43.2 h]; Dump Truck [43.2 h]; GRP (1200mm Diameter) - ST - Depth: 2.51m - 3.5m [119.19 m]; GRP (1200mm Diameter) - ST - Depth: 3.51m - 4.5m | 169,368.99 | 169,368.99 | A013 | Z4 | CONS | ST | Backfilling | bef |
| RHD4CZ4A013ST1408 |  | Primary Test for GRP Pipe Line 1200 mm - (RD-A-1 /3)-Z4-A013-ST | 3d | 2027-03-02 | 2027-03-06 | RHD4CZ4A013ST1308 |  |  |  |  | -150.02d | 0d | Unskilled Labor [22.98 h]; Plumber [22.98 h]; Equipment Opreator [22.98 h]; Water Truck [22.98 h]; GRP (1200mm Diameter) - ST - Depth: 2.51m - 3.5m [119.19 m]; GRP (1200mm Diameter) - ST - Depth: 3.51m - 4.5m | 169,368.99 |  | A013 | Z4 | CONS | ST | Primary Test | bef |
|  | 2986 | **RHD4-02-002-A013-(ST)-GRP Pipes - 1100 mm diameter** |  | 2026-08-11 | 2027-03-08 |  |  |  |  |  |  |  |  |  |  |  |  |  |  |  |  |
| RHD4CZ4A013ST1107 |  | Excavation works for GRP Pipe Line 1100 mm - (RD-A-1 /3)-Z4-A013-ST | 3d | 2026-08-11 A | 2026-08-13 A | RHD4ENSDZ4APPST110, RHD4CZ4A013ST1508 | 100% |  | 2026-11-04 | 2026-11-07 |  |  | Skilled labor [26.68 h]; Unskilled Labor [26.68 h]; Equipment Opreator [32 h]; Excavator-Poclain [26.68 h]; Dump Truck [5.34 h]; GRP (1100mm Diameter) - ST - Depth: 1.51m - 2.5m [14.59 m]; GRP (1100mm Diameter) - ST - Depth: 2.51m - 3.5m [29.88 m]; GRP (1100mm Diameter) - ST - Depth: 3.51m - 4.5m [29.32 m] | 101,888.93 | 101,888.93 | A013 | Z4 | CONS | ST | Excavation | bef |
| RHD4CZ4A013ST1207 |  | Bedding works for GRP Pipe Line 1100 mm - (RD-A-1 /3)-Z4-A013-ST | 3d | 2026-08-13 A | 2026-08-16 A | RHD4CZ4A013ST1107 | 100% |  | 2026-11-08 | 2026-11-10 |  |  | Skilled labor [26.68 h]; Unskilled Labor [53.36 h]; Equipment Opreator [53.36 h]; Excavator-Poclain [26.68 h]; Dump Truck [26.68 h]; GRP (1100mm Diameter) - ST - Depth: 1.51m - 2.5m [4.86 m]; GRP (1100mm Diameter) - ST - Depth: 2.51m - 3.5m [9.96 m]; GRP (1100mm Diameter) - ST - Depth: 3.51m - 4.5m [9.77 m] | 33,957.9 | 33,957.9 | A013 | Z4 | CONS | ST | Bedding | bef |
| RHD4CZ4A013ST1307 |  | Installing for GRP Pipe Line 1100 mm - (RD-A-1 /3)-Z4-A013-ST | 2d | 2026-08-15 A | 2026-10-22 A | RHD4CZ4A013ST1207, RHD4CZ4A013ST1308, RHD4PRSHLSTAGST1003, RHD4PRSHLDOSST1603, RHD4PRSHLPOST1000, RHD4PRSHLDOSST1003 | 100% |  | 2026-11-11 | 2026-11-12 |  |  | Unskilled Labor [32.67 h]; Plumber [16.34 h]; GRP (1100mm Diameter) - ST - Depth: 1.51m - 2.5m [38.9 m]; GRP (1100mm Diameter) - ST - Depth: 2.51m - 3.5m [79.68 m]; GRP (1100mm Diameter) - ST - Depth: 3.51m - 4.5m [78.2 m] | 271,724.16 | 271,724.16 | A013 | Z4 | CONS | ST | Installation | bef |
| RHD4CZ4A013ST1507 |  | Backfilling and warning tape works for GRP Pipe Line 1100 mm - (RD-A-1 /3)-Z4-A013-ST | 3d | 2026-10-24 A | 2026-10-26 A | RHD4CZ4A013ST1407, RHD4CZ4A013ST1508 | 100% |  | 2027-04-12 | 2027-04-14 |  |  | Skilled labor [26.68 h]; Unskilled Labor [53.36 h]; Equipment Opreator [53.36 h]; Excavator-Poclain [26.68 h]; Dump Truck [26.68 h]; GRP (1100mm Diameter) - ST - Depth: 1.51m - 2.5m [19.45 m]; GRP (1100mm Diameter) - ST - Depth: 2.51m - 3.5m [39.84 m]; GRP (1100mm Diameter) - ST - Depth: 3.51m - 4.5m [39.1 m] | 135,862.08 | 135,862.08 | A013 | Z4 | CONS | ST | Backfilling | bef |
| RHD4CZ4A013ST1407 |  | Primary Test for GRP Pipe Line 1100 mm - (RD-A-1 /3)-Z4-A013-ST | 2d | 2027-03-06 | 2027-03-08 | RHD4CZ4A013ST1307, RHD4CZ4A013ST1408 |  |  |  |  | -113.02d | 0d | Unskilled Labor [14.81 h]; Plumber [14.81 h]; Equipment Opreator [14.81 h]; Water Truck [14.81 h]; GRP (1100mm Diameter) - ST - Depth: 1.51m - 2.5m [19.45 m]; GRP (1100mm Diameter) - ST - Depth: 2.51m - 3.5m [39.84 m]; GRP (1100mm Diameter) - ST - Depth: 3.51m - 4.5m [39.1 m] | 135,862.08 |  | A013 | Z4 | CONS | ST | Primary Test | bef |
|  | 2985 | **RHD4-02-002-A013-(ST)-GRP Pipes - 1000 mm diameter** |  | 2026-10-22 | 2027-03-24 |  |  |  |  |  |  |  |  |  |  |  |  |  |  |  |  |
| RHD4CZ4A013ST1106 |  | Excavation works for GRP Pipe Line 1000 mm - (RD-A-1 /3)-Z4-A013-ST | 3d | 2026-10-22 A | 2027-03-13 | RHD4ENSDZ4APPST110, RHD4CZ4A013ST1107 | 29% | 3d | 2027-04-07 | 2027-04-10 | -150.02d | 0d | Skilled labor [24.29 h]; Unskilled Labor [24.29 h]; Equipment Opreator [29.19 h]; Excavator-Poclain [24.29 h]; Dump Truck [4.9 h]; GRP (1000mm Diameter) - ST - Depth: 1.51m - 2.5m [29.39 m]; GRP (1000mm Diameter) - ST - Depth: 2.51m - 3.5m [20.86 m] | 52,036.68 |  | A013 | Z4 | CONS | ST | Excavation | bef |
| RHD4CZ4A013ST1206 |  | Bedding works for GRP Pipe Line 1000 mm - (RD-A-1 /3)-Z4-A013-ST | 3d | 2026-10-24 A | 2027-03-16 | RHD4CZ4A013ST1106 | 29% | 3d | 2027-04-11 | 2027-04-13 | -119.02d | 0d | Skilled labor [24.29 h]; Unskilled Labor [48.68 h]; Equipment Opreator [48.68 h]; Excavator-Poclain [24.29 h]; Dump Truck [24.29 h]; GRP (1000mm Diameter) - ST - Depth: 1.51m - 2.5m [9.8 m]; GRP (1000mm Diameter) - ST - Depth: 2.51m - 3.5m [6.95 m] | 17,344.6 |  | A013 | Z4 | CONS | ST | Bedding | bef |
| RHD4CZ4A013ST1306 |  | Installing for GRP Pipe Line 1000 mm - (RD-A-1 /3)-Z4-A013-ST | 2d | 2026-10-25 A | 2027-03-18 | RHD4CZ4A013ST1206, RHD4CZ4A013ST1307, RHD4PRSHLSTAGST1003, RHD4PRSHLDOSST1603, RHD4PRSHLPOST1000, RHD4PRSHLDOSST1003 | 29% | 2d | 2027-04-14 | 2027-04-15 | -119.02d | 0d | Unskilled Labor [29.19 h]; Plumber [14.59 h]; GRP (1000mm Diameter) - ST - Depth: 1.51m - 2.5m [78.37 m]; GRP (1000mm Diameter) - ST - Depth: 2.51m - 3.5m [55.62 m] | 138,753.4 |  | A013 | Z4 | CONS | ST | Installation | bef |
| RHD4CZ4A013ST1506 |  | Backfilling and warning tape works for GRP Pipe Line 1000 mm - (RD-A-1 /3)-Z4-A013-ST | 3d | 2026-10-27 A | 2027-03-24 | RHD4CZ4A013ST1406, RHD4CZ4A013ST1507 | 29% | 3d | 2027-04-19 | 2027-04-21 | -118.02d | 0d | Skilled labor [24.29 h]; Unskilled Labor [48.68 h]; Equipment Opreator [48.68 h]; Excavator-Poclain [24.29 h]; Dump Truck [24.29 h]; GRP (1000mm Diameter) - ST - Depth: 1.51m - 2.5m [39.19 m]; GRP (1000mm Diameter) - ST - Depth: 2.51m - 3.5m [27.81 m] | 69,381.28 |  | A013 | Z4 | CONS | ST | Backfilling | bef |
| RHD4CZ4A013ST1406 |  | Primary Test for GRP Pipe Line 1000 mm - (RD-A-1 /3)-Z4-A013-ST | 2d | 2027-03-18 | 2027-03-21 | RHD4CZ4A013ST1306, RHD4CZ4A013ST1407 |  |  |  |  | -119.02d | 0d | Unskilled Labor [12.2 h]; Plumber [12.2 h]; Equipment Opreator [12.2 h]; Water Truck [12.2 h]; GRP (1000mm Diameter) - ST - Depth: 1.51m - 2.5m [39.19 m]; GRP (1000mm Diameter) - ST - Depth: 2.51m - 3.5m [27.81 m] | 69,381.28 |  | A013 | Z4 | CONS | ST | Primary Test | bef |

| ID | WBS | Activity | Duration | Start | Finish | Predecessors | Complete | Remaining | Planned start | Planned finish | Total float | Free float | Resources | Cost | Actual cost | RDH4-01-001-Road and Block Names-1 | RDH4-01-001-Zones-1 | RDH4-01-001-Phases-1 | RDH4-01-001-Networks-1 | RDH4-01-001-Work Method-1 | RDH4-01-001-MENEM |
| --- | --- | --- | --- | --- | --- | --- | --- | --- | --- | --- | --- | --- | --- | --- | --- | --- | --- | --- | --- | --- | --- |
|  | 2984 | **RHD4-02-002-A013-(ST)-GRP Pipes - 900 mm diameter** |  | 2026-08-19 | 2027-03-23 |  |  |  |  |  |  |  |  |  |  |  |  |  |  |  |  |
| RHD4CZ4A013ST1105 |  | Excavation works for GRP Pipe Line 900 mm - (RD-A-1 /3)-Z4-A013-ST | 2d | 2026-08-19 A | 2026-08-20 A | RHD4CZ4A013ST1106, RHD4ENSDZ4APPST110 | 100% |  | 2026-11-11 | 2026-11-12 |  |  | Skilled labor [17.86 h]; Unskilled Labor [17.86 h]; Equipment Opreator [21.45 h]; Excavator-Poclain [17.86 h]; Dump Truck [3.59 h]; GRP (900mm Diameter) - ST - Depth less than 1.5 m [9.83 m]; GRP (900mm Diameter) - ST - Depth: 1.51m - 2.5m [29.47 m]; GRP (900mm Diameter) - ST - Depth: 2.51m - 3.5m | 30,850.26 | 30,850.26 | A013 | Z4 | CONS | ST | Excavation | bef |
| RHD4CZ4A013ST1205 |  | Bedding works for GRP Pipe Line 900 mm - (RD-A-1 /3)-Z4-A013-ST | 2d | 2026-08-22 A | 2026-08-23 A | RHD4CZ4A013ST1105 | 100% |  | 2026-11-14 | 2026-11-15 |  |  | Skilled labor [17.86 h]; Unskilled Labor [35.72 h]; Equipment Opreator [35.72 h]; Excavator-Poclain [17.86 h]; Dump Truck [17.86 h]; GRP (900mm Diameter) - ST - Depth less than 1.5 m [4.92 m]; GRP (900mm Diameter) - ST - Depth: 1.51m - 2.5m [9.82 m]; GRP (900mm Diameter) - ST - Depth: 2.51m - 3.5m | 11,511.62 | 11,511.62 | A013 | Z4 | CONS | ST | Bedding | bef |
| RHD4CZ4A013ST1305 |  | Installing for GRP Pipe Line 900 mm - (RD-A-1 /3)-Z4-A013-ST | 2d | 2026-08-24 A | 2026-09-05 A | RHD4CZ4A013ST1205, RHD4CZ4A013ST1306, RHD4PRSHLSTAGST1003, RHD4PRSHLDOSST1603, RHD4PRSHLPOST1000, RHD4PRSHLDOSST1003 | 100% |  | 2026-11-17 | 2026-11-18 |  |  | Unskilled Labor [22.87 h]; Plumber [11.43 h]; GRP (900mm Diameter) - ST - Depth less than 1.5 m [44.25 m]; GRP (900mm Diameter) - ST - Depth: 1.51m - 2.5m [78.59 m]; GRP (900mm Diameter) - ST - Depth: 2.51m - 3.5m | 95,779.48 | 95,779.48 | A013 | Z4 | CONS | ST | Installation | bef |
| RHD4CZ4A013ST1505 |  | Backfilling and warning tape works for GRP Pipe Line 900 mm - (RD-A-1 /3)-Z4-A013-ST | 2d | 2026-08-26 A | 2026-09-07 A | RHD4CZ4A013ST1405, RHD4CZ4A013ST1506 | 100% |  | 2026-11-23 | 2026-11-24 |  |  | Skilled labor [17.86 h]; Unskilled Labor [35.72 h]; Equipment Opreator [35.72 h]; Excavator-Poclain [17.86 h]; Dump Truck [17.86 h]; GRP (900mm Diameter) - ST - Depth less than 1.5 m [19.67 m]; GRP (900mm Diameter) - ST - Depth: 1.51m - 2.5m [39.29 m]; GRP (900mm Diameter) - ST - Depth: 2.51m - 3.5m | 46,046.96 | 46,046.96 | A013 | Z4 | CONS | ST | Backfilling | bef |
| RHD4CZ4A013ST1405 |  | Primary Test for GRP Pipe Line 900 mm - (RD-A-1 /3)-Z4-A013-ST | 2d | 2027-03-21 | 2027-03-23 | RHD4CZ4A013ST1305, RHD4CZ4A013ST1406 |  |  |  |  | -119.02d | 0d | Unskilled Labor [8.93 h]; Plumber [8.93 h]; Equipment Opreator [8.93 h]; Water Truck [8.93 h]; GRP (900mm Diameter) - ST - Depth less than 1.5 m [19.67 m]; GRP (900mm Diameter) - ST - Depth: 1.51m - 2.5m [39.29 m]; GRP (900mm Diameter) - ST - Depth: 2.51m - 3.5m | 46,046.96 |  | A013 | Z4 | CONS | ST | Primary Test | bef |
|  | 2982 | **RHD4-02-002-A013-(ST)-GRP Pipes - 700 mm diameter** |  | 2026-08-18 | 2027-03-25 |  |  |  |  |  |  |  |  |  |  |  |  |  |  |  |  |
| RHD4CZ4A013ST1103 |  | Excavation works for GRP Pipe Line 700 mm - (RD-A-1 /3)-Z4-A013-ST | 2d | 2026-08-18 A | 2026-08-19 A | RHD4CZ4A013ST1105, RHD4ENSDZ4APPST110 | 100% |  | 2026-11-14 | 2026-11-15 |  |  | Skilled labor [3.16 h]; Unskilled Labor [3.16 h]; Equipment Opreator [3.81 h]; Excavator-Poclain [3.16 h]; Dump Truck [0.65 h]; GRP (700mm Diameter) - ST - Depth less than 1.5 m [5.89 m]; GRP (700mm Diameter) - ST - Depth: 1.51m - 2.5m | 3,263.06 | 3,263.06 | A013 | Z4 | CONS | ST | Excavation | bef |
| RHD4CZ4A013ST1203 |  | Bedding works for GRP Pipe Line 700 mm - (RD-A-1 /3)-Z4-A013-ST | 2d | 2026-08-20 A | 2026-08-22 A | RHD4CZ4A013ST1103 | 100% |  | 2026-11-16 | 2026-11-17 |  |  | Skilled labor [3.16 h]; Unskilled Labor [6.4 h]; Equipment Opreator [6.4 h]; Excavator-Poclain [3.16 h]; Dump Truck [3.16 h]; GRP (700mm Diameter) - ST - Depth less than 1.5 m [2.95 m]; GRP (700mm Diameter) - ST - Depth: 1.51m - 2.5m | 1,634.3 | 1,634.3 | A013 | Z4 | CONS | ST | Bedding | bef |
| RHD4CZ4A013ST1303 |  | Installing for GRP Pipe Line 700 mm - (RD-A-1 /3)-Z4-A013-ST | 2d | 2026-08-23 A | 2026-08-24 A | RHD4CZ4A013ST1203, RHD4CZ4A013ST1305, RHD4PRSHLSTAGST1003, RHD4PRSHLDOSST1603, RHD4PRSHLPOST1000, RHD4PRSHLDOSST1003 | 100% |  | 2026-11-19 | 2026-11-21 |  |  | Unskilled Labor [3.16 h]; Plumber [1.6 h]; GRP (700mm Diameter) - ST - Depth less than 1.5 m [26.51 m]; GRP (700mm Diameter) - ST - Depth: 1.51m - 2.5m | 14,686.54 | 14,686.54 | A013 | Z4 | CONS | ST | Installation | bef |
| RHD4CZ4A013ST1503 |  | Backfilling and warning tape works for GRP Pipe Line 700 mm - (RD-A-1 /3)-Z4-A013-ST | 2d | 2026-09-05 A | 2026-09-06 A | RHD4CZ4A013ST1403, RHD4CZ4A013ST1505, RHD4CZ4A013ST3500 | 100% |  | 2026-11-25 | 2026-11-26 |  |  | Skilled labor [3.16 h]; Unskilled Labor [6.4 h]; Equipment Opreator [6.4 h]; Excavator-Poclain [3.16 h]; Dump Truck [3.16 h]; GRP (700mm Diameter) - ST - Depth less than 1.5 m [11.78 m]; GRP (700mm Diameter) - ST - Depth: 1.51m - 2.5m | 6,526.12 | 6,526.12 | A013 | Z4 | CONS | ST | Backfilling | bef |
| RHD4CZ4A013ST1403 |  | Primary Test for GRP Pipe Line 700 mm - (RD-A-1 /3)-Z4-A013-ST | 2d | 2027-03-23 | 2027-03-25 | RHD4CZ4A013ST1303, RHD4CZ4A013ST1405 |  |  |  |  | -119.02d | 0d | Unskilled Labor [1.6 h]; Plumber [1.6 h]; Equipment Opreator [1.6 h]; Water Truck [1.6 h]; GRP (700mm Diameter) - ST - Depth less than 1.5 m [11.78 m]; GRP (700mm Diameter) - ST - Depth: 1.51m - 2.5m | 6,526.12 |  | A013 | Z4 | CONS | ST | Primary Test | bef |
|  | 2994 | **RHD4-02-002-A013-(ST)-UPVC Pipes - 400 mm diameter** |  |  |  |  |  |  |  |  |  |  |  |  |  |  |  |  |  |  |  |
|  | 2993 | **RHD4-02-002-A013-(ST)-UPVC Pipes - 300 mm diameter** |  | 2026-08-04 | 2027-03-21 |  |  |  |  |  |  |  |  |  |  |  |  |  |  |  |  |
| RHD4CZ4A013ST2100 |  | Excavation works for UPVC Pipe Line 300 mm - (RD-A-1 /3)-Z4-A013-ST | 8d | 2026-08-04 A | 2026-09-05 A | RHD4ENSDZ4APPST110, RHD4CZ4A013ST1103 | 100% |  | 2026-11-16 | 2026-11-24 |  |  | Skilled labor [80.92 h]; Unskilled Labor [80.92 h]; Equipment Opreator [97.03 h]; Excavator-Poclain [80.92 h]; Dump Truck [16.23 h]; UPVC (300mm Diameter) - ST - Depth less than 1.5 [176.69 m]; UPVC (300mm Diameter) - ST - Depth: 1.51m - 2.5m | 53,537.07 | 53,537.07 | A013 | Z4 | CONS | ST | Excavation | bef |
| RHD4CZ4A013ST2200 |  | Bedding works for UPVC Pipe Line 300 mm - (RD-A-1 /3)-Z4-A013-ST | 7d | 2026-08-06 A | 2026-09-07 A | RHD4CZ4A013ST2100 | 100% |  | 2026-11-25 | 2026-12-02 |  |  | Skilled labor [70.68 h]; Unskilled Labor [141.36 h]; Equipment Opreator [141.36 h]; Excavator-Poclain [70.68 h]; Dump Truck [70.68 h]; UPVC (300mm Diameter) - ST - Depth less than 1.5 [88.35 m]; UPVC (300mm Diameter) - ST - Depth: 1.51m - 2.5m | 26,770.05 | 26,770.05 | A013 | Z4 | CONS | ST | Bedding | bef |
| RHD4CZ4A013ST2300 |  | Installing for UPVC Pipe Line 300 mm - (RD-A-1 /3)-Z4-A013-ST | 8d | 2026-08-10 A | 2026-10-24 A | RHD4CZ4A013ST2200, RHD4PRSHLDOSST1103, RHD4PRSHLSTAGST1103 | 100% |  | 2026-12-03 | 2026-12-12 |  |  | Unskilled Labor [161.83 h]; Plumber [80.92 h]; UPVC (300mm Diameter) - ST - Depth less than 1.5 [795.11 m]; UPVC (300mm Diameter) - ST - Depth: 1.51m - 2.5m | 240,918.33 | 240,918.33 | A013 | Z4 | CONS | ST | Installation | bef |
| RHD4CZ4A013ST2500 |  | Backfilling and warning tape works for UPVC Pipe Line 300 mm - (RD-A-1 /3)-Z4-A013-ST | 9d | 2026-09-19 A | 2026-10-25 A | RHD4CZ4A013ST2400 | 100% |  | 2026-12-19 | 2026-12-28 |  |  | Skilled labor [96.16 h]; Unskilled Labor [192.43 h]; Equipment Opreator [192.43 h]; Excavator-Poclain [96.16 h]; Dump Truck [96.16 h]; UPVC (300mm Diameter) - ST - Depth less than 1.5 [353.38 m]; UPVC (300mm Diameter) - ST - Depth: 1.51m - 2.5m | 107,074.14 | 107,074.14 | A013 | Z4 | CONS | ST | Backfilling | bef |
| RHD4CZ4A013ST2400 |  | Primary Test for UPVC Pipe Line 300 mm - (RD-A-1 /3)-Z4-A013-ST | 5d | 2027-03-15 | 2027-03-21 | RHD4CZ4A013ST2300, RHD4CZ4A013ST6100 |  |  |  |  | -88.02d | 0d | Unskilled Labor [50.31 h]; Plumber [50.31 h]; Equipment Opreator [50.31 h]; Water Truck [50.31 h]; UPVC (300mm Diameter) - ST - Depth less than 1.5 [353.38 m]; UPVC (300mm Diameter) - ST - Depth: 1.51m - 2.5m | 107,074.14 |  | A013 | Z4 | CONS | ST | Primary Test | bef |
|  | 3001 | **RHD4-02-002-A013-(ST)-Concrete Encasement** |  | 2026-09-05 | 2027-03-15 |  |  |  |  |  |  |  |  |  |  |  |  |  |  |  |  |
| RHD4CZ4A013ST6100 |  | Pipe Encasement for Storm Pipelines - (RD-A-1 /3)-Z4-A013-ST | 2d | 2026-09-05 A | 2027-03-15 | RHD4CZ4A013ST2300 FF, RHD4CZ4A013ST2200 | 50% | 2d | 2026-12-10 | 2026-12-12 | -150.02d | 0d | Skilled labor [10.78 h]; Unskilled Labor [10.78 h]; Equipment Opreator [11.76 h]; Concrete Mixer Truck [1.09 h]; Dump Truck [10.78 h]; Pipe Encasement - ST [197.13 m3] | 99,747.78 |  | A013 | Z4 | CONS | ST | Pipe Encasement | bef |
|  | 3002 | **RHD4-02-002-Z4-A013-Catch Basin - ST** |  | 2026-08-04 | 2027-03-21 |  |  |  |  |  |  |  |  |  |  |  |  |  |  |  |  |
|  | 3003 | **RHD4-02-002-A013-(ST)-Single Catch Basin Works** |  | 2026-08-04 | 2027-03-21 |  |  |  |  |  |  |  |  |  |  |  |  |  |  |  |  |
| RHD4CZ4A013ST7100 |  | Excavation works for Single Catch Basin - (RD-A-1 /3)-Z4-A013-ST | 7d | 2026-08-04 A | 2026-08-29 A | RHD4ENSDZ4APPST110, RHD4CZ4A013ST3102 | 100% |  | 2026-08-31 | 2026-09-07 |  |  | Skilled labor [72.97 h]; Unskilled Labor [145.93 h]; Equipment Opreator [109.45 h]; Excavator-Poclain [72.97 h]; Dump Truck [36.48 h]; Single Catch basin - ST [16.75 nr] | 62,494.25 | 62,494.25 | A013 | Z4 | CONS | ST | Excavation | bef |
| RHD4CZ4A013ST7200 |  | PC Blinding, Installation and Pipe connection for Single Catch Basin - (RD-A-1 /3)-Z4-A013-ST | 7d | 2026-08-30 A | 2026-09-05 A | RHD4CZ4A013ST7100 | 100% |  | 2026-09-08 | 2026-09-15 |  |  | Skilled labor [72.97 h]; Unskilled Labor [145.93 h]; Plumber [36.48 h]; Equipment Opreator [14.59 h]; Boom Truck [14.59 h]; Single Catch basin - ST [13.4 nr] | 49,995.4 | 49,995.4 | A013 | Z4 | CONS | ST | Installation & Pipe Connection | bef |
| RHD4CZ4A013ST7300 |  | Rings & C.Slab & Final Backfill for Single Catch Basin - (RD-A-1 /3)-Z4-A013-ST | 9d | 2026-09-06 A | 2027-02-20 | RHD4CZ4A013ST7200, RHD4PRSHLDOSST1303, RHD4PRSHLSTAGST1303 | 90% | 9d | 2026-09-16 | 2026-09-27 | -135.02d | 0d | Skilled labor [91.26 h]; Unskilled Labor [182.4 h]; Equipment Opreator [109.45 h]; Boom Truck [18.3 h]; Bobcat [91.26 h]; Single Catch basin - ST [23.45 nr] | 87,491.95 |  | A013 | Z4 | CONS | ST | Rings | bef |
| RHD4CZ4A013ST7400 |  | Steel Cover for Single Catch Basin - (RD-A-1 /3)-Z4-A013-ST | 7d | 2027-02-20 | 2027-03-01 | RHD4CZ4A013ST7300, RHD4PRSHLDOSST1703 |  |  |  |  | -135.02d | 0d | Skilled labor [72.97 h]; Unskilled Labor [72.97 h]; Equipment Opreator [14.59 h]; Boom Truck [14.59 h]; Single Catch basin - ST [3.35 nr] | 12,498.85 |  | A013 | Z4 | CONS | ST | Steel Cover | bef |
| RHD4CZ4A013ST7500 |  | Finishing and Insulation works for Single Catch Basin - (RD-A-1 /3)-Z4-A013-ST | 14d | 2027-03-01 | 2027-03-21 | RHD4CZ4A013ST7400 |  |  |  |  | -135.02d | 9d | Skilled labor [145.93 h]; Unskilled Labor [291.86 h]; Equipment Opreator [29.19 h]; Boom Truck [29.19 h]; Single Catch basin - ST [10.05 nr] | 37,496.55 |  | A013 | Z4 | CONS | ST | Insulation | bef |

| ID | WBS | Activity | Duration | Start | Finish | Predecessors | Complete | Remaining | Planned start | Planned finish | Total float | Free float | Resources | Cost | Actual cost | RDH4-01-001-Road and Block Names-1 | RDH4-01-001-Zones-1 | RDH4-01-001-Phases-1 | RDH4-01-001-Networks-1 | RDH4-01-001-Work Method-1 | RDH4-01-001-MENEM |
| --- | --- | --- | --- | --- | --- | --- | --- | --- | --- | --- | --- | --- | --- | --- | --- | --- | --- | --- | --- | --- | --- |
|  | 3004 | **RHD4-02-002-A013-(ST)-Double Catch Basin Works** |  | 2026-08-29 | 2027-03-17 |  |  |  |  |  |  |  |  |  |  |  |  |  |  |  |  |
| RHD4CZ4A013ST8100 |  | Excavation works for Double Catch Basin - (RD-A-1 /3)-Z4-A013-ST | 2d | 2026-08-29 A | 2026-08-30 A | RHD4CZ4A013ST7100 SS, RHD4CZ4A013ST3301, RHD4ENSDZ4APPST110 | 100% |  | 2026-10-14 | 2026-10-15 |  |  | Skilled labor [8.71 h]; Unskilled Labor [17.42 h]; Equipment Opreator [13.07 h]; Excavator-Poclain [8.71 h]; Dump Truck [4.36 h]; Double Catch basin - ST [1 nr] | 13,966 | 13,966 | A013 | Z4 | CONS | ST | Excavation | bef |
| RHD4CZ4A013ST8200 |  | PC Blinding, Installation and Pipe connection for Double Catch Basin - (RD-A-1 /3)-Z4-A013-ST | 2d | 2026-08-31 A | 2026-09-05 A | RHD4CZ4A013ST8100, RHD4CZ4A013ST7200 SS | 100% |  | 2026-10-17 | 2026-10-18 |  |  | Skilled labor [8.71 h]; Unskilled Labor [17.42 h]; Plumber [4.36 h]; Equipment Opreator [1.74 h]; Boom Truck [1.74 h]; Double Catch basin - ST [0.8 nr] | 11,172.8 | 11,172.8 | A013 | Z4 | CONS | ST | Installation & Pipe Connection | bef |
| RHD4CZ4A013ST8300 |  | Rings & C.Slab & Final Backfillfor Double Catch Basin - (RD-A-1 /3)-Z4-A013-ST | 2d | 2026-09-07 A | 2027-03-13 | RHD4CZ4A013ST8200, RHD4CZ4A013ST7300 SS, RHD4PRSHLDOSST1303, RHD4PRSHLSTAGST1303 | 50% | 6d | 2026-10-19 | 2026-10-20 | -144.02d | 0d | Skilled labor [10.89 h]; Unskilled Labor [21.78 h]; Equipment Opreator [13.07 h]; Boom Truck [2.18 h]; Bobcat [10.89 h]; Double Catch basin - ST [1.4 nr] | 19,552.4 |  | A013 | Z4 | CONS | ST | Rings | bef |
| RHD4CZ4A013ST8400 |  | Steel Cover for Double Catch Basin - (RD-A-1 /3)-Z4-A013-ST | 2d | 2027-03-13 | 2027-03-15 | RHD4CZ4A013ST8300, RHD4CZ4A013ST7400 SS, RHD4PRSHLDOSST1703 |  |  |  |  | -144.02d | 0d | Skilled labor [8.71 h]; Unskilled Labor [8.71 h]; Equipment Opreator [1.74 h]; Boom Truck [1.74 h]; Double Catch basin - ST [0.2 nr] | 2,793.2 |  | A013 | Z4 | CONS | ST | Steel Cover | bef |
| RHD4CZ4A013ST8500 |  | Finishing and Insulation works for Double Catch Basin - (RD-A-1 /3)-Z4-A013-ST | 2d | 2027-03-15 | 2027-03-17 | RHD4CZ4A013ST8400, RHD4CZ4A013ST7500 SS |  |  |  |  | -144.02d | 34.98d | Skilled labor [21.78 h]; Unskilled Labor [43.56 h]; Equipment Opreator [4.36 h]; Boom Truck [4.36 h]; Double Catch basin - ST [0.6 nr] | 8,379.6 |  | A013 | Z4 | CONS | ST | Insulation | bef |
|  | 3027 | **RHD4-02-002-Z4-A013-Sewage Network - SW** |  |  |  |  |  |  |  |  |  |  |  |  |  |  |  |  |  |  |  |
|  | 3031 | **RHD4-02-002-A013-(SW)-GRP Pipes - 600 mm diameter** |  |  |  |  |  |  |  |  |  |  |  |  |  |  |  |  |  |  |  |
|  | 3036 | **RHD4-02-002-A013-(SW)-Concrete Encasement** |  |  |  |  |  |  |  |  |  |  |  |  |  |  |  |  |  |  |  |
|  | 3064 | **RHD4-02-002-Z4-A013-Potable Network - PT** |  | 2027-03-13 | 2027-05-04 |  |  |  |  |  |  |  |  |  |  |  |  |  |  |  |  |
|  | 3068 | **RHD4-02-002-A013-(PT)-HDPE Pipes - 400 mm diameter** |  | 2027-03-13 | 2027-04-22 |  |  |  |  |  |  |  |  |  |  |  |  |  |  |  |  |
| RHD4CZ4A013PT1103 |  | Excavation works for HDPE Pipline 400 mm - (RD-A-1 /3)-Z4-A013-PT | 7d | 2027-03-13 | 2027-03-21 | RHD4ENSDZ4APPPT130, RHD4ENMSPT2000, RHD4CZ4A013ST1103 |  |  |  |  | -122.02d | 0d | Skilled labor [72.2 h]; Unskilled Labor [90.83 h]; Equipment Opreator [101.6 h]; Excavator-Poclain [72.2 h]; Dump Truck [29.4 h]; HDPE (400mm Diameter) - PT - Depth: less than 1.5m [123.23 m]; HDPE (400mm Diameter) - PT - Depth: 1.51m - 2.5m [3.39 m]; HDPE (400mm Diameter) - PT - Depth: more than 2.5m | 43,132.16 |  | A013 | Z4 | CONS | PT | Excavation | bef |
| RHD4CZ4A013PT1203 |  | Bedding works for HDPE Pipline 400 mm - (RD-A-1 /3)-Z4-A013-PT | 7d | 2027-03-21 | 2027-03-29 | RHD4CZ4A013PT1103 |  |  |  |  | -122.02d | 0d | Skilled labor [47.92 h]; Unskilled Labor [133.3 h]; Plumber [18.73 h]; Equipment Opreator [114.57 h]; Excavator-Poclain [47.92 h]; Boom Truck [18.73 h]; Dump Truck [47.92 h]; HDPE (400mm Diameter) - PT - Depth: less than 1.5m [61.61 m]; HDPE (400mm Diameter) - PT - Depth: 1.51m - 2.5m [27.09 m]; HDPE (400mm Diameter) - PT - Depth: more than 2.5m | 30,808.16 |  | A013 | Z4 | CONS | PT | Bedding | bef |
| RHD4CZ4A013PT1303 |  | Installing for HDPE Pipline 400 mm - (RD-A-1 /3)-Z4-A013-PT | 9d | 2027-03-29 | 2027-04-08 | RHD4CZ4A013PT1203, RHD4PRSHLDOSPT1000, RHD4PRSHLSTAGPT1000 |  |  |  |  | -122.02d | 0d | Unskilled Labor [170.11 h]; Plumber [94.4 h]; Equipment Opreator [94.4 h]; Boom Truck [75.69 h]; Water Truck [18.73 h]; HDPE (400mm Diameter) - PT - Depth: less than 1.5m [554.53 m]; HDPE (400mm Diameter) - PT - Depth: 1.51m - 2.5m [13.54 m]; HDPE (400mm Diameter) - PT - Depth: more than 2.5m | 193,468.76 |  | A013 | Z4 | CONS | PT | Installation | bef |
| RHD4CZ4A013PT1403 |  | Primary Test for HDPE Pipline 400 mm - (RD-A-1 /3)-Z4-A013-PT | 6d | 2027-04-08 | 2027-04-15 | RHD4CZ4A013PT1303 |  |  |  |  | -122.02d | 0d | Skilled labor [18.73 h]; Unskilled Labor [74.16 h]; Plumber [36.8 h]; Equipment Opreator [74.16 h]; Excavator-Poclain [18.73 h]; Water Truck [36.8 h]; Dump Truck [18.73 h]; HDPE (400mm Diameter) - PT - Depth: less than 1.5m [246.46 m]; HDPE (400mm Diameter) - PT - Depth: 1.51m - 2.5m [13.54 m]; HDPE (400mm Diameter) - PT - Depth: more than 2.5m | 88,724.96 |  | A013 | Z4 | CONS | PT | Primary Test | bef |
| RHD4CZ4A013PT1503 |  | Backfilling and warning tape works for HDPE Pipline 400 mm - (RD-A-1 /3)-Z4-A013-PT | 6d | 2027-04-15 | 2027-04-22 | RHD4CZ4A013PT1403 |  |  |  |  | -122.02d | 0d | Skilled labor [61.86 h]; Unskilled Labor [123.61 h]; Equipment Opreator [123.61 h]; Excavator-Poclain [61.86 h]; Dump Truck [61.86 h]; HDPE (400mm Diameter) - PT - Depth: less than 1.5m [246.46 m]; HDPE (400mm Diameter) - PT - Depth: more than 2.5m | 83,796.4 |  | A013 | Z4 | CONS | PT | Backfilling | bef |
|  | 3071 | **RHD4-02-002-A013-(PT)-Butterfly Valve Chamber** |  | 2027-03-21 | 2027-04-25 |  |  |  |  |  |  |  |  |  |  |  |  |  |  |  |  |
| RHD4CZ4A013PT2100 |  | Excavation and Bedding for Butterfly Valve Chamber for Potable Water Network - (RD-A-1 /3)-Z4-A013-PT | 2d | 2027-03-21 | 2027-03-23 | RHD4ENSDZ4APPPT130, RHD4CZ4A013PT1103 |  |  |  |  | -100.02d | 0d | Skilled labor [10.89 h]; Unskilled Labor [10.89 h]; Equipment Opreator [2.18 h]; Excavator-Poclain [1.09 h]; Dump Truck [1.09 h]; Valve chambers - PT [0.5 nr] | 6,242 |  | A013 | Z4 | CONS | PT | Excavation and Bedding | bef |
| RHD4CZ4A013PT2200 |  | PC works for Butterfly Valve Chamber for Potable Water Network - (RD-A-1 /3)-Z4-A013-PT | 2d | 2027-03-23 | 2027-03-25 | RHD4CZ4A013PT2100 |  |  |  |  | -100.02d | 0d | Skilled labor [10.89 h]; Unskilled Labor [21.78 h]; Equipment Opreator [1.09 h]; Concrete Pump [1.09 h]; Valve chambers - PT [0.2 nr] | 2,496.8 |  | A013 | Z4 | CONS | PT | PC Works | bef |
| RHD4CZ4A013PT2300 |  | Installation for Butterfly Valve Chamber for Potable Water Network - (RD-A-1 /3)-Z4-A013-PT | 2d | 2027-03-25 | 2027-03-28 | RHD4CZ4A013PT2200, RHD4PRSHLDOSPT1100, RHD4PRSHLDOSPT1400, RHD4PRSHLSTAGPT1100, RHD4PRSHLSTAGPT1400 |  |  |  |  | -100.02d | 0d | Skilled labor [10.89 h]; Unskilled Labor [21.78 h]; Equipment Opreator [2.18 h]; Boom Truck [2.18 h]; Valve chambers - PT [1.1 nr] | 13,732.4 |  | A013 | Z4 | CONS | PT | Installation | bef |
| RHD4CZ4A013PT2400 |  | Backfilling works for Butterfly Valve Chamber for Potable Water Network - (RD-A-1 /3)-Z4-A013-PT | 2d | 2027-04-22 | 2027-04-25 | RHD4CZ4A013PT2300, RHD4CZ4A013PT1503 |  |  |  |  | -122.02d | 0d | Skilled labor [10.89 h]; Unskilled Labor [21.78 h]; Equipment Opreator [2.18 h]; Water Truck [1.09 h]; Dump Truck [1.09 h]; Valve chambers - PT [0.2 nr] | 2,496.8 |  | A013 | Z4 | CONS | PT | Backfilling Works | bef |
|  | 3072 | **RHD4-02-002-A013-(PT)-Butterfly Valves** |  | 2027-03-28 | 2027-04-27 |  |  |  |  |  |  |  |  |  |  |  |  |  |  |  |  |
| RHD4CZ4A013PT3101 |  | Installation for Butterfly Valves for Potable Water Network - (RD-A-1 /3)-Z4-A013-PT | 2d | 2027-03-28 | 2027-03-30 | RHD4CZ4A013PT2300, RHD4PRSHLDOSPT1200, RHD4PRSHLSTAGPT1200 |  |  |  |  | -100.02d | 22d | Unskilled Labor [10.89 h]; Plumber [10.89 h]; Butterfly valves dia 400 - PT [1.8 nr] | 55,157.4 |  | A013 | Z4 | CONS | PT | Installation | bef |
| RHD4CZ4A013PT3201 |  | Stem and Service box for Butterfly Valves for Potable Water Network - (RD-A-1 /3)-Z4-A013-PT | 2d | 2027-04-25 | 2027-04-27 | RHD4CZ4A013PT3101, RHD4CZ4A013PT2400, RHD4PRSHLDOSPT1300, RHD4PRSHLSTAGPT1300 |  |  |  |  | -122.02d | 7d | Unskilled Labor [10.89 h]; Plumber [10.89 h]; Butterfly valves dia 400 - PT [0.2 nr] | 6,128.6 |  | A013 | Z4 | CONS | PT | Stem and Service box | bef |

| ID | WBS | Activity | Duration | Start | Finish | Predecessors | Total float | Free float | Resources | Cost | RDH4-01-001-Road and Block Names-1 | RDH4-01-001-Zones-1 | RDH4-01-001-Phases-1 | RDH4-01-001-Networks-1 | RDH4-01-001-Work Method-1 | RDH4-01-001-MENEM |
| --- | --- | --- | --- | --- | --- | --- | --- | --- | --- | --- | --- | --- | --- | --- | --- | --- |
|  | 3073 | **RHD4-02-002-A013-(PT)-Wash out Valve Chambers** |  | 2027-03-21 | 2027-03-30 |  |  |  |  |  |  |  |  |  |  |  |
| RHD4CZ4A013PT2101 |  | Excavation and Bedding for Wash out Valve Chambers for Potable Water Network - (RD-A-1 /3)-Z4-A013-PT | 2d | 2027-03-21 | 2027-03-23 | RHD4ENSDZ4APPPT130, RHD4CZ4A013PT1103 | -100.02d | 0d | Skilled labor [10.89 h]; Unskilled Labor [10.89 h]; Equipment Opreator [2.18 h]; Excavator-Poclain [1.09 h]; Dump Truck [1.09 h]; Wash out chambers - PT [0.5 nr] | 9,372.5 | A013 | Z4 | CONS | PT | Excavation and Bedding | bef |
| RHD4CZ4A013PT2201 |  | PC works for Wash out Valve Chambers for Potable Water Network - (RD-A-1 /3)-Z4-A013-PT | 2d | 2027-03-23 | 2027-03-25 | RHD4CZ4A013PT2101 | -100.02d | 0d | Skilled labor [10.89 h]; Unskilled Labor [21.78 h]; Equipment Opreator [1.09 h]; Concrete Pump [1.09 h]; Wash out chambers - PT [0.2 nr] | 3,749 | A013 | Z4 | CONS | PT | PC Works | bef |
| RHD4CZ4A013PT2301 |  | Installation for Wash out Valve Chambers for Potable Water Network - (RD-A-1 /3)-Z4-A013-PT | 2d | 2027-03-25 | 2027-03-28 | RHD4CZ4A013PT2201, RHD4PRSHLDOSPT1100, RHD4PRSHLDOSPT1400, RHD4PRSHLSTAGPT1100, RHD4PRSHLSTAGPT1400 | -100.02d | 0d | Skilled labor [10.89 h]; Unskilled Labor [21.78 h]; Equipment Opreator [2.18 h]; Boom Truck [2.18 h]; Wash out chambers - PT [1.1 nr] | 20,619.5 | A013 | Z4 | CONS | PT | Installation | bef |
| RHD4CZ4A013PT2401 |  | Backfilling works for Wash out Valve Chambers for Potable Water Network - (RD-A-1 /3)-Z4-A013-PT | 2d | 2027-03-28 | 2027-03-30 | RHD4CZ4A013PT2301 | -100.02d | 0d | Skilled labor [10.89 h]; Unskilled Labor [21.78 h]; Equipment Opreator [2.18 h]; Water Truck [1.09 h]; Dump Truck [1.09 h]; Wash out chambers - PT [0.2 nr] | 3,749 | A013 | Z4 | CONS | PT | Backfilling Works | bef |
|  | 3074 | **RHD4-02-002-A013-(PT)-Wash out Valves** |  | 2027-03-28 | 2027-04-01 |  |  |  |  |  |  |  |  |  |  |  |
| RHD4CZ4A013PT3102 |  | Installation for Wash out Valves for Potable Water Network - (RD-A-1 /3)-Z4-A013-PT | 2d | 2027-03-28 | 2027-03-30 | RHD4CZ4A013PT2301, RHD4PRSHLDOSPT1200, RHD4PRSHLSTAGPT1200 | -100.02d | 0d | Unskilled Labor [10.89 h]; Plumber [10.89 h]; Wash out valve diameter 100 mm - PT [1.8 nr] | 6,746.4 | A013 | Z4 | CONS | PT | Installation | bef |
| RHD4CZ4A013PT3202 |  | Stem and Service box for Wash out Valves for Potable Water Network - (RD-A-1 /3)-Z4-A013-PT | 2d | 2027-03-30 | 2027-04-01 | RHD4CZ4A013PT3102, RHD4CZ4A013PT2401, RHD4PRSHLDOSPT1300, RHD4PRSHLSTAGPT1300 | -100.02d | 29d | Unskilled Labor [10.89 h]; Plumber [10.89 h]; Wash out valve diameter 100 mm - PT [0.2 nr] | 749.6 | A013 | Z4 | CONS | PT | Stem and Service box | bef |
|  | 3075 | **RHD4-02-002-A013-(PT)-Air Valve Chambers** |  | 2027-03-21 | 2027-03-30 |  |  |  |  |  |  |  |  |  |  |  |
| RHD4CZ4A013PT2102 |  | Excavation and Bedding for Air Valve Chambers for Potable Water Network - (RD-A-1 /3)-Z4-A013-PT | 2d | 2027-03-21 | 2027-03-23 | RHD4ENSDZ4APPPT130, RHD4CZ4A013PT1103 | -100.02d | 0d | Skilled labor [10.89 h]; Unskilled Labor [10.89 h]; Equipment Opreator [2.18 h]; Excavator-Poclain [1.09 h]; Dump Truck [1.09 h]; Air Valve chambers - PT [0.5 nr] | 2,386 | A013 | Z4 | CONS | PT | Excavation and Bedding | bef |
| RHD4CZ4A013PT2202 |  | PC works for Air Valve Chambers for Potable Water Network - (RD-A-1 /3)-Z4-A013-PT | 2d | 2027-03-23 | 2027-03-25 | RHD4CZ4A013PT2102 | -100.02d | 0d | Skilled labor [10.89 h]; Unskilled Labor [21.78 h]; Equipment Opreator [1.09 h]; Concrete Pump [1.09 h]; Air Valve chambers - PT [0.2 nr] | 954.4 | A013 | Z4 | CONS | PT | PC Works | bef |
| RHD4CZ4A013PT2302 |  | Installation for Air Valve Chambers for Potable Water Network - (RD-A-1 /3)-Z4-A013-PT | 2d | 2027-03-25 | 2027-03-28 | RHD4CZ4A013PT2202, RHD4PRSHLDOSPT1100, RHD4PRSHLDOSPT1400, RHD4PRSHLSTAGPT1100, RHD4PRSHLSTAGPT1400 | -100.02d | 0d | Skilled labor [10.89 h]; Unskilled Labor [21.78 h]; Equipment Opreator [2.18 h]; Boom Truck [2.18 h]; Air Valve chambers - PT [1.1 nr] | 5,249.2 | A013 | Z4 | CONS | PT | Installation | bef |
| RHD4CZ4A013PT2402 |  | Backfilling works for Air Valve Chambers for Potable Water Network - (RD-A-1 /3)-Z4-A013-PT | 2d | 2027-03-28 | 2027-03-30 | RHD4CZ4A013PT2302 | -100.02d | 0d | Skilled labor [10.89 h]; Unskilled Labor [21.78 h]; Equipment Opreator [2.18 h]; Water Truck [1.09 h]; Dump Truck [1.09 h]; Air Valve chambers - PT [0.2 nr] | 954.4 | A013 | Z4 | CONS | PT | Backfilling Works | bef |
|  | 3076 | **RHD4-02-002-A013-(PT)-Air Valves** |  | 2027-03-28 | 2027-04-01 |  |  |  |  |  |  |  |  |  |  |  |
| RHD4CZ4A013PT3103 |  | Installation for Air Valves for Potable Water Network - (RD-A-1 /3)-Z4-A013-PT | 2d | 2027-03-28 | 2027-03-30 | RHD4CZ4A013PT2302, RHD4PRSHLDOSPT1200, RHD4PRSHLSTAGPT1200 | -100.02d | 0d | Unskilled Labor [10.89 h]; Plumber [10.89 h]; Air valve diameter 65 mm - PT [1.8 nr] | 9,909 | A013 | Z4 | CONS | PT | Installation | bef |
| RHD4CZ4A013PT3203 |  | Stem and Service box for Air Valves for Potable Water Network - (RD-A-1 /3)-Z4-A013-PT | 2d | 2027-03-30 | 2027-04-01 | RHD4CZ4A013PT3103, RHD4CZ4A013PT2402, RHD4PRSHLDOSPT1300, RHD4PRSHLSTAGPT1300 | -100.02d | 29d | Unskilled Labor [10.89 h]; Plumber [10.89 h]; Air valve diameter 65 mm - PT [0.2 nr] | 1,101 | A013 | Z4 | CONS | PT | Stem and Service box | bef |
|  | 3077 | **RHD4-02-002-A013-(PT)-Fire Hydrant** |  | 2027-04-15 | 2027-05-04 |  |  |  |  |  |  |  |  |  |  |  |
| RHD4CZ4A013PT4100 |  | Excavation and Bedding and Pipe Installation for Fire Hydrant - (RD-A-1 /3)-Z4-A013-PT | 5d | 2027-04-15 | 2027-04-21 | RHD4CZ4A013PT1503 SS, RHD4ENSDZ4APPPT130 | -119.02d | 0d | Skilled labor [49.01 h]; Unskilled Labor [49.01 h]; Plumber [49.01 h]; Equipment Opreator [24.5 h]; Excavator-Poclain [24.5 h]; 3-outlet fire hydrant (2 x 2.5 inch and 1 x 4.5 inch) in the form of a separate dry vacuum cylinder [0.9 nr] | 11,358 | A013 | Z4 | CONS | PT | Excavation | bef |
| RHD4CZ4A013PT4200 |  | Valve Installation for Fire Hydrant - (RD-A-1 /3)-Z4-A013-PT | 3d | 2027-04-21 | 2027-04-25 | RHD4CZ4A013PT4100 | -119.02d | 0d | Unskilled Labor [32.67 h]; Plumber [32.67 h]; 3-outlet fire hydrant (2 x 2.5 inch and 1 x 4.5 inch) in the form of a separate dry vacuum cylinder [1.8 nr] | 22,716 | A013 | Z4 | CONS | PT | Valve | bef |
| RHD4CZ4A013PT4300 |  | Stem for Fire Hydrant - (RD-A-1 /3)-Z4-A013-PT | 3d | 2027-04-25 | 2027-04-28 | RHD4CZ4A013PT4200 | -119.02d | 0d | Unskilled Labor [32.67 h]; Plumber [32.67 h]; 3-outlet fire hydrant (2 x 2.5 inch and 1 x 4.5 inch) in the form of a separate dry vacuum cylinder [2.7 nr] | 34,074 | A013 | Z4 | CONS | PT | Stem | bef |
| RHD4CZ4A013PT4400 |  | Fire Installation for Fire Hydrant - (RD-A-1 /3)-Z4-A013-PT | 3d | 2027-04-28 | 2027-05-02 | RHD4CZ4A013PT4300, RHD4PRSHLDOSPT1500, RHD4PRSHLSTAGPT1500 | -119.02d | 0d | Unskilled Labor [32.67 h]; Plumber [32.67 h]; Equipment Opreator [32.67 h]; Boom Truck [32.67 h]; 3-outlet fire hydrant (2 x 2.5 inch and 1 x 4.5 inch) in the form of a separate dry vacuum cylinder [3.15 nr] | 39,753 | A013 | Z4 | CONS | PT | Fire | bef |
| RHD4CZ4A013PT4500 |  | Protection Barriers for Fire Hydrant - (RD-A-1 /3)-Z4-A013-PT | 2d | 2027-05-02 | 2027-05-04 | RHD4CZ4A013PT4400 | -119.02d | 64d | Unskilled Labor [19.6 h]; Plumber [19.6 h]; 3-outlet fire hydrant (2 x 2.5 inch and 1 x 4.5 inch) in the form of a separate dry vacuum cylinder [0.45 nr] | 5,679 | A013 | Z4 | CONS | PT | Protection Barriers | bef |
|  | 3078 | **RHD4-02-002-A013-(PT)-Concrete Encasement** |  |  |  |  |  |  |  |  |  |  |  |  |  |  |
|  | 3079 | **RHD4-02-002-Z4-A013-Irrigation Network - IRR** |  | 2027-03-21 | 2027-05-26 |  |  |  |  |  |  |  |  |  |  |  |
|  | 3083 | **RHD4-02-002-A013-(IRR)-HDPE Pipes - 250 mm diameter** |  | 2027-03-21 | 2027-05-05 |  |  |  |  |  |  |  |  |  |  |  |
| RHD4CZ4A013IRR1103 |  | Excavation works for HDPE Pipline 250 mm - (RD-A-1 /3)-Z4-A013-IRR | 10d | 2027-03-21 | 2027-04-01 | RHD4CZ4A013PT1103, RHD4ENSDZ4APPIRR140, RHD4ENMSRR2000 | -122.02d | 0d | Skilled labor [101.6 h]; Unskilled Labor [101.6 h]; Equipment Opreator [121.97 h]; Excavator-Poclain [101.6 h]; Dump Truck [20.36 h]; HDPE (250mm Diameter) - TSE - Depth: less than 1.5m [132.51 m]; HDPE (250mm Diameter) - TSE - Depth: more than 1.51m [11.24 m] | 31,621.74 | A013 | Z4 | CONS | IRR | Excavation | bef |
| RHD4CZ4A013IRR1203 |  | Bedding works for HDPE Pipline 250 mm - (RD-A-1 /3)-Z4-A013-IRR | 8d | 2027-04-01 | 2027-04-11 | RHD4CZ4A013IRR1103 | -122.02d | 0d | Skilled labor [77.65 h]; Unskilled Labor [155.2 h]; Equipment Opreator [155.2 h]; Excavator-Poclain [77.65 h]; Dump Truck [77.65 h]; HDPE (250mm Diameter) - TSE - Depth: less than 1.5m [66.26 m]; HDPE (250mm Diameter) - TSE - Depth: more than 1.51m [3.75 m] | 15,334.02 | A013 | Z4 | CONS | IRR | Bedding | bef |
| RHD4CZ4A013IRR1303 |  | Installing for HDPE Pipline 250 mm - (RD-A-1 /3)-Z4-A013-IRR | 10d | 2027-04-11 | 2027-04-22 | RHD4CZ4A013IRR1203, RHD4PRSHLDOSIRR1000, RHD4PRSHLSTAGIRR1000 | -122.02d | 0d | Unskilled Labor [203.32 h]; Plumber [101.6 h]; Equipment Opreator [101.6 h]; Boom Truck [101.6 h]; HDPE (250mm Diameter) - TSE - Depth: less than 1.5m [596.31 m]; HDPE (250mm Diameter) - TSE - Depth: more than 1.51m [29.96 m] | 137,039.72 | A013 | Z4 | CONS | IRR | Installation | bef |
| RHD4CZ4A013IRR1403 |  | Primary Test for HDPE Pipline 250 mm - (RD-A-1 /3)-Z4-A013-IRR | 3d | 2027-04-22 | 2027-04-26 | RHD4CZ4A013IRR1303 | -122.02d | 0d | Unskilled Labor [31.58 h]; Plumber [31.58 h]; Equipment Opreator [31.58 h]; Water Truck [31.58 h]; HDPE (250mm Diameter) - TSE - Depth: less than 1.5m [265.03 m]; HDPE (250mm Diameter) - TSE - Depth: more than 1.51m [14.98 m] | 61,330.98 | A013 | Z4 | CONS | IRR | Primary Test | bef |
| RHD4CZ4A013IRR1503 |  | Backfilling and warning tape works for HDPE Pipline 250 mm - (RD-A-1 /3)-Z4-A013-IRR | 8d | 2027-04-26 | 2027-05-05 | RHD4CZ4A013IRR1403 | -122.02d | 0d | Skilled labor [77.65 h]; Unskilled Labor [155.2 h]; Equipment Opreator [155.2 h]; Excavator-Poclain [77.65 h]; Dump Truck [77.65 h]; HDPE (250mm Diameter) - TSE - Depth: less than 1.5m [265.03 m]; HDPE (250mm Diameter) - TSE - Depth: more than 1.51m [14.98 m] | 61,330.98 | A013 | Z4 | CONS | IRR | Backfilling | bef |

| ID | WBS | Activity | Duration | Start | Finish | Predecessors | Total float | Free float | Resources | Cost | RDH4-01-001-Road and Block Names-1 | RDH4-01-001-Zones-1 | RDH4-01-001-Phases-1 | RDH4-01-001-Networks-1 | RDH4-01-001-Work Method-1 | RDH4-01-001-MENEM |
| --- | --- | --- | --- | --- | --- | --- | --- | --- | --- | --- | --- | --- | --- | --- | --- | --- |
|  | 3082 | **RHD4-02-002-A013-(IRR)-HDPE Pipes - 200 mm diameter** |  |  |  |  |  |  |  |  |  |  |  |  |  |  |
|  | 1770 | **RHD4-02-002-A013-(IRR)-Air Valves** |  | 2027-04-22 | 2027-04-27 |  |  |  |  |  |  |  |  |  |  |  |
| RHD4CZ4A013IRR3103 |  | Installation for Air Valves for Irrigation Network - (RD-A-1 /3)-Z4-A013-IRR | 2d | 2027-04-22 | 2027-04-25 | RHD4CZ4A013IRR1303, RHD4CZ4A013IRR2302 | -112.02d | 0d | Unskilled Labor [5.45 h]; Plumber [5.45 h]; Air valve diameter 50 mm - TSE [0.9 nr] | 4,427.1 | A013 | Z4 | CONS | IRR | Installation | bef |
| RHD4CZ4A013IRR3203 |  | Stem and Service box for Air Valves for Irrigation Network - (RD-A-1 /3)-Z4-A013-IRR | 2d | 2027-04-25 | 2027-04-27 | RHD4CZ4A013IRR3103, RHD4CZ4A013IRR2402 | -112.02d | 6d | Unskilled Labor [5.45 h]; Plumber [5.45 h]; Air valve diameter 50 mm - TSE [0.1 nr] | 491.9 | A013 | Z4 | CONS | IRR | Stem and Service box | bef |
|  | 6107 | **RHD4-02-002-A013-(IRR)-HDPE Pipes - 160 mm diameter** |  | 2027-05-05 | 2027-05-22 |  |  |  |  |  |  |  |  |  |  |  |
| RHD4CZ4A013IRR1100 |  | Excavation works for HDPE Pipline 160 mm - (RD-A-1 /3)-Z4-A013-IRR | 2d | 2027-05-05 | 2027-05-08 | RHD4CZ4A013IRR1103, RHD4CZ4A013IRR1503 | -122.02d | 0d | Skilled labor [14.7 h]; Unskilled Labor [14.7 h]; Equipment Opreator [17.64 h]; Excavator-Poclain [14.7 h]; Dump Truck [2.94 h]; HDPE (160mm Diameter) - TSE - Depth: less than 1.5m [20.29 m] | 2,495.67 | A013 | Z4 | CONS | IRR | Excavation | bef |
| RHD4CZ4A013IRR1200 |  | Bedding works for HDPE Pipline 160 mm - (RD-A-1 /3)-Z4-A013-IRR | 2d | 2027-05-08 | 2027-05-10 | RHD4CZ4A013IRR1100 | -110.02d | 0d | Skilled labor [11 h]; Unskilled Labor [22.11 h]; Equipment Opreator [22.11 h]; Excavator-Poclain [11 h]; Dump Truck [11 h]; HDPE (160mm Diameter) - TSE - Depth: less than 1.5m [10.15 m] | 1,248.45 | A013 | Z4 | CONS | IRR | Bedding | bef |
| RHD4CZ4A013IRR1300 |  | Installing for HDPE Pipline 160 mm - (RD-A-1 /3)-Z4-A013-IRR | 2d | 2027-05-10 | 2027-05-12 | RHD4CZ4A013IRR1200 | -110.02d | 0d | Unskilled Labor [29.51 h]; Plumber [14.7 h]; Equipment Opreator [14.7 h]; Boom Truck [14.7 h]; HDPE (160mm Diameter) - TSE - Depth: less than 1.5m [91.31 m] | 11,231.13 | A013 | Z4 | CONS | IRR | Installation | bef |
| RHD4CZ4A013IRR1400 |  | Primary Test for HDPE Pipline 160 mm - (RD-A-1 /3)-Z4-A013-IRR | 2d | 2027-05-12 | 2027-05-19 | RHD4CZ4A013IRR1300 | -110.02d | 0d | Unskilled Labor [4.47 h]; Plumber [4.47 h]; Equipment Opreator [4.47 h]; Water Truck [4.47 h]; HDPE (160mm Diameter) - TSE - Depth: less than 1.5m [40.58 m] | 4,991.34 | A013 | Z4 | CONS | IRR | Primary Test | bef |
| RHD4CZ4A013IRR1500 |  | Backfilling and warning tape works for HDPE Pipline 160 mm - (RD-A-1 /3)-Z4-A013-IRR | 2d | 2027-05-19 | 2027-05-22 | RHD4CZ4A013IRR1400 | -110.02d | 0d | Skilled labor [11 h]; Unskilled Labor [22.11 h]; Equipment Opreator [22.11 h]; Excavator-Poclain [11 h]; Dump Truck [11 h]; HDPE (160mm Diameter) - TSE - Depth: less than 1.5m [40.58 m] | 4,991.34 | A013 | Z4 | CONS | IRR | Backfilling | bef |
|  | 6115 | **RHD4-02-002-A013-(IRR)-Gate Valves (Direct Buried)** |  | 2027-05-10 | 2027-05-26 |  |  |  |  |  |  |  |  |  |  |  |
| RHD4CZ4A013IRR3100 |  | Installation for Direct Buried Gate Valves - (RD-A-1 /3)-Z4-A013-IRR | 4d | 2027-05-10 | 2027-05-19 | RHD4CZ4A013IRR1300 SS, RHD4CZ4A013IRR1300 FF | -108.02d | 2d | Unskilled Labor [43.56 h]; Plumber [43.56 h]; Gate valves dia 100 mm - TSE [5.4 nr]; Gate valves dia 250 mm - TSE [1.8 nr] | 14,247 | A013 | Z4 | CONS | IRR | Installation | bef |
| RHD4CZ4A013IRR3200 |  | Stem and Service box for Direct Buried Gate Valves - (RD-A-1 /3)-Z4-A013-IRR | 4d | 2027-05-22 | 2027-05-26 | RHD4CZ4A013IRR3100, RHD4CZ4A013IRR1500 | -110.02d | 8d | Unskilled Labor [43.56 h]; Plumber [43.56 h]; Gate valves dia 100 mm - TSE [0.6 nr]; Gate valves dia 250 mm - TSE [0.2 nr] | 1,583 | A013 | Z4 | CONS | IRR | Stem and Service box | bef |
|  | 1769 | **RHD4-02-002-A013-(IRR)-Air Valve Chamber** |  | 2027-04-01 | 2027-04-11 |  |  |  |  |  |  |  |  |  |  |  |
| RHD4CZ4A013IRR2102 |  | Excavation and Bedding for Valve Chamber for Irrigation Network - (RD-A-1 /3)-Z4-A013-IRR | 2d | 2027-04-01 | 2027-04-04 | RHD4CZ4A013IRR1103 | -121.02d | 0d | Skilled labor [5.45 h]; Unskilled Labor [5.45 h]; Equipment Opreator [1.09 h]; Excavator-Poclain [0.54 h]; Dump Truck [0.54 h]; Air Valve chambers - TSE [0.25 nr] | 1,193 | A013 | Z4 | CONS | IRR | Excavation and Bedding | bef |
| RHD4CZ4A013IRR2202 |  | PC works for Valve Chamber for Irrigation Network - (RD-A-1 /3)-Z4-A013-IRR | 2d | 2027-04-04 | 2027-04-06 | RHD4CZ4A013IRR2102 | -100.02d | 0d | Skilled labor [5.45 h]; Unskilled Labor [10.89 h]; Equipment Opreator [0.54 h]; Concrete Pump [0.54 h]; Air Valve chambers - TSE [0.1 nr] | 477.2 | A013 | Z4 | CONS | IRR | PC Works | bef |
| RHD4CZ4A013IRR2302 |  | Installation for Valve Chamber for Irrigation Network - (RD-A-1 /3)-Z4-A013-IRR | 2d | 2027-04-06 | 2027-04-08 | RHD4CZ4A013IRR2202 | -100.02d | 0d | Skilled labor [5.45 h]; Unskilled Labor [10.89 h]; Equipment Opreator [1.09 h]; Boom Truck [1.09 h]; Air Valve chambers - TSE [0.55 nr] | 2,624.6 | A013 | Z4 | CONS | IRR | Installation | bef |
| RHD4CZ4A013IRR2402 |  | Backfilling works for Valve Chamber for Irrigation Network - (RD-A-1 /3)-Z4-A013-IRR | 2d | 2027-04-08 | 2027-04-11 | RHD4CZ4A013IRR2302 | -100.02d | 12d | Skilled labor [5.45 h]; Unskilled Labor [10.89 h]; Equipment Opreator [1.09 h]; Water Truck [0.54 h]; Dump Truck [0.54 h]; Air Valve chambers - TSE [0.1 nr] | 477.2 | A013 | Z4 | CONS | IRR | Backfilling Works | bef |
|  | 3113 | **RHD4-02-002-Z4-A013-Medium Voltage Network - MV** |  | 2027-02-18 | 2027-10-14 |  |  |  |  |  |  |  |  |  |  |  |
|  | 3115 | **RHD4-02-002-A013-(MV)-Medium Voltage duct banks** |  | 2027-02-18 | 2027-03-08 |  |  |  |  |  |  |  |  |  |  |  |
| RHD4CZ4A013MV2100 |  | Excavation of Duct Banks for Medium Voltage Network - (RD-A-1 /3)-Z4-A013-MV | 3d | 2027-02-18 | 2027-02-23 | RHD4ENSDZ4APPMV150, RHD4CZ4A013ST3500 | -142.02d | 0d | Unskilled Labor [30.17 h]; Equipment Opreator [60.33 h]; Excavator-Poclain [30.17 h]; Dump Truck [30.17 h]; Duct bank for MV cables UPVC (10ø?150mm) [4.16 m] | 4,139.2 | A013 | Z4 | CONS | MV | Excavation | bef |
| RHD4CZ4A013MV2200 |  | Installation of Duct Banks for Medium Voltage Network - (RD-A-1 /3)-Z4-A013-MV | 5d | 2027-02-23 | 2027-03-01 | RHD4CZ4A013MV2100, RHD4PRSHLDOSMV1000, RHD4PRSHLSTAGMV1000 | -142.02d | 0d | Unskilled Labor [45.3 h]; Equipment Opreator [90.5 h]; Excavator-Poclain [45.3 h]; Dump Truck [45.3 h]; Duct bank for MV cables UPVC (10ø?150mm) [4.16 m] | 4,139.2 | A013 | Z4 | CONS | MV | Installing | bef |
| RHD4CZ4A013MV2300 |  | Pouring of Duct Banks for Medium Voltage Network - (RD-A-1 /3)-Z4-A013-MV | 3d | 2027-03-01 | 2027-03-04 | RHD4CZ4A013MV2200 | -142.02d | 0d | Unskilled Labor [30.17 h]; Equipment Opreator [60.33 h]; Excavator-Poclain [30.17 h]; Dump Truck [30.17 h]; Duct bank for MV cables UPVC (10ø?150mm) [27.01 m] | 26,874.95 | A013 | Z4 | CONS | MV | Pouring | bef |
| RHD4CZ4A013MV2400 |  | Backfilling of Duct Banks for Medium Voltage Network - (RD-A-1 /3)-Z4-A013-MV | 3d | 2027-03-04 | 2027-03-08 | RHD4CZ4A013MV2300 | -142.02d | 10d | Unskilled Labor [22.65 h]; Equipment Opreator [45.3 h]; Excavator-Poclain [22.65 h]; Dump Truck [22.65 h]; Duct bank for MV cables UPVC (10ø?150mm) [6.23 m] | 6,198.85 | A013 | Z4 | CONS | MV | Backfilling | bef |

| ID | WBS | Activity | Duration | Start | Finish | Predecessors | Total float | Free float | Resources | Cost | RDH4-01-001-Road and Block Names-1 | RDH4-01-001-Zones-1 | RDH4-01-001-Phases-1 | RDH4-01-001-Networks-1 | RDH4-01-001-Work Method-1 | RDH4-01-001-MENEM |
| --- | --- | --- | --- | --- | --- | --- | --- | --- | --- | --- | --- | --- | --- | --- | --- | --- |
|  | 3114 | **RHD4-02-002-A013-(MV)-Medium Voltage cable trench** |  | 2027-08-16 | 2027-09-01 |  |  |  |  |  |  |  |  |  |  |  |
| RHD4CZ4A013MV1100 |  | Excavation for Medium Voltage Trench - (RD-A-1 /3)-Z4-A013-MV | 7d | 2027-08-16 | 2027-08-24 | RHD4ENSDZ4APPMV150, RHD4CZ4A013RD3100, RHD4CZ5L07LV3100 | -153.02d | 0d | Skilled labor [67.08 h]; Unskilled Labor [134.06 h]; Equipment Opreator [201.14 h]; Excavator-Poclain [67.08 h]; Dump Truck [134.06 h]; Excavation for Trench size 60cm wide and 80cm deep ( for 2 cables) [772.49 m3]; Excavation for Trench size 240cm wide and 80cm deep (for 9 cables) [17.06 m3]; Excavation for Trench size 300cm wide and 80cm deep (for 10 cables) [718.99 m3] | 15,085.39 | A013 | Z4 | CONS | MV | Excavation | AFT |
| RHD4CZ4A013MV1200 |  | Trench Backfilling for Medium Voltage Network - (RD-A-1 /3)-Z4-A013-MV | 7d | 2027-08-24 | 2027-09-01 | RHD4CZ4A013MV1100 | -128.02d | 23d | Skilled labor [67.08 h]; Unskilled Labor [67.08 h]; Equipment Opreator [134.06 h]; Dump Truck [134.06 h]; Excavation for Trench size 60cm wide and 80cm deep ( for 2 cables) [331.06 m3]; Excavation for Trench size 240cm wide and 80cm deep (for 9 cables) [7.31 m3]; Excavation for Trench size 300cm wide and 80cm deep (for 10 cables) [308.14 m3] | 6,465.15 | A013 | Z4 | CONS | MV | Backfilling | AFT |
|  | 3116 | **RHD4-02-002-A013-(MV)-Medium Voltage cables 3Cx 500 mm²** |  | 2027-08-24 | 2027-10-12 |  |  |  |  |  |  |  |  |  |  |  |
| RHD4CZ4A013MV3100 |  | Installation of Medium Voltage Cables 3Cx 500 mm² - (RD-A-1 /3)-Z4-A013-MV | 17d | 2027-08-24 | 2027-09-13 | RHD4CZ4A013MV1100, RHD4CZ4A013MV2400, RHD4PRSHLDOSMV1100, RHD4ENMSMV2000, RHD4ENMSMV2010, RHD4PRSHLSTAGMV1100 | -151.02d | 0d | Skilled labor [178.93 h]; Unskilled Labor [715.5 h]; Electrician [357.75 h]; Equipment Opreator [536.68 h]; Boom Truck [178.93 h]; Cable Laying Machine [357.75 h]; Cable 13.8 kV 3Cx 500 mm² Al/XLPE,/LLDPE / Unarmored [13595.9 m] | 2,161,743.33 | A013 | Z4 | CONS | MV | Installation | AFT |
| RHD4CZ4A013MV3200 |  | Joints Installation of Medium Voltage Cables 3Cx 500 mm² - (RD-A-1 /3)-Z4-A013-MV | 13d | 2027-09-13 | 2027-09-29 | RHD4CZ4A013MV3100, RHD4PRSHLDOSMV1300, RHD4PRSHLSTAGMV1300 | -151.02d | 0d | Skilled labor [141.6 h]; Unskilled Labor [566.3 h]; Electrician [283.15 h]; Equipment Opreator [141.6 h]; Boom Truck [141.6 h]; Straight joints cables for 13.8 kv 3Cx 500 mm², Al /XLPE/LLDPE [26 Unit] | 84,448 | A013 | Z4 | CONS | MV | Joints Installation | AFT |
| RHD4CZ4A013MV3300 |  | Testing of Medium Voltage Cables 3Cx 500 mm² - (RD-A-1 /3)-Z4-A013-MV | 11d | 2027-09-29 | 2027-10-12 | RHD4CZ4A013MV3200, RHD4CZ4A013MV1200 | -151.02d | 0d | Skilled labor [111.84 h]; Unskilled Labor [447.27 h]; Electrician [223.58 h]; Cable 13.8 kV 3Cx 500 mm² Al/XLPE,/LLDPE / Unarmored [1642.6 m] | 261,173.4 | A013 | Z4 | CONS | MV | Testing | AFT |
|  | 5388 | **RHD4-02-002-A013-(MV)-Normally open Point (Outdoor Type)** |  |  |  |  |  |  |  |  |  |  |  |  |  |  |
|  | 1982 | **RHD4-02-002-A013-(MV)-Medium Voltage cables 3Cx 50 mm²** |  | 2027-10-12 | 2027-10-14 |  |  |  |  |  |  |  |  |  |  |  |
| RHD4CZ4A013MV3401 |  | Termination of Medium Voltage Cables 3Cx 50 mm² - (RD-A-1 /3)-Z4-A013-MV | 2d | 2027-10-12 | 2027-10-14 | RHD4CZ4A013MV3100, RHD4CZ4A013MV3300 | -151.02d | 15d | Unskilled Labor [23.2 h]; Electrician [11.65 h]; Cable Termination for 13.8 kv 3Cx 500 mm², Al /XLPE/LLDPE [1.6 Unit] | 4,216 | A013 | Z4 | CONS | MV | Termination | AFT |
|  | 4255 | **RHD4-02-002-Z4-A013-Low Voltage Network - LV** |  | 2027-04-04 | 2027-09-27 |  |  |  |  |  |  |  |  |  |  |  |
|  | 4256 | **RHD4-02-002-A013-(LV)-Low Voltage duct banks** |  | 2027-04-04 | 2027-04-14 |  |  |  |  |  |  |  |  |  |  |  |
| RHD4CZ4A013LV2100 |  | Excavation of Duct Banks for Low Voltage Network - (RD-A-1 /3)-Z4-A013-LV | 2d | 2027-04-04 | 2027-04-06 | RHD4CZ4A013IRR2102 | -121.02d | 0d | Skilled labor [21.6 h]; Unskilled Labor [21.6 h]; Equipment Opreator [43.13 h]; Excavator-Poclain [21.6 h]; Dump Truck [21.6 h]; Duct bank for LV cables UPVC (2xø110mm) [2.97 m] | 599.94 | A013 | Z4 | CONS | LV | Excavation | bef |
| RHD4CZ4A013LV2200 |  | Installation of Duct Banks for Low Voltage Network - (RD-A-1 /3)-Z4-A013-LV | 3d | 2027-04-06 | 2027-04-10 | RHD4CZ4A013LV2100 | -118.02d | 0d | Carpenter [3.27 h]; Skilled labor [32.34 h]; Unskilled Labor [32.34 h]; Steel Fixer [3.27 h]; Duct bank for LV cables UPVC (2xø110mm) [2.97 m] | 599.94 | A013 | Z4 | CONS | LV | Installing | bef |
| RHD4CZ4A013LV2300 |  | Pouring of Duct Banks for Low Voltage Network - (RD-A-1 /3)-Z4-A013-LV | 2d | 2027-04-10 | 2027-04-12 | RHD4CZ4A013LV2200 | -118.02d | 0d | Skilled labor [21.6 h]; Unskilled Labor [21.6 h]; Equipment Opreator [8.6 h]; Concrete Mixer Truck [4.36 h]; Concrete Pump [4.36 h]; Duct bank for LV cables UPVC (2xø110mm) [19.31 m] | 3,900.62 | A013 | Z4 | CONS | LV | Pouring | bef |
| RHD4CZ4A013LV2400 |  | Backfilling of Duct Banks for Low Voltage Network - (RD-A-1 /3)-Z4-A013-LV | 2d | 2027-04-12 | 2027-04-14 | RHD4CZ4A013LV2300 | -118.02d | 34d | Skilled labor [16.23 h]; Unskilled Labor [16.23 h]; Equipment Opreator [6.4 h]; Excavator-Poclain [6.4 h]; Duct bank for LV cables UPVC (2xø110mm) [4.46 m] | 900.92 | A013 | Z4 | CONS | LV | Backfilling | bef |
|  | 4257 | **RHD4-02-002-A013-(LV)-Low Voltage Drawpit** |  | 2027-09-21 | 2027-09-27 |  |  |  |  |  |  |  |  |  |  |  |
| RHD4CZ4A013LV5100 |  | Excavation of Drawpit size 900x900x1000mm for Low Voltage Network - (RD-A-1 /3)-Z4-A013-LV | 2d | 2027-09-21 | 2027-09-25 | RHD4CZ4A013LV4300, RHD4CZ4A013LV2300 | -153.02d | 0d | Skilled labor [3.59 h]; Unskilled Labor [3.59 h]; Equipment Opreator [2.94 h]; Excavator-Poclain [1.42 h]; Dump Truck [1.42 h]; Drawpit with medium duty steel cover, size900x900x1000mm, [0.6 Unit] | 2,206.2 | A013 | Z4 | CONS | LV | Excavation | AFT |
| RHD4CZ4A013LV5200 |  | Installation of Drawpit size 900x900x1000mm for Low Voltage Network - (RD-A-1 /3)-Z4-A013-LV | 2d | 2027-09-25 | 2027-09-27 | RHD4CZ4A013LV5100 | -142.02d | 16d | Skilled labor [3.59 h]; Unskilled Labor [3.59 h]; Equipment Opreator [1.42 h]; Boom Truck [1.42 h]; Drawpit with medium duty steel cover, size900x900x1000mm, [3.4 Unit] | 12,501.8 | A013 | Z4 | CONS | LV | Installation | AFT |
|  | 4258 | **RHD4-02-002-A013-(LV)-Low Voltage cables** |  | 2027-08-24 | 2027-09-14 |  |  |  |  |  |  |  |  |  |  |  |
| RHD4CZ4A013LV3100 |  | Excavation for Low Voltage Cables for Low Voltage Network - (RD-A-1 /3)-Z4-A013-LV | 5d | 2027-08-24 | 2027-08-30 | RHD4CZ4A013IRR2102, RHD4CZ4A013MV1100, RHD4CZ4A013IRR3203, RHD4CZ4A013IRR3200 | -153.02d | 0d | Skilled labor [53.8 h]; Unskilled Labor [107.71 h]; Equipment Opreator [107.71 h]; Excavator-Poclain [53.8 h]; Boom Truck [53.8 h]; Cable, Copper 4x185mm2/ CU/XLPE/PVC [18.59 m]; Cable, Copper 4x50mm2/ CU/XLPE/PVC +1x25mm2 CU/PVC [228.54 m] | 35,286.16 | A013 | Z4 | CONS | LV | Excavation | AFT |
| RHD4CZ4A013LV3200 |  | Cable Laying of Low Voltage Cables for Low Voltage Network - (RD-A-1 /3)-Z4-A013-LV | 5d | 2027-08-30 | 2027-09-05 | RHD4CZ4A013LV3100 | -153.02d | 0d | Skilled labor [44.87 h]; Unskilled Labor [179.47 h]; Electrician [89.74 h]; Equipment Opreator [134.6 h]; Boom Truck [44.87 h]; Cable Laying Machine [89.74 h]; Cable, Copper 4x185mm2/ CU/XLPE/PVC [55.77 m]; Cable, Copper 4x50mm2/ CU/XLPE/PVC +1x25mm2 CU/PVC [685.63 m] | 105,859.71 | A013 | Z4 | CONS | LV | Cable Laying | AFT |
| RHD4CZ4A013LV3300 |  | Warning tape and Backfill for Low Voltage Cables for Low Voltage Network - (RD-A-1 /3)-Z4-A013-LV | 5d | 2027-09-05 | 2027-09-11 | RHD4CZ4A013LV3200 | -153.02d | 0d | Skilled labor [44.87 h]; Unskilled Labor [179.47 h]; Electrician [89.74 h]; Equipment Opreator [44.87 h]; Boom Truck [44.87 h]; Cable, Copper 4x185mm2/ CU/XLPE/PVC [13.94 m]; Cable, Copper 4x50mm2/ CU/XLPE/PVC +1x25mm2 CU/PVC [171.41 m] | 26,464.27 | A013 | Z4 | CONS | LV | Warning tape and Backfill | AFT |
| RHD4CZ4A013LV3400 |  | Testing of Low Voltage Cables for Low Voltage Network - (RD-A-1 /3)-Z4-A013-LV | 3d | 2027-09-11 | 2027-09-14 | RHD4CZ4A013LV3300 | -153.02d | 0d | Skilled labor [26.9 h]; Unskilled Labor [107.71 h]; Electrician [53.8 h]; Equipment Opreator [26.9 h]; Boom Truck [26.9 h]; Cable, Copper 4x185mm2/ CU/XLPE/PVC [4.65 m]; Cable, Copper 4x50mm2/ CU/XLPE/PVC +1x25mm2 CU/PVC [57.14 m] | 8,823.12 | A013 | Z4 | CONS | LV | Testing | AFT |

| ID | WBS | Activity | Duration | Start | Finish | Predecessors | Total float | Free float | Resources | Cost | RDH4-01-001-Road and Block Names-1 | RDH4-01-001-Zones-1 | RDH4-01-001-Phases-1 | RDH4-01-001-Networks-1 | RDH4-01-001-Work Method-1 | RDH4-01-001-MENEM |
| --- | --- | --- | --- | --- | --- | --- | --- | --- | --- | --- | --- | --- | --- | --- | --- | --- |
|  | 4259 | **RHD4-02-002-A013-(LV)-Low Voltage Distribution Pillars** |  | 2027-09-14 | 2027-09-21 |  |  |  |  |  |  |  |  |  |  |  |
| RHD4CZ4A013LV4100 |  | Leveling for Distribution Pillars for Low Voltage Network - (RD-A-1 /3)-Z4-A013-LV | 2d | 2027-09-14 | 2027-09-16 | RHD4CZ4A013LV3400, RHD4CZ4A013LV3300 | -153.02d | 0d | Skilled labor [10.89 h]; Unskilled Labor [21.78 h]; Equipment Opreator [4.36 h]; Excavator-Poclain [2.18 h]; Boom Truck [2.18 h]; 0.6/1 KV Low Voltage Distribution Pillars with main breaker MCCB type and 5 Outgoing feeders MCCB type [0.15 Unit]; Supply and installation of KWH meter mounting frame including concrete block wall for installation of KWH meter according to the standards and specifications of SEC [0.15 Unit] | 3,088.8 | A013 | Z4 | CONS | LV | Leveling | AFT |
| RHD4CZ4A013LV4200 |  | Lean Concrete for Distribution Pillars for Low Voltage Network - (RD-A-1 /3)-Z4-A013-LV | 2d | 2027-09-16 | 2027-09-19 | RHD4CZ4A013LV4100 | -153.02d | 0d | Skilled labor [7.3 h]; Unskilled Labor [14.48 h]; Equipment Opreator [2.94 h]; Concrete Mixer Truck [1.42 h]; Concrete Pump [1.42 h]; 0.6/1 KV Low Voltage Distribution Pillars with main breaker MCCB type and 5 Outgoing feeders MCCB type [0.25 Unit]; Supply and installation of KWH meter mounting frame including concrete block wall for installation of KWH meter according to the standards and specifications of SEC [0.25 Unit] | 5,148 | A013 | Z4 | CONS | LV | Lean Concrete | AFT |
| RHD4CZ4A013LV4300 |  | Installation of Distribution Pillars for Low Voltage Network - (RD-A-1 /3)-Z4-A013-LV | 2d | 2027-09-19 | 2027-09-21 | RHD4CZ4A013LV4200 | -153.02d | 0d | Skilled labor [10.89 h]; Unskilled Labor [43.56 h]; Electrician [21.78 h]; Equipment Opreator [10.89 h]; Boom Truck [10.89 h]; 0.6/1 KV Low Voltage Distribution Pillars with main breaker MCCB type and 5 Outgoing feeders MCCB type [0.6 Unit]; Supply and installation of KWH meter mounting frame including concrete block wall for installation of KWH meter according to the standards and specifications of SEC [0.6 Unit] | 12,355.2 | A013 | Z4 | CONS | LV | Installation | AFT |
|  | 3126 | **RHD4-02-002-Z4-A013-Street Lighting Network - SL** |  | 2027-04-06 | 2027-06-08 |  |  |  |  |  |  |  |  |  |  |  |
|  | 3127 | **RHD4-02-002-A013-(SL)-Street Lighting duct banks** |  | 2027-04-06 | 2027-04-20 |  |  |  |  |  |  |  |  |  |  |  |
| RHD4CZ4A013SL2100 |  | Excavation of Duct Banks for Street Lighting Network - (RD-A-1 /3)-Z4-A013-SL | 3d | 2027-04-06 | 2027-04-10 | RHD4ENSDZ4APPSL170, RHD4CZ4A013LV2100 | -121.02d | 0d | Skilled labor [27.33 h]; Unskilled Labor [27.33 h]; Equipment Opreator [54.56 h]; Excavator-Poclain [27.33 h]; Dump Truck [27.33 h]; Road Crossing Duct for Street Lighting cables UPVC (2x?110mm) [3.76 m] | 759.73 | A013 | Z4 | CONS | SL | Excavation | bef |
| RHD4CZ4A013SL2200 |  | Installation of Duct Banks for Street Lighting Network - (RD-A-1 /3)-Z4-A013-SL | 4d | 2027-04-10 | 2027-04-14 | RHD4CZ4A013SL2100 | -121.02d | 0d | Carpenter [4.14 h]; Skilled labor [40.95 h]; Unskilled Labor [40.95 h]; Steel Fixer [4.14 h]; Road Crossing Duct for Street Lighting cables UPVC (2x?110mm) [3.76 m] | 759.73 | A013 | Z4 | CONS | SL | Installing | bef |
| RHD4CZ4A013SL2300 |  | Pouring of Duct Banks for Street Lighting Network - (RD-A-1 /3)-Z4-A013-SL | 3d | 2027-04-14 | 2027-04-18 | RHD4CZ4A013SL2200 | -121.02d | 0d | Skilled labor [27.33 h]; Unskilled Labor [27.33 h]; Equipment Opreator [10.89 h]; Concrete Mixer Truck [5.45 h]; Concrete Pump [5.45 h]; Road Crossing Duct for Street Lighting cables UPVC (2x?110mm) [24.45 m] | 4,938.27 | A013 | Z4 | CONS | SL | Pouring | bef |
| RHD4CZ4A013SL2400 |  | Backfilling of Duct Banks for Street Lighting Network - (RD-A-1 /3)-Z4-A013-SL | 2d | 2027-04-18 | 2027-04-20 | RHD4CZ4A013SL2300 | -121.02d | 0d | Skilled labor [20.47 h]; Unskilled Labor [20.47 h]; Equipment Opreator [8.17 h]; Excavator-Poclain [8.17 h]; Road Crossing Duct for Street Lighting cables UPVC (2x?110mm) [5.64 m] | 1,139.6 | A013 | Z4 | CONS | SL | Backfilling | bef |
|  | 3129 | **RHD4-02-002-A013-(SL)-Street Lighting cables** |  | 2027-05-08 | 2027-06-08 |  |  |  |  |  |  |  |  |  |  |  |
| RHD4CZ4A013SL3100 |  | Excavation for Street Lighting Cables for Street Lighting Network - (RD-A-1 /3)-Z4-A013-SL | 7d | 2027-05-08 | 2027-05-20 | RHD4ENSDZ4APPSL170, RHD4CZ4A013IRR1100, RHD4CZ4A013SL1100 | -122.02d | 0d | Skilled labor [72.86 h]; Unskilled Labor [145.71 h]; Equipment Opreator [145.71 h]; Excavator-Poclain [72.86 h]; Boom Truck [72.86 h]; Cable, Copper 4x25mm2/ CU/XLPE/SWA/PVC + 1x16mm2 CU/PVC [191.69 m]; Cable, Copper 4x16mm2/ CU/XLPE/SWA/PVC + 1x16mm2 CU/PVC [92.9 m]; Cable, Copper 4x10mm2/ CU/XLPE/SWA/PVC + 1x10mm2 CU/PVC [50.03 m] | 25,161.2 | A013 | Z4 | CONS | SL | Excavation | AFT |
| RHD4CZ4A013SL3200 |  | Cable Laying of Street Lighting Cables for Street Lighting Network - (RD-A-1 /3)-Z4-A013-SL | 6d | 2027-05-20 | 2027-05-27 | RHD4CZ4A013SL3100, RHD4ENMSSL2000, RHD4ENMSSL2010 | -122.02d | 0d | Skilled labor [60.8 h]; Unskilled Labor [242.96 h]; Electrician [121.43 h]; Equipment Opreator [182.2 h]; Boom Truck [60.8 h]; Cable Laying Machine [121.43 h]; Cable, Copper 4x25mm2/ CU/XLPE/SWA/PVC + 1x16mm2 CU/PVC [575.07 m]; Cable, Copper 4x16mm2/ CU/XLPE/SWA/PVC + 1x16mm2 CU/PVC [278.7 m]; Cable, Copper 4x10mm2/ CU/XLPE/SWA/PVC + 1x10mm2 CU/PVC [150.09 m] | 75,483.59 | A013 | Z4 | CONS | SL | Cable Laying | AFT |
| RHD4CZ4A013SL3300 |  | Warning tape and Backfill for Street Lighting Cables for Street Lighting Network - (RD-A-1 /3)-Z4-A013-SL | 6d | 2027-05-27 | 2027-06-03 | RHD4CZ4A013SL3200 | -122.02d | 0d | Skilled labor [60.8 h]; Unskilled Labor [242.96 h]; Electrician [121.43 h]; Equipment Opreator [60.8 h]; Boom Truck [60.8 h]; Cable, Copper 4x25mm2/ CU/XLPE/SWA/PVC + 1x16mm2 CU/PVC [143.77 m]; Cable, Copper 4x16mm2/ CU/XLPE/SWA/PVC + 1x16mm2 CU/PVC [69.68 m]; Cable, Copper 4x10mm2/ CU/XLPE/SWA/PVC + 1x10mm2 CU/PVC [37.52 m] | 18,870.92 | A013 | Z4 | CONS | SL | Warning tape and Backfill | AFT |
| RHD4CZ4A013SL3400 |  | Testing of Street Lighting Cables for Street Lighting Network - (RD-A-1 /3)-Z4-A013-SL | 4d | 2027-06-03 | 2027-06-08 | RHD4CZ4A013SL3300 | -109.02d | 13d | Skilled labor [36.48 h]; Unskilled Labor [145.71 h]; Electrician [72.86 h]; Equipment Opreator [36.48 h]; Boom Truck [36.48 h]; Cable, Copper 4x25mm2/ CU/XLPE/SWA/PVC + 1x16mm2 CU/PVC [47.92 m]; Cable, Copper 4x16mm2/ CU/XLPE/SWA/PVC + 1x16mm2 CU/PVC [23.23 m]; Cable, Copper 4x10mm2/ CU/XLPE/SWA/PVC + 1x10mm2 CU/PVC [12.51 m] | 6,290.3 | A013 | Z4 | CONS | SL | Testing | AFT |
|  | 3130 | **RHD4-02-002-A013-(SL)-Street Lighting Poles** |  | 2027-04-20 | 2027-05-26 |  |  |  |  |  |  |  |  |  |  |  |
| RHD4CZ4A013SL1100 |  | Excavation for RC Base for Lighting Poles for Street Lighting Network - (RD-A-1 /3)-Z4-A013-SL | 4d | 2027-04-20 | 2027-04-25 | RHD4CZ4A013SL2400, RHD4ENSDZ4APPSL170 | -121.02d | 0d | Skilled labor [38.44 h]; Unskilled Labor [38.44 h]; Equipment Opreator [76.99 h]; Excavator-Poclain [38.44 h]; Dump Truck [38.44 h]; Lighting polesdouble arms, height of ( 12 ) meters [4.5 Unit]; Lighting poles single arms, height of ( 10 ) meters [0.8 Unit] | 23,299.6 | A013 | Z4 | CONS | SL | Excavation | AFT |
| RHD4CZ4A013SL1200 |  | Installation for RC Base for Lighting Poles for Street Lighting Network - (RD-A-1 /3)-Z4-A013-SL | 4d | 2027-04-25 | 2027-04-29 | RHD4CZ4A013SL1100 | -118.02d | 0d | Skilled labor [38.44 h]; Unskilled Labor [38.44 h]; Equipment Opreator [76.99 h]; Excavator-Poclain [38.44 h]; Dump Truck [38.44 h]; Lighting polesdouble arms, height of ( 12 ) meters [11.25 Unit]; Lighting poles single arms, height of ( 10 ) meters [2 Unit] | 58,249 | A013 | Z4 | CONS | SL | RC Base | AFT |
| RHD4CZ4A013SL1300 |  | Backfill for RC Base for Lighting Poles for Street Lighting Network - (RD-A-1 /3)-Z4-A013-SL | 4d | 2027-04-29 | 2027-05-04 | RHD4CZ4A013SL1200 | -118.02d | 0d | Skilled labor [38.44 h]; Unskilled Labor [38.44 h]; Equipment Opreator [76.99 h]; Excavator-Poclain [38.44 h]; Dump Truck [38.44 h]; Lighting polesdouble arms, height of ( 12 ) meters [2.25 Unit]; Lighting poles single arms, height of ( 10 ) meters [0.4 Unit] | 11,649.8 | A013 | Z4 | CONS | SL | Backfill | AFT |
| RHD4CZ4A013SL1400 |  | Installation for Lighting Poles for Street Lighting Network - (RD-A-1 /3)-Z4-A013-SL | 6d | 2027-05-04 | 2027-05-11 | RHD4CZ4A013SL1300, RHD4PRSHLDOSSL1200, RHD4ENMSSL2000, RHD4ENMSSL2010, RHD4PRSHLSTAGSL1200 | -115.02d | 0d | Skilled labor [57.72 h]; Unskilled Labor [57.72 h]; Electrician [57.72 h]; Equipment Opreator [57.72 h]; Boom Truck [57.72 h]; Lighting polesdouble arms, height of ( 12 ) meters [27 Unit]; Lighting poles single arms, height of ( 10 ) meters [4.8 Unit] | 139,797.6 | A013 | Z4 | CONS | SL | Poles Installation | AFT |
| RHD4CZ4A013SL1500 |  | Luminaire Installation for Lighting Poles for Street Lighting Network - (RD-A-1 /3)-Z4-A013-SL | 7d | 2027-05-13 | 2027-05-26 | RHD4CZ4A013SL1400, RHD4CZ4A013SL6100, RHD4PRSHLDOSSL1300, RHD4PRSHLSTAGSL1300 | -115.02d | 7d | Unskilled Labor [142.34 h]; Electrician [71.11 h]; Equipment Opreator [27.33 h]; Boom Truck [28.42 h]; Street Lighting( LED) Luminaire of Output ?39018 lumen [90 Unit]; Street Lighting( LED) Luminaire of Output ?10898 lumen [8 Unit] | 98,484 | A013 | Z4 | CONS | SL | Luminaire Installation | AFT |
|  | 3132 | **RHD4-02-002-A013-(SL)-Street Lighting Earthing System** |  | 2027-05-11 | 2027-05-13 |  |  |  |  |  |  |  |  |  |  |  |
| RHD4CZ4A013SL6100 |  | Installation of Earthing for Lighting Poles and Fedder Pillers for Street Lighting Network - (RD-A-1 /3)-Z4-A013-SL | 2d | 2027-05-11 | 2027-05-13 | RHD4CZ4A013SL1400, RHD4ENMSER2000, RHD4ENMSER2010, RHD4CZ4A013SL5200 FF | -115.02d | 0d | Skilled labor [2.18 h]; Unskilled Labor [2.18 h]; Equipment Opreator [4.36 h]; Excavator-Poclain [2.18 h]; Dump Truck [2.18 h]; Street Lighting Feeder pillars - ER [1 Unit]; Including lighting poles circuits - ER [2 Unit] | 2,354 | A013 | Z4 | CONS | SL | Installation | AFT |
|  | 3128 | **RHD4-02-002-A013-(SL)-Street Lighting Drawpit** |  | 2027-04-25 | 2027-04-29 |  |  |  |  |  |  |  |  |  |  |  |
| RHD4CZ4A013SL5100 |  | Excavation of Drawpit size 600x600x900mm for Street Lighting Network - (RD-A-1 /3)-Z4-A013-SL | 2d | 2027-04-25 | 2027-04-27 | RHD4CZ4A013SL2300, RHD4ENSDZ4APPSL170, RHD4CZ4A013SL1100 | -121.02d | 0d | Skilled labor [5.45 h]; Unskilled Labor [5.45 h]; Equipment Opreator [4.36 h]; Excavator-Poclain [2.18 h]; Dump Truck [2.18 h]; Drawpit with medium duty steel cover, size600x600x900mm, [0.9 Unit] | 2,205.9 | A013 | Z4 | CONS | SL | Excavation | AFT |
| RHD4CZ4A013SL5200 |  | Installation of Drawpit size 600x600x900mm for Street Lighting Network - (RD-A-1 /3)-Z4-A013-SL | 2d | 2027-04-27 | 2027-04-29 | RHD4CZ4A013SL5100, RHD4PRSHLDOSSL1400, RHD4PRSHLSTAGSL1400 | -121.02d | 0d | Skilled labor [5.45 h]; Unskilled Labor [5.45 h]; Equipment Opreator [2.18 h]; Boom Truck [2.18 h]; Drawpit with medium duty steel cover, size600x600x900mm, [5.1 Unit] | 12,500.1 | A013 | Z4 | CONS | SL | Installation | AFT |

| ID | WBS | Activity | Duration | Start | Finish | Predecessors | Complete | Planned start | Planned finish | Total float | Free float | Resources | Cost | Actual cost | RDH4-01-001-Road and Block Names-1 | RDH4-01-001-Zones-1 | RDH4-01-001-Phases-1 | RDH4-01-001-Networks-1 | RDH4-01-001-Work Method-1 | RDH4-01-001-MENEM |
| --- | --- | --- | --- | --- | --- | --- | --- | --- | --- | --- | --- | --- | --- | --- | --- | --- | --- | --- | --- | --- |
|  | 3138 | **RHD4-02-002-Z4-A013-Telecommunications Network - TC** |  | 2027-05-04 | 2027-06-15 |  |  |  |  |  |  |  |  |  |  |  |  |  |  |  |
|  | 3139 | **RHD4-02-002-A013-(TC)-Telecommunications Ducts** |  | 2027-05-04 | 2027-06-15 |  |  |  |  |  |  |  |  |  |  |  |  |  |  |  |
| RHD4CZ4A013TC2100 |  | Excavation of HDPE Ducts for Telecom Network - (RD-A-1 /3)-Z4-A013-TC | 9d | 2027-05-04 | 2027-05-19 | RHD4ENSDZ4APPTC190, RHD4CZ4A013IRR2102, RHD4CZ4A013SL1300, RHD4CZ4A013IRR3203 |  |  |  | -118.02d | 0d | Skilled labor [96.8 h]; Unskilled Labor [96.8 h]; Equipment Opreator [193.52 h]; Excavator-Poclain [96.8 h]; Dump Truck [96.8 h]; (6*50mm) HDPE ducts -TC [266.55 m] | 23,456.4 |  | A013 | Z4 | CONS | TC | Excavation | AFT |
| RHD4CZ4A013TC2200 |  | Installation of HDPE Ducts for Telecom Network - (RD-A-1 /3)-Z4-A013-TC | 14d | 2027-05-19 | 2027-06-05 | RHD4CZ4A013TC2100, RHD4PRSHLDOSTC1000, RHD4PRSHLSTAGTC1000 |  |  |  | -118.02d | 0d | Carpenter [14.48 h]; Skilled labor [145.17 h]; Unskilled Labor [145.17 h]; Steel Fixer [14.48 h]; (6*50mm) HDPE ducts -TC [866.29 m] | 76,233.3 |  | A013 | Z4 | CONS | TC | Installing | AFT |
| RHD4CZ4A013TC2400 |  | Backfilling of HDPE Ducts for Telecom Network - (RD-A-1 /3)-Z4-A013-TC | 9d | 2027-06-05 | 2027-06-15 | RHD4CZ4A013TC2200, RHD4CZ4A013TC5200, RHD4CZ4A013IRR3200 |  |  |  | -118.02d | 75.98d | Skilled labor [96.8 h]; Unskilled Labor [96.8 h]; Equipment Opreator [38.66 h]; Excavator-Poclain [38.66 h]; (6*50mm) HDPE ducts -TC [199.91 m] | 17,592.3 |  | A013 | Z4 | CONS | TC | Backfilling | AFT |
|  | 3140 | **RHD4-02-002-A013-(TC)-Telecommunications Manholes** |  | 2027-05-19 | 2027-05-26 |  |  |  |  |  |  |  |  |  |  |  |  |  |  |  |
| RHD4CZ4A013TC5100 |  | Excavation for Manholes for Telecom Network - (RD-A-1 /3)-Z4-A013-TC | 3d | 2027-05-19 | 2027-05-23 | RHD4CZ4A013TC2100, RHD4ENSDZ4APPTC190 |  |  |  | -110.02d | 0d | Skilled labor [9.6 h]; Unskilled Labor [9.6 h]; Equipment Opreator [7.62 h]; Excavator-Poclain [3.81 h]; Dump Truck [3.81 h]; Manhole Type 1 - TC [0.75 nr]; Manhole Type 2 - TC [0.15 nr] | 6,066.9 |  | A013 | Z4 | CONS | TC | Excavation | AFT |
| RHD4CZ4A013TC5200 |  | Installation of Manholes for Telecom Network - (RD-A-1 /3)-Z4-A013-TC | 3d | 2027-05-23 | 2027-05-26 | RHD4CZ4A013TC5100, RHD4CZ4A013TC2200 SS, RHD4PRSHLDOSTC1200, RHD4PRSHLSTAGTC1200 |  |  |  | -110.02d | 8d | Skilled labor [9.6 h]; Unskilled Labor [9.6 h]; Equipment Opreator [3.81 h]; Boom Truck [3.81 h]; Manhole Type 1 - TC [4.25 nr]; Manhole Type 2 - TC [0.85 nr] | 34,379.1 |  | A013 | Z4 | CONS | TC | Installation | AFT |
|  | 5411 | **RHD4-02-002-A013-(TC)-Telecomminications Road Crossings** |  |  |  |  |  |  |  |  |  |  |  |  |  |  |  |  |  |  |
|  | 3142 | **RHD4-02-002-Z4-A013-Information and Communication Technologies - ICT** |  | 2027-04-10 | 2027-07-29 |  |  |  |  |  |  |  |  |  |  |  |  |  |  |  |
|  | 3143 | **RHD4-02-002-A013-(ICT)-Information and Communication Technologies Ducts** |  | 2027-06-03 | 2027-07-29 |  |  |  |  |  |  |  |  |  |  |  |  |  |  |  |
| RHD4CZ4A013ICT2100 |  | Excavation of HDPE Ducts for ICT Network - (RD-A-1 /3)-Z4-A013-ICT | 17d | 2027-06-03 | 2027-06-23 | RHD4CZ4A013SL3300, RHD4ENSDZ4APPICT200, RHD4CZ4A013SL6100, RHD4CZ4A013SL1500 |  |  |  | -122.02d | 0d | Skilled labor [182.63 h]; Unskilled Labor [182.63 h]; Equipment Opreator [365.15 h]; Excavator-Poclain [182.63 h]; Dump Truck [182.63 h]; (2*50mm) HDPE ducts -ICT [503 m] | 19,114 |  | A013 | Z4 | CONS | ICT | Excavation | AFT |
| RHD4CZ4A013ICT2200 |  | Installation of HDPE Ducts for ICT Network - (RD-A-1 /3)-Z4-A013-ICT | 11d | 2027-06-23 | 2027-07-06 | RHD4CZ4A013ICT2100, RHD4PRSHLDOSICT1000, RHD4PRSHLSTAGICT1000 |  |  |  | -119.02d | 3d | Carpenter [11 h]; Skilled labor [109.56 h]; Unskilled Labor [109.56 h]; Steel Fixer [11 h]; (2*50mm) HDPE ducts -ICT [1634.75 m] | 62,120.5 |  | A013 | Z4 | CONS | ICT | Installing | AFT |
| RHD4CZ4A013ICT2400 |  | Backfilling of HDPE Ducts for ICT Network - (RD-A-1 /3)-Z4-A013-ICT | 17d | 2027-07-10 | 2027-07-29 | RHD4CZ4A013ICT2200, RHD4CZ4A013ICT5200 |  |  |  | -122.02d | 0d | Skilled labor [182.63 h]; Unskilled Labor [182.63 h]; Equipment Opreator [73.07 h]; Excavator-Poclain [73.07 h]; (2*50mm) HDPE ducts -ICT [377.25 m] | 14,335.5 |  | A013 | Z4 | CONS | ICT | Backfilling | AFT |
|  | 3144 | **RHD4-02-002-A013-(ICT)-Information and Communication Technologies Manholes** |  | 2027-06-23 | 2027-07-10 |  |  |  |  |  |  |  |  |  |  |  |  |  |  |  |
| RHD4CZ4A013ICT5100 |  | Excavation for Manholes for ICT Network - (RD-A-1 /3)-Z4-A013-ICT | 7d | 2027-06-23 | 2027-07-01 | RHD4CZ4A013ICT2100, RHD4ENSDZ4APPICT200, RHD4CZ4A013SL3400 |  |  |  | -122.02d | 0d | Skilled labor [19.06 h]; Unskilled Labor [19.06 h]; Equipment Opreator [15.25 h]; Excavator-Poclain [7.62 h]; Dump Truck [7.62 h]; Manhole Type 1 - ICT [1.8 nr]; Manhole Type 2 - ICT [0.15 nr] | 10,516.35 |  | A013 | Z4 | CONS | ICT | Excavation | AFT |
| RHD4CZ4A013ICT5200 |  | Installation of Manholes for ICT Network - (RD-A-1 /3)-Z4-A013-ICT | 7d | 2027-07-01 | 2027-07-10 | RHD4CZ4A013ICT5100, RHD4CZ4A013ICT2200 SS, RHD4PRSHLDOSICT1200, RHD4PRSHLSTAGICT1200 |  |  |  | -122.02d | 0d | Skilled labor [19.06 h]; Unskilled Labor [19.06 h]; Equipment Opreator [7.62 h]; Boom Truck [7.62 h]; Manhole Type 1 - ICT [10.2 nr]; Manhole Type 2 - ICT [0.85 nr] | 59,592.65 |  | A013 | Z4 | CONS | ICT | Installation | AFT |
|  | 5415 | **RHD4-02-002-A013-(ICT)-Information and Communication Technologies Road Crossings** |  | 2027-04-10 | 2027-05-05 |  |  |  |  |  |  |  |  |  |  |  |  |  |  |  |
| RHD4CZ4A013ICT3100 |  | Excavation for Road Crossings for ICT Network - (RD-A-1 /3)-Z4-A013-ICT | 5d | 2027-04-10 | 2027-04-15 | RHD4ENSDZ4APPICT200, RHD4CZ4A013SL2100 |  |  |  | -121.02d | 0d | Skilled labor [47.7 h]; Unskilled Labor [47.7 h]; Equipment Opreator [95.29 h]; Excavator-Poclain [47.7 h]; Dump Truck [47.7 h]; Road crossing ducts, (2*50mm) HDPE -ICT [8.75 m] | 332.5 |  | A013 | Z4 | CONS | ICT | Excavation | bef |
| RHD4CZ4A013ICT3200 |  | Installation of Road Crossings for ICT Network - (RD-A-1 /3)-Z4-A013-ICT | 6d | 2027-04-15 | 2027-04-22 | RHD4CZ4A013ICT3100 |  |  |  | -121.02d | 0d | Carpenter [6.32 h]; Skilled labor [63.49 h]; Unskilled Labor [63.49 h]; Steel Fixer [6.32 h]; Road crossing ducts, (2*50mm) HDPE -ICT [8.75 m] | 332.5 |  | A013 | Z4 | CONS | ICT | Installing | bef |
| RHD4CZ4A013ICT3300 |  | Pouring of Road Crossings for ICT Network - (RD-A-1 /3)-Z4-A013-ICT | 6d | 2027-04-22 | 2027-04-29 | RHD4CZ4A013ICT3200 |  |  |  | -121.02d | 0d | Skilled labor [63.49 h]; Unskilled Labor [63.49 h]; Equipment Opreator [25.37 h]; Concrete Mixer Truck [12.74 h]; Concrete Pump [12.74 h]; Road crossing ducts, (2*50mm) HDPE -ICT [56.88 m] | 2,161.44 |  | A013 | Z4 | CONS | ICT | Pouring | bef |
| RHD4CZ4A013ICT3400 |  | Backfilling of Road Crossings for ICT Network - (RD-A-1 /3)-Z4-A013-ICT | 5d | 2027-04-29 | 2027-05-05 | RHD4CZ4A013ICT3300 |  |  |  | -121.02d | 54.98d | Skilled labor [47.7 h]; Unskilled Labor [47.7 h]; Equipment Opreator [19.06 h]; Excavator-Poclain [19.06 h]; Road crossing ducts, (2*50mm) HDPE -ICT [13.13 m] | 498.94 |  | A013 | Z4 | CONS | ICT | Backfilling | bef |
|  | 3133 | **RHD4-02-002-Z4-A013-Landscape Network - LS** |  |  |  |  |  |  |  |  |  |  |  |  |  |  |  |  |  |  |
|  | 3134 | **RHD4-02-002-A013-(LS)-Landscape Lighting cables** |  |  |  |  |  |  |  |  |  |  |  |  |  |  |  |  |  |  |
|  | 3135 | **RHD4-02-002-A013-(LS)-Landscape Feeder Pillars** |  |  |  |  |  |  |  |  |  |  |  |  |  |  |  |  |  |  |
|  | 3136 | **RHD4-02-002-A013-(LS)-Landscape Bollard Poles** |  |  |  |  |  |  |  |  |  |  |  |  |  |  |  |  |  |  |
|  | 3137 | **RHD4-02-002-A013-(LS)-Landscape Feeder Pillars Earthing** |  |  |  |  |  |  |  |  |  |  |  |  |  |  |  |  |  |  |
|  | 3146 | **RHD4-02-002-Z4-A013-Security Network - CCTV** |  |  |  |  |  |  |  |  |  |  |  |  |  |  |  |  |  |  |
|  | 3147 | **RHD4-02-002-A013-(CCTV)-Civil Works** |  |  |  |  |  |  |  |  |  |  |  |  |  |  |  |  |  |  |
|  | 3148 | **RHD4-02-002-A013-(CCTV)-CCTV Poles** |  |  |  |  |  |  |  |  |  |  |  |  |  |  |  |  |  |  |
|  | 3149 | **RHD4-02-002-A013-(CCTV)-Camera** |  |  |  |  |  |  |  |  |  |  |  |  |  |  |  |  |  |  |
|  | 3150 | **RHD4-02-002-A013-(CCTV)-Power and Infrastructure** |  |  |  |  |  |  |  |  |  |  |  |  |  |  |  |  |  |  |
|  | 3152 | **RHD4-02-002-A013-(CCTV)-CCTV Panels and Components** |  |  |  |  |  |  |  |  |  |  |  |  |  |  |  |  |  |  |
|  | 3163 | **RHD4-02-002-Z4-RA02** |  | 2026-06-30 | 2027-07-24 |  |  |  |  |  |  |  |  |  |  |  |  |  |  |  |
|  | 3342 | **RHD4-02-002-Z4-RA02-Road Works - RD** |  | 2026-06-30 | 2027-07-24 |  |  |  |  |  |  |  |  |  |  |  |  |  |  |  |
|  | 3343 | **RHD4-02-002-RA02-(RD)-Subgrade** |  | 2026-06-30 | 2026-07-19 |  |  |  |  |  |  |  |  |  |  |  |  |  |  |  |
| RHD4CZ4RA02RD1100 |  | Supply, lay and compaction subgrade compacted thickness 300 mm for Roads - (ROUND-02)-Z4-RA02-RD | 5d | 2026-06-30 A | 2026-07-19 A | RHD4ENSDZ4APPRD220, RHD4CZ4A013RD1100, RHD4ENSDZ4APPEW100 SS | 100% | 2026-08-24 | 2026-08-29 |  |  | Skilled labor [67.52 h]; Unskilled Labor [135.15 h]; Electrician [67.52 h]; Equipment Opreator [461.42 h]; Water Truck [22.33 h]; Roller compactor [33.76 h]; Grader [67.52 h]; Dump Truck [337.82 h]; Subgrade [3249.54 m3] | 61,741.26 | 61,741.26 | RA02 | Z4 | CONS | RD | Subgrade | bef |

| ID | WBS | Activity | Duration | Start | Finish | Predecessors | Total float | Free float | Resources | Cost | RDH4-01-001-Road and Block Names-1 | RDH4-01-001-Zones-1 | RDH4-01-001-Phases-1 | RDH4-01-001-Networks-1 | RDH4-01-001-Work Method-1 | RDH4-01-001-MENEM |
| --- | --- | --- | --- | --- | --- | --- | --- | --- | --- | --- | --- | --- | --- | --- | --- | --- |
|  | 3344 | **RHD4-02-002-RA02-(RD)-Aggregate Base Course** |  | 2027-02-14 | 2027-02-20 |  |  |  |  |  |  |  |  |  |  |  |
| RHD4CZ4RA02RD2100 |  | Supply, lay and compaction Aggregate base course compacted thickness 300 mmfor Roads - (ROUND-02)-Z4-RA02-RD | 5d | 2027-02-14 | 2027-02-20 | RHD4CZ4RA02RD1100 | -157.02d | 0d | Skilled labor [25.05 h]; Unskilled Labor [50.1 h]; Equipment Opreator [316.8 h]; Water Truck [16.55 h]; Roller compactor [50.1 h]; Grader [50.1 h]; Dump Truck [200.16 h]; Aggregate Base Courses [2041.03 m3] | 116,338.71 | RA02 | Z4 | CONS | RD | ABC | bef |
|  | 3345 | **RHD4-02-002-RA02-(RD)-Bituminous base course Two Layers, including (MC1)&(RC2)** |  | 2027-02-20 | 2027-06-17 |  |  |  |  |  |  |  |  |  |  |  |
| RHD4CZ4RA02RD3100 |  | Supply, lay and Asphaltic base course including Prime Coat (MC1) for 1st Layer - (ROUND-02)-Z4-RA02-RD | 3d | 2027-02-20 | 2027-02-24 | RHD4CZ4RA02RD2100, RHD4PRSHLDOSRD1100, RHD4ENMSASPH2000, RHD4ENMSASPH2010, RHD4PRSHLSTAGRD1100 | -155.02d | 38d | Skilled labor [26.46 h]; Unskilled Labor [159 h]; Equipment Opreator [397.39 h]; Bobcat [26.46 h]; Roller compactor [26.46 h]; Asphalt Paver [26.46 h]; Rubber Compactor [53.04 h]; MC1/RC2 Sprinkler [26.46 h]; Dump Truck [238.5 h]; Bituminous base course (Grading I - Class A), including Prime coat (MC1) & tack coate (RC2) [969.37 m3] | 463,358.86 | RA02 | Z4 | CONS | RD | 150 mm | AFT |
| RHD4CZ4RA02RD3200 |  | Supply, lay and Asphaltic base course including Tack Coat (RC2) for 2nd Layer - (ROUND-02)-Z4-RA02-RD | 3d | 2027-06-14 | 2027-06-17 | RHD4CZ4RA02RD3100, RHD4PRSHLDOSRD1100, RHD4PRSHLSTAGRD1100, RHD4CZ4RA02CCTV2100, RHD4CZ4RA02CCTV6100 | -113.06d | 0d | Skilled labor [26.46 h]; Unskilled Labor [159 h]; Equipment Opreator [397.39 h]; Bobcat [26.46 h]; Roller compactor [26.46 h]; Asphalt Paver [26.46 h]; Rubber Compactor [53.04 h]; MC1/RC2 Sprinkler [26.46 h]; Dump Truck [238.5 h]; Bituminous base course (Grading I - Class A), including Prime coat (MC1) & tack coate (RC2) [969.37 m3] | 463,358.86 | RA02 | Z4 | CONS | RD | 150 mm | AFT |
|  | 3347 | **RHD4-02-002-RA02-(RD)-Precast Concrete Curb** |  | 2027-06-17 | 2027-06-24 |  |  |  |  |  |  |  |  |  |  |  |
| RHD4CZ4RA02RD5100 |  | Supply and installation Precast Concrete Kerb for Roads - (ROUND-02)-Z4-RA02-RD | 6d | 2027-06-17 | 2027-06-24 | RHD4CZ4RA02RD3200, RHD4PRSHLDOSRD1200, RHD4ENMSRD2000, RHD4ENMSRD2010, RHD4PRSHLSTAGRD1200 | -112.06d | 0d | Mason [176.42 h]; Skilled labor [58.81 h]; Unskilled Labor [176.42 h]; Equipment Opreator [117.6 h]; Bobcat [58.81 h]; Concrete Mixer Truck [58.81 h]; Precast Concrete Curbstone, type K1 [2430 m] | 133,650 | RA02 | Z4 | CONS | RD | Curbs | AFT |
|  | 3350 | **RHD4-02-002-RA02-(RD)-Traffic Signage** |  | 2027-06-24 | 2027-07-06 |  |  |  |  |  |  |  |  |  |  |  |
| RHD4CZ4RA02RD8100 |  | Installation of Traffic Signage for Road Network - (ROUND-02)-Z4-RA02-RD | 10d | 2027-06-24 | 2027-07-06 | RHD4CZ4RA02RD5100, RHD4PRSHLDOSRD1600, RHD4PRSHLDOSST1401, RHD4PRSHLDOSRD1500, RHD4PRSHLSTAGRD1600, RHD4PRSHLSTAGRD1500 | -93.06d | 0d | Skilled labor [217.81 h]; Unskilled Labor [108.9 h]; Electrician [56.63 h]; Equipment Opreator [44.43 h]; Boom Truck [21.78 h]; Concrete Mixer Truck [22.65 h]; Traffic signs, ground mounted, 1 Sheet Aluminium, (breakaway)Single post [17 nr]; Traffic signs, ground mounted, 2 Sheets Aluminium, (breakaway)Single post [12 nr]; Traffic signs, ground mounted, 1 Sheets Aluminium, (breakaway)Double post [4 nr] | 50,266 | RA02 | Z4 | CONS | RD | Traffic Signage | AFT |
|  | 3348 | **RHD4-02-002-RA02-(RD)-Precast Interlocking Block Pavers** |  |  |  |  |  |  |  |  |  |  |  |  |  |  |
|  | 3346 | **RHD4-02-002-RA02-(RD)-Bituminous concrete wearing course including tack coat (RC2)** |  | 2027-06-24 | 2027-06-27 |  |  |  |  |  |  |  |  |  |  |  |
| RHD4CZ4RA02RD4100 |  | Supply, lay and compaction Asphaltic wearing course including tack Coat (RC2)for Road Network - (ROUND-02)-Z4-RA02-RD | 2d | 2027-06-24 | 2027-06-27 | RHD4CZ4RA02RD5100 | -112.06d | 0d | Skilled labor [10.24 h]; Unskilled Labor [61.42 h]; Equipment Opreator [153.55 h]; Bobcat [10.24 h]; Roller compactor [10.24 h]; Asphalt Paver [10.24 h]; Rubber Compactor [20.47 h]; MC1/RC2 Sprinkler [10.24 h]; Dump Truck [92.13 h]; Bituminous concrete wearing course, (Grading I - Class A), including tack coat (RC2) [488.25 m3] | 265,119.75 | RA02 | Z4 | CONS | RD | 50 mm | AFT |
|  | 3349 | **RHD4-02-002-RA02-(RD)-Pavement Marking** |  | 2027-06-27 | 2027-07-24 |  |  |  |  |  |  |  |  |  |  |  |
| RHD4CZ4RA02RD7100 |  | Pavement Markings for Road Network - (ROUND-02)-Z4-RA02-RD | 8d | 2027-06-27 | 2027-07-06 | RHD4CZ4RA02RD4100, RHD4PRSHLDOSRD1500, RHD4PRSHLSTAGRD1500 | -112.06d | 69.94d | Skilled labor [83.2 h]; Unskilled Labor [166.4 h]; Equipment Opreator [83.2 h]; Road Marking Machine [83.2 h]; Retroreflective Thermoplastic White Traffic Markings [283.54 m2]; Retroreflective Thermoplastic Yellow, Traffic Markings [230 m2]; Rumble strip [284.85 m]; Retroreflective raised pavement markers (cat eyes) [1145 nr] | 89,886.29 | RA02 | Z4 | CONS | RD | Pavement Marking | AFT |
| RHD4CZ4RA02RD9100 |  | Installation for Speed Bump for Road Network - (ROUND-02)-Z4-RA02-RD | 15d | 2027-07-06 | 2027-07-24 | RHD4CZ4RA02RD8100, RHD4CZ4RA02SL5200 | -93.06d | 62.95d | Mason [479.28 h]; Skilled labor [159.76 h]; Unskilled Labor [319.52 h]; Equipment Opreator [31.91 h]; Boom Truck [31.91 h]; SPEED TABLE [1026.82 m2] | 126,298.86 | RA02 | Z4 | CONS | RD | Speed Bump | AFT |
|  | 3167 | **RHD4-02-002-Z4-RA02-Storm Network - ST** |  |  |  |  |  |  |  |  |  |  |  |  |  |  |
|  | 3186 | **RHD4-02-002-RA02-(ST)-MH Works - 2000 mm diameter** |  |  |  |  |  |  |  |  |  |  |  |  |  |  |
|  | 3185 | **RHD4-02-002-RA02-(ST)-MH Works - 1500 mm diameter** |  |  |  |  |  |  |  |  |  |  |  |  |  |  |
|  | 3184 | **RHD4-02-002-RA02-(ST)-MH Works - 1200 mm diameter** |  |  |  |  |  |  |  |  |  |  |  |  |  |  |
|  | 3175 | **RHD4-02-002-RA02-(ST)-GRP Pipes - 1100 mm diameter** |  |  |  |  |  |  |  |  |  |  |  |  |  |  |
|  | 3173 | **RHD4-02-002-RA02-(ST)-GRP Pipes - 900 mm diameter** |  |  |  |  |  |  |  |  |  |  |  |  |  |  |
|  | 3168 | **RHD4-02-002-RA02-(ST)-GRP Pipes - 400 mm diameter** |  |  |  |  |  |  |  |  |  |  |  |  |  |  |
|  | 3183 | **RHD4-02-002-RA02-(ST)-UPVC Pipes - 400 mm diameter** |  |  |  |  |  |  |  |  |  |  |  |  |  |  |
|  | 3182 | **RHD4-02-002-RA02-(ST)-UPVC Pipes - 300 mm diameter** |  |  |  |  |  |  |  |  |  |  |  |  |  |  |
|  | 3190 | **RHD4-02-002-RA02-(ST)-Concrete Encasement** |  |  |  |  |  |  |  |  |  |  |  |  |  |  |
|  | 3191 | **RHD4-02-002-Z4-RA02-Catch Basin - ST** |  |  |  |  |  |  |  |  |  |  |  |  |  |  |
|  | 3192 | **RHD4-02-002-RA02-(ST)-Single Catch Basin Works** |  |  |  |  |  |  |  |  |  |  |  |  |  |  |
|  | 3193 | **RHD4-02-002-RA02-(ST)-Double Catch Basin Works** |  |  |  |  |  |  |  |  |  |  |  |  |  |  |
|  | 1978 | **RHD4-02-002-Z4-RA02-Medium Voltage Network - MV** |  |  |  |  |  |  |  |  |  |  |  |  |  |  |
|  | 1979 | **RHD4-02-002-RA02-(MV)-Medium Voltage cable trench** |  |  |  |  |  |  |  |  |  |  |  |  |  |  |
|  | 1981 | **RHD4-02-002-RA02-(MV)-Medium Voltage cables 3Cx 500 mm²** |  |  |  |  |  |  |  |  |  |  |  |  |  |  |
|  | 3309 | **RHD4-02-002-Z4-RA02-Low Voltage Network - LV** |  |  |  |  |  |  |  |  |  |  |  |  |  |  |
|  | 3312 | **RHD4-02-002-RA02-(LV)-Low Voltage cables** |  |  |  |  |  |  |  |  |  |  |  |  |  |  |
|  | 4259 | **RHD4-02-002-RA02-(LV)-Low Voltage Distribution Pillars** |  |  |  |  |  |  |  |  |  |  |  |  |  |  |
|  | 3315 | **RHD4-02-002-Z4-RA02-Street Lighting Network - SL** |  | 2027-04-10 | 2027-05-19 |  |  |  |  |  |  |  |  |  |  |  |
|  | 3316 | **RHD4-02-002-RA02-(SL)-Street Lighting duct banks** |  | 2027-04-10 | 2027-04-24 |  |  |  |  |  |  |  |  |  |  |  |
| RHD4CZ4RA02SL2100 |  | Excavation of Duct Banks for Street Lighting Network - (ROUND-02)-Z4-RA02-SL | 3d | 2027-04-10 | 2027-04-13 | RHD4CZ4RA02RA3000, RHD4ENSDZ4APPSL170, RHD4CZ4A013SL2100 | -121.02d | 0d | Skilled labor [24.29 h]; Unskilled Labor [24.29 h]; Equipment Opreator [48.57 h]; Excavator-Poclain [24.29 h]; Dump Truck [24.29 h]; Road Crossing Duct for Street Lighting cables UPVC (2x?110mm) [3.34 m] | 675.6 | RA02 | Z4 | CONS | SL | Excavation | bef |
| RHD4CZ4RA02SL2200 |  | Installation of Duct Banks for Street Lighting Network - (ROUND-02)-Z4-RA02-SL | 4d | 2027-04-13 | 2027-04-18 | RHD4CZ4RA02SL2100, RHD4PRSHLDOSSL1000, RHD4PRSHLSTAGSL1000 | -121.02d | 0d | Carpenter [3.59 h]; Skilled labor [36.37 h]; Unskilled Labor [36.37 h]; Steel Fixer [3.59 h]; Road Crossing Duct for Street Lighting cables UPVC (2x?110mm) [3.34 m] | 675.6 | RA02 | Z4 | CONS | SL | Installing | bef |
| RHD4CZ4RA02SL2300 |  | Pouring of Duct Banks for Street Lighting Network - (ROUND-02)-Z4-RA02-SL | 3d | 2027-04-18 | 2027-04-21 | RHD4CZ4RA02SL2200 | -121.02d | 0d | Skilled labor [24.29 h]; Unskilled Labor [24.29 h]; Equipment Opreator [9.69 h]; Concrete Mixer Truck [4.9 h]; Concrete Pump [4.9 h]; Road Crossing Duct for Street Lighting cables UPVC (2x?110mm) [21.74 m] | 4,391.39 | RA02 | Z4 | CONS | SL | Pouring | bef |
| RHD4CZ4RA02SL2400 |  | Backfilling of Duct Banks for Street Lighting Network - (ROUND-02)-Z4-RA02-SL | 2d | 2027-04-21 | 2027-04-24 | RHD4CZ4RA02SL2300 | -121.02d | 0d | Skilled labor [18.19 h]; Unskilled Labor [18.19 h]; Equipment Opreator [7.3 h]; Excavator-Poclain [7.3 h]; Road Crossing Duct for Street Lighting cables UPVC (2x?110mm) [5.02 m] | 1,013.4 | RA02 | Z4 | CONS | SL | Backfilling | bef |

| ID | WBS | Activity | Duration | Start | Finish | Predecessors | Total float | Free float | Resources | Cost | RDH4-01-001-Road and Block Names-1 | RDH4-01-001-Zones-1 | RDH4-01-001-Phases-1 | RDH4-01-001-Networks-1 | RDH4-01-001-Work Method-1 | RDH4-01-001-MENEM |
| --- | --- | --- | --- | --- | --- | --- | --- | --- | --- | --- | --- | --- | --- | --- | --- | --- |
|  | 3318 | **RHD4-02-002-RA02-(SL)-Street Lighting cables** |  | 2027-04-13 | 2027-04-22 |  |  |  |  |  |  |  |  |  |  |  |
| RHD4CZ4RA02SL3100 |  | Excavation for Street Lighting Cables for Street Lighting Network - (ROUND-02)-Z4-RA02-SL | 2d | 2027-04-13 | 2027-04-15 | RHD4ENSDZ4APPSL170, RHD4CZ4RA02SL2100, RHD4CZ4RA02RD3100 | -114.02d | 0d | Skilled labor [13.6 h]; Unskilled Labor [27.2 h]; Equipment Opreator [27.2 h]; Excavator-Poclain [13.6 h]; Boom Truck [13.6 h]; Cable, Copper 4x10mm2/ CU/XLPE/SWA/PVC + 1x10mm2 CU/PVC [62.52 m] | 3,063.42 | RA02 | Z4 | CONS | SL | Excavation | AFT |
| RHD4CZ4RA02SL3200 |  | Cable Laying of Street Lighting Cables for Street Lighting Network - (ROUND-02)-Z4-RA02-SL | 2d | 2027-04-15 | 2027-04-18 | RHD4CZ4RA02SL3100, RHD4PRSHLDOSSL1100, RHD4ENMSSL2000, RHD4ENMSSL2010, RHD4PRSHLSTAGSL1100 | -114.02d | 0d | Skilled labor [11.33 h]; Unskilled Labor [45.41 h]; Electrician [22.65 h]; Equipment Opreator [34.09 h]; Boom Truck [11.33 h]; Cable Laying Machine [22.65 h]; Cable, Copper 4x10mm2/ CU/XLPE/SWA/PVC + 1x10mm2 CU/PVC [187.56 m] | 9,190.26 | RA02 | Z4 | CONS | SL | Cable Laying | AFT |
| RHD4CZ4RA02SL3300 |  | Warning tape and Backfill for Street Lighting Cables for Street Lighting Network - (ROUND-02)-Z4-RA02-SL | 2d | 2027-04-18 | 2027-04-20 | RHD4CZ4RA02SL3200 | -114.02d | 0d | Skilled labor [11.33 h]; Unskilled Labor [45.41 h]; Electrician [22.65 h]; Equipment Opreator [11.33 h]; Boom Truck [11.33 h]; Cable, Copper 4x10mm2/ CU/XLPE/SWA/PVC + 1x10mm2 CU/PVC [46.89 m] | 2,297.57 | RA02 | Z4 | CONS | SL | Warning tape and Backfill | AFT |
| RHD4CZ4RA02SL3400 |  | Testing of Street Lighting Cables for Street Lighting Network - (ROUND-02)-Z4-RA02-SL | 2d | 2027-04-20 | 2027-04-22 | RHD4CZ4RA02SL3300 | -114.02d | 7d | Skilled labor [6.86 h]; Unskilled Labor [27.2 h]; Electrician [13.6 h]; Equipment Opreator [6.86 h]; Boom Truck [6.86 h]; Cable, Copper 4x10mm2/ CU/XLPE/SWA/PVC + 1x10mm2 CU/PVC [15.63 m] | 765.86 | RA02 | Z4 | CONS | SL | Testing | AFT |
|  | 3319 | **RHD4-02-002-RA02-(SL)-Street Lighting Poles** |  | 2027-04-24 | 2027-05-05 |  |  |  |  |  |  |  |  |  |  |  |
| RHD4CZ4RA02SL1100 |  | Excavation for RC Base for Lighting Poles for Street Lighting Network - (ROUND-02)-Z4-RA02-SL | 2d | 2027-04-24 | 2027-04-26 | RHD4CZ4RA02SL2400, RHD4ENSDZ4APPSL170, RHD4CZ4RA02SL3100 | -121.02d | 0d | Skilled labor [7.95 h]; Unskilled Labor [7.95 h]; Equipment Opreator [16 h]; Excavator-Poclain [7.95 h]; Dump Truck [7.95 h]; Lighting poles single arms, height of ( 10 ) meters [1.1 Unit] | 3,747.7 | RA02 | Z4 | CONS | SL | Excavation | AFT |
| RHD4CZ4RA02SL1200 |  | Installation for RC Base for Lighting Poles for Street Lighting Network - (ROUND-02)-Z4-RA02-SL | 2d | 2027-04-26 | 2027-04-28 | RHD4CZ4RA02SL1100 | -121.02d | 0d | Skilled labor [7.95 h]; Unskilled Labor [7.95 h]; Equipment Opreator [16 h]; Excavator-Poclain [7.95 h]; Dump Truck [7.95 h]; Lighting poles single arms, height of ( 10 ) meters [2.75 Unit] | 9,369.25 | RA02 | Z4 | CONS | SL | RC Base | AFT |
| RHD4CZ4RA02SL1300 |  | Backfill for RC Base for Lighting Poles for Street Lighting Network - (ROUND-02)-Z4-RA02-SL | 2d | 2027-04-28 | 2027-05-01 | RHD4CZ4RA02SL1200 | -121.02d | 0d | Skilled labor [7.95 h]; Unskilled Labor [7.95 h]; Equipment Opreator [16 h]; Excavator-Poclain [7.95 h]; Dump Truck [7.95 h]; Lighting poles single arms, height of ( 10 ) meters [0.55 Unit] | 1,873.85 | RA02 | Z4 | CONS | SL | Backfill | AFT |
| RHD4CZ4RA02SL1400 |  | Installation for Lighting Poles for Street Lighting Network - (ROUND-02)-Z4-RA02-SL | 2d | 2027-05-01 | 2027-05-03 | RHD4CZ4RA02SL1300, RHD4CZ4RA02SL3400, RHD4PRSHLDOSSL1200, RHD4ENMSSL2000, RHD4ENMSSL2010, RHD4PRSHLSTAGSL1200 | -121.02d | 0d | Skilled labor [12 h]; Unskilled Labor [12 h]; Electrician [12 h]; Equipment Opreator [12 h]; Boom Truck [12 h]; Lighting poles single arms, height of ( 10 ) meters [6.6 Unit] | 22,486.2 | RA02 | Z4 | CONS | SL | Poles Installation | AFT |
| RHD4CZ4RA02SL1500 |  | Luminaire Installation for Lighting Poles for Street Lighting Network - (ROUND-02)-Z4-RA02-SL | 2d | 2027-05-03 | 2027-05-05 | RHD4CZ4RA02SL1400, RHD4PRSHLDOSSL1300, RHD4PRSHLSTAGSL1300 | -121.02d | 0d | Unskilled Labor [16 h]; Electrician [7.95 h]; Equipment Opreator [1.6 h]; Boom Truck [3.16 h]; Street Lighting( LED) Luminaire of Output ?10898 lumen [11 Unit] | 6,468 | RA02 | Z4 | CONS | SL | Luminaire Installation | AFT |
|  | 5023 | **RHD4-02-002-RA02-(SL)-Street Lighting Feeder Pillars** |  | 2027-05-05 | 2027-05-12 |  |  |  |  |  |  |  |  |  |  |  |
| RHD4CZ4RA02SL4100 |  | Leveling for Distribution Pillars for Street Lighting Network - (ROUND-02)-Z4-RA02-SL | 2d | 2027-05-05 | 2027-05-08 | RHD4CZ4RA02SL1500, RHD4CZ4RA02SL3300 | -121.02d | 0d | Skilled labor [10.89 h]; Unskilled Labor [21.78 h]; Equipment Opreator [4.36 h]; Excavator-Poclain [2.18 h]; Boom Truck [2.18 h]; 0.6/1 KV Steet Lighting Feeder Pillar [0.15 Unit] | 3,438.15 | RA02 | Z4 | CONS | SL | Leveling | AFT |
| RHD4CZ4RA02SL4200 |  | Lean Concrete for Distribution Pillars for Street Lighting Network - (ROUND-02)-Z4-RA02-SL | 2d | 2027-05-08 | 2027-05-10 | RHD4CZ4RA02SL4100 | -121.02d | 0d | Skilled labor [10.89 h]; Unskilled Labor [21.78 h]; Equipment Opreator [4.36 h]; Concrete Mixer Truck [2.18 h]; Concrete Pump [2.18 h]; 0.6/1 KV Steet Lighting Feeder Pillar [0.25 Unit] | 5,730.25 | RA02 | Z4 | CONS | SL | Lean Concrete | AFT |
| RHD4CZ4RA02SL4300 |  | Installation of Distribution Pillars for Street Lighting Network - (ROUND-02)-Z4-RA02-SL | 2d | 2027-05-10 | 2027-05-12 | RHD4CZ4RA02SL4200 | -121.02d | 0d | Skilled labor [10.89 h]; Unskilled Labor [43.56 h]; Electrician [21.78 h]; Equipment Opreator [10.89 h]; Boom Truck [10.89 h]; 0.6/1 KV Steet Lighting Feeder Pillar [0.6 Unit] | 13,752.6 | RA02 | Z4 | CONS | SL | Installation | AFT |
|  | 5024 | **RHD4-02-002-RA02-(SL)-Street Lighting Earthing System** |  | 2027-05-12 | 2027-05-19 |  |  |  |  |  |  |  |  |  |  |  |
| RHD4CZ4RA02SL6100 |  | Installation of Earthing for Lighting Poles and Fedder Pillers for Street Lighting Network - (ROUND-02)-Z4-RA02-SL | 2d | 2027-05-12 | 2027-05-19 | RHD4CZ4RA02SL4300 FF, RHD4CZ4RA02SL4300 | -121.02d | 0d | Skilled labor [0.8 h]; Unskilled Labor [0.8 h]; Equipment Opreator [1.42 h]; Excavator-Poclain [0.8 h]; Dump Truck [0.8 h]; Street Lighting Feeder pillars - ER [1 Unit] | 1,128 | RA02 | Z4 | CONS | SL | Installation | AFT |
|  | 3317 | **RHD4-02-002-RA02-(SL)-Street Lighting Drawpit** |  | 2027-04-21 | 2027-04-26 |  |  |  |  |  |  |  |  |  |  |  |
| RHD4CZ4RA02SL5100 |  | Excavation of Drawpit size 600x600x900mm for Street Lighting Network - (ROUND-02)-Z4-RA02-SL | 2d | 2027-04-21 | 2027-04-24 | RHD4CZ4RA02SL2300, RHD4ENSDZ4APPSL170, RHD4CZ4RA02RD3100 | -98.06d | 0d | Skilled labor [3.59 h]; Unskilled Labor [3.59 h]; Equipment Opreator [2.94 h]; Excavator-Poclain [1.42 h]; Dump Truck [1.42 h]; Drawpit with medium duty steel cover, size600x600x900mm, [0.6 Unit] | 1,470.6 | RA02 | Z4 | CONS | SL | Excavation | AFT |
| RHD4CZ4RA02SL5200 |  | Installation of Drawpit size 600x600x900mm for Street Lighting Network - (ROUND-02)-Z4-RA02-SL | 2d | 2027-04-24 | 2027-04-26 | RHD4CZ4RA02SL5100, RHD4PRSHLDOSSL1400, RHD4PRSHLSTAGSL1400 | -98.06d | 16d | Skilled labor [3.59 h]; Unskilled Labor [3.59 h]; Equipment Opreator [1.42 h]; Boom Truck [1.42 h]; Drawpit with medium duty steel cover, size600x600x900mm, [3.4 Unit] | 8,333.4 | RA02 | Z4 | CONS | SL | Installation | AFT |
|  | 3322 | **RHD4-02-002-Z4-RA02-Landscape Network - LS** |  |  |  |  |  |  |  |  |  |  |  |  |  |  |
|  | 3323 | **RHD4-02-002-RA02-(LS)-Landscape Lighting cables** |  |  |  |  |  |  |  |  |  |  |  |  |  |  |
|  | 3324 | **RHD4-02-002-RA02-(LS)-Landscape Feeder Pillars** |  |  |  |  |  |  |  |  |  |  |  |  |  |  |
|  | 3325 | **RHD4-02-002-RA02-(LS)-Landscape Bollard Poles** |  |  |  |  |  |  |  |  |  |  |  |  |  |  |
|  | 3326 | **RHD4-02-002-RA02-(LS)-Landscape Feeder Pillars Earthing** |  |  |  |  |  |  |  |  |  |  |  |  |  |  |
|  | 3335 | **RHD4-02-002-Z4-RA02-Security Network - CCTV** |  | 2027-05-19 | 2027-06-14 |  |  |  |  |  |  |  |  |  |  |  |
|  | 3336 | **RHD4-02-002-RA02-(CCTV)-Civil Works** |  | 2027-05-19 | 2027-05-31 |  |  |  |  |  |  |  |  |  |  |  |
| RHD4CZ4RA02CCTV2100 |  | Civil Works for Security Network - (ROUND-02)-Z4-RA02-CCTV | 10d | 2027-05-19 | 2027-05-31 | RHD4CZ4RA02SL6100 | -121.02d | 12.05d | Skilled labor [435.68 h]; Unskilled Labor [871.2 h]; Equipment Opreator [435.68 h]; Excavator-Poclain [108.9 h]; Dump Truck [108.9 h]; Civil works Digging, trenching, laying pipes Meter with supply and installation of Manholes and for power feeding sources related to all towers and poles – (from 35-meter pole to control room and from related UPS camersa distribution boards till overall 2 [300 m] | 34,800 | RA02 | Z4 | CONS | CCTV | Civil Works | AFT |

| ID | WBS | Activity | Duration | Start | Finish | Predecessors | Complete | Planned start | Planned finish | Total float | Free float | Resources | Cost | Actual cost | RDH4-01-001-Road and Block Names-1 | RDH4-01-001-Zones-1 | RDH4-01-001-Phases-1 | RDH4-01-001-Networks-1 | RDH4-01-001-Work Method-1 | RDH4-01-001-MENEM |
| --- | --- | --- | --- | --- | --- | --- | --- | --- | --- | --- | --- | --- | --- | --- | --- | --- | --- | --- | --- | --- |
|  | 2959 | **RHD4-02-002-RA02-(CCTV)-CCTV Poles** |  | 2027-05-19 | 2027-05-31 |  |  |  |  |  |  |  |  |  |  |  |  |  |  |  |
| RHD4CZ4RA02CCTV1100 |  | Excavation for RC Base for CCTV Poles for Security Network - (RD-C-3/1)-Z4-C031-CCTV | 2d | 2027-05-19 | 2027-05-22 | RHD4CZ4RA02SL5200, RHD4CZ4RA02SL6100 |  |  |  | -114.06d | 0d | Skilled labor [4.32 h]; Unskilled Labor [4.32 h]; Equipment Opreator [8.64 h]; Excavator-Poclain [2.16 h]; Dump Truck [2.16 h]; 25 Meters pole for CCTV Cameras [0.1 nr] | 14,090.2 |  | C031 | Z4 | CONS | CCTV | Excavation | AFT |
| RHD4CZ4RA02CCTV1200 |  | Installation for RC Base for CCTV Poles for Security Network - (RD-C-3/1)-Z4-C031-CCTV | 2d | 2027-05-22 | 2027-05-24 | RHD4CZ4RA02CCTV1100 |  |  |  | -114.06d | 0d | Skilled labor [4.32 h]; Unskilled Labor [4.32 h]; Equipment Opreator [8.64 h]; Excavator-Poclain [2.16 h]; Dump Truck [2.16 h]; 25 Meters pole for CCTV Cameras [0.25 nr] | 35,225.5 |  | C031 | Z4 | CONS | CCTV | RC Base | AFT |
| RHD4CZ4RA02CCTV1300 |  | Backfill for RC Base for CCTV Poles for Security Network - (RD-C-3/1)-Z4-C031-CCTV | 2.03d | 2027-05-24 | 2027-05-26 | RHD4CZ4RA02CCTV1200 |  |  |  | -114.06d | 0d | Skilled labor [2.88 h]; Unskilled Labor [2.88 h]; Equipment Opreator [5.44 h]; Excavator-Poclain [1.44 h]; Dump Truck [1.44 h]; 25 Meters pole for CCTV Cameras [0.05 nr] | 7,045.1 |  | C031 | Z4 | CONS | CCTV | Backfill | AFT |
| RHD4CZ4RA02CCTV1400 |  | Installation for CCTV Poles for Security Network - (RD-C-3/1)-Z4-C031-CCTV | 2d | 2027-05-26 | 2027-05-29 | RHD4CZ4RA02CCTV1300 |  |  |  | -114.06d | 0d | Skilled labor [7.2 h]; Unskilled Labor [14.56 h]; Electrician [7.2 h]; Equipment Opreator [7.2 h]; Boom Truck [3.6 h]; 25 Meters pole for CCTV Cameras [0.6 nr] | 84,541.2 |  | C031 | Z4 | CONS | CCTV | Installation | AFT |
| RHD4CZ4RA02CCTV1500 |  | Protection post Installation for CCTV Poles for Security Network - (RD-C-3/1)-Z4-C031-CCTV | 2d | 2027-05-29 | 2027-05-31 | RHD4CZ4RA02CCTV1400 |  |  |  | -114.06d | 79.94d | Skilled labor [21.76 h]; Unskilled Labor [43.52 h]; Supply and Installation of minimum 4 Protection Post for each pole or tower with pipe ?220*6mm THK. [1 nr] | 4,903 |  | C031 | Z4 | CONS | CCTV | Protection post | AFT |
|  | 2960 | **RHD4-02-002-RA02-(CCTV)-Camera** |  | 2027-05-31 | 2027-06-02 |  |  |  |  |  |  |  |  |  |  |  |  |  |  |  |
| RHD4CZ4RA02CCTV3100 |  | Installation for Cameras for Security Network - (RD-C-3/1)-Z4-C031-CCTV | 2d | 2027-05-31 | 2027-06-02 | RHD4CZ4RA02CCTV1400, RHD4CZ4RA02CCTV4100 |  |  |  | -113.06d | 0d | Unskilled Labor [54.4 h]; Electrician [27.2 h]; Outdoor Camera, 5MP resolution, day/night, fixed bullet camera providing Forensic WDR. [4 nr]; Outdoor PTZ with IR, HDTV 1080 and 31x optical, 12x digital, total 372x zoom, H264/265 with Motion JPEG. [1 nr] | 61,727 |  | C031 | Z4 | CONS | CCTV | Installation | AFT |
|  | 2961 | **RHD4-02-002-RA02-(CCTV)-Power and Infrastructure** |  | 2027-05-29 | 2027-06-02 |  |  |  |  |  |  |  |  |  |  |  |  |  |  |  |
| RHD4CZ4RA02CCTV4100 |  | Installation of Power outlet, UPS and midspan for PTZ Camerafor Cameras for Security Network - (RD-C-3/1)-Z4-C031-CCTV | 2.01d | 2027-05-29 | 2027-05-31 | RHD4CZ4RA02CCTV1400 |  |  |  | -113.06d | 0d | Skilled labor [13.12 h]; Unskilled Labor [52.32 h]; Electrician [26.08 h]; Equipment Opreator [26.08 h]; Excavator-Poclain [6.56 h]; Dump Truck [6.56 h]; Outdoor ready IP66-rated midspan for PTZ Camera (The outdoor- ready midspan should be IP66/IP67- and NEMA 4X-rated [1 nr]; 1.2KVA Industrial type UPS located at FEC remote poles [2 nr] | 15,232 |  | C031 | Z4 | CONS | CCTV | Power | AFT |
| RHD4CZ4RA02CCTV4200 |  | Short Range Wireless PoP wireless Bridgefor CCTV Poles for Security Network - (RD-C-3/1)-Z4-C031-CCTV | 2d | 2027-05-31 | 2027-06-02 | RHD4CZ4RA02CCTV4100 |  |  |  | -113.06d | 0d | Skilled labor [10.88 h]; Unskilled Labor [21.76 h]; Electrician [10.88 h]; Equipment Opreator [21.76 h]; Excavator-Poclain [5.44 h]; Dump Truck [5.44 h]; Short Range wireless point to point wireless bridge [4 nr] | 58,548 |  | C031 | Z4 | CONS | CCTV | Wireless Pop | AFT |
|  | 2963 | **RHD4-02-002-RA02-(CCTV)-CCTV Panels and Components** |  | 2027-06-02 | 2027-06-14 |  |  |  |  |  |  |  |  |  |  |  |  |  |  |  |
| RHD4CZ4RA02CCTV6100 |  | Installation for CCTV Panels for Security Network - (RD-C-3/1)-Z4-C031-CCTV | 10d | 2027-06-02 | 2027-06-14 | RHD4CZ4RA02CCTV4200, RHD4CZ4RA02CCTV3100 |  |  |  | -113.06d | 0d | Skilled labor [326.72 h]; Unskilled Labor [980.16 h]; Electrician [326.72 h]; Pole mounted Filed Equipment cabinet (FEC) , with fan and ventilation, NEMEX 4X ,door, minimum size (600x600x400mm) , the cabinet/enclosurE [2 nr]; 8 Port Industrial PoE Switch 10/1000BaseT (-40 deg to +70 deg. Celsius) for remote poles and as specifiedin item 15. [1 nr]; UTP CAT6 Patch Cord , connect the industrial switch with the cameras, and radio wireless antenna [12 nr] | 32,584 |  | C031 | Z4 | CONS | CCTV | Equipment | AFT |
|  | 2785 | **RHD4-02-002-Z4-C031** |  | 2026-06-30 | 2027-07-07 |  |  |  |  |  |  |  |  |  |  |  |  |  |  |  |
|  | 2860 | **RHD4-02-002-Z4-C031-Crossings Potable Network - PTCr** |  |  |  |  |  |  |  |  |  |  |  |  |  |  |  |  |  |  |
|  | 2864 | **RHD4-02-002-C031-(PTCr)-HDPE Pipes - 400 mm diameter** |  |  |  |  |  |  |  |  |  |  |  |  |  |  |  |  |  |  |
|  | 2964 | **RHD4-02-002-Z4-C031-Road Works - RD** |  | 2026-06-30 | 2027-07-05 |  |  |  |  |  |  |  |  |  |  |  |  |  |  |  |
|  | 2965 | **RHD4-02-002-C031-(RD)-Subgrade** |  | 2026-06-30 | 2026-07-13 |  |  |  |  |  |  |  |  |  |  |  |  |  |  |  |
| RHD4CZ4C031RD1100 |  | Supply, lay and compaction subgrade compacted thickness 300 mm for Roads - (RD-C-3/1)-Z4-C031-RD | 12d | 2026-06-30 A | 2026-07-13 A | RHD4ENSDZ4APPRD220, RHD4ENSDZ4APPEW100 SS, RHD4CZ4C031ST3302, RHD4CZ4C031ICT3400 | 100% | 2026-08-25 | 2026-09-07 |  |  | Skilled labor [22.22 h]; Unskilled Labor [44.43 h]; Electrician [22.22 h]; Equipment Opreator [151.7 h]; Water Truck [7.3 h]; Roller compactor [11.11 h]; Grader [22.22 h]; Dump Truck [111.08 h]; Subgrade [1068.51 m3] | 20,301.69 | 20,301.69 | C031 | Z4 | CONS | RD | Subgrade | bef |
|  | 2966 | **RHD4-02-002-C031-(RD)-Aggregate Base Course** |  | 2027-02-21 | 2027-02-23 |  |  |  |  |  |  |  |  |  |  |  |  |  |  |  |
| RHD4CZ4C031RD2100 |  | Supply, lay and compaction Aggregate base course compacted thickness 300 mmfor Roads - (RD-C-3/1)-Z4-C031-RD | 2d | 2027-02-21 | 2027-02-23 | RHD4PRSHLDOSRD1000, RHD4PRSHLSTAGRD1000, RHD4CZ4C031RD1100 |  |  |  | -154d | 0d | Skilled labor [8.28 h]; Unskilled Labor [16.44 h]; Equipment Opreator [104.22 h]; Water Truck [5.45 h]; Roller compactor [16.44 h]; Grader [16.44 h]; Dump Truck [65.78 h]; Aggregate Base Courses [671.13 m3] | 38,254.41 |  | C031 | Z4 | CONS | RD | ABC | bef |
|  | 2967 | **RHD4-02-002-C031-(RD)-Bituminous base course Two Layers, including (MC1)&(RC2)** |  | 2027-02-24 | 2027-06-22 |  |  |  |  |  |  |  |  |  |  |  |  |  |  |  |
| RHD4CZ4C031RD3100 |  | Supply, lay and Asphaltic base course including Prime Coat (MC1) for 1st Layer - (RD-C-3/1)-Z4-C031-RD | 2d | 2027-02-24 | 2027-02-25 | RHD4CZ4C031RD2100, RHD4PRSHLDOSRD1100, RHD4ENMSASPH2000, RHD4ENMSASPH2010, RHD4PRSHLSTAGRD1100 |  |  |  | -154d | 0d | Skilled labor [6.53 h]; Unskilled Labor [39.2 h]; Equipment Opreator [98.01 h]; Bobcat [6.53 h]; Roller compactor [6.53 h]; Asphalt Paver [6.53 h]; Rubber Compactor [13.07 h]; MC1/RC2 Sprinkler [6.53 h]; Dump Truck [58.81 h]; Bituminous base course (Grading I - Class A), including Prime coat (MC1) & tack coate (RC2) [239.06 m3] | 114,270.68 |  | C031 | Z4 | CONS | RD | 150 mm | AFT |
| RHD4CZ4C031RD3200 |  | Supply, lay and Asphaltic base course including Tack Coat (RC2) for 2nd Layer - (RD-C-3/1)-Z4-C031-RD | 2d | 2027-06-20 | 2027-06-22 | RHD4CZ4C031RD3100, RHD4CZ4RA02RD3200, RHD4PRSHLDOSRD1100, RHD4PRSHLSTAGRD1100, RHD4CZ4C031CCTV4200 |  |  |  | -115.02d | 0d | Skilled labor [6.53 h]; Unskilled Labor [39.2 h]; Equipment Opreator [98.01 h]; Bobcat [6.53 h]; Roller compactor [6.53 h]; Asphalt Paver [6.53 h]; Rubber Compactor [13.07 h]; MC1/RC2 Sprinkler [6.53 h]; Dump Truck [58.81 h]; Bituminous base course (Grading I - Class A), including Prime coat (MC1) & tack coate (RC2) [239.06 m3] | 114,270.68 |  | C031 | Z4 | CONS | RD | 150 mm | AFT |

| ID | WBS | Activity | Duration | Start | Finish | Predecessors | Complete | Remaining | Planned start | Planned finish | Total float | Free float | Resources | Cost | Actual cost | RDH4-01-001-Road and Block Names-1 | RDH4-01-001-Zones-1 | RDH4-01-001-Phases-1 | RDH4-01-001-Networks-1 | RDH4-01-001-Work Method-1 | RDH4-01-001-MENEM |
| --- | --- | --- | --- | --- | --- | --- | --- | --- | --- | --- | --- | --- | --- | --- | --- | --- | --- | --- | --- | --- | --- |
|  | 2969 | **RHD4-02-002-C031-(RD)-Precast Concrete Curb** |  | 2027-06-22 | 2027-06-27 |  |  |  |  |  |  |  |  |  |  |  |  |  |  |  |  |
| RHD4CZ4C031RD5100 |  | Supply and installation Precast Concrete Kerb for Roads - (RD-C-3/1)-Z4-C031-RD | 4d | 2027-06-22 | 2027-06-27 | RHD4CZ4C031RD3200, RHD4PRSHLDOSRD1200, RHD4ENMSRD2000, RHD4ENMSRD2010, RHD4PRSHLSTAGRD1200 |  |  |  |  | -115.02d | 0d | Mason [130.68 h]; Skilled labor [43.56 h]; Unskilled Labor [130.68 h]; Equipment Opreator [87.12 h]; Bobcat [43.56 h]; Concrete Mixer Truck [43.56 h]; Precast Concrete Curbstone, type K1 [1800 m] | 99,000 |  | C031 | Z4 | CONS | RD | Curbs | AFT |
|  | 2972 | **RHD4-02-002-C031-(RD)-Traffic Signage** |  | 2027-06-27 | 2027-07-04 |  |  |  |  |  |  |  |  |  |  |  |  |  |  |  |  |
| RHD4CZ4C031RD8100 |  | Installation of Traffic Signage for Road Network - (RD-C-3/1)-Z4-C031-RD | 6d | 2027-06-27 | 2027-07-04 | RHD4CZ4C031RD5100, RHD4CZ4C031TC2400, RHD4CZ4C031ICT2400, RHD4PRSHLDOSRD1600, RHD4PRSHLSTAGRD1600, RHD4CZ4C031SL5200 |  |  |  |  | -115.02d | 66.98d | Skilled labor [130.68 h]; Unskilled Labor [65.34 h]; Electrician [7.62 h]; Equipment Opreator [16.12 h]; Boom Truck [13.07 h]; Concrete Mixer Truck [3.05 h]; Traffic signs, ground mounted, 1 Sheet Aluminium, (breakaway)Single post [7 nr] | 8,582 |  | C031 | Z4 | CONS | RD | Traffic Signage | AFT |
|  | 2970 | **RHD4-02-002-C031-(RD)-Precast Interlocking Block Pavers** |  |  |  |  |  |  |  |  |  |  |  |  |  |  |  |  |  |  |  |
|  | 2968 | **RHD4-02-002-C031-(RD)-Bituminous concrete wearing course including tack coat (RC2)** |  | 2027-06-27 | 2027-06-29 |  |  |  |  |  |  |  |  |  |  |  |  |  |  |  |  |
| RHD4CZ4C031RD4100 |  | Supply, lay and compaction Asphaltic wearing course including tack Coat (RC2)for Road Network - (RD-C-3/1)-Z4-C031-RD | 2d | 2027-06-27 | 2027-06-29 | RHD4CZ4C031RD5100 |  |  |  |  | -114.02d | 0d | Skilled labor [3.38 h]; Unskilled Labor [20.15 h]; Equipment Opreator [50.53 h]; Bobcat [3.38 h]; Roller compactor [3.38 h]; Asphalt Paver [3.38 h]; Rubber Compactor [6.75 h]; MC1/RC2 Sprinkler [3.38 h]; Dump Truck [30.28 h]; Bituminous concrete wearing course, (Grading I - Class A), including tack coat (RC2) [160.55 m3] | 87,178.65 |  | C031 | Z4 | CONS | RD | 50 mm | AFT |
|  | 2973 | **RHD4-02-002-C031-(RD)-Speed Table and Wheel Stopper** |  |  |  |  |  |  |  |  |  |  |  |  |  |  |  |  |  |  |  |
|  | 2971 | **RHD4-02-002-C031-(RD)-Pavement Marking** |  | 2027-06-29 | 2027-07-05 |  |  |  |  |  |  |  |  |  |  |  |  |  |  |  |  |
| RHD4CZ4C031RD7100 |  | Pavement Markings for Road Network - (RD-C-3/1)-Z4-C031-RD | 5d | 2027-06-29 | 2027-07-05 | RHD4CZ4C031RD4100, RHD4PRSHLDOSRD1500, RHD4PRSHLSTAGRD1500 |  |  |  |  | -114.02d | 67.98d | Skilled labor [44.11 h]; Unskilled Labor [88.1 h]; Equipment Opreator [44.11 h]; Road Marking Machine [44.11 h]; Retroreflective Thermoplastic White Traffic Markings [56.71 m2]; Retroreflective Thermoplastic Yellow, Traffic Markings [76.32 m2]; Retroreflective raised pavement markers (cat eyes) [885 nr] | 34,213.93 |  | C031 | Z4 | CONS | RD | Pavement Marking | AFT |
|  | 2789 | **RHD4-02-002-Z4-C031-Storm Network - ST** |  | 2026-08-04 | 2027-04-25 |  |  |  |  |  |  |  |  |  |  |  |  |  |  |  |  |
|  | 2430 | **RHD4-02-002-C031-(ST)-MH Works - 2000 mm diameter** |  | 2026-10-10 | 2027-02-18 |  |  |  |  |  |  |  |  |  |  |  |  |  |  |  |  |
| RHD4CZ4C031ST3102 |  | Excavation and PC Blinding works for MH 2000 mm - (RD-C-3/1)-Z4-C031-ST | 2d | 2026-10-10 A | 2026-10-11 A | RHD4CZ4A013ST3100, RHD4CZ5L016ST2500, RHD4CZ6A02ST1500, RHD4CZ5L016ST3501 | 100% |  | 2027-02-20 | 2027-02-21 |  |  | Skilled labor [10.89 h]; Unskilled Labor [10.89 h]; Equipment Opreator [17.42 h]; Excavator-Poclain [10.89 h]; Water Truck [1.09 h]; Dump Truck [5.45 h]; MH (2000mm Diameter) - ST - depth 1.50 - 2.5m [0.25 nr]; MH (2000mm Diameter) - ST - depth 2.51 - 3.5m [0.5 nr] | 15,153.75 | 15,153.75 | C031 | Z4 | CONS | ST | Excavation | bef |
| RHD4CZ4C031ST3202 |  | Installation of Base for MH 2000 mm - (RD-C-3/1)-Z4-C031-ST | 2d | 2026-10-12 A | 2027-02-11 | RHD4CZ4C031ST3102 | 50% | 2d | 2027-02-23 | 2027-02-24 | -190.02d | 0d | Skilled labor [14.48 h]; Unskilled Labor [14.48 h]; Equipment Opreator [5.77 h]; Boom Truck [2.94 h]; Concrete Mixer Truck [2.94 h]; MH (2000mm Diameter) - ST - depth 1.50 - 2.5m [0.25 nr]; MH (2000mm Diameter) - ST - depth 2.51 - 3.5m [0.5 nr] | 15,153.75 |  | C031 | Z4 | CONS | ST | Installing Base | bef |
| RHD4CZ4C031ST3302 |  | MH Ring and C.Slab works and Backfilling works for MH 2000 mm - (RD-C-3/1)-Z4-C031-ST | 2d | 2027-02-11 | 2027-02-14 | RHD4CZ4C031ST3202 |  |  |  |  | -190.02d | 0d | Skilled labor [14.48 h]; Unskilled Labor [14.48 h]; Equipment Opreator [10.13 h]; Boom Truck [5.77 h]; Concrete Mixer Truck [4.36 h]; MH (2000mm Diameter) - ST - depth 1.50 - 2.5m [0.35 nr]; MH (2000mm Diameter) - ST - depth 2.51 - 3.5m [0.7 nr] | 21,215.25 |  | C031 | Z4 | CONS | ST | Installing Rings | bef |
| RHD4CZ4C031ST3402 |  | Steel Cover for MH 2000 mm - (RD-C-3/1)-Z4-C031-ST | 2d | 2027-02-14 | 2027-02-16 | RHD4CZ4C031ST3302 |  |  |  |  | -190.02d | 0d | Skilled labor [10.89 h]; Unskilled Labor [21.78 h]; Equipment Opreator [2.18 h]; Boom Truck [2.18 h]; MH (2000mm Diameter) - ST - depth 1.50 - 2.5m [0.05 nr]; MH (2000mm Diameter) - ST - depth 2.51 - 3.5m [0.1 nr] | 3,030.75 |  | C031 | Z4 | CONS | ST | Steel Cover | bef |
| RHD4CZ4C031ST3502 |  | Finishing, Benching, Testing works for MH 2000 mm - (RD-C-3/1)-Z4-C031-ST | 2d | 2027-02-16 | 2027-02-18 | RHD4CZ4C031ST3402 |  |  |  |  | -190.02d | 5d | Skilled labor [10.89 h]; Unskilled Labor [21.78 h]; Plumber [10.89 h]; Equipment Opreator [2.18 h]; Water Truck [2.18 h]; MH (2000mm Diameter) - ST - depth 1.50 - 2.5m [0.1 nr]; MH (2000mm Diameter) - ST - depth 2.51 - 3.5m [0.2 nr] | 6,061.5 |  | C031 | Z4 | CONS | ST | Benching | bef |
|  | 2427 | **RHD4-02-002-C031-(ST)-UPVC Pipes - 400 mm diameter** |  | 2026-09-21 | 2027-02-28 |  |  |  |  |  |  |  |  |  |  |  |  |  |  |  |  |
| RHD4CZ4C031ST2101 |  | Excavation works for UPVC Pipe Line 400 mm - (RD-C-3/1)-Z4-C031-ST | 2d | 2026-09-21 A | 2026-09-22 A | RHD4CZ4C031ST3102, RHD4CZ5L016ST8500, RHD4CZ5L07ST8500, RHD4CZ5A014ST8500, RHD4CZ5C051ST8500 | 100% |  | 2026-08-16 | 2026-08-17 |  |  | Skilled labor [1.09 h]; Unskilled Labor [1.09 h]; Equipment Opreator [1.31 h]; Excavator-Poclain [1.09 h]; Dump Truck [0.22 h]; UPVC (400mm Diameter) - ST - Depth less than 1.5 [2.44 m] | 1,102.88 | 1,102.88 | C031 | Z4 | CONS | ST | Excavation | bef |
| RHD4CZ4C031ST2201 |  | Bedding works for UPVC Pipe Line 400 mm - (RD-C-3/1)-Z4-C031-ST | 2d | 2026-10-01 A | 2026-10-03 A | RHD4CZ4C031ST2101 | 100% |  |  |  |  |  | Skilled labor [0.87 h]; Unskilled Labor [1.74 h]; Equipment Opreator [1.74 h]; Excavator-Poclain [0.87 h]; Dump Truck [0.87 h]; UPVC (400mm Diameter) - ST - Depth less than 1.5 [1.22 m] | 551.44 | 551.44 | C031 | Z4 | CONS | ST | Bedding | bef |
| RHD4CZ4C031ST2301 |  | Installing for UPVC Pipe Line 400 mm - (RD-C-3/1)-Z4-C031-ST | 2d | 2027-02-20 | 2027-02-23 | RHD4CZ4C031ST2201 |  |  |  |  | -195.02d | 0d | Unskilled Labor [3.59 h]; Plumber [1.74 h]; UPVC (400mm Diameter) - ST - Depth less than 1.5 [10.99 m] | 4,967.48 |  | C031 | Z4 | CONS | ST | Installation | bef |
| RHD4CZ4C031ST2401 |  | Primary Test for UPVC Pipe Line 400 mm - (RD-C-3/1)-Z4-C031-ST | 2d | 2027-02-23 | 2027-02-25 | RHD4CZ4C031ST2301 |  |  |  |  | -195.02d | 0d | Unskilled Labor [0.54 h]; Plumber [0.54 h]; Equipment Opreator [0.54 h]; Water Truck [0.54 h]; UPVC (400mm Diameter) - ST - Depth less than 1.5 [4.89 m] | 2,210.28 |  | C031 | Z4 | CONS | ST | Primary Test | bef |
| RHD4CZ4C031ST2501 |  | Backfilling and warning tape works for UPVC Pipe Line 400 mm - (RD-C-3/1)-Z4-C031-ST | 2d | 2027-02-25 | 2027-02-28 | RHD4CZ4C031ST3502, RHD4CZ4C031ST2401 |  |  |  |  | -195.02d | 2d | Skilled labor [1.31 h]; Unskilled Labor [2.61 h]; Equipment Opreator [2.61 h]; Excavator-Poclain [1.31 h]; Dump Truck [1.31 h]; UPVC (400mm Diameter) - ST - Depth less than 1.5 [4.89 m] | 2,210.28 |  | C031 | Z4 | CONS | ST | Backfilling | bef |
|  | 2420 | **RHD4-02-002-C031-(ST)-GRP Pipes - 1200 mm diameter** |  | 2027-02-20 | 2027-03-04 |  |  |  |  |  |  |  |  |  |  |  |  |  |  |  |  |
| RHD4CZ4C031ST1108 |  | Excavation works for GRP Pipe Line 1200 mm - (RD-C-3/1)-Z4-C031-ST | 2d | 2027-02-20 | 2027-02-23 | RHD4CZ4C031ST2101, RHD4CZ5L08ST3502 |  |  |  |  | -197.02d | 0d | Skilled labor [10.45 h]; Unskilled Labor [10.45 h]; Equipment Opreator [12.52 h]; Excavator-Poclain [10.45 h]; Dump Truck [2.07 h]; GRP (1200mm Diameter) - ST - Depth: 1.51m - 2.5m [21.58 m]; GRP (1200mm Diameter) - ST - Depth: 2.51m - 3.5m | 25,421.24 |  | C031 | Z4 | CONS | ST | Excavation | bef |
| RHD4CZ4C031ST1208 |  | Bedding works for GRP Pipe Line 1200 mm - (RD-C-3/1)-Z4-C031-ST | 2d | 2027-02-23 | 2027-02-25 | RHD4CZ4C031ST1108 |  |  |  |  | -197.02d | 0d | Skilled labor [10.45 h]; Unskilled Labor [20.91 h]; Equipment Opreator [20.91 h]; Excavator-Poclain [10.45 h]; Dump Truck [10.45 h]; GRP (1200mm Diameter) - ST - Depth: 1.51m - 2.5m [7.19 m]; GRP (1200mm Diameter) - ST - Depth: 2.51m - 3.5m | 8,469.82 |  | C031 | Z4 | CONS | ST | Bedding | bef |
| RHD4CZ4C031ST1308 |  | Installing for GRP Pipe Line 1200 mm - (RD-C-3/1)-Z4-C031-ST | 2d | 2027-02-25 | 2027-02-28 | RHD4CZ4C031ST1208 |  |  |  |  | -197.02d | 0d | Unskilled Labor [12.52 h]; Plumber [6.32 h]; GRP (1200mm Diameter) - ST - Depth: 1.51m - 2.5m [57.55 m]; GRP (1200mm Diameter) - ST - Depth: 2.51m - 3.5m | 67,793.9 |  | C031 | Z4 | CONS | ST | Installation | bef |
| RHD4CZ4C031ST1408 |  | Primary Test for GRP Pipe Line 1200 mm - (RD-C-3/1)-Z4-C031-ST | 2d | 2027-02-28 | 2027-03-02 | RHD4CZ4C031ST1308 |  |  |  |  | -197.02d | 0d | Unskilled Labor [5.23 h]; Plumber [5.23 h]; Equipment Opreator [5.23 h]; Water Truck [5.23 h]; GRP (1200mm Diameter) - ST - Depth: 1.51m - 2.5m [28.77 m]; GRP (1200mm Diameter) - ST - Depth: 2.51m - 3.5m | 33,891.06 |  | C031 | Z4 | CONS | ST | Primary Test | bef |
| RHD4CZ4C031ST1508 |  | Backfilling and warning tape works for GRP Pipe Line 1200 mm - (RD-C-3/1)-Z4-C031-ST | 2d | 2027-03-02 | 2027-03-04 | RHD4CZ4C031ST2501, RHD4CZ5L07ST2500, RHD4CZ4C031ST1408 |  |  |  |  | -197.02d | 0d | Skilled labor [10.45 h]; Unskilled Labor [20.91 h]; Equipment Opreator [20.91 h]; Excavator-Poclain [10.45 h]; Dump Truck [10.45 h]; GRP (1200mm Diameter) - ST - Depth: 1.51m - 2.5m [28.77 m]; GRP (1200mm Diameter) - ST - Depth: 2.51m - 3.5m | 33,891.06 |  | C031 | Z4 | CONS | ST | Backfilling | bef |

| ID | WBS | Activity | Duration | Start | Finish | Predecessors | Complete | Remaining | Planned start | Planned finish | Total float | Free float | Resources | Cost | Actual cost | RDH4-01-001-Road and Block Names-1 | RDH4-01-001-Zones-1 | RDH4-01-001-Phases-1 | RDH4-01-001-Networks-1 | RDH4-01-001-Work Method-1 | RDH4-01-001-MENEM |
| --- | --- | --- | --- | --- | --- | --- | --- | --- | --- | --- | --- | --- | --- | --- | --- | --- | --- | --- | --- | --- | --- |
|  | 2415 | **RHD4-02-002-C031-(ST)-GRP Pipes - 700 mm diameter** |  | 2026-09-19 | 2027-02-25 |  |  |  |  |  |  |  |  |  |  |  |  |  |  |  |  |
| RHD4CZ4C031ST1103 |  | Excavation works for GRP Pipe Line 700 mm - (RD-C-3/1)-Z4-C031-ST | 2d | 2026-09-19 A | 2026-09-20 A | RHD4CZ4C031ST1108 | 100% |  | 2026-08-20 | 2026-08-22 |  |  | Skilled labor [1.52 h]; Unskilled Labor [1.52 h]; Equipment Opreator [1.85 h]; Excavator-Poclain [1.52 h]; Dump Truck [0.33 h]; GRP (700mm Diameter) - ST - Depth less than 1.5 m [2.88 m]; GRP (700mm Diameter) - ST - Depth: 1.51m - 2.5m | 1,595.52 | 1,595.52 | C031 | Z4 | CONS | ST | Excavation | bef |
| RHD4CZ4C031ST1203 |  | Bedding works for GRP Pipe Line 700 mm - (RD-C-3/1)-Z4-C031-ST | 2d | 2026-10-22 A | 2026-10-24 A | RHD4CZ4C031ST1103 | 100% |  | 2027-02-25 | 2027-02-27 |  |  | Skilled labor [1.52 h]; Unskilled Labor [3.16 h]; Equipment Opreator [3.16 h]; Excavator-Poclain [1.52 h]; Dump Truck [1.52 h]; GRP (700mm Diameter) - ST - Depth less than 1.5 m [1.44 m]; GRP (700mm Diameter) - ST - Depth: 1.51m - 2.5m | 797.76 | 797.76 | C031 | Z4 | CONS | ST | Bedding | bef |
| RHD4CZ4C031ST1303 |  | Installing for GRP Pipe Line 700 mm - (RD-C-3/1)-Z4-C031-ST | 2d | 2026-10-24 A | 2026-10-25 A | RHD4CZ4C031ST1203 | 100% |  | 2027-02-28 | 2027-03-01 |  |  | Unskilled Labor [1.52 h]; Plumber [0.8 h]; GRP (700mm Diameter) - ST - Depth less than 1.5 m [12.96 m]; GRP (700mm Diameter) - ST - Depth: 1.51m - 2.5m | 7,179.84 | 7,179.84 | C031 | Z4 | CONS | ST | Installation | bef |
| RHD4CZ4C031ST1503 |  | Backfilling and warning tape works for GRP Pipe Line 700 mm - (RD-C-3/1)-Z4-C031-ST | 2d | 2026-10-26 A | 2026-10-27 A | RHD4CZ4C031ST1508, RHD4CZ4C031ST1403 | 100% |  | 2027-03-13 | 2027-03-14 |  |  | Skilled labor [1.52 h]; Unskilled Labor [3.16 h]; Equipment Opreator [3.16 h]; Excavator-Poclain [1.52 h]; Dump Truck [1.52 h]; GRP (700mm Diameter) - ST - Depth less than 1.5 m [5.76 m]; GRP (700mm Diameter) - ST - Depth: 1.51m - 2.5m | 3,191.04 | 3,191.04 | C031 | Z4 | CONS | ST | Backfilling | bef |
| RHD4CZ4C031ST1403 |  | Primary Test for GRP Pipe Line 700 mm - (RD-C-3/1)-Z4-C031-ST | 2d | 2027-02-23 | 2027-02-25 | RHD4CZ4C031ST1303 |  |  |  |  | -191.02d | 6d | Unskilled Labor [0.8 h]; Plumber [0.8 h]; Equipment Opreator [0.8 h]; Water Truck [0.8 h]; GRP (700mm Diameter) - ST - Depth less than 1.5 m [5.76 m]; GRP (700mm Diameter) - ST - Depth: 1.51m - 2.5m | 3,191.04 |  | C031 | Z4 | CONS | ST | Primary Test | bef |
|  | 2414 | **RHD4-02-002-C031-(ST)-GRP Pipes - 600 mm diameter** |  | 2026-08-04 | 2027-03-13 |  |  |  |  |  |  |  |  |  |  |  |  |  |  |  |  |
| RHD4CZ4C031ST1102 |  | Excavation works for GRP Pipe Line 600 mm - (RD-C-3/1)-Z4-C031-ST | 2d | 2026-08-04 A | 2026-09-19 A | RHD4CZ4C031ST1503, RHD4CZ4C031ST1103 | 100% |  | 2026-09-01 | 2026-09-02 |  |  | Skilled labor [14.48 h]; Unskilled Labor [14.48 h]; Equipment Opreator [17.32 h]; Excavator-Poclain [14.48 h]; Dump Truck [2.94 h]; GRP (600mm Diameter) - ST - Depth less than 1.5 m [29.19 m]; GRP (600mm Diameter) - ST - Depth: 1.51m - 2.5m | 12,580.89 | 12,580.89 | C031 | Z4 | CONS | ST | Excavation | bef |
| RHD4CZ4C031ST1202 |  | Bedding works for GRP Pipe Line 600 mm - (RD-C-3/1)-Z4-C031-ST | 2d | 2026-08-05 A | 2026-09-20 A | RHD4CZ4C031ST1102 | 100% |  | 2026-09-03 | 2026-09-05 |  |  | Skilled labor [13.5 h]; Unskilled Labor [27.01 h]; Equipment Opreator [27.01 h]; Excavator-Poclain [13.5 h]; Dump Truck [13.5 h]; GRP (600mm Diameter) - ST - Depth less than 1.5 m [14.6 m]; GRP (600mm Diameter) - ST - Depth: 1.51m - 2.5m | 6,292.6 | 6,292.6 | C031 | Z4 | CONS | ST | Bedding | bef |
| RHD4CZ4C031ST1302 |  | Installing for GRP Pipe Line 600 mm - (RD-C-3/1)-Z4-C031-ST | 2d | 2026-08-06 A | 2026-08-13 A | RHD4CZ4C031ST1202 | 100% |  | 2026-09-06 | 2026-09-07 |  |  | Unskilled Labor [36.48 h]; Plumber [18.3 h]; GRP (600mm Diameter) - ST - Depth less than 1.5 m [131.36 m]; GRP (600mm Diameter) - ST - Depth: 1.51m - 2.5m | 56,616.16 | 56,616.16 | C031 | Z4 | CONS | ST | Installation | bef |
| RHD4CZ4C031ST1502 |  | Backfilling and warning tape works for GRP Pipe Line 600 mm - (RD-C-3/1)-Z4-C031-ST | 2d | 2026-08-08 A | 2027-03-13 | RHD4CZ4C031ST1503, RHD4CZ4C031ST1402 |  | 2d | 2026-09-10 | 2026-09-12 | -197.02d | 0d | Skilled labor [15.9 h]; Unskilled Labor [31.8 h]; Equipment Opreator [31.8 h]; Excavator-Poclain [15.9 h]; Dump Truck [15.9 h]; GRP (600mm Diameter) - ST - Depth less than 1.5 m [58.38 m]; GRP (600mm Diameter) - ST - Depth: 1.51m - 2.5m | 25,161.78 |  | C031 | Z4 | CONS | ST | Backfilling | bef |
| RHD4CZ4C031ST1402 |  | Primary Test for GRP Pipe Line 600 mm - (RD-C-3/1)-Z4-C031-ST | 2d | 2027-03-04 | 2027-03-07 | RHD4CZ4C031ST1302 |  |  |  |  | -197.02d | 0d | Unskilled Labor [11.65 h]; Plumber [11.65 h]; Equipment Opreator [11.65 h]; Water Truck [11.65 h]; GRP (600mm Diameter) - ST - Depth less than 1.5 m [58.38 m]; GRP (600mm Diameter) - ST - Depth: 1.51m - 2.5m | 25,161.78 |  | C031 | Z4 | CONS | ST | Primary Test | bef |
|  | 2413 | **RHD4-02-002-C031-(ST)-GRP Pipes - 500 mm diameter** |  | 2026-08-04 | 2027-03-17 |  |  |  |  |  |  |  |  |  |  |  |  |  |  |  |  |
| RHD4CZ4C031ST1101 |  | Excavation works for GRP Pipe Line 500 mm - (RD-C-3/1)-Z4-C031-ST | 2d | 2026-08-04 A | 2027-03-13 | RHD4CZ4C031ST1502, RHD4CZ4C031ST1102 | 65% | 0d | 2026-09-13 | 2026-09-14 | -197.02d | 0d | Skilled labor [14.05 h]; Unskilled Labor [14.05 h]; Equipment Opreator [16.88 h]; Excavator-Poclain [14.05 h]; Dump Truck [2.83 h]; GRP (500mm Diameter) - ST - Depth less than 1.5 m [30.51 m]; GRP (500mm Diameter) - ST - Depth: 1.51m - 2.5m | 10,831.05 | 10,831.05 | C031 | Z4 | CONS | ST | Excavation | bef |
| RHD4CZ4C031ST1201 |  | Bedding works for GRP Pipe Line 500 mm - (RD-C-3/1)-Z4-C031-ST | 2d | 2026-08-05 A | 2027-03-13 | RHD4CZ4C031ST1101 | 75% | 0d | 2026-09-15 | 2026-09-16 | -197.02d | 0d | Skilled labor [12.41 h]; Unskilled Labor [24.8 h]; Equipment Opreator [24.8 h]; Excavator-Poclain [12.41 h]; Dump Truck [12.41 h]; GRP (500mm Diameter) - ST - Depth less than 1.5 m [15.25 m]; GRP (500mm Diameter) - ST - Depth: 1.51m - 2.5m | 5,413.75 | 5,413.75 | C031 | Z4 | CONS | ST | Bedding | bef |
| RHD4CZ4C031ST1301 |  | Installing for GRP Pipe Line 500 mm - (RD-C-3/1)-Z4-C031-ST | 2d | 2026-08-06 A | 2027-03-13 | RHD4CZ4C031ST1201 | 76% | 0d | 2026-09-17 | 2026-09-19 | -197.02d | 0d | Unskilled Labor [41.6 h]; Plumber [20.8 h]; GRP (500mm Diameter) - ST - Depth less than 1.5 m [137.28 m]; GRP (500mm Diameter) - ST - Depth: 1.51m - 2.5m | 48,734.4 | 48,734.4 | C031 | Z4 | CONS | ST | Installation | bef |
| RHD4CZ4C031ST1501 |  | Backfilling and warning tape works for GRP Pipe Line 500 mm - (RD-C-3/1)-Z4-C031-ST | 2d | 2026-08-08 A | 2027-03-17 | RHD4CZ4C031ST1502, RHD4CZ4C031ST1401 | 75% | 2d | 2026-09-22 | 2026-09-24 | -197.02d | 0d | Skilled labor [16.66 h]; Unskilled Labor [33.22 h]; Equipment Opreator [33.22 h]; Excavator-Poclain [16.66 h]; Dump Truck [16.66 h]; GRP (500mm Diameter) - ST - Depth less than 1.5 m [61.01 m]; GRP (500mm Diameter) - ST - Depth: 1.51m - 2.5m | 21,658.55 |  | C031 | Z4 | CONS | ST | Backfilling | bef |
| RHD4CZ4C031ST1401 |  | Primary Test for GRP Pipe Line 500 mm - (RD-C-3/1)-Z4-C031-ST | 2d | 2027-03-13 | 2027-03-15 | RHD4CZ4C031ST1301 |  |  |  |  | -197.02d | 0d | Unskilled Labor [9.04 h]; Plumber [9.04 h]; Equipment Opreator [9.04 h]; Water Truck [9.04 h]; GRP (500mm Diameter) - ST - Depth less than 1.5 m [61.01 m]; GRP (500mm Diameter) - ST - Depth: 1.51m - 2.5m | 21,658.55 |  | C031 | Z4 | CONS | ST | Primary Test | bef |
|  | 2806 | **RHD4-02-002-C031-(ST)-MH Works - 1200 mm diameter** |  | 2026-08-04 | 2027-04-13 |  |  |  |  |  |  |  |  |  |  |  |  |  |  |  |  |
| RHD4CZ4C031ST3100 |  | Excavation and PC Blinding works for MH 1200 mm - (RD-C-3/1)-Z4-C031-ST | 7d | 2026-08-04 A | 2027-03-21 | RHD4ENSDZ4APPST110, RHD4ENMSST2000, RHD4CZ4C031ST1501, RHD4ENMSST2010, RHD4CZ6C062ST3502, RHD4ENMSEW2000, RHD4ENMSEW2010, RHD4ENSDZ5APPEW100 SS, RHD4ENSDZ7APPRD220, RHD4ENSDZ7APPEW100 SS, RHD4CZ7L015RW3000, RHD4ENSDZ5APPRD220, RHD4CZ5L08RD1100, RHD4CZ4C031ST3302 | 79% | 3d | 2026-09-26 | 2026-10-03 | -197.02d | 0d | Skilled labor [66.1 h]; Unskilled Labor [66.1 h]; Equipment Opreator [105.75 h]; Excavator-Poclain [66.1 h]; Water Truck [6.64 h]; Dump Truck [33 h]; MH (1200mm Diameter) - ST - depth less than 1.5 [0.5 nr]; MH (1200mm Diameter) - ST - depth 1.50 - 2.5m [4.25 nr] | 48,255.75 | 27,574.71 | C031 | Z4 | CONS | ST | Excavation | bef |
| RHD4CZ4C031ST3200 |  | Installation of Base for MH 1200 mm - (RD-C-3/1)-Z4-C031-ST | 7d | 2026-09-13 A | 2027-03-24 | RHD4CZ4C031ST3100, RHD4PRSHLSTAGST1603 | 79% | 3d | 2026-10-04 | 2026-10-11 | -170.02d | 0d | Skilled labor [67.2 h]; Unskilled Labor [67.2 h]; Equipment Opreator [26.9 h]; Boom Truck [13.4 h]; Concrete Mixer Truck [13.4 h]; MH (1200mm Diameter) - ST - depth less than 1.5 [0.5 nr]; MH (1200mm Diameter) - ST - depth 1.50 - 2.5m [4.25 nr] | 48,255.75 | 27,574.71 | C031 | Z4 | CONS | ST | Installing Base | bef |
| RHD4CZ4C031ST3300 |  | MH Ring and C.Slab works and Backfilling works for MH 1200 mm - (RD-C-3/1)-Z4-C031-ST | 7d | 2026-10-24 A | 2027-03-28 | RHD4CZ4C031ST3200, RHD4PRSHLDOSST1603, RHD4CZ5L07ST3500 | 16% | 3d | 2027-03-29 | 2027-04-05 | -170.02d | 0d | Skilled labor [67.2 h]; Unskilled Labor [67.2 h]; Equipment Opreator [47.05 h]; Boom Truck [26.9 h]; Concrete Mixer Truck [20.15 h]; MH (1200mm Diameter) - ST - depth less than 1.5 [0.7 nr]; MH (1200mm Diameter) - ST - depth 1.50 - 2.5m [5.95 nr] | 67,558.05 | 38,604.6 | C031 | Z4 | CONS | ST | Installing Rings | bef |
| RHD4CZ4C031ST3400 |  | Steel Cover for MH 1200 mm - (RD-C-3/1)-Z4-C031-ST | 7d | 2027-03-28 | 2027-04-05 | RHD4CZ4C031ST3300 |  |  |  |  | -133.02d | 0d | Skilled labor [68.94 h]; Unskilled Labor [137.98 h]; Equipment Opreator [13.83 h]; Boom Truck [13.83 h]; MH (1200mm Diameter) - ST - depth less than 1.5 [0.1 nr]; MH (1200mm Diameter) - ST - depth 1.50 - 2.5m [0.85 nr] | 9,651.15 |  | C031 | Z4 | CONS | ST | Steel Cover | bef |
| RHD4CZ4C031ST3500 |  | Finishing, Benching, Testing works for MH 1200 mm - (RD-C-3/1)-Z4-C031-ST | 7d | 2027-04-05 | 2027-04-13 | RHD4CZ4C031ST3400 |  |  |  |  | -133.02d | 15d | Skilled labor [66.1 h]; Unskilled Labor [132.1 h]; Plumber [66.1 h]; Equipment Opreator [13.18 h]; Water Truck [13.18 h]; MH (1200mm Diameter) - ST - depth less than 1.5 [0.2 nr]; MH (1200mm Diameter) - ST - depth 1.50 - 2.5m [1.7 nr] | 19,302.3 |  | C031 | Z4 | CONS | ST | Benching | bef |

| ID | WBS | Activity | Duration | Start | Finish | Predecessors | Complete | Remaining | Planned start | Planned finish | Total float | Free float | Resources | Cost | Actual cost | RDH4-01-001-Road and Block Names-1 | RDH4-01-001-Zones-1 | RDH4-01-001-Phases-1 | RDH4-01-001-Networks-1 | RDH4-01-001-Work Method-1 | RDH4-01-001-MENEM |
| --- | --- | --- | --- | --- | --- | --- | --- | --- | --- | --- | --- | --- | --- | --- | --- | --- | --- | --- | --- | --- | --- |
|  | 2807 | **RHD4-02-002-C031-(ST)-MH Works - 1500 mm diameter** |  | 2026-09-19 | 2027-04-25 |  |  |  |  |  |  |  |  |  |  |  |  |  |  |  |  |
| RHD4CZ4C031ST3101 |  | Excavation and PC Blinding works for MH 1500 mm - (RD-C-3/1)-Z4-C031-ST | 2d | 2026-09-19 A | 2027-03-30 | RHD4CZ4C031ST3300, RHD4ENSDZ4APPST110, RHD4ENMSST2000 | 25% | 2d | 2026-10-20 | 2026-10-21 | -170.02d | 0d | Skilled labor [21.78 h]; Unskilled Labor [21.78 h]; Equipment Opreator [34.85 h]; Excavator-Poclain [21.78 h]; Water Truck [2.18 h]; Dump Truck [10.89 h]; MH (1500mm Diameter) - ST - depth 1.50 - 2.5m [1 nr] | 14,586 |  | C031 | Z4 | CONS | ST | Excavation | bef |
| RHD4CZ4C031ST3201 |  | Installation of Base for MH 1500 mm - (RD-C-3/1)-Z4-C031-ST | 2d | 2026-09-21 A | 2027-04-01 | RHD4CZ4C031ST3101, RHD4PRSHLSTAGST1603 | 25% | 2d | 2026-10-22 | 2026-10-24 | -170.02d | 0d | Skilled labor [21.78 h]; Unskilled Labor [21.78 h]; Equipment Opreator [8.71 h]; Boom Truck [4.36 h]; Concrete Mixer Truck [4.36 h]; MH (1500mm Diameter) - ST - depth 1.50 - 2.5m [1 nr] | 14,586 |  | C031 | Z4 | CONS | ST | Installing Base | bef |
| RHD4CZ4C031ST3301 |  | MH Ring and C.Slab works and Backfilling works for MH 1500 mm - (RD-C-3/1)-Z4-C031-ST | 2d | 2027-04-01 | 2027-04-04 | RHD4CZ4C031ST3201, RHD4PRSHLDOSST1603 |  |  |  |  | -170.02d | 0d | Skilled labor [21.78 h]; Unskilled Labor [21.78 h]; Equipment Opreator [15.25 h]; Boom Truck [8.71 h]; Concrete Mixer Truck [6.53 h]; MH (1500mm Diameter) - ST - depth 1.50 - 2.5m [1.4 nr] | 20,420.4 |  | C031 | Z4 | CONS | ST | Installing Rings | bef |
| RHD4CZ4C031ST3401 |  | Steel Cover for MH 1500 mm - (RD-C-3/1)-Z4-C031-ST | 2d | 2027-04-20 | 2027-04-22 | RHD4CZ4C031ST3301, RHD4CZ4C031ST3400 SS, RHD4CZ4C031ST1500, RHD4PRSHLDOSST1703, RHD4PRSHLSTAGST1703 SS |  |  |  |  | -148.02d | 0d | Skilled labor [14.48 h]; Unskilled Labor [29.08 h]; Equipment Opreator [2.94 h]; Boom Truck [2.94 h]; MH (1500mm Diameter) - ST - depth 1.50 - 2.5m [0.2 nr] | 2,917.2 |  | C031 | Z4 | CONS | ST | Steel Cover | bef |
| RHD4CZ4C031ST3501 |  | Finishing, Benching, Testing works for MH 1500 mm - (RD-C-3/1)-Z4-C031-ST | 2d | 2027-04-22 | 2027-04-25 | RHD4CZ4C031ST3401, RHD4CZ4C031ST3500 SS, RHD4CZ4C031ST2500 |  |  |  |  | -148.02d | 47.98d | Skilled labor [21.78 h]; Unskilled Labor [43.56 h]; Plumber [21.78 h]; Equipment Opreator [4.36 h]; Water Truck [4.36 h]; MH (1500mm Diameter) - ST - depth 1.50 - 2.5m [0.4 nr] | 5,834.4 |  | C031 | Z4 | CONS | ST | Benching | bef |
|  | 2795 | **RHD4-02-002-C031-(ST)-GRP Pipes - 900 mm diameter** |  | 2027-04-04 | 2027-04-15 |  |  |  |  |  |  |  |  |  |  |  |  |  |  |  |  |
| RHD4CZ4C031ST1105 |  | Excavation works for GRP Pipe Line 900 mm - (RD-C-3/1)-Z4-C031-ST | 2d | 2027-04-04 | 2027-04-06 | RHD4CZ4C031ST3300, RHD4CZ4C031ST3301, RHD4ENSDZ4APPST110, RHD4CZ5L07ST8500, RHD4CZ5C061ST7500, RHD4CZ4C031ST1501 |  |  |  |  | -169.02d | 0d | Skilled labor [16.12 h]; Unskilled Labor [16.12 h]; Equipment Opreator [19.28 h]; Excavator-Poclain [16.12 h]; Dump Truck [3.27 h]; GRP (900mm Diameter) - ST - Depth less than 1.5 m [29.56 m]; GRP (900mm Diameter) - ST - Depth: 1.51m - 2.5m | 22,140.44 |  | C031 | Z4 | CONS | ST | Excavation | bef |
| RHD4CZ4C031ST1205 |  | Bedding works for GRP Pipe Line 900 mm - (RD-C-3/1)-Z4-C031-ST | 2d | 2027-04-06 | 2027-04-08 | RHD4CZ4C031ST1105 |  |  |  |  | -169.02d | 0d | Skilled labor [16.12 h]; Unskilled Labor [32.24 h]; Equipment Opreator [32.24 h]; Excavator-Poclain [16.12 h]; Dump Truck [16.12 h]; GRP (900mm Diameter) - ST - Depth less than 1.5 m [14.78 m]; GRP (900mm Diameter) - ST - Depth: 1.51m - 2.5m | 11,070.22 |  | C031 | Z4 | CONS | ST | Bedding | bef |
| RHD4CZ4C031ST1305 |  | Installing for GRP Pipe Line 900 mm - (RD-C-3/1)-Z4-C031-ST | 2d | 2027-04-08 | 2027-04-11 | RHD4CZ4C031ST1205, RHD4PRSHLSTAGST1003, RHD4PRSHLDOSST1603, RHD4PRSHLPOST1000, RHD4PRSHLDOSST1003 |  |  |  |  | -169.02d | 0d | Unskilled Labor [21.45 h]; Plumber [10.78 h]; GRP (900mm Diameter) - ST - Depth less than 1.5 m [133.04 m]; GRP (900mm Diameter) - ST - Depth: 1.51m - 2.5m | 99,646.96 |  | C031 | Z4 | CONS | ST | Installation | bef |
| RHD4CZ4C031ST1405 |  | Primary Test for GRP Pipe Line 900 mm - (RD-C-3/1)-Z4-C031-ST | 2d | 2027-04-11 | 2027-04-13 | RHD4CZ4C031ST1305 |  |  |  |  | -168.02d | 0d | Unskilled Labor [8.06 h]; Plumber [8.06 h]; Equipment Opreator [8.06 h]; Water Truck [8.06 h]; GRP (900mm Diameter) - ST - Depth less than 1.5 m [59.13 m]; GRP (900mm Diameter) - ST - Depth: 1.51m - 2.5m | 44,288.37 |  | C031 | Z4 | CONS | ST | Primary Test | bef |
| RHD4CZ4C031ST1505 |  | Backfilling and warning tape works for GRP Pipe Line 900 mm - (RD-C-3/1)-Z4-C031-ST | 2d | 2027-04-13 | 2027-04-15 | RHD4CZ4C031ST1405 |  |  |  |  | -167.02d | 2d | Skilled labor [16.12 h]; Unskilled Labor [32.24 h]; Equipment Opreator [32.24 h]; Excavator-Poclain [16.12 h]; Dump Truck [16.12 h]; GRP (900mm Diameter) - ST - Depth less than 1.5 m [59.13 m]; GRP (900mm Diameter) - ST - Depth: 1.51m - 2.5m | 44,288.37 |  | C031 | Z4 | CONS | ST | Backfilling | bef |
|  | 2790 | **RHD4-02-002-C031-(ST)-GRP Pipes - 400 mm diameter** |  | 2026-08-04 | 2027-04-20 |  |  |  |  |  |  |  |  |  |  |  |  |  |  |  |  |
| RHD4CZ4C031ST1100 |  | Excavation works for GRP Pipe Line 400 mm - (RD-C-3/1)-Z4-C031-ST | 4d | 2026-08-04 A | 2027-04-08 | RHD4CZ4C031ST3300, RHD4CZ4C031ST3301, RHD4CZ4C031ST1105, RHD4ENSDZ4APPST110 | 50% | 2d | 2026-10-29 | 2026-11-02 | -168.02d | 0d | Skilled labor [35.5 h]; Unskilled Labor [35.5 h]; Equipment Opreator [42.58 h]; Excavator-Poclain [35.5 h]; Dump Truck [7.08 h]; GRP (400mm Diameter) - ST - Depth less than 1.5 m [74.27 m]; GRP (400mm Diameter) - ST - Depth: 1.51m - 2.5 m | 21,538.3 | 10,769.15 | C031 | Z4 | CONS | ST | Excavation | bef |
| RHD4CZ4C031ST1200 |  | Bedding works for GRP Pipe Line 400 mm - (RD-C-3/1)-Z4-C031-ST | 3d | 2026-08-05 A | 2027-04-10 | RHD4CZ4C031ST1100, RHD4CZ4C031ST1205 | 59% | 1d | 2026-11-03 | 2026-11-05 | -168.02d | 1d | Skilled labor [32.13 h]; Unskilled Labor [64.25 h]; Equipment Opreator [64.25 h]; Excavator-Poclain [32.13 h]; Dump Truck [32.13 h]; GRP (400mm Diameter) - ST - Depth less than 1.5 m [37.14 m]; GRP (400mm Diameter) - ST - Depth: 1.51m - 2.5 m | 10,770.6 | 7,180.4 | C031 | Z4 | CONS | ST | Bedding | bef |
| RHD4CZ4C031ST1300 |  | Installing for GRP Pipe Line 400 mm - (RD-C-3/1)-Z4-C031-ST | 5d | 2026-08-06 A | 2027-04-14 | RHD4CZ4C031ST1200, RHD4CZ4C031ST1305, RHD4PRSHLSTAGST1003, RHD4PRSHLDOSST1603, RHD4PRSHLPOST1000, RHD4PRSHLDOSST1003 | 62% | 3d | 2026-11-07 | 2026-11-11 | -169.02d | 0d | Unskilled Labor [97.47 h]; Plumber [48.8 h]; GRP (400mm Diameter) - ST - Depth less than 1.5 m [334.22 m]; GRP (400mm Diameter) - ST - Depth: 1.51m - 2.5 m | 96,923.8 | 38,769.52 | C031 | Z4 | CONS | ST | Installation | bef |
| RHD4CZ4C031ST1500 |  | Backfilling and warning tape works for GRP Pipe Line 400 mm - (RD-C-3/1)-Z4-C031-ST | 7d | 2026-08-08 A | 2027-04-20 | RHD4CZ4C031ST1400, RHD4CZ4C031ST1505 | 59% | 2d | 2026-11-16 | 2026-11-23 | -169.02d | 0d | Skilled labor [40.4 h]; Unskilled Labor [80.92 h]; Equipment Opreator [80.92 h]; Excavator-Poclain [40.4 h]; Dump Truck [40.4 h]; GRP (400mm Diameter) - ST - Depth less than 1.5 m [148.54 m]; GRP (400mm Diameter) - ST - Depth: 1.51m - 2.5 m | 43,076.6 | 30,769 | C031 | Z4 | CONS | ST | Backfilling | bef |
| RHD4CZ4C031ST1400 |  | Primary Test for GRP Pipe Line 400 mm - (RD-C-3/1)-Z4-C031-ST | 3d | 2027-04-14 | 2027-04-18 | RHD4CZ4C031ST1300, RHD4CZ4C031ST1405 |  |  |  |  | -169.02d | 0d | Unskilled Labor [25.48 h]; Plumber [25.48 h]; Equipment Opreator [25.48 h]; Water Truck [25.48 h]; GRP (400mm Diameter) - ST - Depth less than 1.5 m [148.54 m]; GRP (400mm Diameter) - ST - Depth: 1.51m - 2.5 m | 43,076.6 |  | C031 | Z4 | CONS | ST | Primary Test | bef |
|  | 2804 | **RHD4-02-002-C031-(ST)-UPVC Pipes - 300 mm diameter** |  | 2026-09-19 | 2027-04-21 |  |  |  |  |  |  |  |  |  |  |  |  |  |  |  |  |
| RHD4CZ4C031ST2100 |  | Excavation works for UPVC Pipe Line 300 mm - (RD-C-3/1)-Z4-C031-ST | 4d | 2026-09-19 A | 2027-04-10 | RHD4CZ4C031ST3300, RHD4CZ4C031ST3301, RHD4ENSDZ4APPST110 | 90% | 5d | 2026-10-27 | 2026-10-31 | -168.02d | 0d | Skilled labor [37.6 h]; Unskilled Labor [37.6 h]; Equipment Opreator [45.09 h]; Excavator-Poclain [37.6 h]; Dump Truck [7.51 h]; UPVC (300mm Diameter) - ST - Depth less than 1.5 [84.93 m]; UPVC (300mm Diameter) - ST - Depth: 1.51m - 2.5m | 25,733.79 |  | C031 | Z4 | CONS | ST | Excavation | bef |
| RHD4CZ4C031ST2200 |  | Bedding works for UPVC Pipe Line 300 mm - (RD-C-3/1)-Z4-C031-ST | 3d | 2026-09-21 A | 2027-04-12 | RHD4CZ4C031ST2100 | 93% | 2d | 2026-11-01 | 2026-11-03 | -168.02d | 2d | Skilled labor [31.8 h]; Unskilled Labor [63.6 h]; Equipment Opreator [63.6 h]; Excavator-Poclain [31.8 h]; Dump Truck [31.8 h]; UPVC (300mm Diameter) - ST - Depth less than 1.5 [42.47 m]; UPVC (300mm Diameter) - ST - Depth: 1.51m - 2.5m | 12,868.41 | 4,289.47 | C031 | Z4 | CONS | ST | Bedding | bef |
| RHD4CZ4C031ST2300 |  | Installing for UPVC Pipe Line 300 mm - (RD-C-3/1)-Z4-C031-ST | 4d | 2026-09-22 A | 2027-04-17 | RHD4CZ4C031ST2200, RHD4CZ4C031ST7300, RHD4PRSHLDOSST1103, RHD4PRSHLSTAGST1103 | 94% | 2d | 2026-11-11 | 2026-11-15 | -170.02d | 0d | Unskilled Labor [75.14 h]; Plumber [37.6 h]; UPVC (300mm Diameter) - ST - Depth less than 1.5 [382.19 m]; UPVC (300mm Diameter) - ST - Depth: 1.51m - 2.5m | 115,803.57 | 57,901.79 | C031 | Z4 | CONS | ST | Installation | bef |
| RHD4CZ4C031ST2500 |  | Backfilling and warning tape works for UPVC Pipe Line 300 mm - (RD-C-3/1)-Z4-C031-ST | 5d | 2026-09-23 A | 2027-04-21 | RHD4CZ4C031ST2400, RHD4CZ4C031ST6100 | 93% | 2d | 2026-11-18 | 2026-11-23 | -170.02d | 0d | Skilled labor [46.28 h]; Unskilled Labor [92.46 h]; Equipment Opreator [92.46 h]; Excavator-Poclain [46.28 h]; Dump Truck [46.28 h]; UPVC (300mm Diameter) - ST - Depth less than 1.5 [169.86 m]; UPVC (300mm Diameter) - ST - Depth: 1.51m - 2.5m | 51,467.58 | 30,880.55 | C031 | Z4 | CONS | ST | Backfilling | bef |
| RHD4CZ4C031ST2400 |  | Primary Test for UPVC Pipe Line 300 mm - (RD-C-3/1)-Z4-C031-ST | 2d | 2027-04-17 | 2027-04-19 | RHD4CZ4C031ST2300 |  |  |  |  | -170.02d | 0d | Unskilled Labor [20.15 h]; Plumber [20.15 h]; Equipment Opreator [20.15 h]; Water Truck [20.15 h]; UPVC (300mm Diameter) - ST - Depth less than 1.5 [169.86 m]; UPVC (300mm Diameter) - ST - Depth: 1.51m - 2.5m | 51,467.58 |  | C031 | Z4 | CONS | ST | Primary Test | bef |

| ID | WBS | Activity | Duration | Start | Finish | Predecessors | Complete | Remaining | Planned start | Planned finish | Total float | Free float | Resources | Cost | Actual cost | RDH4-01-001-Road and Block Names-1 | RDH4-01-001-Zones-1 | RDH4-01-001-Phases-1 | RDH4-01-001-Networks-1 | RDH4-01-001-Work Method-1 | RDH4-01-001-MENEM |
| --- | --- | --- | --- | --- | --- | --- | --- | --- | --- | --- | --- | --- | --- | --- | --- | --- | --- | --- | --- | --- | --- |
|  | 2812 | **RHD4-02-002-C031-(ST)-Concrete Encasement** |  | 2027-04-14 | 2027-04-19 |  |  |  |  |  |  |  |  |  |  |  |  |  |  |  |  |
| RHD4CZ4C031ST6100 |  | Pipe Encasement for Storm Pipelines - (RD-C-3/1)-Z4-C031-ST | 4d | 2027-04-14 | 2027-04-19 | RHD4CZ4C031ST2300 SS, RHD4CZ4C031ST2300 FF, RHD4CZ4C031ST2200 |  |  |  |  | -170.02d | 0d | Skilled labor [12.63 h]; Unskilled Labor [12.63 h]; Equipment Opreator [13.94 h]; Concrete Mixer Truck [1.31 h]; Dump Truck [12.63 h]; Pipe Encasement - ST [232.51 m3] | 117,650.06 |  | C031 | Z4 | CONS | ST | Pipe Encasement | bef |
|  | 2813 | **RHD4-02-002-Z4-C031-Catch Basin - ST** |  | 2026-08-29 | 2027-04-28 |  |  |  |  |  |  |  |  |  |  |  |  |  |  |  |  |
|  | 2437 | **RHD4-02-002-C031-(ST)-Double Catch Basin Works** |  | 2026-09-19 | 2027-04-15 |  |  |  |  |  |  |  |  |  |  |  |  |  |  |  |  |
| RHD4CZ4C031ST8100 |  | Excavation works for Double Catch Basin - (RD-C-3/1)-Z4-C031-ST | 2d | 2026-09-19 A | 2026-10-24 A | RHD4CZ4C031ST1100 | 100% |  | 2026-11-03 | 2026-11-04 |  |  | Skilled labor [2.18 h]; Unskilled Labor [4.36 h]; Equipment Opreator [3.27 h]; Excavator-Poclain [2.18 h]; Dump Truck [1.09 h]; Double Catch basin - ST [0.25 nr] | 3,491.5 | 3,491.5 | C031 | Z4 | CONS | ST | Excavation | bef |
| RHD4CZ4C031ST8200 |  | PC Blinding, Installation and Pipe connection for Double Catch Basin - (RD-C-3/1)-Z4-C031-ST | 2d | 2026-10-25 A | 2026-10-26 A | RHD4CZ4C031ST8100 | 100% |  | 2027-04-20 | 2027-04-21 |  |  | Skilled labor [2.18 h]; Unskilled Labor [4.36 h]; Plumber [1.09 h]; Equipment Opreator [0.44 h]; Boom Truck [0.44 h]; Double Catch basin - ST [0.2 nr] | 2,793.2 | 2,793.2 | C031 | Z4 | CONS | ST | Installation & Pipe Connection | bef |
| RHD4CZ4C031ST8300 |  | Rings & C.Slab & Final Backfillfor Double Catch Basin - (RD-C-3/1)-Z4-C031-ST | 2d | 2027-04-08 | 2027-04-11 | RHD4CZ4C031ST8200 |  |  |  |  | -162.02d | 0d | Skilled labor [2.72 h]; Unskilled Labor [5.45 h]; Equipment Opreator [3.27 h]; Boom Truck [0.54 h]; Bobcat [2.72 h]; Double Catch basin - ST [0.35 nr] | 4,888.1 |  | C031 | Z4 | CONS | ST | Rings | bef |
| RHD4CZ4C031ST8400 |  | Steel Cover for Double Catch Basin - (RD-C-3/1)-Z4-C031-ST | 2d | 2027-04-11 | 2027-04-13 | RHD4CZ4C031ST8300 |  |  |  |  | -162.02d | 0d | Skilled labor [2.18 h]; Unskilled Labor [2.18 h]; Equipment Opreator [0.44 h]; Boom Truck [0.44 h]; Double Catch basin - ST [0.05 nr] | 698.3 |  | C031 | Z4 | CONS | ST | Steel Cover | bef |
| RHD4CZ4C031ST8500 |  | Finishing and Insulation works for Double Catch Basin - (RD-C-3/1)-Z4-C031-ST | 2d | 2027-04-13 | 2027-04-15 | RHD4CZ4C031ST8400 |  |  |  |  | -162.02d | 5d | Skilled labor [5.45 h]; Unskilled Labor [10.89 h]; Equipment Opreator [1.09 h]; Boom Truck [1.09 h]; Double Catch basin - ST [0.15 nr] | 2,094.9 |  | C031 | Z4 | CONS | ST | Insulation | bef |
|  | 2814 | **RHD4-02-002-C031-(ST)-Single Catch Basin Works** |  | 2026-08-29 | 2027-04-28 |  |  |  |  |  |  |  |  |  |  |  |  |  |  |  |  |
| RHD4CZ4C031ST7100 |  | Excavation works for Single Catch Basin - (RD-C-3/1)-Z4-C031-ST | 4d | 2026-08-29 A | 2027-04-06 | RHD4CZ4C031ST3300, RHD4CZ4C031ST3301, RHD4ENSDZ4APPST110 | 62% | 2d | 2026-10-27 | 2026-10-31 | -170.02d | 0d | Skilled labor [42.47 h]; Unskilled Labor [84.94 h]; Equipment Opreator [63.71 h]; Excavator-Poclain [42.47 h]; Dump Truck [21.24 h]; Single Catch basin - ST [9.75 nr] | 36,377.25 | 24,252.71 | C031 | Z4 | CONS | ST | Excavation | bef |
| RHD4CZ4C031ST7200 |  | PC Blinding, Installation and Pipe connection for Single Catch Basin - (RD-C-3/1)-Z4-C031-ST | 4d | 2026-08-30 A | 2027-04-08 | RHD4CZ4C031ST7100 | 64% | 2d | 2026-11-01 | 2026-11-04 | -170.02d | 0d | Skilled labor [42.47 h]; Unskilled Labor [84.94 h]; Plumber [21.24 h]; Equipment Opreator [8.49 h]; Boom Truck [8.49 h]; Single Catch basin - ST [7.8 nr] | 29,101.8 | 19,402.17 | C031 | Z4 | CONS | ST | Installation & Pipe Connection | bef |
| RHD4CZ4C031ST7300 |  | Rings & C.Slab & Final Backfill for Single Catch Basin - (RD-C-3/1)-Z4-C031-ST | 5d | 2026-10-27 A | 2027-04-14 | RHD4CZ4C031ST7200, RHD4PRSHLDOSST1303, RHD4PRSHLSTAGST1303 |  | 5d | 2026-10-27 | 2026-11-01 | -170.02d | 0d | Skilled labor [53.14 h]; Unskilled Labor [106.18 h]; Equipment Opreator [63.71 h]; Boom Truck [10.67 h]; Bobcat [53.14 h]; Single Catch basin - ST [13.65 nr] | 50,928.15 | 5,225.23 | C031 | Z4 | CONS | ST | Rings | bef |
| RHD4CZ4C031ST7400 |  | Steel Cover for Single Catch Basin - (RD-C-3/1)-Z4-C031-ST | 4d | 2027-04-14 | 2027-04-19 | RHD4CZ4C031ST7300, RHD4PRSHLDOSST1703 |  |  |  |  | -150.02d | 0d | Skilled labor [42.47 h]; Unskilled Labor [42.47 h]; Equipment Opreator [8.49 h]; Boom Truck [8.49 h]; Single Catch basin - ST [1.95 nr] | 7,275.45 |  | C031 | Z4 | CONS | ST | Steel Cover | bef |
| RHD4CZ4C031ST7500 |  | Finishing and Insulation works for Single Catch Basin - (RD-C-3/1)-Z4-C031-ST | 8d | 2027-04-19 | 2027-04-28 | RHD4CZ4C031ST7400 |  |  |  |  | -150.02d | 11.98d | Skilled labor [84.94 h]; Unskilled Labor [169.89 h]; Equipment Opreator [16.99 h]; Boom Truck [16.99 h]; Single Catch basin - ST [5.85 nr] | 21,826.35 |  | C031 | Z4 | CONS | ST | Insulation | bef |
|  | 2875 | **RHD4-02-002-Z4-C031-Potable Network - PT** |  | 2027-04-21 | 2027-05-19 |  |  |  |  |  |  |  |  |  |  |  |  |  |  |  |  |
|  | 2879 | **RHD4-02-002-C031-(PT)-HDPE Pipes - 400 mm diameter** |  | 2027-04-21 | 2027-05-03 |  |  |  |  |  |  |  |  |  |  |  |  |  |  |  |  |
| RHD4CZ4C031PT1103 |  | Excavation works for HDPE Pipline 400 mm - (RD-C-3/1)-Z4-C031-PT | 2d | 2027-04-21 | 2027-04-24 | RHD4ENSDZ4APPPT130, RHD4ENMSPT2000, RHD4CZ4C031ST2500, RHD4CZ4C031ST1500 |  |  |  |  | -170.02d | 0d | Skilled labor [18.84 h]; Unskilled Labor [24.18 h]; Equipment Opreator [26.9 h]; Excavator-Poclain [18.84 h]; Dump Truck [8.06 h]; HDPE (400mm Diameter) - PT - Depth: less than 1.5m [18.39 m]; HDPE (400mm Diameter) - PT - Depth: 1.51m - 2.5m [5.75 m]; HDPE (400mm Diameter) - PT - Depth: more than 2.5m | 8,345.6 |  | C031 | Z4 | CONS | PT | Excavation | bef |
| RHD4CZ4C031PT1203 |  | Bedding works for HDPE Pipline 400 mm - (RD-C-3/1)-Z4-C031-PT | 2d | 2027-04-24 | 2027-04-26 | RHD4CZ4C031PT1103 |  |  |  |  | -170.02d | 0d | Skilled labor [12.63 h]; Unskilled Labor [36.16 h]; Plumber [5.45 h]; Equipment Opreator [30.71 h]; Excavator-Poclain [12.63 h]; Boom Truck [5.45 h]; Dump Truck [12.63 h]; HDPE (400mm Diameter) - PT - Depth: less than 1.5m [9.19 m]; HDPE (400mm Diameter) - PT - Depth: 1.51m - 2.5m [45.98 m]; HDPE (400mm Diameter) - PT - Depth: more than 2.5m | 19,861.32 |  | C031 | Z4 | CONS | PT | Bedding | bef |
| RHD4CZ4C031PT1303 |  | Installing for HDPE Pipline 400 mm - (RD-C-3/1)-Z4-C031-PT | 2d | 2027-04-26 | 2027-04-28 | RHD4CZ4C031PT1203, RHD4PRSHLDOSPT1000, RHD4PRSHLSTAGPT1000 |  |  |  |  | -170.02d | 0d | Unskilled Labor [38.01 h]; Plumber [21.67 h]; Equipment Opreator [21.67 h]; Boom Truck [16.34 h]; Water Truck [5.45 h]; HDPE (400mm Diameter) - PT - Depth: less than 1.5m [82.75 m]; HDPE (400mm Diameter) - PT - Depth: 1.51m - 2.5m [22.99 m]; HDPE (400mm Diameter) - PT - Depth: more than 2.5m | 36,503.36 |  | C031 | Z4 | CONS | PT | Installation | bef |
| RHD4CZ4C031PT1403 |  | Primary Test for HDPE Pipline 400 mm - (RD-C-3/1)-Z4-C031-PT | 2d | 2027-04-28 | 2027-05-01 | RHD4CZ4C031PT1303 |  |  |  |  | -170.02d | 0d | Skilled labor [5.45 h]; Unskilled Labor [22 h]; Plumber [11.2 h]; Equipment Opreator [22 h]; Excavator-Poclain [5.45 h]; Water Truck [11.2 h]; Dump Truck [5.45 h]; HDPE (400mm Diameter) - PT - Depth: less than 1.5m [36.78 m]; HDPE (400mm Diameter) - PT - Depth: 1.51m - 2.5m [22.99 m]; HDPE (400mm Diameter) - PT - Depth: more than 2.5m | 20,873.56 |  | C031 | Z4 | CONS | PT | Primary Test | bef |
| RHD4CZ4C031PT1503 |  | Backfilling and warning tape works for HDPE Pipline 400 mm - (RD-C-3/1)-Z4-C031-PT | 2d | 2027-05-01 | 2027-05-03 | RHD4CZ4C031PT1403 |  |  |  |  | -170.02d | 0d | Skilled labor [14.48 h]; Unskilled Labor [28.97 h]; Equipment Opreator [28.97 h]; Excavator-Poclain [14.48 h]; Dump Truck [14.48 h]; HDPE (400mm Diameter) - PT - Depth: less than 1.5m [36.78 m]; HDPE (400mm Diameter) - PT - Depth: more than 2.5m | 12,505.2 |  | C031 | Z4 | CONS | PT | Backfilling | bef |
|  | 1751 | **RHD4-02-002-C031-(PT)-Air Valve Chambers** |  | 2027-04-24 | 2027-05-03 |  |  |  |  |  |  |  |  |  |  |  |  |  |  |  |  |
| RHD4CZ4C031PT2102 |  | Excavation and Bedding for Air Valve Chambers for Potable Water Network - (RD-C-3/1)-Z4-C031-PT | 2d | 2027-04-24 | 2027-04-26 | RHD4CZ4C031PT1103 |  |  |  |  | -139.02d | 0d | Skilled labor [5.45 h]; Unskilled Labor [5.45 h]; Equipment Opreator [1.09 h]; Excavator-Poclain [0.54 h]; Dump Truck [0.54 h]; Air Valve chambers - PT [0.25 nr] | 1,193 |  | C031 | Z4 | CONS | PT | Excavation and Bedding | bef |
| RHD4CZ4C031PT2202 |  | PC works for Air Valve Chambers for Potable Water Network - (RD-C-3/1)-Z4-C031-PT | 2d | 2027-04-26 | 2027-04-28 | RHD4CZ4C031PT2102 |  |  |  |  | -139.02d | 0d | Skilled labor [5.45 h]; Unskilled Labor [10.89 h]; Equipment Opreator [0.54 h]; Concrete Pump [0.54 h]; Air Valve chambers - PT [0.1 nr] | 477.2 |  | C031 | Z4 | CONS | PT | PC Works | bef |
| RHD4CZ4C031PT2302 |  | Installation for Air Valve Chambers for Potable Water Network - (RD-C-3/1)-Z4-C031-PT | 2d | 2027-04-28 | 2027-05-01 | RHD4CZ4C031PT2202 |  |  |  |  | -139.02d | 0d | Skilled labor [5.45 h]; Unskilled Labor [10.89 h]; Equipment Opreator [1.09 h]; Boom Truck [1.09 h]; Air Valve chambers - PT [0.55 nr] | 2,624.6 |  | C031 | Z4 | CONS | PT | Installation | bef |
| RHD4CZ4C031PT2402 |  | Backfilling works for Air Valve Chambers for Potable Water Network - (RD-C-3/1)-Z4-C031-PT | 2d | 2027-05-01 | 2027-05-03 | RHD4CZ4C031PT2302 |  |  |  |  | -139.02d | 0d | Skilled labor [5.45 h]; Unskilled Labor [10.89 h]; Equipment Opreator [1.09 h]; Water Truck [0.54 h]; Dump Truck [0.54 h]; Air Valve chambers - PT [0.1 nr] | 477.2 |  | C031 | Z4 | CONS | PT | Backfilling Works | bef |

| ID | WBS | Activity | Duration | Start | Finish | Predecessors | Total float | Free float | Resources | Cost | RDH4-01-001-Road and Block Names-1 | RDH4-01-001-Zones-1 | RDH4-01-001-Phases-1 | RDH4-01-001-Networks-1 | RDH4-01-001-Work Method-1 | RDH4-01-001-MENEM |
| --- | --- | --- | --- | --- | --- | --- | --- | --- | --- | --- | --- | --- | --- | --- | --- | --- |
|  | 1752 | **RHD4-02-002-C031-(PT)-Air Valves** |  | 2027-05-01 | 2027-05-05 |  |  |  |  |  |  |  |  |  |  |  |
| RHD4CZ4C031PT3103 |  | Installation for Air Valves for Potable Water Network - (RD-C-3/1)-Z4-C031-PT | 2d | 2027-05-01 | 2027-05-03 | RHD4CZ4C031PT2302 | -139.02d | 0d | Unskilled Labor [5.45 h]; Plumber [5.45 h]; Air valve diameter 65 mm - PT [0.9 nr] | 4,954.5 | C031 | Z4 | CONS | PT | Installation | bef |
| RHD4CZ4C031PT3203 |  | Stem and Service box for Air Valves for Potable Water Network - (RD-C-3/1)-Z4-C031-PT | 2d | 2027-05-03 | 2027-05-05 | RHD4CZ4C031PT3103, RHD4CZ4C031PT2402 | -139.02d | 19.98d | Unskilled Labor [5.45 h]; Plumber [5.45 h]; Air valve diameter 65 mm - PT [0.1 nr] | 550.5 | C031 | Z4 | CONS | PT | Stem and Service box | bef |
|  | 2883 | **RHD4-02-002-C031-(PT)-Butterfly Valves** |  | 2027-05-03 | 2027-05-08 |  |  |  |  |  |  |  |  |  |  |  |
| RHD4CZ4C031PT3101 |  | Installation for Butterfly Valves for Potable Water Network - (RD-C-3/1)-Z4-C031-PT | 2d | 2027-05-03 | 2027-05-05 | RHD4CZ4C031PT2300, RHD4PRSHLDOSPT1200, RHD4PRSHLSTAGPT1200 | -129.02d | 0d | Unskilled Labor [10.89 h]; Plumber [10.89 h]; Butterfly valves dia 400 - PT [1.8 nr] | 55,157.4 | C031 | Z4 | CONS | PT | Installation | bef |
| RHD4CZ4C031PT3201 |  | Stem and Service box for Butterfly Valves for Potable Water Network - (RD-C-3/1)-Z4-C031-PT | 2d | 2027-05-05 | 2027-05-08 | RHD4CZ4C031PT3101, RHD4CZ4C031PT2400, RHD4PRSHLDOSPT1300, RHD4PRSHLSTAGPT1300, RHD4CZ4A013PT3203, RHD4CZ4A013PT3202, RHD4CZ4A013PT3201 | -129.02d | 66.98d | Unskilled Labor [10.89 h]; Plumber [10.89 h]; Butterfly valves dia 400 - PT [0.2 nr] | 6,128.6 | C031 | Z4 | CONS | PT | Stem and Service box | bef |
|  | 2888 | **RHD4-02-002-C031-(PT)-Fire Hydrant** |  | 2027-05-03 | 2027-05-19 |  |  |  |  |  |  |  |  |  |  |  |
| RHD4CZ4C031PT4100 |  | Excavation and Bedding and Pipe Installation for Fire Hydrant - (RD-C-3/1)-Z4-C031-PT | 2d | 2027-05-03 | 2027-05-05 | RHD4CZ4C031PT1503, RHD4ENSDZ4APPPT130 | -138.02d | 0d | Skilled labor [10.89 h]; Unskilled Labor [10.89 h]; Plumber [10.89 h]; Equipment Opreator [5.45 h]; Excavator-Poclain [5.45 h]; 3-outlet fire hydrant (2 x 2.5 inch and 1 x 4.5 inch) in the form of a separate dry vacuum cylinder [0.2 nr] | 2,524 | C031 | Z4 | CONS | PT | Excavation | bef |
| RHD4CZ4C031PT4200 |  | Valve Installation for Fire Hydrant - (RD-C-3/1)-Z4-C031-PT | 2d | 2027-05-05 | 2027-05-08 | RHD4CZ4C031PT4100 | -138.02d | 0d | Unskilled Labor [7.3 h]; Plumber [7.3 h]; 3-outlet fire hydrant (2 x 2.5 inch and 1 x 4.5 inch) in the form of a separate dry vacuum cylinder [0.4 nr] | 5,048 | C031 | Z4 | CONS | PT | Valve | bef |
| RHD4CZ4C031PT4300 |  | Stem for Fire Hydrant - (RD-C-3/1)-Z4-C031-PT | 2d | 2027-05-08 | 2027-05-10 | RHD4CZ4C031PT4200 | -138.02d | 0d | Unskilled Labor [7.3 h]; Plumber [7.3 h]; 3-outlet fire hydrant (2 x 2.5 inch and 1 x 4.5 inch) in the form of a separate dry vacuum cylinder [0.6 nr] | 7,572 | C031 | Z4 | CONS | PT | Stem | bef |
| RHD4CZ4C031PT4400 |  | Fire Installation for Fire Hydrant - (RD-C-3/1)-Z4-C031-PT | 2d | 2027-05-10 | 2027-05-12 | RHD4CZ4C031PT4300, RHD4PRSHLDOSPT1500, RHD4PRSHLSTAGPT1500 | -138.02d | 0d | Unskilled Labor [7.3 h]; Plumber [7.3 h]; Equipment Opreator [7.3 h]; Boom Truck [7.3 h]; 3-outlet fire hydrant (2 x 2.5 inch and 1 x 4.5 inch) in the form of a separate dry vacuum cylinder [0.7 nr] | 8,834 | C031 | Z4 | CONS | PT | Fire | bef |
| RHD4CZ4C031PT4500 |  | Protection Barriers for Fire Hydrant - (RD-C-3/1)-Z4-C031-PT | 2d | 2027-05-12 | 2027-05-19 | RHD4CZ4C031PT4400 | -138.02d | 40.98d | Unskilled Labor [4.36 h]; Plumber [4.36 h]; 3-outlet fire hydrant (2 x 2.5 inch and 1 x 4.5 inch) in the form of a separate dry vacuum cylinder [0.1 nr] | 1,262 | C031 | Z4 | CONS | PT | Protection Barriers | bef |
|  | 2889 | **RHD4-02-002-C031-(PT)-Concrete Encasement** |  |  |  |  |  |  |  |  |  |  |  |  |  |  |
|  | 2882 | **RHD4-02-002-C031-(PT)-Butterfly Valve Chamber** |  | 2027-04-26 | 2027-05-05 |  |  |  |  |  |  |  |  |  |  |  |
| RHD4CZ4C031PT2100 |  | Excavation and Bedding for Butterfly Valve Chamber for Potable Water Network - (RD-C-3/1)-Z4-C031-PT | 2d | 2027-04-26 | 2027-04-28 | RHD4ENSDZ4APPPT130, RHD4CZ4C031PT2102 | -139.02d | 0d | Skilled labor [10.89 h]; Unskilled Labor [10.89 h]; Equipment Opreator [2.18 h]; Excavator-Poclain [1.09 h]; Dump Truck [1.09 h]; Valve chambers - PT [0.5 nr] | 6,242 | C031 | Z4 | CONS | PT | Excavation and Bedding | bef |
| RHD4CZ4C031PT2200 |  | PC works for Butterfly Valve Chamber for Potable Water Network - (RD-C-3/1)-Z4-C031-PT | 2d | 2027-04-28 | 2027-05-01 | RHD4CZ4C031PT2100 | -139.02d | 0d | Skilled labor [10.89 h]; Unskilled Labor [21.78 h]; Equipment Opreator [1.09 h]; Concrete Pump [1.09 h]; Valve chambers - PT [0.2 nr] | 2,496.8 | C031 | Z4 | CONS | PT | PC Works | bef |
| RHD4CZ4C031PT2300 |  | Installation for Butterfly Valve Chamber for Potable Water Network - (RD-C-3/1)-Z4-C031-PT | 2d | 2027-05-01 | 2027-05-03 | RHD4CZ4C031PT2200, RHD4PRSHLDOSPT1100, RHD4PRSHLDOSPT1400, RHD4PRSHLSTAGPT1100, RHD4PRSHLSTAGPT1400 | -139.02d | 0d | Skilled labor [10.89 h]; Unskilled Labor [21.78 h]; Equipment Opreator [2.18 h]; Boom Truck [2.18 h]; Valve chambers - PT [1.1 nr] | 13,732.4 | C031 | Z4 | CONS | PT | Installation | bef |
| RHD4CZ4C031PT2400 |  | Backfilling works for Butterfly Valve Chamber for Potable Water Network - (RD-C-3/1)-Z4-C031-PT | 2d | 2027-05-03 | 2027-05-05 | RHD4CZ4C031PT2300 | -139.02d | 0d | Skilled labor [10.89 h]; Unskilled Labor [21.78 h]; Equipment Opreator [2.18 h]; Water Truck [1.09 h]; Dump Truck [1.09 h]; Valve chambers - PT [0.2 nr] | 2,496.8 | C031 | Z4 | CONS | PT | Backfilling Works | bef |
|  | 2924 | **RHD4-02-002-Z4-C031-Medium Voltage Network - MV** |  | 2027-04-19 | 2027-05-03 |  |  |  |  |  |  |  |  |  |  |  |
|  | 2925 | **RHD4-02-002-C031-(MV)-Medium Voltage cable trench** |  | 2027-04-19 | 2027-05-01 |  |  |  |  |  |  |  |  |  |  |  |
| RHD4CZ4C031MV1100 |  | Excavation for Medium Voltage Trench - (RD-C-3/1)-Z4-C031-MV | 8d | 2027-04-19 | 2027-04-28 | RHD4ENSDZ4APPMV150, RHD4CZ4C031ST6100, RHD4CZ4C031RD3100 | -154.02d | 0d | Skilled labor [21.6 h]; Unskilled Labor [43.13 h]; Equipment Opreator [64.69 h]; Excavator-Poclain [21.6 h]; Dump Truck [43.13 h]; Excavation for Trench size 60cm wide and 80cm deep ( for 2 cables) [138.51 m3] | 1,385.12 | C031 | Z4 | CONS | MV | Excavation | AFT |
| RHD4CZ4C031MV1200 |  | Trench Backfilling for Medium Voltage Network - (RD-C-3/1)-Z4-C031-MV | 2d | 2027-04-28 | 2027-05-01 | RHD4CZ4C031MV1100 | -153.02d | 0d | Skilled labor [21.6 h]; Unskilled Labor [21.6 h]; Equipment Opreator [43.13 h]; Dump Truck [43.13 h]; Excavation for Trench size 60cm wide and 80cm deep ( for 2 cables) [59.36 m3] | 593.62 | C031 | Z4 | CONS | MV | Backfilling | AFT |
|  | 2926 | **RHD4-02-002-C031-(MV)-Medium Voltage duct banks** |  | 2027-04-19 | 2027-04-29 |  |  |  |  |  |  |  |  |  |  |  |
| RHD4CZ4C031MV2100 |  | Excavation of Duct Banks for Medium Voltage Network - (RD-C-3/1)-Z4-C031-MV | 2d | 2027-04-19 | 2027-04-21 | RHD4ENSDZ4APPMV150, RHD4CZ4C031MV1100 SS | -154.02d | 0d | Unskilled Labor [20 h]; Equipment Opreator [40.08 h]; Excavator-Poclain [20 h]; Dump Truck [20 h]; Duct bank for MV cables UPVC (4xø150mm) [2.76 m] | 1,098.08 | C031 | Z4 | CONS | MV | Excavation | bef |
| RHD4CZ4C031MV2200 |  | Installation of Duct Banks for Medium Voltage Network - (RD-C-3/1)-Z4-C031-MV | 3d | 2027-04-21 | 2027-04-25 | RHD4CZ4C031MV2100, RHD4PRSHLDOSMV1000, RHD4PRSHLSTAGMV1000 | -125.02d | 0d | Unskilled Labor [30.06 h]; Equipment Opreator [60.11 h]; Excavator-Poclain [30.06 h]; Dump Truck [30.06 h]; Duct bank for MV cables UPVC (4xø150mm) [2.76 m] | 1,098.08 | C031 | Z4 | CONS | MV | Installing | bef |
| RHD4CZ4C031MV2300 |  | Pouring of Duct Banks for Medium Voltage Network - (RD-C-3/1)-Z4-C031-MV | 2d | 2027-04-25 | 2027-04-27 | RHD4CZ4C031MV2200 | -125.02d | 0d | Unskilled Labor [20 h]; Equipment Opreator [40.08 h]; Excavator-Poclain [20 h]; Dump Truck [20 h]; Duct bank for MV cables UPVC (4xø150mm) [17.93 m] | 7,137.53 | C031 | Z4 | CONS | MV | Pouring | bef |
| RHD4CZ4C031MV2400 |  | Backfilling of Duct Banks for Medium Voltage Network - (RD-C-3/1)-Z4-C031-MV | 2d | 2027-04-27 | 2027-04-29 | RHD4CZ4C031MV2300 | -125.02d | 53.98d | Unskilled Labor [15.03 h]; Equipment Opreator [30.06 h]; Excavator-Poclain [15.03 h]; Dump Truck [15.03 h]; Duct bank for MV cables UPVC (4xø150mm) [4.14 m] | 1,647.12 | C031 | Z4 | CONS | MV | Backfilling | bef |

| ID | WBS | Activity | Duration | Start | Finish | Predecessors | Total float | Free float | Resources | Cost | RDH4-01-001-Road and Block Names-1 | RDH4-01-001-Zones-1 | RDH4-01-001-Phases-1 | RDH4-01-001-Networks-1 | RDH4-01-001-Work Method-1 | RDH4-01-001-MENEM |
| --- | --- | --- | --- | --- | --- | --- | --- | --- | --- | --- | --- | --- | --- | --- | --- | --- |
|  | 2927 | **RHD4-02-002-C031-(MV)-Medium Voltage cables 3Cx 500 mm²** |  | 2027-04-28 | 2027-05-03 |  |  |  |  |  |  |  |  |  |  |  |
| RHD4CZ4C031MV3100 |  | Installation of Medium Voltage Cables 3Cx 500 mm² - (RD-C-3/1)-Z4-C031-MV | 4d | 2027-04-28 | 2027-05-03 | RHD4CZ4C031MV1100, RHD4PRSHLDOSMV1100, RHD4ENMSMV2000, RHD4ENMSMV2010, RHD4PRSHLSTAGMV1100, RHD4CZ4C031ST1501 | -151.02d | 3d | Skilled labor [32.8 h]; Unskilled Labor [130.9 h]; Electrician [65.45 h]; Equipment Opreator [98.23 h]; Boom Truck [32.8 h]; Cable Laying Machine [65.45 h]; Cable 13.8 kV 3Cx 500 mm² Al/XLPE,/LLDPE / Unarmored [405.84 m] | 64,528.08 | C031 | Z4 | CONS | MV | Installation | AFT |
| RHD4CZ4C031MV3300 |  | Testing of Medium Voltage Cables 3Cx 500 mm² - (RD-C-3/1)-Z4-C031-MV | 2d | 2027-05-01 | 2027-05-03 | RHD4CZ4C031MV1200 | -147.02d | 0d | Skilled labor [9.8 h]; Unskilled Labor [39.31 h]; Electrician [19.6 h]; Cable 13.8 kV 3Cx 500 mm² Al/XLPE,/LLDPE / Unarmored [45.09 m] | 7,169.79 | C031 | Z4 | CONS | MV | Testing | AFT |
|  | 1982 | **RHD4-02-002-C031-(MV)-Medium Voltage cables 3Cx 50 mm²** |  |  |  |  |  |  |  |  |  |  |  |  |  |  |
|  | 2931 | **RHD4-02-002-Z4-C031-Low Voltage Network - LV** |  | 2027-05-03 | 2027-05-12 |  |  |  |  |  |  |  |  |  |  |  |
|  | 2932 | **RHD4-02-002-C031-(LV)-Low Voltage duct banks** |  |  |  |  |  |  |  |  |  |  |  |  |  |  |
|  | 2934 | **RHD4-02-002-C031-(LV)-Low Voltage cables** |  | 2027-05-03 | 2027-05-12 |  |  |  |  |  |  |  |  |  |  |  |
| RHD4CZ4C031LV3100 |  | Excavation for Low Voltage Cables for Low Voltage Network - (RD-C-3/1)-Z4-C031-LV | 2d | 2027-05-03 | 2027-05-05 | RHD4CZ4C031PT1503, RHD4ENSDZ4APPLV160, RHD4CZ4C031MV1100 | -149.02d | 0d | Skilled labor [21.45 h]; Unskilled Labor [42.91 h]; Equipment Opreator [42.91 h]; Excavator-Poclain [21.45 h]; Boom Truck [21.45 h]; Cable, Copper 4x185mm2/ CU/XLPE/PVC [64.65 m]; Cable, Copper 4x50mm2/ CU/XLPE/PVC +1x25mm2 CU/PVC [33.83 m] | 29,115.94 | C031 | Z4 | CONS | LV | Excavation | AFT |
| RHD4CZ4C031LV3200 |  | Cable Laying of Low Voltage Cables for Low Voltage Network - (RD-C-3/1)-Z4-C031-LV | 2d | 2027-05-05 | 2027-05-08 | RHD4CZ4C031LV3100, RHD4PRSHLDOSLV1100, RHD4ENMSLV2000, RHD4ENMSLV2010, RHD4PRSHLSTAGLV1100 | -149.02d | 0d | Skilled labor [17.86 h]; Unskilled Labor [71.55 h]; Electrician [35.72 h]; Equipment Opreator [53.6 h]; Boom Truck [17.86 h]; Cable Laying Machine [35.72 h]; Cable, Copper 4x185mm2/ CU/XLPE/PVC [193.96 m]; Cable, Copper 4x50mm2/ CU/XLPE/PVC +1x25mm2 CU/PVC [101.49 m] | 87,351.68 | C031 | Z4 | CONS | LV | Cable Laying | AFT |
| RHD4CZ4C031LV3300 |  | Warning tape and Backfill for Low Voltage Cables for Low Voltage Network - (RD-C-3/1)-Z4-C031-LV | 2d | 2027-05-08 | 2027-05-10 | RHD4CZ4C031LV3200 | -149.02d | 0d | Skilled labor [17.86 h]; Unskilled Labor [71.55 h]; Electrician [35.72 h]; Equipment Opreator [17.86 h]; Boom Truck [17.86 h]; Cable, Copper 4x185mm2/ CU/XLPE/PVC [48.49 m]; Cable, Copper 4x50mm2/ CU/XLPE/PVC +1x25mm2 CU/PVC [25.37 m] | 21,837.92 | C031 | Z4 | CONS | LV | Warning tape and Backfill | AFT |
| RHD4CZ4C031LV3400 |  | Testing of Low Voltage Cables for Low Voltage Network - (RD-C-3/1)-Z4-C031-LV | 2d | 2027-05-10 | 2027-05-12 | RHD4CZ4C031LV3300 | -149.02d | 0d | Skilled labor [10.67 h]; Unskilled Labor [42.91 h]; Electrician [21.45 h]; Equipment Opreator [10.67 h]; Boom Truck [10.67 h]; Cable, Copper 4x185mm2/ CU/XLPE/PVC [16.16 m]; Cable, Copper 4x50mm2/ CU/XLPE/PVC +1x25mm2 CU/PVC [8.46 m] | 7,278.02 | C031 | Z4 | CONS | LV | Testing | AFT |
|  | 2937 | **RHD4-02-002-Z4-C031-Street Lighting Network - SL** |  | 2027-04-21 | 2027-05-24 |  |  |  |  |  |  |  |  |  |  |  |
|  | 2938 | **RHD4-02-002-C031-(SL)-Street Lighting duct banks** |  | 2027-04-21 | 2027-05-02 |  |  |  |  |  |  |  |  |  |  |  |
| RHD4CZ4C031SL2100 |  | Excavation of Duct Banks for Street Lighting Network - (RD-C-3/1)-Z4-C031-SL | 2d | 2027-04-21 | 2027-04-24 | RHD4ENSDZ4APPSL170, RHD4CZ4C031MV2100 | -154.02d | 0d | Skilled labor [21.45 h]; Unskilled Labor [21.45 h]; Equipment Opreator [42.91 h]; Excavator-Poclain [21.45 h]; Dump Truck [21.45 h]; Road Crossing Duct for Street Lighting cables UPVC (2x?110mm) [1.42 m]; Road Crossing Duct for Street Lighting cables UPVC (4x?110mm) [1.54 m] | 693.32 | C031 | Z4 | CONS | SL | Excavation | bef |
| RHD4CZ4C031SL2200 |  | Installation of Duct Banks for Street Lighting Network - (RD-C-3/1)-Z4-C031-SL | 3d | 2027-04-24 | 2027-04-27 | RHD4CZ4C031SL2100, RHD4PRSHLDOSSL1000, RHD4PRSHLSTAGSL1000 | -154.02d | 0d | Carpenter [3.27 h]; Skilled labor [32.13 h]; Unskilled Labor [32.13 h]; Steel Fixer [3.27 h]; Road Crossing Duct for Street Lighting cables UPVC (2x?110mm) [1.42 m]; Road Crossing Duct for Street Lighting cables UPVC (4x?110mm) [1.54 m] | 693.32 | C031 | Z4 | CONS | SL | Installing | bef |
| RHD4CZ4C031SL2300 |  | Pouring of Duct Banks for Street Lighting Network - (RD-C-3/1)-Z4-C031-SL | 2d | 2027-04-27 | 2027-04-29 | RHD4CZ4C031SL2200 | -154.02d | 0d | Skilled labor [21.45 h]; Unskilled Labor [21.45 h]; Equipment Opreator [8.6 h]; Concrete Mixer Truck [4.25 h]; Concrete Pump [4.25 h]; Road Crossing Duct for Street Lighting cables UPVC (2x?110mm) [9.23 m]; Road Crossing Duct for Street Lighting cables UPVC (4x?110mm) [9.98 m] | 4,498.68 | C031 | Z4 | CONS | SL | Pouring | bef |
| RHD4CZ4C031SL2400 |  | Backfilling of Duct Banks for Street Lighting Network - (RD-C-3/1)-Z4-C031-SL | 2d | 2027-04-29 | 2027-05-02 | RHD4CZ4C031SL2300 | -154.02d | 0d | Skilled labor [16.12 h]; Unskilled Labor [16.12 h]; Equipment Opreator [6.4 h]; Excavator-Poclain [6.4 h]; Road Crossing Duct for Street Lighting cables UPVC (2x?110mm) [2.13 m]; Road Crossing Duct for Street Lighting cables UPVC (4x?110mm) [2.3 m] | 1,037.34 | C031 | Z4 | CONS | SL | Backfilling | bef |
|  | 2939 | **RHD4-02-002-C031-(SL)-Street Lighting Drawpit** |  | 2027-05-04 | 2027-05-09 |  |  |  |  |  |  |  |  |  |  |  |
| RHD4CZ4C031SL5100 |  | Excavation of Drawpit size 600x600x900mm for Street Lighting Network - (RD-C-3/1)-Z4-C031-SL | 2d | 2027-05-04 | 2027-05-06 | RHD4CZ4C031SL2300, RHD4ENSDZ4APPSL170, RHD4CZ4C031SL1100 | -154.02d | 0d | Skilled labor [2.72 h]; Unskilled Labor [2.72 h]; Equipment Opreator [2.18 h]; Excavator-Poclain [1.09 h]; Dump Truck [1.09 h]; Drawpit with medium duty steel cover, size600x600x900mm, [0.45 Unit] | 1,102.95 | C031 | Z4 | CONS | SL | Excavation | AFT |
| RHD4CZ4C031SL5200 |  | Installation of Drawpit size 600x600x900mm for Street Lighting Network - (RD-C-3/1)-Z4-C031-SL | 2d | 2027-05-06 | 2027-05-09 | RHD4CZ4C031SL5100, RHD4PRSHLDOSSL1400, RHD4PRSHLSTAGSL1400, RHD4CZ4C031MV3100 | -154.02d | 8d | Skilled labor [2.72 h]; Unskilled Labor [2.72 h]; Equipment Opreator [1.09 h]; Boom Truck [1.09 h]; Drawpit with medium duty steel cover, size600x600x900mm, [2.55 Unit] | 6,250.05 | C031 | Z4 | CONS | SL | Installation | AFT |
|  | 2940 | **RHD4-02-002-C031-(SL)-Street Lighting cables** |  | 2027-05-03 | 2027-05-19 |  |  |  |  |  |  |  |  |  |  |  |
| RHD4CZ4C031SL3100 |  | Excavation for Street Lighting Cables for Street Lighting Network - (RD-C-3/1)-Z4-C031-SL | 2d | 2027-05-03 | 2027-05-05 | RHD4ENSDZ4APPSL170, RHD4CZ4C031MV3300 | -147.02d | 0d | Skilled labor [17.97 h]; Unskilled Labor [35.83 h]; Equipment Opreator [35.83 h]; Excavator-Poclain [17.97 h]; Boom Truck [17.97 h]; Cable, Copper 4x25mm2/ CU/XLPE/SWA/PVC + 1x16mm2 CU/PVC [19.07 m]; Cable, Copper 4x10mm2/ CU/XLPE/SWA/PVC + 1x10mm2 CU/PVC [63.21 m] | 4,737.19 | C031 | Z4 | CONS | SL | Excavation | AFT |
| RHD4CZ4C031SL3200 |  | Cable Laying of Street Lighting Cables for Street Lighting Network - (RD-C-3/1)-Z4-C031-SL | 2d | 2027-05-05 | 2027-05-08 | RHD4CZ4C031SL3100, RHD4PRSHLDOSSL1100, RHD4ENMSSL2000, RHD4ENMSSL2010, RHD4PRSHLSTAGSL1100 | -147.02d | 0d | Skilled labor [14.92 h]; Unskilled Labor [59.79 h]; Electrician [29.84 h]; Equipment Opreator [44.76 h]; Boom Truck [14.92 h]; Cable Laying Machine [29.84 h]; Cable, Copper 4x25mm2/ CU/XLPE/SWA/PVC + 1x16mm2 CU/PVC [57.21 m]; Cable, Copper 4x10mm2/ CU/XLPE/SWA/PVC + 1x10mm2 CU/PVC [189.62 m] | 14,211.57 | C031 | Z4 | CONS | SL | Cable Laying | AFT |
| RHD4CZ4C031SL3300 |  | Warning tape and Backfill for Street Lighting Cables for Street Lighting Network - (RD-C-3/1)-Z4-C031-SL | 2d | 2027-05-08 | 2027-05-10 | RHD4CZ4C031SL3200 | -147.02d | 2d | Skilled labor [14.92 h]; Unskilled Labor [59.79 h]; Electrician [29.84 h]; Equipment Opreator [14.92 h]; Boom Truck [14.92 h]; Cable, Copper 4x25mm2/ CU/XLPE/SWA/PVC + 1x16mm2 CU/PVC [14.3 m]; Cable, Copper 4x10mm2/ CU/XLPE/SWA/PVC + 1x10mm2 CU/PVC [47.41 m] | 3,552.68 | C031 | Z4 | CONS | SL | Warning tape and Backfill | AFT |
| RHD4CZ4C031SL3400 |  | Testing of Street Lighting Cables for Street Lighting Network - (RD-C-3/1)-Z4-C031-SL | 2d | 2027-05-12 | 2027-05-19 | RHD4CZ4C031SL3300, RHD4CZ4C031LV3400 | -149.02d | 0d | Skilled labor [8.93 h]; Unskilled Labor [35.83 h]; Electrician [17.97 h]; Equipment Opreator [8.93 h]; Boom Truck [8.93 h]; Cable, Copper 4x25mm2/ CU/XLPE/SWA/PVC + 1x16mm2 CU/PVC [4.77 m]; Cable, Copper 4x10mm2/ CU/XLPE/SWA/PVC + 1x10mm2 CU/PVC [15.8 m] | 1,184.42 | C031 | Z4 | CONS | SL | Testing | AFT |

| ID | WBS | Activity | Duration | Start | Finish | Predecessors | Total float | Free float | Resources | Cost | RDH4-01-001-Road and Block Names-1 | RDH4-01-001-Zones-1 | RDH4-01-001-Phases-1 | RDH4-01-001-Networks-1 | RDH4-01-001-Work Method-1 | RDH4-01-001-MENEM |
| --- | --- | --- | --- | --- | --- | --- | --- | --- | --- | --- | --- | --- | --- | --- | --- | --- |
|  | 2941 | **RHD4-02-002-C031-(SL)-Street Lighting Poles** |  | 2027-05-02 | 2027-05-24 |  |  |  |  |  |  |  |  |  |  |  |
| RHD4CZ4C031SL1100 |  | Excavation for RC Base for Lighting Poles for Street Lighting Network - (RD-C-3/1)-Z4-C031-SL | 2d | 2027-05-02 | 2027-05-04 | RHD4CZ4C031SL2400, RHD4CZ4C031MV1200, RHD4ENSDZ4APPSL170 | -154.02d | 0d | Skilled labor [4.36 h]; Unskilled Labor [4.36 h]; Equipment Opreator [8.71 h]; Excavator-Poclain [4.36 h]; Dump Truck [4.36 h]; Lighting polesdouble arms, height of ( 12 ) meters [0.6 Unit] | 2,743.2 | C031 | Z4 | CONS | SL | Excavation | AFT |
| RHD4CZ4C031SL1200 |  | Installation for RC Base for Lighting Poles for Street Lighting Network - (RD-C-3/1)-Z4-C031-SL | 2d | 2027-05-04 | 2027-05-06 | RHD4CZ4C031SL1100 | -144.02d | 0d | Skilled labor [4.36 h]; Unskilled Labor [4.36 h]; Equipment Opreator [8.71 h]; Excavator-Poclain [4.36 h]; Dump Truck [4.36 h]; Lighting polesdouble arms, height of ( 12 ) meters [1.5 Unit] | 6,858 | C031 | Z4 | CONS | SL | RC Base | AFT |
| RHD4CZ4C031SL1300 |  | Backfill for RC Base for Lighting Poles for Street Lighting Network - (RD-C-3/1)-Z4-C031-SL | 2d | 2027-05-06 | 2027-05-09 | RHD4CZ4C031SL1200 | -144.02d | 5d | Skilled labor [4.36 h]; Unskilled Labor [4.36 h]; Equipment Opreator [8.71 h]; Excavator-Poclain [4.36 h]; Dump Truck [4.36 h]; Lighting polesdouble arms, height of ( 12 ) meters [0.3 Unit] | 1,371.6 | C031 | Z4 | CONS | SL | Backfill | AFT |
| RHD4CZ4C031SL1400 |  | Installation for Lighting Poles for Street Lighting Network - (RD-C-3/1)-Z4-C031-SL | 2d | 2027-05-19 | 2027-05-22 | RHD4CZ4C031SL1300, RHD4CZ4C031SL3400, RHD4PRSHLDOSSL1200, RHD4ENMSSL2000, RHD4ENMSSL2010, RHD4PRSHLSTAGSL1200 | -149.02d | 0d | Skilled labor [6.53 h]; Unskilled Labor [6.53 h]; Electrician [6.53 h]; Equipment Opreator [6.53 h]; Boom Truck [6.53 h]; Lighting polesdouble arms, height of ( 12 ) meters [3.6 Unit] | 16,459.2 | C031 | Z4 | CONS | SL | Poles Installation | AFT |
| RHD4CZ4C031SL1500 |  | Luminaire Installation for Lighting Poles for Street Lighting Network - (RD-C-3/1)-Z4-C031-SL | 2d | 2027-05-22 | 2027-05-24 | RHD4CZ4C031SL1400, RHD4PRSHLDOSSL1300, RHD4PRSHLSTAGSL1300 | -149.02d | 46.98d | Unskilled Labor [17.42 h]; Electrician [8.71 h]; Equipment Opreator [3.48 h]; Boom Truck [3.48 h]; Street Lighting( LED) Luminaire of Output ?18553 lumen [12 Unit] | 7,644 | C031 | Z4 | CONS | SL | Luminaire Installation | AFT |
|  | 2942 | **RHD4-02-002-C031-(SL)-Street Lighting Feeder Pillars** |  |  |  |  |  |  |  |  |  |  |  |  |  |  |
|  | 2943 | **RHD4-02-002-C031-(SL)-Street Lighting Earthing System** |  | 2027-05-22 | 2027-05-24 |  |  |  |  |  |  |  |  |  |  |  |
| RHD4CZ4C031SL6100 |  | Installation of Earthing for Lighting Poles and Fedder Pillers for Street Lighting Network - (RD-C-3/1)-Z4-C031-SL | 2d | 2027-05-22 | 2027-05-24 | RHD4ENMSER2000, RHD4ENMSER2010, RHD4CZ4C031SL1400 | -149.02d | 46.98d | Skilled labor [2.18 h]; Unskilled Labor [2.18 h]; Equipment Opreator [4.36 h]; Excavator-Poclain [2.18 h]; Dump Truck [2.18 h]; Including lighting poles circuits - ER [3 Unit] | 1,839 | C031 | Z4 | CONS | SL | Installation | AFT |
|  | 2949 | **RHD4-02-002-Z4-C031-Telecommunications Network - TC** |  | 2027-05-04 | 2027-05-13 |  |  |  |  |  |  |  |  |  |  |  |
|  | 2950 | **RHD4-02-002-C031-(TC)-Telecommunications Ducts** |  | 2027-05-04 | 2027-05-13 |  |  |  |  |  |  |  |  |  |  |  |
| RHD4CZ4C031TC2100 |  | Excavation of HDPE Ducts for Telecom Network - (RD-C-3/1)-Z4-C031-TC | 2d | 2027-05-04 | 2027-05-06 | RHD4ENSDZ4APPTC190, RHD4CZ4C031SL1100 | -154.02d | 0d | Skilled labor [11.76 h]; Unskilled Labor [11.76 h]; Equipment Opreator [23.41 h]; Excavator-Poclain [11.76 h]; Dump Truck [11.76 h]; (6*50mm) HDPE ducts -TC [32.3 m] | 2,842.4 | C031 | Z4 | CONS | TC | Excavation | AFT |
| RHD4CZ4C031TC2200 |  | Installation of HDPE Ducts for Telecom Network - (RD-C-3/1)-Z4-C031-TC | 2d | 2027-05-06 | 2027-05-09 | RHD4CZ4C031TC2100, RHD4PRSHLDOSTC1000, RHD4PRSHLSTAGTC1000 | -146.02d | 2d | Carpenter [1.74 h]; Skilled labor [17.64 h]; Unskilled Labor [17.64 h]; Steel Fixer [1.74 h]; (6*50mm) HDPE ducts -TC [104.97 m] | 9,237.8 | C031 | Z4 | CONS | TC | Installing | AFT |
| RHD4CZ4C031TC2400 |  | Backfilling of HDPE Ducts for Telecom Network - (RD-C-3/1)-Z4-C031-TC | 2d | 2027-05-11 | 2027-05-13 | RHD4CZ4C031TC2200, RHD4CZ4C031TC5200 | -148.02d | 6d | Skilled labor [11.76 h]; Unskilled Labor [11.76 h]; Equipment Opreator [4.68 h]; Excavator-Poclain [4.68 h]; (6*50mm) HDPE ducts -TC [24.23 m] | 2,131.8 | C031 | Z4 | CONS | TC | Backfilling | AFT |
|  | 2951 | **RHD4-02-002-C031-(TC)-Telecommunications Manholes** |  | 2027-05-06 | 2027-05-11 |  |  |  |  |  |  |  |  |  |  |  |
| RHD4CZ4C031TC5100 |  | Excavation for Manholes for Telecom Network - (RD-C-3/1)-Z4-C031-TC | 2d | 2027-05-06 | 2027-05-09 | RHD4CZ4C031TC2100, RHD4ENSDZ4APPTC190 | -154.02d | 0d | Skilled labor [1.42 h]; Unskilled Labor [1.42 h]; Equipment Opreator [1.09 h]; Excavator-Poclain [0.54 h]; Dump Truck [0.54 h]; Manhole Type 1 - TC [0.15 nr] | 1,011.15 | C031 | Z4 | CONS | TC | Excavation | AFT |
| RHD4CZ4C031TC5200 |  | Installation of Manholes for Telecom Network - (RD-C-3/1)-Z4-C031-TC | 2d | 2027-05-09 | 2027-05-11 | RHD4CZ4C031TC5100, RHD4CZ4C031TC2200 SS, RHD4PRSHLDOSTC1200, RHD4PRSHLSTAGTC1200 | -148.02d | 0d | Skilled labor [1.42 h]; Unskilled Labor [1.42 h]; Equipment Opreator [0.54 h]; Boom Truck [0.54 h]; Manhole Type 1 - TC [0.85 nr] | 5,729.85 | C031 | Z4 | CONS | TC | Installation | AFT |
|  | 2952 | **RHD4-02-002-C031-(TC)-Telecomminications Road Crossings** |  |  |  |  |  |  |  |  |  |  |  |  |  |  |
|  | 2953 | **RHD4-02-002-Z4-C031-Information and Communication Technologies - ICT** |  | 2027-02-09 | 2027-05-25 |  |  |  |  |  |  |  |  |  |  |  |
|  | 2954 | **RHD4-02-002-C031-(ICT)-Information and Communication Technologies Ducts** |  | 2027-05-09 | 2027-05-25 |  |  |  |  |  |  |  |  |  |  |  |
| RHD4CZ4C031ICT2100 |  | Excavation of HDPE Ducts for ICT Network - (RD-C-3/1)-Z4-C031-ICT | 3d | 2027-05-09 | 2027-05-12 | RHD4CZ4C031ICT3400, RHD4ENSDZ4APPICT200, RHD4CZ4C031TC5100 | -154.02d | 0d | Skilled labor [27.2 h]; Unskilled Labor [27.2 h]; Equipment Opreator [54.34 h]; Excavator-Poclain [27.2 h]; Dump Truck [27.2 h]; (2*50mm) HDPE ducts -ICT [73.6 m]; (2*50mm+2*32mm) HDPE ducts -ICT [1.3 m] | 2,890.4 | C031 | Z4 | CONS | ICT | Excavation | AFT |
| RHD4CZ4C031ICT2200 |  | Installation of HDPE Ducts for ICT Network - (RD-C-3/1)-Z4-C031-ICT | 4d | 2027-05-12 | 2027-05-22 | RHD4CZ4C031ICT2100, RHD4PRSHLDOSICT1000, RHD4PRSHLSTAGICT1000 | -154.02d | 0d | Carpenter [4 h]; Skilled labor [40.8 h]; Unskilled Labor [40.8 h]; Steel Fixer [4 h]; (2*50mm) HDPE ducts -ICT [239.2 m]; (2*50mm+2*32mm) HDPE ducts -ICT [4.23 m] | 9,394.16 | C031 | Z4 | CONS | ICT | Installing | AFT |
| RHD4CZ4C031ICT2400 |  | Backfilling of HDPE Ducts for ICT Network - (RD-C-3/1)-Z4-C031-ICT | 3d | 2027-05-22 | 2027-05-25 | RHD4CZ4C031ICT2200, RHD4CZ4C031ICT5200 | -154.02d | 0d | Skilled labor [27.2 h]; Unskilled Labor [27.2 h]; Equipment Opreator [10.89 h]; Excavator-Poclain [10.89 h]; (2*50mm) HDPE ducts -ICT [55.2 m]; (2*50mm+2*32mm) HDPE ducts -ICT [0.98 m] | 2,168.16 | C031 | Z4 | CONS | ICT | Backfilling | AFT |
|  | 2955 | **RHD4-02-002-C031-(ICT)-Information and Communication Technologies Manholes** |  | 2027-05-12 | 2027-05-22 |  |  |  |  |  |  |  |  |  |  |  |
| RHD4CZ4C031ICT5100 |  | Excavation for Manholes for ICT Network - (RD-C-3/1)-Z4-C031-ICT | 2d | 2027-05-12 | 2027-05-19 | RHD4CZ4C031ICT2100, RHD4ENSDZ4APPICT200 | -154.02d | 0d | Skilled labor [8.17 h]; Unskilled Labor [8.17 h]; Equipment Opreator [6.53 h]; Excavator-Poclain [3.27 h]; Dump Truck [3.27 h]; Manhole Type 1 - ICT [0.3 nr]; Manhole Type 2 - ICT [0.3 nr] | 3,235.8 | C031 | Z4 | CONS | ICT | Excavation | AFT |
| RHD4CZ4C031ICT5200 |  | Installation of Manholes for ICT Network - (RD-C-3/1)-Z4-C031-ICT | 2d | 2027-05-19 | 2027-05-22 | RHD4CZ4C031ICT5100, RHD4CZ4C031ICT2200 SS, RHD4PRSHLDOSICT1200, RHD4PRSHLSTAGICT1200 | -154.02d | 0d | Skilled labor [8.17 h]; Unskilled Labor [8.17 h]; Equipment Opreator [3.27 h]; Boom Truck [3.27 h]; Manhole Type 1 - ICT [1.7 nr]; Manhole Type 2 - ICT [1.7 nr] | 18,336.2 | C031 | Z4 | CONS | ICT | Installation | AFT |

| ID | WBS | Activity | Duration | Start | Finish | Predecessors | Total float | Free float | Resources | Cost | RDH4-01-001-Road and Block Names-1 | RDH4-01-001-Zones-1 | RDH4-01-001-Phases-1 | RDH4-01-001-Networks-1 | RDH4-01-001-Work Method-1 | RDH4-01-001-MENEM |
| --- | --- | --- | --- | --- | --- | --- | --- | --- | --- | --- | --- | --- | --- | --- | --- | --- |
|  | 2956 | **RHD4-02-002-C031-(ICT)-Information and Communication Technologies Road Crossings** |  | 2027-02-09 | 2027-02-20 |  |  |  |  |  |  |  |  |  |  |  |
| RHD4CZ4C031ICT3100 |  | Excavation for Road Crossings for ICT Network - (RD-C-3/1)-Z4-C031-ICT | 2d | 2027-02-09 | 2027-02-11 | RHD4ENSDZ4APPICT200, RHD4CZ4C031ST3102 | -152.02d | 1.98d | Skilled labor [6.97 h]; Unskilled Labor [6.97 h]; Equipment Opreator [13.83 h]; Excavator-Poclain [6.97 h]; Dump Truck [6.97 h]; Road crossing ducts, (2*50mm) HDPE -ICT [1.27 m] | 48.26 | C031 | Z4 | CONS | ICT | Excavation | bef |
| RHD4CZ4C031ICT3200 |  | Installation of Road Crossings for ICT Network - (RD-C-3/1)-Z4-C031-ICT | 2d | 2027-02-14 | 2027-02-15 | RHD4CZ4C031ICT3100, RHD4PRSHLDOSICT1100, RHD4PRSHLSTAGICT1100 | -154d | 0d | Carpenter [0.87 h]; Skilled labor [9.26 h]; Unskilled Labor [9.26 h]; Steel Fixer [0.87 h]; Road crossing ducts, (2*50mm) HDPE -ICT [1.27 m] | 48.26 | C031 | Z4 | CONS | ICT | Installing | bef |
| RHD4CZ4C031ICT3300 |  | Pouring of Road Crossings for ICT Network - (RD-C-3/1)-Z4-C031-ICT | 2d | 2027-02-16 | 2027-02-17 | RHD4CZ4C031ICT3200 | -154d | 0d | Skilled labor [9.26 h]; Unskilled Labor [9.26 h]; Equipment Opreator [3.7 h]; Concrete Mixer Truck [1.85 h]; Concrete Pump [1.85 h]; Road crossing ducts, (2*50mm) HDPE -ICT [8.26 m] | 313.69 | C031 | Z4 | CONS | ICT | Pouring | bef |
| RHD4CZ4C031ICT3400 |  | Backfilling of Road Crossings for ICT Network - (RD-C-3/1)-Z4-C031-ICT | 2d | 2027-02-18 | 2027-02-20 | RHD4CZ4C031ICT3300 | -154d | 0d | Skilled labor [6.97 h]; Unskilled Labor [6.97 h]; Equipment Opreator [2.72 h]; Excavator-Poclain [2.72 h]; Road crossing ducts, (2*50mm) HDPE -ICT [1.91 m] | 72.39 | C031 | Z4 | CONS | ICT | Backfilling | bef |
|  | 2944 | **RHD4-02-002-Z4-C031-Landscape Network - LS** |  |  |  |  |  |  |  |  |  |  |  |  |  |  |
|  | 2945 | **RHD4-02-002-C031-(LS)-Landscape Lighting cables** |  |  |  |  |  |  |  |  |  |  |  |  |  |  |
|  | 2946 | **RHD4-02-002-C031-(LS)-Landscape Feeder Pillars** |  |  |  |  |  |  |  |  |  |  |  |  |  |  |
|  | 2947 | **RHD4-02-002-C031-(LS)-Landscape Bollard Poles** |  |  |  |  |  |  |  |  |  |  |  |  |  |  |
|  | 2948 | **RHD4-02-002-C031-(LS)-Landscape Feeder Pillars Earthing** |  |  |  |  |  |  |  |  |  |  |  |  |  |  |
|  | 2957 | **RHD4-02-002-Z4-C031-Security Network - CCTV** |  | 2027-05-25 | 2027-07-07 |  |  |  |  |  |  |  |  |  |  |  |
|  | 2958 | **RHD4-02-002-C031-(CCTV)-Civil Works** |  | 2027-05-25 | 2027-06-06 |  |  |  |  |  |  |  |  |  |  |  |
| RHD4CZ4C031CCTV2100 |  | Civil Works for Security Network - (RD-C-3/1)-Z4-C031-CCTV | 10d | 2027-05-25 | 2027-06-06 | RHD4CZ4C031ICT2400, RHD4CZ4C031TC2400 | -154.02d | 0d | Skilled labor [435.68 h]; Unskilled Labor [871.2 h]; Equipment Opreator [435.68 h]; Excavator-Poclain [108.9 h]; Dump Truck [108.9 h]; Civil works Digging, trenching, laying pipes Meter with supply and installation of Manholes and for power feeding sources related to all towers and poles – (from 35-meter pole to control room and from related UPS camersa distribution boards till overall 2 [300 m] | 34,800 | C031 | Z4 | CONS | CCTV | Civil Works | AFT |
|  | 2959 | **RHD4-02-002-C031-(CCTV)-CCTV Poles** |  | 2027-06-06 | 2027-06-17 |  |  |  |  |  |  |  |  |  |  |  |
| RHD4CZ4C031CCTV1100 |  | Excavation for RC Base for CCTV Poles for Security Network - (RD-C-3/1)-Z4-C031-CCTV | 2d | 2027-06-06 | 2027-06-08 | RHD4CZ4C031CCTV2100, RHD4ENSDZ4APPCCTV210 | -154.02d | 0d | Skilled labor [4.32 h]; Unskilled Labor [4.32 h]; Equipment Opreator [8.64 h]; Excavator-Poclain [2.18 h]; Dump Truck [2.18 h]; 25 Meters pole for CCTV Cameras [0.1 nr] | 14,090.2 | C031 | Z4 | CONS | CCTV | Excavation | AFT |
| RHD4CZ4C031CCTV1200 |  | Installation for RC Base for CCTV Poles for Security Network - (RD-C-3/1)-Z4-C031-CCTV | 2d | 2027-06-08 | 2027-06-10 | RHD4CZ4C031CCTV1100 | -154.02d | 0d | Skilled labor [4.32 h]; Unskilled Labor [4.32 h]; Equipment Opreator [8.64 h]; Excavator-Poclain [2.18 h]; Dump Truck [2.18 h]; 25 Meters pole for CCTV Cameras [0.25 nr] | 35,225.5 | C031 | Z4 | CONS | CCTV | RC Base | AFT |
| RHD4CZ4C031CCTV1300 |  | Backfill for RC Base for CCTV Poles for Security Network - (RD-C-3/1)-Z4-C031-CCTV | 2d | 2027-06-10 | 2027-06-13 | RHD4CZ4C031CCTV1200 | -154.02d | 0d | Skilled labor [2.88 h]; Unskilled Labor [2.88 h]; Equipment Opreator [5.44 h]; Excavator-Poclain [1.42 h]; Dump Truck [1.42 h]; 25 Meters pole for CCTV Cameras [0.05 nr] | 7,045.1 | C031 | Z4 | CONS | CCTV | Backfill | AFT |
| RHD4CZ4C031CCTV1400 |  | Installation for CCTV Poles for Security Network - (RD-C-3/1)-Z4-C031-CCTV | 2d | 2027-06-13 | 2027-06-15 | RHD4CZ4C031CCTV1300, RHD4PRSHLDOSCCTV1000, RHD4PRSHLSTACCTV1000 | -154.02d | 0d | Skilled labor [7.2 h]; Unskilled Labor [14.56 h]; Electrician [7.2 h]; Equipment Opreator [7.2 h]; Boom Truck [3.59 h]; 25 Meters pole for CCTV Cameras [0.6 nr] | 84,541.2 | C031 | Z4 | CONS | CCTV | Installation | AFT |
| RHD4CZ4C031CCTV1500 |  | Protection post Installation for CCTV Poles for Security Network - (RD-C-3/1)-Z4-C031-CCTV | 2d | 2027-06-15 | 2027-06-17 | RHD4CZ4C031CCTV1400 | -154.02d | 41.98d | Skilled labor [21.76 h]; Unskilled Labor [43.52 h]; Supply and Installation of minimum 4 Protection Post for each pole or tower with pipe ?220*6mm THK. [1 nr] | 4,903 | C031 | Z4 | CONS | CCTV | Protection post | AFT |
|  | 2960 | **RHD4-02-002-C031-(CCTV)-Camera** |  | 2027-06-17 | 2027-06-20 |  |  |  |  |  |  |  |  |  |  |  |
| RHD4CZ4C031CCTV3100 |  | Installation for Cameras for Security Network - (RD-C-3/1)-Z4-C031-CCTV | 2d | 2027-06-17 | 2027-06-20 | RHD4CZ4C031CCTV1400, RHD4CZ4C031CCTV4100, RHD4PRSHLDOSCCTV1100, RHD4PRSHLSTACCTV1100 | -134.02d | 0d | Unskilled Labor [54.4 h]; Electrician [27.2 h]; Outdoor Camera, 5MP resolution, day/night, fixed bullet camera providing Forensic WDR. [4 nr]; Outdoor PTZ with IR, HDTV 1080 and 31x optical, 12x digital, total 372x zoom, H264/265 with Motion JPEG. [1 nr] | 61,727 | C031 | Z4 | CONS | CCTV | Installation | AFT |
|  | 2961 | **RHD4-02-002-C031-(CCTV)-Power and Infrastructure** |  | 2027-06-15 | 2027-06-20 |  |  |  |  |  |  |  |  |  |  |  |
| RHD4CZ4C031CCTV4100 |  | Installation of Power outlet, UPS and midspan for PTZ Camerafor Cameras for Security Network - (RD-C-3/1)-Z4-C031-CCTV | 2d | 2027-06-15 | 2027-06-17 | RHD4CZ4C031CCTV1400, RHD4PRSHLDOSCCTV1300, RHD4PRSHLSTACCTV1300, RHD4CZ4RA02CCTV2100 | -134.02d | 0d | Skilled labor [13.12 h]; Unskilled Labor [52.32 h]; Electrician [26.08 h]; Equipment Opreator [26.08 h]; Excavator-Poclain [6.53 h]; Dump Truck [6.53 h]; Outdoor ready IP66-rated midspan for PTZ Camera (The outdoor- ready midspan should be IP66/IP67- and NEMA 4X-rated [1 nr]; 1.2KVA Industrial type UPS located at FEC remote poles [2 nr] | 15,232 | C031 | Z4 | CONS | CCTV | Power | AFT |
| RHD4CZ4C031CCTV4200 |  | Short Range Wireless PoP wireless Bridgefor CCTV Poles for Security Network - (RD-C-3/1)-Z4-C031-CCTV | 2d | 2027-06-17 | 2027-06-20 | RHD4CZ4C031CCTV4100 | -134.02d | 0d | Skilled labor [10.88 h]; Unskilled Labor [21.76 h]; Electrician [10.88 h]; Equipment Opreator [21.76 h]; Excavator-Poclain [5.45 h]; Dump Truck [5.45 h]; Short Range wireless point to point wireless bridge [2 nr] | 29,274 | C031 | Z4 | CONS | CCTV | Wireless Pop | AFT |

| ID | WBS | Activity | Duration | Start | Finish | Predecessors | Complete | Planned start | Planned finish | Total float | Free float | Resources | Cost | Actual cost | RDH4-01-001-Road and Block Names-1 | RDH4-01-001-Zones-1 | RDH4-01-001-Phases-1 | RDH4-01-001-Networks-1 | RDH4-01-001-Work Method-1 | RDH4-01-001-MENEM |
| --- | --- | --- | --- | --- | --- | --- | --- | --- | --- | --- | --- | --- | --- | --- | --- | --- | --- | --- | --- | --- |
|  | 2963 | **RHD4-02-002-C031-(CCTV)-CCTV Panels and Components** |  | 2027-06-20 | 2027-07-07 |  |  |  |  |  |  |  |  |  |  |  |  |  |  |  |
| RHD4CZ4C031CCTV6100 |  | Installation for CCTV Panels for Security Network - (RD-C-3/1)-Z4-C031-CCTV | 15d | 2027-06-20 | 2027-07-07 | RHD4CZ4C031CCTV4200, RHD4CZ4C031CCTV3100, RHD4PRSHLDOSCCTV1200, RHD4PRSHLSTACCTV1200, RHD4PRLOLSTACCTV1001 |  |  |  | -134.02d | 50.98d | Skilled labor [326.72 h]; Unskilled Labor [980.16 h]; Electrician [326.72 h]; Pole mounted Filed Equipment cabinet (FEC) , with fan and ventilation, NEMEX 4X ,door, minimum size (600x600x400mm) , the cabinet/enclosurE [2 nr]; 8 Port Industrial PoE Switch 10/1000BaseT (-40 deg to +70 deg. Celsius) for remote poles and as specifiedin item 15. [1 nr]; UTP CAT6 Patch Cord , connect the industrial switch with the cameras, and radio wireless antenna [12 nr] | 32,584 |  | C031 | Z4 | CONS | CCTV | Equipment | AFT |
|  | 2407 | **RHD4-02-002-Z4-L014** |  | 2026-07-06 | 2028-03-09 |  |  |  |  |  |  |  |  |  |  |  |  |  |  |  |
|  | 2438 | **RHD4-02-002-Z4-L014-Crossings Sewage Network - SWCr** |  |  |  |  |  |  |  |  |  |  |  |  |  |  |  |  |  |  |
|  | 2448 | **RHD4-02-002-L014-(SWCr)-MH Works - 1200 mm diameter** |  |  |  |  |  |  |  |  |  |  |  |  |  |  |  |  |  |  |
|  | 2449 | **RHD4-02-002-L014-(SWCr)-MH Works - 1200 mm diameter with Back drop** |  |  |  |  |  |  |  |  |  |  |  |  |  |  |  |  |  |  |
|  | 2444 | **RHD4-02-002-L014-(SWCr)-UPVC Pipes - 200 mm diameter** |  |  |  |  |  |  |  |  |  |  |  |  |  |  |  |  |  |  |
|  | 2442 | **RHD4-02-002-L014-(SWCr)-GRP Pipes - 600 mm diameter** |  |  |  |  |  |  |  |  |  |  |  |  |  |  |  |  |  |  |
|  | 2441 | **RHD4-02-002-L014-(SWCr)-GRP Pipes - 500 mm diameter** |  |  |  |  |  |  |  |  |  |  |  |  |  |  |  |  |  |  |
|  | 2482 | **RHD4-02-002-Z4-L014-Crossings Potable Network - PTCr** |  |  |  |  |  |  |  |  |  |  |  |  |  |  |  |  |  |  |
|  | 2484 | **RHD4-02-002-L014-(PTCr)-HDPE Pipes - 160 mm diameter** |  |  |  |  |  |  |  |  |  |  |  |  |  |  |  |  |  |  |
|  | 2483 | **RHD4-02-002-L014-(PTCr)-HDPE Pipes - 110 mm diameter** |  |  |  |  |  |  |  |  |  |  |  |  |  |  |  |  |  |  |
|  | 2488 | **RHD4-02-002-L014-(PTCr)-Gate Valves (Direct Buried)** |  |  |  |  |  |  |  |  |  |  |  |  |  |  |  |  |  |  |
|  | 2529 | **RHD4-02-002-Z4-L014-Crossings Irrigation Network - IRRC** |  |  |  |  |  |  |  |  |  |  |  |  |  |  |  |  |  |  |
|  | 2530 | **RHD4-02-002-L014-(IRRC)-HDPE Pipes - 160 mm diameter** |  |  |  |  |  |  |  |  |  |  |  |  |  |  |  |  |  |  |
|  | 2533 | **RHD4-02-002-L014-(IRRC)-HDPE Pipes - 250 mm diameter** |  |  |  |  |  |  |  |  |  |  |  |  |  |  |  |  |  |  |
|  | 2538 | **RHD4-02-002-L014-(IRRC)-Gate Valves (Direct Buried)** |  |  |  |  |  |  |  |  |  |  |  |  |  |  |  |  |  |  |
|  | 2541 | **RHD4-02-002-L014-(IRRC)-Wash out Chamber** |  |  |  |  |  |  |  |  |  |  |  |  |  |  |  |  |  |  |
|  | 2542 | **RHD4-02-002-L014-(IRRC)-Wash out Valves** |  |  |  |  |  |  |  |  |  |  |  |  |  |  |  |  |  |  |
|  | 2543 | **RHD4-02-002-L014-(IRRC)-Air Valve Chamber** |  |  |  |  |  |  |  |  |  |  |  |  |  |  |  |  |  |  |
|  | 2544 | **RHD4-02-002-L014-(IRRC)-Air Valves** |  |  |  |  |  |  |  |  |  |  |  |  |  |  |  |  |  |  |
|  | 2586 | **RHD4-02-002-Z4-L014-Road Works - RD** |  | 2026-07-06 | 2028-03-09 |  |  |  |  |  |  |  |  |  |  |  |  |  |  |  |
|  | 2587 | **RHD4-02-002-L014-(RD)-Subgrade** |  | 2026-07-06 | 2026-07-15 |  |  |  |  |  |  |  |  |  |  |  |  |  |  |  |
| RHD4CZ4L014RD1100 |  | Supply, lay and compaction subgrade compacted thickness 300 mm for Roads - (RD-L-14)-Z4-L014-RD | 5d | 2026-07-06 A | 2026-07-15 A | RHD4ENSDZ4APPRD220, RHD4ENSDZ4APPEW100 SS, RHD4CZ4L014ST1510 | 100% | 2026-08-23 | 2026-08-27 |  |  | Skilled labor [219.2 h]; Unskilled Labor [438.34 h]; Electrician [219.2 h]; Equipment Opreator [1497.1 h]; Water Truck [72.31 h]; Roller compactor [109.56 h]; Grader [219.2 h]; Dump Truck [1096 h]; Subgrade [10542.1 m3] | 200,300.66 | 200,300.66 | L014 | Z4 | CONS | RD | Subgrade | bef |

| ID | WBS | Activity | Duration | Start | Finish | Predecessors | Complete | Planned start | Planned finish | Total float | Free float | Resources | Cost | Actual cost | RDH4-01-001-Road and Block Names-1 | RDH4-01-001-Zones-1 | RDH4-01-001-Phases-1 | RDH4-01-001-Networks-1 | RDH4-01-001-Work Method-1 | RDH4-01-001-MENEM |
| --- | --- | --- | --- | --- | --- | --- | --- | --- | --- | --- | --- | --- | --- | --- | --- | --- | --- | --- | --- | --- |
|  | 2588 | **RHD4-02-002-L014-(RD)-Aggregate Base Course** |  | 2027-02-14 | 2027-03-03 |  |  |  |  |  |  |  |  |  |  |  |  |  |  |  |
| RHD4CZ4L014RD2100 |  | Supply, lay and compaction Aggregate base course compacted thickness 300 mmfor Roads - (RD-L-14)-Z4-L014-RD | 15d | 2027-02-14 | 2027-03-03 | RHD4PRSHLDOSRD1000, RHD4PRSHLSTAGRD1000, RHD4CZ4L014RD1100 |  |  |  | -142d | 0d | Skilled labor [81.13 h]; Unskilled Labor [162.4 h]; Equipment Opreator [1027.72 h]; Water Truck [53.6 h]; Roller compactor [162.4 h]; Grader [162.4 h]; Dump Truck [649.5 h]; Aggregate Base Courses [6621.52 m3] | 377,426.64 |  | L014 | Z4 | CONS | RD | ABC | bef |
|  | 2589 | **RHD4-02-002-L014-(RD)-Bituminous base course Two Layers, including (MC1)&(RC2)** |  | 2027-03-04 | 2028-01-18 |  |  |  |  |  |  |  |  |  |  |  |  |  |  |  |
| RHD4CZ4L014RD3100 |  | Supply, lay and Asphaltic base course including Prime Coat (MC1) for 1st Layer - (RD-L-14)-Z4-L014-RD | 3d | 2027-03-04 | 2027-03-07 | RHD4CZ4L014RD2100, RHD4PRSHLDOSRD1100, RHD4ENMSASPH2000, RHD4ENMSASPH2010, RHD4PRSHLSTAGRD1100 |  |  |  | -142d | 10.02d | Skilled labor [25.16 h]; Unskilled Labor [150.83 h]; Equipment Opreator [376.91 h]; Bobcat [25.16 h]; Roller compactor [25.16 h]; Asphalt Paver [25.16 h]; Rubber Compactor [50.31 h]; MC1/RC2 Sprinkler [25.16 h]; Dump Truck [226.19 h]; Bituminous base course (Grading I - Class A), including Prime coat (MC1) & tack coate (RC2) [919.4 m3] | 439,473.2 |  | L014 | Z4 | CONS | RD | 150 mm | AFT |
| RHD4CZ4L014RD3200 |  | Supply, lay and Asphaltic base course including Tack Coat (RC2) for 2nd Layer - (RD-L-14)-Z4-L014-RD | 3d | 2028-01-15 | 2028-01-18 | RHD4CZ4L014RD3100, RHD4PRSHLDOSRD1100, RHD4PRSHLSTAGRD1100, RHD4CZ4L014CCTV6100 |  |  |  | -100.02d | 0d | Skilled labor [25.16 h]; Unskilled Labor [150.83 h]; Equipment Opreator [376.91 h]; Bobcat [25.16 h]; Roller compactor [25.16 h]; Asphalt Paver [25.16 h]; Rubber Compactor [50.31 h]; MC1/RC2 Sprinkler [25.16 h]; Dump Truck [226.19 h]; Bituminous base course (Grading I - Class A), including Prime coat (MC1) & tack coate (RC2) [919.4 m3] | 439,473.2 |  | L014 | Z4 | CONS | RD | 150 mm | AFT |
|  | 2591 | **RHD4-02-002-L014-(RD)-Precast Concrete Curb** |  | 2028-01-18 | 2028-01-30 |  |  |  |  |  |  |  |  |  |  |  |  |  |  |  |
| RHD4CZ4L014RD5100 |  | Supply and installation Precast Concrete Kerb for Roads - (RD-L-14)-Z4-L014-RD | 10d | 2028-01-18 | 2028-01-30 | RHD4PRSHLDOSRD1200, RHD4ENMSRD2000, RHD4ENMSRD2010, RHD4PRSHLSTAGRD1200, RHD4CZ4L014RD3200 |  |  |  | -100.02d | 0d | Mason [316 h]; Skilled labor [105.31 h]; Unskilled Labor [316 h]; Equipment Opreator [210.62 h]; Bobcat [105.31 h]; Concrete Mixer Truck [105.31 h]; Precast Concrete Curbstone, type K1 [4352.51 m] | 239,388.31 |  | L014 | Z4 | CONS | RD | Curbs | AFT |
|  | 2594 | **RHD4-02-002-L014-(RD)-Traffic Signage** |  | 2028-01-30 | 2028-02-07 |  |  |  |  |  |  |  |  |  |  |  |  |  |  |  |
| RHD4CZ4L014RD8100 |  | Installation of Traffic Signage for Road Network - (RD-L-14)-Z4-L014-RD | 7d | 2028-01-30 | 2028-02-07 | RHD4CZ4L014RD5100, RHD4CZ4L014TC2400, RHD4CZ4L014ICT2400, RHD4PRSHLDOSRD1600, RHD4PRSHLSTAGRD1600, RHD4CZ4A013RD8100, RHD4CZ4B07BF4001 |  |  |  | -100.02d | 0d | Skilled labor [152.46 h]; Unskilled Labor [76.23 h]; Electrician [29.4 h]; Equipment Opreator [27.01 h]; Boom Truck [15.25 h]; Concrete Mixer Truck [11.76 h]; Traffic signs, ground mounted, 1 Sheet Aluminium, (breakaway)Single post [26 nr] | 31,876 |  | L014 | Z4 | CONS | RD | Traffic Signage | AFT |
|  | 2592 | **RHD4-02-002-L014-(RD)-Precast Interlocking Block Pavers** |  | 2028-02-07 | 2028-03-01 |  |  |  |  |  |  |  |  |  |  |  |  |  |  |  |
| RHD4CZ4L014RD6100 |  | Interlocking block pavers for sidewalk-footpath for Side walks and Parking areas - (RD-L-14)-Z4-L014-RD | 16d | 2028-02-07 | 2028-03-01 | RHD4CZ4L014RD8100, RHD4PRSHLDOSRD1300, RHD4PRSHLDOSRD1400, RHD4ENMSRD2000, RHD4ENMSRD2010, RHD4PRSHLSTAGRD1300, RHD4PRSHLSTAGRD1400 |  |  |  | -100.02d | 0d | Skilled labor [343.81 h]; Unskilled Labor [515.77 h]; Equipment Opreator [558.67 h]; Boom Truck [171.96 h]; Bobcat [171.96 h]; Concrete Mixer Truck [171.96 h]; Water Truck [43.02 h]; Interlock 80 mm thick Pavers for parking including sand fill [5525 m2] | 408,850 |  | L014 | Z4 | CONS | RD | Interlocking | AFT |
|  | 2590 | **RHD4-02-002-L014-(RD)-Bituminous concrete wearing course including tack coat (RC2)** |  | 2028-03-01 | 2028-03-05 |  |  |  |  |  |  |  |  |  |  |  |  |  |  |  |
| RHD4CZ4L014RD4100 |  | Supply, lay and compaction Asphaltic wearing course including tack Coat (RC2)for Road Network - (RD-L-14)-Z4-L014-RD | 3d | 2028-03-01 | 2028-03-05 | RHD4CZ4L014RD5100, RHD4CZ4L014RD6100, RHD4CZ4A013RD4100 |  |  |  | -100.02d | 0d | Skilled labor [27.77 h]; Unskilled Labor [166.4 h]; Equipment Opreator [416.12 h]; Bobcat [27.77 h]; Roller compactor [27.77 h]; Asphalt Paver [27.77 h]; Rubber Compactor [55.43 h]; MC1/RC2 Sprinkler [27.77 h]; Dump Truck [249.72 h]; Bituminous concrete wearing course, (Grading I - Class A), including tack coat (RC2) [1323.1 m3] | 718,443.3 |  | L014 | Z4 | CONS | RD | 50 mm | AFT |
|  | 2593 | **RHD4-02-002-L014-(RD)-Pavement Marking** |  | 2028-03-05 | 2028-03-09 |  |  |  |  |  |  |  |  |  |  |  |  |  |  |  |
| RHD4CZ4L014RD7100 |  | Pavement Markings for Road Network - (RD-L-14)-Z4-L014-RD | 4d | 2028-03-05 | 2028-03-09 | RHD4CZ4L014RD4100, RHD4PRSHLDOSRD1500, RHD4PRSHLSTAGRD1500, RHD4CZ4A013RD7100 |  |  |  | -100.02d | 9d | Skilled labor [32.8 h]; Unskilled Labor [65.56 h]; Equipment Opreator [32.8 h]; Road Marking Machine [32.8 h]; Retroreflective Thermoplastic White Traffic Markings [340.25 m2]; Retroreflective Thermoplastic Yellow, Traffic Markings [320.32 m2]; Retroreflective raised pavement markers (cat eyes) [132 nr] | 24,965.67 |  | L014 | Z4 | CONS | RD | Pavement Marking | AFT |
|  | 2411 | **RHD4-02-002-Z4-L014-Storm Network - ST** |  | 2026-08-04 | 2027-05-01 |  |  |  |  |  |  |  |  |  |  |  |  |  |  |  |
|  | 6394 | **RHD4-02-002-L014-(ST)-GRP Pipes - 1400 mm diameter** |  | 2027-01-31 | 2027-02-13 |  |  |  |  |  |  |  |  |  |  |  |  |  |  |  |
| RHD4CZ4L014ST1110 |  | Excavation works for GRP Pipe Line 1400 mm - (RD-L-14)-Z4-L014-ST | 2d | 2027-01-31 | 2027-02-01 | RHD4CZ5C061ST1100 |  |  |  | -182d | 0d | Skilled labor [5.99 h]; Unskilled Labor [5.99 h]; Equipment Opreator [7.2 h]; Excavator-Poclain [5.99 h]; Dump Truck [1.2 h]; GRP (1400mm Diameter) - ST - Depth less than 4.5 m [20.74 m] | 55,002.48 |  | L014 | Z4 | CONS | ST | Excavation | bef |
| RHD4CZ4L014ST1210 |  | Bedding works for GRP Pipe Line 1400 mm - (RD-L-14)-Z4-L014-ST | 2d | 2027-02-04 | 2027-02-06 | RHD4CZ5C061ST3501, RHD4CZ4L014ST1110 |  |  |  | -176d | 0d | Skilled labor [3.38 h]; Unskilled Labor [6.64 h]; Equipment Opreator [6.64 h]; Excavator-Poclain [3.38 h]; Dump Truck [3.38 h]; GRP (1400mm Diameter) - ST - Depth less than 4.5 m [6.91 m] | 18,325.32 |  | L014 | Z4 | CONS | ST | Bedding | bef |
| RHD4CZ4L014ST1310 |  | Installing for GRP Pipe Line 1400 mm - (RD-L-14)-Z4-L014-ST | 2d | 2027-02-07 | 2027-02-08 | RHD4CZ4L014ST1210 |  |  |  | -176d | 0d | Unskilled Labor [10.02 h]; Plumber [5.01 h]; GRP (1400mm Diameter) - ST - Depth less than 4.5 m [55.31 m] | 146,682.12 |  | L014 | Z4 | CONS | ST | Installation | bef |
| RHD4CZ4L014ST1410 |  | Primary Test for GRP Pipe Line 1400 mm - (RD-L-14)-Z4-L014-ST | 2d | 2027-02-09 | 2027-02-10 | RHD4CZ4L014ST1310 |  |  |  | -176d | 0d | Unskilled Labor [3.38 h]; Plumber [3.38 h]; Equipment Opreator [3.38 h]; Water Truck [3.38 h]; GRP (1400mm Diameter) - ST - Depth less than 4.5 m [27.65 m] | 73,327.8 |  | L014 | Z4 | CONS | ST | Primary Test | bef |
| RHD4CZ4L014ST1510 |  | Backfilling and warning tape works for GRP Pipe Line 1400 mm - (RD-L-14)-Z4-L014-ST | 2d | 2027-02-11 | 2027-02-13 | RHD4CZ4L014ST1410 |  |  |  | -176d | 0d | Skilled labor [7.51 h]; Unskilled Labor [15.03 h]; Equipment Opreator [15.03 h]; Excavator-Poclain [7.51 h]; Dump Truck [7.51 h]; GRP (1400mm Diameter) - ST - Depth less than 4.5 m [27.65 m] | 73,327.8 |  | L014 | Z4 | CONS | ST | Backfilling | bef |
|  | 6393 | **RHD4-02-002-L014-(ST)-GRP Pipes - 1300 mm diameter** |  | 2026-08-04 | 2027-02-16 |  |  |  |  |  |  |  |  |  |  |  |  |  |  |  |
| RHD4CZ4L014ST1109 |  | Excavation works for GRP Pipe Line 1300 mm - (RD-L-14)-Z4-L014-ST | 3d | 2026-08-04 A | 2026-08-28 A | RHD4CZ4L014ST1110 | 100% | 2026-08-12 | 2026-08-15 |  |  | Skilled labor [28.97 h]; Unskilled Labor [28.97 h]; Equipment Opreator [34.74 h]; Excavator-Poclain [28.97 h]; Dump Truck [5.77 h]; GRP (1300mm Diameter) - ST - Depth less than 2.5 m [51 m]; GRP (1300mm Diameter) - ST - Depth: 2.51m - 3.5m [35.23 m] | 153,432.69 | 153,432.69 | L014 | Z4 | CONS | ST | Excavation | bef |
| RHD4CZ4L014ST1209 |  | Bedding works for GRP Pipe Line 1300 mm - (RD-L-14)-Z4-L014-ST | 3d | 2026-08-06 A | 2026-08-30 A | RHD4CZ4L014ST1109 | 100% | 2026-08-16 | 2026-08-18 |  |  | Skilled labor [24.8 h]; Unskilled Labor [49.66 h]; Equipment Opreator [49.66 h]; Excavator-Poclain [24.8 h]; Dump Truck [24.8 h]; GRP (1300mm Diameter) - ST - Depth less than 2.5 m [17 m]; GRP (1300mm Diameter) - ST - Depth: 2.51m - 3.5m [11.74 m] | 51,138.22 | 51,138.22 | L014 | Z4 | CONS | ST | Bedding | bef |
| RHD4CZ4L014ST1309 |  | Installing for GRP Pipe Line 1300 mm - (RD-L-14)-Z4-L014-ST | 2d | 2026-08-08 A | 2026-09-02 A | RHD4CZ4L014ST1209 | 100% | 2026-08-19 | 2026-08-20 |  |  | Unskilled Labor [41.71 h]; Plumber [20.91 h]; GRP (1300mm Diameter) - ST - Depth less than 2.5 m [136 m]; GRP (1300mm Diameter) - ST - Depth: 2.51m - 3.5m [93.95 m] | 409,159.85 | 409,159.85 | L014 | Z4 | CONS | ST | Installation | bef |
| RHD4CZ4L014ST1409 |  | Primary Test for GRP Pipe Line 1300 mm - (RD-L-14)-Z4-L014-ST | 2d | 2027-02-02 | 2027-02-03 | RHD4CZ4L014ST1309 |  |  |  | -168d | 8d | Unskilled Labor [15.03 h]; Plumber [15.03 h]; Equipment Opreator [15.03 h]; Water Truck [15.03 h]; GRP (1300mm Diameter) - ST - Depth less than 2.5 m [68 m]; GRP (1300mm Diameter) - ST - Depth: 2.51m - 3.5m [46.97 m] | 204,570.91 |  | L014 | Z4 | CONS | ST | Primary Test | bef |
| RHD4CZ4L014ST1509 |  | Backfilling and warning tape works for GRP Pipe Line 1300 mm - (RD-L-14)-Z4-L014-ST | 3d | 2027-02-14 | 2027-02-16 | RHD4CZ4L014ST1409, RHD4CZ4L014ST1510 |  |  |  | -176d | 0d | Skilled labor [31.26 h]; Unskilled Labor [62.62 h]; Equipment Opreator [62.62 h]; Excavator-Poclain [31.26 h]; Dump Truck [31.26 h]; GRP (1300mm Diameter) - ST - Depth less than 2.5 m [68 m]; GRP (1300mm Diameter) - ST - Depth: 2.51m - 3.5m [46.97 m] | 204,570.91 |  | L014 | Z4 | CONS | ST | Backfilling | bef |

| ID | WBS | Activity | Duration | Start | Finish | Predecessors | Complete | Remaining | Planned start | Planned finish | Total float | Free float | Resources | Cost | Actual cost | RDH4-01-001-Road and Block Names-1 | RDH4-01-001-Zones-1 | RDH4-01-001-Phases-1 | RDH4-01-001-Networks-1 | RDH4-01-001-Work Method-1 | RDH4-01-001-MENEM |
| --- | --- | --- | --- | --- | --- | --- | --- | --- | --- | --- | --- | --- | --- | --- | --- | --- | --- | --- | --- | --- | --- |
|  | 2428 | **RHD4-02-002-L014-(ST)-MH Works - 1200 mm diameter** |  | 2026-08-04 | 2027-03-01 |  |  |  |  |  |  |  |  |  |  |  |  |  |  |  |  |
| RHD4CZ4L014ST3100 |  | Excavation and PC Blinding works for MH 1200 mm - (RD-L-14)-Z4-L014-ST | 2d | 2026-08-04 A | 2027-02-18 | RHD4ENSDZ4APPST110, RHD4ENMSST2000, RHD4ENMSST2010, RHD4CZ4L014ST1509 | 75% | 2d | 2026-08-27 | 2026-08-29 | -176d | 0d | Skilled labor [14.48 h]; Unskilled Labor [14.48 h]; Equipment Opreator [23.2 h]; Excavator-Poclain [14.48 h]; Water Truck [1.42 h]; Dump Truck [7.3 h]; MH (1200mm Diameter) - ST - depth 1.50 - 2.5m [1 nr] | 10,323 |  | L014 | Z4 | CONS | ST | Excavation | bef |
| RHD4CZ4L014ST3200 |  | Installation of Base for MH 1200 mm - (RD-L-14)-Z4-L014-ST | 2d | 2026-09-19 A | 2027-02-21 | RHD4CZ4L014ST3100, RHD4PRSHLSTAGST1603 | 75% | 2d | 2026-08-30 | 2026-08-31 | -166d | 0d | Skilled labor [14.48 h]; Unskilled Labor [14.48 h]; Equipment Opreator [5.77 h]; Boom Truck [2.94 h]; Concrete Mixer Truck [2.94 h]; MH (1200mm Diameter) - ST - depth 1.50 - 2.5m [1 nr] | 10,323 |  | L014 | Z4 | CONS | ST | Installing Base | bef |
| RHD4CZ4L014ST3300 |  | MH Ring and C.Slab works and Backfilling works for MH 1200 mm - (RD-L-14)-Z4-L014-ST | 2d | 2026-10-24 A | 2027-02-24 | RHD4CZ4L014ST3200, RHD4PRSHLDOSST1603 | 25% | 2d | 2027-03-16 | 2027-03-17 | -166d | 0d | Skilled labor [14.48 h]; Unskilled Labor [14.48 h]; Equipment Opreator [10.13 h]; Boom Truck [5.77 h]; Concrete Mixer Truck [4.36 h]; MH (1200mm Diameter) - ST - depth 1.50 - 2.5m [1.4 nr] | 14,452.2 |  | L014 | Z4 | CONS | ST | Installing Rings | bef |
| RHD4CZ4L014ST3400 |  | Steel Cover for MH 1200 mm - (RD-L-14)-Z4-L014-ST | 2d | 2027-02-25 | 2027-02-27 | RHD4CZ4L014ST3300, RHD4PRSHLDOSST1703, RHD4PRSHLSTAGST1703 |  |  |  |  | -166d | 0d | Skilled labor [14.48 h]; Unskilled Labor [29.08 h]; Equipment Opreator [2.94 h]; Boom Truck [2.94 h]; MH (1200mm Diameter) - ST - depth 1.50 - 2.5m [0.2 nr] | 2,064.6 |  | L014 | Z4 | CONS | ST | Steel Cover | bef |
| RHD4CZ4L014ST3500 |  | Finishing, Benching, Testing works for MH 1200 mm - (RD-L-14)-Z4-L014-ST | 2d | 2027-02-28 | 2027-03-01 | RHD4CZ4L014ST3400 |  |  |  |  | -166d | 10d | Skilled labor [14.48 h]; Unskilled Labor [29.08 h]; Plumber [14.48 h]; Equipment Opreator [2.94 h]; Water Truck [2.94 h]; MH (1200mm Diameter) - ST - depth 1.50 - 2.5m [0.4 nr] | 4,129.2 |  | L014 | Z4 | CONS | ST | Benching | bef |
|  | 2430 | **RHD4-02-002-L014-(ST)-MH Works - 2000 mm diameter** |  | 2026-08-04 | 2027-04-20 |  |  |  |  |  |  |  |  |  |  |  |  |  |  |  |  |
| RHD4CZ4L014ST3102 |  | Excavation and PC Blinding works for MH 2000 mm - (RD-L-14)-Z4-L014-ST | 6d | 2026-08-04 A | 2027-03-23 | RHD4CZ4L014ST3100, RHD4ENSDZ4APPST110, RHD4ENMSST2000, RHD4CZ4C031ST3100, RHD4CZ2L102ST1502, RHD4CZ7L015ICT3400, RHD4CZ3C083ST8500 | 89% | 2d | 2026-10-04 | 2026-10-10 | -197.02d | 0d | Skilled labor [65.34 h]; Unskilled Labor [65.34 h]; Equipment Opreator [104.55 h]; Excavator-Poclain [65.34 h]; Water Truck [6.53 h]; Dump Truck [32.67 h]; MH (2000mm Diameter) - ST - depth 1.50 - 2.5m [1 nr]; MH (2000mm Diameter) - ST - depth 2.51 - 3.5m [2.75 nr]; MH (2000mm Diameter) - ST - depth 3.51 -4.5m [0.5 nr] | 88,494.25 | 58,996.17 | L014 | Z4 | CONS | ST | Excavation | bef |
| RHD4CZ4L014ST3202 |  | Installation of Base for MH 2000 mm - (RD-L-14)-Z4-L014-ST | 8d | 2026-09-19 A | 2027-03-25 | RHD4CZ4L014ST3102, RHD4CZ4L014ST3200, RHD4PRSHLSTAGST1603, RHD4CZ4L014RD3100, RHD4CZ4A013MV2400 | 72% | 2d | 2026-10-11 | 2026-10-19 | -152.02d | 0d | Skilled labor [85.27 h]; Unskilled Labor [85.27 h]; Equipment Opreator [34.09 h]; Boom Truck [17.1 h]; Concrete Mixer Truck [17.1 h]; MH (2000mm Diameter) - ST - depth 1.50 - 2.5m [1 nr]; MH (2000mm Diameter) - ST - depth 2.51 - 3.5m [2.75 nr]; MH (2000mm Diameter) - ST - depth 3.51 -4.5m [0.5 nr] | 88,494.25 | 63,715.86 | L014 | Z4 | CONS | ST | Installing Base | bef |
| RHD4CZ4L014ST3302 |  | MH Ring and C.Slab works and Backfilling works for MH 2000 mm - (RD-L-14)-Z4-L014-ST | 8d | 2027-03-25 | 2027-04-04 | RHD4CZ4L014ST3202, RHD4CZ4L014ST3300, RHD4PRSHLDOSST1603 |  |  |  |  | -152.02d | 0d | Skilled labor [85.27 h]; Unskilled Labor [85.27 h]; Equipment Opreator [59.68 h]; Boom Truck [34.09 h]; Concrete Mixer Truck [25.6 h]; MH (2000mm Diameter) - ST - depth 1.50 - 2.5m [1.4 nr]; MH (2000mm Diameter) - ST - depth 2.51 - 3.5m [3.85 nr]; MH (2000mm Diameter) - ST - depth 3.51 -4.5m [0.7 nr] | 123,891.95 |  | L014 | Z4 | CONS | ST | Installing Rings | bef |
| RHD4CZ4L014ST3402 |  | Steel Cover for MH 2000 mm - (RD-L-14)-Z4-L014-ST | 6d | 2027-04-06 | 2027-04-13 | RHD4CZ4L014ST3302, RHD4CZ4L014ST1500, RHD4CZ4L014ST3400 SS, RHD4PRSHLDOSST1703, RHD4PRSHLSTAGST1703 |  |  |  |  | -139.02d | 0d | Skilled labor [61.75 h]; Unskilled Labor [123.39 h]; Equipment Opreator [12.31 h]; Boom Truck [12.31 h]; MH (2000mm Diameter) - ST - depth 1.50 - 2.5m [0.2 nr]; MH (2000mm Diameter) - ST - depth 2.51 - 3.5m [0.55 nr]; MH (2000mm Diameter) - ST - depth 3.51 -4.5m [0.1 nr] | 17,698.85 |  | L014 | Z4 | CONS | ST | Steel Cover | bef |
| RHD4CZ4L014ST3502 |  | Finishing, Benching, Testing works for MH 2000 mm - (RD-L-14)-Z4-L014-ST | 6d | 2027-04-13 | 2027-04-20 | RHD4CZ4L014ST3402, RHD4CZ4L014ST3500 SS, RHD4CZ7A012LV2400 |  |  |  |  | -139.02d | 13d | Skilled labor [65.34 h]; Unskilled Labor [130.68 h]; Plumber [65.34 h]; Equipment Opreator [13.07 h]; Water Truck [13.07 h]; MH (2000mm Diameter) - ST - depth 1.50 - 2.5m [0.4 nr]; MH (2000mm Diameter) - ST - depth 2.51 - 3.5m [1.1 nr]; MH (2000mm Diameter) - ST - depth 3.51 -4.5m [0.2 nr] | 35,397.7 |  | L014 | Z4 | CONS | ST | Benching | bef |
|  | 2429 | **RHD4-02-002-L014-(ST)-MH Works - 1500 mm diameter** |  | 2026-08-04 | 2027-05-01 |  |  |  |  |  |  |  |  |  |  |  |  |  |  |  |  |
| RHD4CZ4L014ST3101 |  | Excavation and PC Blinding works for MH 1500 mm - (RD-L-14)-Z4-L014-ST | 2d | 2026-08-04 A | 2026-08-06 A | RHD4CZ4L014ST3102, RHD4ENSDZ4APPST110, RHD4ENMSST2000 | 100% |  | 2026-10-11 | 2026-10-12 |  |  | Skilled labor [10.89 h]; Unskilled Labor [10.89 h]; Equipment Opreator [17.42 h]; Excavator-Poclain [10.89 h]; Water Truck [1.09 h]; Dump Truck [5.45 h]; MH (1500mm Diameter) - ST - depth 1.50 - 2.5m [0.5 nr] | 7,293 | 7,293 | L014 | Z4 | CONS | ST | Excavation | bef |
| RHD4CZ4L014ST3201 |  | Installation of Base for MH 1500 mm - (RD-L-14)-Z4-L014-ST | 2d | 2026-09-20 A | 2027-03-28 | RHD4CZ4L014ST3101, RHD4CZ4L014ST3202, RHD4PRSHLSTAGST1603 | 50% | 2d | 2026-10-20 | 2026-10-21 | -146.02d | 6d | Skilled labor [10.89 h]; Unskilled Labor [10.89 h]; Equipment Opreator [4.36 h]; Boom Truck [2.18 h]; Concrete Mixer Truck [2.18 h]; MH (1500mm Diameter) - ST - depth 1.50 - 2.5m [0.5 nr] | 7,293 |  | L014 | Z4 | CONS | ST | Installing Base | bef |
| RHD4CZ4L014ST3301 |  | MH Ring and C.Slab works and Backfilling works for MH 1500 mm - (RD-L-14)-Z4-L014-ST | 2d | 2027-04-04 | 2027-04-06 | RHD4CZ4L014ST3201, RHD4CZ4L014ST3302, RHD4PRSHLDOSST1603 |  |  |  |  | -152.02d | 0d | Skilled labor [10.89 h]; Unskilled Labor [10.89 h]; Equipment Opreator [7.62 h]; Boom Truck [4.36 h]; Concrete Mixer Truck [3.27 h]; MH (1500mm Diameter) - ST - depth 1.50 - 2.5m [0.7 nr] | 10,210.2 |  | L014 | Z4 | CONS | ST | Installing Rings | bef |
| RHD4CZ4L014ST3401 |  | Steel Cover for MH 1500 mm - (RD-L-14)-Z4-L014-ST | 2d | 2027-04-26 | 2027-04-28 | RHD4CZ4L014ST3301, RHD4CZ4L014ST1500, RHD4CZ4L014ST3402 SS, RHD4PRSHLDOSST1703, RHD4PRSHLSTAGST1703, RHD4CZ4L014ST2500 |  |  |  |  | -152.02d | 0d | Skilled labor [7.3 h]; Unskilled Labor [14.48 h]; Equipment Opreator [1.42 h]; Boom Truck [1.42 h]; MH (1500mm Diameter) - ST - depth 1.50 - 2.5m [0.1 nr] | 1,458.6 |  | L014 | Z4 | CONS | ST | Steel Cover | bef |
| RHD4CZ4L014ST3501 |  | Finishing, Benching, Testing works for MH 1500 mm - (RD-L-14)-Z4-L014-ST | 2d | 2027-04-28 | 2027-05-01 | RHD4CZ4L014ST3401, RHD4CZ4L014ST2500, RHD4CZ4L014ST3502 SS |  |  |  |  | -152.02d | 9.98d | Skilled labor [10.89 h]; Unskilled Labor [21.78 h]; Plumber [10.89 h]; Equipment Opreator [2.18 h]; Water Truck [2.18 h]; MH (1500mm Diameter) - ST - depth 1.50 - 2.5m [0.2 nr] | 2,917.2 |  | L014 | Z4 | CONS | ST | Benching | bef |
|  | 2420 | **RHD4-02-002-L014-(ST)-GRP Pipes - 1200 mm diameter** |  |  |  |  |  |  |  |  |  |  |  |  |  |  |  |  |  |  |  |
|  | 2419 | **RHD4-02-002-L014-(ST)-GRP Pipes - 1100 mm diameter** |  | 2026-08-05 | 2027-04-03 |  |  |  |  |  |  |  |  |  |  |  |  |  |  |  |  |
| RHD4CZ4L014ST1107 |  | Excavation works for GRP Pipe Line 1100 mm - (RD-L-14)-Z4-L014-ST | 2d | 2026-08-05 A | 2027-03-27 | RHD4ENSDZ4APPST110, RHD4CZ4L014ST3101, RHD4CZ4L014ST1109 | 70% | 3d | 2026-10-13 | 2026-10-14 | -139.02d | 0d | Skilled labor [9.47 h]; Unskilled Labor [9.47 h]; Equipment Opreator [11.33 h]; Excavator-Poclain [9.47 h]; Dump Truck [1.85 h]; GRP (1100mm Diameter) - ST - Depth: 1.51m - 2.5m [26.04 m] | 27,550.32 |  | L014 | Z4 | CONS | ST | Excavation | bef |
| RHD4CZ4L014ST1207 |  | Bedding works for GRP Pipe Line 1100 mm - (RD-L-14)-Z4-L014-ST | 2d | 2026-08-08 A | 2027-03-28 | RHD4CZ4L014ST1107 | 70% | 1d | 2026-10-15 | 2026-10-17 | -96.02d | 0d | Skilled labor [9.47 h]; Unskilled Labor [18.95 h]; Equipment Opreator [18.95 h]; Excavator-Poclain [9.47 h]; Dump Truck [9.47 h]; GRP (1100mm Diameter) - ST - Depth: 1.51m - 2.5m [8.68 m] | 9,183.44 | 4,591.72 | L014 | Z4 | CONS | ST | Bedding | bef |
| RHD4CZ4L014ST1307 |  | Installing for GRP Pipe Line 1100 mm - (RD-L-14)-Z4-L014-ST | 2d | 2026-09-15 A | 2027-03-29 | RHD4CZ4L014ST1207, RHD4PRSHLSTAGST1003, RHD4PRSHLDOSST1603, RHD4PRSHLPOST1000, RHD4PRSHLDOSST1003 | 70% | 1d | 2026-10-18 | 2026-10-19 | -96.02d | 0d | Unskilled Labor [12.63 h]; Plumber [6.32 h]; GRP (1100mm Diameter) - ST - Depth: 1.51m - 2.5m [69.45 m] | 73,478.1 | 36,739.05 | L014 | Z4 | CONS | ST | Installation | bef |
| RHD4CZ4L014ST1407 |  | Primary Test for GRP Pipe Line 1100 mm - (RD-L-14)-Z4-L014-ST | 2d | 2027-03-29 | 2027-03-31 | RHD4CZ4L014ST1307 |  |  |  |  | -96.02d | 0d | Unskilled Labor [4.68 h]; Plumber [4.68 h]; Equipment Opreator [4.68 h]; Water Truck [4.68 h]; GRP (1100mm Diameter) - ST - Depth: 1.51m - 2.5m [34.72 m] | 36,733.76 |  | L014 | Z4 | CONS | ST | Primary Test | bef |
| RHD4CZ4L014ST1507 |  | Backfilling and warning tape works for GRP Pipe Line 1100 mm - (RD-L-14)-Z4-L014-ST | 2d | 2027-03-31 | 2027-04-03 | RHD4CZ4L014ST1407 |  |  |  |  | -96.02d | 0d | Skilled labor [9.47 h]; Unskilled Labor [18.95 h]; Equipment Opreator [18.95 h]; Excavator-Poclain [9.47 h]; Dump Truck [9.47 h]; GRP (1100mm Diameter) - ST - Depth: 1.51m - 2.5m [34.72 m] | 36,733.76 |  | L014 | Z4 | CONS | ST | Backfilling | bef |

| ID | WBS | Activity | Duration | Start | Finish | Predecessors | Complete | Remaining | Planned start | Planned finish | Total float | Free float | Resources | Cost | Actual cost | RDH4-01-001-Road and Block Names-1 | RDH4-01-001-Zones-1 | RDH4-01-001-Phases-1 | RDH4-01-001-Networks-1 | RDH4-01-001-Work Method-1 | RDH4-01-001-MENEM |
| --- | --- | --- | --- | --- | --- | --- | --- | --- | --- | --- | --- | --- | --- | --- | --- | --- | --- | --- | --- | --- | --- |
|  | 2418 | **RHD4-02-002-L014-(ST)-GRP Pipes - 1000 mm diameter** |  | 2026-08-06 | 2027-04-05 |  |  |  |  |  |  |  |  |  |  |  |  |  |  |  |  |
| RHD4CZ4L014ST1106 |  | Excavation works for GRP Pipe Line 1000 mm - (RD-L-14)-Z4-L014-ST | 2d | 2026-08-06 A | 2026-08-08 A | RHD4CZ4L014ST1107, RHD4ENSDZ4APPST110, RHD4CZ4L014ST1107 FF | 100% |  | 2026-10-15 | 2026-10-17 |  |  | Skilled labor [3.16 h]; Unskilled Labor [3.16 h]; Equipment Opreator [3.81 h]; Excavator-Poclain [3.16 h]; Dump Truck [0.65 h]; GRP (1000mm Diameter) - ST - Depth: 1.51m - 2.5m [8.68 m] | 7,950.88 | 7,950.88 | L014 | Z4 | CONS | ST | Excavation | bef |
| RHD4CZ4L014ST1206 |  | Bedding works for GRP Pipe Line 1000 mm - (RD-L-14)-Z4-L014-ST | 2d | 2026-08-08 A | 2026-08-09 A | RHD4CZ4L014ST1106, RHD4CZ4L014ST1207 | 100% |  | 2026-10-18 | 2026-10-19 |  |  | Skilled labor [3.16 h]; Unskilled Labor [6.32 h]; Equipment Opreator [6.32 h]; Excavator-Poclain [3.16 h]; Dump Truck [3.16 h]; GRP (1000mm Diameter) - ST - Depth: 1.51m - 2.5m [2.89 m] | 2,647.24 | 2,647.24 | L014 | Z4 | CONS | ST | Bedding | bef |
| RHD4CZ4L014ST1306 |  | Installing for GRP Pipe Line 1000 mm - (RD-L-14)-Z4-L014-ST | 2d | 2026-08-09 A | 2026-08-10 A | RHD4CZ4L014ST1206, RHD4CZ4L014ST1307, RHD4PRSHLSTAGST1003, RHD4PRSHLDOSST1603, RHD4PRSHLPOST1000, RHD4PRSHLDOSST1003 | 100% |  | 2026-10-20 | 2026-10-21 |  |  | Unskilled Labor [4.25 h]; Plumber [2.07 h]; GRP (1000mm Diameter) - ST - Depth: 1.51m - 2.5m [23.16 m] | 21,214.56 | 21,214.56 | L014 | Z4 | CONS | ST | Installation | bef |
| RHD4CZ4L014ST1406 |  | Primary Test for GRP Pipe Line 1000 mm - (RD-L-14)-Z4-L014-ST | 2d | 2027-03-31 | 2027-04-03 | RHD4CZ4L014ST1306, RHD4CZ4L014ST1407 |  |  |  |  | -96.02d | 0d | Unskilled Labor [1.52 h]; Plumber [1.52 h]; Equipment Opreator [1.52 h]; Water Truck [1.52 h]; GRP (1000mm Diameter) - ST - Depth: 1.51m - 2.5m [11.58 m] | 10,607.28 |  | L014 | Z4 | CONS | ST | Primary Test | bef |
| RHD4CZ4L014ST1506 |  | Backfilling and warning tape works for GRP Pipe Line 1000 mm - (RD-L-14)-Z4-L014-ST | 2d | 2027-04-03 | 2027-04-05 | RHD4CZ4L014ST1406, RHD4CZ4L014ST1507 |  |  |  |  | -96.02d | 0d | Skilled labor [3.16 h]; Unskilled Labor [6.32 h]; Equipment Opreator [6.32 h]; Excavator-Poclain [3.16 h]; Dump Truck [3.16 h]; GRP (1000mm Diameter) - ST - Depth: 1.51m - 2.5m [11.58 m] | 10,607.28 |  | L014 | Z4 | CONS | ST | Backfilling | bef |
|  | 2417 | **RHD4-02-002-L014-(ST)-GRP Pipes - 900 mm diameter** |  | 2026-08-06 | 2027-04-05 |  |  |  |  |  |  |  |  |  |  |  |  |  |  |  |  |
| RHD4CZ4L014ST1105 |  | Excavation works for GRP Pipe Line 900 mm - (RD-L-14)-Z4-L014-ST | 2d | 2026-08-06 A | 2026-08-08 A | RHD4CZ4L014ST1106, RHD4ENSDZ4APPST110 | 100% |  | 2026-10-18 | 2026-10-19 |  |  | Skilled labor [6.32 h]; Unskilled Labor [6.32 h]; Equipment Opreator [7.62 h]; Excavator-Poclain [6.32 h]; Dump Truck [1.31 h]; GRP (900mm Diameter) - ST - Depth less than 1.5 m [11.65 m]; GRP (900mm Diameter) - ST - Depth: 1.51m - 2.5m | 8,725.85 | 8,725.85 | L014 | Z4 | CONS | ST | Excavation | bef |
| RHD4CZ4L014ST1205 |  | Bedding works for GRP Pipe Line 900 mm - (RD-L-14)-Z4-L014-ST | 2d | 2026-08-08 A | 2026-08-10 A | RHD4CZ4L014ST1105, RHD4CZ4L014ST1206 | 100% |  | 2026-10-20 | 2026-10-21 |  |  | Skilled labor [6.32 h]; Unskilled Labor [12.74 h]; Equipment Opreator [12.74 h]; Excavator-Poclain [6.32 h]; Dump Truck [6.32 h]; GRP (900mm Diameter) - ST - Depth less than 1.5 m [5.83 m]; GRP (900mm Diameter) - ST - Depth: 1.51m - 2.5m | 4,366.67 | 4,366.67 | L014 | Z4 | CONS | ST | Bedding | bef |
| RHD4CZ4L014ST1305 |  | Installing for GRP Pipe Line 900 mm - (RD-L-14)-Z4-L014-ST | 2d | 2026-08-10 A | 2026-08-12 A | RHD4CZ4L014ST1205, RHD4CZ4L014ST1306, RHD4PRSHLSTAGST1003, RHD4PRSHLDOSST1603, RHD4PRSHLPOST1000, RHD4PRSHLDOSST1003 | 100% |  | 2026-10-22 | 2026-10-24 |  |  | Unskilled Labor [8.49 h]; Plumber [4.25 h]; GRP (900mm Diameter) - ST - Depth less than 1.5 m [52.45 m]; GRP (900mm Diameter) - ST - Depth: 1.51m - 2.5m | 39,285.05 | 39,285.05 | L014 | Z4 | CONS | ST | Installation | bef |
| RHD4CZ4L014ST1505 |  | Backfilling and warning tape works for GRP Pipe Line 900 mm - (RD-L-14)-Z4-L014-ST | 2d | 2026-10-01 A | 2026-10-03 A | RHD4CZ4L014ST1405, RHD4CZ4L014ST1506 | 100% |  | 2027-04-13 | 2027-04-14 |  |  | Skilled labor [6.32 h]; Unskilled Labor [12.74 h]; Equipment Opreator [12.74 h]; Excavator-Poclain [6.32 h]; Dump Truck [6.32 h]; GRP (900mm Diameter) - ST - Depth less than 1.5 m [23.31 m]; GRP (900mm Diameter) - ST - Depth: 1.51m - 2.5m | 17,459.19 | 17,459.19 | L014 | Z4 | CONS | ST | Backfilling | bef |
| RHD4CZ4L014ST1405 |  | Primary Test for GRP Pipe Line 900 mm - (RD-L-14)-Z4-L014-ST | 2d | 2027-04-03 | 2027-04-05 | RHD4CZ4L014ST1305, RHD4CZ4L014ST1406, RHD4CZ6A015PT3200, RHD4CZ6C052PT4500 |  |  |  |  | -96.02d | 0d | Unskilled Labor [3.16 h]; Plumber [3.16 h]; Equipment Opreator [3.16 h]; Water Truck [3.16 h]; GRP (900mm Diameter) - ST - Depth less than 1.5 m [23.31 m]; GRP (900mm Diameter) - ST - Depth: 1.51m - 2.5m | 17,459.19 |  | L014 | Z4 | CONS | ST | Primary Test | bef |
|  | 2416 | **RHD4-02-002-L014-(ST)-GRP Pipes - 800 mm diameter** |  |  |  |  |  |  |  |  |  |  |  |  |  |  |  |  |  |  |  |
|  | 2415 | **RHD4-02-002-L014-(ST)-GRP Pipes - 700 mm diameter** |  |  |  |  |  |  |  |  |  |  |  |  |  |  |  |  |  |  |  |
|  | 2414 | **RHD4-02-002-L014-(ST)-GRP Pipes - 600 mm diameter** |  |  |  |  |  |  |  |  |  |  |  |  |  |  |  |  |  |  |  |
|  | 2413 | **RHD4-02-002-L014-(ST)-GRP Pipes - 500 mm diameter** |  | 2026-08-04 | 2027-03-29 |  |  |  |  |  |  |  |  |  |  |  |  |  |  |  |  |
| RHD4CZ4L014ST1101 |  | Excavation works for GRP Pipe Line 500 mm - (RD-L-14)-Z4-L014-ST | 2d | 2026-08-04 A | 2026-08-06 A | RHD4ENSDZ4APPST110, RHD4CZ4L014ST1105 | 100% |  | 2026-10-20 | 2026-10-21 |  |  | Skilled labor [2.61 h]; Unskilled Labor [2.61 h]; Equipment Opreator [3.05 h]; Excavator-Poclain [2.61 h]; Dump Truck [0.54 h]; GRP (500mm Diameter) - ST - Depth less than 1.5 m [5.94 m] | 2,107.64 | 2,107.64 | L014 | Z4 | CONS | ST | Excavation | bef |
| RHD4CZ4L014ST1201 |  | Bedding works for GRP Pipe Line 500 mm - (RD-L-14)-Z4-L014-ST | 2d | 2026-08-06 A | 2026-08-08 A | RHD4CZ4L014ST1101 | 100% |  | 2026-10-22 | 2026-10-24 |  |  | Skilled labor [2.18 h]; Unskilled Labor [4.36 h]; Equipment Opreator [4.36 h]; Excavator-Poclain [2.18 h]; Dump Truck [2.18 h]; GRP (500mm Diameter) - ST - Depth less than 1.5 m [2.97 m] | 1,053.82 | 1,053.82 | L014 | Z4 | CONS | ST | Bedding | bef |
| RHD4CZ4L014ST1301 |  | Installing for GRP Pipe Line 500 mm - (RD-L-14)-Z4-L014-ST | 2d | 2026-08-08 A | 2026-08-10 A | RHD4CZ4L014ST1201, RHD4PRSHLSTAGST1003, RHD4PRSHLDOSST1603, RHD4PRSHLPOST1000, RHD4PRSHLDOSST1003 | 100% |  | 2026-10-25 | 2026-10-26 |  |  | Unskilled Labor [8.6 h]; Plumber [4.36 h]; GRP (500mm Diameter) - ST - Depth less than 1.5 m [26.71 m] | 9,482.05 | 9,482.05 | L014 | Z4 | CONS | ST | Installation | bef |
| RHD4CZ4L014ST1501 |  | Backfilling and warning tape works for GRP Pipe Line 500 mm - (RD-L-14)-Z4-L014-ST | 2d | 2026-08-22 A | 2026-08-23 A | RHD4CZ4L014ST1401 | 100% |  | 2026-10-29 | 2026-10-31 |  |  | Skilled labor [3.27 h]; Unskilled Labor [6.4 h]; Equipment Opreator [6.4 h]; Excavator-Poclain [3.27 h]; Dump Truck [3.27 h]; GRP (500mm Diameter) - ST - Depth less than 1.5 m [11.87 m] | 4,215.27 | 4,215.27 | L014 | Z4 | CONS | ST | Backfilling | bef |
| RHD4CZ4L014ST1401 |  | Primary Test for GRP Pipe Line 500 mm - (RD-L-14)-Z4-L014-ST | 2d | 2027-03-27 | 2027-03-29 | RHD4CZ4L014ST1301 |  |  |  |  | -136.02d | 0d | Unskilled Labor [1.31 h]; Plumber [1.31 h]; Equipment Opreator [1.31 h]; Water Truck [1.31 h]; GRP (500mm Diameter) - ST - Depth less than 1.5 m [11.87 m] | 4,215.27 |  | L014 | Z4 | CONS | ST | Primary Test | bef |
|  | 2412 | **RHD4-02-002-L014-(ST)-GRP Pipes - 400 mm diameter** |  | 2026-08-04 | 2027-04-06 |  |  |  |  |  |  |  |  |  |  |  |  |  |  |  |  |
| RHD4CZ4L014ST1100 |  | Excavation works for GRP Pipe Line 400 mm - (RD-L-14)-Z4-L014-ST | 2d | 2026-08-04 A | 2027-03-28 | RHD4CZ4L014ST1101, RHD4ENSDZ4APPST110 | 51% | 1d | 2026-10-22 | 2026-10-24 | -139.02d | 0d | Skilled labor [9.91 h]; Unskilled Labor [9.91 h]; Equipment Opreator [12 h]; Excavator-Poclain [9.91 h]; Dump Truck [1.96 h]; GRP (400mm Diameter) - ST - Depth less than 1.5 m [22.84 m] | 6,623.02 | 3,311.51 | L014 | Z4 | CONS | ST | Excavation | bef |
| RHD4CZ4L014ST1200 |  | Bedding works for GRP Pipe Line 400 mm - (RD-L-14)-Z4-L014-ST | 2d | 2026-09-14 A | 2027-03-30 | RHD4CZ4L014ST1100, RHD4CZ4L014ST1201 | 55% | 2d | 2027-03-28 | 2027-03-29 | -139.02d | 0d | Skilled labor [8.28 h]; Unskilled Labor [16.55 h]; Equipment Opreator [16.55 h]; Excavator-Poclain [8.28 h]; Dump Truck [8.28 h]; GRP (400mm Diameter) - ST - Depth less than 1.5 m [11.42 m] | 3,311.51 |  | L014 | Z4 | CONS | ST | Bedding | bef |
| RHD4CZ4L014ST1300 |  | Installing for GRP Pipe Line 400 mm - (RD-L-14)-Z4-L014-ST | 2d | 2026-10-01 A | 2027-04-01 | RHD4CZ4L014ST1200, RHD4CZ4L014ST1301, RHD4PRSHLSTAGST1003, RHD4PRSHLDOSST1603, RHD4PRSHLPOST1000, RHD4PRSHLDOSST1003 | 60% | 2d | 2027-03-30 | 2027-03-31 | -139.02d | 0d | Unskilled Labor [33.22 h]; Plumber [16.55 h]; GRP (400mm Diameter) - ST - Depth less than 1.5 m [102.77 m] | 29,803.59 |  | L014 | Z4 | CONS | ST | Installation | bef |
| RHD4CZ4L014ST1500 |  | Backfilling and warning tape works for GRP Pipe Line 400 mm - (RD-L-14)-Z4-L014-ST | 2d | 2026-10-17 A | 2027-04-06 | RHD4CZ4L014ST1400, RHD4CZ4L014ST1501 | 60% | 2d | 2027-04-04 | 2027-04-05 | -139.02d | 0d | Skilled labor [12.41 h]; Unskilled Labor [24.8 h]; Equipment Opreator [24.8 h]; Excavator-Poclain [12.41 h]; Dump Truck [12.41 h]; GRP (400mm Diameter) - ST - Depth less than 1.5 m [45.67 m] | 13,244.3 |  | L014 | Z4 | CONS | ST | Backfilling | bef |
| RHD4CZ4L014ST1400 |  | Primary Test for GRP Pipe Line 400 mm - (RD-L-14)-Z4-L014-ST | 2d | 2027-04-01 | 2027-04-04 | RHD4CZ4L014ST1300, RHD4CZ4L014ST1401 |  |  |  |  | -139.02d | 0d | Unskilled Labor [5.01 h]; Plumber [5.01 h]; Equipment Opreator [5.01 h]; Water Truck [5.01 h]; GRP (400mm Diameter) - ST - Depth less than 1.5 m [45.67 m] | 13,244.3 |  | L014 | Z4 | CONS | ST | Primary Test | bef |

| ID | WBS | Activity | Duration | Start | Finish | Predecessors | Complete | Remaining | Planned start | Planned finish | Total float | Free float | Resources | Cost | Actual cost | RDH4-01-001-Road and Block Names-1 | RDH4-01-001-Zones-1 | RDH4-01-001-Phases-1 | RDH4-01-001-Networks-1 | RDH4-01-001-Work Method-1 | RDH4-01-001-MENEM |
| --- | --- | --- | --- | --- | --- | --- | --- | --- | --- | --- | --- | --- | --- | --- | --- | --- | --- | --- | --- | --- | --- |
|  | 2427 | **RHD4-02-002-L014-(ST)-UPVC Pipes - 400 mm diameter** |  |  |  |  |  |  |  |  |  |  |  |  |  |  |  |  |  |  |  |
|  | 2426 | **RHD4-02-002-L014-(ST)-UPVC Pipes - 300 mm diameter** |  | 2026-09-17 | 2027-04-26 |  |  |  |  |  |  |  |  |  |  |  |  |  |  |  |  |
| RHD4CZ4L014ST2100 |  | Excavation works for UPVC Pipe Line 300 mm - (RD-L-14)-Z4-L014-ST | 4d | 2026-09-17 A | 2027-04-11 | RHD4CZ4L014ST3300, RHD4CZ4L014ST3301, RHD4ENSDZ4APPST110 | 31% | 4d | 2027-04-12 | 2027-04-15 | -152.02d | 0d | Skilled labor [34.3 h]; Unskilled Labor [34.3 h]; Equipment Opreator [41.17 h]; Excavator-Poclain [34.3 h]; Dump Truck [6.86 h]; UPVC (300mm Diameter) - ST - Depth less than 1.5 [76.54 m]; UPVC (300mm Diameter) - ST - Depth: 1.51m - 2.5m | 23,191.62 |  | L014 | Z4 | CONS | ST | Excavation | bef |
| RHD4CZ4L014ST2200 |  | Bedding works for UPVC Pipe Line 300 mm - (RD-L-14)-Z4-L014-ST | 3d | 2026-09-22 A | 2027-04-14 | RHD4CZ4L014ST2100 | 8% | 3d | 2027-04-17 | 2027-04-19 | -152.02d | 0d | Skilled labor [29.3 h]; Unskilled Labor [58.7 h]; Equipment Opreator [58.7 h]; Excavator-Poclain [29.3 h]; Dump Truck [29.3 h]; UPVC (300mm Diameter) - ST - Depth less than 1.5 [38.27 m]; UPVC (300mm Diameter) - ST - Depth: 1.51m - 2.5m | 11,595.81 |  | L014 | Z4 | CONS | ST | Bedding | bef |
| RHD4CZ4L014ST2300 |  | Installing for UPVC Pipe Line 300 mm - (RD-L-14)-Z4-L014-ST | 4d | 2026-09-26 A | 2027-04-19 | RHD4CZ4L014ST2200, RHD4PRSHLDOSST1103, RHD4PRSHLSTAGST1103, RHD4PRSHLSTAIRRC1000 | 10% | 4d | 2027-04-20 | 2027-04-24 | -152.02d | 0d | Unskilled Labor [68.5 h]; Plumber [34.3 h]; UPVC (300mm Diameter) - ST - Depth less than 1.5 [344.45 m]; UPVC (300mm Diameter) - ST - Depth: 1.51m - 2.5m | 104,368.35 |  | L014 | Z4 | CONS | ST | Installation | bef |
| RHD4CZ4L014ST2500 |  | Backfilling and warning tape works for UPVC Pipe Line 300 mm - (RD-L-14)-Z4-L014-ST | 4d | 2026-10-24 A | 2027-04-26 | RHD4CZ4L014ST2400, RHD4CZ4L014ST6100 | 8% | 4d | 2027-04-27 | 2027-05-01 | -152.02d | 0d | Skilled labor [41.71 h]; Unskilled Labor [83.31 h]; Equipment Opreator [83.31 h]; Excavator-Poclain [41.71 h]; Dump Truck [41.71 h]; UPVC (300mm Diameter) - ST - Depth less than 1.5 [153.09 m]; UPVC (300mm Diameter) - ST - Depth: 1.51m - 2.5m | 46,386.27 |  | L014 | Z4 | CONS | ST | Backfilling | bef |
| RHD4CZ4L014ST2400 |  | Primary Test for UPVC Pipe Line 300 mm - (RD-L-14)-Z4-L014-ST | 2d | 2027-04-19 | 2027-04-21 | RHD4CZ4L014ST2300 |  |  |  |  | -152.02d | 0d | Unskilled Labor [19.49 h]; Plumber [19.49 h]; Equipment Opreator [19.49 h]; Water Truck [19.49 h]; UPVC (300mm Diameter) - ST - Depth less than 1.5 [153.09 m]; UPVC (300mm Diameter) - ST - Depth: 1.51m - 2.5m | 46,386.27 |  | L014 | Z4 | CONS | ST | Primary Test | bef |
|  | 2434 | **RHD4-02-002-L014-(ST)-Concrete Encasement** |  | 2027-04-17 | 2027-04-19 |  |  |  |  |  |  |  |  |  |  |  |  |  |  |  |  |
| RHD4CZ4L014ST6100 |  | Pipe Encasement for Storm Pipelines - (RD-L-14)-Z4-L014-ST | 2d | 2027-04-17 | 2027-04-19 | RHD4CZ4L014ST2300 SS, RHD4CZ4L014ST2300 FF, RHD4CZ4L014ST2200 |  |  |  |  | -150.02d | 2d | Skilled labor [4 h]; Unskilled Labor [4 h]; Equipment Opreator [4.47 h]; Concrete Mixer Truck [0.44 h]; Dump Truck [4 h]; Pipe Encasement - ST [74.22 m3] | 37,555.32 |  | L014 | Z4 | CONS | ST | Pipe Encasement | bef |
|  | 2435 | **RHD4-02-002-Z4-L014-Catch Basin - ST** |  | 2026-10-24 | 2027-05-13 |  |  |  |  |  |  |  |  |  |  |  |  |  |  |  |  |
|  | 2436 | **RHD4-02-002-L014-(ST)-Single Catch Basin Works** |  | 2026-10-24 | 2027-05-11 |  |  |  |  |  |  |  |  |  |  |  |  |  |  |  |  |
| RHD4CZ4L014ST7100 |  | Excavation works for Single Catch Basin - (RD-L-14)-Z4-L014-ST | 5d | 2026-10-24 A | 2027-04-12 | RHD4CZ4L014ST3300, RHD4CZ4L014ST3301, RHD4ENSDZ4APPST110 | 5% | 5d | 2026-10-27 | 2026-11-01 | -146.02d | 0d | Skilled labor [44.65 h]; Unskilled Labor [89.3 h]; Equipment Opreator [66.98 h]; Excavator-Poclain [44.65 h]; Dump Truck [22.33 h]; Single Catch basin - ST [10.25 nr] | 38,242.75 | 933.12 | L014 | Z4 | CONS | ST | Excavation | bef |
| RHD4CZ4L014ST7200 |  | PC Blinding, Installation and Pipe connection for Single Catch Basin - (RD-L-14)-Z4-L014-ST | 5d | 2026-10-25 A | 2027-04-18 | RHD4CZ4L014ST7100 | 2% | 5d | 2026-10-29 | 2026-11-03 | -146.02d | 0d | Skilled labor [44.65 h]; Unskilled Labor [89.3 h]; Plumber [22.33 h]; Equipment Opreator [8.93 h]; Boom Truck [8.93 h]; Single Catch basin - ST [8.2 nr] | 30,594.2 | 746.5 | L014 | Z4 | CONS | ST | Installation & Pipe Connection | bef |
| RHD4CZ4L014ST7300 |  | Rings & C.Slab & Final Backfill for Single Catch Basin - (RD-L-14)-Z4-L014-ST | 6d | 2026-10-27 A | 2027-04-25 | RHD4CZ4L014ST7200, RHD4PRSHLDOSST1303, RHD4PRSHLSTAGST1303 | 3% | 6d | 2026-10-31 | 2026-11-05 | -146.02d | 0d | Skilled labor [55.87 h]; Unskilled Labor [111.63 h]; Equipment Opreator [66.98 h]; Boom Truck [11.11 h]; Bobcat [55.87 h]; Single Catch basin - ST [14.35 nr] | 53,539.85 | 1,306.37 | L014 | Z4 | CONS | ST | Rings | bef |
| RHD4CZ4L014ST7400 |  | Steel Cover for Single Catch Basin - (RD-L-14)-Z4-L014-ST | 5d | 2027-04-25 | 2027-05-01 | RHD4CZ4L014ST7300, RHD4PRSHLDOSST1703 |  |  |  |  | -146.02d | 0d | Skilled labor [44.65 h]; Unskilled Labor [44.65 h]; Equipment Opreator [8.93 h]; Boom Truck [8.93 h]; Single Catch basin - ST [2.05 nr] | 7,648.55 |  | L014 | Z4 | CONS | ST | Steel Cover | bef |
| RHD4CZ4L014ST7500 |  | Finishing and Insulation works for Single Catch Basin - (RD-L-14)-Z4-L014-ST | 9d | 2027-05-01 | 2027-05-11 | RHD4CZ4L014ST7400 |  |  |  |  | -146.02d | 0d | Skilled labor [89.3 h]; Unskilled Labor [178.6 h]; Equipment Opreator [17.86 h]; Boom Truck [17.86 h]; Single Catch basin - ST [6.15 nr] | 22,945.65 |  | L014 | Z4 | CONS | ST | Insulation | bef |
|  | 2437 | **RHD4-02-002-L014-(ST)-Double Catch Basin Works** |  | 2027-04-12 | 2027-05-13 |  |  |  |  |  |  |  |  |  |  |  |  |  |  |  |  |
| RHD4CZ4L014ST8100 |  | Excavation works for Double Catch Basin - (RD-L-14)-Z4-L014-ST | 2d | 2027-04-12 | 2027-04-14 | RHD4CZ4L014ST7100, RHD4CZ4L014ST3300, RHD4CZ4L014ST3301, RHD4ENSDZ4APPST110 |  |  |  |  | -129.02d | 3d | Skilled labor [4.36 h]; Unskilled Labor [8.71 h]; Equipment Opreator [6.53 h]; Excavator-Poclain [4.36 h]; Dump Truck [2.18 h]; Double Catch basin - ST [0.5 nr] | 6,983 |  | L014 | Z4 | CONS | ST | Excavation | bef |
| RHD4CZ4L014ST8200 |  | PC Blinding, Installation and Pipe connection for Double Catch Basin - (RD-L-14)-Z4-L014-ST | 2d | 2027-04-18 | 2027-04-20 | RHD4CZ4L014ST8100, RHD4CZ4L014ST7200 |  |  |  |  | -132.02d | 4d | Skilled labor [4.36 h]; Unskilled Labor [8.71 h]; Plumber [2.18 h]; Equipment Opreator [0.87 h]; Boom Truck [0.87 h]; Double Catch basin - ST [0.4 nr] | 5,586.4 |  | L014 | Z4 | CONS | ST | Installation & Pipe Connection | bef |
| RHD4CZ4L014ST8300 |  | Rings & C.Slab & Final Backfillfor Double Catch Basin - (RD-L-14)-Z4-L014-ST | 2d | 2027-04-25 | 2027-04-27 | RHD4CZ4L014ST8200, RHD4CZ4L014ST7300, RHD4PRSHLDOSST1303, RHD4PRSHLSTAGST1303 |  |  |  |  | -136.02d | 3d | Skilled labor [5.45 h]; Unskilled Labor [10.89 h]; Equipment Opreator [6.53 h]; Boom Truck [1.09 h]; Bobcat [5.45 h]; Double Catch basin - ST [0.7 nr] | 9,776.2 |  | L014 | Z4 | CONS | ST | Rings | bef |
| RHD4CZ4L014ST8400 |  | Steel Cover for Double Catch Basin - (RD-L-14)-Z4-L014-ST | 2d | 2027-05-01 | 2027-05-03 | RHD4CZ4L014ST8300, RHD4CZ4L014ST7400, RHD4PRSHLDOSST1703 |  |  |  |  | -139.02d | 7d | Skilled labor [4.36 h]; Unskilled Labor [4.36 h]; Equipment Opreator [0.87 h]; Boom Truck [0.87 h]; Double Catch basin - ST [0.1 nr] | 1,396.6 |  | L014 | Z4 | CONS | ST | Steel Cover | bef |
| RHD4CZ4L014ST8500 |  | Finishing and Insulation works for Double Catch Basin - (RD-L-14)-Z4-L014-ST | 2d | 2027-05-11 | 2027-05-13 | RHD4CZ4L014ST8400, RHD4CZ4L014ST7500 |  |  |  |  | -146.02d | 12.98d | Skilled labor [10.89 h]; Unskilled Labor [21.78 h]; Equipment Opreator [2.18 h]; Boom Truck [2.18 h]; Double Catch basin - ST [0.3 nr] | 4,189.8 |  | L014 | Z4 | CONS | ST | Insulation | bef |
|  | 2460 | **RHD4-02-002-Z4-L014-Sewage Network - SW** |  | 2026-08-11 | 2027-06-22 |  |  |  |  |  |  |  |  |  |  |  |  |  |  |  |  |
|  | 5307 | **RHD4-02-002-L014-(SW)-MH Works - 1200 mm diameter** |  | 2026-08-15 | 2027-06-22 |  |  |  |  |  |  |  |  |  |  |  |  |  |  |  |  |
| RHD4CZ4L014SW3100 |  | Excavation and PC Blinding works for MH 1200 mm - (RD-L-14)-Z4-L014-SW | 10d | 2026-08-15 A | 2027-04-22 | RHD4CZ4L014ST2100 | 70% | 10d | 2026-11-05 | 2026-11-16 | -137.02d | 0d | Skilled labor [107.05 h]; Unskilled Labor [107.05 h]; Equipment Opreator [171.31 h]; Excavator-Poclain [107.05 h]; Water Truck [10.67 h]; Dump Truck [53.6 h]; MH (1200mm Diameter) - SW - depth 0 - 1.5m [1.75 nr]; MH (1200mm Diameter) - SW - depth 1.51 - 2.5m [0.75 nr]; MH (1200mm Diameter) - SW - depth 2.51 - 3.5m [2.25 nr]; MH (1200mm Diameter) - SW - depth 3.51 -4.5m [0.75 nr] | 58,227.75 |  | L014 | Z4 | CONS | SW | Excavation | bef |
| RHD4CZ4L014SW3200 |  | Installation of Base for MH 1200 mm - (RD-L-14)-Z4-L014-SW | 17d | 2026-09-20 A | 2027-04-28 | RHD4CZ4L014SW3100 | 23% | 5d | 2026-11-17 | 2026-12-06 | -137.02d | 0d | Skilled labor [185.14 h]; Unskilled Labor [185.14 h]; Equipment Opreator [74.05 h]; Boom Truck [37.03 h]; Concrete Mixer Truck [37.03 h]; MH (1200mm Diameter) - SW - depth 0 - 1.5m [1.75 nr]; MH (1200mm Diameter) - SW - depth 1.51 - 2.5m [0.75 nr]; MH (1200mm Diameter) - SW - depth 2.51 - 3.5m [2.25 nr]; MH (1200mm Diameter) - SW - depth 3.51 -4.5m [0.75 nr] | 58,227.75 | 13,526.31 | L014 | Z4 | CONS | SW | Installing Base | bef |
| RHD4CZ4L014SW3300 |  | MH Ring and C.Slab works and Backfilling works for MH 1200 mm - (RD-L-14)-Z4-L014-SW | 17d | 2027-04-28 | 2027-05-23 | RHD4CZ4L014SW3200 |  |  |  |  | -137.02d | 0d | Skilled labor [185.14 h]; Unskilled Labor [185.14 h]; Equipment Opreator [129.6 h]; Boom Truck [74.05 h]; Concrete Mixer Truck [55.54 h]; MH (1200mm Diameter) - SW - depth 0 - 1.5m [2.45 nr]; MH (1200mm Diameter) - SW - depth 1.51 - 2.5m [1.05 nr]; MH (1200mm Diameter) - SW - depth 2.51 - 3.5m [3.15 nr]; MH (1200mm Diameter) - SW - depth 3.51 -4.5m [1.05 nr] | 81,518.85 |  | L014 | Z4 | CONS | SW | Installing Rings | bef |
| RHD4CZ4L014SW3400 |  | Steel Cover for MH 1200 mm - (RD-L-14)-Z4-L014-SW | 8d | 2027-05-23 | 2027-06-01 | RHD4CZ4L014SW3300 |  |  |  |  | -137.02d | 1d | Skilled labor [79.83 h]; Unskilled Labor [159.76 h]; Equipment Opreator [16 h]; Boom Truck [16 h]; MH (1200mm Diameter) - SW - depth 0 - 1.5m [0.35 nr]; MH (1200mm Diameter) - SW - depth 1.51 - 2.5m [0.15 nr]; MH (1200mm Diameter) - SW - depth 2.51 - 3.5m [0.45 nr]; MH (1200mm Diameter) - SW - depth 3.51 -4.5m [0.15 nr] | 11,645.55 |  | L014 | Z4 | CONS | SW | Steel Cover | bef |
| RHD4CZ4L014SW3500 |  | Finishing, Benching, Testing works for MH 1200 mm - (RD-L-14)-Z4-L014-SW | 17d | 2027-06-02 | 2027-06-22 | RHD4CZ4L014SW1500, RHD4CZ4L014IRR3202, RHD4CZ4L014SW3400 |  |  |  |  | -138.02d | 48d | Skilled labor [185.14 h]; Unskilled Labor [370.27 h]; Plumber [185.14 h]; Equipment Opreator [37.03 h]; Water Truck [37.03 h]; MH (1200mm Diameter) - SW - depth 0 - 1.5m [0.7 nr]; MH (1200mm Diameter) - SW - depth 1.51 - 2.5m [0.3 nr]; MH (1200mm Diameter) - SW - depth 2.51 - 3.5m [0.9 nr]; MH (1200mm Diameter) - SW - depth 3.51 -4.5m [0.3 nr] | 23,291.1 |  | L014 | Z4 | CONS | SW | Benching | bef |

| ID | WBS | Activity | Duration | Start | Finish | Predecessors | Complete | Remaining | Planned start | Planned finish | Total float | Free float | Resources | Cost | Actual cost | RDH4-01-001-Road and Block Names-1 | RDH4-01-001-Zones-1 | RDH4-01-001-Phases-1 | RDH4-01-001-Networks-1 | RDH4-01-001-Work Method-1 | RDH4-01-001-MENEM |
| --- | --- | --- | --- | --- | --- | --- | --- | --- | --- | --- | --- | --- | --- | --- | --- | --- | --- | --- | --- | --- | --- |
|  | 1325 | **RHD4-02-002-L014-(SW)-GRP Pipes - 300 mm diameter** |  | 2026-08-11 | 2027-05-12 |  |  |  |  |  |  |  |  |  |  |  |  |  |  |  |  |
| RHD4CZ4L014SW1100 |  | Excavation works for GRP Pipe Line 300 mm - (RD-L-14)-Z4-L014-SW | 9d | 2026-08-11 A | 2026-08-15 A | RHD4CZ4L014ST2100 | 100% |  | 2026-11-05 | 2026-11-15 |  |  | Skilled labor [94.09 h]; Unskilled Labor [94.09 h]; Equipment Opreator [112.8 h]; Excavator-Poclain [94.09 h]; Dump Truck [18.84 h]; GRP (300mm Diameter) - SW - Depth: 1.51m - 2.5m [70.72 m]; GRP (300mm Diameter) - SW - Depth: 2.51m - 3.5m [123.62 m]; GRP (300mm Diameter) - SW - Depth: 3.51m - 4.5m [14.81 m] | 81,880.45 | 81,880.45 | L014 | Z4 | CONS | SW | Excavation | bef |
| RHD4CZ4L014SW1200 |  | Bedding works for GRP Pipe Line 300 mm - (RD-L-14)-Z4-L014-SW | 9d | 2026-08-12 A | 2026-08-17 A | RHD4CZ4L014SW1100 | 100% |  | 2026-11-16 | 2026-11-25 |  |  | Skilled labor [94.09 h]; Unskilled Labor [188.08 h]; Equipment Opreator [188.08 h]; Excavator-Poclain [94.09 h]; Dump Truck [94.09 h]; GRP (300mm Diameter) - SW - Depth: 1.51m - 2.5m [23.57 m]; GRP (300mm Diameter) - SW - Depth: 2.51m - 3.5m [41.21 m]; GRP (300mm Diameter) - SW - Depth: 3.51m - 4.5m [4.94 m] | 27,295.51 | 27,295.51 | L014 | Z4 | CONS | SW | Bedding | bef |
| RHD4CZ4L014SW1300 |  | Installing for GRP Pipe Line 300 mm - (RD-L-14)-Z4-L014-SW | 9d | 2026-08-15 A | 2026-09-16 A | RHD4CZ4L014SW1200 | 100% |  | 2026-11-26 | 2026-12-06 |  |  | Unskilled Labor [188.08 h]; Plumber [94.09 h]; Equipment Opreator [94.09 h]; Boom Truck [94.09 h]; GRP (300mm Diameter) - SW - Depth: 1.51m - 2.5m [188.6 m]; GRP (300mm Diameter) - SW - Depth: 2.51m - 3.5m [429.66 m]; GRP (300mm Diameter) - SW - Depth: 3.51m - 4.5m [39.5 m] | 259,158.58 | 259,158.58 | L014 | Z4 | CONS | SW | Installation | bef |
| RHD4CZ4L014SW1400 |  | Primary Test for GRP Pipe Line 300 mm - (RD-L-14)-Z4-L014-SW | 9d | 2027-04-11 | 2027-04-21 | RHD4CZ4L014SW1300 |  |  |  |  | -115.02d | 9d | Unskilled Labor [94.09 h]; Plumber [94.09 h]; Equipment Opreator [94.09 h]; Water Truck [94.09 h]; GRP (300mm Diameter) - SW - Depth: 1.51m - 2.5m [94.3 m]; GRP (300mm Diameter) - SW - Depth: 2.51m - 3.5m [164.83 m]; GRP (300mm Diameter) - SW - Depth: 3.51m - 4.5m [19.75 m] | 109,179.29 |  | L014 | Z4 | CONS | SW | Primary Test | bef |
| RHD4CZ4L014SW1500 |  | Backfilling and warning tape works for GRP Pipe Line 300 mm - (RD-L-14)-Z4-L014-SW | 9d | 2027-05-02 | 2027-05-12 | RHD4CZ4L014SW3501, RHD4CZ4L014SW1400 |  |  |  |  | -124.02d | 14d | Skilled labor [94.09 h]; Unskilled Labor [188.08 h]; Equipment Opreator [188.08 h]; Excavator-Poclain [94.09 h]; Dump Truck [94.09 h]; GRP (300mm Diameter) - SW - Depth: 1.51m - 2.5m [94.3 m]; GRP (300mm Diameter) - SW - Depth: 2.51m - 3.5m [164.83 m]; GRP (300mm Diameter) - SW - Depth: 3.51m - 4.5m [19.75 m] | 109,179.29 |  | L014 | Z4 | CONS | SW | Backfilling | bef |
|  | 957 | **RHD4-02-002-L014-(SW)-MH Works - 1200 mm diameter with Back drop** |  | 2026-08-15 | 2027-05-02 |  |  |  |  |  |  |  |  |  |  |  |  |  |  |  |  |
| RHD4CZ4L014SW3101 |  | Excavation and PC Blinding works for MH 1200 mm - (RD-L-14)-Z4-L014-SW | 4d | 2026-08-15 A | 2026-08-18 A | RHD4CZ4L014ST2100 | 100% |  | 2026-11-05 | 2026-11-09 |  |  | Skilled labor [38.12 h]; Unskilled Labor [38.12 h]; Equipment Opreator [60.99 h]; Excavator-Poclain [38.12 h]; Water Truck [3.81 h]; Dump Truck [19.06 h]; MH (1200mm Diameter) - SW - depth 1.51- 2.5 m with back drop; MH (1200mm Diameter) - SW - depth 2.51- 3.5 m with back drop [1 nr]; MH (1200mm Diameter) - SW - depth 3.51 -4.5 m with back drop [0.5 nr]; MH (1200mm Diameter) - SW - depth 4.51-5.5 m with back drop [0.25 nr] | 29,843 | 29,843 | L014 | Z4 | CONS | SW | Excavation | bef |
| RHD4CZ4L014SW3201 |  | Installation of Base for MH 1200 mm - (RD-L-14)-Z4-L014-SW | 5d | 2026-08-17 A | 2027-04-17 | RHD4CZ4L014SW3101 | 30% | 5d | 2026-11-10 | 2026-11-15 | -124.02d | 0d | Skilled labor [54.45 h]; Unskilled Labor [54.45 h]; Equipment Opreator [21.78 h]; Boom Truck [10.89 h]; Concrete Mixer Truck [10.89 h]; MH (1200mm Diameter) - SW - depth 1.51- 2.5 m with back drop; MH (1200mm Diameter) - SW - depth 2.51- 3.5 m with back drop [1 nr]; MH (1200mm Diameter) - SW - depth 3.51 -4.5 m with back drop [0.5 nr]; MH (1200mm Diameter) - SW - depth 4.51-5.5 m with back drop [0.25 nr] | 29,843 | 8,952.9 | L014 | Z4 | CONS | SW | Installing Base | bef |
| RHD4CZ4L014SW3301 |  | MH Ring and C.Slab works and Backfilling works for MH 1200 mm - (RD-L-14)-Z4-L014-SW | 5d | 2027-04-17 | 2027-04-22 | RHD4CZ4L014SW3201 |  |  |  |  | -124.02d | 0d | Skilled labor [54.45 h]; Unskilled Labor [54.45 h]; Equipment Opreator [38.12 h]; Boom Truck [21.78 h]; Concrete Mixer Truck [16.34 h]; MH (1200mm Diameter) - SW - depth 1.51- 2.5 m with back drop; MH (1200mm Diameter) - SW - depth 2.51- 3.5 m with back drop [1.4 nr]; MH (1200mm Diameter) - SW - depth 3.51 -4.5 m with back drop [0.7 nr]; MH (1200mm Diameter) - SW - depth 4.51-5.5 m with back drop [0.35 nr] | 41,780.2 |  | L014 | Z4 | CONS | SW | Installing Rings | bef |
| RHD4CZ4L014SW3401 |  | Steel Cover for MH 1200 mm - (RD-L-14)-Z4-L014-SW | 3d | 2027-04-22 | 2027-04-26 | RHD4CZ4L014SW3301 |  |  |  |  | -124.02d | 0d | Skilled labor [25.37 h]; Unskilled Labor [50.86 h]; Equipment Opreator [5.12 h]; Boom Truck [5.12 h]; MH (1200mm Diameter) - SW - depth 1.51- 2.5 m with back drop; MH (1200mm Diameter) - SW - depth 2.51- 3.5 m with back drop [0.2 nr]; MH (1200mm Diameter) - SW - depth 3.51 -4.5 m with back drop [0.1 nr]; MH (1200mm Diameter) - SW - depth 4.51-5.5 m with back drop [0.05 nr] | 5,968.6 |  | L014 | Z4 | CONS | SW | Steel Cover | bef |
| RHD4CZ4L014SW3501 |  | Finishing, Benching, Testing works for MH 1200 mm - (RD-L-14)-Z4-L014-SW | 5d | 2027-04-26 | 2027-05-02 | RHD4CZ4L014SW2500, RHD4CZ4L014SW3401 |  |  |  |  | -124.02d | 0d | Skilled labor [54.45 h]; Unskilled Labor [108.9 h]; Plumber [54.45 h]; Equipment Opreator [10.89 h]; Water Truck [10.89 h]; MH (1200mm Diameter) - SW - depth 1.51- 2.5 m with back drop; MH (1200mm Diameter) - SW - depth 2.51- 3.5 m with back drop [0.4 nr]; MH (1200mm Diameter) - SW - depth 3.51 -4.5 m with back drop [0.2 nr]; MH (1200mm Diameter) - SW - depth 4.51-5.5 m with back drop [0.1 nr] | 11,937.2 |  | L014 | Z4 | CONS | SW | Benching | bef |
|  | 2464 | **RHD4-02-002-L014-(SW)-GRP Pipes - 600 mm diameter** |  |  |  |  |  |  |  |  |  |  |  |  |  |  |  |  |  |  |  |
|  | 2463 | **RHD4-02-002-L014-(SW)-GRP Pipes - 500 mm diameter** |  |  |  |  |  |  |  |  |  |  |  |  |  |  |  |  |  |  |  |
|  | 2466 | **RHD4-02-002-L014-(SW)-UPVC Pipes - 200 mm diameter** |  | 2026-08-11 | 2027-04-25 |  |  |  |  |  |  |  |  |  |  |  |  |  |  |  |  |
| RHD4CZ4L014SW2100 |  | Excavation works for UPVC Pipe Line 200 mm - (RD-L-14)-Z4-L014-SW | 2d | 2026-08-11 A | 2027-04-13 | RHD4ENSDZ4APPSW120, RHD4CZ4L014ST2100 | 91% | 2d | 2026-11-05 | 2026-11-07 | -123.02d | 0d | Skilled labor [19.93 h]; Unskilled Labor [19.93 h]; Equipment Opreator [23.85 h]; Excavator-Poclain [19.93 h]; Dump Truck [4 h]; UPVC (200mm Diameter) - SW - Depth: less than 1.5m [18.45 m]; UPVC (200mm Diameter) - SW - Depth: 1.51m - 2.5m [26.77 m]; UPVC (200mm Diameter) - SW - Depth: 2.51m - 3.5m [4.4 m] | 10,476.49 | 9,517.35 | L014 | Z4 | CONS | SW | Excavation | bef |
| RHD4CZ4L014SW2200 |  | Bedding works for UPVC Pipe Line 200 mm - (RD-L-14)-Z4-L014-SW | 2d | 2026-08-13 A | 2027-04-15 | RHD4CZ4L014SW2100 | 92% | 2d | 2026-11-08 | 2026-11-09 | -123.02d | 0d | Skilled labor [18.51 h]; Unskilled Labor [37.14 h]; Equipment Opreator [37.14 h]; Excavator-Poclain [18.51 h]; Dump Truck [18.51 h]; UPVC (200mm Diameter) - SW - Depth: less than 1.5m [9.22 m]; UPVC (200mm Diameter) - SW - Depth: 1.51m - 2.5m [8.92 m]; UPVC (200mm Diameter) - SW - Depth: 2.51m - 3.5m [1.47 m] | 4,045.06 | 3,715.22 | L014 | Z4 | CONS | SW | Bedding | bef |
| RHD4CZ4L014SW2300 |  | Installing for UPVC Pipe Line 200 mm - (RD-L-14)-Z4-L014-SW | 3d | 2026-09-15 A | 2027-04-19 | RHD4CZ4L014SW2200, RHD4PRSHLDOSSW1003, RHD4PRSHLSTAGSW1003 | 92% | 3d | 2026-11-10 | 2026-11-12 | -123.02d | 0d | Unskilled Labor [50.53 h]; Plumber [25.27 h]; Equipment Opreator [25.27 h]; Boom Truck [25.27 h]; UPVC (200mm Diameter) - SW - Depth: less than 1.5m [83 m]; UPVC (200mm Diameter) - SW - Depth: 1.51m - 2.5m [71.4 m]; UPVC (200mm Diameter) - SW - Depth: 2.51m - 3.5m [11.74 m] | 34,026.24 | 31,465.64 | L014 | Z4 | CONS | SW | Installation | bef |
| RHD4CZ4L014SW2500 |  | Backfilling and warning tape works for UPVC Pipe Line 200 mm - (RD-L-14)-Z4-L014-SW | 3d | 2026-09-24 A | 2027-04-25 | RHD4CZ4L014SW2400 | 92% | 3d | 2026-09-24 | 2026-09-27 | -123.02d | 1d | Skilled labor [21.89 h]; Unskilled Labor [43.78 h]; Equipment Opreator [43.78 h]; Excavator-Poclain [21.89 h]; Dump Truck [21.89 h]; UPVC (200mm Diameter) - SW - Depth: less than 1.5m [36.89 m]; UPVC (200mm Diameter) - SW - Depth: 1.51m - 2.5m [35.7 m]; UPVC (200mm Diameter) - SW - Depth: 2.51m - 3.5m [5.87 m] | 16,183.32 | 14,946.42 | L014 | Z4 | CONS | SW | Backfilling | bef |
| RHD4CZ4L014SW2400 |  | Primary Test for UPVC Pipe Line 200 mm - (RD-L-14)-Z4-L014-SW | 2d | 2027-04-19 | 2027-04-21 | RHD4CZ4L014SW2300 |  |  |  |  | -123.02d | 0d | Unskilled Labor [12.09 h]; Plumber [12.09 h]; Equipment Opreator [12.09 h]; Water Truck [12.09 h]; UPVC (200mm Diameter) - SW - Depth: less than 1.5m [36.89 m]; UPVC (200mm Diameter) - SW - Depth: 1.51m - 2.5m [35.7 m]; UPVC (200mm Diameter) - SW - Depth: 2.51m - 3.5m [5.87 m] | 16,183.32 |  | L014 | Z4 | CONS | SW | Primary Test | bef |
|  | 2469 | **RHD4-02-002-L014-(SW)-Concrete Encasement** |  |  |  |  |  |  |  |  |  |  |  |  |  |  |  |  |  |  |  |
|  | 2497 | **RHD4-02-002-Z4-L014-Potable Network - PT** |  | 2027-05-03 | 2027-08-05 |  |  |  |  |  |  |  |  |  |  |  |  |  |  |  |  |
|  | 2498 | **RHD4-02-002-L014-(PT)-HDPE Pipes - 110 mm diameter** |  | 2027-05-03 | 2027-05-19 |  |  |  |  |  |  |  |  |  |  |  |  |  |  |  |  |
| RHD4CZ4L014PT1100 |  | Excavation works for HDPE Pipline 110 mm - (RD-L-14)-Z4-L014-PT | 2d | 2027-05-03 | 2027-05-05 | RHD4CZ4C031PT1503, RHD4ENSDZ4APPPT130, RHD4ENMSPT2000 |  |  |  |  | -170.02d | 0d | Skilled labor [6.97 h]; Unskilled Labor [6.97 h]; Equipment Opreator [8.28 h]; Excavator-Poclain [6.97 h]; Dump Truck [1.42 h]; HDPE (110mm Diameter) - PT - Depth: less than 1.5m [15.92 m] | 1,353.2 |  | L014 | Z4 | CONS | PT | Excavation | bef |
| RHD4CZ4L014PT1200 |  | Bedding works for HDPE Pipline 110 mm - (RD-L-14)-Z4-L014-PT | 2d | 2027-05-05 | 2027-05-08 | RHD4CZ4L014PT1100 |  |  |  |  | -128.02d | 0d | Skilled labor [5.77 h]; Unskilled Labor [11.54 h]; Equipment Opreator [11.54 h]; Excavator-Poclain [5.77 h]; Dump Truck [5.77 h]; HDPE (110mm Diameter) - PT - Depth: less than 1.5m [7.96 m] | 676.6 |  | L014 | Z4 | CONS | PT | Bedding | bef |
| RHD4CZ4L014PT1300 |  | Installing for HDPE Pipline 110 mm - (RD-L-14)-Z4-L014-PT | 2d | 2027-05-08 | 2027-05-10 | RHD4CZ4L014PT1200, RHD4PRSHLDOSPT1000, RHD4PRSHLSTAGPT1000 |  |  |  |  | -128.02d | 0d | Unskilled Labor [23.09 h]; Plumber [11.54 h]; Equipment Opreator [11.54 h]; Boom Truck [11.54 h]; HDPE (110mm Diameter) - PT - Depth: less than 1.5m [71.64 m] | 6,089.4 |  | L014 | Z4 | CONS | PT | Installation | bef |
| RHD4CZ4L014PT1400 |  | Primary Test for HDPE Pipline 110 mm - (RD-L-14)-Z4-L014-PT | 2d | 2027-05-10 | 2027-05-12 | RHD4CZ4L014PT1300 |  |  |  |  | -128.02d | 0d | Unskilled Labor [3.48 h]; Plumber [3.48 h]; Equipment Opreator [3.48 h]; Water Truck [3.48 h]; HDPE (110mm Diameter) - PT - Depth: less than 1.5m [31.84 m] | 2,706.4 |  | L014 | Z4 | CONS | PT | Primary Test | bef |
| RHD4CZ4L014PT1500 |  | Backfilling and warning tape works for HDPE Pipline 110 mm - (RD-L-14)-Z4-L014-PT | 2d | 2027-05-12 | 2027-05-19 | RHD4CZ4L014PT1400, RHD4CZ4L014ST1505 |  |  |  |  | -128.02d | 10d | Skilled labor [8.71 h]; Unskilled Labor [17.32 h]; Equipment Opreator [17.32 h]; Excavator-Poclain [8.71 h]; Dump Truck [8.71 h]; HDPE (110mm Diameter) - PT - Depth: less than 1.5m [31.84 m] | 2,706.4 |  | L014 | Z4 | CONS | PT | Backfilling | bef |

| ID | WBS | Activity | Duration | Start | Finish | Predecessors | Total float | Free float | Resources | Cost | RDH4-01-001-Road and Block Names-1 | RDH4-01-001-Zones-1 | RDH4-01-001-Phases-1 | RDH4-01-001-Networks-1 | RDH4-01-001-Work Method-1 | RDH4-01-001-MENEM |
| --- | --- | --- | --- | --- | --- | --- | --- | --- | --- | --- | --- | --- | --- | --- | --- | --- |
|  | 2499 | **RHD4-02-002-L014-(PT)-HDPE Pipes - 160 mm diameter** |  | 2027-05-05 | 2027-07-01 |  |  |  |  |  |  |  |  |  |  |  |
| RHD4CZ4L014PT1101 |  | Excavation works for HDPE Pipline 160 mm - (RD-L-14)-Z4-L014-PT | 9d | 2027-05-05 | 2027-05-20 | RHD4ENSDZ4APPPT130, RHD4ENMSPT2000, RHD4CZ4L014PT1100 | -149.02d | 0d | Skilled labor [88.87 h]; Unskilled Labor [88.87 h]; Equipment Opreator [106.73 h]; Excavator-Poclain [88.87 h]; Dump Truck [17.75 h]; HDPE (160mm Diameter) - PT - Depth: less than 1.5m; HDPE (160mm Diameter) - PT - Depth: 1.51m - 2.5m [63.57 m]; HDPE (160mm Diameter) - PT - Depth: more than 2.5m [123.75 m] | 33,900.69 | L014 | Z4 | CONS | PT | Excavation | bef |
| RHD4CZ4L014PT1201 |  | Bedding works for HDPE Pipline 160 mm - (RD-L-14)-Z4-L014-PT | 9d | 2027-05-20 | 2027-05-31 | RHD4CZ4L014PT1101 | -148.02d | 0d | Skilled labor [88.87 h]; Unskilled Labor [177.84 h]; Equipment Opreator [177.84 h]; Excavator-Poclain [88.87 h]; Dump Truck [88.87 h]; HDPE (160mm Diameter) - PT - Depth: less than 1.5m; HDPE (160mm Diameter) - PT - Depth: 1.51m - 2.5m [21.19 m]; HDPE (160mm Diameter) - PT - Depth: more than 2.5m [41.25 m] | 11,300.23 | L014 | Z4 | CONS | PT | Bedding | bef |
| RHD4CZ4L014PT1301 |  | Installing for HDPE Pipline 160 mm - (RD-L-14)-Z4-L014-PT | 9d | 2027-05-31 | 2027-06-10 | RHD4CZ4L014PT1201, RHD4PRSHLDOSPT1000, RHD4PRSHLSTAGPT1000 | -148.02d | 0d | Unskilled Labor [177.84 h]; Plumber [88.87 h]; Equipment Opreator [88.87 h]; Boom Truck [88.87 h]; HDPE (160mm Diameter) - PT - Depth: less than 1.5m; HDPE (160mm Diameter) - PT - Depth: 1.51m - 2.5m [169.53 m]; HDPE (160mm Diameter) - PT - Depth: more than 2.5m [330 m] | 90,403.26 | L014 | Z4 | CONS | PT | Installation | bef |
| RHD4CZ4L014PT1401 |  | Primary Test for HDPE Pipline 160 mm - (RD-L-14)-Z4-L014-PT | 9d | 2027-06-10 | 2027-06-21 | RHD4CZ4L014PT1301 | -138.02d | 0d | Unskilled Labor [88.87 h]; Plumber [88.87 h]; Equipment Opreator [88.87 h]; Water Truck [88.87 h]; HDPE (160mm Diameter) - PT - Depth: less than 1.5m; HDPE (160mm Diameter) - PT - Depth: 1.51m - 2.5m [84.76 m]; HDPE (160mm Diameter) - PT - Depth: more than 2.5m [165 m] | 45,200.92 | L014 | Z4 | CONS | PT | Primary Test | bef |
| RHD4CZ4L014PT1501 |  | Backfilling and warning tape works for HDPE Pipline 160 mm - (RD-L-14)-Z4-L014-PT | 9d | 2027-06-21 | 2027-07-01 | RHD4CZ4L014PT1401 | -138.02d | 0d | Skilled labor [88.87 h]; Unskilled Labor [177.84 h]; Equipment Opreator [177.84 h]; Excavator-Poclain [88.87 h]; Dump Truck [88.87 h]; HDPE (160mm Diameter) - PT - Depth: less than 1.5m; HDPE (160mm Diameter) - PT - Depth: 1.51m - 2.5m [84.76 m]; HDPE (160mm Diameter) - PT - Depth: more than 2.5m [165 m] | 45,200.92 | L014 | Z4 | CONS | PT | Backfilling | bef |
|  | 2503 | **RHD4-02-002-L014-(PT)-Gate Valves (Direct Buried)** |  | 2027-06-07 | 2027-07-05 |  |  |  |  |  |  |  |  |  |  |  |
| RHD4CZ4L014PT3100 |  | Installation for Direct Buried Gate Valves - (RD-L-14)-Z4-L014-PT | 3d | 2027-06-07 | 2027-06-10 | RHD4CZ4L014PT1301 FF, RHD4CZ4L014PT1301 SS, RHD4PRSHLDOSPT1200, RHD4PRSHLSTAGPT1200 | -148.02d | 18d | Unskilled Labor [32.67 h]; Plumber [32.67 h]; Gate valves dia 100 mm - PT [4.5 nr]; Gate valves dia 150 mm - PT [0.9 nr] | 6,412.5 | L014 | Z4 | CONS | PT | Installation | bef |
| RHD4CZ4L014PT3200 |  | Stem and Service box for Direct Buried Gate Valves - (RD-L-14)-Z4-L014-PT | 3d | 2027-07-01 | 2027-07-05 | RHD4CZ4L014PT3100, RHD4CZ4L014PT1501 | -121.02d | 17d | Unskilled Labor [32.67 h]; Plumber [32.67 h]; Gate valves dia 100 mm - PT [0.5 nr]; Gate valves dia 150 mm - PT [0.1 nr] | 712.5 | L014 | Z4 | CONS | PT | Stem and Service box | bef |
|  | 2506 | **RHD4-02-002-L014-(PT)-Wash out Valve Chambers** |  | 2027-05-05 | 2027-05-19 |  |  |  |  |  |  |  |  |  |  |  |
| RHD4CZ4L014PT2101 |  | Excavation and Bedding for Wash out Valve Chambers for Potable Water Network - (RD-L-14)-Z4-L014-PT | 2d | 2027-05-05 | 2027-05-08 | RHD4ENSDZ4APPPT130, RHD4CZ4L014PT1100 | -149.02d | 0d | Skilled labor [10.89 h]; Unskilled Labor [10.89 h]; Equipment Opreator [2.18 h]; Excavator-Poclain [1.09 h]; Dump Truck [1.09 h]; Wash out chambers - PT [0.5 nr] | 9,372.5 | L014 | Z4 | CONS | PT | Excavation and Bedding | bef |
| RHD4CZ4L014PT2201 |  | PC works for Wash out Valve Chambers for Potable Water Network - (RD-L-14)-Z4-L014-PT | 2d | 2027-05-08 | 2027-05-10 | RHD4CZ4L014PT2101 | -138.02d | 0d | Skilled labor [10.89 h]; Unskilled Labor [21.78 h]; Equipment Opreator [1.09 h]; Concrete Pump [1.09 h]; Wash out chambers - PT [0.2 nr] | 3,749 | L014 | Z4 | CONS | PT | PC Works | bef |
| RHD4CZ4L014PT2301 |  | Installation for Wash out Valve Chambers for Potable Water Network - (RD-L-14)-Z4-L014-PT | 2d | 2027-05-10 | 2027-05-12 | RHD4CZ4L014PT2201, RHD4PRSHLDOSPT1100, RHD4PRSHLDOSPT1400, RHD4PRSHLSTAGPT1100, RHD4PRSHLSTAGPT1400 | -138.02d | 0d | Skilled labor [10.89 h]; Unskilled Labor [21.78 h]; Equipment Opreator [2.18 h]; Boom Truck [2.18 h]; Wash out chambers - PT [1.1 nr] | 20,619.5 | L014 | Z4 | CONS | PT | Installation | bef |
| RHD4CZ4L014PT2401 |  | Backfilling works for Wash out Valve Chambers for Potable Water Network - (RD-L-14)-Z4-L014-PT | 2d | 2027-05-12 | 2027-05-19 | RHD4CZ4L014PT2301 | -138.02d | 0d | Skilled labor [10.89 h]; Unskilled Labor [21.78 h]; Equipment Opreator [2.18 h]; Water Truck [1.09 h]; Dump Truck [1.09 h]; Wash out chambers - PT [0.2 nr] | 3,749 | L014 | Z4 | CONS | PT | Backfilling Works | bef |
|  | 2507 | **RHD4-02-002-L014-(PT)-Wash out Valves** |  | 2027-05-12 | 2027-05-22 |  |  |  |  |  |  |  |  |  |  |  |
| RHD4CZ4L014PT3102 |  | Installation for Wash out Valves for Potable Water Network - (RD-L-14)-Z4-L014-PT | 2d | 2027-05-12 | 2027-05-19 | RHD4CZ4L014PT2301, RHD4PRSHLDOSPT1200, RHD4PRSHLSTAGPT1200 | -138.02d | 0d | Unskilled Labor [10.89 h]; Plumber [10.89 h]; Wash out valve diameter 100 mm - PT [1.8 nr] | 6,746.4 | L014 | Z4 | CONS | PT | Installation | bef |
| RHD4CZ4L014PT3202 |  | Stem and Service box for Wash out Valves for Potable Water Network - (RD-L-14)-Z4-L014-PT | 2d | 2027-05-19 | 2027-05-22 | RHD4CZ4L014PT3102, RHD4CZ4L014PT2401, RHD4PRSHLDOSPT1300, RHD4PRSHLSTAGPT1300 | -138.02d | 40.98d | Unskilled Labor [10.89 h]; Plumber [10.89 h]; Wash out valve diameter 100 mm - PT [0.2 nr] | 749.6 | L014 | Z4 | CONS | PT | Stem and Service box | bef |
|  | 2508 | **RHD4-02-002-L014-(PT)-Air Valve Chambers** |  | 2027-05-08 | 2027-05-22 |  |  |  |  |  |  |  |  |  |  |  |
| RHD4CZ4L014PT2102 |  | Excavation and Bedding for Air Valve Chambers for Potable Water Network - (RD-L-14)-Z4-L014-PT | 2d | 2027-05-08 | 2027-05-10 | RHD4ENSDZ4APPPT130, RHD4CZ4L014PT2101 | -149.02d | 0d | Skilled labor [5.45 h]; Unskilled Labor [5.45 h]; Equipment Opreator [1.09 h]; Excavator-Poclain [0.54 h]; Dump Truck [0.54 h]; Air Valve chambers - PT [0.25 nr] | 1,193 | L014 | Z4 | CONS | PT | Excavation and Bedding | bef |
| RHD4CZ4L014PT2202 |  | PC works for Air Valve Chambers for Potable Water Network - (RD-L-14)-Z4-L014-PT | 2d | 2027-05-10 | 2027-05-12 | RHD4CZ4L014PT2102 | -149.02d | 0d | Skilled labor [5.45 h]; Unskilled Labor [10.89 h]; Equipment Opreator [0.54 h]; Concrete Pump [0.54 h]; Air Valve chambers - PT [0.1 nr] | 477.2 | L014 | Z4 | CONS | PT | PC Works | bef |
| RHD4CZ4L014PT2302 |  | Installation for Air Valve Chambers for Potable Water Network - (RD-L-14)-Z4-L014-PT | 2d | 2027-05-12 | 2027-05-19 | RHD4CZ4L014PT2202, RHD4PRSHLDOSPT1100, RHD4PRSHLDOSPT1400, RHD4PRSHLSTAGPT1100, RHD4PRSHLSTAGPT1400 | -149.02d | 0d | Skilled labor [5.45 h]; Unskilled Labor [10.89 h]; Equipment Opreator [1.09 h]; Boom Truck [1.09 h]; Air Valve chambers - PT [0.55 nr] | 2,624.6 | L014 | Z4 | CONS | PT | Installation | bef |
| RHD4CZ4L014PT2402 |  | Backfilling works for Air Valve Chambers for Potable Water Network - (RD-L-14)-Z4-L014-PT | 2d | 2027-05-19 | 2027-05-22 | RHD4CZ4L014PT2302 | -149.02d | 0d | Skilled labor [5.45 h]; Unskilled Labor [10.89 h]; Equipment Opreator [1.09 h]; Water Truck [0.54 h]; Dump Truck [0.54 h]; Air Valve chambers - PT [0.1 nr] | 477.2 | L014 | Z4 | CONS | PT | Backfilling Works | bef |
|  | 2509 | **RHD4-02-002-L014-(PT)-Air Valves** |  | 2027-05-19 | 2027-05-24 |  |  |  |  |  |  |  |  |  |  |  |
| RHD4CZ4L014PT3103 |  | Installation for Air Valves for Potable Water Network - (RD-L-14)-Z4-L014-PT | 2d | 2027-05-19 | 2027-05-22 | RHD4CZ4L014PT2302, RHD4PRSHLDOSPT1200, RHD4PRSHLSTAGPT1200 | -149.02d | 0d | Unskilled Labor [5.45 h]; Plumber [5.45 h]; Air valve diameter 50 mm - PT [0.9 nr] | 4,427.1 | L014 | Z4 | CONS | PT | Installation | bef |
| RHD4CZ4L014PT3203 |  | Stem and Service box for Air Valves for Potable Water Network - (RD-L-14)-Z4-L014-PT | 2d | 2027-05-22 | 2027-05-24 | RHD4CZ4L014PT3103, RHD4CZ4L014PT2402, RHD4PRSHLDOSPT1300, RHD4PRSHLSTAGPT1300 | -149.02d | 46.98d | Unskilled Labor [5.45 h]; Plumber [5.45 h]; Air valve diameter 50 mm - PT [0.1 nr] | 491.9 | L014 | Z4 | CONS | PT | Stem and Service box | bef |

| ID | WBS | Activity | Duration | Start | Finish | Predecessors | Total float | Free float | Resources | Cost | RDH4-01-001-Road and Block Names-1 | RDH4-01-001-Zones-1 | RDH4-01-001-Phases-1 | RDH4-01-001-Networks-1 | RDH4-01-001-Work Method-1 | RDH4-01-001-MENEM |
| --- | --- | --- | --- | --- | --- | --- | --- | --- | --- | --- | --- | --- | --- | --- | --- | --- |
|  | 2510 | **RHD4-02-002-L014-(PT)-Fire Hydrant** |  | 2027-07-01 | 2027-08-05 |  |  |  |  |  |  |  |  |  |  |  |
| RHD4CZ4L014PT4100 |  | Excavation and Bedding and Pipe Installation for Fire Hydrant - (RD-L-14)-Z4-L014-PT | 8d | 2027-07-01 | 2027-07-11 | RHD4CZ4L014PT1501, RHD4ENSDZ4APPPT130 | -138.02d | 0d | Skilled labor [87.12 h]; Unskilled Labor [87.12 h]; Plumber [87.12 h]; Equipment Opreator [43.56 h]; Excavator-Poclain [43.56 h]; 3-outlet fire hydrant (2 x 2.5 inch and 1 x 4.5 inch) in the form of a separate dry vacuum cylinder [1.6 nr] | 20,192 | L014 | Z4 | CONS | PT | Excavation | bef |
| RHD4CZ4L014PT4200 |  | Valve Installation for Fire Hydrant - (RD-L-14)-Z4-L014-PT | 6d | 2027-07-11 | 2027-07-18 | RHD4CZ4L014PT4100 | -138.02d | 0d | Unskilled Labor [58.05 h]; Plumber [58.05 h]; 3-outlet fire hydrant (2 x 2.5 inch and 1 x 4.5 inch) in the form of a separate dry vacuum cylinder [3.2 nr] | 40,384 | L014 | Z4 | CONS | PT | Valve | bef |
| RHD4CZ4L014PT4300 |  | Stem for Fire Hydrant - (RD-L-14)-Z4-L014-PT | 6d | 2027-07-18 | 2027-07-25 | RHD4CZ4L014PT4200 | -138.02d | 0d | Unskilled Labor [58.05 h]; Plumber [58.05 h]; 3-outlet fire hydrant (2 x 2.5 inch and 1 x 4.5 inch) in the form of a separate dry vacuum cylinder [4.8 nr] | 60,576 | L014 | Z4 | CONS | PT | Stem | bef |
| RHD4CZ4L014PT4400 |  | Fire Installation for Fire Hydrant - (RD-L-14)-Z4-L014-PT | 6d | 2027-07-25 | 2027-08-01 | RHD4CZ4L014PT4300, RHD4PRSHLDOSPT1500, RHD4PRSHLSTAGPT1500, RHD4CZ4L014PT3203, RHD4CZ4L014PT3202, RHD4CZ4L014PT3200 | -138.02d | 0d | Unskilled Labor [58.05 h]; Plumber [58.05 h]; Equipment Opreator [58.05 h]; Boom Truck [58.05 h]; 3-outlet fire hydrant (2 x 2.5 inch and 1 x 4.5 inch) in the form of a separate dry vacuum cylinder [5.6 nr] | 70,672 | L014 | Z4 | CONS | PT | Fire | bef |
| RHD4CZ4L014PT4500 |  | Protection Barriers for Fire Hydrant - (RD-L-14)-Z4-L014-PT | 4d | 2027-08-01 | 2027-08-05 | RHD4CZ4L014PT4400 | -138.02d | 17d | Unskilled Labor [34.85 h]; Plumber [34.85 h]; 3-outlet fire hydrant (2 x 2.5 inch and 1 x 4.5 inch) in the form of a separate dry vacuum cylinder [0.8 nr] | 10,096 | L014 | Z4 | CONS | PT | Protection Barriers | bef |
|  | 2511 | **RHD4-02-002-L014-(PT)-Concrete Encasement** |  |  |  |  |  |  |  |  |  |  |  |  |  |  |
|  | 2512 | **RHD4-02-002-Z4-L014-Irrigation Network - IRR** |  | 2027-05-05 | 2027-07-05 |  |  |  |  |  |  |  |  |  |  |  |
|  | 2513 | **RHD4-02-002-L014-(IRR)-HDPE Pipes - 160 mm diameter** |  | 2027-05-20 | 2027-06-13 |  |  |  |  |  |  |  |  |  |  |  |
| RHD4CZ4L014IRR1100 |  | Excavation works for HDPE Pipline 160 mm - (RD-L-14)-Z4-L014-IRR | 5d | 2027-05-20 | 2027-05-26 | RHD4CZ4L014PT1101, RHD4ENSDZ4APPIRR140, RHD4ENMSRR2000, RHD4CZ4L014PT1100 | -149.02d | 0d | Skilled labor [45.41 h]; Unskilled Labor [45.41 h]; Equipment Opreator [54.45 h]; Excavator-Poclain [45.41 h]; Dump Truck [9.04 h]; HDPE (160mm Diameter) - TSE - Depth: less than 1.5m [54.82 m]; HDPE (160mm Diameter) - TSE - Depth: more than 1.51m [11.48 m] | 8,476.71 | L014 | Z4 | CONS | IRR | Excavation | bef |
| RHD4CZ4L014IRR1200 |  | Bedding works for HDPE Pipline 160 mm - (RD-L-14)-Z4-L014-IRR | 4d | 2027-05-26 | 2027-05-31 | RHD4CZ4L014IRR1100 | -149.02d | 0d | Skilled labor [35.39 h]; Unskilled Labor [70.79 h]; Equipment Opreator [70.79 h]; Excavator-Poclain [35.39 h]; Dump Truck [35.39 h]; HDPE (160mm Diameter) - TSE - Depth: less than 1.5m [27.41 m]; HDPE (160mm Diameter) - TSE - Depth: more than 1.51m [3.83 m] | 3,949.94 | L014 | Z4 | CONS | IRR | Bedding | bef |
| RHD4CZ4L014IRR1300 |  | Installing for HDPE Pipline 160 mm - (RD-L-14)-Z4-L014-IRR | 5d | 2027-05-31 | 2027-06-06 | RHD4CZ4L014IRR1200, RHD4PRSHLDOSIRR1000, RHD4PRSHLSTAGIRR1000 | -149.02d | 0d | Unskilled Labor [90.72 h]; Plumber [45.41 h]; Equipment Opreator [45.41 h]; Boom Truck [45.41 h]; HDPE (160mm Diameter) - TSE - Depth: less than 1.5m [246.7 m]; HDPE (160mm Diameter) - TSE - Depth: more than 1.51m [30.62 m] | 34,967.72 | L014 | Z4 | CONS | IRR | Installation | bef |
| RHD4CZ4L014IRR1400 |  | Primary Test for HDPE Pipline 160 mm - (RD-L-14)-Z4-L014-IRR | 2d | 2027-06-06 | 2027-06-08 | RHD4CZ4L014IRR1300 | -149.02d | 0d | Unskilled Labor [14.7 h]; Plumber [14.7 h]; Equipment Opreator [14.7 h]; Water Truck [14.7 h]; HDPE (160mm Diameter) - TSE - Depth: less than 1.5m [109.65 m]; HDPE (160mm Diameter) - TSE - Depth: more than 1.51m [15.31 m] | 15,798.27 | L014 | Z4 | CONS | IRR | Primary Test | bef |
| RHD4CZ4L014IRR1500 |  | Backfilling and warning tape works for HDPE Pipline 160 mm - (RD-L-14)-Z4-L014-IRR | 4d | 2027-06-08 | 2027-06-13 | RHD4CZ4L014IRR1400 | -149.02d | 0d | Skilled labor [35.39 h]; Unskilled Labor [70.79 h]; Equipment Opreator [70.79 h]; Excavator-Poclain [35.39 h]; Dump Truck [35.39 h]; HDPE (160mm Diameter) - TSE - Depth: less than 1.5m [109.65 m]; HDPE (160mm Diameter) - TSE - Depth: more than 1.51m [15.31 m] | 15,798.27 | L014 | Z4 | CONS | IRR | Backfilling | bef |
|  | 1770 | **RHD4-02-002-L014-(IRR)-Air Valves** |  | 2027-05-31 | 2027-06-05 |  |  |  |  |  |  |  |  |  |  |  |
| RHD4CZ4L014IRR3103 |  | Installation for Air Valves for Irrigation Network - (RD-L-14)-Z4-L014-IRR | 2d | 2027-05-31 | 2027-06-02 | RHD4CZ4L014IRR2302 | -149.02d | 0d | Unskilled Labor [5.45 h]; Plumber [5.45 h]; Air valve diameter 50 mm - TSE [0.9 nr] | 4,427.1 | L014 | Z4 | CONS | IRR | Installation | bef |
| RHD4CZ4L014IRR3203 |  | Stem and Service box for Air Valves for Irrigation Network - (RD-L-14)-Z4-L014-IRR | 2d | 2027-06-02 | 2027-06-05 | RHD4CZ4L014IRR3103, RHD4CZ4L014IRR2402 | -149.02d | 46.98d | Unskilled Labor [5.45 h]; Plumber [5.45 h]; Air valve diameter 50 mm - TSE [0.1 nr] | 491.9 | L014 | Z4 | CONS | IRR | Stem and Service box | bef |
|  | 2515 | **RHD4-02-002-L014-(IRR)-HDPE Pipes - 200 mm diameter** |  |  |  |  |  |  |  |  |  |  |  |  |  |  |
|  | 2516 | **RHD4-02-002-L014-(IRR)-HDPE Pipes - 250 mm diameter** |  | 2027-05-05 | 2027-07-05 |  |  |  |  |  |  |  |  |  |  |  |
| RHD4CZ4L014IRR1103 |  | Excavation works for HDPE Pipline 250 mm - (RD-L-14)-Z4-L014-IRR | 10d | 2027-05-05 | 2027-05-22 | RHD4ENSDZ4APPIRR140, RHD4ENMSRR2000, RHD4CZ4L014PT1100 | -170.02d | 0d | Skilled labor [105.75 h]; Unskilled Labor [105.75 h]; Equipment Opreator [126.87 h]; Excavator-Poclain [105.75 h]; Dump Truck [21.13 h]; HDPE (250mm Diameter) - TSE - Depth: less than 1.5m [145.59 m] | 31,593.03 | L014 | Z4 | CONS | IRR | Excavation | bef |
| RHD4CZ4L014IRR1203 |  | Bedding works for HDPE Pipline 250 mm - (RD-L-14)-Z4-L014-IRR | 8d | 2027-05-22 | 2027-05-31 | RHD4CZ4L014IRR1103 | -148.02d | 0d | Skilled labor [79.28 h]; Unskilled Labor [158.56 h]; Equipment Opreator [158.56 h]; Excavator-Poclain [79.28 h]; Dump Truck [79.28 h]; HDPE (250mm Diameter) - TSE - Depth: less than 1.5m [72.8 m] | 15,797.6 | L014 | Z4 | CONS | IRR | Bedding | bef |
| RHD4CZ4L014IRR1303 |  | Installing for HDPE Pipline 250 mm - (RD-L-14)-Z4-L014-IRR | 10d | 2027-05-31 | 2027-06-12 | RHD4CZ4L014IRR1203, RHD4PRSHLDOSIRR1000, RHD4PRSHLSTAGIRR1000 | -148.02d | 0d | Unskilled Labor [211.38 h]; Plumber [105.75 h]; Equipment Opreator [105.75 h]; Boom Truck [105.75 h]; HDPE (250mm Diameter) - TSE - Depth: less than 1.5m [655.15 m] | 142,168.64 | L014 | Z4 | CONS | IRR | Installation | bef |
| RHD4CZ4L014IRR1403 |  | Primary Test for HDPE Pipline 250 mm - (RD-L-14)-Z4-L014-IRR | 8d | 2027-06-16 | 2027-06-26 | RHD4CZ4L014IRR1303, RHD4CZ4L014IRR5100 | -146.02d | 0d | Unskilled Labor [31.69 h]; Plumber [31.69 h]; Equipment Opreator [31.69 h]; Water Truck [31.69 h]; HDPE (250mm Diameter) - TSE - Depth: less than 1.5m [291.18 m] | 63,186.06 | L014 | Z4 | CONS | IRR | Primary Test | bef |
| RHD4CZ4L014IRR1503 |  | Backfilling and warning tape works for HDPE Pipline 250 mm - (RD-L-14)-Z4-L014-IRR | 8d | 2027-06-26 | 2027-07-05 | RHD4CZ4L014IRR1403 | -146.02d | 48d | Skilled labor [79.28 h]; Unskilled Labor [158.56 h]; Equipment Opreator [158.56 h]; Excavator-Poclain [79.28 h]; Dump Truck [79.28 h]; HDPE (250mm Diameter) - TSE - Depth: less than 1.5m [291.18 m] | 63,186.06 | L014 | Z4 | CONS | IRR | Backfilling | bef |

| ID | WBS | Activity | Duration | Start | Finish | Predecessors | Total float | Free float | Resources | Cost | RDH4-01-001-Road and Block Names-1 | RDH4-01-001-Zones-1 | RDH4-01-001-Phases-1 | RDH4-01-001-Networks-1 | RDH4-01-001-Work Method-1 | RDH4-01-001-MENEM |
| --- | --- | --- | --- | --- | --- | --- | --- | --- | --- | --- | --- | --- | --- | --- | --- | --- |
|  | 2521 | **RHD4-02-002-L014-(IRR)-Gate Valves (Direct Buried)** |  | 2027-06-07 | 2027-06-17 |  |  |  |  |  |  |  |  |  |  |  |
| RHD4CZ4L014IRR3100 |  | Installation for Direct Buried Gate Valves - (RD-L-14)-Z4-L014-IRR | 4d | 2027-06-07 | 2027-06-12 | RHD4CZ4L014IRR1303 SS, RHD4CZ4L014IRR1303 FF, RHD4CZ4L014IRR1300 SS, RHD4CZ4L014IRR1300 FF, RHD4PRSHLDOSIRR1100, RHD4PRSHLSTAGIRR1100 | -148.02d | 1d | Unskilled Labor [38.12 h]; Plumber [38.12 h]; Gate valves dia 100 mm - TSE [5.4 nr]; Gate valves dia 250 mm - TSE [0.9 nr] | 11,389.5 | L014 | Z4 | CONS | IRR | Installation | bef |
| RHD4CZ4L014IRR3200 |  | Stem and Service box for Direct Buried Gate Valves - (RD-L-14)-Z4-L014-IRR | 4d | 2027-06-13 | 2027-06-17 | RHD4CZ4L014IRR3100, RHD4CZ4L014IRR1500, RHD4PRSHLDOSIRR1300, RHD4PRSHLSTAGIRR1300 | -149.02d | 46.98d | Unskilled Labor [38.12 h]; Plumber [38.12 h]; Gate valves dia 100 mm - TSE [0.6 nr]; Gate valves dia 250 mm - TSE [0.1 nr] | 1,265.5 | L014 | Z4 | CONS | IRR | Stem and Service box | bef |
|  | 2528 | **RHD4-02-002-L014-(IRR)-Concrete Encasement** |  | 2027-05-31 | 2027-06-16 |  |  |  |  |  |  |  |  |  |  |  |
| RHD4CZ4L014IRR5100 |  | Pipe Encasement for Irrigation Pipelines - (RD-L-14)-Z4-L014-IRR | 14d | 2027-05-31 | 2027-06-16 | RHD4CZ4L014IRR1303 SS, RHD4CZ4L014IRR1300 SS, RHD4CZ4L014IRR1303 FF, RHD4CZ4L014IRR1300 FF, RHD4CZ4L014IRR1203, RHD4CZ4L014IRR1200 | -146.02d | 0d | Skilled labor [134.5 h]; Unskilled Labor [134.5 h]; Equipment Opreator [148 h]; Concrete Mixer Truck [13.5 h]; Dump Truck [134.5 h]; Pipe Encasement - TSE [61.76 m3] | 75,717.76 | L014 | Z4 | CONS | IRR | Pipe Encasement | bef |
|  | 6685 | **RHD4-02-002-L014-(IRR)-Wash out Chamber** |  | 2027-05-22 | 2027-05-31 |  |  |  |  |  |  |  |  |  |  |  |
| RHD4CZ4L014IRR2101 |  | Excavation and Bedding for Wash out Chamber for Irrigation Network - (RD-L-14)-Z4-L014-IRR | 2d | 2027-05-22 | 2027-05-24 | RHD4CZ4L014IRR1103 | -170.02d | 0d | Skilled labor [5.45 h]; Unskilled Labor [5.45 h]; Equipment Opreator [1.09 h]; Excavator-Poclain [0.54 h]; Dump Truck [0.54 h]; Wash out chambers - TSE [0.25 nr] | 4,686.25 | L014 | Z4 | CONS | IRR | Excavation and Bedding | bef |
| RHD4CZ4L014IRR2201 |  | PC works for Wash out Chamber for Irrigation Network - (RD-L-14)-Z4-L014-IRR | 2d | 2027-05-24 | 2027-05-26 | RHD4CZ4L014IRR2101 | -170.02d | 0d | Skilled labor [5.45 h]; Unskilled Labor [10.89 h]; Equipment Opreator [0.54 h]; Concrete Pump [0.54 h]; Wash out chambers - TSE [0.1 nr] | 1,874.5 | L014 | Z4 | CONS | IRR | PC Works | bef |
| RHD4CZ4L014IRR2301 |  | Installation for Wash out Chamber for Irrigation Network - (RD-L-14)-Z4-L014-IRR | 2d | 2027-05-26 | 2027-05-29 | RHD4CZ4L014IRR2201 | -170.02d | 0d | Skilled labor [5.45 h]; Unskilled Labor [10.89 h]; Equipment Opreator [1.09 h]; Boom Truck [1.09 h]; Wash out chambers - TSE [0.55 nr] | 10,309.75 | L014 | Z4 | CONS | IRR | Installation | bef |
| RHD4CZ4L014IRR2401 |  | Backfilling works for Wash out Chamber for Irrigation Network - (RD-L-14)-Z4-L014-IRR | 2d | 2027-05-29 | 2027-05-31 | RHD4CZ4L014IRR2301 | -170.02d | 0d | Skilled labor [5.45 h]; Unskilled Labor [10.89 h]; Equipment Opreator [1.09 h]; Water Truck [0.54 h]; Dump Truck [0.54 h]; Wash out chambers - TSE [0.1 nr] | 1,874.5 | L014 | Z4 | CONS | IRR | Backfilling Works | bef |
|  | 6686 | **RHD4-02-002-L014-(IRR)-Wash out Valves** |  | 2027-05-29 | 2027-06-02 |  |  |  |  |  |  |  |  |  |  |  |
| RHD4CZ4L014IRR3102 |  | Installation for Wash out Valve for Irrigation Network - (RD-L-14)-Z4-L014-IRR | 2d | 2027-05-29 | 2027-05-31 | RHD4CZ4L014IRR2301 | -138.02d | 0d | Unskilled Labor [5.45 h]; Plumber [5.45 h]; Wash out valve diameter 100 mm - TSE [0.9 nr] | 3,373.2 | L014 | Z4 | CONS | IRR | Installation | bef |
| RHD4CZ4L014IRR3202 |  | Stem and Service box for Wash out Valve for Irrigation Network - (RD-L-14)-Z4-L014-IRR | 2d | 2027-05-31 | 2027-06-02 | RHD4CZ4L014PT1500, RHD4CZ4L014IRR3102, RHD4CZ4L014IRR2401 | -138.02d | 0d | Unskilled Labor [5.45 h]; Plumber [5.45 h]; Wash out valve diameter 100 mm - TSE [0.1 nr] | 374.8 | L014 | Z4 | CONS | IRR | Stem and Service box | bef |
|  | 1769 | **RHD4-02-002-L014-(IRR)-Air Valve Chamber** |  | 2027-05-24 | 2027-06-02 |  |  |  |  |  |  |  |  |  |  |  |
| RHD4CZ4L014IRR2102 |  | Excavation and Bedding for Valve Chamber for Irrigation Network - (RD-L-14)-Z4-L014-IRR | 2d | 2027-05-24 | 2027-05-26 | RHD4CZ4L014IRR2101 | -149.02d | 0d | Skilled labor [5.45 h]; Unskilled Labor [5.45 h]; Equipment Opreator [1.09 h]; Excavator-Poclain [0.54 h]; Dump Truck [0.54 h]; Air Valve chambers - TSE [0.25 nr] | 1,193 | L014 | Z4 | CONS | IRR | Excavation and Bedding | bef |
| RHD4CZ4L014IRR2202 |  | PC works for Valve Chamber for Irrigation Network - (RD-L-14)-Z4-L014-IRR | 2d | 2027-05-26 | 2027-05-29 | RHD4CZ4L014IRR2102 | -149.02d | 0d | Skilled labor [5.45 h]; Unskilled Labor [10.89 h]; Equipment Opreator [0.54 h]; Concrete Pump [0.54 h]; Air Valve chambers - TSE [0.1 nr] | 477.2 | L014 | Z4 | CONS | IRR | PC Works | bef |
| RHD4CZ4L014IRR2302 |  | Installation for Valve Chamber for Irrigation Network - (RD-L-14)-Z4-L014-IRR | 2d | 2027-05-29 | 2027-05-31 | RHD4CZ4L014IRR2202 | -149.02d | 0d | Skilled labor [5.45 h]; Unskilled Labor [10.89 h]; Equipment Opreator [1.09 h]; Boom Truck [1.09 h]; Air Valve chambers - TSE [0.55 nr] | 2,624.6 | L014 | Z4 | CONS | IRR | Installation | bef |
| RHD4CZ4L014IRR2402 |  | Backfilling works for Valve Chamber for Irrigation Network - (RD-L-14)-Z4-L014-IRR | 2d | 2027-05-31 | 2027-06-02 | RHD4CZ4L014IRR2302 | -149.02d | 0d | Skilled labor [5.45 h]; Unskilled Labor [10.89 h]; Equipment Opreator [1.09 h]; Water Truck [0.54 h]; Dump Truck [0.54 h]; Air Valve chambers - TSE [0.1 nr] | 477.2 | L014 | Z4 | CONS | IRR | Backfilling Works | bef |
|  | 2546 | **RHD4-02-002-Z4-L014-Medium Voltage Network - MV** |  | 2027-05-31 | 2027-08-04 |  |  |  |  |  |  |  |  |  |  |  |
|  | 2547 | **RHD4-02-002-L014-(MV)-Medium Voltage cable trench** |  | 2027-05-31 | 2027-07-14 |  |  |  |  |  |  |  |  |  |  |  |
| RHD4CZ4L014MV1100 |  | Excavation for Medium Voltage Trench - (RD-L-14)-Z4-L014-MV | 8d | 2027-05-31 | 2027-06-09 | RHD4ENSDZ4APPMV150, RHD4CZ4L014ST3102, RHD4CZ4L014RD3100, RHD4CZ4L014IRR2401 | -170.02d | 0d | Skilled labor [84.18 h]; Unskilled Labor [168.36 h]; Equipment Opreator [252.55 h]; Excavator-Poclain [84.18 h]; Dump Truck [168.36 h]; Excavation for Trench size 60cm wide and 80cm deep ( for 2 cables) [1157.83 m3]; Excavation for Trench size 120cm wide and 80cm deep (for 4 cables) [686.2 m3]; Excavation for Trench size 180cm wide and 80cm deep (for 6 cables) [49.8 m3] | 18,938.26 | L014 | Z4 | CONS | MV | Excavation | AFT |
| RHD4CZ4L014MV1200 |  | Trench Backfilling for Medium Voltage Network - (RD-L-14)-Z4-L014-MV | 8d | 2027-07-05 | 2027-07-14 | RHD4CZ4L014MV3200, RHD4CZ4L014MV3101 | -170.02d | 0d | Skilled labor [84.18 h]; Unskilled Labor [84.18 h]; Equipment Opreator [168.36 h]; Dump Truck [168.36 h]; Excavation for Trench size 60cm wide and 80cm deep ( for 2 cables) [496.21 m3]; Excavation for Trench size 120cm wide and 80cm deep (for 4 cables) [294.09 m3]; Excavation for Trench size 180cm wide and 80cm deep (for 6 cables) [21.34 m3] | 8,116.37 | L014 | Z4 | CONS | MV | Backfilling | AFT |
|  | 2548 | **RHD4-02-002-L014-(MV)-Medium Voltage duct banks** |  | 2027-06-09 | 2027-06-23 |  |  |  |  |  |  |  |  |  |  |  |
| RHD4CZ4L014MV2100 |  | Excavation of Duct Banks for Medium Voltage Network - (RD-L-14)-Z4-L014-MV | 3d | 2027-06-09 | 2027-06-13 | RHD4ENSDZ4APPMV150, RHD4CZ4L014MV1100 | -142.02d | 0d | Unskilled Labor [25.37 h]; Equipment Opreator [50.64 h]; Excavator-Poclain [25.37 h]; Dump Truck [25.37 h]; Duct bank for MV cables UPVC (4xø150mm) [1.86 m]; Duct bank for MV cables UPVC (6xø150mm) [1.62 m] | 1,709.05 | L014 | Z4 | CONS | MV | Excavation | bef |
| RHD4CZ4L014MV2200 |  | Installation of Duct Banks for Medium Voltage Network - (RD-L-14)-Z4-L014-MV | 4d | 2027-06-13 | 2027-06-17 | RHD4CZ4L014MV2100, RHD4PRSHLDOSMV1000, RHD4PRSHLSTAGMV1000 | -123.02d | 0d | Unskilled Labor [38.01 h]; Equipment Opreator [76 h]; Excavator-Poclain [38.01 h]; Dump Truck [38.01 h]; Duct bank for MV cables UPVC (4xø150mm) [1.86 m]; Duct bank for MV cables UPVC (6xø150mm) [1.62 m] | 1,709.05 | L014 | Z4 | CONS | MV | Installing | bef |
| RHD4CZ4L014MV2300 |  | Pouring of Duct Banks for Medium Voltage Network - (RD-L-14)-Z4-L014-MV | 3d | 2027-06-17 | 2027-06-21 | RHD4CZ4L014MV2200 | -123.02d | 0d | Unskilled Labor [25.37 h]; Equipment Opreator [50.64 h]; Excavator-Poclain [25.37 h]; Dump Truck [25.37 h]; Duct bank for MV cables UPVC (4xø150mm) [12.12 m]; Duct bank for MV cables UPVC (6xø150mm) [10.56 m] | 11,126.75 | L014 | Z4 | CONS | MV | Pouring | bef |
| RHD4CZ4L014MV2400 |  | Backfilling of Duct Banks for Medium Voltage Network - (RD-L-14)-Z4-L014-MV | 2d | 2027-06-21 | 2027-06-23 | RHD4CZ4L014MV2300 | -123.02d | 47d | Unskilled Labor [18.95 h]; Equipment Opreator [38.01 h]; Excavator-Poclain [18.95 h]; Dump Truck [18.95 h]; Duct bank for MV cables UPVC (4xø150mm) [2.8 m]; Duct bank for MV cables UPVC (6xø150mm) [2.44 m] | 2,571.08 | L014 | Z4 | CONS | MV | Backfilling | bef |
