# Industrial City in Alkharj - Modon (Revised Schedule)

Schedule from Primavera P6, 2025-12-03 to 2027-11-17, data date 2026-10-10, costs in SAR, A marks actual dates.

## Calendars

- Modon Project Calender-1: Mon-Thu 07:00-17:00; Fri off; Sat-Sun 07:00-17:00.

## Resources

| Resource | Group | Unit | Rate |
| --- | --- | --- | --- |
| Physical Units | labor |  |  |
| ICKMO1-cost unite | material | $ | 1 |
| Excavator | equipment |  |  |
| Bulldozer | equipment |  |  |
| Grader | equipment |  |  |
| Water Tanker | equipment |  |  |
| Roller compactor | equipment |  |  |
| Trailers Truck | equipment |  |  |
| labor | equipment |  |  |
| MC Truck | equipment |  |  |
| Rubber compactor | equipment |  |  |
| Asphalt Paver | equipment |  |  |
| Marking Machines | equipment |  |  |
| boom truck | equipment |  |  |
| JCB | equipment |  |  |
| Sewage Network Circular pipes (GRP) | material |  |  |
| Excavation works | material |  |  |
| Aggregate base course | material |  |  |
| Bituminous base course | material |  |  |
| Bituminous concrete wearing course | material |  |  |
| Storm Network Circular pipes (GRP) | material |  |  |
| Budget Resources | material |  |  |

## Schedule

| ID | WBS | Activity | Type | Duration | Start | Finish | Predecessors | Complete | Planned start | Planned finish | Total float | Free float | Constraint | ALKHARJ INDUSTERIAL AREA - DECEPLINS |
| --- | --- | --- | --- | --- | --- | --- | --- | --- | --- | --- | --- | --- | --- | --- |
|  | GNE | **GENERAL** |  |  | 2025-12-03 | 2027-11-17 |  |  |  |  |  |  |  |  |
|  | MIL | **Milestones** |  |  | 2025-12-03 | 2027-11-17 |  |  |  |  |  |  |  |  |
| A1120 |  | Start Project Commencement Date and Receiving IFC documents | milestone | 0d | 2025-12-03 A | 2025-12-03 A |  | 100% | 2026-09-26 | 2026-09-26 |  |  | start on or before 2025-12-03 | GEN |
| A4750 |  | Site preparation, plans, material and engineering submittals | milestone | 0d | 2026-01-03 A | 2026-01-03 A | A1010 FF, A1070 FF, A1080 FF, A1090 FF, A1100 FF, A1110 FF, A1180 FF, A1190 FF, A1200 FF, A1210 FF, A1220 FF, A1260 FF, A1270 FF, A1280 FF, A1340 FF, A1350 FF, A1360 FF, A1370 FF, A1380 FF, A1440 FF, A1450 FF, A1460 FF, A1470 FF, A1480 FF, A1540 FF, A1550 FF, A1560 FF, A1570 FF, A1580 FF, A1650 FF, A1660 FF, A1670 FF, A1680 FF, A1690 FF, A1700 FF, A1760 FF, A1770 FF, A1780 FF, A1790 FF, A1800 FF, A1870 FF, A1880 FF, A1890 FF, A1900 FF, A1910 FF, A1920 FF, A1980 FF, A1990 FF, A2000 FF, A2010 FF, A2020 FF, A2060 FF, A2070 FF, A2080 FF, A2140 FF, A2150 FF, A2160 FF, A2170 FF, A2180 FF, A2240 FF, A2250 FF, A2260 FF, A2270 FF, A2280 FF, A2340 FF, A2350 FF, A2360 FF, A2370 FF, A2380 FF, A2440 FF, A2450 FF, A2460 FF, A2470 FF, A2480 FF, A2500 FF, A2560 FF, A2570 FF, A2580 FF, A2590 FF, A2600 FF, A2620 FF, A2680 FF, A2690 FF, A2700 FF, A2710 FF, A2720 FF, A2740 FF, A2760 FF, A2820 FF, A2830 FF, A2840 FF, A2850 FF, A2860 FF, A4900 FF, A4910 FF, A4920 FF, A4930 FF, A4940 FF, A5000 FF, A5010 FF, A5020 FF, A5030 FF, A5040 FF, A5100 FF, A5110 FF, A5120 FF, A5130 FF, A5140 FF, A5200 FF, A5210 FF, A5220 FF, A5230 FF, A5240 FF, A5300 FF, A5310 FF, A5320 FF, A5330 FF, A5340 FF, A5400 FF, A5410 FF, A5420 FF, A5430 FF, A5440 FF, A4760 FF | 100% | 2026-10-25 | 2026-10-25 |  |  | finish on or before 2026-01-03 | GEN |
| A4800 |  | Completion of Road Works | milestone | 0d | 2026-12-09 | 2026-12-09 | A66740 FF, A56670, A62590, A56810, A56950, A57090, A57230, A57370, A57510, A57650, A57790, A57930, A58070, A58210, A58350, A58490, A58630, A58770, A58910, A62760, A64660, A64800, A64940, A62940, A63080, A63220, A63360, A63920, A64060, A63500, A63640, A63780 |  |  |  | -58.86d | 294.04d | finish on or before 2026-10-03 | GEN |
| A4820 |  | Completion of Sewage Network | milestone | 0d | 2027-02-27 | 2027-02-27 | A93220 FF, A93240 FF |  |  |  | -20.96d | 225.94d | finish on or before 2027-02-03 | GEN |
| A4845 |  | Completion of Telecommunication | milestone | 0d | 2027-03-20 | 2027-03-20 | A91880 FF, A91930 FF, A91980 FF, A92080 FF, A92030 FF, A92130 FF, A92180 FF, A92230 FF, A92280 FF, A92330 FF, A92380 FF, A92430 FF, A92480 FF, A92530 FF, A92580 FF, A92630 FF, A91480 FF, A91530 FF, A91580 FF, A91630 FF, A91430 FF, A91680 FF, A91730 FF, A91780 FF, A90980 FF, A91030 FF, A91080 FF, A91130 FF, A91180 FF, A91230 FF, A91280 FF, A91330 FF, A91380 FF, A91830 FF |  |  |  | -37.9d | 208d | finish on or before 2027-02-03 | GEN |
| A4810 |  | Completion of MV works | milestone | 0d | 2027-04-14 | 2027-04-14 | A93200 FF, A93210 FF |  |  |  | -166.81d | 186.09d | finish on or before 2026-10-03 | GEN |
| A4815 |  | Completion of Storm Network | milestone | 0d | 2027-05-02 | 2027-05-02 | A93250 FF, A93230 FF, A73170, A88330, A72570 |  |  |  | -74.2d | 171.7d | finish on or before 2027-02-03 | GEN |
| A4825 |  | Completion of Irrigation Network | milestone | 0d | 2027-05-08 | 2027-05-08 | A88680 FF, A88750 FF, A88820 FF, A88890 FF, A89030 FF, A89100 FF, A89170 FF, A89240 FF, A89310 FF, A89380 FF, A89450 FF, A89520 FF, A89590 FF, A89660 FF, A89730 FF, A89800 FF, A89870 FF, A88960 FF, A90010 FF, A90080 FF, A90150 FF, A90220 FF, A90290 FF, A90360 FF, A89940 FF, A90430 FF, A90500 FF, A90570 FF, A90850 FF, A90920 FF, A90780 FF, A90640 FF, A90710 FF |  |  |  | -79.3d | 166.6d | finish on or before 2027-02-03 | GEN |
| A6800 |  | Completion of Potable water Network | milestone | 0d | 2027-05-20 | 2027-05-20 | A93180 FF, A93190 FF |  |  |  | -90.1d | 155.8d | finish on or before 2027-02-03 | GEN |
| A4835 |  | Completion of Landscape | milestone | 0d | 2027-09-29 | 2027-09-29 | A59040 FF, A59050 FF, A59060 FF, A59070 FF, A59080 FF, A59100 FF, A59110 FF, A59120 FF, A59130 FF, A59140 FF, A59150 FF, A59160 FF, A59170 FF, A59180 FF, A59190 FF, A59900 FF, A59910 FF, A59920 FF, A59930 FF, A59940 FF, A59960 FF, A59970 FF, A59980 FF, A59990 FF, A60000 FF, A60010 FF, A59860 FF, A59870 FF, A59880 FF, A59890 FF, A60060 FF, A60070 FF, A60080 FF, A60090 FF, A60100 FF, A60120 FF, A60130 FF, A60140 FF, A60150 FF, A60160 FF, A60170 FF, A60020 FF, A60030 FF, A60040 FF, A60050 FF, A60220 FF, A60230 FF, A60240 FF, A60250 FF, A60260 FF, A60280 FF, A60290 FF, A60300 FF, A60310 FF, A60320 FF, A60330 FF, A60180 FF, A60190 FF, A60200 FF, A60210 FF, A60380 FF, A60390 FF, A60400 FF, A60410 FF, A60420 FF, A60440 FF, A60450 FF, A60460 FF, A60470 FF, A60480 FF, A60490 FF, A60340 FF, A60350 FF, A60360 FF, A60370 FF, A60540 FF, A60550 FF, A60560 FF, A60570 FF, A60580 FF, A60600 FF, A60610 FF, A60620 FF, A60630 FF, A60640 FF, A60650 FF, A60500 FF, A60510 FF, A60520 FF, A60530 FF, A60700 FF, A60710 FF, A60720 FF, A60730 FF, A60740 FF, A60760 FF, A60770 FF, A60780 FF, A60790 FF, A60800 FF, A60810 FF, A60660 FF, A60670 FF, A60680 FF, A60690 FF, A60860 FF, A60870 FF, A60880 FF, A60890 FF, A60900 FF, A60920 FF, A60930 FF, A60940 FF, A60950 FF, A60960 FF, A60970 FF, A60820 FF, A60830 FF, A60840 FF, A60850 FF, A61020 FF, A61030 FF, A61040 FF, A61050 FF, A61060 FF, A61080 FF, A61090 FF, A61100 FF, A61110 FF, A61120 FF, A61130 FF, A60980 FF, A60990 FF, A61000 FF, A61010 FF, A61180 FF, A61190 FF, A61200 FF, A61210 FF, A61220 FF, A61240 FF, A61250 FF, A61260 FF, A61270 FF, A61280 FF, A61290 FF, A61140 FF, A61150 FF, A61160 FF, A61170 FF, A61340 FF, A61350 FF, A61360 FF, A61370 FF, A61380 FF, A61400 FF, A61410 FF, A61420 FF, A61430 FF, A61440 FF, A61450 FF, A61300 FF, A61310 FF, A61320 FF, A61330 FF, A61500 FF, A61510 FF, A61520 FF, A61530 FF, A61540 FF, A61560 FF, A61570 FF, A61580 FF, A61590 FF, A61600 FF, A61610 FF, A61460 FF, A61470 FF, A61480 FF, A61490 FF, A61660 FF, A61670 FF, A61680 FF, A61690 FF, A61700 FF, A61720 FF, A61730 FF, A61740 FF, A61750 FF, A61760 FF, A61770 FF, A61620 FF, A61630 FF, A61640 FF, A61650 FF, A61820 FF, A61830 FF, A61840 FF, A61850 FF, A61860 FF, A61880 FF, A61890 FF, A61900 FF, A61910 FF, A61920 FF, A61930 FF, A61780 FF, A61790 FF, A61800 FF, A61810 FF, A61980 FF, A61990 FF, A62000 FF, A62010 FF, A62020 FF, A62040 FF, A62050 FF, A62060 FF, A62070 FF, A62080 FF, A62090 FF, A61940 FF, A61950 FF, A61960 FF, A61970 FF, A62140 FF, A62150 FF, A62160 FF, A62170 FF, A62180 FF, A62200 FF, A62210 FF, A62220 FF, A62230 FF, A62240 FF, A62250 FF, A62100 FF, A62110 FF, A62120 FF, A62130 FF, A62300 FF, A62310 FF, A62320 FF, A62330 FF, A62340 FF, A62360 FF, A62370 FF, A62380 FF, A62390 FF, A62400 FF, A62410 FF, A62260 FF, A62270 FF, A62280 FF, A62290 FF, A62460 FF, A62470 FF, A62480 FF, A62490 FF, A62500 FF, A62520 FF, A62530 FF, A62540 FF, A62550 FF, A62560 FF, A62570 FF, A62420 FF, A62430 FF, A62440 FF, A62450 FF, A64190 FF, A64200 FF, A64210 FF, A64220 FF, A64230 FF, A64250 FF, A64260 FF, A64270 FF, A64280 FF, A64290 FF, A64300 FF, A64310 FF, A64320 FF, A64330 FF, A64340 FF, A65070 FF, A65080 FF, A65090 FF, A65100 FF, A65110 FF, A65130 FF, A65140 FF, A65150 FF, A65160 FF, A65170 FF, A65180 FF, A65030 FF, A65040 FF, A65050 FF, A65060 FF, A65230 FF, A65240 FF, A65250 FF, A65260 FF, A65270 FF, A65290 FF, A65300 FF, A65310 FF, A65320 FF, A65330 FF, A65340 FF, A65190 FF, A65200 FF, A65210 FF, A65220 FF, A65390 FF, A65400 FF, A65410 FF, A65420 FF, A65430 FF, A65450 FF, A65460 FF, A65470 FF, A65480 FF, A65490 FF, A65500 FF, A65350 FF, A65360 FF, A65370 FF, A65380 FF, A65550 FF, A65560 FF, A65570 FF, A65580 FF, A65590 FF, A65610 FF, A65620 FF, A65630 FF, A65640 FF, A65650 FF, A65660 FF, A65510 FF, A65520 FF, A65530 FF, A65540 FF, A65710 FF, A65720 FF, A65730 FF, A65740 FF, A65750 FF, A65770 FF, A65780 FF, A65790 FF, A65800 FF, A65810 FF, A65820 FF, A65670 FF, A65680 FF, A65690 FF, A65700 FF, A65870 FF, A65880 FF, A65890 FF, A65900 FF, A65910 FF, A65930 FF, A65940 FF, A65950 FF, A65960 FF, A65970 FF, A65980 FF, A65830 FF, A65840 FF, A65850 FF, A65860 FF, A66030 FF, A66040 FF, A66050 FF, A66060 FF, A66070 FF, A66090 FF, A66100 FF, A66110 FF, A66120 FF, A66130 FF, A66140 FF, A65990 FF, A66000 FF, A66010 FF, A66020 FF, A66790 FF, A66800 FF, A66810 FF, A66820 FF, A66830 FF, A66850 FF, A66860 FF, A66870 FF, A66880 FF, A66890 FF, A66900 FF, A66750 FF, A66760 FF, A66770 FF, A66780 FF, A66950 FF, A66960 FF, A66970 FF, A66980 FF, A66990 FF, A67010 FF, A67020 FF, A67030 FF, A67040 FF, A67050 FF, A67060 FF, A66910 FF, A66920 FF, A66930 FF, A66940 FF, A66190 FF, A66200 FF, A66210 FF, A66220 FF, A66230 FF, A66250 FF, A66260 FF, A66270 FF, A66280 FF, A66290 FF, A66300 FF, A66150 FF, A66160 FF, A66170 FF, A66180 FF, A66460 FF, A66340 FF, A66570 FF, A66580 FF, A66590 FF, A66600 FF, A66610 FF, A66620 FF, A66470 FF, A66480 FF, A66490 FF, A66500 FF, A86420 FF, A86470 FF, A86520 FF, A86570 FF |  |  |  | 42d |  | finish on or before 2027-12-02 | GEN |
| A4830 |  | Project Finish | milestone | 0d | 2027-11-17 | 2027-11-17 | A92700 FF, A84230 FF, A84280 FF, A84330 FF, A92710 FF, A4750 FF, A4845 FF, A4810 FF, A4800 FF, A4815 FF, A4835 FF, A4820 FF, A4825 FF, A6800 FF, A93710 FF, A93720, A56790, A62920, A63060, A63200, A63340, A63480, A63620, A63760, A63900, A62710, A56930, A58610, A58750, A58890, A59030, A62880, A64780, A64920, A57070, A57210, A57350, A57490, A57630, A57770, A57910, A58050, A58190, A58330, A58470, A66740, A63990, A64000, A64020, A64040, A64180 |  |  |  | 0d |  | finish on or before 2027-12-02 | GEN |
|  | PRE-MOB | **Pre-Mobilization** |  |  | 2025-12-07 | 2026-01-03 |  |  |  |  |  |  |  |  |
|  | 1 | **General Requirements** |  |  | 2025-12-07 | 2026-01-03 |  |  |  |  |  |  |  |  |
|  | 1 | **Submittals** |  |  | 2025-12-07 | 2026-01-03 |  |  |  |  |  |  |  |  |
| A4260 |  | Material List Submittal |  | 21d | 2025-12-07 A | 2026-01-03 A | A1120 SS | 100% | 2026-09-26 | 2026-10-19 |  |  |  | PRE |
| A4640 |  | Offices Moblization Layout Sumittal |  | 10d | 2025-12-07 A | 2026-01-03 A | A1120 SS | 100% | 2026-09-26 | 2026-10-06 |  |  |  | PRE |
| A4660 |  | Traffic Management Plan Submittal |  | 21d | 2025-12-07 A | 2026-01-03 A | A1120 SS | 100% | 2026-09-26 | 2026-10-19 |  |  |  | PRE |
| A4670 |  | Logistics Plan Submittal |  | 21d | 2025-12-07 A | 2026-01-03 A | A1120 SS | 100% | 2026-09-26 | 2026-10-19 |  |  |  | PRE |
| A4680 |  | Execution Plan Submittal |  | 21d | 2025-12-07 A | 2026-01-03 A | A1120 SS | 100% | 2026-09-26 | 2026-10-19 |  |  |  | PRE |
| A4690 |  | Safety Mangment plan Submittal |  | 21d | 2025-12-07 A | 2026-01-03 A | A1120 SS | 100% | 2026-09-26 | 2026-10-19 |  |  |  | PRE |
| A4700 |  | Geotechnical Report Submittal |  | 21d | 2025-12-07 A | 2026-01-03 A | A1120 SS | 100% | 2026-09-26 | 2026-10-19 |  |  |  | PRE |
| A4710 |  | Project Quality Plan Submittal |  | 21d | 2025-12-07 A | 2026-01-03 A | A1120 SS | 100% | 2026-09-26 | 2026-10-19 |  |  |  | PRE |
| A4720 |  | Baseline Schedule Submittal |  | 21d | 2025-12-07 A | 2026-01-03 A | A1120 SS | 100% | 2026-09-26 | 2026-10-19 |  |  |  | PRE |

| ID | WBS | Activity | Duration | Start | Finish | Predecessors | Complete | Planned start | Planned finish | Resources | ALKHARJ INDUSTERIAL AREA - DECEPLINS |
| --- | --- | --- | --- | --- | --- | --- | --- | --- | --- | --- | --- |
|  | 2 | **Approvals** |  | 2025-12-07 | 2026-01-03 |  |  |  |  |  |  |
| A2930 |  | Traffic Management Plan Approval | 7d | 2025-12-07 A | 2026-01-03 A | A4660 | 100% | 2026-10-20 | 2026-10-27 |  | PRE |
| A2940 |  | Logistics Plan Approval | 7d | 2025-12-07 A | 2026-01-03 A | A4670 | 100% | 2026-10-20 | 2026-10-27 |  | PRE |
| A2950 |  | Execution Plan Approval | 7d | 2025-12-07 A | 2026-01-03 A | A4680 | 100% | 2026-10-20 | 2026-10-27 |  | PRE |
| A2960 |  | Safety Mangment plan Approval | 7d | 2025-12-07 A | 2026-01-03 A | A4690 | 100% | 2026-10-20 | 2026-10-27 |  | PRE |
| A2970 |  | Geotechnical Report Approval | 7d | 2025-12-07 A | 2026-01-03 A | A4700 | 100% | 2026-10-20 | 2026-10-27 |  | PRE |
| A2980 |  | Project Quality Plan Approval | 7d | 2025-12-07 A | 2026-01-03 A | A4710 | 100% | 2026-10-20 | 2026-10-27 |  | PRE |
| A2990 |  | Baseline Schedule Approval | 7d | 2025-12-07 A | 2026-01-03 A | A4720 | 100% | 2026-10-20 | 2026-10-27 |  | PRE |
| A4270 |  | Material List Approval | 7d | 2025-12-07 A | 2026-01-03 A | A4260 | 100% | 2026-10-20 | 2026-10-27 |  | PRE |
| A4650 |  | Offices Moblization Layout Approval | 3d | 2025-12-07 A | 2026-01-03 A | A4640 | 100% | 2026-10-07 | 2026-10-10 |  | PRE |
|  | MOB | **Mobilization** |  | 2025-12-07 | 2026-01-03 |  |  |  |  |  |  |
| A4730 |  | Clear & Grub for Offices & Access Road | 6d | 2025-12-07 A | 2026-01-03 A | A4650, A1120 SS | 100% | 2026-10-11 | 2026-10-17 |  | PRE |
| A4760 |  | Construct Parking Sheds | 12d | 2025-12-07 A | 2026-01-03 A | A4770 SS, A4770 FF | 100% | 2026-10-12 | 2026-10-25 |  | PRE |
| A4770 |  | Construct Site Offices & Storage | 13d | 2025-12-07 A | 2026-01-03 A | A4780 SS, A4780 FF | 100% | 2026-10-11 | 2026-10-25 |  | PRE |
| A4780 |  | Construct Temporary Fence | 13d | 2025-12-07 A | 2026-01-03 A | A4730 SS, A4730 FF | 100% | 2026-10-11 | 2026-10-25 |  | PRE |
|  | ENG | **ENGINEERING** |  | 2025-12-06 | 2026-09-28 |  |  |  |  |  |  |
|  | ZN1 | **Zone A** |  | 2025-12-06 | 2026-01-29 |  |  |  |  |  |  |
|  | EW | **Earth Work** |  | 2025-12-06 | 2026-01-29 |  |  |  |  |  |  |
|  | SB | **Submittals** |  | 2025-12-06 | 2026-01-29 |  |  |  |  |  |  |
| A1000 |  | NGL Submittal | 14d | 2025-12-06 A | 2026-01-29 A | A1120 SS | 100% | 2026-09-26 | 2026-10-11 | Physical Units [3519475 h] | ENG |
|  | APP | **Approvals** |  | 2025-12-06 | 2026-01-29 |  |  |  |  |  |  |
| A1010 |  | NGL Approval | 12d | 2025-12-06 A | 2026-01-29 A | A1000 | 100% | 2026-10-12 | 2026-10-25 | Physical Units [1173160 h] | ENG |
|  | ST | **Storm Network Drawings** |  | 2025-12-06 | 2026-01-29 |  |  |  |  |  |  |
|  | SB | **Submittals** |  | 2025-12-06 | 2026-01-29 |  |  |  |  |  |  |
| A1020 |  | Overall Layout Plan Submittal | 14d | 2025-12-06 A | 2026-01-29 A | A1120 SS | 100% | 2026-09-26 | 2026-10-11 | Physical Units [703896 h] | ENG |
| A1030 |  | Plan & Profiles Submittal | 14d | 2025-12-06 A | 2026-01-29 A | A1120 SS | 100% | 2026-09-26 | 2026-10-11 | Physical Units [703896 h] | ENG |
| A1040 |  | General Typical Plans Submittal | 14d | 2025-12-06 A | 2026-01-29 A | A1120 SS | 100% | 2026-09-26 | 2026-10-11 | Physical Units [703896 h] | ENG |
| A1050 |  | Storm Tie - In Details Submittal | 14d | 2025-12-06 A | 2026-01-29 A | A1120 SS | 100% | 2026-09-26 | 2026-10-11 | Physical Units [703896 h] | ENG |
| A1060 |  | Chamber Details Submittal | 14d | 2025-12-06 A | 2026-01-29 A | A1120 SS | 100% | 2026-09-26 | 2026-10-11 | Physical Units [703896 h] | ENG |

| ID | WBS | Activity | Duration | Start | Finish | Predecessors | Complete | Planned start | Planned finish | Resources | ALKHARJ INDUSTERIAL AREA - DECEPLINS |
| --- | --- | --- | --- | --- | --- | --- | --- | --- | --- | --- | --- |
|  | APP | **Approvals** |  | 2025-12-06 | 2026-01-29 |  |  |  |  |  |  |
| A1070 |  | Overall Layout Plan Approval | 12d | 2025-12-06 A | 2026-01-29 A | A1020 | 100% | 2026-10-12 | 2026-10-25 | Physical Units [234632 h] | ENG |
| A1080 |  | Plan & Profiles Approval | 12d | 2025-12-06 A | 2026-01-29 A | A1030 | 100% | 2026-10-12 | 2026-10-25 | Physical Units [234632 h] | ENG |
| A1090 |  | General Typical Plans Approval | 12d | 2025-12-06 A | 2026-01-29 A | A1040 | 100% | 2026-10-12 | 2026-10-25 | Physical Units [234632 h] | ENG |
| A1100 |  | Storm Tie - In Details Approval | 12d | 2025-12-06 A | 2026-01-29 A | A1050 | 100% | 2026-10-12 | 2026-10-25 | Physical Units [234632 h] | ENG |
| A1110 |  | Chamber Details Approval | 12d | 2025-12-06 A | 2026-01-29 A | A1060 | 100% | 2026-10-12 | 2026-10-25 | Physical Units [234632 h] | ENG |
|  | SW | **Sewage Network Drawings** |  | 2025-12-06 | 2026-01-29 |  |  |  |  |  |  |
|  | SB | **Submittals** |  | 2025-12-06 | 2026-01-29 |  |  |  |  |  |  |
| A1130 |  | Overall Layout Plan Submittal | 14d | 2025-12-06 A | 2026-01-29 A | A1120 SS | 100% | 2026-09-26 | 2026-10-11 | Physical Units [703896 h] | ENG |
| A1140 |  | Plan & Profiles Submittal | 14d | 2025-12-06 A | 2026-01-29 A | A1120 SS | 100% | 2026-09-26 | 2026-10-11 | Physical Units [703896 h] | ENG |
| A1150 |  | General Typical Plans Submittal | 14d | 2025-12-06 A | 2026-01-29 A | A1120 SS | 100% | 2026-09-26 | 2026-10-11 | Physical Units [703896 h] | ENG |
| A1160 |  | Sewage Tie - In Details Submittal | 14d | 2025-12-06 A | 2026-01-29 A | A1120 SS | 100% | 2026-09-26 | 2026-10-11 | Physical Units [703896 h] | ENG |
| A1170 |  | Chamber Details Submittal | 14d | 2025-12-06 A | 2026-01-29 A | A1120 SS | 100% | 2026-09-26 | 2026-10-11 | Physical Units [703896 h] | ENG |
|  | APP | **Approvals** |  | 2025-12-06 | 2026-01-29 |  |  |  |  |  |  |
| A1180 |  | Overall Layout Plan Approval | 12d | 2025-12-06 A | 2026-01-29 A | A1130 | 100% | 2026-10-12 | 2026-10-25 | Physical Units [234632 h] | ENG |
| A1190 |  | Plan & Profiles Approval | 12d | 2025-12-06 A | 2026-01-29 A | A1140 | 100% | 2026-10-12 | 2026-10-25 | Physical Units [234632 h] | ENG |
| A1200 |  | General Typical Plans Approval | 12d | 2025-12-06 A | 2026-01-29 A | A1150 | 100% | 2026-10-12 | 2026-10-25 | Physical Units [234632 h] | ENG |
| A1210 |  | Sewage Tie - In Details Approval | 12d | 2025-12-06 A | 2026-01-29 A | A1160 | 100% | 2026-10-12 | 2026-10-25 | Physical Units [234632 h] | ENG |
| A1220 |  | Chamber Details Approval | 12d | 2025-12-06 A | 2026-01-29 A | A1170 | 100% | 2026-10-12 | 2026-10-25 | Physical Units [234632 h] | ENG |
|  | BC | **Box Culverts** |  | 2025-12-06 | 2026-01-29 |  |  |  |  |  |  |
|  | SB | **Submittals** |  | 2025-12-06 | 2026-01-29 |  |  |  |  |  |  |
| A1230 |  | Setting out Layout Submittal | 14d | 2025-12-06 A | 2026-01-29 A | A1120 SS | 100% | 2026-09-26 | 2026-10-11 | Physical Units [1173160 h] | ENG |
| A1240 |  | Typical Details Submittal | 14d | 2025-12-06 A | 2026-01-29 A | A1120 SS | 100% | 2026-09-26 | 2026-10-11 | Physical Units [1173160 h] | ENG |
| A1250 |  | Concrete Dim.& Reinforcement details Submittal | 14d | 2025-12-06 A | 2026-01-29 A | A1120 SS | 100% | 2026-09-26 | 2026-10-11 | Physical Units [1173160 h] | ENG |

| ID | WBS | Activity | Duration | Start | Finish | Predecessors | Complete | Planned start | Planned finish | Resources | ALKHARJ INDUSTERIAL AREA - DECEPLINS |
| --- | --- | --- | --- | --- | --- | --- | --- | --- | --- | --- | --- |
|  | APP | **Approvals** |  | 2025-12-06 | 2026-01-29 |  |  |  |  |  |  |
| A1260 |  | Setting out Layout Approval | 12d | 2025-12-06 A | 2026-01-29 A | A1230 | 100% | 2026-10-12 | 2026-10-25 | Physical Units [391053 h] | ENG |
| A1270 |  | Typical Details Approval | 12d | 2025-12-06 A | 2026-01-29 A | A1240 | 100% | 2026-10-12 | 2026-10-25 | Physical Units [391053 h] | ENG |
| A1280 |  | Concrete Dim.& Reinforcement details Approval | 12d | 2025-12-06 A | 2026-01-29 A | A1250 | 100% | 2026-10-12 | 2026-10-25 | Physical Units [391053 h] | ENG |
|  | PT | **Potable Network Drawings** |  | 2025-12-06 | 2026-01-29 |  |  |  |  |  |  |
|  | SB | **Submittals** |  | 2025-12-06 | 2026-01-29 |  |  |  |  |  |  |
| A1290 |  | Overall Layout Plan Submittal | 14d | 2025-12-06 A | 2026-01-29 A | A1120 SS | 100% | 2026-09-26 | 2026-10-11 | Physical Units [703896 h] | ENG |
| A1300 |  | Master Plan Submittal | 14d | 2025-12-06 A | 2026-01-29 A | A1120 SS | 100% | 2026-09-26 | 2026-10-11 | Physical Units [703896 h] | ENG |
| A1310 |  | Water Schedules Submittal | 14d | 2025-12-06 A | 2026-01-29 A | A1120 SS | 100% | 2026-09-26 | 2026-10-11 | Physical Units [703896 h] | ENG |
| A1320 |  | General Typical Plans Submittal | 14d | 2025-12-06 A | 2026-01-29 A | A1120 SS | 100% | 2026-09-26 | 2026-10-11 | Physical Units [703896 h] | ENG |
| A1330 |  | General Typical Details Submittal | 14d | 2025-12-06 A | 2026-01-29 A | A1120 SS | 100% | 2026-09-26 | 2026-10-11 | Physical Units [703896 h] | ENG |
|  | APP | **Approvals** |  | 2025-12-06 | 2026-01-29 |  |  |  |  |  |  |
| A1340 |  | Overall Layout Plan Approval | 12d | 2025-12-06 A | 2026-01-29 A | A1290 | 100% | 2026-10-12 | 2026-10-25 | Physical Units [234632 h] | ENG |
| A1350 |  | Master Plan Approval | 12d | 2025-12-06 A | 2026-01-29 A | A1300 | 100% | 2026-10-12 | 2026-10-25 | Physical Units [234632 h] | ENG |
| A1360 |  | Water Schedules Approval | 12d | 2025-12-06 A | 2026-01-29 A | A1310 | 100% | 2026-10-12 | 2026-10-25 | Physical Units [234632 h] | ENG |
| A1370 |  | General Typical Plans Approval | 12d | 2025-12-06 A | 2026-01-29 A | A1320 | 100% | 2026-10-12 | 2026-10-25 | Physical Units [234632 h] | ENG |
| A1380 |  | General Typical Details Approval | 12d | 2025-12-06 A | 2026-01-29 A | A1330 | 100% | 2026-10-12 | 2026-10-25 | Physical Units [234632 h] | ENG |
|  | IR | **Irrigation Network Drawings** |  | 2025-12-06 | 2026-01-29 |  |  |  |  |  |  |
|  | SB | **Submittals** |  | 2025-12-06 | 2026-01-29 |  |  |  |  |  |  |
| A1390 |  | Overall Layout Plan Submittal | 14d | 2025-12-06 A | 2026-01-29 A | A1120 SS | 100% | 2026-09-26 | 2026-10-11 | Physical Units [703896 h] | ENG |
| A1400 |  | Master Plan Submittal | 14d | 2025-12-06 A | 2026-01-29 A | A1120 SS | 100% | 2026-09-26 | 2026-10-11 | Physical Units [703896 h] | ENG |
| A1410 |  | Water Schedules Submittal | 14d | 2025-12-06 A | 2026-01-29 A | A1120 SS | 100% | 2026-09-26 | 2026-10-11 | Physical Units [703896 h] | ENG |
| A1420 |  | General Typical Plans Submittal | 14d | 2025-12-06 A | 2026-01-29 A | A1120 SS | 100% | 2026-09-26 | 2026-10-11 | Physical Units [703896 h] | ENG |
| A1430 |  | General Typical Details Submittal | 14d | 2025-12-06 A | 2026-01-29 A | A1120 SS | 100% | 2026-09-26 | 2026-10-11 | Physical Units [703896 h] | ENG |

| ID | WBS | Activity | Duration | Start | Finish | Predecessors | Complete | Planned start | Planned finish | Resources | ALKHARJ INDUSTERIAL AREA - DECEPLINS |
| --- | --- | --- | --- | --- | --- | --- | --- | --- | --- | --- | --- |
|  | APP | **Approvals** |  | 2025-12-06 | 2026-01-29 |  |  |  |  |  |  |
| A1440 |  | Overall Layout Plan Approval | 12d | 2025-12-06 A | 2026-01-29 A | A1390 | 100% | 2026-10-12 | 2026-10-25 | Physical Units [234632 h] | ENG |
| A1450 |  | Master Plan Approval | 12d | 2025-12-06 A | 2026-01-29 A | A1400 | 100% | 2026-10-12 | 2026-10-25 | Physical Units [234632 h] | ENG |
| A1460 |  | Water Schedules Approval | 12d | 2025-12-06 A | 2026-01-29 A | A1410 | 100% | 2026-10-12 | 2026-10-25 | Physical Units [234632 h] | ENG |
| A1470 |  | General Typical Plans Approval | 12d | 2025-12-06 A | 2026-01-29 A | A1420 | 100% | 2026-10-12 | 2026-10-25 | Physical Units [234632 h] | ENG |
| A1480 |  | General Typical Details Approval | 12d | 2025-12-06 A | 2026-01-29 A | A1430 | 100% | 2026-10-12 | 2026-10-25 | Physical Units [234632 h] | ENG |
|  | EL | **Electrical Network Drawings** |  | 2025-12-06 | 2026-01-29 |  |  |  |  |  |  |
|  | MV | **Medium Voltage** |  | 2025-12-06 | 2026-01-29 |  |  |  |  |  |  |
|  | SB | **Submittals** |  | 2025-12-06 | 2026-01-29 |  |  |  |  |  |  |
| A1490 |  | Overall Layout Plan Submittal | 14d | 2025-12-06 A | 2026-01-29 A | A1120 SS | 100% | 2026-09-26 | 2026-10-11 | Physical Units [175974 h] | ENG |
| A1500 |  | Plan & Profile Submittal | 14d | 2025-12-06 A | 2026-01-29 A | A1120 SS | 100% | 2026-09-26 | 2026-10-11 | Physical Units [175974 h] | ENG |
| A1510 |  | Buried trench & Duct Bank Details Submittal | 14d | 2025-12-06 A | 2026-01-29 A | A1120 SS | 100% | 2026-09-26 | 2026-10-11 | Physical Units [175974 h] | ENG |
| A1520 |  | Cable Schedule Details Submittal | 14d | 2025-12-06 A | 2026-01-29 A | A1120 SS | 100% | 2026-09-26 | 2026-10-11 | Physical Units [175974 h] | ENG |
| A1530 |  | Single Line Diagram Submittal | 14d | 2025-12-06 A | 2026-01-29 A | A1120 SS | 100% | 2026-09-26 | 2026-10-11 | Physical Units [175974 h] | ENG |
|  | APP | **Approvals** |  | 2025-12-06 | 2026-01-29 |  |  |  |  |  |  |
| A1540 |  | Overall Layout Plan Approval | 12d | 2025-12-06 A | 2026-01-29 A | A1490 | 100% | 2026-10-12 | 2026-10-25 | Physical Units [58658 h] | ENG |
| A1550 |  | Plan & Profile Approval | 12d | 2025-12-06 A | 2026-01-29 A | A1500 | 100% | 2026-10-12 | 2026-10-25 | Physical Units [58658 h] | ENG |
| A1560 |  | Buried trench & Duct Bank Details Approval | 12d | 2025-12-06 A | 2026-01-29 A | A1510 | 100% | 2026-10-12 | 2026-10-25 | Physical Units [58658 h] | ENG |
| A1570 |  | Cable Schedule Details Approval | 12d | 2025-12-06 A | 2026-01-29 A | A1520 | 100% | 2026-10-12 | 2026-10-25 | Physical Units [58658 h] | ENG |
| A1580 |  | Single Line Diagram Approval | 12d | 2025-12-06 A | 2026-01-29 A | A1530 | 100% | 2026-10-12 | 2026-10-25 | Physical Units [58658 h] | ENG |
|  | LV | **Low Voltage/ Street Lighting** |  | 2025-12-06 | 2026-01-29 |  |  |  |  |  |  |
|  | SB | **Submittals** |  | 2025-12-06 | 2026-01-29 |  |  |  |  |  |  |
| A4850 |  | Overall Layout Plan Submittal | 14d | 2025-12-06 A | 2026-01-29 A | A1120 SS | 100% | 2026-09-26 | 2026-10-11 | Physical Units [175974 h] | ENG |
| A4860 |  | Plan & Profile Submittal | 14d | 2025-12-06 A | 2026-01-29 A | A1120 SS | 100% | 2026-09-26 | 2026-10-11 | Physical Units [175974 h] | ENG |
| A4870 |  | Buried trench & Duct Bank Details Submittal | 14d | 2025-12-06 A | 2026-01-29 A | A1120 SS | 100% | 2026-09-26 | 2026-10-11 | Physical Units [175974 h] | ENG |
| A4880 |  | Cable Schedule Details Submittal | 14d | 2025-12-06 A | 2026-01-29 A | A1120 SS | 100% | 2026-09-26 | 2026-10-11 | Physical Units [175974 h] | ENG |
| A4890 |  | Single Line Diagram Submittal | 14d | 2025-12-06 A | 2026-01-29 A | A1120 SS | 100% | 2026-09-26 | 2026-10-11 | Physical Units [175974 h] | ENG |

| ID | WBS | Activity | Duration | Start | Finish | Predecessors | Complete | Planned start | Planned finish | Resources | ALKHARJ INDUSTERIAL AREA - DECEPLINS |
| --- | --- | --- | --- | --- | --- | --- | --- | --- | --- | --- | --- |
|  | APP | **Approvals** |  | 2025-12-06 | 2026-01-29 |  |  |  |  |  |  |
| A4900 |  | Overall Layout Plan Approval | 12d | 2025-12-06 A | 2026-01-29 A | A4850 | 100% | 2026-10-12 | 2026-10-25 | Physical Units [58658 h] | ENG |
| A4910 |  | Plan & Profile Approval | 12d | 2025-12-06 A | 2026-01-29 A | A4860 | 100% | 2026-10-12 | 2026-10-25 | Physical Units [58658 h] | ENG |
| A4920 |  | Buried trench & Duct Bank Details Approval | 12d | 2025-12-06 A | 2026-01-29 A | A4870 | 100% | 2026-10-12 | 2026-10-25 | Physical Units [58658 h] | ENG |
| A4930 |  | Cable Schedule Details Approval | 12d | 2025-12-06 A | 2026-01-29 A | A4880 | 100% | 2026-10-12 | 2026-10-25 | Physical Units [58658 h] | ENG |
| A4940 |  | Single Line Diagram Approval | 12d | 2025-12-06 A | 2026-01-29 A | A4890 | 100% | 2026-10-12 | 2026-10-25 | Physical Units [58658 h] | ENG |
|  | ICT | **ICT Network** |  | 2025-12-06 | 2026-01-29 |  |  |  |  |  |  |
|  | SB | **Submittals** |  | 2025-12-06 | 2026-01-29 |  |  |  |  |  |  |
| A4950 |  | Overall Layout Plan Submittal | 14d | 2025-12-06 A | 2026-01-29 A | A1120 SS | 100% | 2026-09-26 | 2026-10-11 | Physical Units [175974 h] | ENG |
| A4960 |  | Plan & Profile Submittal | 14d | 2025-12-06 A | 2026-01-29 A | A1120 SS | 100% | 2026-09-26 | 2026-10-11 | Physical Units [175974 h] | ENG |
| A4970 |  | Buried trench & Duct Bank Details Submittal | 14d | 2025-12-06 A | 2026-01-29 A | A1120 SS | 100% | 2026-09-26 | 2026-10-11 | Physical Units [175974 h] | ENG |
| A4980 |  | Cable Schedule Details Submittal | 14d | 2025-12-06 A | 2026-01-29 A | A1120 SS | 100% | 2026-09-26 | 2026-10-11 | Physical Units [175974 h] | ENG |
| A4990 |  | Single Line Diagram Submittal | 14d | 2025-12-06 A | 2026-01-29 A | A1120 SS | 100% | 2026-09-26 | 2026-10-11 | Physical Units [175974 h] | ENG |
|  | APP | **Approvals** |  | 2025-12-06 | 2026-01-29 |  |  |  |  |  |  |
| A5000 |  | Overall Layout Plan Approval | 12d | 2025-12-06 A | 2026-01-29 A | A4950 | 100% | 2026-10-12 | 2026-10-25 | Physical Units [58658 h] | ENG |
| A5010 |  | Plan & Profile Approval | 12d | 2025-12-06 A | 2026-01-29 A | A4960 | 100% | 2026-10-12 | 2026-10-25 | Physical Units [58658 h] | ENG |
| A5020 |  | Buried trench & Duct Bank Details Approval | 12d | 2025-12-06 A | 2026-01-29 A | A4970 | 100% | 2026-10-12 | 2026-10-25 | Physical Units [58658 h] | ENG |
| A5030 |  | Cable Schedule Details Approval | 12d | 2025-12-06 A | 2026-01-29 A | A4980 | 100% | 2026-10-12 | 2026-10-25 | Physical Units [58658 h] | ENG |
| A5040 |  | Single Line Diagram Approval | 12d | 2025-12-06 A | 2026-01-29 A | A4990 | 100% | 2026-10-12 | 2026-10-25 | Physical Units [58658 h] | ENG |
|  | ELB | **Electrical-Building** |  | 2025-12-06 | 2026-01-29 |  |  |  |  |  |  |
|  | SB | **Submittals** |  | 2025-12-06 | 2026-01-29 |  |  |  |  |  |  |
| A5050 |  | Overall Layout Plan Submittal | 14d | 2025-12-06 A | 2026-01-29 A | A1120 SS | 100% | 2026-09-26 | 2026-10-11 | Physical Units [175974 h] | ENG |
| A5060 |  | Plan & Profile Submittal | 14d | 2025-12-06 A | 2026-01-29 A | A1120 SS | 100% | 2026-09-26 | 2026-10-11 | Physical Units [175974 h] | ENG |
| A5070 |  | Buried trench & Duct Bank Details Submittal | 14d | 2025-12-06 A | 2026-01-29 A | A1120 SS | 100% | 2026-09-26 | 2026-10-11 | Physical Units [175974 h] | ENG |
| A5080 |  | Cable Schedule Details Submittal | 14d | 2025-12-06 A | 2026-01-29 A | A1120 SS | 100% | 2026-09-26 | 2026-10-11 | Physical Units [175974 h] | ENG |
| A5090 |  | Single Line Diagram Submittal | 14d | 2025-12-06 A | 2026-01-29 A | A1120 SS | 100% | 2026-09-26 | 2026-10-11 | Physical Units [175974 h] | ENG |

| ID | WBS | Activity | Duration | Start | Finish | Predecessors | Complete | Planned start | Planned finish | Resources | ALKHARJ INDUSTERIAL AREA - DECEPLINS |
| --- | --- | --- | --- | --- | --- | --- | --- | --- | --- | --- | --- |
|  | APP | **Approvals** |  | 2025-12-06 | 2026-01-29 |  |  |  |  |  |  |
| A5100 |  | Overall Layout Plan Approval | 12d | 2025-12-06 A | 2026-01-29 A | A5050 | 100% | 2026-10-12 | 2026-10-25 | Physical Units [58658 h] | ENG |
| A5110 |  | Plan & Profile Approval | 12d | 2025-12-06 A | 2026-01-29 A | A5060 | 100% | 2026-10-12 | 2026-10-25 | Physical Units [58658 h] | ENG |
| A5120 |  | Buried trench & Duct Bank Details Approval | 12d | 2025-12-06 A | 2026-01-29 A | A5070 | 100% | 2026-10-12 | 2026-10-25 | Physical Units [58658 h] | ENG |
| A5130 |  | Cable Schedule Details Approval | 12d | 2025-12-06 A | 2026-01-29 A | A5080 | 100% | 2026-10-12 | 2026-10-25 | Physical Units [58658 h] | ENG |
| A5140 |  | Single Line Diagram Approval | 12d | 2025-12-06 A | 2026-01-29 A | A5090 | 100% | 2026-10-12 | 2026-10-25 | Physical Units [58658 h] | ENG |
|  | RD | **Road Works Drawings** |  | 2025-12-06 | 2026-01-29 |  |  |  |  |  |  |
|  | SB | **Submittals** |  | 2025-12-06 | 2026-01-29 |  |  |  |  |  |  |
| A1590 |  | Alignment & Setting Out Submittal | 14d | 2025-12-06 A | 2026-01-29 A | A1120 SS | 100% | 2026-09-26 | 2026-10-11 | Physical Units [586580 h] | ENG |
| A1600 |  | Plan and Profile Submittal | 14d | 2025-12-06 A | 2026-01-29 A | A1120 SS | 100% | 2026-09-26 | 2026-10-11 | Physical Units [586580 h] | ENG |
| A1610 |  | Typical Cross Sections Submittal | 14d | 2025-12-06 A | 2026-01-29 A | A1120 SS | 100% | 2026-09-26 | 2026-10-11 | Physical Units [586580 h] | ENG |
| A1620 |  | Cross Sections Details Submittal | 14d | 2025-12-06 A | 2026-01-29 A | A1120 SS | 100% | 2026-09-26 | 2026-10-11 | Physical Units [586580 h] | ENG |
| A1630 |  | Finish Grading Submittal | 14d | 2025-12-06 A | 2026-01-29 A | A1120 SS | 100% | 2026-09-26 | 2026-10-11 | Physical Units [586580 h] | ENG |
| A1640 |  | Road Signing & Marking Roads Submittal | 14d | 2025-12-06 A | 2026-01-29 A | A1120 SS | 100% | 2026-09-26 | 2026-10-11 | Physical Units [586580 h] | ENG |
|  | APP | **Approvals** |  | 2025-12-06 | 2026-01-29 |  |  |  |  |  |  |
| A1650 |  | Alignment & Setting Out Approval | 12d | 2025-12-06 A | 2026-01-29 A | A1590 | 100% | 2026-10-12 | 2026-10-25 | Physical Units [195527 h] | ENG |
| A1660 |  | Plan & Profile Approval | 12d | 2025-12-06 A | 2026-01-29 A | A1600 | 100% | 2026-10-12 | 2026-10-25 | Physical Units [195527 h] | ENG |
| A1670 |  | Typical Cross Sections Approval | 12d | 2025-12-06 A | 2026-01-29 A | A1610 | 100% | 2026-10-12 | 2026-10-25 | Physical Units [195527 h] | ENG |
| A1680 |  | Cross Sections Details Approval | 12d | 2025-12-06 A | 2026-01-29 A | A1620 | 100% | 2026-10-12 | 2026-10-25 | Physical Units [195527 h] | ENG |
| A1690 |  | Finish Grading Approval | 12d | 2025-12-06 A | 2026-01-29 A | A1630 | 100% | 2026-10-12 | 2026-10-25 | Physical Units [195527 h] | ENG |
| A1700 |  | Road Signing & Marking Roads Approval | 12d | 2025-12-06 A | 2026-01-29 A | A1640 | 100% | 2026-10-12 | 2026-10-25 | Physical Units [195527 h] | ENG |
|  | LS | **Landscape Works Drawings** |  | 2025-12-06 | 2026-01-29 |  |  |  |  |  |  |
|  | SB | **Submittals** |  | 2025-12-06 | 2026-01-29 |  |  |  |  |  |  |
| A1710 |  | Hardscape Plans Landscape Submittal | 14d | 2025-12-06 A | 2026-01-29 A | A1120 SS | 100% | 2026-09-26 | 2026-10-11 | Physical Units [703896 h] | ENG |
| A1720 |  | Softscape Plans Landscape Submittal | 14d | 2025-12-06 A | 2026-01-29 A | A1120 SS | 100% | 2026-09-26 | 2026-10-11 | Physical Units [703896 h] | ENG |
| A1730 |  | Details Plans Landscape Submittal | 14d | 2025-12-06 A | 2026-01-29 A | A1120 SS | 100% | 2026-09-26 | 2026-10-11 | Physical Units [703896 h] | ENG |
| A1740 |  | Schedules Plans Landscape Submittal | 14d | 2025-12-06 A | 2026-01-29 A | A1120 SS | 100% | 2026-09-26 | 2026-10-11 | Physical Units [703896 h] | ENG |
| A1750 |  | Lighting Plans Landscape Submittal | 14d | 2025-12-06 A | 2026-01-29 A | A1120 SS | 100% | 2026-09-26 | 2026-10-11 | Physical Units [703896 h] | ENG |

| ID | WBS | Activity | Duration | Start | Finish | Predecessors | Complete | Planned start | Planned finish | Resources | ALKHARJ INDUSTERIAL AREA - DECEPLINS |
| --- | --- | --- | --- | --- | --- | --- | --- | --- | --- | --- | --- |
|  | APP | **Approvals** |  | 2025-12-06 | 2026-01-29 |  |  |  |  |  |  |
| A1760 |  | Hardscape Plans Landscape Approval | 12d | 2025-12-06 A | 2026-01-29 A | A1710 | 100% | 2026-10-12 | 2026-10-25 | Physical Units [234632 h] | ENG |
| A1770 |  | Softscape Plans Landscape Approval | 12d | 2025-12-06 A | 2026-01-29 A | A1720 | 100% | 2026-10-12 | 2026-10-25 | Physical Units [234632 h] | ENG |
| A1780 |  | Details Plans Landscape Approval | 12d | 2025-12-06 A | 2026-01-29 A | A1730 | 100% | 2026-10-12 | 2026-10-25 | Physical Units [234632 h] | ENG |
| A1790 |  | Schedules Plans Landscape Approval | 12d | 2025-12-06 A | 2026-01-29 A | A1740 | 100% | 2026-10-12 | 2026-10-25 | Physical Units [234632 h] | ENG |
| A1800 |  | Lighting Plans Landscape Approval | 12d | 2025-12-06 A | 2026-01-29 A | A1750 | 100% | 2026-10-12 | 2026-10-25 | Physical Units [234632 h] | ENG |
|  | ZN2 | **Zone B** |  | 2025-12-06 | 2026-01-29 |  |  |  |  |  |  |
|  | EW | **Earth Work** |  | 2025-12-06 | 2026-01-29 |  |  |  |  |  |  |
|  | SB | **Submittals** |  | 2025-12-06 | 2026-01-29 |  |  |  |  |  |  |
| A1810 |  | NGL Submittal | 14d | 2025-12-06 A | 2026-01-29 A | A1120 SS | 100% | 2026-09-26 | 2026-10-11 | Physical Units [2346319 h] | ENG |
|  | APP | **Approvals** |  | 2025-12-06 | 2026-01-29 |  |  |  |  |  |  |
| A1870 |  | NGL Approval | 12d | 2025-12-06 A | 2026-01-29 A | A1810 | 100% | 2026-10-12 | 2026-10-25 | Physical Units [782106 h] | ENG |
|  | ST | **Storm Network Drawings** |  | 2025-12-06 | 2026-01-29 |  |  |  |  |  |  |
|  | SB | **Submittals** |  | 2025-12-06 | 2026-01-29 |  |  |  |  |  |  |
| A1820 |  | Overall Layout Plan Submittal | 14d | 2025-12-06 A | 2026-01-29 A | A1120 SS | 100% | 2026-09-26 | 2026-10-11 | Physical Units [469264 h] | ENG |
| A1830 |  | Plan & Profiles Submittal | 14d | 2025-12-06 A | 2026-01-29 A | A1120 SS | 100% | 2026-09-26 | 2026-10-11 | Physical Units [469264 h] | ENG |
| A1840 |  | General Typical Plans Submittal | 14d | 2025-12-06 A | 2026-01-29 A | A1120 SS | 100% | 2026-09-26 | 2026-10-11 | Physical Units [469264 h] | ENG |
| A1850 |  | Storm Tie - In Details Submittal | 14d | 2025-12-06 A | 2026-01-29 A | A1120 SS | 100% | 2026-09-26 | 2026-10-11 | Physical Units [469264 h] | ENG |
| A1860 |  | Chamber Details Submittal | 14d | 2025-12-06 A | 2026-01-29 A | A1120 SS | 100% | 2026-09-26 | 2026-10-11 | Physical Units [469264 h] | ENG |
|  | APP | **Approvals** |  | 2025-12-06 | 2026-01-29 |  |  |  |  |  |  |
| A1880 |  | Overall Layout Plan Approval | 12d | 2025-12-06 A | 2026-01-29 A | A1820 | 100% | 2026-10-12 | 2026-10-25 | Physical Units [156421 h] | ENG |
| A1890 |  | Plan & Profiles Approval | 12d | 2025-12-06 A | 2026-01-29 A | A1830 | 100% | 2026-10-12 | 2026-10-25 | Physical Units [156421 h] | ENG |
| A1900 |  | General Typical Plans Approval | 12d | 2025-12-06 A | 2026-01-29 A | A1840 | 100% | 2026-10-12 | 2026-10-25 | Physical Units [156421 h] | ENG |
| A1910 |  | Storm Tie - In Details Approval | 12d | 2025-12-06 A | 2026-01-29 A | A1850 | 100% | 2026-10-12 | 2026-10-25 | Physical Units [156421 h] | ENG |
| A1920 |  | Chamber Details Approval | 12d | 2025-12-06 A | 2026-01-29 A | A1860 | 100% | 2026-10-12 | 2026-10-25 | Physical Units [156421 h] | ENG |

| ID | WBS | Activity | Duration | Start | Finish | Predecessors | Complete | Planned start | Planned finish | Resources | ALKHARJ INDUSTERIAL AREA - DECEPLINS |
| --- | --- | --- | --- | --- | --- | --- | --- | --- | --- | --- | --- |
|  | SW | **Sewage Network Drawings** |  | 2025-12-06 | 2026-01-29 |  |  |  |  |  |  |
|  | SB | **Submittals** |  | 2025-12-06 | 2026-01-29 |  |  |  |  |  |  |
| A1930 |  | Overall Layout Plan Submittal | 14d | 2025-12-06 A | 2026-01-29 A | A1120 SS | 100% | 2026-09-26 | 2026-10-11 | Physical Units [469264 h] | ENG |
| A1940 |  | Plan & Profiles Submittal | 14d | 2025-12-06 A | 2026-01-29 A | A1120 SS | 100% | 2026-09-26 | 2026-10-11 | Physical Units [469264 h] | ENG |
| A1950 |  | General Typical Plans Submittal | 14d | 2025-12-06 A | 2026-01-29 A | A1120 SS | 100% | 2026-09-26 | 2026-10-11 | Physical Units [469264 h] | ENG |
| A1960 |  | Sewage Tie - In Details Submittal | 14d | 2025-12-06 A | 2026-01-29 A | A1120 SS | 100% | 2026-09-26 | 2026-10-11 | Physical Units [469264 h] | ENG |
| A1970 |  | Chamber Details Submittal | 14d | 2025-12-06 A | 2026-01-29 A | A1120 SS | 100% | 2026-09-26 | 2026-10-11 | Physical Units [469264 h] | ENG |
|  | APP | **Approvals** |  | 2025-12-06 | 2026-01-29 |  |  |  |  |  |  |
| A1980 |  | Overall Layout Plan Approval | 12d | 2025-12-06 A | 2026-01-29 A | A1930 | 100% | 2026-10-12 | 2026-10-25 | Physical Units [156421 h] | ENG |
| A1990 |  | Plan & Profiles Approval | 12d | 2025-12-06 A | 2026-01-29 A | A1940 | 100% | 2026-10-12 | 2026-10-25 | Physical Units [156421 h] | ENG |
| A2000 |  | General Typical Plans Approval | 12d | 2025-12-06 A | 2026-01-29 A | A1950 | 100% | 2026-10-12 | 2026-10-25 | Physical Units [156421 h] | ENG |
| A2010 |  | Sewage Tie - In Details Approval | 12d | 2025-12-06 A | 2026-01-29 A | A1960 | 100% | 2026-10-12 | 2026-10-25 | Physical Units [156421 h] | ENG |
| A2020 |  | Chamber Details Approval | 12d | 2025-12-06 A | 2026-01-29 A | A1970 | 100% | 2026-10-12 | 2026-10-25 | Physical Units [156421 h] | ENG |
|  | BC | **Box Culverts** |  | 2025-12-06 | 2026-01-29 |  |  |  |  |  |  |
|  | SB | **Submittals** |  | 2025-12-06 | 2026-01-29 |  |  |  |  |  |  |
| A2030 |  | Setting out Layout Submittal | 14d | 2025-12-06 A | 2026-01-29 A | A1120 SS | 100% | 2026-09-26 | 2026-10-11 | Physical Units [782106 h] | ENG |
| A2040 |  | Typical Details Submittal | 14d | 2025-12-06 A | 2026-01-29 A | A1120 SS | 100% | 2026-09-26 | 2026-10-11 | Physical Units [782106 h] | ENG |
| A2050 |  | Concrete Dim.& Reinforcement details Submittal | 14d | 2025-12-06 A | 2026-01-29 A | A1120 SS | 100% | 2026-09-26 | 2026-10-11 | Physical Units [782106 h] | ENG |
|  | APP | **Approvals** |  | 2025-12-06 | 2026-01-29 |  |  |  |  |  |  |
| A2060 |  | Setting out Layout Approval | 12d | 2025-12-06 A | 2026-01-29 A | A2030 | 100% | 2026-10-12 | 2026-10-25 | Physical Units [260702 h] | ENG |
| A2070 |  | Typical Details Approval | 12d | 2025-12-06 A | 2026-01-29 A | A2040 | 100% | 2026-10-12 | 2026-10-25 | Physical Units [260702 h] | ENG |
| A2080 |  | Concrete Dim.& Reinforcement details Approval | 12d | 2025-12-06 A | 2026-01-29 A | A2050 | 100% | 2026-10-12 | 2026-10-25 | Physical Units [260702 h] | ENG |
|  | PT | **Potable Network Drawings** |  | 2025-12-06 | 2026-01-29 |  |  |  |  |  |  |
|  | SB | **Submittals** |  | 2025-12-06 | 2026-01-29 |  |  |  |  |  |  |
| A2090 |  | Overall Layout Plan Submittal | 14d | 2025-12-06 A | 2026-01-29 A | A1120 SS | 100% | 2026-09-26 | 2026-10-11 | Physical Units [469264 h] | ENG |
| A2100 |  | Master Plan Submittal | 14d | 2025-12-06 A | 2026-01-29 A | A1120 SS | 100% | 2026-09-26 | 2026-10-11 | Physical Units [469264 h] | ENG |
| A2110 |  | Water Schedules Submittal | 14d | 2025-12-06 A | 2026-01-29 A | A1120 SS | 100% | 2026-09-26 | 2026-10-11 | Physical Units [469264 h] | ENG |
| A2120 |  | General Typical Plans Submittal | 14d | 2025-12-06 A | 2026-01-29 A | A1120 SS | 100% | 2026-09-26 | 2026-10-11 | Physical Units [469264 h] | ENG |
| A2130 |  | General Typical Details Submittal | 14d | 2025-12-06 A | 2026-01-29 A | A1120 SS | 100% | 2026-09-26 | 2026-10-11 | Physical Units [469264 h] | ENG |

| ID | WBS | Activity | Duration | Start | Finish | Predecessors | Complete | Planned start | Planned finish | Resources | ALKHARJ INDUSTERIAL AREA - DECEPLINS |
| --- | --- | --- | --- | --- | --- | --- | --- | --- | --- | --- | --- |
|  | APP | **Approvals** |  | 2025-12-06 | 2026-01-29 |  |  |  |  |  |  |
| A2140 |  | Overall Layout Plan Approval | 12d | 2025-12-06 A | 2026-01-29 A | A2090 | 100% | 2026-10-12 | 2026-10-25 | Physical Units [156421 h] | ENG |
| A2150 |  | Master Plan Approval | 12d | 2025-12-06 A | 2026-01-29 A | A2100 | 100% | 2026-10-12 | 2026-10-25 | Physical Units [156421 h] | ENG |
| A2160 |  | Water Schedules Approval | 12d | 2025-12-06 A | 2026-01-29 A | A2110 | 100% | 2026-10-12 | 2026-10-25 | Physical Units [156421 h] | ENG |
| A2170 |  | General Typical Plans Approval | 12d | 2025-12-06 A | 2026-01-29 A | A2120 | 100% | 2026-10-12 | 2026-10-25 | Physical Units [156421 h] | ENG |
| A2180 |  | General Typical Details Approval | 12d | 2025-12-06 A | 2026-01-29 A | A2130 | 100% | 2026-10-12 | 2026-10-25 | Physical Units [156421 h] | ENG |
|  | IR | **Irrigation Network Drawings** |  | 2025-12-06 | 2026-01-29 |  |  |  |  |  |  |
|  | SB | **Submittals** |  | 2025-12-06 | 2026-01-29 |  |  |  |  |  |  |
| A2190 |  | Overall Layout Plan Submittal | 14d | 2025-12-06 A | 2026-01-29 A | A1120 SS | 100% | 2026-09-26 | 2026-10-11 | Physical Units [469264 h] | ENG |
| A2200 |  | Master Plan Submittal | 14d | 2025-12-06 A | 2026-01-29 A | A1120 SS | 100% | 2026-09-26 | 2026-10-11 | Physical Units [469264 h] | ENG |
| A2210 |  | Water Schedules Submittal | 14d | 2025-12-06 A | 2026-01-29 A | A1120 SS | 100% | 2026-09-26 | 2026-10-11 | Physical Units [469264 h] | ENG |
| A2220 |  | General Typical Plans Submittal | 14d | 2025-12-06 A | 2026-01-29 A | A1120 SS | 100% | 2026-09-26 | 2026-10-11 | Physical Units [469264 h] | ENG |
| A2230 |  | General Typical Details Submittal | 14d | 2025-12-06 A | 2026-01-29 A | A1120 SS | 100% | 2026-09-26 | 2026-10-11 | Physical Units [469264 h] | ENG |
|  | APP | **Approvals** |  | 2025-12-06 | 2026-01-29 |  |  |  |  |  |  |
| A2240 |  | Overall Layout Plan Approval | 12d | 2025-12-06 A | 2026-01-29 A | A2190 | 100% | 2026-10-12 | 2026-10-25 | Physical Units [156421 h] | ENG |
| A2250 |  | Master Plan Approval | 12d | 2025-12-06 A | 2026-01-29 A | A2200 | 100% | 2026-10-12 | 2026-10-25 | Physical Units [156421 h] | ENG |
| A2260 |  | Water Schedules Approval | 12d | 2025-12-06 A | 2026-01-29 A | A2210 | 100% | 2026-10-12 | 2026-10-25 | Physical Units [156421 h] | ENG |
| A2270 |  | General Typical Plans Approval | 12d | 2025-12-06 A | 2026-01-29 A | A2220 | 100% | 2026-10-12 | 2026-10-25 | Physical Units [156421 h] | ENG |
| A2280 |  | General Typical Details Approval | 12d | 2025-12-06 A | 2026-01-29 A | A2230 | 100% | 2026-10-12 | 2026-10-25 | Physical Units [156421 h] | ENG |
|  | EL | **Electrical Network Drawings** |  | 2025-12-06 | 2026-01-29 |  |  |  |  |  |  |
|  | 1 | **Medium Voltage** |  | 2025-12-06 | 2026-01-29 |  |  |  |  |  |  |
|  | SB | **Submittals** |  | 2025-12-06 | 2026-01-29 |  |  |  |  |  |  |
| A2290 |  | Overall Layout Plan Submittal | 14d | 2025-12-06 A | 2026-01-29 A | A1120 SS | 100% | 2026-09-26 | 2026-10-11 | Physical Units [117316 h] | ENG |
| A2300 |  | Plan & Profile Submittal | 14d | 2025-12-06 A | 2026-01-29 A | A1120 SS | 100% | 2026-09-26 | 2026-10-11 | Physical Units [117316 h] | ENG |
| A2310 |  | Buried trench & Duct Bank Details Submittal | 14d | 2025-12-06 A | 2026-01-29 A | A1120 SS | 100% | 2026-09-26 | 2026-10-11 | Physical Units [117316 h] | ENG |
| A2320 |  | Cable Schedule Details Submittal | 14d | 2025-12-06 A | 2026-01-29 A | A1120 SS | 100% | 2026-09-26 | 2026-10-11 | Physical Units [117316 h] | ENG |
| A2330 |  | Single Line Diagram Submittal | 14d | 2025-12-06 A | 2026-01-29 A | A1120 SS | 100% | 2026-09-26 | 2026-10-11 | Physical Units [117316 h] | ENG |

| ID | WBS | Activity | Duration | Start | Finish | Predecessors | Complete | Planned start | Planned finish | Resources | ALKHARJ INDUSTERIAL AREA - DECEPLINS |
| --- | --- | --- | --- | --- | --- | --- | --- | --- | --- | --- | --- |
|  | APP | **Approvals** |  | 2025-12-06 | 2026-01-29 |  |  |  |  |  |  |
| A2340 |  | Overall Layout Plan Approval | 12d | 2025-12-06 A | 2026-01-29 A | A2290 | 100% | 2026-10-12 | 2026-10-25 | Physical Units [39105.3 h] | ENG |
| A2350 |  | Plan & Profile Approval | 12d | 2025-12-06 A | 2026-01-29 A | A2300 | 100% | 2026-10-12 | 2026-10-25 | Physical Units [39105.3 h] | ENG |
| A2360 |  | Buried trench & Duct Bank Details Approval | 12d | 2025-12-06 A | 2026-01-29 A | A2310 | 100% | 2026-10-12 | 2026-10-25 | Physical Units [39105.3 h] | ENG |
| A2370 |  | Cable Schedule Details Approval | 12d | 2025-12-06 A | 2026-01-29 A | A2320 | 100% | 2026-10-12 | 2026-10-25 | Physical Units [39105.3 h] | ENG |
| A2380 |  | Single Line Diagram Approval | 12d | 2025-12-06 A | 2026-01-29 A | A2330 | 100% | 2026-10-12 | 2026-10-25 | Physical Units [39105.3 h] | ENG |
|  | LV | **Low Voltage/ Street Lighting** |  | 2025-12-06 | 2026-01-29 |  |  |  |  |  |  |
|  | SB | **Submittals** |  | 2025-12-06 | 2026-01-29 |  |  |  |  |  |  |
| A5150 |  | Overall Layout Plan Submittal | 14d | 2025-12-06 A | 2026-01-29 A | A1120 SS | 100% | 2026-09-26 | 2026-10-11 | Physical Units [117316 h] | ENG |
| A5160 |  | Plan & Profile Submittal | 14d | 2025-12-06 A | 2026-01-29 A | A1120 SS | 100% | 2026-09-26 | 2026-10-11 | Physical Units [117316 h] | ENG |
| A5170 |  | Buried trench & Duct Bank Details Submittal | 14d | 2025-12-06 A | 2026-01-29 A | A1120 SS | 100% | 2026-09-26 | 2026-10-11 | Physical Units [117316 h] | ENG |
| A5180 |  | Cable Schedule Details Submittal | 14d | 2025-12-06 A | 2026-01-29 A | A1120 SS | 100% | 2026-09-26 | 2026-10-11 | Physical Units [117316 h] | ENG |
| A5190 |  | Single Line Diagram Submittal | 14d | 2025-12-06 A | 2026-01-29 A | A1120 SS | 100% | 2026-09-26 | 2026-10-11 | Physical Units [117316 h] | ENG |
|  | APP | **Approvals** |  | 2025-12-06 | 2026-01-29 |  |  |  |  |  |  |
| A5200 |  | Overall Layout Plan Approval | 12d | 2025-12-06 A | 2026-01-29 A | A5150 | 100% | 2026-10-12 | 2026-10-25 | Physical Units [39105.3 h] | ENG |
| A5210 |  | Plan & Profile Approval | 12d | 2025-12-06 A | 2026-01-29 A | A5160 | 100% | 2026-10-12 | 2026-10-25 | Physical Units [39105.3 h] | ENG |
| A5220 |  | Buried trench & Duct Bank Details Approval | 12d | 2025-12-06 A | 2026-01-29 A | A5170 | 100% | 2026-10-12 | 2026-10-25 | Physical Units [39105.3 h] | ENG |
| A5230 |  | Cable Schedule Details Approval | 12d | 2025-12-06 A | 2026-01-29 A | A5180 | 100% | 2026-10-12 | 2026-10-25 | Physical Units [39105.3 h] | ENG |
| A5240 |  | Single Line Diagram Approval | 12d | 2025-12-06 A | 2026-01-29 A | A5190 | 100% | 2026-10-12 | 2026-10-25 | Physical Units [39105.3 h] | ENG |
|  | LV1 | **ICT Network** |  | 2025-12-06 | 2026-01-29 |  |  |  |  |  |  |
|  | SB | **Submittals** |  | 2025-12-06 | 2026-01-29 |  |  |  |  |  |  |
| A5250 |  | Overall Layout Plan Submittal | 14d | 2025-12-06 A | 2026-01-29 A | A1120 SS | 100% | 2026-09-26 | 2026-10-11 | Physical Units [117316 h] | ENG |
| A5260 |  | Plan & Profile Submittal | 14d | 2025-12-06 A | 2026-01-29 A | A1120 SS | 100% | 2026-09-26 | 2026-10-11 | Physical Units [117316 h] | ENG |
| A5270 |  | Buried trench & Duct Bank Details Submittal | 14d | 2025-12-06 A | 2026-01-29 A | A1120 SS | 100% | 2026-09-26 | 2026-10-11 | Physical Units [117316 h] | ENG |
| A5280 |  | Cable Schedule Details Submittal | 14d | 2025-12-06 A | 2026-01-29 A | A1120 SS | 100% | 2026-09-26 | 2026-10-11 | Physical Units [117316 h] | ENG |
| A5290 |  | Single Line Diagram Submittal | 14d | 2025-12-06 A | 2026-01-29 A | A1120 SS | 100% | 2026-09-26 | 2026-10-11 | Physical Units [117316 h] | ENG |

| ID | WBS | Activity | Duration | Start | Finish | Predecessors | Complete | Planned start | Planned finish | Resources | ALKHARJ INDUSTERIAL AREA - DECEPLINS |
| --- | --- | --- | --- | --- | --- | --- | --- | --- | --- | --- | --- |
|  | APP | **Approvals** |  | 2025-12-06 | 2026-01-29 |  |  |  |  |  |  |
| A5300 |  | Overall Layout Plan Approval | 12d | 2025-12-06 A | 2026-01-29 A | A5250 | 100% | 2026-10-12 | 2026-10-25 | Physical Units [39105.3 h] | ENG |
| A5310 |  | Plan & Profile Approval | 12d | 2025-12-06 A | 2026-01-29 A | A5260 | 100% | 2026-10-12 | 2026-10-25 | Physical Units [39105.3 h] | ENG |
| A5320 |  | Buried trench & Duct Bank Details Approval | 12d | 2025-12-06 A | 2026-01-29 A | A5270 | 100% | 2026-10-12 | 2026-10-25 | Physical Units [39105.3 h] | ENG |
| A5330 |  | Cable Schedule Details Approval | 12d | 2025-12-06 A | 2026-01-29 A | A5280 | 100% | 2026-10-12 | 2026-10-25 | Physical Units [39105.3 h] | ENG |
| A5340 |  | Single Line Diagram Approval | 12d | 2025-12-06 A | 2026-01-29 A | A5290 | 100% | 2026-10-12 | 2026-10-25 | Physical Units [39105.3 h] | ENG |
|  | LV11 | **Electrical-Building** |  | 2025-12-06 | 2026-01-29 |  |  |  |  |  |  |
|  | SB | **Submittals** |  | 2025-12-06 | 2026-01-29 |  |  |  |  |  |  |
| A5350 |  | Overall Layout Plan Submittal | 14d | 2025-12-06 A | 2026-01-29 A | A1120 SS | 100% | 2026-09-26 | 2026-10-11 | Physical Units [117316 h] | ENG |
| A5360 |  | Plan & Profile Submittal | 14d | 2025-12-06 A | 2026-01-29 A | A1120 SS | 100% | 2026-09-26 | 2026-10-11 | Physical Units [117316 h] | ENG |
| A5370 |  | Buried trench & Duct Bank Details Submittal | 14d | 2025-12-06 A | 2026-01-29 A | A1120 SS | 100% | 2026-09-26 | 2026-10-11 | Physical Units [117316 h] | ENG |
| A5380 |  | Cable Schedule Details Submittal | 14d | 2025-12-06 A | 2026-01-29 A | A1120 SS | 100% | 2026-09-26 | 2026-10-11 | Physical Units [117316 h] | ENG |
| A5390 |  | Single Line Diagram Submittal | 14d | 2025-12-06 A | 2026-01-29 A | A1120 SS | 100% | 2026-09-26 | 2026-10-11 | Physical Units [117316 h] | ENG |
|  | APP | **Approvals** |  | 2025-12-06 | 2026-01-29 |  |  |  |  |  |  |
| A5400 |  | Overall Layout Plan Approval | 12d | 2025-12-06 A | 2026-01-29 A | A5350 | 100% | 2026-10-12 | 2026-10-25 | Physical Units [39105.3 h] | ENG |
| A5410 |  | Plan & Profile Approval | 12d | 2025-12-06 A | 2026-01-29 A | A5360 | 100% | 2026-10-12 | 2026-10-25 | Physical Units [39105.3 h] | ENG |
| A5420 |  | Buried trench & Duct Bank Details Approval | 12d | 2025-12-06 A | 2026-01-29 A | A5370 | 100% | 2026-10-12 | 2026-10-25 | Physical Units [39105.3 h] | ENG |
| A5430 |  | Cable Schedule Details Approval | 12d | 2025-12-06 A | 2026-01-29 A | A5380 | 100% | 2026-10-12 | 2026-10-25 | Physical Units [39105.3 h] | ENG |
| A5440 |  | Single Line Diagram Approval | 12d | 2025-12-06 A | 2026-01-29 A | A5390 | 100% | 2026-10-12 | 2026-10-25 | Physical Units [39105.3 h] | ENG |
|  | RD | **Road Works Drawings** |  | 2025-12-06 | 2026-01-29 |  |  |  |  |  |  |
|  | SB | **Submittals** |  | 2025-12-06 | 2026-01-29 |  |  |  |  |  |  |
| A2390 |  | Alignment & Setting Out Submittal | 14d | 2025-12-06 A | 2026-01-29 A | A1120 SS | 100% | 2026-09-26 | 2026-10-11 | Physical Units [391053 h] | ENG |
| A2400 |  | Plan and Profile Submittal | 14d | 2025-12-06 A | 2026-01-29 A | A1120 SS | 100% | 2026-09-26 | 2026-10-11 | Physical Units [391053 h] | ENG |
| A2410 |  | Typical Cross Sections Submittal | 14d | 2025-12-06 A | 2026-01-29 A | A1120 SS | 100% | 2026-09-26 | 2026-10-11 | Physical Units [391053 h] | ENG |
| A2420 |  | Cross Sections Details Submittal | 14d | 2025-12-06 A | 2026-01-29 A | A1120 SS | 100% | 2026-09-26 | 2026-10-11 | Physical Units [391053 h] | ENG |
| A2430 |  | Finish Grading Submittal | 14d | 2025-12-06 A | 2026-01-29 A | A1120 SS | 100% | 2026-09-26 | 2026-10-11 | Physical Units [391053 h] | ENG |
| A2490 |  | Road Signing & Marking Roads Submittal | 14d | 2025-12-06 A | 2026-01-29 A | A1120 SS | 100% | 2026-09-26 | 2026-10-11 | Physical Units [391053 h] | ENG |

| ID | WBS | Activity | Duration | Start | Finish | Predecessors | Complete | Planned start | Planned finish | Resources | ALKHARJ INDUSTERIAL AREA - DECEPLINS |
| --- | --- | --- | --- | --- | --- | --- | --- | --- | --- | --- | --- |
|  | APP | **Approvals** |  | 2025-12-06 | 2026-01-29 |  |  |  |  |  |  |
| A2440 |  | Alignment & Setting Out Approval | 12d | 2025-12-06 A | 2026-01-29 A | A2390 | 100% | 2026-10-12 | 2026-10-25 | Physical Units [130351 h] | ENG |
| A2450 |  | Plan & Profile Approval | 12d | 2025-12-06 A | 2026-01-29 A | A2400 | 100% | 2026-10-12 | 2026-10-25 | Physical Units [130351 h] | ENG |
| A2460 |  | Typical Cross Sections Approval | 12d | 2025-12-06 A | 2026-01-29 A | A2410 | 100% | 2026-10-12 | 2026-10-25 | Physical Units [130351 h] | ENG |
| A2470 |  | Cross Sections Details Approval | 12d | 2025-12-06 A | 2026-01-29 A | A2420 | 100% | 2026-10-12 | 2026-10-25 | Physical Units [130351 h] | ENG |
| A2480 |  | Finish Grading Approval | 12d | 2025-12-06 A | 2026-01-29 A | A2430 | 100% | 2026-10-12 | 2026-10-25 | Physical Units [130351 h] | ENG |
| A2500 |  | Road Signing & Marking Roads Approval | 12d | 2025-12-06 A | 2026-01-29 A | A2490 | 100% | 2026-10-12 | 2026-10-25 | Physical Units [130351 h] | ENG |
|  | LS | **Landscape Works Drawings** |  | 2025-12-06 | 2026-01-29 |  |  |  |  |  |  |
|  | SB | **Submittals** |  | 2025-12-06 | 2026-01-29 |  |  |  |  |  |  |
| A2510 |  | Hardscape Plans Landscape Submittal | 14d | 2025-12-06 A | 2026-01-29 A | A1120 SS | 100% | 2026-09-26 | 2026-10-11 | Physical Units [469264 h] | ENG |
| A2520 |  | Softscape Plans Landscape Submittal | 14d | 2025-12-06 A | 2026-01-29 A | A1120 SS | 100% | 2026-09-26 | 2026-10-11 | Physical Units [469264 h] | ENG |
| A2530 |  | Details Plans Landscape Submittal | 14d | 2025-12-06 A | 2026-01-29 A | A1120 SS | 100% | 2026-09-26 | 2026-10-11 | Physical Units [469264 h] | ENG |
| A2540 |  | Schedules Plans Landscape Submittal | 14d | 2025-12-06 A | 2026-01-29 A | A1120 SS | 100% | 2026-09-26 | 2026-10-11 | Physical Units [469264 h] | ENG |
| A2550 |  | Lighting Plans Landscape Submittal | 14d | 2025-12-06 A | 2026-01-29 A | A1120 SS | 100% | 2026-09-26 | 2026-10-11 | Physical Units [469264 h] | ENG |
|  | APP | **Approvals** |  | 2025-12-06 | 2026-01-29 |  |  |  |  |  |  |
| A2560 |  | Hardscape Plans Landscape Approval | 12d | 2025-12-06 A | 2026-01-29 A | A2510 | 100% | 2026-10-12 | 2026-10-25 | Physical Units [156421 h] | ENG |
| A2570 |  | Softscape Plans Landscape Approval | 12d | 2025-12-06 A | 2026-01-29 A | A2520 | 100% | 2026-10-12 | 2026-10-25 | Physical Units [156421 h] | ENG |
| A2580 |  | Details Plans Landscape Approval | 12d | 2025-12-06 A | 2026-01-29 A | A2530 | 100% | 2026-10-12 | 2026-10-25 | Physical Units [156421 h] | ENG |
| A2590 |  | Schedules Plans Landscape Approval | 12d | 2025-12-06 A | 2026-01-29 A | A2540 | 100% | 2026-10-12 | 2026-10-25 | Physical Units [156421 h] | ENG |
| A2600 |  | Lighting Plans Landscape Approval | 12d | 2025-12-06 A | 2026-01-29 A | A2550 | 100% | 2026-10-12 | 2026-10-25 | Physical Units [156421 h] | ENG |
|  | ZN3 | **Labor Camp** |  | 2025-12-06 | 2026-01-29 |  |  |  |  |  |  |
|  | EW | **Earth Work** |  | 2025-12-06 | 2026-01-29 |  |  |  |  |  |  |
|  | SB | **Submittals** |  | 2025-12-06 | 2026-01-29 |  |  |  |  |  |  |
| A2610 |  | NGL Submittal | 14d | 2025-12-06 A | 2026-01-29 A | A1120 SS | 100% | 2026-09-26 | 2026-10-11 | Physical Units [2107370 h] | ENG |

| ID | WBS | Activity | Duration | Start | Finish | Predecessors | Complete | Planned start | Planned finish | Resources | ALKHARJ INDUSTERIAL AREA - DECEPLINS |
| --- | --- | --- | --- | --- | --- | --- | --- | --- | --- | --- | --- |
|  | APP | **Approvals** |  | 2025-12-06 | 2026-01-29 |  |  |  |  |  |  |
| A2620 |  | NGL Approval | 12d | 2025-12-06 A | 2026-01-29 A | A2610 | 100% | 2026-10-12 | 2026-10-25 | Physical Units [702457 h] | ENG |
|  | RD | **Road Works Drawings** |  | 2025-12-06 | 2026-01-29 |  |  |  |  |  |  |
|  | SB | **Submittals** |  | 2025-12-06 | 2026-01-29 |  |  |  |  |  |  |
| A2630 |  | Alignment & Setting Out Submittal | 14d | 2025-12-06 A | 2026-01-29 A | A1120 SS | 100% | 2026-09-26 | 2026-10-11 | Physical Units [351228 h] | ENG |
| A2640 |  | Plan and Profile Submittal | 14d | 2025-12-06 A | 2026-01-29 A | A1120 SS | 100% | 2026-09-26 | 2026-10-11 | Physical Units [351228 h] | ENG |
| A2650 |  | Typical Cross Sections Submittal | 14d | 2025-12-06 A | 2026-01-29 A | A1120 SS | 100% | 2026-09-26 | 2026-10-11 | Physical Units [351228 h] | ENG |
| A2660 |  | Cross Sections Details Submittal | 14d | 2025-12-06 A | 2026-01-29 A | A1120 SS | 100% | 2026-09-26 | 2026-10-11 | Physical Units [351228 h] | ENG |
| A2670 |  | Finish Grading Submittal | 14d | 2025-12-06 A | 2026-01-29 A | A1120 SS | 100% | 2026-09-26 | 2026-10-11 | Physical Units [351228 h] | ENG |
| A2730 |  | Road Signing & Marking Roads Submittal | 14d | 2025-12-06 A | 2026-01-29 A | A1120 SS | 100% | 2026-09-26 | 2026-10-11 | Physical Units [351228 h] | ENG |
|  | APP | **Approvals** |  | 2025-12-06 | 2026-01-29 |  |  |  |  |  |  |
| A2680 |  | Alignment & Setting Out Approval | 12d | 2025-12-06 A | 2026-01-29 A | A2630 | 100% | 2026-10-12 | 2026-10-25 | Physical Units [117076 h] | ENG |
| A2690 |  | Plan & Profile Approval | 12d | 2025-12-06 A | 2026-01-29 A | A2640 | 100% | 2026-10-12 | 2026-10-25 | Physical Units [117076 h] | ENG |
| A2700 |  | Typical Cross Sections Approval | 12d | 2025-12-06 A | 2026-01-29 A | A2650 | 100% | 2026-10-12 | 2026-10-25 | Physical Units [117076 h] | ENG |
| A2710 |  | Cross Sections Details Approval | 12d | 2025-12-06 A | 2026-01-29 A | A2660 | 100% | 2026-10-12 | 2026-10-25 | Physical Units [117076 h] | ENG |
| A2720 |  | Finish Grading Approval | 12d | 2025-12-06 A | 2026-01-29 A | A2670 | 100% | 2026-10-12 | 2026-10-25 | Physical Units [117076 h] | ENG |
| A2740 |  | Road Signing & Marking Roads Approval | 12d | 2025-12-06 A | 2026-01-29 A | A2730 | 100% | 2026-10-12 | 2026-10-25 | Physical Units [117076 h] | ENG |
|  | ZN4 | **Mosque** |  | 2025-12-06 | 2026-01-29 |  |  |  |  |  |  |
|  | EW | **Earth Work** |  | 2025-12-06 | 2026-01-29 |  |  |  |  |  |  |
|  | SB | **Submittals** |  | 2025-12-06 | 2026-01-29 |  |  |  |  |  |  |
| A2750 |  | NGL Submittal | 14d | 2025-12-06 A | 2026-01-29 A | A1120 SS | 100% | 2026-09-26 | 2026-10-11 | Physical Units [1616343 h] | ENG |
|  | APP | **Approvals** |  | 2025-12-06 | 2026-01-29 |  |  |  |  |  |  |
| A2760 |  | NGL Approval | 12d | 2025-12-06 A | 2026-01-29 A | A2750 | 100% | 2026-10-12 | 2026-10-25 | Physical Units [538781 h] | ENG |
|  | SC | **Structural Work Drawings** |  | 2025-12-06 | 2026-01-29 |  |  |  |  |  |  |
|  | SB | **Submittals** |  | 2025-12-06 | 2026-01-29 |  |  |  |  |  |  |
| A2770 |  | Wet Utilities Drawings Submittal | 14d | 2025-12-06 A | 2026-01-29 A | A1120 SS | 100% | 2026-09-26 | 2026-10-11 | Physical Units [215512 h] | ENG |
| A2780 |  | Dry Utilities Drawings Submittal | 14d | 2025-12-06 A | 2026-01-29 A | A1120 SS | 100% | 2026-09-26 | 2026-10-11 | Physical Units [215512 h] | ENG |
| A2790 |  | Civil Works Drawings Submittal | 14d | 2025-12-06 A | 2026-01-29 A | A1120 SS | 100% | 2026-09-26 | 2026-10-11 | Physical Units [215512 h] | ENG |
| A2800 |  | Arch. Works Drawings Submittal | 14d | 2025-12-06 A | 2026-01-29 A | A1120 SS | 100% | 2026-09-26 | 2026-10-11 | Physical Units [215512 h] | ENG |
| A2810 |  | MEP Works Drawings Submittal | 14d | 2025-12-06 A | 2026-01-29 A | A1120 SS | 100% | 2026-09-26 | 2026-10-11 | Physical Units [215512 h] | ENG |

| ID | WBS | Activity | Duration | Start | Finish | Predecessors | Complete | Planned start | Planned finish | Resources | ALKHARJ INDUSTERIAL AREA - DECEPLINS |
| --- | --- | --- | --- | --- | --- | --- | --- | --- | --- | --- | --- |
|  | APP | **Approvals** |  | 2025-12-06 | 2026-01-29 |  |  |  |  |  |  |
| A2820 |  | Wet Utilities Drawings Approval | 12d | 2025-12-06 A | 2026-01-29 A | A2770 | 100% | 2026-10-12 | 2026-10-25 | Physical Units [71837.5 h] | ENG |
| A2830 |  | Dry Utilities Drawings Approval | 12d | 2025-12-06 A | 2026-01-29 A | A2780 | 100% | 2026-10-12 | 2026-10-25 | Physical Units [71837.5 h] | ENG |
| A2840 |  | Civil Works Drawings Approvalal | 12d | 2025-12-06 A | 2026-01-29 A | A2790 | 100% | 2026-10-12 | 2026-10-25 | Physical Units [71837.5 h] | ENG |
| A2850 |  | Arch. Works Drawings Approval | 12d | 2025-12-06 A | 2026-01-29 A | A2800 | 100% | 2026-10-12 | 2026-10-25 | Physical Units [71837.5 h] | ENG |
| A2860 |  | MEP Works Drawings Approval | 12d | 2025-12-06 A | 2026-01-29 A | A2810 | 100% | 2026-10-12 | 2026-10-25 | Physical Units [71837.5 h] | ENG |
|  | 1 | **Portable Capins** |  | 2025-12-06 | 2026-09-28 |  |  |  |  |  |  |
|  | 1 | **Submittals** |  | 2025-12-06 | 2026-09-28 |  |  |  |  |  |  |
| A93260 |  | Drawings Submittal | 14d | 2025-12-06 A | 2026-09-28 A | A1120 SS | 100% | 2026-09-26 | 2026-10-11 | Physical Units [359187 h] | ENG |
|  | 2 | **Approvals** |  | 2025-12-06 | 2026-09-28 |  |  |  |  |  |  |
| A93270 |  | Drawings Approvals | 12d | 2025-12-06 A | 2026-09-28 A | A93260 | 100% | 2026-10-12 | 2026-10-25 | Physical Units [359187 h] | ENG |
|  | MTS | **MATERIAL SUBMITAL** |  | 2025-12-06 | 2026-01-29 |  |  |  |  |  |  |
|  | CVA | **CIVIL & ARCHITECTURE** |  | 2025-12-06 | 2026-01-29 |  |  |  |  |  |  |
| A7220 |  | Sewer Manholes | 14d | 2025-12-06 A | 2026-01-29 A | A1120 SS | 100% | 2026-09-26 | 2026-10-11 | Physical Units | PRO |
| A7230 |  | Storm Manholes | 14d | 2025-12-06 A | 2026-01-29 A | A1120 SS | 100% | 2026-09-26 | 2026-10-11 | Physical Units | PRO |
| A7240 |  | Telecome Manholes | 14d | 2025-12-06 A | 2026-01-29 A | A1120 SS | 100% | 2026-09-26 | 2026-10-11 | Physical Units | PRO |
| A7250 |  | Lighting Poles Precast Foundation & Bolt | 14d | 2025-12-06 A | 2026-01-29 A | A1120 SS | 100% | 2026-09-26 | 2026-10-11 | Physical Units | PRO |
| A7260 |  | Concrete curb | 14d | 2025-12-06 A | 2026-01-29 A | A1120 SS | 100% | 2026-09-26 | 2026-10-11 | Physical Units | PRO |
| A7270 |  | Aggregate Sub-Grade & Basecourse | 14d | 2025-12-06 A | 2026-01-29 A | A1120 SS | 100% | 2026-09-26 | 2026-10-11 | Physical Units | PRO |
| A7280 |  | Asphalt | 14d | 2025-12-06 A | 2026-01-29 A | A1120 SS | 100% | 2026-09-26 | 2026-10-11 | Physical Units | PRO |
| A7290 |  | Traffic signage | 14d | 2025-12-06 A | 2026-01-29 A | A1120 SS | 100% | 2026-09-26 | 2026-10-11 | Physical Units | PRO |
| A7300 |  | Plant and trees | 14d | 2025-12-06 A | 2026-01-29 A | A1120 SS | 100% | 2026-09-26 | 2026-10-11 | Physical Units | PRO |
| A7310 |  | Garbage Bin, trash & litter | 14d | 2025-12-06 A | 2026-01-29 A | A1120 SS | 100% | 2026-09-26 | 2026-10-11 | Physical Units | PRO |
| A7320 |  | Paving blocks 200*100*60 mm | 14d | 2025-12-06 A | 2026-01-29 A | A1120 SS | 100% | 2026-09-26 | 2026-10-11 | Physical Units | PRO |
| A7330 |  | Blocks & Accessories | 14d | 2025-12-06 A | 2026-01-29 A | A1120 SS | 100% | 2026-09-26 | 2026-10-11 | Physical Units | PRO |
| A7340 |  | Access ladder | 14d | 2025-12-06 A | 2026-01-29 A | A1120 SS | 100% | 2026-09-26 | 2026-10-11 | Physical Units | PRO |
| A7350 |  | Stanless steel Handril | 14d | 2025-12-06 A | 2026-01-29 A | A1120 SS | 100% | 2026-09-26 | 2026-10-11 | Physical Units | PRO |
| A7360 |  | Ductile iron steel cover | 14d | 2025-12-06 A | 2026-01-29 A | A1120 SS | 100% | 2026-09-26 | 2026-10-11 | Physical Units | PRO |
| A7370 |  | Structural steel | 14d | 2025-12-06 A | 2026-01-29 A | A1120 SS | 100% | 2026-09-26 | 2026-10-11 | Physical Units | PRO |
| A7380 |  | Waterproofing Work | 14d | 2025-12-06 A | 2026-01-29 A | A1120 SS | 100% | 2026-09-26 | 2026-10-11 | Physical Units | PRO |
| A7390 |  | Waterproofing membrane | 14d | 2025-12-06 A | 2026-01-29 A | A1120 SS | 100% | 2026-09-26 | 2026-10-11 | Physical Units | PRO |
| A7400 |  | Doors - (Glass & Sliding) | 14d | 2025-12-06 A | 2026-01-29 A | A1120 SS | 100% | 2026-09-26 | 2026-10-11 | Physical Units | PRO |
| A7410 |  | Windows | 14d | 2025-12-06 A | 2026-01-29 A | A1120 SS | 100% | 2026-09-26 | 2026-10-11 | Physical Units | PRO |
| A7420 |  | Paints & Epoxy | 14d | 2025-12-06 A | 2026-01-29 A | A1120 SS | 100% | 2026-09-26 | 2026-10-11 | Physical Units | PRO |
| A7430 |  | Granite, ceramic | 14d | 2025-12-06 A | 2026-01-29 A | A1120 SS | 100% | 2026-09-26 | 2026-10-11 | Physical Units | PRO |
| A7440 |  | Terrazzo tiles | 14d | 2025-12-06 A | 2026-01-29 A | A1120 SS | 100% | 2026-09-26 | 2026-10-11 | Physical Units | PRO |
| A7450 |  | Fall ceiling | 14d | 2025-12-06 A | 2026-01-29 A | A1120 SS | 100% | 2026-09-26 | 2026-10-11 | Physical Units | PRO |
| A7460 |  | Safety Bollards | 14d | 2025-12-06 A | 2026-01-29 A | A1120 SS | 100% | 2026-09-26 | 2026-10-11 | Physical Units | PRO |
| A7470 |  | Geotextile Membrane | 14d | 2025-12-06 A | 2026-01-29 A | A1120 SS | 100% | 2026-09-26 | 2026-10-11 | Physical Units | PRO |
| A7480 |  | Curbstone | 14d | 2025-12-06 A | 2026-01-29 A | A1120 SS | 100% | 2026-09-26 | 2026-10-11 | Physical Units | PRO |
| A7490 |  | Sidewalk interlock/Concrete Pavers | 14d | 2025-12-06 A | 2026-01-29 A | A1120 SS | 100% | 2026-09-26 | 2026-10-11 | Physical Units | PRO |
| A7500 |  | Trees and Bushes-Landscape ( soft) | 14d | 2025-12-06 A | 2026-01-29 A | A1120 SS | 100% | 2026-09-26 | 2026-10-11 | Physical Units | PRO |
| A7510 |  | Concrete Masonry Blocks | 14d | 2025-12-06 A | 2026-01-29 A | A1120 SS | 100% | 2026-09-26 | 2026-10-11 | Physical Units | PRO |
| A7520 |  | Block work Accessories | 14d | 2025-12-06 A | 2026-01-29 A | A1120 SS | 100% | 2026-09-26 | 2026-10-11 | Physical Units | PRO |
| A7530 |  | Plaster to receive tile finish | 14d | 2025-12-06 A | 2026-01-29 A | A1120 SS | 100% | 2026-09-26 | 2026-10-11 | Physical Units | PRO |
| A7540 |  | Paint for External Areas | 14d | 2025-12-06 A | 2026-01-29 A | A1120 SS | 100% | 2026-09-26 | 2026-10-11 | Physical Units | PRO |
| A7550 |  | Paint for Internal Areas | 14d | 2025-12-06 A | 2026-01-29 A | A1120 SS | 100% | 2026-09-26 | 2026-10-11 | Physical Units | PRO |
| A7560 |  | Concrete repair & Curing material | 14d | 2025-12-06 A | 2026-01-29 A | A1120 SS | 100% | 2026-09-26 | 2026-10-11 | Physical Units | PRO |
| A7570 |  | Bonding agent | 14d | 2025-12-06 A | 2026-01-29 A | A1120 SS | 100% | 2026-09-26 | 2026-10-11 | Physical Units | PRO |
| A7580 |  | Concrete Mix for PC works | 14d | 2025-12-06 A | 2026-01-29 A | A1120 SS | 100% | 2026-09-26 | 2026-10-11 | Physical Units | PRO |
| A7590 |  | Concrete Mix for RC works | 14d | 2025-12-06 A | 2026-01-29 A | A1120 SS | 100% | 2026-09-26 | 2026-10-11 | Physical Units | PRO |
| A7600 |  | Reinforcement Steel | 14d | 2025-12-06 A | 2026-01-29 A | A1120 SS | 100% | 2026-09-26 | 2026-10-11 | Physical Units | PRO |
| A7610 |  | Sand Cement Plaster for Internal Walls | 14d | 2025-12-06 A | 2026-01-29 A | A1120 SS | 100% | 2026-09-26 | 2026-10-11 | Physical Units | PRO |
| A7620 |  | Sand Cement Plaster for External Walls | 14d | 2025-12-06 A | 2026-01-29 A | A1120 SS | 100% | 2026-09-26 | 2026-10-11 | Physical Units | PRO |
| A7630 |  | Porcelain Tiling | 14d | 2025-12-06 A | 2026-01-29 A | A1120 SS | 100% | 2026-09-26 | 2026-10-11 | Physical Units | PRO |
| A7640 |  | False Ceilings | 14d | 2025-12-06 A | 2026-01-29 A | A1120 SS | 100% | 2026-09-26 | 2026-10-11 | Physical Units | PRO |
| A7650 |  | Carpet Flooring | 14d | 2025-12-06 A | 2026-01-29 A | A1120 SS | 100% | 2026-09-26 | 2026-10-11 | Physical Units | PRO |
| A7660 |  | Landscape (Hard ) | 14d | 2025-12-06 A | 2026-01-29 A | A1120 SS | 100% | 2026-09-26 | 2026-10-11 | Physical Units | PRO |
| A7670 |  | Guard Rails | 14d | 2025-12-06 A | 2026-01-29 A | A1120 SS | 100% | 2026-09-26 | 2026-10-11 | Physical Units | PRO |

| ID | WBS | Activity | Duration | Start | Finish | Predecessors | Complete | Planned start | Planned finish | Resources | ALKHARJ INDUSTERIAL AREA - DECEPLINS |
| --- | --- | --- | --- | --- | --- | --- | --- | --- | --- | --- | --- |
|  | ELE | **ELECTRICAL** |  | 2025-12-06 | 2026-01-29 |  |  |  |  |  |  |
| A7680 |  | Public address System | 14d | 2025-12-06 A | 2026-01-29 A | A1120 SS | 100% | 2026-09-26 | 2026-10-11 | Physical Units | PRO |
| A7690 |  | Fire Pump | 14d | 2025-12-06 A | 2026-01-29 A | A1120 SS | 100% | 2026-09-26 | 2026-10-11 | Physical Units | PRO |
| A7700 |  | Unit Substation & RMU | 14d | 2025-12-06 A | 2026-01-29 A | A1120 SS | 100% | 2026-09-26 | 2026-10-11 | Physical Units | PRO |
| A7710 |  | MV Cables | 14d | 2025-12-06 A | 2026-01-29 A | A1120 SS | 100% | 2026-09-26 | 2026-10-11 | Physical Units | PRO |
| A7720 |  | LV Cables | 14d | 2025-12-06 A | 2026-01-29 A | A1120 SS | 100% | 2026-09-26 | 2026-10-11 | Physical Units | PRO |
| A7730 |  | LV Wire | 14d | 2025-12-06 A | 2026-01-29 A | A1120 SS | 100% | 2026-09-26 | 2026-10-11 | Physical Units | PRO |
| A7740 |  | Electrical Panels | 14d | 2025-12-06 A | 2026-01-29 A | A1120 SS | 100% | 2026-09-26 | 2026-10-11 | Physical Units | PRO |
| A7750 |  | LV Conductors (part of the panels) | 14d | 2025-12-06 A | 2026-01-29 A | A1120 SS | 100% | 2026-09-26 | 2026-10-11 | Physical Units | PRO |
| A7760 |  | Underground Ducts-UPVC | 14d | 2025-12-06 A | 2026-01-29 A | A1120 SS | 100% | 2026-09-26 | 2026-10-11 | Physical Units | PRO |
| A7770 |  | Underground Ducts-HDPE | 14d | 2025-12-06 A | 2026-01-29 A | A1120 SS | 100% | 2026-09-26 | 2026-10-11 | Physical Units | PRO |
| A7780 |  | External Lighting Fixtures | 14d | 2025-12-06 A | 2026-01-29 A | A1120 SS | 100% | 2026-09-26 | 2026-10-11 | Physical Units | PRO |
| A7790 |  | Street Lights Lighting Fixtures | 14d | 2025-12-06 A | 2026-01-29 A | A1120 SS | 100% | 2026-09-26 | 2026-10-11 | Physical Units | PRO |
| A7800 |  | Street Lighting Poles | 14d | 2025-12-06 A | 2026-01-29 A | A1120 SS | 100% | 2026-09-26 | 2026-10-11 | Physical Units | PRO |
| A7810 |  | PVC & EMT conduits | 14d | 2025-12-06 A | 2026-01-29 A | A1120 SS | 100% | 2026-09-26 | 2026-10-11 | Physical Units | PRO |
| A7820 |  | LIGHTING FIXTURES (buildings Internal) | 14d | 2025-12-06 A | 2026-01-29 A | A1120 SS | 100% | 2026-09-26 | 2026-10-11 | Physical Units | PRO |
| A7830 |  | Wiring Devices and Switches | 14d | 2025-12-06 A | 2026-01-29 A | A1120 SS | 100% | 2026-09-26 | 2026-10-11 | Physical Units | PRO |
| A7840 |  | DALI Cabinet (external lighting control) | 14d | 2025-12-06 A | 2026-01-29 A | A1120 SS | 100% | 2026-09-26 | 2026-10-11 | Physical Units | PRO |
| A7850 |  | Earthing System | 14d | 2025-12-06 A | 2026-01-29 A | A1120 SS | 100% | 2026-09-26 | 2026-10-11 | Physical Units | PRO |
| A7860 |  | CCTV Pole | 14d | 2025-12-06 A | 2026-01-29 A | A1120 SS | 100% | 2026-09-26 | 2026-10-11 | Physical Units | PRO |
| A7870 |  | GI duct work with insulation & Support | 14d | 2025-12-06 A | 2026-01-29 A | A1120 SS | 100% | 2026-09-26 | 2026-10-11 | Physical Units | PRO |
| A7880 |  | Drain & Clean Out | 14d | 2025-12-06 A | 2026-01-29 A | A1120 SS | 100% | 2026-09-26 | 2026-10-11 | Physical Units | PRO |
| A7890 |  | Split AC Package | 14d | 2025-12-06 A | 2026-01-29 A | A1120 SS | 100% | 2026-09-26 | 2026-10-11 | Physical Units | PRO |
| A7900 |  | Ventilation Unit-Fan | 14d | 2025-12-06 A | 2026-01-29 A | A1120 SS | 100% | 2026-09-26 | 2026-10-11 | Physical Units | PRO |
| A7910 |  | Cable glands, lugs and accessories | 14d | 2025-12-06 A | 2026-01-29 A | A1120 SS | 100% | 2026-09-26 | 2026-10-11 | Physical Units | PRO |

| ID | WBS | Activity | Duration | Start | Finish | Predecessors | Complete | Planned start | Planned finish | Resources | ALKHARJ INDUSTERIAL AREA - DECEPLINS |
| --- | --- | --- | --- | --- | --- | --- | --- | --- | --- | --- | --- |
|  | MECH | **MECHANICAL** |  | 2025-12-06 | 2026-01-29 |  |  |  |  |  |  |
| A7920 |  | Secondary Irrigation System | 14d | 2025-12-06 A | 2026-01-29 A | A1120 SS | 100% | 2026-09-26 | 2026-10-11 | Physical Units | PRO |
| A7930 |  | HDPE Pipes & Fittings | 14d | 2025-12-06 A | 2026-01-29 A | A1120 SS | 100% | 2026-09-26 | 2026-10-11 | Physical Units | PRO |
| A7940 |  | UPVC Pipes & Fittings | 14d | 2025-12-06 A | 2026-01-29 A | A1120 SS | 100% | 2026-09-26 | 2026-10-11 | Physical Units | PRO |
| A7950 |  | GRP Pipes & Fittings | 14d | 2025-12-06 A | 2026-01-29 A | A1120 SS | 100% | 2026-09-26 | 2026-10-11 | Physical Units | PRO |
| A7960 |  | Sanitory Ware, Plumbing Fixtures, Toilet Accessories | 14d | 2025-12-06 A | 2026-01-29 A | A1120 SS | 100% | 2026-09-26 | 2026-10-11 | Physical Units | PRO |
| A7970 |  | Water Tank | 14d | 2025-12-06 A | 2026-01-29 A | A1120 SS | 100% | 2026-09-26 | 2026-10-11 | Physical Units | PRO |
| A7980 |  | Gate Valves | 14d | 2025-12-06 A | 2026-01-29 A | A1120 SS | 100% | 2026-09-26 | 2026-10-11 | Physical Units | PRO |
| A7990 |  | Surface Box for Gate valve | 14d | 2025-12-06 A | 2026-01-29 A | A1120 SS | 100% | 2026-09-26 | 2026-10-11 | Physical Units | PRO |
| A8000 |  | Air Release Valves | 14d | 2025-12-06 A | 2026-01-29 A | A1120 SS | 100% | 2026-09-26 | 2026-10-11 | Physical Units | PRO |
| A8010 |  | Washout Valves | 14d | 2025-12-06 A | 2026-01-29 A | A1120 SS | 100% | 2026-09-26 | 2026-10-11 | Physical Units | PRO |
| A8020 |  | Connection Chamber | 14d | 2025-12-06 A | 2026-01-29 A | A1120 SS | 100% | 2026-09-26 | 2026-10-11 | Physical Units | PRO |
| A8030 |  | HDPE House Connections Chambers | 14d | 2025-12-06 A | 2026-01-29 A | A1120 SS | 100% | 2026-09-26 | 2026-10-11 | Physical Units | PRO |
| A8040 |  | Hose Bib | 14d | 2025-12-06 A | 2026-01-29 A | A1120 SS | 100% | 2026-09-26 | 2026-10-11 | Physical Units | PRO |
| A8050 |  | PPR Pipes & Fittings | 14d | 2025-12-06 A | 2026-01-29 A | A1120 SS | 100% | 2026-09-26 | 2026-10-11 | Physical Units | PRO |
| A8060 |  | Water Hammer Arrestor & TMV | 14d | 2025-12-06 A | 2026-01-29 A | A1120 SS | 100% | 2026-09-26 | 2026-10-11 | Physical Units | PRO |
| A8070 |  | Sewage Manholes Cover with frame | 14d | 2025-12-06 A | 2026-01-29 A | A1120 SS | 100% | 2026-09-26 | 2026-10-11 | Physical Units | PRO |
| A8080 |  | Irrigation Manholes Cover with frame | 14d | 2025-12-06 A | 2026-01-29 A | A1120 SS | 100% | 2026-09-26 | 2026-10-11 | Physical Units | PRO |
| A8090 |  | Potable Manholes Cover with frame | 14d | 2025-12-06 A | 2026-01-29 A | A1120 SS | 100% | 2026-09-26 | 2026-10-11 | Physical Units | PRO |
| A8100 |  | ICT Manholes Cover with frame | 14d | 2025-12-06 A | 2026-01-29 A | A1120 SS | 100% | 2026-09-26 | 2026-10-11 | Physical Units | PRO |
| A8110 |  | Polyethylene Sheets | 14d | 2025-12-06 A | 2026-01-29 A | A1120 SS | 100% | 2026-09-26 | 2026-10-11 | Physical Units | PRO |
| A8120 |  | Warning Tape | 14d | 2025-12-06 A | 2026-01-29 A | A1120 SS | 100% | 2026-09-26 | 2026-10-11 | Physical Units | PRO |
| A8130 |  | Bitumen Paint (Bituminous Damp proofing) | 14d | 2025-12-06 A | 2026-01-29 A | A1120 SS | 100% | 2026-09-26 | 2026-10-11 | Physical Units | PRO |
| A8140 |  | Anti Termite & Pest Contro; | 14d | 2025-12-06 A | 2026-01-29 A | A1120 SS | 100% | 2026-09-26 | 2026-10-11 | Physical Units | PRO |
| A8150 |  | Warning tape | 14d | 2025-12-06 A | 2026-01-29 A | A1120 SS | 100% | 2026-09-26 | 2026-10-11 | Physical Units | PRO |
| A8160 |  | Fire Hydrants | 14d | 2025-12-06 A | 2026-01-29 A | A1120 SS | 100% | 2026-09-26 | 2026-10-11 | Physical Units | PRO |
| A8170 |  | OS & Y Gate valve | 14d | 2025-12-06 A | 2026-01-29 A | A1120 SS | 100% | 2026-09-26 | 2026-10-11 | Physical Units | PRO |
| A8180 |  | Fire Extinguisher | 14d | 2025-12-06 A | 2026-01-29 A | A1120 SS | 100% | 2026-09-26 | 2026-10-11 | Physical Units | PRO |
| A8190 |  | Fire Alarm systems & cable | 14d | 2025-12-06 A | 2026-01-29 A | A1120 SS | 100% | 2026-09-26 | 2026-10-11 | Physical Units | PRO |
| A8200 |  | Water Heater | 14d | 2025-12-06 A | 2026-01-29 A | A1120 SS | 100% | 2026-09-26 | 2026-10-11 | Physical Units | PRO |
| A8210 |  | Termination Kits | 14d | 2025-12-06 A | 2026-01-29 A | A1120 SS | 100% | 2026-09-26 | 2026-10-11 | Physical Units | PRO |

| ID | WBS | Activity | Duration | Start | Finish | Predecessors | Complete | Planned start | Planned finish | Resources | ALKHARJ INDUSTERIAL AREA - DECEPLINS |
| --- | --- | --- | --- | --- | --- | --- | --- | --- | --- | --- | --- |
|  | MTA | **MATERIAL APPROVAL** |  | 2025-12-06 | 2026-01-29 |  |  |  |  |  |  |
|  | CVA | **CIVIL & ARCHITECTURE** |  | 2025-12-06 | 2026-01-29 |  |  |  |  |  |  |
| A8220 |  | Sewer Manholes | 14d | 2025-12-06 A | 2026-01-29 A | A7220 | 100% | 2026-10-12 | 2026-10-27 | Physical Units | PRO |
| A8230 |  | Storm Manholes | 14d | 2025-12-06 A | 2026-01-29 A | A7230 | 100% | 2026-10-12 | 2026-10-27 | Physical Units | PRO |
| A8240 |  | Telecome Manholes | 14d | 2025-12-06 A | 2026-01-29 A | A7240 | 100% | 2026-10-12 | 2026-10-27 | Physical Units | PRO |
| A8250 |  | Lighting Poles Precast Foundation & Bolt | 14d | 2025-12-06 A | 2026-01-29 A | A7250 | 100% | 2026-10-12 | 2026-10-27 | Physical Units | PRO |
| A8260 |  | Concrete curb | 14d | 2025-12-06 A | 2026-01-29 A | A7260 | 100% | 2026-10-12 | 2026-10-27 | Physical Units | PRO |
| A8270 |  | Aggregate Sub-Grade & Basecourse | 14d | 2025-12-06 A | 2026-01-29 A | A7270 | 100% | 2026-10-12 | 2026-10-27 | Physical Units | PRO |
| A8280 |  | Asphalt | 14d | 2025-12-06 A | 2026-01-29 A | A7280 | 100% | 2026-10-12 | 2026-10-27 | Physical Units | PRO |
| A8290 |  | Traffic signage | 14d | 2025-12-06 A | 2026-01-29 A | A7290 | 100% | 2026-10-12 | 2026-10-27 | Physical Units | PRO |
| A8300 |  | Plant and trees | 14d | 2025-12-06 A | 2026-01-29 A | A7300 | 100% | 2026-10-12 | 2026-10-27 | Physical Units | PRO |
| A8310 |  | Garbage Bin, trash & litter | 14d | 2025-12-06 A | 2026-01-29 A | A7310 | 100% | 2026-10-12 | 2026-10-27 | Physical Units | PRO |
| A8320 |  | Paving blocks 200*100*60 mm | 14d | 2025-12-06 A | 2026-01-29 A | A7320 | 100% | 2026-10-12 | 2026-10-27 | Physical Units | PRO |
| A8330 |  | Blocks & Accessories | 14d | 2025-12-06 A | 2026-01-29 A | A7330 | 100% | 2026-10-12 | 2026-10-27 | Physical Units | PRO |
| A8340 |  | Access ladder | 14d | 2025-12-06 A | 2026-01-29 A | A7340 | 100% | 2026-10-12 | 2026-10-27 | Physical Units | PRO |
| A8350 |  | Stanless steel Handril | 14d | 2025-12-06 A | 2026-01-29 A | A7350 | 100% | 2026-10-12 | 2026-10-27 | Physical Units | PRO |
| A8360 |  | Ductile iron steel cover | 14d | 2025-12-06 A | 2026-01-29 A | A7360 | 100% | 2026-10-12 | 2026-10-27 | Physical Units | PRO |
| A8370 |  | Structural steel | 14d | 2025-12-06 A | 2026-01-29 A | A7370 | 100% | 2026-10-12 | 2026-10-27 | Physical Units | PRO |
| A8380 |  | Waterproofing Work | 14d | 2025-12-06 A | 2026-01-29 A | A7380 | 100% | 2026-10-12 | 2026-10-27 | Physical Units | PRO |
| A8390 |  | Waterproofing membrane | 14d | 2025-12-06 A | 2026-01-29 A | A7390 | 100% | 2026-10-12 | 2026-10-27 | Physical Units | PRO |
| A8400 |  | Doors - (Glass & Sliding) | 14d | 2025-12-06 A | 2026-01-29 A | A7400 | 100% | 2026-10-12 | 2026-10-27 | Physical Units | PRO |
| A8410 |  | Windows | 14d | 2025-12-06 A | 2026-01-29 A | A7410 | 100% | 2026-10-12 | 2026-10-27 | Physical Units | PRO |
| A8420 |  | Paints & Epoxy | 14d | 2025-12-06 A | 2026-01-29 A | A7420 | 100% | 2026-10-12 | 2026-10-27 | Physical Units | PRO |
| A8430 |  | Granite, ceramic | 14d | 2025-12-06 A | 2026-01-29 A | A7430 | 100% | 2026-10-12 | 2026-10-27 | Physical Units | PRO |
| A8440 |  | Terrazzo tiles | 14d | 2025-12-06 A | 2026-01-29 A | A7440 | 100% | 2026-10-12 | 2026-10-27 | Physical Units | PRO |
| A8450 |  | Fall ceiling | 14d | 2025-12-06 A | 2026-01-29 A | A7450 | 100% | 2026-10-12 | 2026-10-27 | Physical Units | PRO |
| A8460 |  | Safety Bollards | 14d | 2025-12-06 A | 2026-01-29 A | A7460 | 100% | 2026-10-12 | 2026-10-27 | Physical Units | PRO |
| A8470 |  | Geotextile Membrane | 14d | 2025-12-06 A | 2026-01-29 A | A7470 | 100% | 2026-10-12 | 2026-10-27 | Physical Units | PRO |
| A8480 |  | Curbstone | 14d | 2025-12-06 A | 2026-01-29 A | A7480 | 100% | 2026-10-12 | 2026-10-27 | Physical Units | PRO |
| A8490 |  | Sidewalk interlock/Concrete Pavers | 14d | 2025-12-06 A | 2026-01-29 A | A7490 | 100% | 2026-10-12 | 2026-10-27 | Physical Units | PRO |
| A8500 |  | Trees and Bushes-Landscape ( soft) | 14d | 2025-12-06 A | 2026-01-29 A | A7500 | 100% | 2026-10-12 | 2026-10-27 | Physical Units | PRO |
| A8510 |  | Concrete Masonry Blocks | 14d | 2025-12-06 A | 2026-01-29 A | A7510 | 100% | 2026-10-12 | 2026-10-27 | Physical Units | PRO |
| A8520 |  | Block work Accessories | 14d | 2025-12-06 A | 2026-01-29 A | A7520 | 100% | 2026-10-12 | 2026-10-27 | Physical Units | PRO |
| A8530 |  | Plaster to receive tile finish | 14d | 2025-12-06 A | 2026-01-29 A | A7530 | 100% | 2026-10-12 | 2026-10-27 | Physical Units | PRO |
| A8540 |  | Paint for External Areas | 14d | 2025-12-06 A | 2026-01-29 A | A7540 | 100% | 2026-10-12 | 2026-10-27 | Physical Units | PRO |
| A8550 |  | Paint for Internal Areas | 14d | 2025-12-06 A | 2026-01-29 A | A7550 | 100% | 2026-10-12 | 2026-10-27 | Physical Units | PRO |
| A8560 |  | Concrete repair & Curing material | 14d | 2025-12-06 A | 2026-01-29 A | A7560 | 100% | 2026-10-12 | 2026-10-27 | Physical Units | PRO |
| A8570 |  | Bonding agent | 14d | 2025-12-06 A | 2026-01-29 A | A7570 | 100% | 2026-10-12 | 2026-10-27 | Physical Units | PRO |
| A8580 |  | Concrete Mix for PC works | 14d | 2025-12-06 A | 2026-01-29 A | A7580 | 100% | 2026-10-12 | 2026-10-27 | Physical Units | PRO |
| A8590 |  | Concrete Mix for RC works | 14d | 2025-12-06 A | 2026-01-29 A | A7590 | 100% | 2026-10-12 | 2026-10-27 | Physical Units | PRO |
| A8600 |  | Reinforcement Steel | 14d | 2025-12-06 A | 2026-01-29 A | A7600 | 100% | 2026-10-12 | 2026-10-27 | Physical Units | PRO |
| A8610 |  | Sand Cement Plaster for Internal Walls | 14d | 2025-12-06 A | 2026-01-29 A | A7610 | 100% | 2026-10-12 | 2026-10-27 | Physical Units | PRO |
| A8620 |  | Sand Cement Plaster for External Walls | 14d | 2025-12-06 A | 2026-01-29 A | A7620 | 100% | 2026-10-12 | 2026-10-27 | Physical Units | PRO |
| A8630 |  | Porcelain Tiling | 14d | 2025-12-06 A | 2026-01-29 A | A7630 | 100% | 2026-10-12 | 2026-10-27 | Physical Units | PRO |
| A8640 |  | False Ceilings | 14d | 2025-12-06 A | 2026-01-29 A | A7640 | 100% | 2026-10-12 | 2026-10-27 | Physical Units | PRO |
| A8650 |  | Carpet Flooring | 14d | 2025-12-06 A | 2026-01-29 A | A7650 | 100% | 2026-10-12 | 2026-10-27 | Physical Units | PRO |
| A8660 |  | Landscape (Hard ) | 14d | 2025-12-06 A | 2026-01-29 A | A7660 | 100% | 2026-10-12 | 2026-10-27 | Physical Units | PRO |
| A8670 |  | Guard Rails | 14d | 2025-12-06 A | 2026-01-29 A | A7670 | 100% | 2026-10-12 | 2026-10-27 | Physical Units | PRO |

| ID | WBS | Activity | Duration | Start | Finish | Predecessors | Complete | Planned start | Planned finish | Resources | ALKHARJ INDUSTERIAL AREA - DECEPLINS |
| --- | --- | --- | --- | --- | --- | --- | --- | --- | --- | --- | --- |
|  | ELE | **ELECTRICAL** |  | 2025-12-06 | 2026-01-29 |  |  |  |  |  |  |
| A8680 |  | Public address System | 14d | 2025-12-06 A | 2026-01-29 A | A7680 | 100% | 2026-10-12 | 2026-10-27 | Physical Units | PRO |
| A8690 |  | Fire Pump | 14d | 2025-12-06 A | 2026-01-29 A | A7690 | 100% | 2026-10-12 | 2026-10-27 | Physical Units | PRO |
| A8700 |  | Unit Substation & RMU | 14d | 2025-12-06 A | 2026-01-29 A | A7700 | 100% | 2026-10-12 | 2026-10-27 | Physical Units | PRO |
| A8710 |  | MV Cables | 14d | 2025-12-06 A | 2026-01-29 A | A7710 | 100% | 2026-10-12 | 2026-10-27 | Physical Units | PRO |
| A8720 |  | LV Cables | 14d | 2025-12-06 A | 2026-01-29 A | A7720 | 100% | 2026-10-12 | 2026-10-27 | Physical Units | PRO |
| A8730 |  | LV Wire | 14d | 2025-12-06 A | 2026-01-29 A | A7730 | 100% | 2026-10-12 | 2026-10-27 | Physical Units | PRO |
| A8740 |  | Electrical Panels | 14d | 2025-12-06 A | 2026-01-29 A | A7740 | 100% | 2026-10-12 | 2026-10-27 | Physical Units | PRO |
| A8750 |  | LV Conductors (part of the panels) | 14d | 2025-12-06 A | 2026-01-29 A | A7750 | 100% | 2026-10-12 | 2026-10-27 | Physical Units | PRO |
| A8760 |  | Underground Ducts-UPVC | 14d | 2025-12-06 A | 2026-01-29 A | A7760 | 100% | 2026-10-12 | 2026-10-27 | Physical Units | PRO |
| A8770 |  | Underground Ducts-HDPE | 14d | 2025-12-06 A | 2026-01-29 A | A7770 | 100% | 2026-10-12 | 2026-10-27 | Physical Units | PRO |
| A8780 |  | External Lighting Fixtures | 14d | 2025-12-06 A | 2026-01-29 A | A7780 | 100% | 2026-10-12 | 2026-10-27 | Physical Units | PRO |
| A8790 |  | Street Lights Lighting Fixtures | 14d | 2025-12-06 A | 2026-01-29 A | A7790 | 100% | 2026-10-12 | 2026-10-27 | Physical Units | PRO |
| A8800 |  | Street Lighting Poles | 14d | 2025-12-06 A | 2026-01-29 A | A7800 | 100% | 2026-10-12 | 2026-10-27 | Physical Units | PRO |
| A8810 |  | PVC & EMT conduits | 14d | 2025-12-06 A | 2026-01-29 A | A7810 | 100% | 2026-10-12 | 2026-10-27 | Physical Units | PRO |
| A8820 |  | LIGHTING FIXTURES (buildings Internal) | 14d | 2025-12-06 A | 2026-01-29 A | A7820 | 100% | 2026-10-12 | 2026-10-27 | Physical Units | PRO |
| A8830 |  | Wiring Devices and Switches | 14d | 2025-12-06 A | 2026-01-29 A | A7830 | 100% | 2026-10-12 | 2026-10-27 | Physical Units | PRO |
| A8840 |  | DALI Cabinet (external lighting control) | 14d | 2025-12-06 A | 2026-01-29 A | A7840 | 100% | 2026-10-12 | 2026-10-27 | Physical Units | PRO |
| A8850 |  | Earthing System | 14d | 2025-12-06 A | 2026-01-29 A | A7850 | 100% | 2026-10-12 | 2026-10-27 | Physical Units | PRO |
| A8860 |  | CCTV Pole | 14d | 2025-12-06 A | 2026-01-29 A | A7860 | 100% | 2026-10-12 | 2026-10-27 | Physical Units | PRO |
| A8870 |  | GI duct work with insulation & Support | 14d | 2025-12-06 A | 2026-01-29 A | A7870 | 100% | 2026-10-12 | 2026-10-27 | Physical Units | PRO |
| A8880 |  | Drain & Clean Out | 14d | 2025-12-06 A | 2026-01-29 A | A7880 | 100% | 2026-10-12 | 2026-10-27 | Physical Units | PRO |
| A8890 |  | Split AC Package | 14d | 2025-12-06 A | 2026-01-29 A | A7890 | 100% | 2026-10-12 | 2026-10-27 | Physical Units | PRO |
| A8900 |  | Ventilation Unit-Fan | 14d | 2025-12-06 A | 2026-01-29 A | A7900 | 100% | 2026-10-12 | 2026-10-27 | Physical Units | PRO |
| A8910 |  | Cable glands, lugs and accessories | 14d | 2025-12-06 A | 2026-01-29 A | A7910 | 100% | 2026-10-12 | 2026-10-27 | Physical Units | PRO |

| ID | WBS | Activity | Duration | Start | Finish | Predecessors | Complete | Planned start | Planned finish | Resources | ALKHARJ INDUSTERIAL AREA - DECEPLINS |
| --- | --- | --- | --- | --- | --- | --- | --- | --- | --- | --- | --- |
|  | MECH | **MECHANICAL** |  | 2025-12-06 | 2026-01-29 |  |  |  |  |  |  |
| A8920 |  | Secondary Irrigation System | 14d | 2025-12-06 A | 2026-01-29 A | A7920 | 100% | 2026-10-12 | 2026-10-27 | Physical Units | PRO |
| A8930 |  | HDPE Pipes & Fittings | 14d | 2025-12-06 A | 2026-01-29 A | A7930 | 100% | 2026-10-12 | 2026-10-27 | Physical Units | PRO |
| A8940 |  | UPVC Pipes & Fittings | 14d | 2025-12-06 A | 2026-01-29 A | A7940 | 100% | 2026-10-12 | 2026-10-27 | Physical Units | PRO |
| A8950 |  | GRP Pipes & Fittings | 14d | 2025-12-06 A | 2026-01-29 A | A7950 | 100% | 2026-10-12 | 2026-10-27 | Physical Units | PRO |
| A8960 |  | Sanitory Ware, Plumbing Fixtures, Toilet Accessories | 14d | 2025-12-06 A | 2026-01-29 A | A7960 | 100% | 2026-10-12 | 2026-10-27 | Physical Units | PRO |
| A8970 |  | Water Tank | 14d | 2025-12-06 A | 2026-01-29 A | A7970 | 100% | 2026-10-12 | 2026-10-27 | Physical Units | PRO |
| A8980 |  | Gate Valves | 14d | 2025-12-06 A | 2026-01-29 A | A7980 | 100% | 2026-10-12 | 2026-10-27 | Physical Units | PRO |
| A8990 |  | Surface Box for Gate valve | 14d | 2025-12-06 A | 2026-01-29 A | A7990 | 100% | 2026-10-12 | 2026-10-27 | Physical Units | PRO |
| A9000 |  | Air Release Valves | 14d | 2025-12-06 A | 2026-01-29 A | A8000 | 100% | 2026-10-12 | 2026-10-27 | Physical Units | PRO |
| A9010 |  | Washout Valves | 14d | 2025-12-06 A | 2026-01-29 A | A8010 | 100% | 2026-10-12 | 2026-10-27 | Physical Units | PRO |
| A9020 |  | Connection Chamber | 14d | 2025-12-06 A | 2026-01-29 A | A8020 | 100% | 2026-10-12 | 2026-10-27 | Physical Units | PRO |
| A9030 |  | HDPE House Connections Chambers | 14d | 2025-12-06 A | 2026-01-29 A | A8030 | 100% | 2026-10-12 | 2026-10-27 | Physical Units | PRO |
| A9040 |  | Hose Bib | 14d | 2025-12-06 A | 2026-01-29 A | A8040 | 100% | 2026-10-12 | 2026-10-27 | Physical Units | PRO |
| A9050 |  | PPR Pipes & Fittings | 14d | 2025-12-06 A | 2026-01-29 A | A8050 | 100% | 2026-10-12 | 2026-10-27 | Physical Units | PRO |
| A9060 |  | Water Hammer Arrestor & TMV | 14d | 2025-12-06 A | 2026-01-29 A | A8060 | 100% | 2026-10-12 | 2026-10-27 | Physical Units | PRO |
| A9070 |  | Sewage Manholes Cover with frame | 14d | 2025-12-06 A | 2026-01-29 A | A8070 | 100% | 2026-10-12 | 2026-10-27 | Physical Units | PRO |
| A9080 |  | Irrigation Manholes Cover with frame | 14d | 2025-12-06 A | 2026-01-29 A | A8080 | 100% | 2026-10-12 | 2026-10-27 | Physical Units | PRO |
| A9090 |  | Potable Manholes Cover with frame | 14d | 2025-12-06 A | 2026-01-29 A | A8090 | 100% | 2026-10-12 | 2026-10-27 | Physical Units | PRO |
| A9100 |  | ICT Manholes Cover with frame | 14d | 2025-12-06 A | 2026-01-29 A | A8100 | 100% | 2026-10-12 | 2026-10-27 | Physical Units | PRO |
| A9110 |  | Polyethylene Sheets | 14d | 2025-12-06 A | 2026-01-29 A | A8110 | 100% | 2026-10-12 | 2026-10-27 | Physical Units | PRO |
| A9120 |  | Warning Tape | 14d | 2025-12-06 A | 2026-01-29 A | A8120 | 100% | 2026-10-12 | 2026-10-27 | Physical Units | PRO |
| A9130 |  | Bitumen Paint (Bituminous Damp proofing) | 14d | 2025-12-06 A | 2026-01-29 A | A8130 | 100% | 2026-10-12 | 2026-10-27 | Physical Units | PRO |
| A9140 |  | Anti Termite & Pest Contro; | 14d | 2025-12-06 A | 2026-01-29 A | A8140 | 100% | 2026-10-12 | 2026-10-27 | Physical Units | PRO |
| A9150 |  | Warning tape | 14d | 2025-12-06 A | 2026-01-29 A | A8150 | 100% | 2026-10-12 | 2026-10-27 | Physical Units | PRO |
| A9160 |  | Fire Hydrants | 14d | 2025-12-06 A | 2026-01-29 A | A8160 | 100% | 2026-10-12 | 2026-10-27 | Physical Units | PRO |
| A9170 |  | OS & Y Gate valve | 14d | 2025-12-06 A | 2026-01-29 A | A8170 | 100% | 2026-10-12 | 2026-10-27 | Physical Units | PRO |
| A9180 |  | Fire Extinguisher | 14d | 2025-12-06 A | 2026-01-29 A | A8180 | 100% | 2026-10-12 | 2026-10-27 | Physical Units | PRO |
| A9190 |  | Fire Alarm systems & cable | 14d | 2025-12-06 A | 2026-01-29 A | A8190 | 100% | 2026-10-12 | 2026-10-27 | Physical Units | PRO |
| A9200 |  | Water Heater | 14d | 2025-12-06 A | 2026-01-29 A | A8200 | 100% | 2026-10-12 | 2026-10-27 | Physical Units | PRO |
| A9210 |  | Termination Kits | 14d | 2025-12-06 A | 2026-01-29 A | A8210 | 100% | 2026-10-12 | 2026-10-27 | Physical Units | PRO |

| ID | WBS | Activity | Duration | Start | Finish | Predecessors | Complete | Planned start | Planned finish | Resources | ALKHARJ INDUSTERIAL AREA - DECEPLINS |
| --- | --- | --- | --- | --- | --- | --- | --- | --- | --- | --- | --- |
|  | PRO | **PROCUREMENT** |  | 2025-12-06 | 2027-02-17 |  |  |  |  |  |  |
|  | PO | **PURCHASE ORDER "PO"** |  | 2025-12-06 | 2026-01-29 |  |  |  |  |  |  |
|  | CVA | **CIVIL & ARCHITECTURE** |  | 2025-12-06 | 2026-01-29 |  |  |  |  |  |  |
| A9230 |  | Sewer Manholes | 10d | 2025-12-06 A | 2026-01-29 A | A8220 | 100% | 2026-10-28 | 2026-11-08 | Physical Units | PRO |
| A9240 |  | Storm Manholes | 10d | 2025-12-06 A | 2026-01-29 A | A8230 | 100% | 2026-10-28 | 2026-11-08 | Physical Units | PRO |
| A9250 |  | Telecome Manholes | 10d | 2025-12-06 A | 2026-01-29 A | A8240 | 100% | 2026-10-28 | 2026-11-08 | Physical Units | PRO |
| A9260 |  | Lighting Poles Precast Foundation & Bolt | 10d | 2025-12-06 A | 2026-01-29 A | A8250 | 100% | 2026-10-28 | 2026-11-08 | Physical Units | PRO |
| A9270 |  | Concrete curb | 10d | 2025-12-06 A | 2026-01-29 A | A8260 | 100% | 2026-10-28 | 2026-11-08 | Physical Units | PRO |
| A9280 |  | Aggregate Sub-Grade & Basecourse | 10d | 2025-12-06 A | 2026-01-29 A | A8270 | 100% | 2026-10-28 | 2026-11-08 | Physical Units | PRO |
| A9290 |  | Asphalt | 10d | 2025-12-06 A | 2026-01-29 A | A8280 | 100% | 2026-10-28 | 2026-11-08 | Physical Units | PRO |
| A9300 |  | Traffic signage | 10d | 2025-12-06 A | 2026-01-29 A | A8290 | 100% | 2026-10-28 | 2026-11-08 | Physical Units | PRO |
| A9310 |  | Plant and trees | 10d | 2025-12-06 A | 2026-01-29 A | A8300 | 100% | 2026-10-28 | 2026-11-08 | Physical Units | PRO |
| A9320 |  | Garbage Bin, trash & litter | 10d | 2025-12-06 A | 2026-01-29 A | A8310 | 100% | 2026-10-28 | 2026-11-08 | Physical Units | PRO |
| A9330 |  | Paving blocks 200*100*60 mm | 10d | 2025-12-06 A | 2026-01-29 A | A8320 | 100% | 2026-10-28 | 2026-11-08 | Physical Units | PRO |
| A9340 |  | Blocks & Accessories | 10d | 2025-12-06 A | 2026-01-29 A | A8330 | 100% | 2026-10-28 | 2026-11-08 | Physical Units | PRO |
| A9350 |  | Access ladder | 10d | 2025-12-06 A | 2026-01-29 A | A8340 | 100% | 2026-10-28 | 2026-11-08 | Physical Units | PRO |
| A9360 |  | Stanless steel Handril | 10d | 2025-12-06 A | 2026-01-29 A | A8350 | 100% | 2026-10-28 | 2026-11-08 | Physical Units | PRO |
| A9370 |  | Ductile iron steel cover | 10d | 2025-12-06 A | 2026-01-29 A | A8360 | 100% | 2026-10-28 | 2026-11-08 | Physical Units | PRO |
| A9380 |  | Structural steel | 10d | 2025-12-06 A | 2026-01-29 A | A8370 | 100% | 2026-10-28 | 2026-11-08 | Physical Units | PRO |
| A9390 |  | Waterproofing Work | 10d | 2025-12-06 A | 2026-01-29 A | A8380 | 100% | 2026-10-28 | 2026-11-08 | Physical Units | PRO |
| A9400 |  | Waterproofing membrane | 10d | 2025-12-06 A | 2026-01-29 A | A8390 | 100% | 2026-10-28 | 2026-11-08 | Physical Units | PRO |
| A9410 |  | Doors - (Glass & Sliding) | 10d | 2025-12-06 A | 2026-01-29 A | A8400 | 100% | 2026-10-28 | 2026-11-08 | Physical Units | PRO |
| A9420 |  | Windows | 10d | 2025-12-06 A | 2026-01-29 A | A8410 | 100% | 2026-10-28 | 2026-11-08 | Physical Units | PRO |
| A9430 |  | Paints & Epoxy | 10d | 2025-12-06 A | 2026-01-29 A | A8420 | 100% | 2026-10-28 | 2026-11-08 | Physical Units | PRO |
| A9440 |  | Granite, ceramic | 10d | 2025-12-06 A | 2026-01-29 A | A8430 | 100% | 2026-10-28 | 2026-11-08 | Physical Units | PRO |
| A9450 |  | Terrazzo tiles | 10d | 2025-12-06 A | 2026-01-29 A | A8440 | 100% | 2026-10-28 | 2026-11-08 | Physical Units | PRO |
| A9460 |  | Fall ceiling | 10d | 2025-12-06 A | 2026-01-29 A | A8450 | 100% | 2026-10-28 | 2026-11-08 | Physical Units | PRO |
| A9470 |  | Safety Bollards | 10d | 2025-12-06 A | 2026-01-29 A | A8460 | 100% | 2026-10-28 | 2026-11-08 | Physical Units | PRO |
| A9480 |  | Geotextile Membrane | 10d | 2025-12-06 A | 2026-01-29 A | A8470 | 100% | 2026-10-28 | 2026-11-08 | Physical Units | PRO |
| A9490 |  | Curbstone | 10d | 2025-12-06 A | 2026-01-29 A | A8480 | 100% | 2026-10-28 | 2026-11-08 | Physical Units | PRO |
| A9500 |  | Sidewalk interlock/Concrete Pavers | 10d | 2025-12-06 A | 2026-01-29 A | A8490 | 100% | 2026-10-28 | 2026-11-08 | Physical Units | PRO |
| A9510 |  | Trees and Bushes-Landscape ( soft) | 10d | 2025-12-06 A | 2026-01-29 A | A8500 | 100% | 2026-10-28 | 2026-11-08 | Physical Units | PRO |
| A9520 |  | Concrete Masonry Blocks | 10d | 2025-12-06 A | 2026-01-29 A | A8510 | 100% | 2026-10-28 | 2026-11-08 | Physical Units | PRO |
| A9530 |  | Block work Accessories | 10d | 2025-12-06 A | 2026-01-29 A | A8520 | 100% | 2026-10-28 | 2026-11-08 | Physical Units | PRO |
| A9540 |  | Plaster to receive tile finish | 10d | 2025-12-06 A | 2026-01-29 A | A8530 | 100% | 2026-10-28 | 2026-11-08 | Physical Units | PRO |
| A9550 |  | Paint for External Areas | 10d | 2025-12-06 A | 2026-01-29 A | A8540 | 100% | 2026-10-28 | 2026-11-08 | Physical Units | PRO |
| A9560 |  | Paint for Internal Areas | 10d | 2025-12-06 A | 2026-01-29 A | A8550 | 100% | 2026-10-28 | 2026-11-08 | Physical Units | PRO |
| A9570 |  | Concrete repair & Curing material | 10d | 2025-12-06 A | 2026-01-29 A | A8560 | 100% | 2026-10-28 | 2026-11-08 | Physical Units | PRO |
| A9580 |  | Bonding agent | 10d | 2025-12-06 A | 2026-01-29 A | A8570 | 100% | 2026-10-28 | 2026-11-08 | Physical Units | PRO |
| A9590 |  | Concrete Mix for PC works | 10d | 2025-12-06 A | 2026-01-29 A | A8580 | 100% | 2026-10-28 | 2026-11-08 | Physical Units | PRO |
| A9600 |  | Concrete Mix for RC works | 10d | 2025-12-06 A | 2026-01-29 A | A8590 | 100% | 2026-10-28 | 2026-11-08 | Physical Units | PRO |
| A9610 |  | Reinforcement Steel | 10d | 2025-12-06 A | 2026-01-29 A | A8600 | 100% | 2026-10-28 | 2026-11-08 | Physical Units | PRO |
| A9620 |  | Sand Cement Plaster for Internal Walls | 10d | 2025-12-06 A | 2026-01-29 A | A8610 | 100% | 2026-10-28 | 2026-11-08 | Physical Units | PRO |
| A9630 |  | Sand Cement Plaster for External Walls | 10d | 2025-12-06 A | 2026-01-29 A | A8620 | 100% | 2026-10-28 | 2026-11-08 | Physical Units | PRO |
| A9640 |  | Porcelain Tiling | 10d | 2025-12-06 A | 2026-01-29 A | A8630 | 100% | 2026-10-28 | 2026-11-08 | Physical Units | PRO |
| A9650 |  | False Ceilings | 10d | 2025-12-06 A | 2026-01-29 A | A8640 | 100% | 2026-10-28 | 2026-11-08 | Physical Units | PRO |
| A9660 |  | Carpet Flooring | 10d | 2025-12-06 A | 2026-01-29 A | A8650 | 100% | 2026-10-28 | 2026-11-08 | Physical Units | PRO |
| A9670 |  | Landscape (Hard ) | 10d | 2025-12-06 A | 2026-01-29 A | A8660 | 100% | 2026-10-28 | 2026-11-08 | Physical Units | PRO |
| A9680 |  | Guard Rails | 10d | 2025-12-06 A | 2026-01-29 A | A8670 | 100% | 2026-10-28 | 2026-11-08 | Physical Units | PRO |

| ID | WBS | Activity | Duration | Start | Finish | Predecessors | Complete | Planned start | Planned finish | Resources | ALKHARJ INDUSTERIAL AREA - DECEPLINS |
| --- | --- | --- | --- | --- | --- | --- | --- | --- | --- | --- | --- |
|  | ELE | **ELECTRICAL** |  | 2025-12-06 | 2026-01-29 |  |  |  |  |  |  |
| A9690 |  | Public address System | 21d | 2025-12-06 A | 2026-01-29 A | A8680 | 100% | 2026-10-28 | 2026-11-21 | Physical Units | PRO |
| A9700 |  | Fire Pump | 21d | 2025-12-06 A | 2026-01-29 A | A8690 | 100% | 2026-10-28 | 2026-11-21 | Physical Units | PRO |
| A9710 |  | Unit Substation & RMU | 21d | 2025-12-06 A | 2026-01-29 A | A8700 | 100% | 2026-10-28 | 2026-11-21 | Physical Units | PRO |
| A9720 |  | MV Cables | 10d | 2025-12-06 A | 2026-01-29 A | A8710 | 100% | 2026-10-28 | 2026-11-08 | Physical Units | PRO |
| A9730 |  | LV Cables | 21d | 2025-12-06 A | 2026-01-29 A | A8720 | 100% | 2026-10-28 | 2026-11-21 | Physical Units | PRO |
| A9740 |  | LV Wire | 21d | 2025-12-06 A | 2026-01-29 A | A8730 | 100% | 2026-10-28 | 2026-11-21 | Physical Units | PRO |
| A9750 |  | Electrical Panels | 21d | 2025-12-06 A | 2026-01-29 A | A8740 | 100% | 2026-10-28 | 2026-11-21 | Physical Units | PRO |
| A9760 |  | LV Conductors (part of the panels) | 21d | 2025-12-06 A | 2026-01-29 A | A8750 | 100% | 2026-10-28 | 2026-11-21 | Physical Units | PRO |
| A9770 |  | Underground Ducts-UPVC | 21d | 2025-12-06 A | 2026-01-29 A | A8760 | 100% | 2026-10-28 | 2026-11-21 | Physical Units | PRO |
| A9780 |  | Underground Ducts-HDPE | 21d | 2025-12-06 A | 2026-01-29 A | A8770 | 100% | 2026-10-28 | 2026-11-21 | Physical Units | PRO |
| A9790 |  | External Lighting Fixtures | 21d | 2025-12-06 A | 2026-01-29 A | A8780 | 100% | 2026-10-28 | 2026-11-21 | Physical Units | PRO |
| A9800 |  | Street Lights Lighting Fixtures | 16d | 2025-12-06 A | 2026-01-29 A | A8790 | 100% | 2026-10-28 | 2026-11-15 | Physical Units | PRO |
| A9810 |  | Street Lighting Poles | 16d | 2025-12-06 A | 2026-01-29 A | A8800 | 100% | 2026-10-28 | 2026-11-15 | Physical Units | PRO |
| A9820 |  | PVC & EMT conduits | 16d | 2025-12-06 A | 2026-01-29 A | A8810 | 100% | 2026-10-28 | 2026-11-15 | Physical Units | PRO |
| A9830 |  | LIGHTING FIXTURES (buildings Internal) | 16d | 2025-12-06 A | 2026-01-29 A | A8820 | 100% | 2026-10-28 | 2026-11-15 | Physical Units | PRO |
| A9840 |  | Wiring Devices and Switches | 16d | 2025-12-06 A | 2026-01-29 A | A8830 | 100% | 2026-10-28 | 2026-11-15 | Physical Units | PRO |
| A9850 |  | DALI Cabinet (external lighting control) | 16d | 2025-12-06 A | 2026-01-29 A | A8840 | 100% | 2026-10-28 | 2026-11-15 | Physical Units | PRO |
| A9860 |  | Earthing System | 16d | 2025-12-06 A | 2026-01-29 A | A8850 | 100% | 2026-10-28 | 2026-11-15 | Physical Units | PRO |
| A9870 |  | CCTV Pole | 16d | 2025-12-06 A | 2026-01-29 A | A8860 | 100% | 2026-10-28 | 2026-11-15 | Physical Units | PRO |
| A9880 |  | GI duct work with insulation & Support | 16d | 2025-12-06 A | 2026-01-29 A | A8870 | 100% | 2026-10-28 | 2026-11-15 | Physical Units | PRO |
| A9890 |  | Drain & Clean Out | 16d | 2025-12-06 A | 2026-01-29 A | A8880 | 100% | 2026-10-28 | 2026-11-15 | Physical Units | PRO |
| A9900 |  | Split AC Package | 16d | 2025-12-06 A | 2026-01-29 A | A8890 | 100% | 2026-10-28 | 2026-11-15 | Physical Units | PRO |
| A9910 |  | Ventilation Unit-Fan | 16d | 2025-12-06 A | 2026-01-29 A | A8900 | 100% | 2026-10-28 | 2026-11-15 | Physical Units | PRO |
| A9920 |  | Cable glands, lugs and accessories | 21d | 2025-12-06 A | 2026-01-29 A | A8910 | 100% | 2026-10-28 | 2026-11-21 | Physical Units | PRO |

| ID | WBS | Activity | Duration | Start | Finish | Predecessors | Complete | Planned start | Planned finish | Resources | ALKHARJ INDUSTERIAL AREA - DECEPLINS |
| --- | --- | --- | --- | --- | --- | --- | --- | --- | --- | --- | --- |
|  | MECH | **MECHANICAL** |  | 2025-12-06 | 2026-01-29 |  |  |  |  |  |  |
| A10000 |  | Surface Box for Gate valve | 10d | 2025-12-06 A | 2026-01-29 A | A8990 | 100% | 2026-10-28 | 2026-11-08 | Physical Units | PRO |
| A10010 |  | Air Release Valves | 10d | 2025-12-06 A | 2026-01-29 A | A9000 | 100% | 2026-10-28 | 2026-11-08 | Physical Units | PRO |
| A10020 |  | Washout Valves | 10d | 2025-12-06 A | 2026-01-29 A | A9010 | 100% | 2026-10-28 | 2026-11-08 | Physical Units | PRO |
| A10030 |  | Connection Chamber | 10d | 2025-12-06 A | 2026-01-29 A | A9020 | 100% | 2026-10-28 | 2026-11-08 | Physical Units | PRO |
| A10040 |  | HDPE House Connections Chambers | 10d | 2025-12-06 A | 2026-01-29 A | A9030 | 100% | 2026-10-28 | 2026-11-08 | Physical Units | PRO |
| A10050 |  | Hose Bib | 10d | 2025-12-06 A | 2026-01-29 A | A9040 | 100% | 2026-10-28 | 2026-11-08 | Physical Units | PRO |
| A10060 |  | PPR Pipes & Fittings | 10d | 2025-12-06 A | 2026-01-29 A | A9050 | 100% | 2026-10-28 | 2026-11-08 | Physical Units | PRO |
| A10070 |  | Water Hammer Arrestor & TMV | 10d | 2025-12-06 A | 2026-01-29 A | A9060 | 100% | 2026-10-28 | 2026-11-08 | Physical Units | PRO |
| A10080 |  | Sewage Manholes Cover with frame | 10d | 2025-12-06 A | 2026-01-29 A | A9070 | 100% | 2026-10-28 | 2026-11-08 | Physical Units | PRO |
| A10090 |  | Irrigation Manholes Cover with frame | 10d | 2025-12-06 A | 2026-01-29 A | A9080 | 100% | 2026-10-28 | 2026-11-08 | Physical Units | PRO |
| A10100 |  | Potable Manholes Cover with frame | 10d | 2025-12-06 A | 2026-01-29 A | A9090 | 100% | 2026-10-28 | 2026-11-08 | Physical Units | PRO |
| A10110 |  | ICT Manholes Cover with frame | 10d | 2025-12-06 A | 2026-01-29 A | A9100 | 100% | 2026-10-28 | 2026-11-08 | Physical Units | PRO |
| A10120 |  | Polyethylene Sheets | 10d | 2025-12-06 A | 2026-01-29 A | A9110 | 100% | 2026-10-28 | 2026-11-08 | Physical Units | PRO |
| A10130 |  | Warning Tape | 10d | 2025-12-06 A | 2026-01-29 A | A9120 | 100% | 2026-10-28 | 2026-11-08 | Physical Units | PRO |
| A10140 |  | Bitumen Paint (Bituminous Damp proofing) | 10d | 2025-12-06 A | 2026-01-29 A | A9130 | 100% | 2026-10-28 | 2026-11-08 | Physical Units | PRO |
| A10150 |  | Anti Termite & Pest Contro; | 10d | 2025-12-06 A | 2026-01-29 A | A9140 | 100% | 2026-10-28 | 2026-11-08 | Physical Units | PRO |
| A10160 |  | Warning tape | 10d | 2025-12-06 A | 2026-01-29 A | A9150 | 100% | 2026-10-28 | 2026-11-08 | Physical Units | PRO |
| A10170 |  | Fire Hydrants | 10d | 2025-12-06 A | 2026-01-29 A | A9160 | 100% | 2026-10-28 | 2026-11-08 | Physical Units | PRO |
| A10180 |  | OS & Y Gate valve | 10d | 2025-12-06 A | 2026-01-29 A | A9170 | 100% | 2026-10-28 | 2026-11-08 | Physical Units | PRO |
| A10190 |  | Fire Extinguisher | 10d | 2025-12-06 A | 2026-01-29 A | A9180 | 100% | 2026-10-28 | 2026-11-08 | Physical Units | PRO |
| A10200 |  | Fire Alarm systems & cable | 10d | 2025-12-06 A | 2026-01-29 A | A9190 | 100% | 2026-10-28 | 2026-11-08 | Physical Units | PRO |
| A10210 |  | Water Heater | 10d | 2025-12-06 A | 2026-01-29 A | A9200 | 100% | 2026-10-28 | 2026-11-08 | Physical Units | PRO |
| A10220 |  | Termination Kits | 10d | 2025-12-06 A | 2026-01-29 A | A9210 | 100% | 2026-10-28 | 2026-11-08 | Physical Units | PRO |
| A9930 |  | Secondary Irrigation System | 10d | 2025-12-06 A | 2026-01-29 A | A8920 | 100% | 2026-10-28 | 2026-11-08 | Physical Units | PRO |
| A9940 |  | HDPE Pipes & Fittings | 10d | 2025-12-06 A | 2026-01-29 A | A8930 | 100% | 2026-10-28 | 2026-11-08 | Physical Units | PRO |
| A9950 |  | UPVC Pipes & Fittings | 10d | 2025-12-06 A | 2026-01-29 A | A8940 | 100% | 2026-10-28 | 2026-11-08 | Physical Units | PRO |
| A9960 |  | GRP Pipes & Fittings | 10d | 2025-12-06 A | 2026-01-29 A | A8950 | 100% | 2026-10-28 | 2026-11-08 | Physical Units | PRO |
| A9970 |  | Sanitory Ware, Plumbing Fixtures, Toilet Accessories | 10d | 2025-12-06 A | 2026-01-29 A | A8960 | 100% | 2026-10-28 | 2026-11-08 | Physical Units | PRO |
| A9980 |  | Water Tank | 10d | 2025-12-06 A | 2026-01-29 A | A8970 | 100% | 2026-10-28 | 2026-11-08 | Physical Units | PRO |
| A9990 |  | Gate Valves | 10d | 2025-12-06 A | 2026-01-29 A | A8980 | 100% | 2026-10-28 | 2026-11-08 | Physical Units | PRO |

| ID | WBS | Activity | Duration | Start | Finish | Predecessors | Complete | Remaining | Planned start | Planned finish | Total float | Free float | Resources | ALKHARJ INDUSTERIAL AREA - DECEPLINS |
| --- | --- | --- | --- | --- | --- | --- | --- | --- | --- | --- | --- | --- | --- | --- |
|  | MTD | **MATERIAL DELIVERY** |  | 2026-08-10 | 2027-02-17 |  |  |  |  |  |  |  |  |  |
|  | CVA | **CIVIL & ARCHITECTURE** |  | 2026-08-10 | 2027-02-17 |  |  |  |  |  |  |  |  |  |
|  | 1 | **Long Lead Items Civil** |  | 2026-08-11 | 2027-02-01 |  |  |  |  |  |  |  |  |  |
| A10230 |  | Sewer Manholes | 90d | 2026-08-11 A | 2026-10-10 | A9230 | 99% | 0.9d | 2026-11-09 | 2027-02-21 | -37.9d | 0d | labor [900 h]; Physical Units [2910126 h] | PRO |
| A10240 |  | Storm Manholes | 90d | 2026-08-11 A | 2026-10-19 | A9240 | 90% | 9d | 2026-11-09 | 2027-02-21 | 19.42d | 0d | labor [900 h]; Physical Units [2910126 h] | PRO |
| A10250 |  | Telecome Manholes | 98d | 2026-10-10 | 2027-02-01 | A9250, A10230 |  |  |  |  | -37.9d | 0d | labor [980 h]; Physical Units [2910126 h] | PRO |
|  | 2 | **Short Lead Item Civil** |  | 2026-08-10 | 2027-02-17 |  |  |  |  |  |  |  |  |  |
| A10620 |  | Sand Cement Plaster for Internal Walls | 14d | 2026-08-10 A | 2027-02-17 A | A9620, A10250 | 100% |  | 2027-02-01 | 2027-02-17 |  |  | labor [140 h]; Physical Units [2910126 h] | PRO |
| A10630 |  | Sand Cement Plaster for External Walls | 14d | 2026-08-10 A | 2027-02-17 A | A9630, A10610 | 100% |  | 2026-10-10 | 2026-10-25 |  |  | labor [140 h]; Physical Units [2910126 h] | PRO |
| A10260 |  | Lighting Poles Precast Foundation & Bolt | 70d | 2026-08-11 A | 2026-09-28 A | A9260 | 100% |  | 2027-09-22 | 2027-12-12 |  |  | labor [700 h]; Physical Units [2910126 h] | PRO |
| A10270 |  | Concrete curb | 60d | 2026-08-11 A | 2026-11-05 | A9270 | 60% | 24d | 2026-11-09 | 2027-01-17 | -82.75d | 0d | labor [600 h]; Physical Units [2910126 h] | PRO |
| A10280 |  | Aggregate Sub-Grade & Basecourse | 28d | 2026-08-11 A | 2026-10-14 | A9280 | 85% | 4.2d | 2026-11-09 | 2026-12-10 | -62.95d | 19.8d | labor [280 h]; Physical Units [2910126 h] | PRO |
| A10290 |  | Asphalt | 28d | 2026-08-11 A | 2026-10-25 | A9290 | 52% | 13.44d | 2027-01-10 | 2027-02-10 | -76.95d | 0d | labor [280 h]; Physical Units [2910126 h] | PRO |
| A10330 |  | Paving blocks 200*100*60 mm | 56d | 2026-08-11 A | 2026-09-28 A | A9330 | 100% |  | 2027-09-06 | 2027-11-09 |  |  | labor [560 h]; Physical Units [2910126 h] | PRO |
| A10340 |  | Blocks & Accessories | 28d | 2026-08-11 A | 2026-09-28 A | A9340 | 100% |  | 2027-07-03 | 2027-08-03 |  |  | labor [280 h]; Physical Units [2910126 h] | PRO |
| A10370 |  | Ductile iron steel cover | 42d | 2026-08-11 A | 2026-09-28 A | A9370 | 100% |  | 2027-07-03 | 2027-08-19 |  |  | labor [420 h]; Physical Units [2910126 h] | PRO |
| A10380 |  | Structural steel | 56d | 2026-08-11 A | 2026-09-28 A | A9380 | 100% |  | 2027-07-03 | 2027-09-05 |  |  | labor [560 h]; Physical Units [2910126 h] | PRO |
| A10390 |  | Waterproofing Work | 70d | 2026-08-11 A | 2026-09-28 A | A9390 | 100% |  | 2027-07-03 | 2027-09-21 |  |  | labor [700 h]; Physical Units [2910126 h] | PRO |
| A10490 |  | Curbstone | 28d | 2026-08-11 A | 2026-10-22 | A9490 | 60% | 11.2d | 2027-02-11 | 2027-03-15 | 131.4d | 110.72d | labor [280 h]; Physical Units [2910126 h] | PRO |
| A10520 |  | Concrete Masonry Blocks | 28d | 2026-08-11 A | 2026-10-11 | A9520 | 95% | 1.4d | 2027-07-03 | 2027-08-03 | 141.2d | 120.52d | labor [280 h]; Physical Units [2910126 h] | PRO |
| A10530 |  | Block work Accessories | 21d | 2026-08-11 A | 2026-09-28 A | A9530 | 100% |  | 2027-07-03 | 2027-07-26 |  |  | labor [210 h]; Physical Units [2910126 h] | PRO |
| A10570 |  | Concrete repair & Curing material | 14d | 2026-08-11 A | 2026-09-28 A | A9570 | 100% |  | 2027-09-14 | 2027-09-29 |  |  | labor [140 h]; Physical Units [2910126 h] | PRO |
| A10580 |  | Bonding agent | 14d | 2026-08-11 A | 2026-09-28 A | A9580, A10570 | 100% |  | 2027-09-30 | 2027-10-16 |  |  | labor [140 h]; Physical Units [2910126 h] | PRO |
| A10590 |  | Concrete Mix for PC works | 14d | 2026-08-11 A | 2026-09-28 A | A9590 | 100% |  | 2027-07-03 | 2027-07-18 |  |  | labor [140 h]; Physical Units [2910126 h] | PRO |
| A10600 |  | Concrete Mix for RC works | 14d | 2026-08-11 A | 2026-09-28 A | A9600, A10590 | 100% |  | 2027-07-19 | 2027-08-03 |  |  | labor [140 h]; Physical Units [2910126 h] | PRO |
| A10610 |  | Reinforcement Steel | 14d | 2026-08-11 A | 2026-09-28 A | A9610, A10600 | 100% |  | 2027-08-04 | 2027-08-19 |  |  | labor [140 h]; Physical Units [2910126 h] | PRO |
| A10300 |  | Traffic signage | 49d | 2026-09-07 A | 2026-10-20 | A9300 | 80% | 9.8d | 2026-10-10 | 2026-12-05 | -68.55d | 14.2d | labor [490 h]; Physical Units [2910126 h] | PRO |
| A10350 |  | Access ladder | 28d | 2026-09-10 A | 2026-10-06 A | A9350 | 100% |  | 2026-10-10 | 2026-11-10 |  |  | labor [280 h]; Physical Units [2910126 h] | PRO |
| A10360 |  | Stanless steel Handril | 42d | 2026-09-10 A | 2026-11-02 | A9360 | 50% | 21d | 2026-10-10 | 2026-11-26 | 121.6d | 100.92d | labor [420 h]; Physical Units [2910126 h] | PRO |
| A10400 |  | Waterproofing membrane | 28d | 2026-09-15 A | 2026-11-04 | A9400 | 20% | 22.4d | 2026-10-10 | 2026-11-10 | 120.2d | 99.52d | labor [280 h]; Physical Units [2910126 h] | PRO |
| A10560 |  | Paint for Internal Areas | 21d | 2026-09-21 A | 2026-11-22 | A9560, A10550 | 60% | 8.4d | 2026-11-21 | 2026-12-14 | 104.8d | 84.12d | labor [210 h]; Physical Units [2910126 h] | PRO |
| A10550 |  | Paint for External Areas | 21d | 2026-09-27 A | 2026-11-12 | A9550, A10540 | 60% | 8.4d | 2026-10-27 | 2026-11-19 | 104.8d | 0d | labor [210 h]; Physical Units [2910126 h] | PRO |
| A10430 |  | Paints & Epoxy | 56d | 2026-10-01 A | 2026-11-04 | A9430 | 60% | 22.4d | 2026-10-10 | 2026-12-13 | 120.2d | 99.52d | labor [560 h]; Physical Units [2910126 h] | PRO |
| A10500 |  | Sidewalk interlock/Concrete Pavers | 28d | 2026-10-07 A | 2026-11-01 | A9500 | 30% | 19.6d | 2026-10-10 | 2026-11-10 | 123d | 102.32d | labor [280 h]; Physical Units [2910126 h] | PRO |
| A10410 |  | Doors - (Glass & Sliding) | 42d | 2026-10-10 | 2026-11-26 | A9410 |  |  |  |  | 100.6d | 79.92d | labor [420 h]; Physical Units [2910126 h] | PRO |
| A10420 |  | Windows | 56d | 2026-10-10 | 2026-12-13 | A9420 |  |  |  |  | 86.6d | 65.92d | labor [560 h]; Physical Units [2910126 h] | PRO |
| A10440 |  | Granite, ceramic | 28d | 2026-10-10 | 2026-11-10 | A9440 |  |  |  |  | 114.6d | 93.92d | labor [280 h]; Physical Units [2910126 h] | PRO |
| A10450 |  | Terrazzo tiles | 28d | 2026-10-10 | 2026-11-10 | A9450 |  |  |  |  | 114.6d | 93.92d | labor [280 h]; Physical Units [2910126 h] | PRO |
| A10460 |  | Fall ceiling | 28d | 2026-10-10 | 2026-11-10 | A9460 |  |  |  |  | 114.6d | 93.92d | labor [280 h]; Physical Units [2910126 h] | PRO |
| A10470 |  | Safety Bollards | 28d | 2026-10-10 | 2026-11-10 | A9470 |  |  |  |  | 114.6d | 93.92d | labor [280 h]; Physical Units [2910126 h] | PRO |
| A10480 |  | Geotextile Membrane | 56d | 2026-10-10 | 2026-12-13 | A9480 |  |  |  |  | 86.6d | 65.92d | labor [560 h]; Physical Units [2910126 h] | PRO |
| A10510 |  | Trees and Bushes-Landscape ( soft) | 56d | 2026-10-10 | 2026-12-13 | A9510 |  |  |  |  | 86.6d | 65.92d | labor [560 h]; Physical Units [2910126 h] | PRO |
| A10540 |  | Plaster to receive tile finish | 21d | 2026-10-10 | 2026-11-02 | A9540 |  |  |  |  | 104.8d | 0d | labor [210 h]; Physical Units [2910126 h] | PRO |
| A10640 |  | Porcelain Tiling | 28d | 2026-10-10 | 2026-11-10 | A9640 |  |  |  |  | 114.6d | 93.92d | labor [280 h]; Physical Units [2910126 h] | PRO |
| A10650 |  | False Ceilings | 28d | 2026-10-10 | 2026-11-10 | A9650 |  |  |  |  | 114.6d | 93.92d | labor [280 h]; Physical Units [2910126 h] | PRO |
| A10660 |  | Carpet Flooring | 28d | 2026-10-10 | 2026-11-10 | A9660 |  |  |  |  | 114.6d | 93.92d | labor [280 h]; Physical Units [2910126 h] | PRO |
| A10670 |  | Landscape (Hard ) | 42d | 2026-10-10 | 2026-11-26 | A9670 |  |  |  |  | 100.6d | 79.92d | labor [420 h]; Physical Units [2910126 h] | PRO |
| A10310 |  | Plant and trees | 30d | 2026-10-25 | 2026-11-29 | A9310, A10290, A10260 |  |  |  |  | 226.46d | 0d | labor [300 h]; Physical Units [2910126 h] | PRO |
| A10320 |  | Garbage Bin, trash & litter | 56d | 2026-11-29 | 2027-02-02 | A9320, A10310 |  |  |  |  | 226.46d | 26.46d | labor [560 h]; Physical Units [2910126 h] | PRO |
| A10680 |  | Guard Rails | 28d | 2026-12-14 | 2027-01-14 | A9680, A11110 |  |  |  |  | 58.6d | 37.92d | labor [280 h]; Physical Units [2910126 h] | PRO |

| ID | WBS | Activity | Duration | Start | Finish | Predecessors | Complete | Remaining | Planned start | Planned finish | Total float | Free float | Resources | ALKHARJ INDUSTERIAL AREA - DECEPLINS |
| --- | --- | --- | --- | --- | --- | --- | --- | --- | --- | --- | --- | --- | --- | --- |
|  | ELE | **ELECTRICAL** |  | 2026-08-11 | 2027-02-16 |  |  |  |  |  |  |  |  |  |
|  | 1 | **Long Lead Items Elec** |  | 2026-08-11 | 2027-02-16 |  |  |  |  |  |  |  |  |  |
| A10710 |  | Unit Substation & RMU | 112d | 2026-08-11 A | 2026-09-26 A | A9710 | 100% |  | 2026-11-22 | 2027-03-31 |  |  | labor [1120 h]; Physical Units [5727128 h] | PRO |
| A10720 |  | MV Cables | 140d | 2026-08-11 A | 2026-10-06 A | A9720 | 100% |  | 2026-11-09 | 2027-04-20 |  |  | labor [1400 h]; Physical Units [28915011 h] | PRO |
| A10730 |  | LV Cables | 112d | 2026-08-11 A | 2026-09-26 A | A9730 | 100% |  | 2026-11-22 | 2027-03-31 |  |  | labor [1120 h]; Physical Units [5727128 h] | PRO |
| A10740 |  | LV Wire | 112d | 2026-08-11 A | 2026-09-26 A | A9740 | 100% |  | 2026-11-22 | 2027-03-31 |  |  | labor [1120 h]; Physical Units [5727128 h] | PRO |
| A10750 |  | Electrical Panels | 112d | 2026-08-11 A | 2026-09-26 A | A9750 | 100% |  | 2026-11-22 | 2027-03-31 |  |  | labor [1120 h]; Physical Units [5727128 h] | PRO |
| A10760 |  | LV Conductors (part of the panels) | 112d | 2026-08-11 A | 2026-09-26 A | A9760 | 100% |  | 2026-11-22 | 2027-03-31 |  |  | labor [1120 h]; Physical Units [5727128 h] | PRO |
| A10770 |  | Underground Ducts-UPVC | 112d | 2026-08-11 A | 2026-09-26 A | A9770 | 100% |  | 2026-11-22 | 2027-03-31 |  |  | labor [1120 h]; Physical Units [5727128 h] | PRO |
| A10820 |  | PVC & EMT conduits | 112d | 2026-08-11 A | 2026-09-26 A | A9820 FS+14d | 100% |  | 2026-12-02 | 2027-04-11 |  |  | labor [1120 h]; Physical Units [5727128 h] | PRO |
| A10890 |  | Drain & Clean Out | 112d | 2026-08-11 A | 2026-09-26 A | A9890 | 100% |  | 2026-11-16 | 2027-03-25 |  |  | labor [1120 h]; Physical Units [5727128 h] | PRO |
| A10800 |  | Street Lights Lighting Fixtures | 112d | 2026-09-10 A | 2026-10-29 | A9800 FS+14d | 84% | 17.92d | 2026-10-10 | 2027-02-16 | -72.73d | 94.08d | labor [1120 h]; Physical Units [5727128 h] | PRO |
| A10810 |  | Street Lighting Poles | 112d | 2026-09-22 A | 2026-10-25 | A9810 FS+14d | 88% | 13.44d | 2026-10-03 | 2027-02-09 | -68.25d | 98.56d | labor [1120 h]; Physical Units [5727128 h] | PRO |
| A10690 |  | Public address System | 70d | 2026-10-10 | 2026-12-29 | A9690 |  |  |  |  | -124.81d | 42d | labor [700 h]; Physical Units [5727128 h] | PRO |
| A10700 |  | Fire Pump | 70d | 2026-10-10 | 2026-12-29 | A9700 FS+14d |  |  |  |  | -124.81d | 42d | labor [700 h]; Physical Units [5727128 h] | PRO |
| A10870 |  | CCTV Pole | 112d | 2026-10-10 | 2027-02-16 | A9870 FS+14d |  |  |  |  | -166.81d | 0d | labor [1120 h]; Physical Units [5727128 h] | PRO |
| A10900 |  | Split AC Package | 112d | 2026-10-10 | 2027-02-16 | A9900 |  |  |  |  | -166.81d | 0d | labor [1120 h]; Physical Units [5727128 h] | PRO |
| A10910 |  | Ventilation Unit-Fan | 112d | 2026-10-10 | 2027-02-16 | A9910 |  |  |  |  | -166.81d | 0d | labor [1120 h]; Physical Units [5727128 h] | PRO |
|  | 2 | **Short Lead Item Elec** |  | 2026-08-11 | 2027-02-16 |  |  |  |  |  |  |  |  |  |
| A10780 |  | Underground Ducts-HDPE | 42d | 2026-08-11 A | 2026-09-26 A | A9780 | 100% |  | 2026-11-22 | 2027-01-09 |  |  | labor [420 h]; Physical Units [5727128 h] | PRO |
| A10840 |  | Wiring Devices and Switches | 112d | 2026-08-11 A | 2026-09-26 A | A9840 | 100% |  | 2026-11-16 | 2027-03-25 |  |  | labor [1120 h]; Physical Units [5727128 h] | PRO |
| A10860 |  | Earthing System | 70d | 2026-08-11 A | 2026-09-26 A | A9860 | 100% |  | 2026-11-16 | 2027-02-04 |  |  | labor [700 h]; Physical Units [5727128 h] | PRO |
| A10880 |  | GI duct work with insulation & Support | 70d | 2026-08-11 A | 2026-09-26 A | A9880 | 100% |  | 2026-11-16 | 2027-02-04 |  |  | labor [700 h]; Physical Units [5727128 h] | PRO |
| A10920 |  | Cable glands, lugs and accessories | 28d | 2026-08-11 A | 2026-09-26 A | A9920 | 100% |  | 2026-11-22 | 2026-12-23 |  |  | labor [280 h]; Physical Units [5727128 h] | PRO |
| A10790 |  | External Lighting Fixtures | 56d | 2026-09-10 A | 2026-10-19 | A9790 FS+14d | 84% | 8.96d | 2026-10-10 | 2026-12-13 | -63.77d | 103.04d | labor [560 h]; Physical Units [5727128 h] | PRO |
| A10830 |  | LIGHTING FIXTURES (buildings Internal) | 70d | 2026-09-10 A | 2026-10-22 | A9830 | 84% | 11.2d | 2026-10-10 | 2026-12-29 | -66.01d | 100.8d | labor [700 h]; Physical Units [5727128 h] | PRO |
| A10850 |  | DALI Cabinet (external lighting control) | 112d | 2026-10-10 | 2027-02-16 | A9850 |  |  |  |  | -166.81d | 0d | labor [1120 h]; Physical Units [5727128 h] | PRO |

| ID | WBS | Activity | Duration | Start | Finish | Predecessors | Complete | Remaining | Planned start | Planned finish | Total float | Free float | Resources | ALKHARJ INDUSTERIAL AREA - DECEPLINS |
| --- | --- | --- | --- | --- | --- | --- | --- | --- | --- | --- | --- | --- | --- | --- |
|  | MECH | **MECHANICAL** |  | 2026-08-11 | 2027-01-13 |  |  |  |  |  |  |  |  |  |
| A10930 |  | Secondary Irrigation System | 84d | 2026-08-11 A | 2026-10-28 | A9930 | 80% | 16.8d | 2027-06-16 | 2027-09-21 | 58.2d | 63.2d | labor [840 h]; Physical Units [5800851 h] | PRO |
| A10940 |  | HDPE Pipes & Fittings | 56d | 2026-08-11 A | 2026-09-26 A | A9940 SS+7d, A9940 FF+7d | 100% |  | 2026-11-05 | 2027-01-09 |  |  | labor [560 h]; Physical Units [24095842 h] | PRO |
| A10950 |  | UPVC Pipes & Fittings | 28d | 2026-08-11 A | 2026-09-26 A | A9950 | 100% |  | 2026-11-09 | 2026-12-10 |  |  | labor [280 h]; Physical Units [24095842 h] | PRO |
| A10960 |  | GRP Pipes & Fittings | 42d | 2026-08-11 A | 2026-09-26 A | A9960 | 100% |  | 2026-11-09 | 2026-12-27 |  |  | labor [420 h]; Physical Units [36143764 h] | PRO |
| A11050 |  | Hose Bib | 70d | 2026-08-21 A | 2026-09-28 A | A10050, A11120 | 100% |  | 2027-01-10 | 2027-03-31 |  |  | labor [700 h]; Physical Units [5800851 h] | PRO |
| A11060 |  | PPR Pipes & Fittings | 70d | 2026-08-21 A | 2026-09-28 A | A10060, A11050 | 100% |  | 2027-04-01 | 2027-06-21 |  |  | labor [700 h]; Physical Units [5800851 h] | PRO |
| A11080 |  | Sewage Manholes Cover with frame | 70d | 2026-08-21 A | 2026-10-08 A | A10080 | 100% |  | 2026-11-09 | 2027-01-28 |  |  | labor [700 h]; Physical Units [5800851 h] | PRO |
| A11090 |  | Irrigation Manholes Cover with frame | 56d | 2026-08-21 A | 2026-10-08 A | A10090 | 100% |  | 2027-01-30 | 2027-04-04 |  |  | labor [560 h]; Physical Units [5800851 h] | PRO |
| A11100 |  | Potable Manholes Cover with frame | 56d | 2026-08-21 A | 2026-10-08 A | A10100 | 100% |  | 2027-04-05 | 2027-06-08 |  |  | labor [560 h]; Physical Units [5800851 h] | PRO |
| A11120 |  | Polyethylene Sheets | 56d | 2026-08-21 A | 2026-09-26 A | A10120 SS+7d, A10120 FF+7d | 100% |  | 2026-11-05 | 2027-01-09 |  |  | labor [560 h]; Physical Units [5800851 h] | PRO |
| A11130 |  | Warning Tape | 14d | 2026-08-21 A | 2026-09-26 A | A10130 | 100% |  | 2026-11-09 | 2026-11-24 |  |  | labor [140 h]; Physical Units [5800851 h] | PRO |
| A11140 |  | Bitumen Paint (Bituminous Damp proofing) | 14d | 2026-08-21 A | 2026-10-08 A | A10140 | 100% |  | 2026-11-09 | 2026-11-24 |  |  | labor [140 h]; Physical Units [5800851 h] | PRO |
| A11150 |  | Anti Termite & Pest Contro; | 21d | 2026-08-21 A | 2026-09-26 A | A10150 | 100% |  | 2026-11-09 | 2026-12-02 |  |  | labor [210 h]; Physical Units [5800851 h] | PRO |
| A11160 |  | Warning tape | 21d | 2026-08-21 A | 2026-09-26 A | A10160 | 100% |  | 2026-11-09 | 2026-12-02 |  |  | labor [210 h]; Physical Units [5800851 h] | PRO |
| A11170 |  | Fire Hydrants | 84d | 2026-08-21 A | 2026-10-24 | A10170 FS+20d | 85% | 12.6d | 2026-12-02 | 2027-03-09 | 44.82d | 0d | labor [840 h]; Physical Units [5800851 h] | PRO |
| A11220 |  | Termination Kits | 42d | 2026-08-21 A | 2026-09-28 A | A10220 | 100% |  | 2027-04-05 | 2027-05-23 |  |  | labor [420 h]; Physical Units [5800851 h] | PRO |
| A10970 |  | Sanitory Ware, Plumbing Fixtures, Toilet Accessories | 56d | 2026-10-10 | 2026-12-13 | A9970 |  |  |  |  | 86.6d | 65.92d | labor [560 h]; Physical Units [5800851 h] | PRO |
| A10980 |  | Water Tank | 70d | 2026-10-10 | 2026-12-29 | A9980 |  |  |  |  | 72.6d | 51.92d | labor [700 h]; Physical Units [5800851 h] | PRO |
| A10990 |  | Gate Valves | 70d | 2026-10-10 | 2026-12-29 | A9990 |  |  |  |  | -12.58d | 10d | labor [700 h]; Physical Units [5800851 h] | PRO |
| A11000 |  | Surface Box for Gate valve | 60d | 2026-10-10 | 2026-12-17 | A10000 |  |  |  |  | -2.58d | 20d | labor [700 h]; Physical Units [5800851 h] | PRO |
| A11010 |  | Air Release Valves | 80d | 2026-10-10 | 2027-01-10 | A10010 |  |  |  |  | -22.58d | 0d | labor [900 h]; Physical Units [5800851 h] | PRO |
| A11020 |  | Washout Valves | 50d | 2026-10-10 | 2026-12-06 | A10020 |  |  |  |  | 7.42d | 30d | labor [900 h]; Physical Units [5800851 h] | PRO |
| A11030 |  | Connection Chamber | 70d | 2026-10-10 | 2026-12-29 | A10030 FS+30d |  |  |  |  | -12.58d | 10d | labor [700 h]; Physical Units [5800851 h] | PRO |
| A11040 |  | HDPE House Connections Chambers | 70d | 2026-10-10 | 2026-12-29 | A10040 FS+30d |  |  |  |  | 183.9d | 58.9d | labor [700 h]; Physical Units [5800851 h] | PRO |
| A11070 |  | Water Hammer Arrestor & TMV | 21d | 2026-10-10 | 2026-11-02 | A10070 |  |  |  |  | 203.9d | 183.22d | labor [210 h]; Physical Units [5800851 h] | PRO |
| A11110 |  | ICT Manholes Cover with frame | 56d | 2026-10-10 | 2026-12-13 | A10110 |  |  |  |  | -11d | 0d | labor [560 h]; Physical Units [5800851 h] | PRO |
| A11180 |  | OS & Y Gate valve | 70d | 2026-10-10 | 2026-12-29 | A10180 |  |  |  |  | -12.58d | 10d | labor [700 h]; Physical Units [5800851 h] | PRO |
| A11200 |  | Fire Alarm systems & cable | 70d | 2026-10-10 | 2026-12-29 | A10200 FS+21d |  |  |  |  | 72.6d | 51.92d | labor [700 h]; Physical Units [5800851 h] | PRO |
| A11210 |  | Water Heater | 70d | 2026-10-10 | 2026-12-29 | A10210 FS+21d |  |  |  |  | 72.6d | 51.92d | labor [700 h]; Physical Units [5800851 h] | PRO |
| A11190 |  | Fire Extinguisher | 70d | 2026-10-24 | 2027-01-13 | A10190 FS+21d, A11170 |  |  |  |  | 60d | 39.32d | labor [700 h]; Physical Units [5800851 h] | PRO |

| ID | WBS | Activity | Duration | Start | Finish | Predecessors | Complete | Remaining | Planned start | Planned finish | Total float | Free float | Resources | Cost | Actual cost | ALKHARJ INDUSTERIAL AREA - PROJECT ZONES | ALKHARJ INDUSTERIAL AREA - DECEPLINS |
| --- | --- | --- | --- | --- | --- | --- | --- | --- | --- | --- | --- | --- | --- | --- | --- | --- | --- |
|  | CON | **CONSTRUCTION** |  | 2025-12-06 | 2027-11-17 |  |  |  |  |  |  |  |  |  |  |  |  |
|  | Zone A | **Zone A** |  | 2026-01-03 | 2027-05-25 |  |  |  |  |  |  |  |  |  |  |  |  |
|  | PREP | **EARTH WORK** |  | 2026-01-03 | 2026-11-03 |  |  |  |  |  |  |  |  |  |  |  |  |
|  | R1 | **Road 1** |  | 2026-01-20 | 2026-10-10 |  |  |  |  |  |  |  |  |  |  |  |  |
|  | DE | **Demolition** |  | 2026-08-15 | 2026-09-20 |  |  |  |  |  |  |  |  |  |  |  |  |
| A56630 |  | Demolition of existing Asphalt | 5d | 2026-08-15 A | 2026-09-20 A | A1010 | 100% |  | 2026-10-26 | 2026-10-31 |  |  | ICKMO1-cost unite [78250.5 $]; Excavator [800 h]; Grader [200 h]; Bulldozer [200 h]; Physical Units [674239 h] | 78,250.5 | 78,250.5 | ZNA | CON |
| A56640 |  | Compaction of existing aggregate base course layer | 5d | 2026-08-15 A | 2026-09-20 A | A56630 | 100% |  | 2026-11-01 | 2026-11-05 |  |  | ICKMO1-cost unite [78250.5 $]; Roller compactor [200 h]; Bulldozer [200 h]; Physical Units [674239 h] | 78,250.5 | 78,250.5 | ZNA | CON |
| A56650 |  | Demolition of existing Kerbs | 5d | 2026-08-15 A | 2026-09-20 A | A56640, A2930, A2940, A2950, A2960, A2970, A2980, A2990 | 100% |  | 2026-11-07 | 2026-11-11 |  |  | ICKMO1-cost unite [78250.5 $]; Excavator [800 h]; Grader [200 h]; Bulldozer [200 h]; Physical Units [674239 h] | 78,250.5 | 78,250.5 | ZNA | CON |
|  | EW | **Earth Work** |  | 2026-01-20 | 2026-10-10 |  |  |  |  |  |  |  |  |  |  |  |  |
| A56600 |  | Earthworks - Cut Excavation | 14d | 2026-01-20 A | 2026-09-20 A | A56650, A1010 | 100% |  | 2026-01-20 | 2026-02-04 |  |  | ICKMO1-cost unite [375597 $]; Excavator [800 h]; Grader [200 h]; Excavation works [6215.33]; Physical Units [3236301 h] | 375,597.21 | 375,597.21 | ZNA | CON |
| A56610 |  | Earthworks - Fill & Compaction | 21d | 2026-08-21 A | 2026-10-10 | A56600 | 98% | 0.42d | 2026-02-05 | 2026-03-01 | -59.37d | 0d | ICKMO1-cost unite [281698 $]; Roller compactor [200 h]; Bulldozer [200 h]; Physical Units [2427226 h] | 281,697.91 | 276,063.95 | ZNA | CON |
| A56620 |  | Subgrade | 10d | 2026-08-21 A | 2026-10-10 | A56610, A2930, A2940, A2950, A2960, A2970, A2980, A2990, A4270 | 98% | 0.2d | 2026-03-02 | 2026-03-12 | -59.37d | 23.38d | ICKMO1-cost unite [281698 $]; Excavator [800 h]; Bulldozer [200 h]; Physical Units [2427226 h] | 281,697.91 | 276,063.95 | ZNA | CON |
|  | R2 | **Road 2** |  | 2026-02-05 | 2026-10-10 |  |  |  |  |  |  |  |  |  |  |  |  |
|  | DE | **Demolition** |  | 2026-08-15 | 2026-09-20 |  |  |  |  |  |  |  |  |  |  |  |  |
| A59230 |  | Demolition of existing Asphalt | 12d | 2026-08-15 A | 2026-09-20 A | A56630 | 100% |  | 2026-11-01 | 2026-11-14 |  |  | ICKMO1-cost unite [78249.4 $]; Excavator [800 h]; Grader [200 h]; Bulldozer [200 h]; Physical Units [674229 h] | 78,249.42 | 78,249.42 | ZNA | CON |
| A59240 |  | Compaction of existing aggregate base course layer | 7d | 2026-08-15 A | 2026-09-20 A | A59230 | 100% |  | 2026-11-15 | 2026-11-22 |  |  | ICKMO1-cost unite [78249.4 $]; Roller compactor [200 h]; Bulldozer [200 h]; Physical Units [674229 h] | 78,249.42 | 78,249.42 | ZNA | CON |
| A59250 |  | Demolition of existing Kerbs | 5d | 2026-08-15 A | 2026-09-20 A | A59240 | 100% |  | 2026-11-23 | 2026-11-28 |  |  | ICKMO1-cost unite [78249.4 $]; Excavator [800 h]; Bulldozer [200 h]; Physical Units [674229 h] | 78,249.42 | 78,249.42 | ZNA | CON |
|  | EW | **Earth Work** |  | 2026-02-05 | 2026-10-10 |  |  |  |  |  |  |  |  |  |  |  |  |
| A59200 |  | Earthworks - Cut Excavation | 14d | 2026-02-05 A | 2026-09-20 A | A59250 | 100% |  | 2026-02-05 | 2026-02-21 |  |  | ICKMO1-cost unite [375597 $]; Excavator [800 h]; Grader [200 h]; Excavation works [6215.33]; Physical Units [3236301 h] | 375,597.21 | 375,597.21 | ZNA | CON |
| A59210 |  | Earthworks - Fill & Compaction | 14d | 2026-08-21 A | 2026-10-10 | A59200 | 99% | 0.14d | 2026-02-22 | 2026-03-09 | -58.75d | 0d | ICKMO1-cost unite [281698 $]; Roller compactor [200 h]; Bulldozer [200 h]; Physical Units [2427226 h] | 281,697.91 | 278,880.93 | ZNA | CON |
| A59220 |  | Subgrade | 10d | 2026-08-21 A | 2026-10-10 | A59210 | 99% | 0.1d | 2026-03-10 | 2026-03-21 | -58.75d | 24d | ICKMO1-cost unite [281698 $]; Excavator [800 h]; Bulldozer [200 h]; Physical Units [2427226 h] | 281,697.91 | 278,880.93 | ZNA | CON |
|  | 3 | **Road 3** |  | 2026-02-09 | 2026-10-11 |  |  |  |  |  |  |  |  |  |  |  |  |
|  | DE | **Demolition** |  | 2026-08-15 | 2026-09-20 |  |  |  |  |  |  |  |  |  |  |  |  |
| A59290 |  | Demolition of existing Asphalt | 5d | 2026-08-15 A | 2026-09-20 A | A59230 | 100% |  | 2026-11-15 | 2026-11-19 |  |  | ICKMO1-cost unite [102984 $]; Excavator [800 h]; Grader [200 h]; Bulldozer [200 h]; Physical Units [887353 h] | 102,984.06 | 102,984.06 | ZNA | CON |
| A59300 |  | Compaction of existing aggregate base course layer | 5d | 2026-08-15 A | 2026-09-20 A | A59290 | 100% |  | 2026-11-21 | 2026-11-25 |  |  | ICKMO1-cost unite [102984 $]; Roller compactor [200 h]; Bulldozer [200 h]; Physical Units [887353 h] | 102,984.06 | 102,984.06 | ZNA | CON |
| A59310 |  | Demolition of existing Kerbs | 5d | 2026-08-15 A | 2026-09-20 A | A59300 | 100% |  | 2026-11-26 | 2026-12-01 |  |  | ICKMO1-cost unite [102984 $]; Excavator [800 h]; Bulldozer [200 h]; Physical Units [887353 h] | 102,984.06 | 102,984.06 | ZNA | CON |

| ID | WBS | Activity | Duration | Start | Finish | Predecessors | Complete | Remaining | Planned start | Planned finish | Total float | Free float | Resources | Cost | Actual cost | ALKHARJ INDUSTERIAL AREA - PROJECT ZONES | ALKHARJ INDUSTERIAL AREA - DECEPLINS |
| --- | --- | --- | --- | --- | --- | --- | --- | --- | --- | --- | --- | --- | --- | --- | --- | --- | --- |
|  | EW | **Earth Work** |  | 2026-02-09 | 2026-10-11 |  |  |  |  |  |  |  |  |  |  |  |  |
| A59260 |  | Earthworks - Cut Excavation | 14d | 2026-02-09 A | 2026-09-20 A | A59310 | 100% |  | 2026-02-09 | 2026-02-24 |  |  | ICKMO1-cost unite [494323 $]; Excavator [800 h]; Grader [200 h]; Excavation works [6215.33]; Physical Units [4259296 h] | 494,323.49 | 494,323.49 | ZNA | CON |
| A59270 |  | Earthworks - Fill & Compaction | 14d | 2026-08-21 A | 2026-10-10 | A59260 | 98% | 0.28d | 2026-02-25 | 2026-03-12 | -60.19d | 0d | ICKMO1-cost unite [370743 $]; Roller compactor [200 h]; Bulldozer [200 h]; Physical Units [3194472 h] | 370,742.61 | 363,327.76 | ZNA | CON |
| A59280 |  | Subgrade | 7d | 2026-08-21 A | 2026-10-11 | A59270 | 80% | 1.4d | 2026-03-14 | 2026-03-21 | -60.19d | 22.56d | ICKMO1-cost unite [370743 $]; Excavator [800 h]; Bulldozer [200 h]; Physical Units [3194472 h] | 370,742.61 | 296,594.09 | ZNA | CON |
|  | R4 | **Road 4** |  | 2026-02-25 | 2026-11-03 |  |  |  |  |  |  |  |  |  |  |  |  |
|  | EW | **Earth Work** |  | 2026-02-25 | 2026-11-03 |  |  |  |  |  |  |  |  |  |  |  |  |
| A59320 |  | Earthworks - Cut Excavation | 5d | 2026-02-25 A | 2026-09-20 A | A59260 | 100% |  | 2026-02-25 | 2026-03-02 |  |  | ICKMO1-cost unite [197683 $]; Excavator [800 h]; Grader [200 h]; Excavation works [6215.33]; Physical Units [1703316 h] | 197,682.74 | 197,682.74 | ZNA | CON |
| A59340 |  | Subgrade | 5d | 2026-08-21 A | 2026-11-03 | A59330 | 89% | 0.55d | 2026-03-28 | 2026-04-01 | -78.86d | 3.89d | ICKMO1-cost unite [148262 $]; Excavator [800 h]; Bulldozer [200 h]; Physical Units [1277487 h] | 148,262.05 | 131,953.23 | ZNA | CON |
| A59330 |  | Earthworks - Fill & Compaction | 21d | 2026-10-10 | 2026-11-02 | A59320 |  |  |  |  | -78.86d | 0d | ICKMO1-cost unite [148262 $]; Roller compactor [200 h]; Bulldozer [200 h]; Physical Units [1277487 h] | 148,262.05 |  | ZNA | CON |
|  | R5 | **Road 5** |  | 2026-03-15 | 2026-10-13 |  |  |  |  |  |  |  |  |  |  |  |  |
|  | EW | **Earth Work** |  | 2026-03-15 | 2026-10-13 |  |  |  |  |  |  |  |  |  |  |  |  |
| A59350 |  | Earthworks - Cut Excavation | 14d | 2026-03-15 A | 2026-09-20 A | A59320 | 100% |  | 2026-03-03 | 2026-03-18 |  |  | ICKMO1-cost unite [197683 $]; Excavator [800 h]; Grader [200 h]; Excavation works [6215.33]; Physical Units [1703316 h] | 197,682.74 | 197,682.74 | ZNA | CON |
| A59360 |  | Earthworks - Fill & Compaction | 10d | 2026-08-21 A | 2026-10-10 | A59350 | 99% | 0.1d | 2026-03-19 | 2026-03-30 | -90.1d | 0d | ICKMO1-cost unite [148262 $]; Roller compactor [200 h]; Bulldozer [200 h]; Physical Units [1277487 h] | 148,262.05 | 146,779.43 | ZNA | CON |
| A59370 |  | Subgrade | 5d | 2026-08-21 A | 2026-10-13 | A59360 | 40% | 3d | 2026-03-31 | 2026-04-05 | -60.29d | 22.46d | ICKMO1-cost unite [148262 $]; Excavator [800 h]; Bulldozer [200 h]; Physical Units [1277487 h] | 148,262.05 | 59,304.82 | ZNA | CON |
|  | R6 | **Road 6** |  | 2026-03-15 | 2026-10-17 |  |  |  |  |  |  |  |  |  |  |  |  |
|  | EW | **Earth Work** |  | 2026-03-15 | 2026-10-17 |  |  |  |  |  |  |  |  |  |  |  |  |
| A59380 |  | Earthworks - Cut Excavation | 14d | 2026-03-15 A | 2026-09-20 A | A59350 | 100% |  | 2026-03-19 | 2026-04-04 |  |  | ICKMO1-cost unite [197683 $]; Excavator [800 h]; Grader [200 h]; Excavation works [6215.33]; Physical Units [1703316 h] | 197,682.74 | 197,682.74 | ZNA | CON |
| A59390 |  | Earthworks - Fill & Compaction | 10d | 2026-08-21 A | 2026-10-10 | A59380 | 97% | 0.3d | 2026-04-05 | 2026-04-15 | -79.3d | 0d | ICKMO1-cost unite [148262 $]; Roller compactor [200 h]; Bulldozer [200 h]; Physical Units [1277487 h] | 148,262.05 | 143,814.19 | ZNA | CON |
| A59400 |  | Subgrade | 10d | 2026-08-29 A | 2026-10-17 | A59390 | 40% | 6d | 2026-04-16 | 2026-04-27 | -59.29d | 23.46d | ICKMO1-cost unite [148262 $]; Excavator [800 h]; Bulldozer [200 h]; Physical Units [1277487 h] | 148,262.05 | 59,304.82 | ZNA | CON |
|  | R7 | **Road 7** |  | 2026-03-15 | 2026-10-10 |  |  |  |  |  |  |  |  |  |  |  |  |
|  | EW | **Earth Work** |  | 2026-03-15 | 2026-10-10 |  |  |  |  |  |  |  |  |  |  |  |  |
| A59410 |  | Earthworks - Cut Excavation | 5d | 2026-03-15 A | 2026-09-20 A | A59380 | 100% |  | 2026-04-05 | 2026-04-09 |  |  | ICKMO1-cost unite [197658 $]; Excavator [800 h]; Grader [200 h]; Excavation works [6215.33]; Physical Units [1703103 h] | 197,658.03 | 197,658.03 | ZNA | CON |
| A59430 |  | Subgrade | 10d | 2026-08-15 A | 2026-09-20 A | A59420 | 100% |  | 2026-04-22 | 2026-05-03 |  |  | ICKMO1-cost unite [148244 $]; Excavator [800 h]; Bulldozer [200 h]; Physical Units [1277328 h] | 148,243.53 | 148,243.53 | ZNA | CON |
| A59420 |  | Earthworks - Fill & Compaction | 10d | 2026-08-29 A | 2026-10-10 | A59410 | 95% | 0.5d | 2026-04-11 | 2026-04-21 | -49.59d | 0d | ICKMO1-cost unite [148244 $]; Roller compactor [200 h]; Bulldozer [200 h]; Physical Units [1277328 h] | 148,243.53 | 140,831.35 | ZNA | CON |

| ID | WBS | Activity | Duration | Start | Finish | Predecessors | Complete | Remaining | Planned start | Planned finish | Total float | Free float | Resources | Cost | Actual cost | ALKHARJ INDUSTERIAL AREA - PROJECT ZONES | ALKHARJ INDUSTERIAL AREA - DECEPLINS |
| --- | --- | --- | --- | --- | --- | --- | --- | --- | --- | --- | --- | --- | --- | --- | --- | --- | --- |
|  | R8 | **Road 8** |  | 2026-03-15 | 2026-09-20 |  |  |  |  |  |  |  |  |  |  |  |  |
|  | EW | **Earth Work** |  | 2026-03-15 | 2026-09-20 |  |  |  |  |  |  |  |  |  |  |  |  |
| A59440 |  | Earthworks - Cut Excavation | 5d | 2026-03-15 A | 2026-09-20 A | A59410 | 100% |  | 2026-04-11 | 2026-04-15 |  |  | ICKMO1-cost unite [197658 $]; Excavator [800 h]; Grader [200 h]; Excavation works [6215.33]; Physical Units [1703103 h] | 197,658.03 | 197,658.03 | ZNA | CON |
| A59450 |  | Earthworks - Fill & Compaction | 21d | 2026-08-15 A | 2026-09-20 A | A59440 | 100% |  | 2026-04-16 | 2026-05-10 |  |  | ICKMO1-cost unite [148244 $]; Roller compactor [200 h]; Bulldozer [200 h]; Physical Units [1277328 h] | 148,243.53 | 148,243.53 | ZNA | CON |
| A59460 |  | Subgrade | 10d | 2026-08-15 A | 2026-09-20 A | A59450 SS+7d, A59450 FF+7d | 100% |  | 2026-05-07 | 2026-05-18 |  |  | ICKMO1-cost unite [148244 $]; Excavator [800 h]; Bulldozer [200 h]; Physical Units [1277328 h] | 148,243.53 | 148,243.53 | ZNA | CON |
|  | R9 | **Road 9** |  | 2026-01-03 | 2026-09-20 |  |  |  |  |  |  |  |  |  |  |  |  |
|  | EW | **Earth Work** |  | 2026-01-03 | 2026-09-20 |  |  |  |  |  |  |  |  |  |  |  |  |
| A59470 |  | Earthworks - Cut Excavation | 14d | 2026-01-03 A | 2026-09-20 A | A1010 | 100% |  | 2026-01-03 | 2026-01-18 |  |  | ICKMO1-cost unite [741335 $]; Excavator [800 h]; Grader [200 h]; Excavation works [6215.33]; Physical Units [6387649 h] | 741,335 | 741,335 | ZNA | CON |
| A59480 |  | Earthworks - Fill & Compaction | 21d | 2026-08-15 A | 2026-09-20 A | A59470 | 100% |  | 2026-01-19 | 2026-02-11 |  |  | ICKMO1-cost unite [556001 $]; Roller compactor [200 h]; Bulldozer [200 h]; Physical Units [4790737 h] | 556,001.25 | 556,001.25 | ZNA | CON |
| A59490 |  | Subgrade | 10d | 2026-08-15 A | 2026-09-20 A | A59480 | 100% |  | 2026-02-12 | 2026-02-23 |  |  | ICKMO1-cost unite [556001 $]; Excavator [800 h]; Bulldozer [200 h]; Physical Units [4790737 h] | 556,001.25 | 556,001.25 | ZNA | CON |
|  | R10 | **Road10** |  | 2026-01-19 | 2026-10-10 |  |  |  |  |  |  |  |  |  |  |  |  |
|  | EW | **Earth Work** |  | 2026-01-19 | 2026-10-10 |  |  |  |  |  |  |  |  |  |  |  |  |
| A59500 |  | Earthworks - Cut Excavation | 14d | 2026-01-19 A | 2026-09-20 A | A59470 | 100% |  | 2026-01-19 | 2026-02-03 |  |  | ICKMO1-cost unite [197683 $]; Excavator [800 h]; Grader [200 h]; Excavation works [6215.33]; Physical Units [1703316 h] | 197,682.74 | 197,682.74 | ZNA | CON |
| A59520 |  | Subgrade | 10d | 2026-08-15 A | 2026-09-20 A | A59510 | 100% |  | 2026-03-01 | 2026-03-11 |  |  | ICKMO1-cost unite [148262 $]; Excavator [800 h]; Bulldozer [200 h]; Physical Units [1277487 h] | 148,262.05 | 148,262.05 | ZNA | CON |
| A59510 |  | Earthworks - Fill & Compaction | 21d | 2026-08-29 A | 2026-10-10 | A59500 | 97% | 0.63d | 2026-02-04 | 2026-02-28 | -49.6d | 0d | ICKMO1-cost unite [148262 $]; Roller compactor [200 h]; Bulldozer [200 h]; Physical Units [1277487 h] | 148,262.05 | 143,814.19 | ZNA | CON |
|  | R11 | **Road11** |  | 2026-02-04 | 2026-09-20 |  |  |  |  |  |  |  |  |  |  |  |  |
|  | EW | **Earth Work** |  | 2026-02-04 | 2026-09-20 |  |  |  |  |  |  |  |  |  |  |  |  |
| A59530 |  | Earthworks - Cut Excavation | 14d | 2026-02-04 A | 2026-09-20 A | A59500 | 100% |  | 2026-02-04 | 2026-02-19 |  |  | ICKMO1-cost unite [148262 $]; Excavator [800 h]; Grader [200 h]; Excavation works [6215.33]; Physical Units [1277487 h] | 148,262.05 | 148,262.05 | ZNA | CON |
| A59540 |  | Earthworks - Fill & Compaction | 21d | 2026-08-15 A | 2026-09-20 A | A59530 | 100% |  | 2026-02-21 | 2026-03-16 |  |  | ICKMO1-cost unite [111197 $]; Roller compactor [200 h]; Bulldozer [200 h]; Physical Units [958115 h] | 111,196.54 | 111,196.54 | ZNA | CON |
| A59550 |  | Subgrade | 10d | 2026-08-15 A | 2026-09-20 A | A59540 | 100% |  | 2026-03-17 | 2026-03-28 |  |  | ICKMO1-cost unite [111197 $]; Excavator [800 h]; Bulldozer [200 h]; Physical Units [958115 h] | 111,196.54 | 111,196.54 | ZNA | CON |
|  | R12 | **Road12** |  | 2026-02-21 | 2026-09-20 |  |  |  |  |  |  |  |  |  |  |  |  |
|  | EW | **Earth Work** |  | 2026-02-21 | 2026-09-20 |  |  |  |  |  |  |  |  |  |  |  |  |
| A59560 |  | Earthworks - Cut Excavation | 14d | 2026-02-21 A | 2026-09-20 A | A59530 | 100% |  | 2026-02-21 | 2026-03-08 |  |  | ICKMO1-cost unite [148262 $]; Excavator [800 h]; Grader [200 h]; Excavation works [6215.33]; Physical Units [1277487 h] | 148,262.05 | 148,262.05 | ZNA | CON |
| A59570 |  | Earthworks - Fill & Compaction | 21d | 2026-08-15 A | 2026-09-20 A | A59560 | 100% |  | 2026-03-09 | 2026-04-01 |  |  | ICKMO1-cost unite [111197 $]; Roller compactor [200 h]; Bulldozer [200 h]; Physical Units [958115 h] | 111,196.54 | 111,196.54 | ZNA | CON |
| A59580 |  | Subgrade | 10d | 2026-08-15 A | 2026-09-20 A | A59570 | 100% |  | 2026-04-02 | 2026-04-13 |  |  | ICKMO1-cost unite [111197 $]; Excavator [800 h]; Bulldozer [200 h]; Physical Units [958115 h] | 111,196.54 | 111,196.54 | ZNA | CON |

| ID | WBS | Activity | Duration | Start | Finish | Predecessors | Complete | Remaining | Planned start | Planned finish | Total float | Free float | Resources | Cost | Actual cost | ALKHARJ INDUSTERIAL AREA - PROJECT ZONES | ALKHARJ INDUSTERIAL AREA - DECEPLINS |
| --- | --- | --- | --- | --- | --- | --- | --- | --- | --- | --- | --- | --- | --- | --- | --- | --- | --- |
|  | R13 | **Road13** |  | 2026-03-15 | 2026-09-20 |  |  |  |  |  |  |  |  |  |  |  |  |
|  | EW | **Earth Work** |  | 2026-03-15 | 2026-09-20 |  |  |  |  |  |  |  |  |  |  |  |  |
| A59590 |  | Earthworks - Cut Excavation | 14d | 2026-03-15 A | 2026-09-20 A | A59560 | 100% |  | 2026-03-09 | 2026-03-24 |  |  | ICKMO1-cost unite [148361 $]; Excavator [800 h]; Grader [200 h]; Excavation works [6215.33]; Physical Units [1278339 h] | 148,360.9 | 148,360.9 | ZNA | CON |
| A59600 |  | Earthworks - Fill & Compaction | 21d | 2026-08-15 A | 2026-09-20 A | A59590 | 100% |  | 2026-03-25 | 2026-04-18 |  |  | ICKMO1-cost unite [111271 $]; Roller compactor [200 h]; Bulldozer [200 h]; Physical Units [958754 h] | 111,270.67 | 111,270.67 | ZNA | CON |
| A59610 |  | Subgrade | 10d | 2026-08-15 A | 2026-09-20 A | A59600 | 100% |  | 2026-04-19 | 2026-04-29 |  |  | ICKMO1-cost unite [111271 $]; Excavator [800 h]; Bulldozer [200 h]; Physical Units [958754 h] | 111,270.67 | 111,270.67 | ZNA | CON |
|  | R14 | **Road14** |  | 2026-03-15 | 2026-09-20 |  |  |  |  |  |  |  |  |  |  |  |  |
|  | EW | **Earth Work** |  | 2026-03-15 | 2026-09-20 |  |  |  |  |  |  |  |  |  |  |  |  |
| A59620 |  | Earthworks - Cut Excavation | 14d | 2026-03-15 A | 2026-09-20 A | A59590 | 100% |  | 2026-03-25 | 2026-04-09 |  |  | ICKMO1-cost unite [148361 $]; Excavator [800 h]; Grader [200 h]; Excavation works [6215.33]; Physical Units [1278339 h] | 148,360.9 | 148,360.9 | ZNA | CON |
| A59630 |  | Earthworks - Fill & Compaction | 21d | 2026-08-15 A | 2026-09-20 A | A59620 | 100% |  | 2026-04-11 | 2026-05-04 |  |  | ICKMO1-cost unite [111271 $]; Roller compactor [200 h]; Bulldozer [200 h]; Physical Units [958754 h] | 111,270.67 | 111,270.67 | ZNA | CON |
| A59640 |  | Subgrade | 10d | 2026-08-15 A | 2026-09-20 A | A59630 | 100% |  | 2026-05-05 | 2026-05-16 |  |  | ICKMO1-cost unite [111271 $]; Excavator [800 h]; Bulldozer [200 h]; Physical Units [958754 h] | 111,270.67 | 111,270.67 | ZNA | CON |
|  | R15 | **Road15** |  | 2026-03-15 | 2026-11-02 |  |  |  |  |  |  |  |  |  |  |  |  |
|  | EW | **Earth Work** |  | 2026-03-15 | 2026-11-02 |  |  |  |  |  |  |  |  |  |  |  |  |
| A59650 |  | Earthworks - Cut Excavation | 14d | 2026-03-15 A | 2026-09-20 A | A59620 | 100% |  | 2026-04-11 | 2026-04-26 |  |  | ICKMO1-cost unite [148361 $]; Excavator [800 h]; Grader [200 h]; Excavation works [6215.33]; Physical Units [1278339 h] | 148,360.9 | 148,360.9 | ZNA | CON |
| A59670 |  | Subgrade | 10d | 2026-08-15 A | 2026-09-20 A | A59660 | 100% |  | 2026-05-21 | 2026-06-01 |  |  | ICKMO1-cost unite [111271 $]; Excavator [800 h]; Bulldozer [200 h]; Physical Units [958754 h] | 111,270.67 | 111,270.67 | ZNA | CON |
| A59660 |  | Earthworks - Fill & Compaction | 21d | 2026-10-10 | 2026-11-02 | A59650 |  |  |  |  | -45.7d | 0d | ICKMO1-cost unite [111271 $]; Roller compactor [200 h]; Bulldozer [200 h]; Physical Units [958754 h] | 111,270.67 |  | ZNA | CON |
|  | R16 | **Road16** |  | 2026-03-15 | 2026-10-17 |  |  |  |  |  |  |  |  |  |  |  |  |
|  | DE | **Demolition** |  | 2026-08-15 | 2026-09-20 |  |  |  |  |  |  |  |  |  |  |  |  |
| A59710 |  | Demolition of existing Asphalt | 6d | 2026-08-15 A | 2026-09-20 A | A59650 | 100% |  | 2026-10-26 | 2026-11-01 |  |  | ICKMO1-cost unite [12363.4 $]; Excavator [800 h]; Grader [200 h]; Physical Units [106528 h] | 12,363.41 | 12,363.41 | ZNA | CON |
| A59720 |  | Compaction of existing aggregate base course layer | 6d | 2026-08-15 A | 2026-09-20 A | A59710 | 100% |  | 2026-11-02 | 2026-11-08 |  |  | ICKMO1-cost unite [12363.4 $]; Roller compactor [200 h]; Bulldozer [200 h]; Physical Units [106528 h] | 12,363.41 | 12,363.41 | ZNA | CON |
| A59730 |  | Demolition of existing Kerbs | 5d | 2026-08-15 A | 2026-09-20 A | A59720 | 100% |  | 2026-11-09 | 2026-11-14 |  |  | ICKMO1-cost unite [12363.4 $]; Excavator [800 h]; Bulldozer [200 h]; Physical Units [106528 h] | 12,363.41 | 12,363.41 | ZNA | CON |
|  | EW | **Earth Work** |  | 2026-03-15 | 2026-10-17 |  |  |  |  |  |  |  |  |  |  |  |  |
| A59680 |  | Earthworks - Cut Excavation | 14d | 2026-03-15 A | 2026-09-20 A | A59730 | 100% |  | 2026-05-17 | 2026-06-01 |  |  | ICKMO1-cost unite [59344.3 $]; Excavator [800 h]; Grader [200 h]; Excavation works [6215.33]; Physical Units [511335 h] | 59,344.35 | 59,344.35 | ZNA | CON |
| A59690 |  | Earthworks - Fill & Compaction | 5d | 2026-08-29 A | 2026-10-12 | A59680 | 43% | 2.85d | 2026-06-02 | 2026-06-07 | -31.05d | 0d | ICKMO1-cost unite [44508.3 $]; Roller compactor [200 h]; Bulldozer [200 h]; Physical Units [383502 h] | 44,508.27 | 19,138.56 | ZNA | CON |
| A59700 |  | Subgrade | 5d | 2026-08-29 A | 2026-10-17 | A59690 | 30% | 3.5d | 2026-06-08 | 2026-06-13 | -31.05d | 27.67d | ICKMO1-cost unite [44508.3 $]; Excavator [800 h]; Bulldozer [200 h]; Physical Units [383502 h] | 44,508.27 | 13,352.48 | ZNA | CON |

| ID | WBS | Activity | Duration | Start | Finish | Predecessors | Complete | Remaining | Planned start | Planned finish | Total float | Free float | Resources | Cost | Actual cost | ALKHARJ INDUSTERIAL AREA - PROJECT ZONES | ALKHARJ INDUSTERIAL AREA - DECEPLINS | ALKHARJ INDUSTERIAL AREA - Wet networks |
| --- | --- | --- | --- | --- | --- | --- | --- | --- | --- | --- | --- | --- | --- | --- | --- | --- | --- | --- |
|  | R17 | **Road17** |  | 2026-03-15 | 2026-10-24 |  |  |  |  |  |  |  |  |  |  |  |  |  |
|  | DE | **Demolition** |  | 2026-08-15 | 2026-09-20 |  |  |  |  |  |  |  |  |  |  |  |  |  |
| A59770 |  | Demolition of existing Asphalt | 5d | 2026-08-15 A | 2026-09-20 A | A59710 | 100% |  | 2026-11-02 | 2026-11-07 |  |  | ICKMO1-cost unite [12355.2 $]; Excavator [800 h]; Grader [200 h]; Physical Units [106457 h] | 12,355.17 | 12,355.17 | ZNA | CON |  |
| A59780 |  | Compaction of existing aggregate base course layer | 5d | 2026-08-15 A | 2026-09-20 A | A59770 | 100% |  | 2026-11-08 | 2026-11-12 |  |  | ICKMO1-cost unite [12355.2 $]; Roller compactor [200 h]; Bulldozer [200 h]; Physical Units [106457 h] | 12,355.17 | 12,355.17 | ZNA | CON |  |
| A59790 |  | Demolition of existing Kerbs | 5d | 2026-08-15 A | 2026-09-20 A | A59780 | 100% |  | 2026-11-14 | 2026-11-18 |  |  | ICKMO1-cost unite [12355.2 $]; Excavator [800 h]; Bulldozer [200 h]; Physical Units [106457 h] | 12,355.17 | 12,355.17 | ZNA | CON |  |
|  | EW | **Earth Work** |  | 2026-03-15 | 2026-10-24 |  |  |  |  |  |  |  |  |  |  |  |  |  |
| A59740 |  | Earthworks - Cut Excavation | 5d | 2026-03-15 A | 2026-09-20 A | A59790 | 100% |  | 2026-05-21 | 2026-05-26 |  |  | ICKMO1-cost unite [59304.8 $]; Excavator [800 h]; Grader [200 h]; Excavation works [6215.33]; Physical Units [510995 h] | 59,304.83 | 59,304.83 | ZNA | CON |  |
| A59750 |  | Earthworks - Fill & Compaction | 10d | 2026-08-29 A | 2026-10-15 | A59740 | 48% | 5.2d | 2026-05-27 | 2026-06-07 | -32.4d | 0d | ICKMO1-cost unite [44478.6 $]; Roller compactor [200 h]; Bulldozer [200 h]; Physical Units [383246 h] | 44,478.62 | 21,349.74 | ZNA | CON |  |
| A59760 |  | Subgrade | 10d | 2026-08-29 A | 2026-10-24 | A59750 | 30% | 7d | 2026-06-08 | 2026-06-18 | -32.4d | 26.32d | ICKMO1-cost unite [44478.6 $]; Excavator [800 h]; Bulldozer [200 h]; Physical Units [383246 h] | 44,478.62 | 13,343.59 | ZNA | CON |  |
|  | CO1 | **Collector 1** |  | 2026-03-15 | 2026-09-20 |  |  |  |  |  |  |  |  |  |  |  |  |  |
|  | DE | **Demolition** |  | 2026-08-15 | 2026-09-20 |  |  |  |  |  |  |  |  |  |  |  |  |  |
| A59830 |  | Demolition of existing Asphalt | 6d | 2026-08-15 A | 2026-09-20 A | A59770 | 100% |  | 2026-11-08 | 2026-11-14 |  |  | ICKMO1-cost unite [53460.8 $]; Excavator [800 h]; Grader [200 h]; Physical Units [460641 h] | 53,460.83 | 53,460.83 | ZNA | CON |  |
| A59840 |  | Compaction of existing aggregate base course layer | 5d | 2026-08-15 A | 2026-09-20 A | A59830 | 100% |  | 2026-11-15 | 2026-11-19 |  |  | ICKMO1-cost unite [53460.8 $]; Roller compactor [200 h]; Bulldozer [200 h]; Physical Units [460641 h] | 53,460.83 | 53,460.83 | ZNA | CON |  |
| A59850 |  | Demolition of existing Kerbs | 5d | 2026-08-15 A | 2026-09-20 A | A59840 | 100% |  | 2026-11-21 | 2026-11-25 |  |  | ICKMO1-cost unite [53460.8 $]; Excavator [800 h]; Bulldozer [200 h]; Physical Units [460641 h] | 53,460.83 | 53,460.83 | ZNA | CON |  |
|  | EW | **Earth Work** |  | 2026-03-15 | 2026-09-20 |  |  |  |  |  |  |  |  |  |  |  |  |  |
| A59800 |  | Earthworks - Cut Excavation | 5d | 2026-03-15 A | 2026-09-20 A | A59850 | 100% |  | 2026-05-28 | 2026-06-02 |  |  | ICKMO1-cost unite [256612 $]; Excavator [800 h]; Grader [200 h]; Excavation works [6215.33]; Physical Units [2211075 h] | 256,611.97 | 256,611.97 | ZNA | CON |  |
| A59810 |  | Earthworks - Fill & Compaction | 21d | 2026-08-15 A | 2026-09-20 A | A59800 | 100% |  | 2026-06-03 | 2026-06-27 |  |  | ICKMO1-cost unite [192459 $]; Roller compactor [200 h]; Bulldozer [200 h]; Physical Units [1658306 h] | 192,458.98 | 192,458.98 | ZNA | CON |  |
| A59820 |  | Subgrade | 10d | 2026-08-15 A | 2026-09-20 A | A59810 | 100% |  | 2026-06-28 | 2026-07-08 |  |  | ICKMO1-cost unite [192459 $]; Excavator [800 h]; Bulldozer [200 h]; Physical Units [1658306 h] | 192,458.98 | 192,458.98 | ZNA | CON |  |
|  | 1 | **STORM NETWORK** |  | 2026-08-20 | 2027-02-17 |  |  |  |  |  |  |  |  |  |  |  |  |  |
|  | LR 01 | **LR 01** |  | 2026-08-20 | 2026-11-30 |  |  |  |  |  |  |  |  |  |  |  |  |  |
|  | MH-32-A-15 /MH-32-A-14 | **MH-32-A-15 /MH-32-A-14** |  | 2026-08-20 | 2026-11-17 |  |  |  |  |  |  |  |  |  |  |  |  |  |
| A74430 |  | Excavation | 10d | 2026-08-20 A | 2026-09-28 A | A74480, A1080 | 100% |  | 2026-09-24 | 2026-10-05 |  |  | ICKMO1-cost unite [7593.19 $]; Excavator [200 h]; Physical Units [65426.1 h] | 7,593.19 | 7,593.19 | ZNA | CON |  |
| A74440 |  | Pipe Laying | 10d | 2026-08-20 A | 2026-09-28 A | A74430 | 100% |  | 2026-10-06 | 2026-10-17 |  |  | ICKMO1-cost unite [5062.13 $]; boom truck [200 h]; labor [1200 h]; Storm Network Circular pipes (GRP) [80.79]; Physical Units [43617.4 h] | 5,062.13 | 5,062.13 | ZNA | CON | LAY |
| A74450 |  | Install Manhole | 10d | 2026-08-20 A | 2026-09-28 A | A74430 | 100% |  | 2026-10-06 | 2026-10-17 |  |  | ICKMO1-cost unite [22779.6 $]; boom truck [200 h]; labor [1200 h]; Physical Units [196278 h] | 22,779.57 | 22,779.57 | ZNA | CON | MH |
| A74470 |  | Backfilling & Compaction | 10d | 2026-08-20 A | 2026-09-28 A | A74460, A74450, A74520 | 100% |  | 2027-07-22 | 2027-08-02 |  |  | ICKMO1-cost unite [10124.2 $]; Roller compactor [200 h]; Physical Units [87234.7 h] | 10,124.25 | 10,124.25 | ZNA | CON |  |
| A74460 |  | Testing & Inspection | 10d | 2026-11-07 | 2026-11-17 | A74440 |  |  |  |  | 52d | 0d | ICKMO1-cost unite [5062.13 $]; labor [1200 h]; Physical Units [43617.4 h] | 5,062.13 |  | ZNA | CON |  |

| ID | WBS | Activity | Duration | Start | Finish | Predecessors | Complete | Planned start | Planned finish | Total float | Free float | Resources | Cost | Actual cost | ALKHARJ INDUSTERIAL AREA - PROJECT ZONES | ALKHARJ INDUSTERIAL AREA - DECEPLINS | ALKHARJ INDUSTERIAL AREA - Wet networks |
| --- | --- | --- | --- | --- | --- | --- | --- | --- | --- | --- | --- | --- | --- | --- | --- | --- | --- |
|  | MH-32-A-16 /MH-32-A-15 | **MH-32-A-16 /MH-32-A-15** |  | 2026-08-20 | 2026-11-17 |  |  |  |  |  |  |  |  |  |  |  |  |
| A74380 |  | Excavation | 10d | 2026-08-20 A | 2026-09-28 A | A74430, A1080 | 100% | 2026-10-06 | 2026-10-17 |  |  | ICKMO1-cost unite [7593.19 $]; Excavator [200 h]; Physical Units [65426.1 h] | 7,593.19 | 7,593.19 | ZNA | CON |  |
| A74390 |  | Pipe Laying | 10d | 2026-08-20 A | 2026-09-28 A | A74380 | 100% | 2026-10-18 | 2026-10-28 |  |  | ICKMO1-cost unite [5062.13 $]; boom truck [200 h]; labor [1200 h]; Storm Network Circular pipes (GRP) [80.79]; Physical Units [43617.4 h] | 5,062.13 | 5,062.13 | ZNA | CON | LAY |
| A74400 |  | Install Manhole | 10d | 2026-08-20 A | 2026-09-28 A | A74380 | 100% | 2026-10-18 | 2026-10-28 |  |  | ICKMO1-cost unite [22779.6 $]; boom truck [200 h]; labor [1200 h]; Physical Units [196278 h] | 22,779.57 | 22,779.57 | ZNA | CON | MH |
| A74420 |  | Backfilling & Compaction | 10d | 2026-08-20 A | 2026-09-28 A | A74410, A74400, A74470 | 100% | 2027-08-03 | 2027-08-14 |  |  | ICKMO1-cost unite [10124.2 $]; Roller compactor [200 h]; Physical Units [87234.7 h] | 10,124.25 | 10,124.25 | ZNA | CON |  |
| A74410 |  | Testing & Inspection | 10d | 2026-11-07 | 2026-11-17 | A74390 |  |  |  | 52d | 0d | ICKMO1-cost unite [5062.13 $]; labor [1200 h]; Physical Units [43617.4 h] | 5,062.13 |  | ZNA | CON |  |
|  | MH-32-A-17 /MH-32-A-16 | **MH-32-A-17 /MH-32-A-16** |  | 2026-08-20 | 2026-11-17 |  |  |  |  |  |  |  |  |  |  |  |  |
| A74330 |  | Excavation | 10d | 2026-08-20 A | 2026-09-28 A | A74380, A1080 | 100% | 2026-10-18 | 2026-10-28 |  |  | ICKMO1-cost unite [7593.19 $]; Excavator [200 h]; Physical Units [65426.1 h] | 7,593.19 | 7,593.19 | ZNA | CON |  |
| A74340 |  | Pipe Laying | 10d | 2026-08-20 A | 2026-09-28 A | A74330 | 100% | 2026-10-29 | 2026-11-09 |  |  | ICKMO1-cost unite [5062.13 $]; boom truck [200 h]; labor [1200 h]; Storm Network Circular pipes (GRP) [80.79]; Physical Units [43617.4 h] | 5,062.13 | 5,062.13 | ZNA | CON | LAY |
| A74350 |  | Install Manhole | 10d | 2026-08-20 A | 2026-09-28 A | A74330 | 100% | 2026-10-29 | 2026-11-09 |  |  | ICKMO1-cost unite [22779.6 $]; boom truck [200 h]; labor [1200 h]; Physical Units [196278 h] | 22,779.57 | 22,779.57 | ZNA | CON | MH |
| A74370 |  | Backfilling & Compaction | 10d | 2026-08-20 A | 2026-09-28 A | A74360, A74350, A74420 | 100% | 2027-08-15 | 2027-08-25 |  |  | ICKMO1-cost unite [10124.2 $]; Roller compactor [200 h]; Physical Units [87234.7 h] | 10,124.25 | 10,124.25 | ZNA | CON |  |
| A74360 |  | Testing & Inspection | 10d | 2026-11-07 | 2026-11-17 | A74340 |  |  |  | 52d | 0d | ICKMO1-cost unite [5062.13 $]; labor [1200 h]; Physical Units [43617.4 h] | 5,062.13 |  | ZNA | CON |  |
|  | MH-32-A-18 /MH-32-A-17 | **MH-32-A-18 /MH-32-A-17** |  | 2026-08-20 | 2026-11-17 |  |  |  |  |  |  |  |  |  |  |  |  |
| A74280 |  | Excavation | 10d | 2026-08-20 A | 2026-09-28 A | A74330, A1080 | 100% | 2026-10-29 | 2026-11-09 |  |  | ICKMO1-cost unite [7593.19 $]; Excavator [200 h]; Physical Units [65426.1 h] | 7,593.19 | 7,593.19 | ZNA | CON |  |
| A74290 |  | Pipe Laying | 10d | 2026-08-20 A | 2026-09-28 A | A74280 | 100% | 2026-11-10 | 2026-11-21 |  |  | ICKMO1-cost unite [5062.13 $]; boom truck [200 h]; labor [1200 h]; Storm Network Circular pipes (GRP) [80.79]; Physical Units [43617.4 h] | 5,062.13 | 5,062.13 | ZNA | CON | LAY |
| A74300 |  | Install Manhole | 10d | 2026-08-20 A | 2026-09-28 A | A74280 | 100% | 2026-11-10 | 2026-11-21 |  |  | ICKMO1-cost unite [22779.6 $]; boom truck [200 h]; labor [1200 h]; Physical Units [196278 h] | 22,779.57 | 22,779.57 | ZNA | CON | MH |
| A74320 |  | Backfilling & Compaction | 10d | 2026-08-20 A | 2026-09-28 A | A74310, A74300, A74370 | 100% | 2027-08-26 | 2027-09-06 |  |  | ICKMO1-cost unite [10124.2 $]; Roller compactor [200 h]; Physical Units [87234.7 h] | 10,124.25 | 10,124.25 | ZNA | CON |  |
| A74310 |  | Testing & Inspection | 10d | 2026-11-07 | 2026-11-17 | A74290 |  |  |  | 52d | 0d | ICKMO1-cost unite [5062.13 $]; labor [1200 h]; Physical Units [43617.4 h] | 5,062.13 |  | ZNA | CON |  |
|  | MH-32-A-19 /MH-32-A-18 | **MH-32-A-19 /MH-32-A-18** |  | 2026-08-20 | 2026-11-17 |  |  |  |  |  |  |  |  |  |  |  |  |
| A74230 |  | Excavation | 10d | 2026-08-20 A | 2026-09-28 A | A74280, A1080 | 100% | 2026-11-10 | 2026-11-21 |  |  | ICKMO1-cost unite [7593.19 $]; Excavator [200 h]; Physical Units [65426.1 h] | 7,593.19 | 7,593.19 | ZNA | CON |  |
| A74240 |  | Pipe Laying | 10d | 2026-08-20 A | 2026-09-28 A | A74230 | 100% | 2026-11-22 | 2026-12-02 |  |  | ICKMO1-cost unite [5062.13 $]; boom truck [200 h]; labor [1200 h]; Storm Network Circular pipes (GRP) [80.79]; Physical Units [43617.4 h] | 5,062.13 | 5,062.13 | ZNA | CON | LAY |
| A74250 |  | Install Manhole | 10d | 2026-08-20 A | 2026-09-28 A | A74230 | 100% | 2026-11-22 | 2026-12-02 |  |  | ICKMO1-cost unite [22779.6 $]; boom truck [200 h]; labor [1200 h]; Physical Units [196278 h] | 22,779.57 | 22,779.57 | ZNA | CON | MH |
| A74270 |  | Backfilling & Compaction | 10d | 2026-08-20 A | 2026-09-28 A | A74260, A74250, A74320 | 100% | 2027-09-07 | 2027-09-18 |  |  | ICKMO1-cost unite [10124.2 $]; Roller compactor [200 h]; Physical Units [87234.7 h] | 10,124.25 | 10,124.25 | ZNA | CON |  |
| A74260 |  | Testing & Inspection | 10d | 2026-11-07 | 2026-11-17 | A74240 |  |  |  | 52d | 0d | ICKMO1-cost unite [5062.13 $]; labor [1200 h]; Physical Units [43617.4 h] | 5,062.13 |  | ZNA | CON |  |

| ID | WBS | Activity | Duration | Start | Finish | Predecessors | Complete | Remaining | Planned start | Planned finish | Total float | Free float | Resources | Cost | Actual cost | ALKHARJ INDUSTERIAL AREA - PROJECT ZONES | ALKHARJ INDUSTERIAL AREA - DECEPLINS | ALKHARJ INDUSTERIAL AREA - Wet networks |
| --- | --- | --- | --- | --- | --- | --- | --- | --- | --- | --- | --- | --- | --- | --- | --- | --- | --- | --- |
|  | MH-32-A-20 /MH-32-A-19 | **MH-32-A-20 /MH-32-A-19** |  | 2026-08-20 | 2026-11-30 |  |  |  |  |  |  |  |  |  |  |  |  |  |
| A74180 |  | Excavation | 10d | 2026-08-20 A | 2026-09-28 A | A74230, A1080 | 100% |  | 2026-11-22 | 2026-12-02 |  |  | ICKMO1-cost unite [7593.19 $]; Excavator [200 h]; Physical Units [65426.1 h] | 7,593.19 | 7,593.19 | ZNA | CON |  |
| A74190 |  | Pipe Laying | 10d | 2026-09-05 A | 2026-11-07 | A74180 | 90% | 1d | 2026-12-03 | 2026-12-14 | 51d | 0d | ICKMO1-cost unite [5062.13 $]; boom truck [200 h]; labor [1200 h]; Storm Network Circular pipes (GRP) [80.79]; Physical Units [43617.4 h] | 5,062.13 | 4,555.92 | ZNA | CON | LAY |
| A74200 |  | Install Manhole | 10d | 2026-09-05 A | 2026-11-07 | A74180 | 90% | 1d | 2026-12-03 | 2026-12-14 | 61d | 10d | ICKMO1-cost unite [22779.6 $]; boom truck [200 h]; labor [1200 h]; Physical Units [196278 h] | 22,779.57 | 20,501.61 | ZNA | CON | MH |
| A74210 |  | Testing & Inspection | 10d | 2026-11-08 | 2026-11-18 | A74190 |  |  |  |  | 51d | 0d | ICKMO1-cost unite [5062.13 $]; labor [1200 h]; Physical Units [43617.4 h] | 5,062.13 |  | ZNA | CON |  |
| A74220 |  | Backfilling & Compaction | 10d | 2026-11-19 | 2026-11-30 | A74210, A74200, A74270 |  |  |  |  | 51d | 0d | ICKMO1-cost unite [10124.2 $]; Roller compactor [200 h]; Physical Units [87234.7 h] | 10,124.25 |  | ZNA | CON |  |
|  | MH-32-A-21 /MH-32-A-20 | **MH-32-A-21 /MH-32-A-20** |  | 2026-08-20 | 2026-09-28 |  |  |  |  |  |  |  |  |  |  |  |  |  |
| A74130 |  | Excavation | 10d | 2026-08-20 A | 2026-09-28 A | A74180, A1080 | 100% |  | 2026-12-03 | 2026-12-14 |  |  | ICKMO1-cost unite [7593.19 $]; Excavator [200 h]; Physical Units [65426.1 h] | 7,593.19 | 7,593.19 | ZNA | CON |  |
| A74140 |  | Pipe Laying | 10d | 2026-08-20 A | 2026-09-28 A | A74130 | 100% |  | 2026-12-15 | 2026-12-26 |  |  | ICKMO1-cost unite [5062.13 $]; boom truck [200 h]; labor [1200 h]; Storm Network Circular pipes (GRP) [80.79]; Physical Units [43617.4 h] | 5,062.13 | 5,062.13 | ZNA | CON | LAY |
| A74150 |  | Install Manhole | 10d | 2026-08-20 A | 2026-09-28 A | A74130 | 100% |  | 2026-12-15 | 2026-12-26 |  |  | ICKMO1-cost unite [22779.6 $]; boom truck [200 h]; labor [1200 h]; Physical Units [196278 h] | 22,779.57 | 22,779.57 | ZNA | CON | MH |
| A74160 |  | Testing & Inspection | 10d | 2026-08-20 A | 2026-09-28 A | A74140 | 100% |  | 2026-11-21 | 2026-12-02 |  |  | ICKMO1-cost unite [5062.13 $]; labor [1200 h]; Physical Units [43617.4 h] | 5,062.13 | 5,062.13 | ZNA | CON |  |
| A74170 |  | Backfilling & Compaction | 10d | 2026-08-20 A | 2026-09-28 A | A74160, A74150, A74220 | 100% |  | 2026-12-02 | 2026-12-14 |  |  | ICKMO1-cost unite [10124.2 $]; Roller compactor [200 h]; Physical Units [87234.7 h] | 10,124.25 | 10,124.25 | ZNA | CON |  |
|  | MH-36-A-1 /MH-36 | **MH-36-A-1 /MH-36** |  | 2026-08-20 | 2026-11-17 |  |  |  |  |  |  |  |  |  |  |  |  |  |
| A74580 |  | Excavation | 10d | 2026-08-20 A | 2026-09-28 A | A56600, A1070, A1080, A1090, A1100, A1110, A1080 FF, A10240 SS+15d, A10940, A11120, A11130, A11140, A11150, A11160, A10240 FF+15d | 100% |  | 2026-05-07 | 2026-05-18 |  |  | ICKMO1-cost unite [7593.19 $]; Excavator [200 h]; Physical Units [65426.1 h] | 7,593.19 | 7,593.19 | ZNA | CON |  |
| A74590 |  | Pipe Laying | 10d | 2026-08-20 A | 2026-09-28 A | A74580 | 100% |  | 2026-05-19 | 2026-05-30 |  |  | ICKMO1-cost unite [22779.6 $]; boom truck [200 h]; labor [1200 h]; Storm Network Circular pipes (GRP) [80.79]; Physical Units [196278 h] | 22,779.57 | 22,779.57 | ZNA | CON | LAY |
| A74600 |  | Install Manhole | 10d | 2026-08-20 A | 2026-09-28 A | A74580 | 100% |  | 2026-05-19 | 2026-05-30 |  |  | ICKMO1-cost unite [5062.13 $]; boom truck [200 h]; labor [1200 h]; Physical Units [43617.4 h] | 5,062.13 | 5,062.13 | ZNA | CON | MH |
| A74620 |  | Backfilling & Compaction | 10d | 2026-08-20 A | 2026-09-28 A | A74610, A74600 | 100% |  | 2027-03-23 | 2027-04-03 |  |  | ICKMO1-cost unite [10124.2 $]; Roller compactor [200 h]; Physical Units [87234.7 h] | 10,124.25 | 10,124.25 | ZNA | CON |  |
| A74610 |  | Testing & Inspection | 10d | 2026-11-07 | 2026-11-17 | A74590 |  |  |  |  | 19.42d | 0d | ICKMO1-cost unite [5062.13 $]; labor [1200 h]; Physical Units [43617.4 h] | 5,062.13 |  | ZNA | CON |  |
|  | MH-36-A-10 /MH-36-A-9 | **MH-36-A-10 /MH-36-A-9** |  | 2026-08-20 | 2026-11-17 |  |  |  |  |  |  |  |  |  |  |  |  |  |
| A75030 |  | Excavation | 10d | 2026-08-20 A | 2026-09-28 A | A74980, A1080 | 100% |  | 2026-08-20 | 2026-08-31 |  |  | ICKMO1-cost unite [7593.19 $]; Excavator [200 h]; Physical Units [65426.1 h] | 7,593.19 | 7,593.19 | ZNA | CON |  |
| A75040 |  | Pipe Laying | 10d | 2026-08-20 A | 2026-09-28 A | A75030 | 100% |  | 2026-09-01 | 2026-09-12 |  |  | ICKMO1-cost unite [5062.13 $]; boom truck [200 h]; labor [1200 h]; Storm Network Circular pipes (GRP) [80.79]; Physical Units [43617.4 h] | 5,062.13 | 5,062.13 | ZNA | CON | LAY |
| A75050 |  | Install Manhole | 10d | 2026-08-20 A | 2026-09-28 A | A75030 | 100% |  | 2026-09-01 | 2026-09-12 |  |  | ICKMO1-cost unite [22779.6 $]; boom truck [200 h]; labor [1200 h]; Physical Units [196278 h] | 22,779.57 | 22,779.57 | ZNA | CON | MH |
| A75070 |  | Backfilling & Compaction | 10d | 2026-08-20 A | 2026-09-28 A | A75060, A75050, A75020 | 100% |  | 2027-06-24 | 2027-07-05 |  |  | ICKMO1-cost unite [10124.2 $]; Roller compactor [200 h]; Physical Units [87234.7 h] | 10,124.25 | 10,124.25 | ZNA | CON |  |
| A75060 |  | Testing & Inspection | 10d | 2026-11-07 | 2026-11-17 | A75040 |  |  |  |  | 52d | 0d | ICKMO1-cost unite [5062.13 $]; labor [1200 h]; Physical Units [43617.4 h] | 5,062.13 |  | ZNA | CON |  |

| ID | WBS | Activity | Duration | Start | Finish | Predecessors | Complete | Planned start | Planned finish | Total float | Free float | Resources | Cost | Actual cost | ALKHARJ INDUSTERIAL AREA - PROJECT ZONES | ALKHARJ INDUSTERIAL AREA - DECEPLINS | ALKHARJ INDUSTERIAL AREA - Wet networks |
| --- | --- | --- | --- | --- | --- | --- | --- | --- | --- | --- | --- | --- | --- | --- | --- | --- | --- |
|  | MH-36-A-11 /MH-36-A-10 | **MH-36-A-11 /MH-36-A-10** |  | 2026-08-20 | 2026-11-17 |  |  |  |  |  |  |  |  |  |  |  |  |
| A74530 |  | Excavation | 10d | 2026-08-20 A | 2026-09-28 A | A75030, A1080 | 100% | 2026-09-01 | 2026-09-12 |  |  | ICKMO1-cost unite [7593.19 $]; Excavator [200 h]; Physical Units [65426.1 h] | 7,593.19 | 7,593.19 | ZNA | CON |  |
| A74540 |  | Pipe Laying | 10d | 2026-08-20 A | 2026-09-28 A | A74530 | 100% | 2026-09-13 | 2026-09-23 |  |  | ICKMO1-cost unite [5062.13 $]; boom truck [200 h]; labor [1200 h]; Storm Network Circular pipes (GRP) [80.79]; Physical Units [43617.4 h] | 5,062.13 | 5,062.13 | ZNA | CON | LAY |
| A74550 |  | Install Manhole | 10d | 2026-08-20 A | 2026-09-28 A | A74530 | 100% | 2026-09-13 | 2026-09-23 |  |  | ICKMO1-cost unite [22779.6 $]; boom truck [200 h]; labor [1200 h]; Physical Units [196278 h] | 22,779.57 | 22,779.57 | ZNA | CON | MH |
| A74570 |  | Backfilling & Compaction | 4d | 2026-08-20 A | 2026-09-28 A | A74560, A74550, A75070 | 100% | 2027-07-06 | 2027-07-10 |  |  | ICKMO1-cost unite [10124.2 $]; Roller compactor [200 h]; Physical Units [87234.7 h] | 10,124.25 | 10,124.25 | ZNA | CON |  |
| A74560 |  | Testing & Inspection | 10d | 2026-11-07 | 2026-11-17 | A74540 |  |  |  | 52d | 0d | ICKMO1-cost unite [5062.13 $]; labor [1200 h]; Physical Units [43617.4 h] | 5,062.13 |  | ZNA | CON |  |
|  | MH-36-A-12 /MH-36-A-11 | **MH-36-A-12 /MH-36-A-11** |  | 2026-08-20 | 2026-11-17 |  |  |  |  |  |  |  |  |  |  |  |  |
| A74480 |  | Excavation | 10d | 2026-08-20 A | 2026-09-28 A | A74530, A1080 | 100% | 2026-09-13 | 2026-09-23 |  |  | ICKMO1-cost unite [7593.19 $]; Excavator [200 h]; Physical Units [65426.1 h] | 7,593.19 | 7,593.19 | ZNA | CON |  |
| A74490 |  | Pipe Laying | 10d | 2026-08-20 A | 2026-09-28 A | A74480 | 100% | 2026-09-24 | 2026-10-05 |  |  | ICKMO1-cost unite [5062.13 $]; boom truck [200 h]; labor [1200 h]; Storm Network Circular pipes (GRP) [80.79]; Physical Units [43617.4 h] | 5,062.13 | 5,062.13 | ZNA | CON | LAY |
| A74500 |  | Install Manhole | 10d | 2026-08-20 A | 2026-09-28 A | A74480 | 100% | 2026-09-24 | 2026-10-05 |  |  | ICKMO1-cost unite [22779.6 $]; boom truck [200 h]; labor [1200 h]; Physical Units [196278 h] | 22,779.57 | 22,779.57 | ZNA | CON | MH |
| A74520 |  | Backfilling & Compaction | 10d | 2026-08-20 A | 2026-09-28 A | A74510, A74500, A74570 | 100% | 2027-07-11 | 2027-07-21 |  |  | ICKMO1-cost unite [10124.2 $]; Roller compactor [200 h]; Physical Units [87234.7 h] | 10,124.25 | 10,124.25 | ZNA | CON |  |
| A74510 |  | Testing & Inspection | 10d | 2026-11-07 | 2026-11-17 | A74490 |  |  |  | 52d | 0d | ICKMO1-cost unite [5062.13 $]; labor [1200 h]; Physical Units [43617.4 h] | 5,062.13 |  | ZNA | CON |  |
|  | MH-36-A-2 /MH-36-A-1 | **MH-36-A-2 /MH-36-A-1** |  | 2026-08-20 | 2026-11-17 |  |  |  |  |  |  |  |  |  |  |  |  |
| A74630 |  | Excavation | 10d | 2026-08-20 A | 2026-09-28 A | A74580, A1080 | 100% | 2026-05-19 | 2026-05-30 |  |  | ICKMO1-cost unite [7593.19 $]; Excavator [200 h]; Physical Units [65426.1 h] | 7,593.19 | 7,593.19 | ZNA | CON |  |
| A74640 |  | Pipe Laying | 10d | 2026-08-20 A | 2026-09-28 A | A74630 | 100% | 2026-05-31 | 2026-06-10 |  |  | ICKMO1-cost unite [22779.6 $]; boom truck [200 h]; labor [1200 h]; Storm Network Circular pipes (GRP) [80.79]; Physical Units [196278 h] | 22,779.57 | 22,779.57 | ZNA | CON | LAY |
| A74650 |  | Install Manhole | 10d | 2026-08-20 A | 2026-09-28 A | A74630 | 100% | 2026-05-31 | 2026-06-10 |  |  | ICKMO1-cost unite [5062.13 $]; boom truck [200 h]; labor [1200 h]; Physical Units [43617.4 h] | 5,062.13 | 5,062.13 | ZNA | CON | MH |
| A74670 |  | Backfilling & Compaction | 10d | 2026-08-20 A | 2026-09-28 A | A74660, A74650 | 100% | 2027-03-23 | 2027-04-03 |  |  | ICKMO1-cost unite [10124.2 $]; Roller compactor [200 h]; Physical Units [87234.7 h] | 10,124.25 | 10,124.25 | ZNA | CON |  |
| A74660 |  | Testing & Inspection | 10d | 2026-11-07 | 2026-11-17 | A74640 |  |  |  | 52d | 0d | ICKMO1-cost unite [5062.13 $]; labor [1200 h]; Physical Units [43617.4 h] | 5,062.13 |  | ZNA | CON |  |
|  | MH-36-A-3 /MH-36-A-2 | **MH-36-A-3 /MH-36-A-2** |  | 2026-08-20 | 2026-11-17 |  |  |  |  |  |  |  |  |  |  |  |  |
| A74680 |  | Excavation | 10d | 2026-08-20 A | 2026-09-28 A | A74630, A1080 | 100% | 2026-05-31 | 2026-06-10 |  |  | ICKMO1-cost unite [7593.19 $]; Excavator [200 h]; Physical Units [65426.1 h] | 7,593.19 | 7,593.19 | ZNA | CON |  |
| A74690 |  | Pipe Laying | 10d | 2026-08-20 A | 2026-09-28 A | A74680 | 100% | 2026-06-11 | 2026-06-22 |  |  | ICKMO1-cost unite [22779.6 $]; boom truck [200 h]; labor [1200 h]; Storm Network Circular pipes (GRP) [80.79]; Physical Units [196278 h] | 22,779.57 | 22,779.57 | ZNA | CON | LAY |
| A74700 |  | Install Manhole | 10d | 2026-08-20 A | 2026-09-28 A | A74680 | 100% | 2026-06-11 | 2026-06-22 |  |  | ICKMO1-cost unite [5062.13 $]; boom truck [200 h]; labor [1200 h]; Physical Units [43617.4 h] | 5,062.13 | 5,062.13 | ZNA | CON | MH |
| A74720 |  | Backfilling & Compaction | 10d | 2026-08-20 A | 2026-09-28 A | A74710, A74700, A74670 | 100% | 2027-04-04 | 2027-04-14 |  |  | ICKMO1-cost unite [10124.2 $]; Roller compactor [200 h]; Physical Units [87234.7 h] | 10,124.25 | 10,124.25 | ZNA | CON |  |
| A74710 |  | Testing & Inspection | 10d | 2026-11-07 | 2026-11-17 | A74690 |  |  |  | 52d | 0d | ICKMO1-cost unite [5062.13 $]; labor [1200 h]; Physical Units [43617.4 h] | 5,062.13 |  | ZNA | CON |  |

| ID | WBS | Activity | Duration | Start | Finish | Predecessors | Complete | Planned start | Planned finish | Total float | Free float | Resources | Cost | Actual cost | ALKHARJ INDUSTERIAL AREA - PROJECT ZONES | ALKHARJ INDUSTERIAL AREA - DECEPLINS | ALKHARJ INDUSTERIAL AREA - Wet networks |
| --- | --- | --- | --- | --- | --- | --- | --- | --- | --- | --- | --- | --- | --- | --- | --- | --- | --- |
|  | MH-36-A-4 /MH-36-A-3 | **MH-36-A-4 /MH-36-A-3** |  | 2026-08-20 | 2026-11-17 |  |  |  |  |  |  |  |  |  |  |  |  |
| A74730 |  | Excavation | 10d | 2026-08-20 A | 2026-09-28 A | A74680, A1080 | 100% | 2026-06-11 | 2026-06-22 |  |  | ICKMO1-cost unite [7593.19 $]; Excavator [200 h]; Physical Units [65426.1 h] | 7,593.19 | 7,593.19 | ZNA | CON |  |
| A74740 |  | Pipe Laying | 10d | 2026-08-20 A | 2026-09-28 A | A74730 | 100% | 2026-06-23 | 2026-07-04 |  |  | ICKMO1-cost unite [22779.6 $]; boom truck [200 h]; labor [1200 h]; Storm Network Circular pipes (GRP) [80.79]; Physical Units [196278 h] | 22,779.57 | 22,779.57 | ZNA | CON | LAY |
| A74750 |  | Install Manhole | 10d | 2026-08-20 A | 2026-09-28 A | A74730 | 100% | 2026-06-23 | 2026-07-04 |  |  | ICKMO1-cost unite [5062.13 $]; boom truck [200 h]; labor [1200 h]; Physical Units [43617.4 h] | 5,062.13 | 5,062.13 | ZNA | CON | MH |
| A74770 |  | Backfilling & Compaction | 10d | 2026-08-20 A | 2026-09-28 A | A74760, A74750, A74720 | 100% | 2027-04-15 | 2027-04-26 |  |  | ICKMO1-cost unite [10124.2 $]; Roller compactor [200 h]; Physical Units [87234.7 h] | 10,124.25 | 10,124.25 | ZNA | CON |  |
| A74760 |  | Testing & Inspection | 10d | 2026-11-07 | 2026-11-17 | A74740 |  |  |  | 52d | 0d | ICKMO1-cost unite [5062.13 $]; labor [1200 h]; Physical Units [43617.4 h] | 5,062.13 |  | ZNA | CON |  |
|  | MH-36-A-5 /MH-36-A-4 | **MH-36-A-5 /MH-36-A-4** |  | 2026-08-20 | 2026-11-17 |  |  |  |  |  |  |  |  |  |  |  |  |
| A74780 |  | Excavation | 10d | 2026-08-20 A | 2026-09-28 A | A74730, A1080 | 100% | 2026-06-23 | 2026-07-04 |  |  | ICKMO1-cost unite [7593.19 $]; Excavator [200 h]; Physical Units [65426.1 h] | 7,593.19 | 7,593.19 | ZNA | CON |  |
| A74790 |  | Pipe Laying | 10d | 2026-08-20 A | 2026-09-28 A | A74780 | 100% | 2026-07-05 | 2026-07-15 |  |  | ICKMO1-cost unite [5062.13 $]; boom truck [200 h]; labor [1200 h]; Storm Network Circular pipes (GRP) [80.79]; Physical Units [43617.4 h] | 5,062.13 | 5,062.13 | ZNA | CON | LAY |
| A74800 |  | Install Manhole | 10d | 2026-08-20 A | 2026-09-28 A | A74780 | 100% | 2026-07-05 | 2026-07-15 |  |  | ICKMO1-cost unite [22779.6 $]; boom truck [200 h]; labor [1200 h]; Physical Units [196278 h] | 22,779.57 | 22,779.57 | ZNA | CON | MH |
| A74820 |  | Backfilling & Compaction | 10d | 2026-08-20 A | 2026-09-28 A | A74810, A74800, A74770 | 100% | 2027-04-27 | 2027-05-08 |  |  | ICKMO1-cost unite [10124.2 $]; Roller compactor [200 h]; Physical Units [87234.7 h] | 10,124.25 | 10,124.25 | ZNA | CON |  |
| A74810 |  | Testing & Inspection | 10d | 2026-11-07 | 2026-11-17 | A74790 |  |  |  | 52d | 0d | ICKMO1-cost unite [5062.13 $]; labor [1200 h]; Physical Units [43617.4 h] | 5,062.13 |  | ZNA | CON |  |
|  | MH-36-A-6 /MH-36-A-5 | **MH-36-A-6 /MH-36-A-5** |  | 2026-08-20 | 2026-11-17 |  |  |  |  |  |  |  |  |  |  |  |  |
| A74830 |  | Excavation | 10d | 2026-08-20 A | 2026-09-28 A | A74780, A1080 | 100% | 2026-07-05 | 2026-07-15 |  |  | ICKMO1-cost unite [7593.19 $]; Excavator [200 h]; Physical Units [65426.1 h] | 7,593.19 | 7,593.19 | ZNA | CON |  |
| A74840 |  | Pipe Laying | 10d | 2026-08-20 A | 2026-09-28 A | A74830 | 100% | 2026-07-16 | 2026-07-27 |  |  | ICKMO1-cost unite [5062.13 $]; boom truck [200 h]; labor [1200 h]; Storm Network Circular pipes (GRP) [80.79]; Physical Units [43617.4 h] | 5,062.13 | 5,062.13 | ZNA | CON | LAY |
| A74850 |  | Install Manhole | 10d | 2026-08-20 A | 2026-09-28 A | A74830 | 100% | 2026-07-16 | 2026-07-27 |  |  | ICKMO1-cost unite [22779.6 $]; boom truck [200 h]; labor [1200 h]; Physical Units [196278 h] | 22,779.57 | 22,779.57 | ZNA | CON | MH |
| A74870 |  | Backfilling & Compaction | 10d | 2026-08-20 A | 2026-09-28 A | A74860, A74850, A74820 | 100% | 2027-05-09 | 2027-05-19 |  |  | ICKMO1-cost unite [10124.2 $]; Roller compactor [200 h]; Physical Units [87234.7 h] | 10,124.25 | 10,124.25 | ZNA | CON |  |
| A74860 |  | Testing & Inspection | 10d | 2026-11-07 | 2026-11-17 | A74840 |  |  |  | 52d | 0d | ICKMO1-cost unite [5062.13 $]; labor [1200 h]; Physical Units [43617.4 h] | 5,062.13 |  | ZNA | CON |  |
|  | MH-36-A-7 /MH-36-A-6 | **MH-36-A-7 /MH-36-A-6** |  | 2026-08-20 | 2026-11-17 |  |  |  |  |  |  |  |  |  |  |  |  |
| A74880 |  | Excavation | 10d | 2026-08-20 A | 2026-09-28 A | A74830, A1080 | 100% | 2026-07-16 | 2026-07-27 |  |  | ICKMO1-cost unite [7593.19 $]; Excavator [200 h]; Physical Units [65426.1 h] | 7,593.19 | 7,593.19 | ZNA | CON |  |
| A74890 |  | Pipe Laying | 10d | 2026-08-20 A | 2026-09-28 A | A74880 | 100% | 2026-07-28 | 2026-08-08 |  |  | ICKMO1-cost unite [5062.13 $]; boom truck [200 h]; labor [1200 h]; Storm Network Circular pipes (GRP) [80.79]; Physical Units [43617.4 h] | 5,062.13 | 5,062.13 | ZNA | CON | LAY |
| A74900 |  | Install Manhole | 10d | 2026-08-20 A | 2026-09-28 A | A74880 | 100% | 2026-07-28 | 2026-08-08 |  |  | ICKMO1-cost unite [22779.6 $]; boom truck [200 h]; labor [1200 h]; Physical Units [196278 h] | 22,779.57 | 22,779.57 | ZNA | CON | MH |
| A74920 |  | Backfilling & Compaction | 10d | 2026-08-20 A | 2026-09-28 A | A74910, A74900, A74870 | 100% | 2027-05-20 | 2027-05-31 |  |  | ICKMO1-cost unite [10124.2 $]; Roller compactor [200 h]; Physical Units [87234.7 h] | 10,124.25 | 10,124.25 | ZNA | CON |  |
| A74910 |  | Testing & Inspection | 10d | 2026-11-07 | 2026-11-17 | A74890 |  |  |  | 52d | 0d | ICKMO1-cost unite [5062.13 $]; labor [1200 h]; Physical Units [43617.4 h] | 5,062.13 |  | ZNA | CON |  |

| ID | WBS | Activity | Duration | Start | Finish | Predecessors | Complete | Planned start | Planned finish | Total float | Free float | Resources | Cost | Actual cost | ALKHARJ INDUSTERIAL AREA - PROJECT ZONES | ALKHARJ INDUSTERIAL AREA - DECEPLINS | ALKHARJ INDUSTERIAL AREA - Wet networks |
| --- | --- | --- | --- | --- | --- | --- | --- | --- | --- | --- | --- | --- | --- | --- | --- | --- | --- |
|  | MH-36-A-8 /MH-36-A-7 | **MH-36-A-8 /MH-36-A-7** |  | 2026-08-20 | 2026-11-17 |  |  |  |  |  |  |  |  |  |  |  |  |
| A74930 |  | Excavation | 10d | 2026-08-20 A | 2026-09-28 A | A74880, A1080 | 100% | 2026-07-28 | 2026-08-08 |  |  | ICKMO1-cost unite [7593.19 $]; Excavator [200 h]; Physical Units [65426.1 h] | 7,593.19 | 7,593.19 | ZNA | CON |  |
| A74940 |  | Pipe Laying | 10d | 2026-08-20 A | 2026-09-28 A | A74930 | 100% | 2026-08-09 | 2026-08-19 |  |  | ICKMO1-cost unite [5062.13 $]; boom truck [200 h]; labor [1200 h]; Storm Network Circular pipes (GRP) [80.79]; Physical Units [43617.4 h] | 5,062.13 | 5,062.13 | ZNA | CON | LAY |
| A74950 |  | Install Manhole | 10d | 2026-08-20 A | 2026-09-28 A | A74930 | 100% | 2026-08-09 | 2026-08-19 |  |  | ICKMO1-cost unite [22779.6 $]; boom truck [200 h]; labor [1200 h]; Physical Units [196278 h] | 22,779.57 | 22,779.57 | ZNA | CON | MH |
| A74970 |  | Backfilling & Compaction | 10d | 2026-08-20 A | 2026-09-28 A | A74960, A74950, A74920 | 100% | 2027-06-01 | 2027-06-12 |  |  | ICKMO1-cost unite [10124.2 $]; Roller compactor [200 h]; Physical Units [87234.7 h] | 10,124.25 | 10,124.25 | ZNA | CON |  |
| A74960 |  | Testing & Inspection | 10d | 2026-11-07 | 2026-11-17 | A74940 |  |  |  | 52d | 0d | ICKMO1-cost unite [5062.13 $]; labor [1200 h]; Physical Units [43617.4 h] | 5,062.13 |  | ZNA | CON |  |
|  | MH-36-A-9 /MH-36-A-8 | **MH-36-A-9 /MH-36-A-8** |  | 2026-08-20 | 2026-11-17 |  |  |  |  |  |  |  |  |  |  |  |  |
| A74980 |  | Excavation | 10d | 2026-08-20 A | 2026-09-28 A | A74930, A1080 | 100% | 2026-08-09 | 2026-08-19 |  |  | ICKMO1-cost unite [7593.19 $]; Excavator [200 h]; Physical Units [65426.1 h] | 7,593.19 | 7,593.19 | ZNA | CON |  |
| A74990 |  | Pipe Laying | 10d | 2026-08-20 A | 2026-09-28 A | A74980 | 100% | 2026-08-20 | 2026-08-31 |  |  | ICKMO1-cost unite [5062.13 $]; boom truck [200 h]; labor [1200 h]; Storm Network Circular pipes (GRP) [80.79]; Physical Units [43617.4 h] | 5,062.13 | 5,062.13 | ZNA | CON | LAY |
| A75000 |  | Install Manhole | 10d | 2026-08-20 A | 2026-09-28 A | A74980 | 100% | 2026-08-20 | 2026-08-31 |  |  | ICKMO1-cost unite [22779.6 $]; boom truck [200 h]; labor [1200 h]; Physical Units [196278 h] | 22,779.57 | 22,779.57 | ZNA | CON | MH |
| A75020 |  | Backfilling & Compaction | 10d | 2026-08-20 A | 2026-09-28 A | A75010, A75000, A74970 | 100% | 2027-06-13 | 2027-06-23 |  |  | ICKMO1-cost unite [10124.2 $]; Roller compactor [200 h]; Physical Units [87234.7 h] | 10,124.25 | 10,124.25 | ZNA | CON |  |
| A75010 |  | Testing & Inspection | 10d | 2026-11-07 | 2026-11-17 | A74990 |  |  |  | 52d | 0d | ICKMO1-cost unite [5062.13 $]; labor [1200 h]; Physical Units [43617.4 h] | 5,062.13 |  | ZNA | CON |  |
|  | LR 02 | **LR 02** |  | 2026-08-20 | 2027-01-02 |  |  |  |  |  |  |  |  |  |  |  |  |
|  | MH-32-01 /MH-32A | **MH-32-01 /MH-32A** |  | 2026-08-20 | 2026-10-21 |  |  |  |  |  |  |  |  |  |  |  |  |
| A74080 |  | Excavation | 10d | 2026-08-20 A | 2026-09-28 A | A59200, A59210, A1080 | 100% | 2026-03-10 | 2026-03-21 |  |  | ICKMO1-cost unite [6811.85 $]; Excavator [200 h]; Physical Units [58693.7 h] | 6,811.85 | 6,811.85 | ZNA | CON |  |
| A74090 |  | Pipe Laying | 4d | 2026-08-20 A | 2026-09-28 A | A74080 | 100% | 2026-03-22 | 2026-03-25 |  |  | ICKMO1-cost unite [4541.24 $]; boom truck [200 h]; labor [1200 h]; Storm Network Circular pipes (GRP) [80.79]; Physical Units [39129.2 h] | 4,541.24 | 4,541.24 | ZNA | CON | LAY |
| A74100 |  | Install Manhole | 4d | 2026-08-20 A | 2026-09-28 A | A74080 | 100% | 2026-03-22 | 2026-03-25 |  |  | ICKMO1-cost unite [20435.6 $]; boom truck [200 h]; labor [1200 h]; Physical Units [176081 h] | 20,435.57 | 20,435.57 | ZNA | CON | MH |
| A74120 |  | Backfilling & Compaction | 4d | 2026-08-20 A | 2026-09-28 A | A74110, A74100 | 100% | 2026-12-15 | 2026-12-20 |  |  | ICKMO1-cost unite [9082.48 $]; Roller compactor [200 h]; Physical Units [78258.4 h] | 9,082.48 | 9,082.48 | ZNA | CON |  |
| A74110 |  | Testing & Inspection | 10d | 2026-10-10 | 2026-10-21 | A74090 |  |  |  | 41.16d | 0d | ICKMO1-cost unite [4541.24 $]; labor [1200 h]; Physical Units [39129.2 h] | 4,541.24 |  | ZNA | CON |  |
|  | MH-32-A-04 /MH-32A-03 | **MH-32-A-04 /MH-32A-03** |  | 2026-08-20 | 2026-12-14 |  |  |  |  |  |  |  |  |  |  |  |  |
| A73930 |  | Excavation | 4d | 2026-08-20 A | 2026-09-28 A | A73980, A1080 | 100% | 2026-10-03 | 2026-10-06 |  |  | ICKMO1-cost unite [6811.85 $]; Excavator [200 h]; Physical Units [58693.7 h] | 6,811.85 | 6,811.85 | ZNA | CON |  |
| A73940 |  | Pipe Laying | 4d | 2026-08-20 A | 2026-09-28 A | A73930 | 100% | 2026-10-07 | 2026-10-11 |  |  | ICKMO1-cost unite [4541.24 $]; boom truck [200 h]; labor [1200 h]; Storm Network Circular pipes (GRP) [80.79]; Physical Units [39129.2 h] | 4,541.24 | 4,541.24 | ZNA | CON | LAY |
| A73950 |  | Install Manhole | 4d | 2026-08-20 A | 2026-09-28 A | A73930 | 100% | 2026-10-07 | 2026-10-11 |  |  | ICKMO1-cost unite [20435.6 $]; boom truck [200 h]; labor [1200 h]; Physical Units [176081 h] | 20,435.57 | 20,435.57 | ZNA | CON | MH |
| A73970 |  | Backfilling & Compaction | 4d | 2026-08-20 A | 2026-09-28 A | A73960, A73950, A74020 | 100% | 2027-06-01 | 2027-06-06 |  |  | ICKMO1-cost unite [9082.48 $]; Roller compactor [200 h]; Physical Units [78258.4 h] | 9,082.48 | 9,082.48 | ZNA | CON |  |
| A73960 |  | Testing & Inspection | 4d | 2026-12-09 | 2026-12-14 | A73940 |  |  |  | 36.28d | 0d | ICKMO1-cost unite [4541.24 $]; labor [1200 h]; Physical Units [39129.2 h] | 4,541.24 |  | ZNA | CON |  |

| ID | WBS | Activity | Duration | Start | Finish | Predecessors | Complete | Planned start | Planned finish | Total float | Free float | Resources | Cost | Actual cost | ALKHARJ INDUSTERIAL AREA - PROJECT ZONES | ALKHARJ INDUSTERIAL AREA - DECEPLINS | ALKHARJ INDUSTERIAL AREA - Wet networks |
| --- | --- | --- | --- | --- | --- | --- | --- | --- | --- | --- | --- | --- | --- | --- | --- | --- | --- |
|  | MH-32-A-05 /MH-32A-04 | **MH-32-A-05 /MH-32A-04** |  | 2026-08-20 | 2026-12-14 |  |  |  |  |  |  |  |  |  |  |  |  |
| A73880 |  | Excavation | 4d | 2026-08-20 A | 2026-09-28 A | A73930, A1080 | 100% | 2026-10-07 | 2026-10-11 |  |  | ICKMO1-cost unite [6811.85 $]; Excavator [200 h]; Physical Units [58693.7 h] | 6,811.85 | 6,811.85 | ZNA | CON |  |
| A73890 |  | Pipe Laying | 4d | 2026-08-20 A | 2026-09-28 A | A73880 | 100% | 2026-10-12 | 2026-10-15 |  |  | ICKMO1-cost unite [4541.24 $]; boom truck [200 h]; labor [1200 h]; Storm Network Circular pipes (GRP) [80.79]; Physical Units [39129.2 h] | 4,541.24 | 4,541.24 | ZNA | CON | LAY |
| A73900 |  | Install Manhole | 4d | 2026-08-20 A | 2026-09-28 A | A73880 | 100% | 2026-10-12 | 2026-10-15 |  |  | ICKMO1-cost unite [20435.6 $]; boom truck [200 h]; labor [1200 h]; Physical Units [176081 h] | 20,435.57 | 20,435.57 | ZNA | CON | MH |
| A73920 |  | Backfilling & Compaction | 4d | 2026-08-20 A | 2026-09-28 A | A73910, A73900, A73970 | 100% | 2027-06-06 | 2027-06-10 |  |  | ICKMO1-cost unite [9082.48 $]; Roller compactor [200 h]; Physical Units [78258.4 h] | 9,082.48 | 9,082.48 | ZNA | CON |  |
| A73910 |  | Testing & Inspection | 4d | 2026-12-09 | 2026-12-14 | A73890 |  |  |  | 36.28d | 0d | ICKMO1-cost unite [4541.24 $]; labor [1200 h]; Physical Units [39129.2 h] | 4,541.24 |  | ZNA | CON |  |
|  | MH-32-A-06 /MH-32A-05 | **MH-32-A-06 /MH-32A-05** |  | 2026-08-20 | 2026-12-14 |  |  |  |  |  |  |  |  |  |  |  |  |
| A73830 |  | Excavation | 4d | 2026-08-20 A | 2026-09-28 A | A73880, A1080 | 100% | 2026-10-12 | 2026-10-15 |  |  | ICKMO1-cost unite [6811.85 $]; Excavator [200 h]; Physical Units [58693.7 h] | 6,811.85 | 6,811.85 | ZNA | CON |  |
| A73840 |  | Pipe Laying | 4d | 2026-08-20 A | 2026-09-28 A | A73830 | 100% | 2026-10-17 | 2026-10-20 |  |  | ICKMO1-cost unite [4541.24 $]; boom truck [200 h]; labor [1200 h]; Storm Network Circular pipes (GRP) [80.79]; Physical Units [39129.2 h] | 4,541.24 | 4,541.24 | ZNA | CON | LAY |
| A73850 |  | Install Manhole | 4d | 2026-08-20 A | 2026-09-28 A | A73830 | 100% | 2026-10-17 | 2026-10-20 |  |  | ICKMO1-cost unite [20435.6 $]; boom truck [200 h]; labor [1200 h]; Physical Units [176081 h] | 20,435.57 | 20,435.57 | ZNA | CON | MH |
| A73870 |  | Backfilling & Compaction | 4d | 2026-08-20 A | 2026-09-28 A | A73860, A73850, A73920 | 100% | 2027-06-10 | 2027-06-15 |  |  | ICKMO1-cost unite [9082.48 $]; Roller compactor [200 h]; Physical Units [78258.4 h] | 9,082.48 | 9,082.48 | ZNA | CON |  |
| A73860 |  | Testing & Inspection | 4d | 2026-12-09 | 2026-12-14 | A73840 |  |  |  | 36.28d | 0d | ICKMO1-cost unite [4541.24 $]; labor [1200 h]; Physical Units [39129.2 h] | 4,541.24 |  | ZNA | CON |  |
|  | MH-32-A-07 /MH-32A-06 | **MH-32-A-07 /MH-32A-06** |  | 2026-08-20 | 2026-12-14 |  |  |  |  |  |  |  |  |  |  |  |  |
| A73780 |  | Excavation | 4d | 2026-08-20 A | 2026-09-28 A | A73830, A1080 | 100% | 2026-10-17 | 2026-10-20 |  |  | ICKMO1-cost unite [6811.85 $]; Excavator [200 h]; Physical Units [58693.7 h] | 6,811.85 | 6,811.85 | ZNA | CON |  |
| A73790 |  | Pipe Laying | 4d | 2026-08-20 A | 2026-09-28 A | A73780 | 100% | 2026-10-21 | 2026-10-25 |  |  | ICKMO1-cost unite [4541.24 $]; boom truck [200 h]; labor [1200 h]; Storm Network Circular pipes (GRP) [80.79]; Physical Units [39129.2 h] | 4,541.24 | 4,541.24 | ZNA | CON | LAY |
| A73800 |  | Install Manhole | 4d | 2026-08-20 A | 2026-09-28 A | A73780 | 100% | 2026-10-21 | 2026-10-25 |  |  | ICKMO1-cost unite [20435.6 $]; boom truck [200 h]; labor [1200 h]; Physical Units [176081 h] | 20,435.57 | 20,435.57 | ZNA | CON | MH |
| A73820 |  | Backfilling & Compaction | 4d | 2026-08-20 A | 2026-09-28 A | A73810, A73800, A73870 | 100% | 2027-06-15 | 2027-06-20 |  |  | ICKMO1-cost unite [9082.48 $]; Roller compactor [200 h]; Physical Units [78258.4 h] | 9,082.48 | 9,082.48 | ZNA | CON |  |
| A73810 |  | Testing & Inspection | 4d | 2026-12-09 | 2026-12-14 | A73790 |  |  |  | 36.28d | 0d | ICKMO1-cost unite [4541.24 $]; labor [1200 h]; Physical Units [39129.2 h] | 4,541.24 |  | ZNA | CON |  |
|  | MH-32-A-08 /MH-32A-07 | **MH-32-A-08 /MH-32A-07** |  | 2026-08-20 | 2026-12-14 |  |  |  |  |  |  |  |  |  |  |  |  |
| A73730 |  | Excavation | 4d | 2026-08-20 A | 2026-09-28 A | A73780, A1080 | 100% | 2026-10-21 | 2026-10-25 |  |  | ICKMO1-cost unite [6811.85 $]; Excavator [200 h]; Physical Units [58693.7 h] | 6,811.85 | 6,811.85 | ZNA | CON |  |
| A73740 |  | Pipe Laying | 4d | 2026-08-20 A | 2026-09-28 A | A73730 | 100% | 2026-10-26 | 2026-10-29 |  |  | ICKMO1-cost unite [4541.24 $]; boom truck [200 h]; labor [1200 h]; Storm Network Circular pipes (GRP) [80.79]; Physical Units [39129.2 h] | 4,541.24 | 4,541.24 | ZNA | CON | LAY |
| A73750 |  | Install Manhole | 4d | 2026-08-20 A | 2026-09-28 A | A73730 | 100% | 2026-10-26 | 2026-10-29 |  |  | ICKMO1-cost unite [20435.6 $]; boom truck [200 h]; labor [1200 h]; Physical Units [176081 h] | 20,435.57 | 20,435.57 | ZNA | CON | MH |
| A73770 |  | Backfilling & Compaction | 4d | 2026-08-20 A | 2026-09-28 A | A73760, A73750, A73820 | 100% | 2027-06-20 | 2027-06-24 |  |  | ICKMO1-cost unite [9082.48 $]; Roller compactor [200 h]; Physical Units [78258.4 h] | 9,082.48 | 9,082.48 | ZNA | CON |  |
| A73760 |  | Testing & Inspection | 4d | 2026-12-09 | 2026-12-14 | A73740 |  |  |  | 36.28d | 0d | ICKMO1-cost unite [4541.24 $]; labor [1200 h]; Physical Units [39129.2 h] | 4,541.24 |  | ZNA | CON |  |

| ID | WBS | Activity | Duration | Start | Finish | Predecessors | Complete | Planned start | Planned finish | Total float | Free float | Resources | Cost | Actual cost | ALKHARJ INDUSTERIAL AREA - PROJECT ZONES | ALKHARJ INDUSTERIAL AREA - DECEPLINS | ALKHARJ INDUSTERIAL AREA - Wet networks |
| --- | --- | --- | --- | --- | --- | --- | --- | --- | --- | --- | --- | --- | --- | --- | --- | --- | --- |
|  | MH-32-A-09 /MH-32A-08 | **MH-32-A-09 /MH-32A-08** |  | 2026-08-20 | 2026-12-14 |  |  |  |  |  |  |  |  |  |  |  |  |
| A73680 |  | Excavation | 4d | 2026-08-20 A | 2026-09-28 A | A73730, A1080 | 100% | 2026-10-26 | 2026-10-29 |  |  | ICKMO1-cost unite [6811.85 $]; Excavator [200 h]; Physical Units [58693.7 h] | 6,811.85 | 6,811.85 | ZNA | CON |  |
| A73690 |  | Pipe Laying | 4d | 2026-08-20 A | 2026-09-28 A | A73680 | 100% | 2026-10-31 | 2026-11-03 |  |  | ICKMO1-cost unite [4541.24 $]; boom truck [200 h]; labor [1200 h]; Storm Network Circular pipes (GRP) [80.79]; Physical Units [39129.2 h] | 4,541.24 | 4,541.24 | ZNA | CON | LAY |
| A73700 |  | Install Manhole | 4d | 2026-08-20 A | 2026-09-28 A | A73680 | 100% | 2026-10-31 | 2026-11-03 |  |  | ICKMO1-cost unite [20435.6 $]; boom truck [200 h]; labor [1200 h]; Physical Units [176081 h] | 20,435.57 | 20,435.57 | ZNA | CON | MH |
| A73720 |  | Backfilling & Compaction | 4d | 2026-08-20 A | 2026-09-28 A | A73710, A73700, A73770 | 100% | 2027-06-24 | 2027-06-29 |  |  | ICKMO1-cost unite [9082.48 $]; Roller compactor [200 h]; Physical Units [78258.4 h] | 9,082.48 | 9,082.48 | ZNA | CON |  |
| A73710 |  | Testing & Inspection | 4d | 2026-12-09 | 2026-12-14 | A73690 |  |  |  | 36.28d | 0d | ICKMO1-cost unite [4541.24 $]; labor [1200 h]; Physical Units [39129.2 h] | 4,541.24 |  | ZNA | CON |  |
|  | MH-32-A-10 /MH-32A-09 | **MH-32-A-10 /MH-32A-09** |  | 2026-08-20 | 2026-12-14 |  |  |  |  |  |  |  |  |  |  |  |  |
| A73630 |  | Excavation | 4d | 2026-08-20 A | 2026-09-28 A | A73680, A1080 | 100% | 2026-10-31 | 2026-11-03 |  |  | ICKMO1-cost unite [6811.85 $]; Excavator [200 h]; Physical Units [58693.7 h] | 6,811.85 | 6,811.85 | ZNA | CON |  |
| A73640 |  | Pipe Laying | 4d | 2026-08-20 A | 2026-09-28 A | A73630 | 100% | 2026-11-04 | 2026-11-08 |  |  | ICKMO1-cost unite [4541.24 $]; boom truck [200 h]; labor [1200 h]; Storm Network Circular pipes (GRP) [80.79]; Physical Units [39129.2 h] | 4,541.24 | 4,541.24 | ZNA | CON | LAY |
| A73650 |  | Install Manhole | 4d | 2026-08-20 A | 2026-09-28 A | A73630 | 100% | 2026-11-04 | 2026-11-08 |  |  | ICKMO1-cost unite [20435.6 $]; boom truck [200 h]; labor [1200 h]; Physical Units [176081 h] | 20,435.57 | 20,435.57 | ZNA | CON | MH |
| A73670 |  | Backfilling & Compaction | 4d | 2026-08-20 A | 2026-09-28 A | A73660, A73650, A73720 | 100% | 2027-06-29 | 2027-07-04 |  |  | ICKMO1-cost unite [9082.48 $]; Roller compactor [200 h]; Physical Units [78258.4 h] | 9,082.48 | 9,082.48 | ZNA | CON |  |
| A73660 |  | Testing & Inspection | 4d | 2026-12-09 | 2026-12-14 | A73640 |  |  |  | 36.28d | 0d | ICKMO1-cost unite [4541.24 $]; labor [1200 h]; Physical Units [39129.2 h] | 4,541.24 |  | ZNA | CON |  |
|  | MH-32-A-11 /MH-32A-10 | **MH-32-A-11 /MH-32A-10** |  | 2026-12-09 | 2026-12-28 |  |  |  |  |  |  |  |  |  |  |  |  |
| A73580 |  | Excavation | 4d | 2026-12-09 | 2026-12-14 | A73630, A1080 |  |  |  | 28.28d | 0d | ICKMO1-cost unite [6811.85 $]; Excavator [200 h]; Physical Units [58693.7 h] | 6,811.85 |  | ZNA | CON |  |
| A73590 |  | Pipe Laying | 4d | 2026-12-14 | 2026-12-19 | A73580 |  |  |  | 28.28d | 0d | ICKMO1-cost unite [4541.24 $]; boom truck [200 h]; labor [1200 h]; Storm Network Circular pipes (GRP) [80.79]; Physical Units [39129.2 h] | 4,541.24 |  | ZNA | CON | LAY |
| A73600 |  | Install Manhole | 4d | 2026-12-14 | 2026-12-19 | A73580 |  |  |  | 32.28d | 4d | ICKMO1-cost unite [20435.6 $]; boom truck [200 h]; labor [1200 h]; Physical Units [176081 h] | 20,435.57 |  | ZNA | CON | MH |
| A73610 |  | Testing & Inspection | 4d | 2026-12-19 | 2026-12-23 | A73590 |  |  |  | 28.28d | 0d | ICKMO1-cost unite [4541.24 $]; labor [1200 h]; Physical Units [39129.2 h] | 4,541.24 |  | ZNA | CON |  |
| A73620 |  | Backfilling & Compaction | 4d | 2026-12-23 | 2026-12-28 | A73610, A73600, A73670 |  |  |  | 28.28d | 0d | ICKMO1-cost unite [9082.48 $]; Roller compactor [200 h]; Physical Units [78258.4 h] | 9,082.48 |  | ZNA | CON |  |
|  | MH-32-A-12 /MH-32-A-11 | **MH-32-A-12 /MH-32-A-11** |  | 2026-08-20 | 2026-12-19 |  |  |  |  |  |  |  |  |  |  |  |  |
| A73530 |  | Excavation | 4d | 2026-08-20 A | 2026-09-28 A | A73580, A1080 | 100% | 2026-11-09 | 2026-11-12 |  |  | ICKMO1-cost unite [6811.85 $]; Excavator [200 h]; Physical Units [58693.7 h] | 6,811.85 | 6,811.85 | ZNA | CON |  |
| A73540 |  | Pipe Laying | 4d | 2026-08-20 A | 2026-09-28 A | A73530 | 100% | 2026-11-14 | 2026-11-17 |  |  | ICKMO1-cost unite [4541.24 $]; boom truck [200 h]; labor [1200 h]; Storm Network Circular pipes (GRP) [80.79]; Physical Units [39129.2 h] | 4,541.24 | 4,541.24 | ZNA | CON | LAY |
| A73550 |  | Install Manhole | 4d | 2026-08-20 A | 2026-09-28 A | A73530 | 100% | 2026-11-14 | 2026-11-17 |  |  | ICKMO1-cost unite [20435.6 $]; boom truck [200 h]; labor [1200 h]; Physical Units [176081 h] | 20,435.57 | 20,435.57 | ZNA | CON | MH |
| A73570 |  | Backfilling & Compaction | 4d | 2026-08-20 A | 2026-09-28 A | A73560, A73550, A73620 | 100% | 2027-07-08 | 2027-07-13 |  |  | ICKMO1-cost unite [9082.48 $]; Roller compactor [200 h]; Physical Units [78258.4 h] | 9,082.48 | 9,082.48 | ZNA | CON |  |
| A73560 |  | Testing & Inspection | 4d | 2026-12-14 | 2026-12-19 | A73540 |  |  |  | 36.28d | 8d | ICKMO1-cost unite [4541.24 $]; labor [1200 h]; Physical Units [39129.2 h] | 4,541.24 |  | ZNA | CON |  |

| ID | WBS | Activity | Duration | Start | Finish | Predecessors | Complete | Planned start | Planned finish | Total float | Free float | Resources | Cost | Actual cost | ALKHARJ INDUSTERIAL AREA - PROJECT ZONES | ALKHARJ INDUSTERIAL AREA - DECEPLINS | ALKHARJ INDUSTERIAL AREA - Wet networks |
| --- | --- | --- | --- | --- | --- | --- | --- | --- | --- | --- | --- | --- | --- | --- | --- | --- | --- |
|  | MH-32-A-12-1 /MH-32-A-12 | **MH-32-A-12-1 /MH-32-A-12** |  | 2026-08-20 | 2026-12-19 |  |  |  |  |  |  |  |  |  |  |  |  |
| A73480 |  | Excavation | 4d | 2026-08-20 A | 2026-09-28 A | A73530, A1080 | 100% | 2026-11-14 | 2026-11-17 |  |  | ICKMO1-cost unite [6811.85 $]; Excavator [200 h]; Physical Units [58693.7 h] | 6,811.85 | 6,811.85 | ZNA | CON |  |
| A73490 |  | Pipe Laying | 4d | 2026-08-20 A | 2026-09-28 A | A73480 | 100% | 2026-11-18 | 2026-11-22 |  |  | ICKMO1-cost unite [4541.24 $]; boom truck [200 h]; labor [1200 h]; Storm Network Circular pipes (GRP) [80.79]; Physical Units [39129.2 h] | 4,541.24 | 4,541.24 | ZNA | CON | LAY |
| A73500 |  | Install Manhole | 4d | 2026-08-20 A | 2026-09-28 A | A73480 | 100% | 2026-11-18 | 2026-11-22 |  |  | ICKMO1-cost unite [20435.6 $]; boom truck [200 h]; labor [1200 h]; Physical Units [176081 h] | 20,435.57 | 20,435.57 | ZNA | CON | MH |
| A73520 |  | Backfilling & Compaction | 4d | 2026-08-20 A | 2026-09-28 A | A73510, A73500, A73570 | 100% | 2027-07-13 | 2027-07-18 |  |  | ICKMO1-cost unite [9082.48 $]; Roller compactor [200 h]; Physical Units [78258.4 h] | 9,082.48 | 9,082.48 | ZNA | CON |  |
| A73510 |  | Testing & Inspection | 4d | 2026-12-14 | 2026-12-19 | A73490 |  |  |  | 36.28d | 8d | ICKMO1-cost unite [4541.24 $]; labor [1200 h]; Physical Units [39129.2 h] | 4,541.24 |  | ZNA | CON |  |
|  | MH-32-A-12-2 /MH-32-A-12-1 | **MH-32-A-12-2 /MH-32-A-12-1** |  | 2026-08-20 | 2026-12-19 |  |  |  |  |  |  |  |  |  |  |  |  |
| A73430 |  | Excavation | 4d | 2026-08-20 A | 2026-09-28 A | A73480, A1080 | 100% | 2026-11-18 | 2026-11-22 |  |  | ICKMO1-cost unite [6811.85 $]; Excavator [200 h]; Physical Units [58693.7 h] | 6,811.85 | 6,811.85 | ZNA | CON |  |
| A73440 |  | Pipe Laying | 4d | 2026-08-20 A | 2026-09-28 A | A73430 | 100% | 2026-11-23 | 2026-11-26 |  |  | ICKMO1-cost unite [4541.24 $]; boom truck [200 h]; labor [1200 h]; Storm Network Circular pipes (GRP) [80.79]; Physical Units [39129.2 h] | 4,541.24 | 4,541.24 | ZNA | CON | LAY |
| A73450 |  | Install Manhole | 4d | 2026-08-20 A | 2026-09-28 A | A73430 | 100% | 2026-11-23 | 2026-11-26 |  |  | ICKMO1-cost unite [20435.6 $]; boom truck [200 h]; labor [1200 h]; Physical Units [176081 h] | 20,435.57 | 20,435.57 | ZNA | CON | MH |
| A73470 |  | Backfilling & Compaction | 4d | 2026-08-20 A | 2026-09-28 A | A73460, A73450, A73520 | 100% | 2027-07-18 | 2027-07-22 |  |  | ICKMO1-cost unite [9082.48 $]; Roller compactor [200 h]; Physical Units [78258.4 h] | 9,082.48 | 9,082.48 | ZNA | CON |  |
| A73460 |  | Testing & Inspection | 4d | 2026-12-14 | 2026-12-19 | A73440 |  |  |  | 36.28d | 8d | ICKMO1-cost unite [4541.24 $]; labor [1200 h]; Physical Units [39129.2 h] | 4,541.24 |  | ZNA | CON |  |
|  | MH-32-A-12-3 /MH-32-A-12-2 | **MH-32-A-12-3 /MH-32-A-12-2** |  | 2026-08-20 | 2026-12-19 |  |  |  |  |  |  |  |  |  |  |  |  |
| A73380 |  | Excavation | 4d | 2026-08-20 A | 2026-09-28 A | A73430, A1080 | 100% | 2026-11-23 | 2026-11-26 |  |  | ICKMO1-cost unite [6811.85 $]; Excavator [200 h]; Physical Units [58693.7 h] | 6,811.85 | 6,811.85 | ZNA | CON |  |
| A73390 |  | Pipe Laying | 4d | 2026-08-20 A | 2026-09-28 A | A73380 | 100% | 2026-11-28 | 2026-12-01 |  |  | ICKMO1-cost unite [4541.24 $]; boom truck [200 h]; labor [1200 h]; Storm Network Circular pipes (GRP) [80.79]; Physical Units [39129.2 h] | 4,541.24 | 4,541.24 | ZNA | CON | LAY |
| A73400 |  | Install Manhole | 4d | 2026-08-20 A | 2026-09-28 A | A73380 | 100% | 2026-11-28 | 2026-12-01 |  |  | ICKMO1-cost unite [20435.6 $]; boom truck [200 h]; labor [1200 h]; Physical Units [176081 h] | 20,435.57 | 20,435.57 | ZNA | CON | MH |
| A73420 |  | Backfilling & Compaction | 4d | 2026-08-20 A | 2026-09-28 A | A73410, A73400, A73470 | 100% | 2027-07-22 | 2027-07-27 |  |  | ICKMO1-cost unite [9082.48 $]; Roller compactor [200 h]; Physical Units [78258.4 h] | 9,082.48 | 9,082.48 | ZNA | CON |  |
| A73410 |  | Testing & Inspection | 4d | 2026-12-14 | 2026-12-19 | A73390 |  |  |  | 36.28d | 8d | ICKMO1-cost unite [4541.24 $]; labor [1200 h]; Physical Units [39129.2 h] | 4,541.24 |  | ZNA | CON |  |
|  | MH-32-A-12-4 /MH-32-A-12-3 | **MH-32-A-12-4 /MH-32-A-12-3** |  | 2026-08-20 | 2026-12-19 |  |  |  |  |  |  |  |  |  |  |  |  |
| A73330 |  | Excavation | 4d | 2026-08-20 A | 2026-09-28 A | A73380, A1080 | 100% | 2026-11-28 | 2026-12-01 |  |  | ICKMO1-cost unite [6811.85 $]; Excavator [200 h]; Physical Units [58693.7 h] | 6,811.85 | 6,811.85 | ZNA | CON |  |
| A73340 |  | Pipe Laying | 4d | 2026-08-20 A | 2026-09-28 A | A73330 | 100% | 2026-12-02 | 2026-12-06 |  |  | ICKMO1-cost unite [4541.24 $]; boom truck [200 h]; labor [1200 h]; Storm Network Circular pipes (GRP) [80.79]; Physical Units [39129.2 h] | 4,541.24 | 4,541.24 | ZNA | CON | LAY |
| A73350 |  | Install Manhole | 4d | 2026-08-20 A | 2026-09-28 A | A73330 | 100% | 2026-12-02 | 2026-12-06 |  |  | ICKMO1-cost unite [20435.6 $]; boom truck [200 h]; labor [1200 h]; Physical Units [176081 h] | 20,435.57 | 20,435.57 | ZNA | CON | MH |
| A73370 |  | Backfilling & Compaction | 4d | 2026-08-20 A | 2026-09-28 A | A73360, A73350, A73420 | 100% | 2027-07-27 | 2027-08-01 |  |  | ICKMO1-cost unite [9082.48 $]; Roller compactor [200 h]; Physical Units [78258.4 h] | 9,082.48 | 9,082.48 | ZNA | CON |  |
| A73360 |  | Testing & Inspection | 4d | 2026-12-14 | 2026-12-19 | A73340 |  |  |  | 36.28d | 8d | ICKMO1-cost unite [4541.24 $]; labor [1200 h]; Physical Units [39129.2 h] | 4,541.24 |  | ZNA | CON |  |

| ID | WBS | Activity | Duration | Start | Finish | Predecessors | Complete | Planned start | Planned finish | Total float | Free float | Resources | Cost | Actual cost | ALKHARJ INDUSTERIAL AREA - PROJECT ZONES | ALKHARJ INDUSTERIAL AREA - DECEPLINS | ALKHARJ INDUSTERIAL AREA - Wet networks |
| --- | --- | --- | --- | --- | --- | --- | --- | --- | --- | --- | --- | --- | --- | --- | --- | --- | --- |
|  | MH-32-A-12-5 /MH-32-A-12-6 | **MH-32-A-12-5 /MH-32-A-12-6** |  | 2026-08-20 | 2026-12-19 |  |  |  |  |  |  |  |  |  |  |  |  |
| A73280 |  | Excavation | 4d | 2026-08-20 A | 2026-09-28 A | A73330, A1080 | 100% | 2026-12-02 | 2026-12-06 |  |  | ICKMO1-cost unite [6811.85 $]; Excavator [200 h]; Physical Units [58693.7 h] | 6,811.85 | 6,811.85 | ZNA | CON |  |
| A73290 |  | Pipe Laying | 4d | 2026-08-20 A | 2026-09-28 A | A73280 | 100% | 2026-12-07 | 2026-12-10 |  |  | ICKMO1-cost unite [4541.24 $]; boom truck [200 h]; labor [1200 h]; Storm Network Circular pipes (GRP) [80.79]; Physical Units [39129.2 h] | 4,541.24 | 4,541.24 | ZNA | CON | LAY |
| A73300 |  | Install Manhole | 4d | 2026-08-20 A | 2026-09-28 A | A73280 | 100% | 2026-12-07 | 2026-12-10 |  |  | ICKMO1-cost unite [20435.6 $]; boom truck [200 h]; labor [1200 h]; Physical Units [176081 h] | 20,435.57 | 20,435.57 | ZNA | CON | MH |
| A73320 |  | Backfilling & Compaction | 4d | 2026-08-20 A | 2026-09-28 A | A73310, A73300, A73370 | 100% | 2027-08-01 | 2027-08-05 |  |  | ICKMO1-cost unite [9082.48 $]; Roller compactor [200 h]; Physical Units [78258.4 h] | 9,082.48 | 9,082.48 | ZNA | CON |  |
| A73310 |  | Testing & Inspection | 4d | 2026-12-14 | 2026-12-19 | A73290 |  |  |  | 36.28d | 8d | ICKMO1-cost unite [4541.24 $]; labor [1200 h]; Physical Units [39129.2 h] | 4,541.24 |  | ZNA | CON |  |
|  | MH-32-A-12-6 /MH-32-A-12-5 | **MH-32-A-12-6 /MH-32-A-12-5** |  | 2026-08-20 | 2026-12-19 |  |  |  |  |  |  |  |  |  |  |  |  |
| A73230 |  | Excavation | 4d | 2026-08-20 A | 2026-09-28 A | A73280, A1080 | 100% | 2026-12-07 | 2026-12-10 |  |  | ICKMO1-cost unite [6811.85 $]; Excavator [200 h]; Physical Units [58693.7 h] | 6,811.85 | 6,811.85 | ZNA | CON |  |
| A73240 |  | Pipe Laying | 4d | 2026-08-20 A | 2026-09-28 A | A73230 | 100% | 2026-12-12 | 2026-12-15 |  |  | ICKMO1-cost unite [4541.24 $]; boom truck [200 h]; labor [1200 h]; Storm Network Circular pipes (GRP) [80.79]; Physical Units [39129.2 h] | 4,541.24 | 4,541.24 | ZNA | CON | LAY |
| A73250 |  | Install Manhole | 4d | 2026-08-20 A | 2026-09-28 A | A73230 | 100% | 2026-12-12 | 2026-12-15 |  |  | ICKMO1-cost unite [20435.6 $]; boom truck [200 h]; labor [1200 h]; Physical Units [176081 h] | 20,435.57 | 20,435.57 | ZNA | CON | MH |
| A73270 |  | Backfilling & Compaction | 4d | 2026-08-20 A | 2026-09-28 A | A73260, A73250, A73320 | 100% | 2027-08-05 | 2027-08-10 |  |  | ICKMO1-cost unite [9082.48 $]; Roller compactor [200 h]; Physical Units [78258.4 h] | 9,082.48 | 9,082.48 | ZNA | CON |  |
| A73260 |  | Testing & Inspection | 4d | 2026-12-14 | 2026-12-19 | A73240 |  |  |  | 36.28d | 8d | ICKMO1-cost unite [4541.24 $]; labor [1200 h]; Physical Units [39129.2 h] | 4,541.24 |  | ZNA | CON |  |
|  | MH-32-A-12-7 /MH-32-A-12-6 | **MH-32-A-12-7 /MH-32-A-12-6** |  | 2026-08-20 | 2026-12-19 |  |  |  |  |  |  |  |  |  |  |  |  |
| A73180 |  | Excavation | 4d | 2026-08-20 A | 2026-09-28 A | A73230, A1080 | 100% | 2026-12-12 | 2026-12-15 |  |  | ICKMO1-cost unite [6811.85 $]; Excavator [200 h]; Physical Units [58693.7 h] | 6,811.85 | 6,811.85 | ZNA | CON |  |
| A73190 |  | Pipe Laying | 4d | 2026-08-20 A | 2026-09-28 A | A73180 | 100% | 2026-12-16 | 2026-12-20 |  |  | ICKMO1-cost unite [4541.24 $]; boom truck [200 h]; labor [1200 h]; Storm Network Circular pipes (GRP) [80.79]; Physical Units [39129.2 h] | 4,541.24 | 4,541.24 | ZNA | CON | LAY |
| A73200 |  | Install Manhole | 4d | 2026-08-20 A | 2026-09-28 A | A73180 | 100% | 2026-12-16 | 2026-12-20 |  |  | ICKMO1-cost unite [20435.6 $]; boom truck [200 h]; labor [1200 h]; Physical Units [176081 h] | 20,435.57 | 20,435.57 | ZNA | CON | MH |
| A73220 |  | Backfilling & Compaction | 4d | 2026-08-20 A | 2026-09-28 A | A73210, A73200, A73270 | 100% | 2027-08-10 | 2027-08-15 |  |  | ICKMO1-cost unite [9082.48 $]; Roller compactor [200 h]; Physical Units [78258.4 h] | 9,082.48 | 9,082.48 | ZNA | CON |  |
| A73210 |  | Testing & Inspection | 4d | 2026-12-14 | 2026-12-19 | A73190 |  |  |  | 36.28d | 8d | ICKMO1-cost unite [4541.24 $]; labor [1200 h]; Physical Units [39129.2 h] | 4,541.24 |  | ZNA | CON |  |
|  | MH-32-A-12-8 /MH-32-A-12-7 | **MH-32-A-12-8 /MH-32-A-12-7** |  | 2026-08-20 | 2027-01-02 |  |  |  |  |  |  |  |  |  |  |  |  |
| A73130 |  | Excavation | 4d | 2026-08-20 A | 2026-09-28 A | A73180, A1080 | 100% | 2026-12-16 | 2026-12-20 |  |  | ICKMO1-cost unite [6811.85 $]; Excavator [200 h]; Physical Units [58693.7 h] | 6,811.85 | 6,811.85 | ZNA | CON |  |
| A73140 |  | Pipe Laying | 4d | 2026-08-20 A | 2026-09-28 A | A73130 | 100% | 2026-12-21 | 2026-12-24 |  |  | ICKMO1-cost unite [4541.24 $]; boom truck [200 h]; labor [1200 h]; Storm Network Circular pipes (GRP) [80.79]; Physical Units [39129.2 h] | 4,541.24 | 4,541.24 | ZNA | CON | LAY |
| A73150 |  | Install Manhole | 4d | 2026-08-20 A | 2026-09-28 A | A73130 | 100% | 2026-12-21 | 2026-12-24 |  |  | ICKMO1-cost unite [20435.6 $]; boom truck [200 h]; labor [1200 h]; Physical Units [176081 h] | 20,435.57 | 20,435.57 | ZNA | CON | MH |
| A73160 |  | Testing & Inspection | 4d | 2026-12-14 | 2026-12-19 | A73140 |  |  |  | 36.28d | 8d | ICKMO1-cost unite [4541.24 $]; labor [1200 h]; Physical Units [39129.2 h] | 4,541.24 |  | ZNA | CON |  |
| A73170 |  | Backfilling & Compaction | 4d | 2026-12-28 | 2027-01-02 | A73160, A73150, A73220 |  |  |  | 28.28d | 102.48d | ICKMO1-cost unite [9082.48 $]; Roller compactor [200 h]; Physical Units [78258.4 h] | 9,082.48 |  | ZNA | CON |  |

| ID | WBS | Activity | Duration | Start | Finish | Predecessors | Complete | Planned start | Planned finish | Total float | Free float | Resources | Cost | Actual cost | ALKHARJ INDUSTERIAL AREA - PROJECT ZONES | ALKHARJ INDUSTERIAL AREA - DECEPLINS | ALKHARJ INDUSTERIAL AREA - Wet networks |
| --- | --- | --- | --- | --- | --- | --- | --- | --- | --- | --- | --- | --- | --- | --- | --- | --- | --- |
|  | MH-32A-02 /MH-32A-01 | **MH-32A-02 /MH-32A-01** |  | 2026-08-20 | 2026-12-12 |  |  |  |  |  |  |  |  |  |  |  |  |
| A74030 |  | Excavation | 4d | 2026-08-20 A | 2026-09-28 A | A74080, A1080, A57230, A58910 | 100% | 2026-09-23 | 2026-09-27 |  |  | ICKMO1-cost unite [6811.85 $]; Excavator [200 h]; Physical Units [58693.7 h] | 6,811.85 | 6,811.85 | ZNA | CON |  |
| A74040 |  | Pipe Laying | 4d | 2026-08-20 A | 2026-09-28 A | A74030 | 100% | 2026-09-28 | 2026-10-01 |  |  | ICKMO1-cost unite [4541.24 $]; boom truck [200 h]; labor [1200 h]; Storm Network Circular pipes (GRP) [80.79]; Physical Units [39129.2 h] | 4,541.24 | 4,541.24 | ZNA | CON | LAY |
| A74050 |  | Install Manhole | 4d | 2026-08-20 A | 2026-09-28 A | A74030 | 100% | 2026-09-28 | 2026-10-01 |  |  | ICKMO1-cost unite [20435.6 $]; boom truck [200 h]; labor [1200 h]; Physical Units [176081 h] | 20,435.57 | 20,435.57 | ZNA | CON | MH |
| A74070 |  | Backfilling & Compaction | 4d | 2026-08-20 A | 2026-09-28 A | A74060, A74050 | 100% | 2027-05-23 | 2027-05-27 |  |  | ICKMO1-cost unite [9082.48 $]; Roller compactor [200 h]; Physical Units [78258.4 h] | 9,082.48 | 9,082.48 | ZNA | CON |  |
| A74060 |  | Testing & Inspection | 2d | 2026-12-09 | 2026-12-12 | A74040 |  |  |  | 38.28d | 0d | ICKMO1-cost unite [4541.24 $]; labor [1200 h]; Physical Units [39129.2 h] | 4,541.24 |  | ZNA | CON |  |
|  | MH-32A-03 /MH-32A-02 | **MH-32A-03 /MH-32A-02** |  | 2026-08-20 | 2026-12-14 |  |  |  |  |  |  |  |  |  |  |  |  |
| A73980 |  | Excavation | 4d | 2026-08-20 A | 2026-09-28 A | A74030, A1080 | 100% | 2026-09-28 | 2026-10-01 |  |  | ICKMO1-cost unite [6811.85 $]; Excavator [200 h]; Physical Units [58693.7 h] | 6,811.85 | 6,811.85 | ZNA | CON |  |
| A73990 |  | Pipe Laying | 4d | 2026-08-20 A | 2026-09-28 A | A73980 | 100% | 2026-10-03 | 2026-10-06 |  |  | ICKMO1-cost unite [4541.24 $]; boom truck [200 h]; labor [1200 h]; Storm Network Circular pipes (GRP) [80.79]; Physical Units [39129.2 h] | 4,541.24 | 4,541.24 | ZNA | CON | LAY |
| A74000 |  | Install Manhole | 4d | 2026-08-20 A | 2026-09-28 A | A73980 | 100% | 2026-10-03 | 2026-10-06 |  |  | ICKMO1-cost unite [20435.6 $]; boom truck [200 h]; labor [1200 h]; Physical Units [176081 h] | 20,435.57 | 20,435.57 | ZNA | CON | MH |
| A74020 |  | Backfilling & Compaction | 4d | 2026-08-20 A | 2026-09-28 A | A74010, A74000, A74070 | 100% | 2027-05-27 | 2027-06-01 |  |  | ICKMO1-cost unite [9082.48 $]; Roller compactor [200 h]; Physical Units [78258.4 h] | 9,082.48 | 9,082.48 | ZNA | CON |  |
| A74010 |  | Testing & Inspection | 4d | 2026-12-09 | 2026-12-14 | A73990 |  |  |  | 36.28d | 0d | ICKMO1-cost unite [4541.24 $]; labor [1200 h]; Physical Units [39129.2 h] | 4,541.24 |  | ZNA | CON |  |
|  | LR 03 | **LR 03** |  | 2026-08-20 | 2027-02-17 |  |  |  |  |  |  |  |  |  |  |  |  |
|  | MH-32-A-21 /MH-32-A-21-1 | **MH-32-A-21 /MH-32-A-21-1** |  | 2026-08-20 | 2026-12-22 |  |  |  |  |  |  |  |  |  |  |  |  |
| A71780 |  | Excavation | 3d | 2026-08-20 A | 2026-09-28 A | A71830, A1080 | 100% | 2026-12-20 | 2026-12-22 |  |  | ICKMO1-cost unite [5045.82 $]; Excavator [200 h]; Physical Units [43476.9 h] | 5,045.82 | 5,045.82 | ZNA | CON |  |
| A71790 |  | Pipe Laying | 3d | 2026-08-20 A | 2026-09-28 A | A71780 | 100% | 2026-12-23 | 2026-12-26 |  |  | ICKMO1-cost unite [3363.87 $]; boom truck [200 h]; labor [1200 h]; Storm Network Circular pipes (GRP) [80.79]; Physical Units [28984.5 h] | 3,363.87 | 3,363.87 | ZNA | CON | LAY |
| A71800 |  | Install Manhole | 3d | 2026-08-20 A | 2026-09-28 A | A71780 | 100% | 2026-12-23 | 2026-12-26 |  |  | ICKMO1-cost unite [15137.5 $]; boom truck [200 h]; labor [1200 h]; Physical Units [130431 h] | 15,137.46 | 15,137.46 | ZNA | CON | MH |
| A71820 |  | Backfilling & Compaction | 3d | 2026-08-20 A | 2026-09-28 A | A71810, A71800, A71870 | 100% | 2027-08-18 | 2027-08-22 |  |  | ICKMO1-cost unite [6727.76 $]; Roller compactor [200 h]; Physical Units [57969.2 h] | 6,727.76 | 6,727.76 | ZNA | CON |  |
| A71810 |  | Testing & Inspection | 3d | 2026-12-19 | 2026-12-22 | A71790 |  |  |  | 32.28d | 49d | ICKMO1-cost unite [3363.87 $]; labor [1200 h]; Physical Units [28984.5 h] | 3,363.87 |  | ZNA | CON |  |
|  | MH-32-A-22 /MH-32-A-21 | **MH-32-A-22 /MH-32-A-21** |  | 2026-08-20 | 2026-12-22 |  |  |  |  |  |  |  |  |  |  |  |  |
| A71830 |  | Excavation | 3d | 2026-08-20 A | 2026-09-28 A | A71880, A1080 | 100% | 2026-12-16 | 2026-12-19 |  |  | ICKMO1-cost unite [5045.82 $]; Excavator [200 h]; Physical Units [43476.9 h] | 5,045.82 | 5,045.82 | ZNA | CON |  |
| A71840 |  | Pipe Laying | 3d | 2026-08-20 A | 2026-09-28 A | A71830 | 100% | 2026-12-20 | 2026-12-22 |  |  | ICKMO1-cost unite [3363.87 $]; boom truck [200 h]; labor [1200 h]; Storm Network Circular pipes (GRP) [80.79]; Physical Units [28984.5 h] | 3,363.87 | 3,363.87 | ZNA | CON | LAY |
| A71850 |  | Install Manhole | 3d | 2026-08-20 A | 2026-09-28 A | A71830 | 100% | 2026-12-20 | 2026-12-22 |  |  | ICKMO1-cost unite [15137.5 $]; boom truck [200 h]; labor [1200 h]; Physical Units [130431 h] | 15,137.46 | 15,137.46 | ZNA | CON | MH |
| A71870 |  | Backfilling & Compaction | 3d | 2026-08-20 A | 2026-09-28 A | A71860, A71850, A71920 | 100% | 2027-08-15 | 2027-08-18 |  |  | ICKMO1-cost unite [6727.76 $]; Roller compactor [200 h]; Physical Units [57969.2 h] | 6,727.76 | 6,727.76 | ZNA | CON |  |
| A71860 |  | Testing & Inspection | 3d | 2026-12-19 | 2026-12-22 | A71840 |  |  |  | 32.28d | 49d | ICKMO1-cost unite [3363.87 $]; labor [1200 h]; Physical Units [28984.5 h] | 3,363.87 |  | ZNA | CON |  |

| ID | WBS | Activity | Duration | Start | Finish | Predecessors | Complete | Planned start | Planned finish | Total float | Free float | Resources | Cost | Actual cost | ALKHARJ INDUSTERIAL AREA - PROJECT ZONES | ALKHARJ INDUSTERIAL AREA - DECEPLINS | ALKHARJ INDUSTERIAL AREA - Wet networks |
| --- | --- | --- | --- | --- | --- | --- | --- | --- | --- | --- | --- | --- | --- | --- | --- | --- | --- |
|  | MH-32-A-23 /MH-32-A-22 | **MH-32-A-23 /MH-32-A-22** |  | 2026-08-20 | 2026-12-22 |  |  |  |  |  |  |  |  |  |  |  |  |
| A71880 |  | Excavation | 3d | 2026-08-20 A | 2026-09-28 A | A71930, A1080 | 100% | 2026-12-13 | 2026-12-15 |  |  | ICKMO1-cost unite [5045.82 $]; Excavator [200 h]; Physical Units [43476.9 h] | 5,045.82 | 5,045.82 | ZNA | CON |  |
| A71890 |  | Pipe Laying | 3d | 2026-08-20 A | 2026-09-28 A | A71880 | 100% | 2026-12-16 | 2026-12-19 |  |  | ICKMO1-cost unite [3363.87 $]; boom truck [200 h]; labor [1200 h]; Storm Network Circular pipes (GRP) [80.79]; Physical Units [28984.5 h] | 3,363.87 | 3,363.87 | ZNA | CON | LAY |
| A71900 |  | Install Manhole | 3d | 2026-08-20 A | 2026-09-28 A | A71880 | 100% | 2026-12-16 | 2026-12-19 |  |  | ICKMO1-cost unite [15137.5 $]; boom truck [200 h]; labor [1200 h]; Physical Units [130431 h] | 15,137.46 | 15,137.46 | ZNA | CON | MH |
| A71920 |  | Backfilling & Compaction | 3d | 2026-08-20 A | 2026-09-28 A | A71910, A71900, A71970 | 100% | 2027-08-11 | 2027-08-15 |  |  | ICKMO1-cost unite [6727.76 $]; Roller compactor [200 h]; Physical Units [57969.2 h] | 6,727.76 | 6,727.76 | ZNA | CON |  |
| A71910 |  | Testing & Inspection | 3d | 2026-12-19 | 2026-12-22 | A71890 |  |  |  | 32.28d | 49d | ICKMO1-cost unite [3363.87 $]; labor [1200 h]; Physical Units [28984.5 h] | 3,363.87 |  | ZNA | CON |  |
|  | MH-32-A-24 /MH-32-A-23 | **MH-32-A-24 /MH-32-A-23** |  | 2026-08-20 | 2026-12-22 |  |  |  |  |  |  |  |  |  |  |  |  |
| A71930 |  | Excavation | 3d | 2026-08-20 A | 2026-09-28 A | A71980, A1080 | 100% | 2026-12-09 | 2026-12-12 |  |  | ICKMO1-cost unite [5045.82 $]; Excavator [200 h]; Physical Units [43476.9 h] | 5,045.82 | 5,045.82 | ZNA | CON |  |
| A71940 |  | Pipe Laying | 3d | 2026-08-20 A | 2026-09-28 A | A71930 | 100% | 2026-12-13 | 2026-12-15 |  |  | ICKMO1-cost unite [3363.87 $]; boom truck [200 h]; labor [1200 h]; Storm Network Circular pipes (GRP) [80.79]; Physical Units [28984.5 h] | 3,363.87 | 3,363.87 | ZNA | CON | LAY |
| A71950 |  | Install Manhole | 3d | 2026-08-20 A | 2026-09-28 A | A71930 | 100% | 2026-12-13 | 2026-12-15 |  |  | ICKMO1-cost unite [15137.5 $]; boom truck [200 h]; labor [1200 h]; Physical Units [130431 h] | 15,137.46 | 15,137.46 | ZNA | CON | MH |
| A71970 |  | Backfilling & Compaction | 3d | 2026-08-20 A | 2026-09-28 A | A71960, A71950, A72020 | 100% | 2027-08-08 | 2027-08-11 |  |  | ICKMO1-cost unite [6727.76 $]; Roller compactor [200 h]; Physical Units [57969.2 h] | 6,727.76 | 6,727.76 | ZNA | CON |  |
| A71960 |  | Testing & Inspection | 3d | 2026-12-19 | 2026-12-22 | A71940 |  |  |  | 32.28d | 49d | ICKMO1-cost unite [3363.87 $]; labor [1200 h]; Physical Units [28984.5 h] | 3,363.87 |  | ZNA | CON |  |
|  | MH-32-A-25 /MH-32-A-24 | **MH-32-A-25 /MH-32-A-24** |  | 2026-08-20 | 2026-12-22 |  |  |  |  |  |  |  |  |  |  |  |  |
| A71980 |  | Excavation | 3d | 2026-08-20 A | 2026-09-28 A | A72030, A1080 | 100% | 2026-12-06 | 2026-12-08 |  |  | ICKMO1-cost unite [5045.82 $]; Excavator [200 h]; Physical Units [43476.9 h] | 5,045.82 | 5,045.82 | ZNA | CON |  |
| A71990 |  | Pipe Laying | 3d | 2026-08-20 A | 2026-09-28 A | A71980 | 100% | 2026-12-09 | 2026-12-12 |  |  | ICKMO1-cost unite [3363.87 $]; boom truck [200 h]; labor [1200 h]; Storm Network Circular pipes (GRP) [80.79]; Physical Units [28984.5 h] | 3,363.87 | 3,363.87 | ZNA | CON | LAY |
| A72000 |  | Install Manhole | 3d | 2026-08-20 A | 2026-09-28 A | A71980 | 100% | 2026-12-09 | 2026-12-12 |  |  | ICKMO1-cost unite [15137.5 $]; boom truck [200 h]; labor [1200 h]; Physical Units [130431 h] | 15,137.46 | 15,137.46 | ZNA | CON | MH |
| A72020 |  | Backfilling & Compaction | 3d | 2026-08-20 A | 2026-09-28 A | A72010, A72000, A72070 | 100% | 2027-08-04 | 2027-08-08 |  |  | ICKMO1-cost unite [6727.76 $]; Roller compactor [200 h]; Physical Units [57969.2 h] | 6,727.76 | 6,727.76 | ZNA | CON |  |
| A72010 |  | Testing & Inspection | 3d | 2026-12-19 | 2026-12-22 | A71990 |  |  |  | 32.28d | 49d | ICKMO1-cost unite [3363.87 $]; labor [1200 h]; Physical Units [28984.5 h] | 3,363.87 |  | ZNA | CON |  |
|  | MH-32-A-26 /MH-32-A-25 | **MH-32-A-26 /MH-32-A-25** |  | 2026-12-15 | 2027-02-17 |  |  |  |  |  |  |  |  |  |  |  |  |
| A72030 |  | Excavation | 3d | 2026-12-15 | 2026-12-19 | A72080, A1080 |  |  |  | 26.28d | 0d | ICKMO1-cost unite [5045.82 $]; Excavator [200 h]; Physical Units [43476.9 h] | 5,045.82 |  | ZNA | CON |  |
| A72040 |  | Pipe Laying | 3d | 2026-12-19 | 2026-12-22 | A72030 |  |  |  | 26.28d | 0d | ICKMO1-cost unite [3363.87 $]; boom truck [200 h]; labor [1200 h]; Storm Network Circular pipes (GRP) [80.79]; Physical Units [28984.5 h] | 3,363.87 |  | ZNA | CON | LAY |
| A72050 |  | Install Manhole | 3d | 2026-12-19 | 2026-12-22 | A72030 |  |  |  | 29.28d | 46d | ICKMO1-cost unite [15137.5 $]; boom truck [200 h]; labor [1200 h]; Physical Units [130431 h] | 15,137.46 |  | ZNA | CON | MH |
| A72060 |  | Testing & Inspection | 3d | 2026-12-22 | 2026-12-26 | A72040 |  |  |  | 26.28d | 43d | ICKMO1-cost unite [3363.87 $]; labor [1200 h]; Physical Units [28984.5 h] | 3,363.87 |  | ZNA | CON |  |
| A72070 |  | Backfilling & Compaction | 3d | 2027-02-14 | 2027-02-17 | A72060, A72050, A72120 |  |  |  | -16.72d | 0d | ICKMO1-cost unite [6727.76 $]; Roller compactor [200 h]; Physical Units [57969.2 h] | 6,727.76 |  | ZNA | CON |  |

| ID | WBS | Activity | Duration | Start | Finish | Predecessors | Complete | Planned start | Planned finish | Total float | Free float | Resources | Cost | Actual cost | ALKHARJ INDUSTERIAL AREA - PROJECT ZONES | ALKHARJ INDUSTERIAL AREA - DECEPLINS | ALKHARJ INDUSTERIAL AREA - Wet networks |
| --- | --- | --- | --- | --- | --- | --- | --- | --- | --- | --- | --- | --- | --- | --- | --- | --- | --- |
|  | MH-32-A-27 /MH-32-A-26 | **MH-32-A-27 /MH-32-A-26** |  | 2026-09-29 | 2027-02-14 |  |  |  |  |  |  |  |  |  |  |  |  |
| A72080 |  | Excavation | 3d | 2026-09-29 A | 2026-10-07 A | A72130, A1080 | 100% | 2027-01-31 | 2027-02-03 |  |  | ICKMO1-cost unite [5045.82 $]; Excavator [200 h]; Physical Units [43476.9 h] | 5,045.82 | 5,045.82 | ZNA | CON |  |
| A72090 |  | Pipe Laying | 3d | 2026-09-29 A | 2026-10-07 A | A72080 | 100% | 2027-02-03 | 2027-02-07 |  |  | ICKMO1-cost unite [3363.87 $]; boom truck [200 h]; labor [1200 h]; Storm Network Circular pipes (GRP) [80.79]; Physical Units [28984.5 h] | 3,363.87 | 3,363.87 | ZNA | CON | LAY |
| A72100 |  | Install Manhole | 3d | 2026-09-29 A | 2026-10-07 A | A72080 | 100% | 2027-02-03 | 2027-02-07 |  |  | ICKMO1-cost unite [15137.5 $]; boom truck [200 h]; labor [1200 h]; Physical Units [130431 h] | 15,137.46 | 15,137.46 | ZNA | CON | MH |
| A72110 |  | Testing & Inspection | 3d | 2026-12-15 | 2026-12-19 | A72090 |  |  |  | 29.28d | 46d | ICKMO1-cost unite [3363.87 $]; labor [1200 h]; Physical Units [28984.5 h] | 3,363.87 |  | ZNA | CON |  |
| A72120 |  | Backfilling & Compaction | 3d | 2027-02-10 | 2027-02-14 | A72110, A72100, A72170 |  |  |  | -16.72d | 0d | ICKMO1-cost unite [6727.76 $]; Roller compactor [200 h]; Physical Units [57969.2 h] | 6,727.76 |  | ZNA | CON |  |
|  | MH-A45 /MH-A44 | **MH-A45 /MH-A44** |  | 2026-12-09 | 2026-12-19 |  |  |  |  |  |  |  |  |  |  |  |  |
| A72930 |  | Excavation | 2d | 2026-12-09 | 2026-12-12 | A59260, A59270, A1080, A58770, A58910 |  |  |  | -16.72d | 0d | ICKMO1-cost unite [5045.82 $]; Excavator [200 h]; Physical Units [43476.9 h] | 5,045.82 |  | ZNA | CON |  |
| A72940 |  | Pipe Laying | 2d | 2026-12-12 | 2026-12-14 | A72930 |  |  |  | 1.28d | 0d | ICKMO1-cost unite [3363.87 $]; boom truck [200 h]; labor [1200 h]; Storm Network Circular pipes (GRP) [80.79]; Physical Units [28984.5 h] | 3,363.87 |  | ZNA | CON | LAY |
| A72950 |  | Install Manhole | 2d | 2026-12-12 | 2026-12-14 | A72930 |  |  |  | 3.28d | 2d | ICKMO1-cost unite [15137.5 $]; boom truck [200 h]; labor [1200 h]; Physical Units [130431 h] | 15,137.46 |  | ZNA | CON | MH |
| A72960 |  | Testing & Inspection | 2d | 2026-12-14 | 2026-12-16 | A72940 |  |  |  | 1.28d | 0d | ICKMO1-cost unite [3363.87 $]; labor [1200 h]; Physical Units [28984.5 h] | 3,363.87 |  | ZNA | CON |  |
| A72970 |  | Backfilling & Compaction | 2d | 2026-12-16 | 2026-12-19 | A72960, A72950 |  |  |  | 1.28d | 0d | ICKMO1-cost unite [6727.76 $]; Roller compactor [200 h]; Physical Units [57969.2 h] | 6,727.76 |  | ZNA | CON |  |
|  | MH-A46 /MH-A45 | **MH-A46 /MH-A45** |  | 2026-08-20 | 2026-09-28 |  |  |  |  |  |  |  |  |  |  |  |  |
| A72980 |  | Excavation | 2d | 2026-08-20 A | 2026-09-28 A | A72930, A1080 | 100% | 2026-09-26 | 2026-09-27 |  |  | ICKMO1-cost unite [5045.82 $]; Excavator [200 h]; Physical Units [43476.9 h] | 5,045.82 | 5,045.82 | ZNA | CON |  |
| A72990 |  | Pipe Laying | 2d | 2026-08-20 A | 2026-09-28 A | A72980 | 100% | 2026-09-28 | 2026-09-29 |  |  | ICKMO1-cost unite [3363.87 $]; boom truck [200 h]; labor [1200 h]; Storm Network Circular pipes (GRP) [80.79]; Physical Units [28984.5 h] | 3,363.87 | 3,363.87 | ZNA | CON | LAY |
| A73000 |  | Install Manhole | 2d | 2026-08-20 A | 2026-09-28 A | A72980 | 100% | 2026-09-28 | 2026-09-29 |  |  | ICKMO1-cost unite [15137.5 $]; boom truck [200 h]; labor [1200 h]; Physical Units [130431 h] | 15,137.46 | 15,137.46 | ZNA | CON | MH |
| A73010 |  | Testing & Inspection | 2d | 2026-08-20 A | 2026-09-28 A | A72990 | 100% | 2027-05-23 | 2027-05-25 |  |  | ICKMO1-cost unite [3363.87 $]; labor [1200 h]; Physical Units [28984.5 h] | 3,363.87 | 3,363.87 | ZNA | CON |  |
| A73020 |  | Backfilling & Compaction | 2d | 2026-08-20 A | 2026-09-28 A | A73010, A73000 | 100% | 2027-05-25 | 2027-05-27 |  |  | ICKMO1-cost unite [6727.76 $]; Roller compactor [200 h]; Physical Units [57969.2 h] | 6,727.76 | 6,727.76 | ZNA | CON |  |
|  | MH-A47 /MH-A46 | **MH-A47 /MH-A46** |  | 2026-08-20 | 2026-09-28 |  |  |  |  |  |  |  |  |  |  |  |  |
| A73030 |  | Excavation | 2d | 2026-08-20 A | 2026-09-28 A | A72980, A1080 | 100% | 2026-09-28 | 2026-09-29 |  |  | ICKMO1-cost unite [5045.82 $]; Excavator [200 h]; Physical Units [43476.9 h] | 5,045.82 | 5,045.82 | ZNA | CON |  |
| A73040 |  | Pipe Laying | 2d | 2026-08-20 A | 2026-09-28 A | A73030 | 100% | 2026-09-30 | 2026-10-01 |  |  | ICKMO1-cost unite [3363.87 $]; boom truck [200 h]; labor [1200 h]; Storm Network Circular pipes (GRP) [80.79]; Physical Units [28984.5 h] | 3,363.87 | 3,363.87 | ZNA | CON | LAY |
| A73050 |  | Install Manhole | 2d | 2026-08-20 A | 2026-09-28 A | A73030 | 100% | 2026-09-30 | 2026-10-01 |  |  | ICKMO1-cost unite [15137.5 $]; boom truck [200 h]; labor [1200 h]; Physical Units [130431 h] | 15,137.46 | 15,137.46 | ZNA | CON | MH |
| A73060 |  | Testing & Inspection | 2d | 2026-08-20 A | 2026-09-28 A | A73040 | 100% | 2027-05-23 | 2027-05-25 |  |  | ICKMO1-cost unite [3363.87 $]; labor [1200 h]; Physical Units [28984.5 h] | 3,363.87 | 3,363.87 | ZNA | CON |  |
| A73070 |  | Backfilling & Compaction | 2d | 2026-08-20 A | 2026-09-28 A | A73060, A73050, A73020 | 100% | 2027-05-27 | 2027-05-30 |  |  | ICKMO1-cost unite [6727.76 $]; Roller compactor [200 h]; Physical Units [57969.2 h] | 6,727.76 | 6,727.76 | ZNA | CON |  |

| ID | WBS | Activity | Duration | Start | Finish | Predecessors | Complete | Planned start | Planned finish | Resources | Cost | Actual cost | ALKHARJ INDUSTERIAL AREA - PROJECT ZONES | ALKHARJ INDUSTERIAL AREA - DECEPLINS | ALKHARJ INDUSTERIAL AREA - Wet networks |
| --- | --- | --- | --- | --- | --- | --- | --- | --- | --- | --- | --- | --- | --- | --- | --- |
|  | MH-A48 /MH-A47 | **MH-A48 /MH-A47** |  | 2026-08-20 | 2026-09-28 |  |  |  |  |  |  |  |  |  |  |
| A73080 |  | Excavation | 3d | 2026-08-20 A | 2026-09-28 A | A73030, A1080 | 100% | 2026-09-30 | 2026-10-03 | ICKMO1-cost unite [5045.82 $]; Excavator [200 h]; Physical Units [43476.9 h] | 5,045.82 | 5,045.82 | ZNA | CON |  |
| A73090 |  | Pipe Laying | 3d | 2026-08-20 A | 2026-09-28 A | A73080 | 100% | 2026-10-04 | 2026-10-06 | ICKMO1-cost unite [3363.87 $]; boom truck [200 h]; labor [1200 h]; Storm Network Circular pipes (GRP) [80.79]; Physical Units [28984.5 h] | 3,363.87 | 3,363.87 | ZNA | CON | LAY |
| A73100 |  | Install Manhole | 3d | 2026-08-20 A | 2026-09-28 A | A73080 | 100% | 2026-10-04 | 2026-10-06 | ICKMO1-cost unite [15137.5 $]; boom truck [200 h]; labor [1200 h]; Physical Units [130431 h] | 15,137.46 | 15,137.46 | ZNA | CON | MH |
| A73110 |  | Testing & Inspection | 3d | 2026-08-20 A | 2026-09-28 A | A73090 | 100% | 2027-05-23 | 2027-05-26 | ICKMO1-cost unite [3363.87 $]; labor [1200 h]; Physical Units [28984.5 h] | 3,363.87 | 3,363.87 | ZNA | CON |  |
| A73120 |  | Backfilling & Compaction | 3d | 2026-08-20 A | 2026-09-28 A | A73110, A73100, A73070 | 100% | 2027-05-30 | 2027-06-02 | ICKMO1-cost unite [6727.76 $]; Roller compactor [200 h]; Physical Units [57969.2 h] | 6,727.76 | 6,727.76 | ZNA | CON |  |
|  | MH-A49 /MH-A48 | **MH-A49 /MH-A48** |  | 2026-08-20 | 2026-09-28 |  |  |  |  |  |  |  |  |  |  |
| A72880 |  | Excavation | 3d | 2026-08-20 A | 2026-09-28 A | A73080, A1080 | 100% | 2026-10-04 | 2026-10-06 | ICKMO1-cost unite [5045.82 $]; Excavator [200 h]; Physical Units [43476.9 h] | 5,045.82 | 5,045.82 | ZNA | CON |  |
| A72890 |  | Pipe Laying | 3d | 2026-08-20 A | 2026-09-28 A | A72880 | 100% | 2026-10-07 | 2026-10-10 | ICKMO1-cost unite [3363.87 $]; boom truck [200 h]; labor [1200 h]; Storm Network Circular pipes (GRP) [80.79]; Physical Units [28984.5 h] | 3,363.87 | 3,363.87 | ZNA | CON | LAY |
| A72900 |  | Install Manhole | 3d | 2026-08-20 A | 2026-09-28 A | A72880 | 100% | 2026-10-07 | 2026-10-10 | ICKMO1-cost unite [15137.5 $]; boom truck [200 h]; labor [1200 h]; Physical Units [130431 h] | 15,137.46 | 15,137.46 | ZNA | CON | MH |
| A72910 |  | Testing & Inspection | 3d | 2026-08-20 A | 2026-09-28 A | A72890 | 100% | 2027-05-23 | 2027-05-26 | ICKMO1-cost unite [3363.87 $]; labor [1200 h]; Physical Units [28984.5 h] | 3,363.87 | 3,363.87 | ZNA | CON |  |
| A72920 |  | Backfilling & Compaction | 3d | 2026-08-20 A | 2026-09-28 A | A72910, A72900, A73120 | 100% | 2027-06-02 | 2027-06-06 | ICKMO1-cost unite [6727.76 $]; Roller compactor [200 h]; Physical Units [57969.2 h] | 6,727.76 | 6,727.76 | ZNA | CON |  |
|  | MH-A50 /MH-A49 | **MH-A50 /MH-A49** |  | 2026-08-20 | 2026-09-28 |  |  |  |  |  |  |  |  |  |  |
| A72830 |  | Excavation | 3d | 2026-08-20 A | 2026-09-28 A | A72880, A1080 | 100% | 2026-10-07 | 2026-10-10 | ICKMO1-cost unite [5045.82 $]; Excavator [200 h]; Physical Units [43476.9 h] | 5,045.82 | 5,045.82 | ZNA | CON |  |
| A72840 |  | Pipe Laying | 3d | 2026-08-20 A | 2026-09-28 A | A72830 | 100% | 2026-10-11 | 2026-10-13 | ICKMO1-cost unite [3363.87 $]; boom truck [200 h]; labor [1200 h]; Storm Network Circular pipes (GRP) [80.79]; Physical Units [28984.5 h] | 3,363.87 | 3,363.87 | ZNA | CON | LAY |
| A72850 |  | Install Manhole | 3d | 2026-08-20 A | 2026-09-28 A | A72830 | 100% | 2026-10-11 | 2026-10-13 | ICKMO1-cost unite [15137.5 $]; boom truck [200 h]; labor [1200 h]; Physical Units [130431 h] | 15,137.46 | 15,137.46 | ZNA | CON | MH |
| A72860 |  | Testing & Inspection | 3d | 2026-08-20 A | 2026-09-28 A | A72840 | 100% | 2027-05-23 | 2027-05-26 | ICKMO1-cost unite [3363.87 $]; labor [1200 h]; Physical Units [28984.5 h] | 3,363.87 | 3,363.87 | ZNA | CON |  |
| A72870 |  | Backfilling & Compaction | 3d | 2026-08-20 A | 2026-09-28 A | A72860, A72850, A72920 | 100% | 2027-06-06 | 2027-06-09 | ICKMO1-cost unite [6727.76 $]; Roller compactor [200 h]; Physical Units [57969.2 h] | 6,727.76 | 6,727.76 | ZNA | CON |  |
|  | MH-A51 /MH-A50 | **MH-A51 /MH-A50** |  | 2026-08-20 | 2026-09-28 |  |  |  |  |  |  |  |  |  |  |
| A72780 |  | Excavation | 3d | 2026-08-20 A | 2026-09-28 A | A72830, A1080 | 100% | 2026-10-11 | 2026-10-13 | ICKMO1-cost unite [5045.82 $]; Excavator [200 h]; Physical Units [43476.9 h] | 5,045.82 | 5,045.82 | ZNA | CON |  |
| A72790 |  | Pipe Laying | 3d | 2026-08-20 A | 2026-09-28 A | A72780 | 100% | 2026-10-14 | 2026-10-17 | ICKMO1-cost unite [3363.87 $]; boom truck [200 h]; labor [1200 h]; Storm Network Circular pipes (GRP) [80.79]; Physical Units [28984.5 h] | 3,363.87 | 3,363.87 | ZNA | CON | LAY |
| A72800 |  | Install Manhole | 3d | 2026-08-20 A | 2026-09-28 A | A72780 | 100% | 2026-10-14 | 2026-10-17 | ICKMO1-cost unite [15137.5 $]; boom truck [200 h]; labor [1200 h]; Physical Units [130431 h] | 15,137.46 | 15,137.46 | ZNA | CON | MH |
| A72810 |  | Testing & Inspection | 3d | 2026-08-20 A | 2026-09-28 A | A72790 | 100% | 2027-05-23 | 2027-05-26 | ICKMO1-cost unite [3363.87 $]; labor [1200 h]; Physical Units [28984.5 h] | 3,363.87 | 3,363.87 | ZNA | CON |  |
| A72820 |  | Backfilling & Compaction | 3d | 2026-08-20 A | 2026-09-28 A | A72810, A72800, A72870 | 100% | 2027-06-09 | 2027-06-13 | ICKMO1-cost unite [6727.76 $]; Roller compactor [200 h]; Physical Units [57969.2 h] | 6,727.76 | 6,727.76 | ZNA | CON |  |

| ID | WBS | Activity | Duration | Start | Finish | Predecessors | Complete | Planned start | Planned finish | Total float | Free float | Resources | Cost | Actual cost | ALKHARJ INDUSTERIAL AREA - PROJECT ZONES | ALKHARJ INDUSTERIAL AREA - DECEPLINS | ALKHARJ INDUSTERIAL AREA - Wet networks |
| --- | --- | --- | --- | --- | --- | --- | --- | --- | --- | --- | --- | --- | --- | --- | --- | --- | --- |
|  | MH-A52 /MH-A51 | **MH-A52 /MH-A51** |  | 2026-08-20 | 2026-09-28 |  |  |  |  |  |  |  |  |  |  |  |  |
| A72730 |  | Excavation | 3d | 2026-08-20 A | 2026-09-28 A | A72780, A1080 | 100% | 2026-10-14 | 2026-10-17 |  |  | ICKMO1-cost unite [5045.82 $]; Excavator [200 h]; Physical Units [43476.9 h] | 5,045.82 | 5,045.82 | ZNA | CON |  |
| A72740 |  | Pipe Laying | 3d | 2026-08-20 A | 2026-09-28 A | A72730 | 100% | 2026-10-18 | 2026-10-20 |  |  | ICKMO1-cost unite [3363.87 $]; boom truck [200 h]; labor [1200 h]; Storm Network Circular pipes (GRP) [80.79]; Physical Units [28984.5 h] | 3,363.87 | 3,363.87 | ZNA | CON | LAY |
| A72750 |  | Install Manhole | 3d | 2026-08-20 A | 2026-09-28 A | A72730 | 100% | 2026-10-18 | 2026-10-20 |  |  | ICKMO1-cost unite [15137.5 $]; boom truck [200 h]; labor [1200 h]; Physical Units [130431 h] | 15,137.46 | 15,137.46 | ZNA | CON | MH |
| A72760 |  | Testing & Inspection | 3d | 2026-08-20 A | 2026-09-28 A | A72740 | 100% | 2027-05-23 | 2027-05-26 |  |  | ICKMO1-cost unite [3363.87 $]; labor [1200 h]; Physical Units [28984.5 h] | 3,363.87 | 3,363.87 | ZNA | CON |  |
| A72770 |  | Backfilling & Compaction | 3d | 2026-08-20 A | 2026-09-28 A | A72760, A72750, A72820 | 100% | 2027-06-13 | 2027-06-16 |  |  | ICKMO1-cost unite [6727.76 $]; Roller compactor [200 h]; Physical Units [57969.2 h] | 6,727.76 | 6,727.76 | ZNA | CON |  |
|  | MH-A53 /MH-A52 | **MH-A53 /MH-A52** |  | 2026-08-20 | 2026-12-15 |  |  |  |  |  |  |  |  |  |  |  |  |
| A72680 |  | Excavation | 3d | 2026-08-20 A | 2026-09-28 A | A72730, A1080 | 100% | 2026-10-18 | 2026-10-20 |  |  | ICKMO1-cost unite [5045.82 $]; Excavator [200 h]; Physical Units [43476.9 h] | 5,045.82 | 5,045.82 | ZNA | CON |  |
| A72690 |  | Pipe Laying | 3d | 2026-08-20 A | 2026-09-28 A | A72680 | 100% | 2026-10-21 | 2026-10-24 |  |  | ICKMO1-cost unite [3363.87 $]; boom truck [200 h]; labor [1200 h]; Storm Network Circular pipes (GRP) [80.79]; Physical Units [28984.5 h] | 3,363.87 | 3,363.87 | ZNA | CON | LAY |
| A72700 |  | Install Manhole | 3d | 2026-08-20 A | 2026-09-28 A | A72680 | 100% | 2026-10-21 | 2026-10-24 |  |  | ICKMO1-cost unite [15137.5 $]; boom truck [200 h]; labor [1200 h]; Physical Units [130431 h] | 15,137.46 | 15,137.46 | ZNA | CON | MH |
| A72720 |  | Backfilling & Compaction | 3d | 2026-08-20 A | 2026-09-28 A | A72710, A72700, A72770 | 100% | 2027-06-16 | 2027-06-20 |  |  | ICKMO1-cost unite [6727.76 $]; Roller compactor [200 h]; Physical Units [57969.2 h] | 6,727.76 | 6,727.76 | ZNA | CON |  |
| A72710 |  | Testing & Inspection | 3d | 2026-12-12 | 2026-12-15 | A72690 |  |  |  | 43.28d | 0d | ICKMO1-cost unite [3363.87 $]; labor [1200 h]; Physical Units [28984.5 h] | 3,363.87 |  | ZNA | CON |  |
|  | MH-A54 /MH-A53 | **MH-A54 /MH-A53** |  | 2026-08-20 | 2026-12-15 |  |  |  |  |  |  |  |  |  |  |  |  |
| A72630 |  | Excavation | 3d | 2026-08-20 A | 2026-09-28 A | A72680, A1080 | 100% | 2026-10-21 | 2026-10-24 |  |  | ICKMO1-cost unite [5045.82 $]; Excavator [200 h]; Physical Units [43476.9 h] | 5,045.82 | 5,045.82 | ZNA | CON |  |
| A72640 |  | Pipe Laying | 3d | 2026-08-20 A | 2026-09-28 A | A72630 | 100% | 2026-10-25 | 2026-10-27 |  |  | ICKMO1-cost unite [3363.87 $]; boom truck [200 h]; labor [1200 h]; Storm Network Circular pipes (GRP) [80.79]; Physical Units [28984.5 h] | 3,363.87 | 3,363.87 | ZNA | CON | LAY |
| A72650 |  | Install Manhole | 3d | 2026-08-20 A | 2026-09-28 A | A72630 | 100% | 2026-10-25 | 2026-10-27 |  |  | ICKMO1-cost unite [15137.5 $]; boom truck [200 h]; labor [1200 h]; Physical Units [130431 h] | 15,137.46 | 15,137.46 | ZNA | CON | MH |
| A72670 |  | Backfilling & Compaction | 3d | 2026-08-20 A | 2026-09-28 A | A72660, A72650, A72720 | 100% | 2027-06-20 | 2027-06-23 |  |  | ICKMO1-cost unite [6727.76 $]; Roller compactor [200 h]; Physical Units [57969.2 h] | 6,727.76 | 6,727.76 | ZNA | CON |  |
| A72660 |  | Testing & Inspection | 3d | 2026-12-12 | 2026-12-15 | A72640 |  |  |  | 43.28d | 0d | ICKMO1-cost unite [3363.87 $]; labor [1200 h]; Physical Units [28984.5 h] | 3,363.87 |  | ZNA | CON |  |
|  | MH-A55 /MH-A54 | **MH-A55 /MH-A54** |  | 2026-08-20 | 2026-12-15 |  |  |  |  |  |  |  |  |  |  |  |  |
| A72580 |  | Excavation | 3d | 2026-08-20 A | 2026-09-28 A | A72630, A1080 | 100% | 2026-10-25 | 2026-10-27 |  |  | ICKMO1-cost unite [5045.82 $]; Excavator [200 h]; Physical Units [43476.9 h] | 5,045.82 | 5,045.82 | ZNA | CON |  |
| A72590 |  | Pipe Laying | 3d | 2026-08-20 A | 2026-09-28 A | A72580 | 100% | 2026-10-28 | 2026-10-31 |  |  | ICKMO1-cost unite [3363.87 $]; boom truck [200 h]; labor [1200 h]; Storm Network Circular pipes (GRP) [80.79]; Physical Units [28984.5 h] | 3,363.87 | 3,363.87 | ZNA | CON | LAY |
| A72600 |  | Install Manhole | 3d | 2026-08-20 A | 2026-09-28 A | A72580 | 100% | 2026-10-28 | 2026-10-31 |  |  | ICKMO1-cost unite [15137.5 $]; boom truck [200 h]; labor [1200 h]; Physical Units [130431 h] | 15,137.46 | 15,137.46 | ZNA | CON | MH |
| A72620 |  | Backfilling & Compaction | 3d | 2026-08-20 A | 2026-09-28 A | A72610, A72600, A72670 | 100% | 2027-06-23 | 2027-06-27 |  |  | ICKMO1-cost unite [6727.76 $]; Roller compactor [200 h]; Physical Units [57969.2 h] | 6,727.76 | 6,727.76 | ZNA | CON |  |
| A72610 |  | Testing & Inspection | 3d | 2026-12-12 | 2026-12-15 | A72590 |  |  |  | 43.28d | 0d | ICKMO1-cost unite [3363.87 $]; labor [1200 h]; Physical Units [28984.5 h] | 3,363.87 |  | ZNA | CON |  |

| ID | WBS | Activity | Duration | Start | Finish | Predecessors | Complete | Planned start | Planned finish | Total float | Free float | Resources | Cost | Actual cost | ALKHARJ INDUSTERIAL AREA - PROJECT ZONES | ALKHARJ INDUSTERIAL AREA - DECEPLINS | ALKHARJ INDUSTERIAL AREA - Wet networks |
| --- | --- | --- | --- | --- | --- | --- | --- | --- | --- | --- | --- | --- | --- | --- | --- | --- | --- |
|  | MH-A56 /MH-A55 | **MH-A56 /MH-A55** |  | 2026-08-20 | 2026-12-15 |  |  |  |  |  |  |  |  |  |  |  |  |
| A72530 |  | Excavation | 3d | 2026-08-20 A | 2026-09-28 A | A72580, A1080 | 100% | 2026-10-28 | 2026-10-31 |  |  | ICKMO1-cost unite [5045.82 $]; Excavator [200 h]; Physical Units [43476.9 h] | 5,045.82 | 5,045.82 | ZNA | CON |  |
| A72540 |  | Pipe Laying | 3d | 2026-08-20 A | 2026-09-28 A | A72530 | 100% | 2026-11-01 | 2026-11-03 |  |  | ICKMO1-cost unite [3363.87 $]; boom truck [200 h]; labor [1200 h]; Storm Network Circular pipes (GRP) [80.79]; Physical Units [28984.5 h] | 3,363.87 | 3,363.87 | ZNA | CON | LAY |
| A72550 |  | Install Manhole | 3d | 2026-08-20 A | 2026-09-28 A | A72530 | 100% | 2026-11-01 | 2026-11-03 |  |  | ICKMO1-cost unite [15137.5 $]; boom truck [200 h]; labor [1200 h]; Physical Units [130431 h] | 15,137.46 | 15,137.46 | ZNA | CON | MH |
| A72570 |  | Backfilling & Compaction | 3d | 2026-08-20 A | 2026-09-28 A | A72560, A72550, A72620 | 100% | 2027-06-27 | 2027-06-30 |  |  | ICKMO1-cost unite [6727.76 $]; Roller compactor [200 h]; Physical Units [57969.2 h] | 6,727.76 | 6,727.76 | ZNA | CON |  |
| A72560 |  | Testing & Inspection | 3d | 2026-12-12 | 2026-12-15 | A72540 |  |  |  | 43.28d | 0d | ICKMO1-cost unite [3363.87 $]; labor [1200 h]; Physical Units [28984.5 h] | 3,363.87 |  | ZNA | CON |  |
|  | MH-A57 /MH-A56 | **MH-A57 /MH-A56** |  | 2026-09-26 | 2026-12-19 |  |  |  |  |  |  |  |  |  |  |  |  |
| A72480 |  | Excavation | 3d | 2026-09-26 A | 2026-10-01 A | A72530, A1080 | 100% | 2027-01-05 | 2027-01-09 |  |  | ICKMO1-cost unite [5045.82 $]; Excavator [200 h]; Physical Units [43476.9 h] | 5,045.82 | 5,045.82 | ZNA | CON |  |
| A72490 |  | Pipe Laying | 3d | 2026-09-26 A | 2026-10-01 A | A72480 | 100% | 2027-01-09 | 2027-01-12 |  |  | ICKMO1-cost unite [3363.87 $]; boom truck [200 h]; labor [1200 h]; Storm Network Circular pipes (GRP) [80.79]; Physical Units [28984.5 h] | 3,363.87 | 3,363.87 | ZNA | CON | LAY |
| A72500 |  | Install Manhole | 3d | 2026-09-26 A | 2026-10-01 A | A72480 | 100% | 2027-01-09 | 2027-01-12 |  |  | ICKMO1-cost unite [15137.5 $]; boom truck [200 h]; labor [1200 h]; Physical Units [130431 h] | 15,137.46 | 15,137.46 | ZNA | CON | MH |
| A72520 |  | Backfilling & Compaction | 3d | 2026-09-26 A | 2026-10-01 A | A72510, A72500, A72500 FF | 100% | 2027-01-16 | 2027-01-19 |  |  | ICKMO1-cost unite [6727.76 $]; Roller compactor [200 h]; Physical Units [57969.2 h] | 6,727.76 | 6,727.76 | ZNA | CON |  |
| A72510 |  | Testing & Inspection | 6d | 2026-12-12 | 2026-12-19 | A72490 |  |  |  | -13.72d | 0d | ICKMO1-cost unite [3363.87 $]; labor [1200 h]; Physical Units [28984.5 h] | 3,363.87 |  | ZNA | CON |  |
|  | MH-A58 /MH-A57 | **MH-A58 /MH-A57** |  | 2026-12-12 | 2026-12-26 |  |  |  |  |  |  |  |  |  |  |  |  |
| A72430 |  | Excavation | 3d | 2026-12-12 | 2026-12-15 | A72480, A1080 |  |  |  | -16.72d | 0d | ICKMO1-cost unite [5045.82 $]; Excavator [200 h]; Physical Units [43476.9 h] | 5,045.82 |  | ZNA | CON |  |
| A72440 |  | Pipe Laying | 3d | 2026-12-15 | 2026-12-19 | A72430 |  |  |  | -16.72d | 0d | ICKMO1-cost unite [3363.87 $]; boom truck [200 h]; labor [1200 h]; Storm Network Circular pipes (GRP) [80.79]; Physical Units [28984.5 h] | 3,363.87 |  | ZNA | CON | LAY |
| A72450 |  | Install Manhole | 3d | 2026-12-15 | 2026-12-19 | A72430 |  |  |  | -13.72d | 3d | ICKMO1-cost unite [15137.5 $]; boom truck [200 h]; labor [1200 h]; Physical Units [130431 h] | 15,137.46 |  | ZNA | CON | MH |
| A72460 |  | Testing & Inspection | 3d | 2026-12-19 | 2026-12-22 | A72440 |  |  |  | -16.72d | 0d | ICKMO1-cost unite [3363.87 $]; labor [1200 h]; Physical Units [28984.5 h] | 3,363.87 |  | ZNA | CON |  |
| A72470 |  | Backfilling & Compaction | 3d | 2026-12-22 | 2026-12-26 | A72460, A72450, A72520 |  |  |  | -16.72d | 0d | ICKMO1-cost unite [6727.76 $]; Roller compactor [200 h]; Physical Units [57969.2 h] | 6,727.76 |  | ZNA | CON |  |
|  | MH-A59 /MH-A58 | **MH-A59 /MH-A58** |  | 2026-08-20 | 2026-12-19 |  |  |  |  |  |  |  |  |  |  |  |  |
| A72380 |  | Excavation | 3d | 2026-08-20 A | 2026-09-28 A | A72430, A1080 | 100% | 2026-11-08 | 2026-11-10 |  |  | ICKMO1-cost unite [5045.82 $]; Excavator [200 h]; Physical Units [43476.9 h] | 5,045.82 | 5,045.82 | ZNA | CON |  |
| A72390 |  | Pipe Laying | 3d | 2026-08-20 A | 2026-09-28 A | A72380 | 100% | 2026-11-11 | 2026-11-14 |  |  | ICKMO1-cost unite [3363.87 $]; boom truck [200 h]; labor [1200 h]; Storm Network Circular pipes (GRP) [80.79]; Physical Units [28984.5 h] | 3,363.87 | 3,363.87 | ZNA | CON | LAY |
| A72400 |  | Install Manhole | 3d | 2026-08-20 A | 2026-09-28 A | A72380 | 100% | 2026-11-11 | 2026-11-14 |  |  | ICKMO1-cost unite [15137.5 $]; boom truck [200 h]; labor [1200 h]; Physical Units [130431 h] | 15,137.46 | 15,137.46 | ZNA | CON | MH |
| A72420 |  | Backfilling & Compaction | 3d | 2026-08-20 A | 2026-09-28 A | A72410, A72400, A72470 | 100% | 2027-07-07 | 2027-07-11 |  |  | ICKMO1-cost unite [6727.76 $]; Roller compactor [200 h]; Physical Units [57969.2 h] | 6,727.76 | 6,727.76 | ZNA | CON |  |
| A72410 |  | Testing & Inspection | 3d | 2026-12-15 | 2026-12-19 | A72390 |  |  |  | -10.72d | 6d | ICKMO1-cost unite [3363.87 $]; labor [1200 h]; Physical Units [28984.5 h] | 3,363.87 |  | ZNA | CON |  |

| ID | WBS | Activity | Duration | Start | Finish | Predecessors | Complete | Planned start | Planned finish | Total float | Free float | Resources | Cost | Actual cost | ALKHARJ INDUSTERIAL AREA - PROJECT ZONES | ALKHARJ INDUSTERIAL AREA - DECEPLINS | ALKHARJ INDUSTERIAL AREA - Wet networks |
| --- | --- | --- | --- | --- | --- | --- | --- | --- | --- | --- | --- | --- | --- | --- | --- | --- | --- |
|  | MH-A60 /MH-A59 | **MH-A60 /MH-A59** |  | 2026-09-29 | 2027-01-04 |  |  |  |  |  |  |  |  |  |  |  |  |
| A72330 |  | Excavation | 3d | 2026-09-29 A | 2026-10-07 A | A72380, A1080 | 100% | 2027-01-13 | 2027-01-17 |  |  | ICKMO1-cost unite [5045.82 $]; Excavator [200 h]; Physical Units [43476.9 h] | 5,045.82 | 5,045.82 | ZNA | CON |  |
| A72340 |  | Pipe Laying | 3d | 2026-09-29 A | 2026-10-07 A | A72330 | 100% | 2027-01-17 | 2027-01-20 |  |  | ICKMO1-cost unite [3363.87 $]; boom truck [200 h]; labor [1200 h]; Storm Network Circular pipes (GRP) [80.79]; Physical Units [28984.5 h] | 3,363.87 | 3,363.87 | ZNA | CON | LAY |
| A72350 |  | Install Manhole | 3d | 2026-09-29 A | 2026-10-07 A | A72330 | 100% | 2027-01-17 | 2027-01-20 |  |  | ICKMO1-cost unite [15137.5 $]; boom truck [200 h]; labor [1200 h]; Physical Units [130431 h] | 15,137.46 | 15,137.46 | ZNA | CON | MH |
| A72360 |  | Testing & Inspection | 8d | 2026-12-15 | 2026-12-24 | A72340 |  |  |  | -15.72d | 1d | ICKMO1-cost unite [3363.87 $]; labor [1200 h]; Physical Units [28984.5 h] | 3,363.87 |  | ZNA | CON |  |
| A72370 |  | Backfilling & Compaction | 8d | 2026-12-26 | 2027-01-04 | A72360, A72350, A72420 |  |  |  | -16.72d | 0d | ICKMO1-cost unite [6727.76 $]; Roller compactor [200 h]; Physical Units [57969.2 h] | 6,727.76 |  | ZNA | CON |  |
|  | MH-A61 /MH-A60 | **MH-A61 /MH-A60** |  | 2026-09-29 | 2027-01-13 |  |  |  |  |  |  |  |  |  |  |  |  |
| A72280 |  | Excavation | 3d | 2026-09-29 A | 2026-10-07 A | A72330, A1080 | 100% | 2027-01-17 | 2027-01-20 |  |  | ICKMO1-cost unite [5045.82 $]; Excavator [200 h]; Physical Units [43476.9 h] | 5,045.82 | 5,045.82 | ZNA | CON |  |
| A72290 |  | Pipe Laying | 3d | 2026-09-29 A | 2026-10-07 A | A72280 | 100% | 2027-01-20 | 2027-01-24 |  |  | ICKMO1-cost unite [3363.87 $]; boom truck [200 h]; labor [1200 h]; Storm Network Circular pipes (GRP) [80.79]; Physical Units [28984.5 h] | 3,363.87 | 3,363.87 | ZNA | CON | LAY |
| A72300 |  | Install Manhole | 3d | 2026-09-29 A | 2026-10-07 A | A72280 | 100% | 2027-01-20 | 2027-01-24 |  |  | ICKMO1-cost unite [15137.5 $]; boom truck [200 h]; labor [1200 h]; Physical Units [130431 h] | 15,137.46 | 15,137.46 | ZNA | CON | MH |
| A72310 |  | Testing & Inspection | 8d | 2026-12-15 | 2026-12-24 | A72290 |  |  |  | -7.72d | 9d | ICKMO1-cost unite [3363.87 $]; labor [1200 h]; Physical Units [28984.5 h] | 3,363.87 |  | ZNA | CON |  |
| A72320 |  | Backfilling & Compaction | 8d | 2027-01-04 | 2027-01-13 | A72310, A72300, A72370 |  |  |  | -16.72d | 0d | ICKMO1-cost unite [6727.76 $]; Roller compactor [200 h]; Physical Units [57969.2 h] | 6,727.76 |  | ZNA | CON |  |
|  | MH-A62 /MH-A61 | **MH-A62 /MH-A61** |  | 2026-09-29 | 2027-01-23 |  |  |  |  |  |  |  |  |  |  |  |  |
| A72230 |  | Excavation | 3d | 2026-09-29 A | 2026-10-07 A | A72280, A1080 | 100% | 2027-01-20 | 2027-01-24 |  |  | ICKMO1-cost unite [5045.82 $]; Excavator [200 h]; Physical Units [43476.9 h] | 5,045.82 | 5,045.82 | ZNA | CON |  |
| A72240 |  | Pipe Laying | 3d | 2026-09-29 A | 2026-10-07 A | A72230 | 100% | 2027-01-24 | 2027-01-27 |  |  | ICKMO1-cost unite [3363.87 $]; boom truck [200 h]; labor [1200 h]; Storm Network Circular pipes (GRP) [80.79]; Physical Units [28984.5 h] | 3,363.87 | 3,363.87 | ZNA | CON | LAY |
| A72250 |  | Install Manhole | 3d | 2026-09-29 A | 2026-10-07 A | A72230 | 100% | 2027-01-24 | 2027-01-27 |  |  | ICKMO1-cost unite [15137.5 $]; boom truck [200 h]; labor [1200 h]; Physical Units [130431 h] | 15,137.46 | 15,137.46 | ZNA | CON | MH |
| A72260 |  | Testing & Inspection | 8d | 2026-12-15 | 2026-12-24 | A72240 |  |  |  | 0.28d | 17d | ICKMO1-cost unite [3363.87 $]; labor [1200 h]; Physical Units [28984.5 h] | 3,363.87 |  | ZNA | CON |  |
| A72270 |  | Backfilling & Compaction | 8d | 2027-01-13 | 2027-01-23 | A72260, A72250, A72320 |  |  |  | -16.72d | 0d | ICKMO1-cost unite [6727.76 $]; Roller compactor [200 h]; Physical Units [57969.2 h] | 6,727.76 |  | ZNA | CON |  |
|  | MH-A63 /MH-A62 | **MH-A63 /MH-A62** |  | 2026-09-29 | 2027-02-01 |  |  |  |  |  |  |  |  |  |  |  |  |
| A72180 |  | Excavation | 3d | 2026-09-29 A | 2026-10-07 A | A72230, A1080 | 100% | 2027-01-24 | 2027-01-27 |  |  | ICKMO1-cost unite [5045.82 $]; Excavator [200 h]; Physical Units [43476.9 h] | 5,045.82 | 5,045.82 | ZNA | CON |  |
| A72190 |  | Pipe Laying | 3d | 2026-09-29 A | 2026-10-07 A | A72180 | 100% | 2027-01-27 | 2027-01-31 |  |  | ICKMO1-cost unite [3363.87 $]; boom truck [200 h]; labor [1200 h]; Storm Network Circular pipes (GRP) [80.79]; Physical Units [28984.5 h] | 3,363.87 | 3,363.87 | ZNA | CON | LAY |
| A72200 |  | Install Manhole | 3d | 2026-09-29 A | 2026-10-07 A | A72180 | 100% | 2027-01-27 | 2027-01-31 |  |  | ICKMO1-cost unite [15137.5 $]; boom truck [200 h]; labor [1200 h]; Physical Units [130431 h] | 15,137.46 | 15,137.46 | ZNA | CON | MH |
| A72210 |  | Testing & Inspection | 8d | 2026-12-15 | 2026-12-24 | A72190 |  |  |  | 8.28d | 25d | ICKMO1-cost unite [3363.87 $]; labor [1200 h]; Physical Units [28984.5 h] | 3,363.87 |  | ZNA | CON |  |
| A72220 |  | Backfilling & Compaction | 8d | 2027-01-23 | 2027-02-01 | A72210, A72200, A72270 |  |  |  | -16.72d | 0d | ICKMO1-cost unite [6727.76 $]; Roller compactor [200 h]; Physical Units [57969.2 h] | 6,727.76 |  | ZNA | CON |  |

| ID | WBS | Activity | Duration | Start | Finish | Predecessors | Complete | Planned start | Planned finish | Total float | Free float | Resources | Cost | Actual cost | ALKHARJ INDUSTERIAL AREA - PROJECT ZONES | ALKHARJ INDUSTERIAL AREA - DECEPLINS | ALKHARJ INDUSTERIAL AREA - Wet networks |
| --- | --- | --- | --- | --- | --- | --- | --- | --- | --- | --- | --- | --- | --- | --- | --- | --- | --- |
|  | MH-A64 /MH-A63 | **MH-A64 /MH-A63** |  | 2026-09-29 | 2027-02-10 |  |  |  |  |  |  |  |  |  |  |  |  |
| A72130 |  | Excavation | 3d | 2026-09-29 A | 2026-10-07 A | A72180, A1080 | 100% | 2027-01-27 | 2027-01-31 |  |  | ICKMO1-cost unite [5045.82 $]; Excavator [200 h]; Physical Units [43476.9 h] | 5,045.82 | 5,045.82 | ZNA | CON |  |
| A72140 |  | Pipe Laying | 3d | 2026-09-29 A | 2026-10-07 A | A72130 | 100% | 2027-01-31 | 2027-02-03 |  |  | ICKMO1-cost unite [3363.87 $]; boom truck [200 h]; labor [1200 h]; Storm Network Circular pipes (GRP) [80.79]; Physical Units [28984.5 h] | 3,363.87 | 3,363.87 | ZNA | CON | LAY |
| A72150 |  | Install Manhole | 3d | 2026-09-29 A | 2026-10-07 A | A72130 | 100% | 2027-01-31 | 2027-02-03 |  |  | ICKMO1-cost unite [15137.5 $]; boom truck [200 h]; labor [1200 h]; Physical Units [130431 h] | 15,137.46 | 15,137.46 | ZNA | CON | MH |
| A72160 |  | Testing & Inspection | 8d | 2026-12-15 | 2026-12-24 | A72140 |  |  |  | 16.28d | 33d | ICKMO1-cost unite [3363.87 $]; labor [1200 h]; Physical Units [28984.5 h] | 3,363.87 |  | ZNA | CON |  |
| A72170 |  | Backfilling & Compaction | 8d | 2027-02-01 | 2027-02-10 | A72160, A72150, A72220 |  |  |  | -16.72d | 0d | ICKMO1-cost unite [6727.76 $]; Roller compactor [200 h]; Physical Units [57969.2 h] | 6,727.76 |  | ZNA | CON |  |
|  | LR 04 | **LR 04** |  | 2026-08-20 | 2026-12-21 |  |  |  |  |  |  |  |  |  |  |  |  |
|  | MH-32-A-16-1 /MH-32-A-16 | **MH-32-A-16-1 /MH-32-A-16** |  | 2026-08-20 | 2026-09-28 |  |  |  |  |  |  |  |  |  |  |  |  |
| A71730 |  | Excavation | 4d | 2026-08-20 A | 2026-09-28 A | A59320, A59330, A1080 | 100% | 2026-03-28 | 2026-03-31 |  |  | ICKMO1-cost unite [19462.5 $]; Excavator [200 h]; Physical Units [167697 h] | 19,462.45 | 19,462.45 | ZNA | CON |  |
| A71740 |  | Pipe Laying | 4d | 2026-08-20 A | 2026-09-28 A | A71730 | 100% | 2026-04-01 | 2026-04-05 |  |  | ICKMO1-cost unite [12975 $]; boom truck [200 h]; labor [1200 h]; Storm Network Circular pipes (GRP) [80.79]; Physical Units [111798 h] | 12,974.97 | 12,974.97 | ZNA | CON | LAY |
| A71750 |  | Install Manhole | 4d | 2026-08-20 A | 2026-09-28 A | A71730 | 100% | 2026-04-01 | 2026-04-05 |  |  | ICKMO1-cost unite [58387.4 $]; boom truck [200 h]; labor [1200 h]; Physical Units [503090 h] | 58,387.36 | 58,387.36 | ZNA | CON | MH |
| A71760 |  | Testing & Inspection | 10d | 2026-08-20 A | 2026-09-28 A | A71740 | 100% | 2026-12-02 | 2026-12-13 |  |  | ICKMO1-cost unite [12975 $]; labor [1200 h]; Physical Units [111798 h] | 12,974.97 | 12,974.97 | ZNA | CON |  |
| A71770 |  | Backfilling & Compaction | 10d | 2026-08-20 A | 2026-09-28 A | A71760, A71750 | 100% | 2026-12-14 | 2026-12-24 |  |  | ICKMO1-cost unite [25949.9 $]; Roller compactor [200 h]; Physical Units [223595 h] | 25,949.94 | 25,949.94 | ZNA | CON |  |
|  | MH-32-A-16-2 /MH-32-A-16-1 | **MH-32-A-16-2 /MH-32-A-16-1** |  | 2026-08-20 | 2026-09-28 |  |  |  |  |  |  |  |  |  |  |  |  |
| A71680 |  | Excavation | 4d | 2026-08-20 A | 2026-09-28 A | A71730, A1080, A58910 | 100% | 2026-09-23 | 2026-09-27 |  |  | ICKMO1-cost unite [19462.5 $]; Excavator [200 h]; Physical Units [167697 h] | 19,462.45 | 19,462.45 | ZNA | CON |  |
| A71690 |  | Pipe Laying | 10d | 2026-08-20 A | 2026-09-28 A | A71680 | 100% | 2026-09-28 | 2026-10-08 |  |  | ICKMO1-cost unite [12975 $]; boom truck [200 h]; labor [1200 h]; Storm Network Circular pipes (GRP) [80.79]; Physical Units [111798 h] | 12,974.97 | 12,974.97 | ZNA | CON | LAY |
| A71700 |  | Install Manhole | 10d | 2026-08-20 A | 2026-09-28 A | A71680 | 100% | 2026-09-28 | 2026-10-08 |  |  | ICKMO1-cost unite [58387.4 $]; boom truck [200 h]; labor [1200 h]; Physical Units [503090 h] | 58,387.36 | 58,387.36 | ZNA | CON | MH |
| A71710 |  | Testing & Inspection | 10d | 2026-08-20 A | 2026-09-28 A | A71690 | 100% | 2027-05-20 | 2027-06-01 |  |  | ICKMO1-cost unite [12975 $]; labor [1200 h]; Physical Units [111798 h] | 12,974.97 | 12,974.97 | ZNA | CON |  |
| A71720 |  | Backfilling & Compaction | 10d | 2026-08-20 A | 2026-09-28 A | A71710, A71700, A71770 | 100% | 2027-06-01 | 2027-06-13 |  |  | ICKMO1-cost unite [25949.9 $]; Roller compactor [200 h]; Physical Units [223595 h] | 25,949.94 | 25,949.94 | ZNA | CON |  |
|  | MH-32-A-16-3 /MH-32-A-16-2 | **MH-32-A-16-3 /MH-32-A-16-2** |  | 2026-08-20 | 2026-09-28 |  |  |  |  |  |  |  |  |  |  |  |  |
| A71630 |  | Excavation | 10d | 2026-08-20 A | 2026-09-28 A | A71680, A1080 | 100% | 2026-09-28 | 2026-10-08 |  |  | ICKMO1-cost unite [19462.5 $]; Excavator [200 h]; Physical Units [167697 h] | 19,462.45 | 19,462.45 | ZNA | CON |  |
| A71640 |  | Pipe Laying | 10d | 2026-08-20 A | 2026-09-28 A | A71630 | 100% | 2026-10-10 | 2026-10-20 |  |  | ICKMO1-cost unite [12975 $]; boom truck [200 h]; labor [1200 h]; Storm Network Circular pipes (GRP) [80.79]; Physical Units [111798 h] | 12,974.97 | 12,974.97 | ZNA | CON | LAY |
| A71650 |  | Install Manhole | 10d | 2026-08-20 A | 2026-09-28 A | A71630 | 100% | 2026-10-10 | 2026-10-20 |  |  | ICKMO1-cost unite [58387.4 $]; boom truck [200 h]; labor [1200 h]; Physical Units [503090 h] | 58,387.36 | 58,387.36 | ZNA | CON | MH |
| A71660 |  | Testing & Inspection | 10d | 2026-08-20 A | 2026-09-28 A | A71640 | 100% | 2027-05-20 | 2027-06-01 |  |  | ICKMO1-cost unite [12975 $]; labor [1200 h]; Physical Units [111798 h] | 12,974.97 | 12,974.97 | ZNA | CON |  |
| A71670 |  | Backfilling & Compaction | 10d | 2026-08-20 A | 2026-09-28 A | A71660, A71650, A71720 | 100% | 2027-06-13 | 2027-06-24 |  |  | ICKMO1-cost unite [25949.9 $]; Roller compactor [200 h]; Physical Units [223595 h] | 25,949.94 | 25,949.94 | ZNA | CON |  |

| ID | WBS | Activity | Duration | Start | Finish | Predecessors | Complete | Planned start | Planned finish | Total float | Free float | Resources | Cost | Actual cost | ALKHARJ INDUSTERIAL AREA - PROJECT ZONES | ALKHARJ INDUSTERIAL AREA - DECEPLINS | ALKHARJ INDUSTERIAL AREA - Wet networks |
| --- | --- | --- | --- | --- | --- | --- | --- | --- | --- | --- | --- | --- | --- | --- | --- | --- | --- |
|  | MH-32-A-16-4 /MH-32-A-16-3 | **MH-32-A-16-4 /MH-32-A-16-3** |  | 2026-08-20 | 2026-09-28 |  |  |  |  |  |  |  |  |  |  |  |  |
| A71580 |  | Excavation | 10d | 2026-08-20 A | 2026-09-28 A | A71630, A1080 | 100% | 2026-10-10 | 2026-10-20 |  |  | ICKMO1-cost unite [19462.5 $]; Excavator [200 h]; Physical Units [167697 h] | 19,462.45 | 19,462.45 | ZNA | CON |  |
| A71590 |  | Pipe Laying | 10d | 2026-08-20 A | 2026-09-28 A | A71580 | 100% | 2026-10-21 | 2026-11-01 |  |  | ICKMO1-cost unite [12975 $]; boom truck [200 h]; labor [1200 h]; Storm Network Circular pipes (GRP) [80.79]; Physical Units [111798 h] | 12,974.97 | 12,974.97 | ZNA | CON | LAY |
| A71600 |  | Install Manhole | 10d | 2026-08-20 A | 2026-09-28 A | A71580 | 100% | 2026-10-21 | 2026-11-01 |  |  | ICKMO1-cost unite [58387.4 $]; boom truck [200 h]; labor [1200 h]; Physical Units [503090 h] | 58,387.36 | 58,387.36 | ZNA | CON | MH |
| A71610 |  | Testing & Inspection | 10d | 2026-08-20 A | 2026-09-28 A | A71590 | 100% | 2027-01-02 | 2027-01-13 |  |  | ICKMO1-cost unite [12975 $]; labor [1200 h]; Physical Units [111798 h] | 12,974.97 | 12,974.97 | ZNA | CON |  |
| A71620 |  | Backfilling & Compaction | 10d | 2026-08-20 A | 2026-09-28 A | A71610, A71600, A71670 | 100% | 2027-06-24 | 2027-07-06 |  |  | ICKMO1-cost unite [25949.9 $]; Roller compactor [200 h]; Physical Units [223595 h] | 25,949.94 | 25,949.94 | ZNA | CON |  |
|  | MH-32-A-16-5 /MH-32-A-16-4 | **MH-32-A-16-5 /MH-32-A-16-4** |  | 2026-08-20 | 2026-12-21 |  |  |  |  |  |  |  |  |  |  |  |  |
| A71530 |  | Excavation | 10d | 2026-08-20 A | 2026-09-28 A | A71580, A1080 | 100% | 2026-10-21 | 2026-11-01 |  |  | ICKMO1-cost unite [19462.5 $]; Excavator [200 h]; Physical Units [167697 h] | 19,462.45 | 19,462.45 | ZNA | CON |  |
| A71540 |  | Pipe Laying | 10d | 2026-08-20 A | 2026-09-28 A | A71530 | 100% | 2026-11-02 | 2026-11-12 |  |  | ICKMO1-cost unite [12975 $]; boom truck [200 h]; labor [1200 h]; Storm Network Circular pipes (GRP) [80.79]; Physical Units [111798 h] | 12,974.97 | 12,974.97 | ZNA | CON | LAY |
| A71550 |  | Install Manhole | 10d | 2026-08-20 A | 2026-09-28 A | A71530 | 100% | 2026-11-02 | 2026-11-12 |  |  | ICKMO1-cost unite [58387.4 $]; boom truck [200 h]; labor [1200 h]; Physical Units [503090 h] | 58,387.36 | 58,387.36 | ZNA | CON | MH |
| A71570 |  | Backfilling & Compaction | 10d | 2026-08-20 A | 2026-09-28 A | A71560, A71550, A71620 | 100% | 2027-07-06 | 2027-07-18 |  |  | ICKMO1-cost unite [25949.9 $]; Roller compactor [200 h]; Physical Units [223595 h] | 25,949.94 | 25,949.94 | ZNA | CON |  |
| A71560 |  | Testing & Inspection | 10d | 2026-12-09 | 2026-12-21 | A71540 |  |  |  | 33.28d | 0d | ICKMO1-cost unite [12975 $]; labor [1200 h]; Physical Units [111798 h] | 12,974.97 |  | ZNA | CON |  |
|  | MH-32-A-16-6 /MH-32-A-16-5 | **MH-32-A-16-6 /MH-32-A-16-5** |  | 2026-08-20 | 2026-12-21 |  |  |  |  |  |  |  |  |  |  |  |  |
| A71480 |  | Excavation | 10d | 2026-08-20 A | 2026-09-28 A | A71530, A1080 | 100% | 2026-11-02 | 2026-11-12 |  |  | ICKMO1-cost unite [19462.5 $]; Excavator [200 h]; Physical Units [167697 h] | 19,462.45 | 19,462.45 | ZNA | CON |  |
| A71490 |  | Pipe Laying | 10d | 2026-08-20 A | 2026-09-28 A | A71480 | 100% | 2026-11-14 | 2026-11-24 |  |  | ICKMO1-cost unite [12975 $]; boom truck [200 h]; labor [1200 h]; Storm Network Circular pipes (GRP) [80.79]; Physical Units [111798 h] | 12,974.97 | 12,974.97 | ZNA | CON | LAY |
| A71500 |  | Install Manhole | 10d | 2026-08-20 A | 2026-09-28 A | A71480 | 100% | 2026-11-14 | 2026-11-24 |  |  | ICKMO1-cost unite [58387.4 $]; boom truck [200 h]; labor [1200 h]; Physical Units [503090 h] | 58,387.36 | 58,387.36 | ZNA | CON | MH |
| A71520 |  | Backfilling & Compaction | 10d | 2026-08-20 A | 2026-09-28 A | A71510, A71500, A71570 | 100% | 2027-07-18 | 2027-07-29 |  |  | ICKMO1-cost unite [25949.9 $]; Roller compactor [200 h]; Physical Units [223595 h] | 25,949.94 | 25,949.94 | ZNA | CON |  |
| A71510 |  | Testing & Inspection | 10d | 2026-12-09 | 2026-12-21 | A71490 |  |  |  | 33.28d | 0d | ICKMO1-cost unite [12975 $]; labor [1200 h]; Physical Units [111798 h] | 12,974.97 |  | ZNA | CON |  |
|  | MH-32-A-16-7 /MH-32-A-16-6 | **MH-32-A-16-7 /MH-32-A-16-6** |  | 2026-08-20 | 2026-12-21 |  |  |  |  |  |  |  |  |  |  |  |  |
| A71430 |  | Excavation | 10d | 2026-08-20 A | 2026-09-28 A | A71480, A1080 | 100% | 2026-11-14 | 2026-11-24 |  |  | ICKMO1-cost unite [19462.5 $]; Excavator [200 h]; Physical Units [167697 h] | 19,462.45 | 19,462.45 | ZNA | CON |  |
| A71440 |  | Pipe Laying | 10d | 2026-08-20 A | 2026-09-28 A | A71430 | 100% | 2026-11-25 | 2026-12-06 |  |  | ICKMO1-cost unite [12975 $]; boom truck [200 h]; labor [1200 h]; Storm Network Circular pipes (GRP) [80.79]; Physical Units [111798 h] | 12,974.97 | 12,974.97 | ZNA | CON | LAY |
| A71450 |  | Install Manhole | 10d | 2026-08-20 A | 2026-09-28 A | A71430 | 100% | 2026-11-25 | 2026-12-06 |  |  | ICKMO1-cost unite [58387.4 $]; boom truck [200 h]; labor [1200 h]; Physical Units [503090 h] | 58,387.36 | 58,387.36 | ZNA | CON | MH |
| A71470 |  | Backfilling & Compaction | 10d | 2026-08-20 A | 2026-09-28 A | A71460, A71450, A71520 | 100% | 2027-07-29 | 2027-08-10 |  |  | ICKMO1-cost unite [25949.9 $]; Roller compactor [200 h]; Physical Units [223595 h] | 25,949.94 | 25,949.94 | ZNA | CON |  |
| A71460 |  | Testing & Inspection | 10d | 2026-12-09 | 2026-12-21 | A71440 |  |  |  | 33.28d | 0d | ICKMO1-cost unite [12975 $]; labor [1200 h]; Physical Units [111798 h] | 12,974.97 |  | ZNA | CON |  |

| ID | WBS | Activity | Duration | Start | Finish | Predecessors | Complete | Planned start | Planned finish | Total float | Free float | Resources | Cost | Actual cost | ALKHARJ INDUSTERIAL AREA - PROJECT ZONES | ALKHARJ INDUSTERIAL AREA - DECEPLINS | ALKHARJ INDUSTERIAL AREA - Wet networks |
| --- | --- | --- | --- | --- | --- | --- | --- | --- | --- | --- | --- | --- | --- | --- | --- | --- | --- |
|  | LR 05 | **LR 05** |  | 2026-08-20 | 2027-02-13 |  |  |  |  |  |  |  |  |  |  |  |  |
|  | MH-36-A-13 /MH-36-A-15=2 | **MH-36-A-13 /MH-36-A-15=2** |  | 2026-08-20 | 2027-02-13 |  |  |  |  |  |  |  |  |  |  |  |  |
| A71180 |  | Excavation | 14d | 2026-08-20 A | 2026-09-28 A | A71230, A1080 | 100% | 2026-11-11 | 2026-11-26 |  |  | ICKMO1-cost unite [28854.1 $]; Excavator [200 h]; Physical Units [248619 h] | 28,854.13 | 28,854.13 | ZNA | CON |  |
| A71190 |  | Pipe Laying | 14d | 2026-08-20 A | 2026-09-28 A | A71180 | 100% | 2027-01-02 | 2027-01-18 |  |  | ICKMO1-cost unite [19236.1 $]; boom truck [200 h]; labor [1200 h]; Storm Network Circular pipes (GRP) [80.79]; Physical Units [165746 h] | 19,236.08 | 19,236.08 | ZNA | CON | LAY |
| A71200 |  | Install Manhole | 14d | 2026-08-20 A | 2026-09-28 A | A71180 | 100% | 2027-01-02 | 2027-01-18 |  |  | ICKMO1-cost unite [86562.4 $]; boom truck [200 h]; labor [1200 h]; Physical Units [745857 h] | 86,562.38 | 86,562.38 | ZNA | CON | MH |
| A71210 |  | Testing & Inspection | 14d | 2026-12-09 | 2026-12-26 | A71190 |  |  |  | 15.28d | 28d | ICKMO1-cost unite [19236.1 $]; labor [1200 h]; Physical Units [165746 h] | 19,236.08 |  | ZNA | CON |  |
| A71220 |  | Backfilling & Compaction | 14d | 2027-01-27 | 2027-02-13 | A71210, A71200, A71270 |  |  |  | -12.72d | 4d | ICKMO1-cost unite [38472.2 $]; Roller compactor [200 h]; Physical Units [331492 h] | 38,472.17 |  | ZNA | CON |  |
|  | MH-36-A-14 /MH-36-A-13 | **MH-36-A-14 /MH-36-A-13** |  | 2026-08-20 | 2026-09-28 |  |  |  |  |  |  |  |  |  |  |  |  |
| A71230 |  | Excavation | 14d | 2026-08-20 A | 2026-09-28 A | A71280, A1080 | 100% | 2026-10-26 | 2026-11-10 |  |  | ICKMO1-cost unite [28854.1 $]; Excavator [200 h]; Physical Units [248619 h] | 28,854.13 | 28,854.13 | ZNA | CON |  |
| A71240 |  | Pipe Laying | 14d | 2026-08-20 A | 2026-09-28 A | A71230 | 100% | 2027-02-11 | 2027-02-28 |  |  | ICKMO1-cost unite [19236.1 $]; boom truck [200 h]; labor [1200 h]; Storm Network Circular pipes (GRP) [80.79]; Physical Units [165746 h] | 19,236.08 | 19,236.08 | ZNA | CON | LAY |
| A71250 |  | Install Manhole | 14d | 2026-09-05 A | 2026-09-28 A | A71230 | 100% | 2027-02-11 | 2027-02-28 |  |  | ICKMO1-cost unite [86562.4 $]; boom truck [200 h]; labor [1200 h]; Physical Units [745857 h] | 86,562.38 | 86,562.38 | ZNA | CON | MH |
| A71260 |  | Testing & Inspection | 14d | 2026-09-05 A | 2026-09-28 A | A71240 | 100% | 2027-01-02 | 2027-01-18 |  |  | ICKMO1-cost unite [19236.1 $]; labor [1200 h]; Physical Units [165746 h] | 19,236.08 | 19,236.08 | ZNA | CON |  |
| A71270 |  | Backfilling & Compaction | 14d | 2026-09-05 A | 2026-09-28 A | A71260, A71250, A71320 | 100% | 2027-02-20 | 2027-03-08 |  |  | ICKMO1-cost unite [38472.2 $]; Roller compactor [200 h]; Physical Units [331492 h] | 38,472.17 | 38,472.17 | ZNA | CON |  |
|  | MH-36-A-15 /MH-36-A-14 | **MH-36-A-15 /MH-36-A-14** |  | 2026-08-20 | 2027-01-27 |  |  |  |  |  |  |  |  |  |  |  |  |
| A71280 |  | Excavation | 14d | 2026-08-20 A | 2026-09-28 A | A71330, A1080 | 100% | 2026-10-10 | 2026-10-25 |  |  | ICKMO1-cost unite [28854.1 $]; Excavator [200 h]; Physical Units [248619 h] | 28,854.13 | 28,854.13 | ZNA | CON |  |
| A71290 |  | Pipe Laying | 14d | 2026-08-20 A | 2026-09-28 A | A71280 | 100% | 2027-02-11 | 2027-02-28 |  |  | ICKMO1-cost unite [19236.1 $]; boom truck [200 h]; labor [1200 h]; Storm Network Circular pipes (GRP) [80.79]; Physical Units [165746 h] | 19,236.08 | 19,236.08 | ZNA | CON | LAY |
| A71300 |  | Install Manhole | 14d | 2026-08-20 A | 2026-09-28 A | A71280 | 100% | 2027-02-11 | 2027-02-28 |  |  | ICKMO1-cost unite [86562.4 $]; boom truck [200 h]; labor [1200 h]; Physical Units [745857 h] | 86,562.38 | 86,562.38 | ZNA | CON | MH |
| A71310 |  | Testing & Inspection | 14d | 2026-12-09 | 2026-12-26 | A71290 |  |  |  | 1.28d | 14d | ICKMO1-cost unite [19236.1 $]; labor [1200 h]; Physical Units [165746 h] | 19,236.08 |  | ZNA | CON |  |
| A71320 |  | Backfilling & Compaction | 14d | 2027-01-11 | 2027-01-27 | A71310, A71300, A71370 |  |  |  | -12.72d | 0d | ICKMO1-cost unite [38472.2 $]; Roller compactor [200 h]; Physical Units [331492 h] | 38,472.17 |  | ZNA | CON |  |
|  | MH-36-A-16 /MH-36-A-15 | **MH-36-A-16 /MH-36-A-15** |  | 2026-08-20 | 2027-01-11 |  |  |  |  |  |  |  |  |  |  |  |  |
| A71330 |  | Excavation | 14d | 2026-08-20 A | 2026-09-28 A | A71380, A1080, A58910 | 100% | 2026-09-23 | 2026-10-08 |  |  | ICKMO1-cost unite [28854.1 $]; Excavator [200 h]; Physical Units [248619 h] | 28,854.13 | 28,854.13 | ZNA | CON |  |
| A71340 |  | Pipe Laying | 14d | 2026-08-20 A | 2026-09-28 A | A71330 | 100% | 2027-02-11 | 2027-02-28 |  |  | ICKMO1-cost unite [19236.1 $]; boom truck [200 h]; labor [1200 h]; Storm Network Circular pipes (GRP) [80.79]; Physical Units [165746 h] | 19,236.08 | 19,236.08 | ZNA | CON | LAY |
| A71350 |  | Install Manhole | 14d | 2026-08-20 A | 2026-09-28 A | A71330 | 100% | 2027-02-11 | 2027-02-28 |  |  | ICKMO1-cost unite [86562.4 $]; boom truck [200 h]; labor [1200 h]; Physical Units [745857 h] | 86,562.38 | 86,562.38 | ZNA | CON | MH |
| A71360 |  | Testing & Inspection | 14d | 2026-12-09 | 2026-12-26 | A71340 |  |  |  | -12.72d | 0d | ICKMO1-cost unite [19236.1 $]; labor [1200 h]; Physical Units [165746 h] | 19,236.08 |  | ZNA | CON |  |
| A71370 |  | Backfilling & Compaction | 14d | 2026-12-26 | 2027-01-11 | A71360, A71350, A71420 |  |  |  | -12.72d | 0d | ICKMO1-cost unite [38472.2 $]; Roller compactor [200 h]; Physical Units [331492 h] | 38,472.17 |  | ZNA | CON |  |

| ID | WBS | Activity | Duration | Start | Finish | Predecessors | Complete | Planned start | Planned finish | Total float | Free float | Resources | Cost | Actual cost | ALKHARJ INDUSTERIAL AREA - PROJECT ZONES | ALKHARJ INDUSTERIAL AREA - DECEPLINS | ALKHARJ INDUSTERIAL AREA - Wet networks |
| --- | --- | --- | --- | --- | --- | --- | --- | --- | --- | --- | --- | --- | --- | --- | --- | --- | --- |
|  | MH-36-A-17 /MH-36-A-16 | **MH-36-A-17 /MH-36-A-16** |  | 2026-08-20 | 2026-11-02 |  |  |  |  |  |  |  |  |  |  |  |  |
| A71380 |  | Excavation | 4d | 2026-08-20 A | 2026-09-28 A | A59350, A59360, A1080 | 100% | 2026-03-31 | 2026-04-04 |  |  | ICKMO1-cost unite [28854.1 $]; Excavator [200 h]; Physical Units [248619 h] | 28,854.13 | 28,854.13 | ZNA | CON |  |
| A71390 |  | Pipe Laying | 10d | 2026-08-20 A | 2026-09-28 A | A71380 | 100% | 2026-12-07 | 2026-12-19 |  |  | ICKMO1-cost unite [19236.1 $]; boom truck [200 h]; labor [1200 h]; Storm Network Circular pipes (GRP) [80.79]; Physical Units [165746 h] | 19,236.08 | 19,236.08 | ZNA | CON | LAY |
| A71400 |  | Install Manhole | 10d | 2026-08-20 A | 2026-09-28 A | A71380 | 100% | 2026-09-26 | 2026-10-07 |  |  | ICKMO1-cost unite [86562.4 $]; boom truck [200 h]; labor [1200 h]; Physical Units [745857 h] | 86,562.38 | 86,562.38 | ZNA | CON | MH |
| A71410 |  | Testing & Inspection | 10d | 2026-10-10 | 2026-10-21 | A71390 |  |  |  | -90.1d | 0d | ICKMO1-cost unite [19236.1 $]; labor [1200 h]; Physical Units [165746 h] | 19,236.08 |  | ZNA | CON |  |
| A71420 |  | Backfilling & Compaction | 10d | 2026-10-21 | 2026-11-02 | A71410, A71400 |  |  |  | -90.1d | 0d | ICKMO1-cost unite [38472.2 $]; Roller compactor [200 h]; Physical Units [331492 h] | 38,472.17 |  | ZNA | CON |  |
|  | LR 06 | **LR 06** |  | 2026-08-20 | 2027-01-13 |  |  |  |  |  |  |  |  |  |  |  |  |
|  | MH-26-10-1 /MH-26-10 | **MH-26-10-1 /MH-26-10** |  | 2026-09-20 | 2026-09-29 |  |  |  |  |  |  |  |  |  |  |  |  |
| A71130 |  | Excavation | 10d | 2026-09-20 A | 2026-09-29 A | A59380, A59390, A1080 | 100% | 2026-10-03 | 2026-10-14 |  |  | ICKMO1-cost unite [22706.2 $]; Excavator [200 h]; Physical Units [195646 h] | 22,706.19 | 22,706.19 | ZNA | CON |  |
| A71140 |  | Pipe Laying | 10d | 2026-09-20 A | 2026-09-29 A | A71130 | 100% | 2026-10-14 | 2026-10-26 |  |  | ICKMO1-cost unite [15137.5 $]; boom truck [200 h]; labor [1200 h]; Storm Network Circular pipes (GRP) [80.79]; Physical Units [130431 h] | 15,137.46 | 15,137.46 | ZNA | CON | LAY |
| A71150 |  | Install Manhole | 10d | 2026-09-20 A | 2026-09-29 A | A71130 | 100% | 2026-10-10 | 2026-10-21 |  |  | ICKMO1-cost unite [68118.6 $]; boom truck [200 h]; labor [1200 h]; Physical Units [586938 h] | 68,118.58 | 68,118.58 | ZNA | CON | MH |
| A71160 |  | Testing & Inspection | 10d | 2026-09-20 A | 2026-09-29 A | A71140 | 100% | 2026-10-10 | 2026-10-21 |  |  | ICKMO1-cost unite [15137.5 $]; labor [1200 h]; Physical Units [130431 h] | 15,137.46 | 15,137.46 | ZNA | CON |  |
| A71170 |  | Backfilling & Compaction | 10d | 2026-09-20 A | 2026-09-29 A | A71160, A71150 | 100% | 2026-10-21 | 2026-11-02 |  |  | ICKMO1-cost unite [30274.9 $]; Roller compactor [200 h]; Physical Units [260861 h] | 30,274.93 | 30,274.93 | ZNA | CON |  |
|  | MH-55-A-1 /MH-55-A | **MH-55-A-1 /MH-55-A** |  | 2026-08-20 | 2026-12-21 |  |  |  |  |  |  |  |  |  |  |  |  |
| A70880 |  | Excavation | 10d | 2026-08-20 A | 2026-09-28 A | A70930, A1080 | 100% | 2026-11-09 | 2026-11-19 |  |  | ICKMO1-cost unite [22706.2 $]; Excavator [200 h]; Physical Units [195646 h] | 22,706.19 | 22,706.19 | ZNA | CON |  |
| A70890 |  | Pipe Laying | 10d | 2026-08-20 A | 2026-09-28 A | A70880 | 100% | 2026-11-21 | 2026-12-01 |  |  | ICKMO1-cost unite [15137.5 $]; boom truck [200 h]; labor [1200 h]; Storm Network Circular pipes (GRP) [80.79]; Physical Units [130431 h] | 15,137.46 | 15,137.46 | ZNA | CON | LAY |
| A70900 |  | Install Manhole | 10d | 2026-08-20 A | 2026-09-28 A | A70880 | 100% | 2026-11-21 | 2026-12-01 |  |  | ICKMO1-cost unite [68118.6 $]; boom truck [200 h]; labor [1200 h]; Physical Units [586938 h] | 68,118.58 | 68,118.58 | ZNA | CON | MH |
| A70920 |  | Backfilling & Compaction | 10d | 2026-08-20 A | 2026-09-28 A | A70910, A70900, A70970 | 100% | 2027-07-29 | 2027-08-10 |  |  | ICKMO1-cost unite [30274.9 $]; Roller compactor [200 h]; Physical Units [260861 h] | 30,274.93 | 30,274.93 | ZNA | CON |  |
| A70910 |  | Testing & Inspection | 10d | 2026-12-09 | 2026-12-21 | A70890 |  |  |  | 33.28d | 20d | ICKMO1-cost unite [15137.5 $]; labor [1200 h]; Physical Units [130431 h] | 15,137.46 |  | ZNA | CON |  |
|  | MH-55-A-2 /MH-55-A-1 | **MH-55-A-2 /MH-55-A-1** |  | 2026-08-20 | 2026-12-21 |  |  |  |  |  |  |  |  |  |  |  |  |
| A70930 |  | Excavation | 10d | 2026-08-20 A | 2026-09-28 A | A70980, A1080 | 100% | 2026-10-28 | 2026-11-08 |  |  | ICKMO1-cost unite [22706.2 $]; Excavator [200 h]; Physical Units [195646 h] | 22,706.19 | 22,706.19 | ZNA | CON |  |
| A70940 |  | Pipe Laying | 10d | 2026-08-20 A | 2026-09-28 A | A70930 | 100% | 2026-11-09 | 2026-11-19 |  |  | ICKMO1-cost unite [15137.5 $]; boom truck [200 h]; labor [1200 h]; Storm Network Circular pipes (GRP) [80.79]; Physical Units [130431 h] | 15,137.46 | 15,137.46 | ZNA | CON | LAY |
| A70950 |  | Install Manhole | 10d | 2026-08-20 A | 2026-09-28 A | A70930 | 100% | 2026-11-09 | 2026-11-19 |  |  | ICKMO1-cost unite [68118.6 $]; boom truck [200 h]; labor [1200 h]; Physical Units [586938 h] | 68,118.58 | 68,118.58 | ZNA | CON | MH |
| A70970 |  | Backfilling & Compaction | 10d | 2026-08-20 A | 2026-09-28 A | A70960, A70950, A71020 | 100% | 2027-07-18 | 2027-07-29 |  |  | ICKMO1-cost unite [30274.9 $]; Roller compactor [200 h]; Physical Units [260861 h] | 30,274.93 | 30,274.93 | ZNA | CON |  |
| A70960 |  | Testing & Inspection | 10d | 2026-12-09 | 2026-12-21 | A70940 |  |  |  | 33.28d | 20d | ICKMO1-cost unite [15137.5 $]; labor [1200 h]; Physical Units [130431 h] | 15,137.46 |  | ZNA | CON |  |

| ID | WBS | Activity | Duration | Start | Finish | Predecessors | Complete | Planned start | Planned finish | Total float | Free float | Resources | Cost | Actual cost | ALKHARJ INDUSTERIAL AREA - PROJECT ZONES | ALKHARJ INDUSTERIAL AREA - DECEPLINS | ALKHARJ INDUSTERIAL AREA - Wet networks |
| --- | --- | --- | --- | --- | --- | --- | --- | --- | --- | --- | --- | --- | --- | --- | --- | --- | --- |
|  | MH-55-A-3 /MH-55-A-2 | **MH-55-A-3 /MH-55-A-2** |  | 2026-08-20 | 2026-12-21 |  |  |  |  |  |  |  |  |  |  |  |  |
| A70980 |  | Excavation | 10d | 2026-08-20 A | 2026-09-28 A | A71030, A1080 | 100% | 2026-10-17 | 2026-10-27 |  |  | ICKMO1-cost unite [22706.2 $]; Excavator [200 h]; Physical Units [195646 h] | 22,706.19 | 22,706.19 | ZNA | CON |  |
| A70990 |  | Pipe Laying | 10d | 2026-08-20 A | 2026-09-28 A | A70980 | 100% | 2026-10-28 | 2026-11-08 |  |  | ICKMO1-cost unite [15137.5 $]; boom truck [200 h]; labor [1200 h]; Storm Network Circular pipes (GRP) [80.79]; Physical Units [130431 h] | 15,137.46 | 15,137.46 | ZNA | CON | LAY |
| A71000 |  | Install Manhole | 10d | 2026-08-20 A | 2026-09-28 A | A70980 | 100% | 2026-10-28 | 2026-11-08 |  |  | ICKMO1-cost unite [68118.6 $]; boom truck [200 h]; labor [1200 h]; Physical Units [586938 h] | 68,118.58 | 68,118.58 | ZNA | CON | MH |
| A71020 |  | Backfilling & Compaction | 10d | 2026-08-20 A | 2026-09-28 A | A71010, A71000, A71070 | 100% | 2027-07-06 | 2027-07-18 |  |  | ICKMO1-cost unite [30274.9 $]; Roller compactor [200 h]; Physical Units [260861 h] | 30,274.93 | 30,274.93 | ZNA | CON |  |
| A71010 |  | Testing & Inspection | 10d | 2026-12-09 | 2026-12-21 | A70990 |  |  |  | 33.28d | 20d | ICKMO1-cost unite [15137.5 $]; labor [1200 h]; Physical Units [130431 h] | 15,137.46 |  | ZNA | CON |  |
|  | MH-55-A-4 /MH-55-A-3 | **MH-55-A-4 /MH-55-A-3** |  | 2026-08-20 | 2027-01-13 |  |  |  |  |  |  |  |  |  |  |  |  |
| A71030 |  | Excavation | 10d | 2026-08-20 A | 2026-09-28 A | A71080, A1080 | 100% | 2026-10-05 | 2026-10-15 |  |  | ICKMO1-cost unite [22706.2 $]; Excavator [200 h]; Physical Units [195646 h] | 22,706.19 | 22,706.19 | ZNA | CON |  |
| A71040 |  | Pipe Laying | 10d | 2026-08-20 A | 2026-09-28 A | A71030 | 100% | 2027-01-02 | 2027-01-13 |  |  | ICKMO1-cost unite [15137.5 $]; boom truck [200 h]; labor [1200 h]; Storm Network Circular pipes (GRP) [80.79]; Physical Units [130431 h] | 15,137.46 | 15,137.46 | ZNA | CON | LAY |
| A71050 |  | Install Manhole | 10d | 2026-08-20 A | 2026-09-28 A | A71030 | 100% | 2027-01-02 | 2027-01-13 |  |  | ICKMO1-cost unite [68118.6 $]; boom truck [200 h]; labor [1200 h]; Physical Units [586938 h] | 68,118.58 | 68,118.58 | ZNA | CON | MH |
| A71060 |  | Testing & Inspection | 10d | 2026-12-09 | 2026-12-21 | A71040 |  |  |  | 23.28d | 10d | ICKMO1-cost unite [15137.5 $]; labor [1200 h]; Physical Units [130431 h] | 15,137.46 |  | ZNA | CON |  |
| A71070 |  | Backfilling & Compaction | 10d | 2027-01-02 | 2027-01-13 | A71060, A71050, A71120 |  |  |  | 13.28d | 0d | ICKMO1-cost unite [30274.9 $]; Roller compactor [200 h]; Physical Units [260861 h] | 30,274.93 |  | ZNA | CON |  |
|  | MH-55-A-5 /MH-55-A-4 | **MH-55-A-5 /MH-55-A-4** |  | 2026-08-20 | 2027-01-02 |  |  |  |  |  |  |  |  |  |  |  |  |
| A71080 |  | Excavation | 10d | 2026-08-20 A | 2026-09-28 A | A71130, A1080, A58910 | 100% | 2026-09-23 | 2026-10-04 |  |  | ICKMO1-cost unite [22706.2 $]; Excavator [200 h]; Physical Units [195646 h] | 22,706.19 | 22,706.19 | ZNA | CON |  |
| A71090 |  | Pipe Laying | 10d | 2026-08-20 A | 2026-09-28 A | A71080 | 100% | 2027-01-02 | 2027-01-13 |  |  | ICKMO1-cost unite [15137.5 $]; boom truck [200 h]; labor [1200 h]; Storm Network Circular pipes (GRP) [80.79]; Physical Units [130431 h] | 15,137.46 | 15,137.46 | ZNA | CON | LAY |
| A71100 |  | Install Manhole | 10d | 2026-08-20 A | 2026-09-28 A | A71080 | 100% | 2027-01-02 | 2027-01-13 |  |  | ICKMO1-cost unite [68118.6 $]; boom truck [200 h]; labor [1200 h]; Physical Units [586938 h] | 68,118.58 | 68,118.58 | ZNA | CON | MH |
| A71110 |  | Testing & Inspection | 10d | 2026-12-09 | 2026-12-21 | A71090 |  |  |  | 13.28d | 0d | ICKMO1-cost unite [15137.5 $]; labor [1200 h]; Physical Units [130431 h] | 15,137.46 |  | ZNA | CON |  |
| A71120 |  | Backfilling & Compaction | 10d | 2026-12-21 | 2027-01-02 | A71110, A71100, A71170 |  |  |  | 13.28d | 0d | ICKMO1-cost unite [30274.9 $]; Roller compactor [200 h]; Physical Units [260861 h] | 30,274.93 |  | ZNA | CON |  |
|  | LR 07 | **LR 07** |  | 2026-08-20 | 2026-09-28 |  |  |  |  |  |  |  |  |  |  |  |  |
|  | MH-36-A-8-1 /MH-36-A-8 | **MH-36-A-8-1 /MH-36-A-8** |  | 2026-08-20 | 2026-09-28 |  |  |  |  |  |  |  |  |  |  |  |  |
| A70580 |  | Excavation | 10d | 2026-08-20 A | 2026-09-28 A | A1080, A70630 | 100% | 2026-10-28 | 2026-11-08 |  |  | ICKMO1-cost unite [19462.5 $]; Excavator [200 h]; Physical Units [167697 h] | 19,462.45 | 19,462.45 | ZNA | CON |  |
| A70590 |  | Pipe Laying | 10d | 2026-08-20 A | 2026-09-28 A | A70580 | 100% | 2026-11-09 | 2026-11-19 |  |  | ICKMO1-cost unite [12975 $]; boom truck [200 h]; labor [1200 h]; Storm Network Circular pipes (GRP) [80.79]; Physical Units [111798 h] | 12,974.97 | 12,974.97 | ZNA | CON | LAY |
| A70600 |  | Install Manhole | 10d | 2026-08-20 A | 2026-09-28 A | A70580 | 100% | 2026-11-09 | 2026-11-19 |  |  | ICKMO1-cost unite [58387.4 $]; boom truck [200 h]; labor [1200 h]; Physical Units [503090 h] | 58,387.36 | 58,387.36 | ZNA | CON | MH |
| A70610 |  | Testing & Inspection | 10d | 2026-08-20 A | 2026-09-28 A | A70590 | 100% | 2027-05-20 | 2027-06-01 |  |  | ICKMO1-cost unite [12975 $]; labor [1200 h]; Physical Units [111798 h] | 12,974.97 | 12,974.97 | ZNA | CON |  |
| A70620 |  | Backfilling & Compaction | 10d | 2026-08-20 A | 2026-09-28 A | A70610, A70600, A70670, A70630, A1080 | 100% | 2027-07-06 | 2027-07-18 |  |  | ICKMO1-cost unite [25949.9 $]; Roller compactor [200 h]; Physical Units [223595 h] | 25,949.94 | 25,949.94 | ZNA | CON |  |

| ID | WBS | Activity | Duration | Start | Finish | Predecessors | Complete | Planned start | Planned finish | Resources | Cost | Actual cost | ALKHARJ INDUSTERIAL AREA - PROJECT ZONES | ALKHARJ INDUSTERIAL AREA - DECEPLINS | ALKHARJ INDUSTERIAL AREA - Wet networks |
| --- | --- | --- | --- | --- | --- | --- | --- | --- | --- | --- | --- | --- | --- | --- | --- |
|  | MH-36-A-8-2 /MH-36-A-8-1 | **MH-36-A-8-2 /MH-36-A-8-1** |  | 2026-08-20 | 2026-09-28 |  |  |  |  |  |  |  |  |  |  |
| A70630 |  | Excavation | 10d | 2026-08-20 A | 2026-09-28 A | A70830, A1080 | 100% | 2026-10-17 | 2026-10-27 | ICKMO1-cost unite [19462.5 $]; Excavator [200 h]; Physical Units [167697 h] | 19,462.45 | 19,462.45 | ZNA | CON |  |
| A70640 |  | Pipe Laying | 10d | 2026-08-20 A | 2026-09-28 A | A70630 | 100% | 2026-10-28 | 2026-11-08 | ICKMO1-cost unite [12975 $]; boom truck [200 h]; labor [1200 h]; Storm Network Circular pipes (GRP) [80.79]; Physical Units [111798 h] | 12,974.97 | 12,974.97 | ZNA | CON | LAY |
| A70650 |  | Install Manhole | 10d | 2026-08-20 A | 2026-09-28 A | A70630 | 100% | 2026-10-28 | 2026-11-08 | ICKMO1-cost unite [58387.4 $]; boom truck [200 h]; labor [1200 h]; Physical Units [503090 h] | 58,387.36 | 58,387.36 | ZNA | CON | MH |
| A70660 |  | Testing & Inspection | 10d | 2026-08-20 A | 2026-09-28 A | A70640 | 100% | 2027-05-20 | 2027-06-01 | ICKMO1-cost unite [12975 $]; labor [1200 h]; Physical Units [111798 h] | 12,974.97 | 12,974.97 | ZNA | CON |  |
| A70670 |  | Backfilling & Compaction | 10d | 2026-08-20 A | 2026-09-28 A | A70660, A70650, A70870 | 100% | 2027-06-24 | 2027-07-06 | ICKMO1-cost unite [25949.9 $]; Roller compactor [200 h]; Physical Units [223595 h] | 25,949.94 | 25,949.94 | ZNA | CON |  |
|  | MH-36-A-8-3 /MH-36-A-8-2 | **MH-36-A-8-3 /MH-36-A-8-2** |  | 2026-08-20 | 2026-09-28 |  |  |  |  |  |  |  |  |  |  |
| A70830 |  | Excavation | 10d | 2026-08-20 A | 2026-09-28 A | A70730, A1080 | 100% | 2026-10-05 | 2026-10-15 | ICKMO1-cost unite [19462.5 $]; Excavator [200 h]; Physical Units [167697 h] | 19,462.45 | 19,462.45 | ZNA | CON |  |
| A70840 |  | Pipe Laying | 10d | 2026-08-20 A | 2026-09-28 A | A70830 | 100% | 2026-10-17 | 2026-10-27 | ICKMO1-cost unite [12975 $]; boom truck [200 h]; labor [1200 h]; Storm Network Circular pipes (GRP) [80.79]; Physical Units [111798 h] | 12,974.97 | 12,974.97 | ZNA | CON | LAY |
| A70850 |  | Install Manhole | 10d | 2026-08-20 A | 2026-09-28 A | A70830 | 100% | 2026-10-17 | 2026-10-27 | ICKMO1-cost unite [58387.4 $]; boom truck [200 h]; labor [1200 h]; Physical Units [503090 h] | 58,387.36 | 58,387.36 | ZNA | CON | MH |
| A70860 |  | Testing & Inspection | 10d | 2026-08-20 A | 2026-09-28 A | A70840 | 100% | 2027-05-20 | 2027-06-01 | ICKMO1-cost unite [12975 $]; labor [1200 h]; Physical Units [111798 h] | 12,974.97 | 12,974.97 | ZNA | CON |  |
| A70870 |  | Backfilling & Compaction | 10d | 2026-08-20 A | 2026-09-28 A | A70860, A70850, A70770 | 100% | 2027-06-13 | 2027-06-24 | ICKMO1-cost unite [25949.9 $]; Roller compactor [200 h]; Physical Units [223595 h] | 25,949.94 | 25,949.94 | ZNA | CON |  |
|  | MH-36-A-8-4 /MH-36-A-8-3 | **MH-36-A-8-4 /MH-36-A-8-3** |  | 2026-08-20 | 2026-09-28 |  |  |  |  |  |  |  |  |  |  |
| A70730 |  | Excavation | 10d | 2026-08-20 A | 2026-09-28 A | A70780, A1080, A58910 | 100% | 2026-09-23 | 2026-10-04 | ICKMO1-cost unite [19462.5 $]; Excavator [200 h]; Physical Units [167697 h] | 19,462.45 | 19,462.45 | ZNA | CON |  |
| A70740 |  | Pipe Laying | 10d | 2026-08-20 A | 2026-09-28 A | A70730 | 100% | 2026-10-05 | 2026-10-15 | ICKMO1-cost unite [12975 $]; boom truck [200 h]; labor [1200 h]; Storm Network Circular pipes (GRP) [80.79]; Physical Units [111798 h] | 12,974.97 | 12,974.97 | ZNA | CON | LAY |
| A70750 |  | Install Manhole | 10d | 2026-08-20 A | 2026-09-28 A | A70730 | 100% | 2026-10-05 | 2026-10-15 | ICKMO1-cost unite [58387.4 $]; boom truck [200 h]; labor [1200 h]; Physical Units [503090 h] | 58,387.36 | 58,387.36 | ZNA | CON | MH |
| A70760 |  | Testing & Inspection | 10d | 2026-08-20 A | 2026-09-28 A | A70740 | 100% | 2027-05-20 | 2027-06-01 | ICKMO1-cost unite [12975 $]; labor [1200 h]; Physical Units [111798 h] | 12,974.97 | 12,974.97 | ZNA | CON |  |
| A70770 |  | Backfilling & Compaction | 10d | 2026-08-20 A | 2026-09-28 A | A70760, A70750, A70820 | 100% | 2027-06-01 | 2027-06-13 | ICKMO1-cost unite [25949.9 $]; Roller compactor [200 h]; Physical Units [223595 h] | 25,949.94 | 25,949.94 | ZNA | CON |  |
|  | MH-36-A-8-5 /MH-36-A-8-4 | **MH-36-A-8-5 /MH-36-A-8-4** |  | 2026-08-20 | 2026-09-28 |  |  |  |  |  |  |  |  |  |  |
| A70780 |  | Excavation | 10d | 2026-08-20 A | 2026-09-28 A | A59410, A59420, A1080 | 100% | 2026-04-22 | 2026-05-03 | ICKMO1-cost unite [19462.5 $]; Excavator [200 h]; Physical Units [167697 h] | 19,462.45 | 19,462.45 | ZNA | CON |  |
| A70790 |  | Pipe Laying | 10d | 2026-08-20 A | 2026-09-28 A | A70780 | 100% | 2026-05-04 | 2026-05-14 | ICKMO1-cost unite [12975 $]; boom truck [200 h]; labor [1200 h]; Storm Network Circular pipes (GRP) [80.79]; Physical Units [111798 h] | 12,974.97 | 12,974.97 | ZNA | CON | LAY |
| A70800 |  | Install Manhole | 10d | 2026-08-20 A | 2026-09-28 A | A70780 | 100% | 2026-05-04 | 2026-05-14 | ICKMO1-cost unite [58387.4 $]; boom truck [200 h]; labor [1200 h]; Physical Units [503090 h] | 58,387.36 | 58,387.36 | ZNA | CON | MH |
| A70810 |  | Testing & Inspection | 10d | 2026-08-20 A | 2026-09-28 A | A70790 | 100% | 2026-12-07 | 2026-12-19 | ICKMO1-cost unite [12975 $]; labor [1200 h]; Physical Units [111798 h] | 12,974.97 | 12,974.97 | ZNA | CON |  |
| A70820 |  | Backfilling & Compaction | 10d | 2026-08-20 A | 2026-09-28 A | A70810, A70800 | 100% | 2026-12-19 | 2026-12-30 | ICKMO1-cost unite [25949.9 $]; Roller compactor [200 h]; Physical Units [223595 h] | 25,949.94 | 25,949.94 | ZNA | CON |  |

| ID | WBS | Activity | Duration | Start | Finish | Predecessors | Complete | Planned start | Planned finish | Resources | Cost | Actual cost | ALKHARJ INDUSTERIAL AREA - PROJECT ZONES | ALKHARJ INDUSTERIAL AREA - DECEPLINS | ALKHARJ INDUSTERIAL AREA - Wet networks |
| --- | --- | --- | --- | --- | --- | --- | --- | --- | --- | --- | --- | --- | --- | --- | --- |
|  | MH-53-A-1 /MH-53-A | **MH-53-A-1 /MH-53-A** |  | 2026-08-20 | 2026-09-28 |  |  |  |  |  |  |  |  |  |  |
| A70480 |  | Excavation | 10d | 2026-08-20 A | 2026-09-28 A | A70530, A1080 | 100% | 2026-11-21 | 2026-12-01 | ICKMO1-cost unite [19462.5 $]; Excavator [200 h]; Physical Units [167697 h] | 19,462.45 | 19,462.45 | ZNA | CON |  |
| A70490 |  | Pipe Laying | 10d | 2026-08-20 A | 2026-09-28 A | A70480 | 100% | 2026-12-02 | 2026-12-13 | ICKMO1-cost unite [12975 $]; boom truck [200 h]; labor [1200 h]; Storm Network Circular pipes (GRP) [80.79]; Physical Units [111798 h] | 12,974.97 | 12,974.97 | ZNA | CON | LAY |
| A70500 |  | Install Manhole | 10d | 2026-08-20 A | 2026-09-28 A | A70480 | 100% | 2026-12-02 | 2026-12-13 | ICKMO1-cost unite [58387.4 $]; boom truck [200 h]; labor [1200 h]; Physical Units [503090 h] | 58,387.36 | 58,387.36 | ZNA | CON | MH |
| A70510 |  | Testing & Inspection | 10d | 2026-08-20 A | 2026-09-28 A | A70490 | 100% | 2027-05-20 | 2027-06-01 | ICKMO1-cost unite [12975 $]; labor [1200 h]; Physical Units [111798 h] | 12,974.97 | 12,974.97 | ZNA | CON |  |
| A70520 |  | Backfilling & Compaction | 10d | 2026-08-20 A | 2026-09-28 A | A70510, A70500, A70570 | 100% | 2027-07-29 | 2027-08-10 | ICKMO1-cost unite [25949.9 $]; Roller compactor [200 h]; Physical Units [223595 h] | 25,949.94 | 25,949.94 | ZNA | CON |  |
|  | MH-53-A-2 /MH-53-A-1 | **MH-53-A-2 /MH-53-A-1** |  | 2026-08-20 | 2026-09-28 |  |  |  |  |  |  |  |  |  |  |
| A70530 |  | Excavation | 10d | 2026-08-20 A | 2026-09-28 A | A70580, A1080 | 100% | 2026-11-09 | 2026-11-19 | ICKMO1-cost unite [19462.5 $]; Excavator [200 h]; Physical Units [167697 h] | 19,462.45 | 19,462.45 | ZNA | CON |  |
| A70540 |  | Pipe Laying | 10d | 2026-08-20 A | 2026-09-28 A | A70530 | 100% | 2026-11-21 | 2026-12-01 | ICKMO1-cost unite [12975 $]; boom truck [200 h]; labor [1200 h]; Storm Network Circular pipes (GRP) [80.79]; Physical Units [111798 h] | 12,974.97 | 12,974.97 | ZNA | CON | LAY |
| A70550 |  | Install Manhole | 10d | 2026-08-20 A | 2026-09-28 A | A70530 | 100% | 2026-11-21 | 2026-12-01 | ICKMO1-cost unite [58387.4 $]; boom truck [200 h]; labor [1200 h]; Physical Units [503090 h] | 58,387.36 | 58,387.36 | ZNA | CON | MH |
| A70560 |  | Testing & Inspection | 10d | 2026-08-20 A | 2026-09-28 A | A70540 | 100% | 2027-05-20 | 2027-06-01 | ICKMO1-cost unite [12975 $]; labor [1200 h]; Physical Units [111798 h] | 12,974.97 | 12,974.97 | ZNA | CON |  |
| A70570 |  | Backfilling & Compaction | 10d | 2026-08-20 A | 2026-09-28 A | A70560, A70550, A70620 | 100% | 2027-07-18 | 2027-07-29 | ICKMO1-cost unite [25949.9 $]; Roller compactor [200 h]; Physical Units [223595 h] | 25,949.94 | 25,949.94 | ZNA | CON |  |
|  | LR 08 | **LR 08** |  | 2026-08-20 | 2026-09-28 |  |  |  |  |  |  |  |  |  |  |
|  | MH-36-A-6-1 /MH-36-A-6 | **MH-36-A-6-1 /MH-36-A-6** |  | 2026-08-20 | 2026-09-28 |  |  |  |  |  |  |  |  |  |  |
| A70430 |  | Excavation | 10d | 2026-08-20 A | 2026-09-28 A | A59440, A59450, A1080 | 100% | 2026-05-11 | 2026-05-21 | ICKMO1-cost unite [19462.5 $]; Excavator [200 h]; Physical Units [167697 h] | 19,462.45 | 19,462.45 | ZNA | CON |  |
| A70440 |  | Pipe Laying | 10d | 2026-08-20 A | 2026-09-28 A | A70430 | 100% | 2026-05-23 | 2026-06-02 | ICKMO1-cost unite [12975 $]; boom truck [200 h]; labor [1200 h]; Storm Network Circular pipes (GRP) [80.79]; Physical Units [111798 h] | 12,974.97 | 12,974.97 | ZNA | CON | LAY |
| A70450 |  | Install Manhole | 10d | 2026-08-20 A | 2026-09-28 A | A70430 | 100% | 2026-05-23 | 2026-06-02 | ICKMO1-cost unite [58387.4 $]; boom truck [200 h]; labor [1200 h]; Physical Units [503090 h] | 58,387.36 | 58,387.36 | ZNA | CON | MH |
| A70460 |  | Testing & Inspection | 10d | 2026-08-20 A | 2026-09-28 A | A70440 | 100% | 2026-12-16 | 2026-12-28 | ICKMO1-cost unite [12975 $]; labor [1200 h]; Physical Units [111798 h] | 12,974.97 | 12,974.97 | ZNA | CON |  |
| A70470 |  | Backfilling & Compaction | 10d | 2026-08-20 A | 2026-09-28 A | A70460, A70450 | 100% | 2026-12-28 | 2027-01-09 | ICKMO1-cost unite [25949.9 $]; Roller compactor [200 h]; Physical Units [223595 h] | 25,949.94 | 25,949.94 | ZNA | CON |  |
|  | MH-36-A-6-2 /MH-36-A-6-1 | **MH-36-A-6-2 /MH-36-A-6-1** |  | 2026-08-20 | 2026-09-28 |  |  |  |  |  |  |  |  |  |  |
| A70380 |  | Excavation | 10d | 2026-08-20 A | 2026-09-28 A | A70430, A1080, A58910 | 100% | 2026-09-23 | 2026-10-04 | ICKMO1-cost unite [19462.5 $]; Excavator [200 h]; Physical Units [167697 h] | 19,462.45 | 19,462.45 | ZNA | CON |  |
| A70390 |  | Pipe Laying | 10d | 2026-08-20 A | 2026-09-28 A | A70380 | 100% | 2026-10-05 | 2026-10-15 | ICKMO1-cost unite [12975 $]; boom truck [200 h]; labor [1200 h]; Storm Network Circular pipes (GRP) [80.79]; Physical Units [111798 h] | 12,974.97 | 12,974.97 | ZNA | CON | LAY |
| A70400 |  | Install Manhole | 10d | 2026-08-20 A | 2026-09-28 A | A70380 | 100% | 2026-10-05 | 2026-10-15 | ICKMO1-cost unite [58387.4 $]; boom truck [200 h]; labor [1200 h]; Physical Units [503090 h] | 58,387.36 | 58,387.36 | ZNA | CON | MH |
| A70410 |  | Testing & Inspection | 10d | 2026-08-20 A | 2026-09-28 A | A70390 | 100% | 2027-05-20 | 2027-06-01 | ICKMO1-cost unite [12975 $]; labor [1200 h]; Physical Units [111798 h] | 12,974.97 | 12,974.97 | ZNA | CON |  |
| A70420 |  | Backfilling & Compaction | 10d | 2026-08-20 A | 2026-09-28 A | A70410, A70400, A70470 | 100% | 2027-06-01 | 2027-06-13 | ICKMO1-cost unite [25949.9 $]; Roller compactor [200 h]; Physical Units [223595 h] | 25,949.94 | 25,949.94 | ZNA | CON |  |

| ID | WBS | Activity | Duration | Start | Finish | Predecessors | Complete | Planned start | Planned finish | Resources | Cost | Actual cost | ALKHARJ INDUSTERIAL AREA - PROJECT ZONES | ALKHARJ INDUSTERIAL AREA - DECEPLINS | ALKHARJ INDUSTERIAL AREA - Wet networks |
| --- | --- | --- | --- | --- | --- | --- | --- | --- | --- | --- | --- | --- | --- | --- | --- |
|  | MH-36-A-6-3 /MH-36-A-6-2 | **MH-36-A-6-3 /MH-36-A-6-2** |  | 2026-08-20 | 2026-09-28 |  |  |  |  |  |  |  |  |  |  |
| A70330 |  | Excavation | 10d | 2026-08-20 A | 2026-09-28 A | A70380, A1080 | 100% | 2026-10-05 | 2026-10-15 | ICKMO1-cost unite [19462.5 $]; Excavator [200 h]; Physical Units [167697 h] | 19,462.45 | 19,462.45 | ZNA | CON |  |
| A70340 |  | Pipe Laying | 10d | 2026-08-20 A | 2026-09-28 A | A70330 | 100% | 2026-10-17 | 2026-10-27 | ICKMO1-cost unite [12975 $]; boom truck [200 h]; labor [1200 h]; Storm Network Circular pipes (GRP) [80.79]; Physical Units [111798 h] | 12,974.97 | 12,974.97 | ZNA | CON | LAY |
| A70350 |  | Install Manhole | 10d | 2026-08-20 A | 2026-09-28 A | A70330 | 100% | 2026-10-17 | 2026-10-27 | ICKMO1-cost unite [58387.4 $]; boom truck [200 h]; labor [1200 h]; Physical Units [503090 h] | 58,387.36 | 58,387.36 | ZNA | CON | MH |
| A70360 |  | Testing & Inspection | 10d | 2026-08-20 A | 2026-09-28 A | A70340 | 100% | 2027-05-20 | 2027-06-01 | ICKMO1-cost unite [12975 $]; labor [1200 h]; Physical Units [111798 h] | 12,974.97 | 12,974.97 | ZNA | CON |  |
| A70370 |  | Backfilling & Compaction | 10d | 2026-08-20 A | 2026-09-28 A | A70360, A70350, A70420 | 100% | 2027-06-13 | 2027-06-24 | ICKMO1-cost unite [25949.9 $]; Roller compactor [200 h]; Physical Units [223595 h] | 25,949.94 | 25,949.94 | ZNA | CON |  |
|  | MH-36-A-6-4 /MH-36-A-6-3 | **MH-36-A-6-4 /MH-36-A-6-3** |  | 2026-08-20 | 2026-09-28 |  |  |  |  |  |  |  |  |  |  |
| A70280 |  | Excavation | 10d | 2026-08-20 A | 2026-09-28 A | A70330, A1080 | 100% | 2026-10-17 | 2026-10-27 | ICKMO1-cost unite [19462.5 $]; Excavator [200 h]; Physical Units [167697 h] | 19,462.45 | 19,462.45 | ZNA | CON |  |
| A70290 |  | Pipe Laying | 10d | 2026-08-20 A | 2026-09-28 A | A70280 | 100% | 2026-10-28 | 2026-11-08 | ICKMO1-cost unite [12975 $]; boom truck [200 h]; labor [1200 h]; Storm Network Circular pipes (GRP) [80.79]; Physical Units [111798 h] | 12,974.97 | 12,974.97 | ZNA | CON | LAY |
| A70300 |  | Install Manhole | 10d | 2026-08-20 A | 2026-09-28 A | A70280 | 100% | 2026-10-28 | 2026-11-08 | ICKMO1-cost unite [58387.4 $]; boom truck [200 h]; labor [1200 h]; Physical Units [503090 h] | 58,387.36 | 58,387.36 | ZNA | CON | MH |
| A70310 |  | Testing & Inspection | 10d | 2026-08-20 A | 2026-09-28 A | A70290 | 100% | 2027-05-20 | 2027-06-01 | ICKMO1-cost unite [12975 $]; labor [1200 h]; Physical Units [111798 h] | 12,974.97 | 12,974.97 | ZNA | CON |  |
| A70320 |  | Backfilling & Compaction | 10d | 2026-08-20 A | 2026-09-28 A | A70310, A70300, A70370 | 100% | 2027-06-24 | 2027-07-06 | ICKMO1-cost unite [25949.9 $]; Roller compactor [200 h]; Physical Units [223595 h] | 25,949.94 | 25,949.94 | ZNA | CON |  |
|  | MH-36-A-6-5 /MH-36-A-6-4 | **MH-36-A-6-5 /MH-36-A-6-4** |  | 2026-08-20 | 2026-09-28 |  |  |  |  |  |  |  |  |  |  |
| A70230 |  | Excavation | 10d | 2026-08-20 A | 2026-09-28 A | A70280, A1080 | 100% | 2026-10-28 | 2026-11-08 | ICKMO1-cost unite [19462.5 $]; Excavator [200 h]; Physical Units [167697 h] | 19,462.45 | 19,462.45 | ZNA | CON |  |
| A70240 |  | Pipe Laying | 10d | 2026-08-20 A | 2026-09-28 A | A70230 | 100% | 2026-11-09 | 2026-11-19 | ICKMO1-cost unite [12975 $]; boom truck [200 h]; labor [1200 h]; Storm Network Circular pipes (GRP) [80.79]; Physical Units [111798 h] | 12,974.97 | 12,974.97 | ZNA | CON | LAY |
| A70250 |  | Install Manhole | 10d | 2026-08-20 A | 2026-09-28 A | A70230 | 100% | 2026-11-09 | 2026-11-19 | ICKMO1-cost unite [58387.4 $]; boom truck [200 h]; labor [1200 h]; Physical Units [503090 h] | 58,387.36 | 58,387.36 | ZNA | CON | MH |
| A70260 |  | Testing & Inspection | 10d | 2026-08-20 A | 2026-09-28 A | A70240 | 100% | 2027-05-20 | 2027-06-01 | ICKMO1-cost unite [12975 $]; labor [1200 h]; Physical Units [111798 h] | 12,974.97 | 12,974.97 | ZNA | CON |  |
| A70270 |  | Backfilling & Compaction | 10d | 2026-08-20 A | 2026-09-28 A | A70260, A70250, A70320 | 100% | 2027-07-06 | 2027-07-18 | ICKMO1-cost unite [25949.9 $]; Roller compactor [200 h]; Physical Units [223595 h] | 25,949.94 | 25,949.94 | ZNA | CON |  |
|  | MH-36-A-6-6 /MH-36-A-6-5 | **MH-36-A-6-6 /MH-36-A-6-5** |  | 2026-08-20 | 2026-09-28 |  |  |  |  |  |  |  |  |  |  |
| A70180 |  | Excavation | 10d | 2026-08-20 A | 2026-09-28 A | A70230, A1080 | 100% | 2026-11-09 | 2026-11-19 | ICKMO1-cost unite [19462.5 $]; Excavator [200 h]; Physical Units [167697 h] | 19,462.45 | 19,462.45 | ZNA | CON |  |
| A70190 |  | Pipe Laying | 10d | 2026-08-20 A | 2026-09-28 A | A70180 | 100% | 2026-11-21 | 2026-12-01 | ICKMO1-cost unite [12975 $]; boom truck [200 h]; labor [1200 h]; Storm Network Circular pipes (GRP) [80.79]; Physical Units [111798 h] | 12,974.97 | 12,974.97 | ZNA | CON | LAY |
| A70200 |  | Install Manhole | 10d | 2026-08-20 A | 2026-09-28 A | A70180 | 100% | 2026-11-21 | 2026-12-01 | ICKMO1-cost unite [58387.4 $]; boom truck [200 h]; labor [1200 h]; Physical Units [503090 h] | 58,387.36 | 58,387.36 | ZNA | CON | MH |
| A70210 |  | Testing & Inspection | 10d | 2026-08-20 A | 2026-09-28 A | A70190 | 100% | 2027-05-20 | 2027-06-01 | ICKMO1-cost unite [12975 $]; labor [1200 h]; Physical Units [111798 h] | 12,974.97 | 12,974.97 | ZNA | CON |  |
| A70220 |  | Backfilling & Compaction | 10d | 2026-08-20 A | 2026-09-28 A | A70210, A70200, A70270 | 100% | 2027-07-18 | 2027-07-29 | ICKMO1-cost unite [25949.9 $]; Roller compactor [200 h]; Physical Units [223595 h] | 25,949.94 | 25,949.94 | ZNA | CON |  |

| ID | WBS | Activity | Duration | Start | Finish | Predecessors | Complete | Planned start | Planned finish | Resources | Cost | Actual cost | ALKHARJ INDUSTERIAL AREA - PROJECT ZONES | ALKHARJ INDUSTERIAL AREA - DECEPLINS | ALKHARJ INDUSTERIAL AREA - Wet networks |
| --- | --- | --- | --- | --- | --- | --- | --- | --- | --- | --- | --- | --- | --- | --- | --- |
|  | MH-36-A-6-7 /MH-36-A-6-6 | **MH-36-A-6-7 /MH-36-A-6-6** |  | 2026-08-20 | 2026-09-28 |  |  |  |  |  |  |  |  |  |  |
| A70130 |  | Excavation | 10d | 2026-08-20 A | 2026-09-28 A | A70180, A1080 | 100% | 2026-11-21 | 2026-12-01 | ICKMO1-cost unite [19462.5 $]; Excavator [200 h]; Physical Units [167697 h] | 19,462.45 | 19,462.45 | ZNA | CON |  |
| A70140 |  | Pipe Laying | 10d | 2026-08-20 A | 2026-09-28 A | A70130 | 100% | 2026-12-02 | 2026-12-13 | ICKMO1-cost unite [12975 $]; boom truck [200 h]; labor [1200 h]; Storm Network Circular pipes (GRP) [80.79]; Physical Units [111798 h] | 12,974.97 | 12,974.97 | ZNA | CON | LAY |
| A70150 |  | Install Manhole | 10d | 2026-08-20 A | 2026-09-28 A | A70130 | 100% | 2026-12-02 | 2026-12-13 | ICKMO1-cost unite [58387.4 $]; boom truck [200 h]; labor [1200 h]; Physical Units [503090 h] | 58,387.36 | 58,387.36 | ZNA | CON | MH |
| A70160 |  | Testing & Inspection | 10d | 2026-08-20 A | 2026-09-28 A | A70140 | 100% | 2027-05-20 | 2027-06-01 | ICKMO1-cost unite [12975 $]; labor [1200 h]; Physical Units [111798 h] | 12,974.97 | 12,974.97 | ZNA | CON |  |
| A70170 |  | Backfilling & Compaction | 10d | 2026-08-20 A | 2026-09-28 A | A70160, A70150, A70220 | 100% | 2027-07-29 | 2027-08-10 | ICKMO1-cost unite [25949.9 $]; Roller compactor [200 h]; Physical Units [223595 h] | 25,949.94 | 25,949.94 | ZNA | CON |  |
|  | LR 09 | **LR 09** |  | 2026-08-20 | 2026-09-28 |  |  |  |  |  |  |  |  |  |  |
|  | MH-36-A-3-1 /MH-36-A-3 | **MH-36-A-3-1 /MH-36-A-3** |  | 2026-08-20 | 2026-09-28 |  |  |  |  |  |  |  |  |  |  |
| A70080 |  | Excavation | 10d | 2026-08-20 A | 2026-09-28 A | A59470, A59480, A1080 | 100% | 2026-02-12 | 2026-02-23 | ICKMO1-cost unite [36067.7 $]; Excavator [200 h]; Physical Units [310774 h] | 36,067.66 | 36,067.66 | ZNA | CON |  |
| A70090 |  | Pipe Laying | 10d | 2026-08-20 A | 2026-09-28 A | A70080 | 100% | 2026-02-24 | 2026-03-07 | ICKMO1-cost unite [24045.1 $]; boom truck [200 h]; labor [1200 h]; Storm Network Circular pipes (GRP) [80.79]; Physical Units [207183 h] | 24,045.1 | 24,045.1 | ZNA | CON | LAY |
| A70100 |  | Install Manhole | 10d | 2026-08-20 A | 2026-09-28 A | A70080 | 100% | 2026-02-24 | 2026-03-07 | ICKMO1-cost unite [108203 $]; boom truck [200 h]; labor [1200 h]; Physical Units [932322 h] | 108,202.97 | 108,202.97 | ZNA | CON | MH |
| A70110 |  | Testing & Inspection | 10d | 2026-08-20 A | 2026-09-28 A | A70090 | 100% | 2026-11-02 | 2026-11-14 | ICKMO1-cost unite [24045.1 $]; labor [1200 h]; Physical Units [207183 h] | 24,045.1 | 24,045.1 | ZNA | CON |  |
| A70120 |  | Backfilling & Compaction | 10d | 2026-08-20 A | 2026-09-28 A | A70110, A70100 | 100% | 2026-11-14 | 2026-11-25 | ICKMO1-cost unite [48090.2 $]; Roller compactor [200 h]; Physical Units [414365 h] | 48,090.21 | 48,090.21 | ZNA | CON |  |
|  | MH-36-A-3-2 /MH-36-A-3-1 | **MH-36-A-3-2 /MH-36-A-3-1** |  | 2026-08-20 | 2026-09-28 |  |  |  |  |  |  |  |  |  |  |
| A70030 |  | Excavation | 10d | 2026-08-20 A | 2026-09-28 A | A70080, A1080, A58910 | 100% | 2026-09-23 | 2026-10-04 | ICKMO1-cost unite [36067.7 $]; Excavator [200 h]; Physical Units [310774 h] | 36,067.66 | 36,067.66 | ZNA | CON |  |
| A70040 |  | Pipe Laying | 10d | 2026-08-20 A | 2026-09-28 A | A70030 | 100% | 2026-10-05 | 2026-10-15 | ICKMO1-cost unite [24045.1 $]; boom truck [200 h]; labor [1200 h]; Storm Network Circular pipes (GRP) [80.79]; Physical Units [207183 h] | 24,045.1 | 24,045.1 | ZNA | CON | LAY |
| A70050 |  | Install Manhole | 10d | 2026-08-20 A | 2026-09-28 A | A70030 | 100% | 2026-10-05 | 2026-10-15 | ICKMO1-cost unite [108203 $]; boom truck [200 h]; labor [1200 h]; Physical Units [932322 h] | 108,202.97 | 108,202.97 | ZNA | CON | MH |
| A70060 |  | Testing & Inspection | 10d | 2026-08-20 A | 2026-09-28 A | A70040 | 100% | 2027-05-20 | 2027-06-01 | ICKMO1-cost unite [24045.1 $]; labor [1200 h]; Physical Units [207183 h] | 24,045.1 | 24,045.1 | ZNA | CON |  |
| A70070 |  | Backfilling & Compaction | 10d | 2026-08-20 A | 2026-09-28 A | A70060, A70050, A70120 | 100% | 2027-06-01 | 2027-06-13 | ICKMO1-cost unite [48090.2 $]; Roller compactor [200 h]; Physical Units [414365 h] | 48,090.21 | 48,090.21 | ZNA | CON |  |
|  | MH-36-A-3-3 /MH-36-A-3-2 | **MH-36-A-3-3 /MH-36-A-3-2** |  | 2026-08-20 | 2026-09-28 |  |  |  |  |  |  |  |  |  |  |
| A69980 |  | Excavation | 10d | 2026-08-20 A | 2026-09-28 A | A70030, A1080 | 100% | 2026-10-05 | 2026-10-15 | ICKMO1-cost unite [36067.7 $]; Excavator [200 h]; Physical Units [310774 h] | 36,067.66 | 36,067.66 | ZNA | CON |  |
| A69990 |  | Pipe Laying | 10d | 2026-08-20 A | 2026-09-28 A | A69980 | 100% | 2026-10-17 | 2026-10-27 | ICKMO1-cost unite [24045.1 $]; boom truck [200 h]; labor [1200 h]; Storm Network Circular pipes (GRP) [80.79]; Physical Units [207183 h] | 24,045.1 | 24,045.1 | ZNA | CON | LAY |
| A70000 |  | Install Manhole | 10d | 2026-08-20 A | 2026-09-28 A | A69980 | 100% | 2026-10-17 | 2026-10-27 | ICKMO1-cost unite [108203 $]; boom truck [200 h]; labor [1200 h]; Physical Units [932322 h] | 108,202.97 | 108,202.97 | ZNA | CON | MH |
| A70010 |  | Testing & Inspection | 10d | 2026-08-20 A | 2026-09-28 A | A69990 | 100% | 2027-05-20 | 2027-06-01 | ICKMO1-cost unite [24045.1 $]; labor [1200 h]; Physical Units [207183 h] | 24,045.1 | 24,045.1 | ZNA | CON |  |
| A70020 |  | Backfilling & Compaction | 10d | 2026-08-20 A | 2026-09-28 A | A70010, A70000, A70070 | 100% | 2027-06-13 | 2027-06-24 | ICKMO1-cost unite [48090.2 $]; Roller compactor [200 h]; Physical Units [414365 h] | 48,090.21 | 48,090.21 | ZNA | CON |  |

| ID | WBS | Activity | Duration | Start | Finish | Predecessors | Complete | Planned start | Planned finish | Resources | Cost | Actual cost | ALKHARJ INDUSTERIAL AREA - PROJECT ZONES | ALKHARJ INDUSTERIAL AREA - DECEPLINS | ALKHARJ INDUSTERIAL AREA - Wet networks |
| --- | --- | --- | --- | --- | --- | --- | --- | --- | --- | --- | --- | --- | --- | --- | --- |
|  | MH-36-A-3-4 /MH-36-A-3-3 | **MH-36-A-3-4 /MH-36-A-3-3** |  | 2026-08-20 | 2026-09-28 |  |  |  |  |  |  |  |  |  |  |
| A69930 |  | Excavation | 10d | 2026-08-20 A | 2026-09-28 A | A69980, A1080 | 100% | 2026-10-17 | 2026-10-27 | ICKMO1-cost unite [36067.7 $]; Excavator [200 h]; Physical Units [310774 h] | 36,067.66 | 36,067.66 | ZNA | CON |  |
| A69940 |  | Pipe Laying | 10d | 2026-08-20 A | 2026-09-28 A | A69930 | 100% | 2026-10-28 | 2026-11-08 | ICKMO1-cost unite [24045.1 $]; boom truck [200 h]; labor [1200 h]; Storm Network Circular pipes (GRP) [80.79]; Physical Units [207183 h] | 24,045.1 | 24,045.1 | ZNA | CON | LAY |
| A69950 |  | Install Manhole | 10d | 2026-08-20 A | 2026-09-28 A | A69930 | 100% | 2026-10-28 | 2026-11-08 | ICKMO1-cost unite [108203 $]; boom truck [200 h]; labor [1200 h]; Physical Units [932322 h] | 108,202.97 | 108,202.97 | ZNA | CON | MH |
| A69960 |  | Testing & Inspection | 10d | 2026-08-20 A | 2026-09-28 A | A69940 | 100% | 2027-05-20 | 2027-06-01 | ICKMO1-cost unite [24045.1 $]; labor [1200 h]; Physical Units [207183 h] | 24,045.1 | 24,045.1 | ZNA | CON |  |
| A69970 |  | Backfilling & Compaction | 4d | 2026-08-20 A | 2026-09-28 A | A69960, A69950, A70020 | 100% | 2027-06-24 | 2027-06-29 | ICKMO1-cost unite [48090.2 $]; Roller compactor [200 h]; Physical Units [414365 h] | 48,090.21 | 48,090.21 | ZNA | CON |  |
|  | LR 010 | **LR 010** |  | 2026-08-20 | 2026-09-28 |  |  |  |  |  |  |  |  |  |  |
|  | MH-32-A-18-1 /MH-32-A-18 | **MH-32-A-18-1 /MH-32-A-18** |  | 2026-08-20 | 2026-09-28 |  |  |  |  |  |  |  |  |  |  |
| A69830 |  | Excavation | 10d | 2026-08-20 A | 2026-09-28 A | A69880, A1080, A58910 | 100% | 2026-09-29 | 2026-10-10 | ICKMO1-cost unite [72135.3 $]; Excavator [200 h]; Physical Units [621548 h] | 72,135.31 | 72,135.31 | ZNA | CON |  |
| A69840 |  | Pipe Laying | 10d | 2026-08-20 A | 2026-09-28 A | A69830 | 100% | 2026-10-11 | 2026-10-21 | ICKMO1-cost unite [48090.2 $]; boom truck [200 h]; labor [1200 h]; Storm Network Circular pipes (GRP) [80.79]; Physical Units [414365 h] | 48,090.21 | 48,090.21 | ZNA | CON | LAY |
| A69850 |  | Install Manhole | 10d | 2026-08-20 A | 2026-09-28 A | A69830 | 100% | 2026-10-11 | 2026-10-21 | ICKMO1-cost unite [216406 $]; boom truck [200 h]; labor [1200 h]; Physical Units [1864643 h] | 216,405.94 | 216,405.94 | ZNA | CON | MH |
| A69860 |  | Testing & Inspection | 10d | 2026-08-20 A | 2026-09-28 A | A69840 | 100% | 2027-06-01 | 2027-06-13 | ICKMO1-cost unite [48090.2 $]; labor [1200 h]; Physical Units [414365 h] | 48,090.21 | 48,090.21 | ZNA | CON |  |
| A69870 |  | Backfilling & Compaction | 10d | 2026-08-20 A | 2026-09-28 A | A69860, A69850, A69920 | 100% | 2027-06-13 | 2027-06-24 | ICKMO1-cost unite [96180.4 $]; Roller compactor [200 h]; Physical Units [828730 h] | 96,180.42 | 96,180.42 | ZNA | CON |  |
|  | MH-32-A-18-2 /MH-32-A-18-1 | **MH-32-A-18-2 /MH-32-A-18-1** |  | 2026-08-20 | 2026-09-28 |  |  |  |  |  |  |  |  |  |  |
| A69880 |  | Excavation | 5d | 2026-08-20 A | 2026-09-28 A | A59500, A59510, A1080, A58910 | 100% | 2026-09-23 | 2026-09-28 | ICKMO1-cost unite [72135.3 $]; Excavator [200 h]; Physical Units [621548 h] | 72,135.31 | 72,135.31 | ZNA | CON |  |
| A69890 |  | Pipe Laying | 5d | 2026-08-20 A | 2026-09-28 A | A69880 | 100% | 2026-09-29 | 2026-10-04 | ICKMO1-cost unite [48090.2 $]; boom truck [200 h]; labor [1200 h]; Storm Network Circular pipes (GRP) [80.79]; Physical Units [414365 h] | 48,090.21 | 48,090.21 | ZNA | CON | LAY |
| A69900 |  | Install Manhole | 5d | 2026-08-20 A | 2026-09-28 A | A69880 | 100% | 2026-09-29 | 2026-10-04 | ICKMO1-cost unite [216406 $]; boom truck [200 h]; labor [1200 h]; Physical Units [1864643 h] | 216,405.94 | 216,405.94 | ZNA | CON | MH |
| A69910 |  | Testing & Inspection | 5d | 2026-08-20 A | 2026-09-28 A | A69890 | 100% | 2027-05-26 | 2027-06-01 | ICKMO1-cost unite [48090.2 $]; labor [1200 h]; Physical Units [414365 h] | 48,090.21 | 48,090.21 | ZNA | CON |  |
| A69920 |  | Backfilling & Compaction | 5d | 2026-08-20 A | 2026-09-28 A | A69910, A69900 | 100% | 2027-06-01 | 2027-06-07 | ICKMO1-cost unite [96180.4 $]; Roller compactor [200 h]; Physical Units [828730 h] | 96,180.42 | 96,180.42 | ZNA | CON |  |
|  | LR 011 | **LR 011** |  | 2026-08-20 | 2026-09-28 |  |  |  |  |  |  |  |  |  |  |
|  | MH-32-A-16-3-1 /MH-32-A-16-3 | **MH-32-A-16-3-1 /MH-32-A-16-3** |  | 2026-08-20 | 2026-09-28 |  |  |  |  |  |  |  |  |  |  |
| A69680 |  | Excavation | 10d | 2026-08-20 A | 2026-09-28 A | A69730, A1080 | 100% | 2026-10-05 | 2026-10-15 | ICKMO1-cost unite [45412.4 $]; Excavator [200 h]; Physical Units [391292 h] | 45,412.39 | 45,412.39 | ZNA | CON |  |
| A69690 |  | Pipe Laying | 10d | 2026-08-20 A | 2026-09-28 A | A69680 | 100% | 2026-10-17 | 2026-10-27 | ICKMO1-cost unite [30274.9 $]; boom truck [200 h]; labor [1200 h]; Storm Network Circular pipes (GRP) [80.79]; Physical Units [260861 h] | 30,274.93 | 30,274.93 | ZNA | CON | LAY |
| A69700 |  | Install Manhole | 10d | 2026-08-20 A | 2026-09-28 A | A69680 | 100% | 2026-10-17 | 2026-10-27 | ICKMO1-cost unite [136237 $]; boom truck [200 h]; labor [1200 h]; Physical Units [1173876 h] | 136,237.16 | 136,237.16 | ZNA | CON | MH |
| A69710 |  | Testing & Inspection | 2d | 2026-08-20 A | 2026-09-28 A | A69690 | 100% | 2027-05-20 | 2027-05-23 | ICKMO1-cost unite [30274.9 $]; labor [1200 h]; Physical Units [260861 h] | 30,274.93 | 30,274.93 | ZNA | CON |  |
| A69720 |  | Backfilling & Compaction | 10d | 2026-08-20 A | 2026-09-28 A | A69710, A69700, A69770 | 100% | 2027-06-06 | 2027-06-17 | ICKMO1-cost unite [60549.8 $]; Roller compactor [200 h]; Physical Units [521722 h] | 60,549.84 | 60,549.84 | ZNA | CON |  |

| ID | WBS | Activity | Duration | Start | Finish | Predecessors | Complete | Planned start | Planned finish | Total float | Free float | Resources | Cost | Actual cost | ALKHARJ INDUSTERIAL AREA - PROJECT ZONES | ALKHARJ INDUSTERIAL AREA - DECEPLINS | ALKHARJ INDUSTERIAL AREA - Wet networks |
| --- | --- | --- | --- | --- | --- | --- | --- | --- | --- | --- | --- | --- | --- | --- | --- | --- | --- |
|  | MH-32-A-16-3-2 /MH-32-A-16-3-1 | **MH-32-A-16-3-2 /MH-32-A-16-3-1** |  | 2026-08-20 | 2026-09-28 |  |  |  |  |  |  |  |  |  |  |  |  |
| A69730 |  | Excavation | 10d | 2026-08-20 A | 2026-09-28 A | A69780, A1080, A58910 | 100% | 2026-09-23 | 2026-10-04 |  |  | ICKMO1-cost unite [45412.4 $]; Excavator [200 h]; Physical Units [391292 h] | 45,412.39 | 45,412.39 | ZNA | CON |  |
| A69740 |  | Pipe Laying | 10d | 2026-08-20 A | 2026-09-28 A | A69730 | 100% | 2026-10-05 | 2026-10-15 |  |  | ICKMO1-cost unite [30274.9 $]; boom truck [200 h]; labor [1200 h]; Storm Network Circular pipes (GRP) [80.79]; Physical Units [260861 h] | 30,274.93 | 30,274.93 | ZNA | CON | LAY |
| A69750 |  | Install Manhole | 10d | 2026-08-20 A | 2026-09-28 A | A69730 | 100% | 2026-10-05 | 2026-10-15 |  |  | ICKMO1-cost unite [136237 $]; boom truck [200 h]; labor [1200 h]; Physical Units [1173876 h] | 136,237.16 | 136,237.16 | ZNA | CON | MH |
| A69760 |  | Testing & Inspection | 10d | 2026-08-20 A | 2026-09-28 A | A69740 | 100% | 2027-05-20 | 2027-06-01 |  |  | ICKMO1-cost unite [30274.9 $]; labor [1200 h]; Physical Units [260861 h] | 30,274.93 | 30,274.93 | ZNA | CON |  |
| A69770 |  | Backfilling & Compaction | 4d | 2026-08-20 A | 2026-09-28 A | A69760, A69750, A69820 | 100% | 2027-06-01 | 2027-06-06 |  |  | ICKMO1-cost unite [60549.8 $]; Roller compactor [200 h]; Physical Units [521722 h] | 60,549.84 | 60,549.84 | ZNA | CON |  |
|  | MH-32-A-16-3-3 /MH-32-A-16-3-2 | **MH-32-A-16-3-3 /MH-32-A-16-3-2** |  | 2026-08-20 | 2026-09-28 |  |  |  |  |  |  |  |  |  |  |  |  |
| A69780 |  | Excavation | 10d | 2026-08-20 A | 2026-09-28 A | A59530, A59540, A1080 | 100% | 2026-03-17 | 2026-03-28 |  |  | ICKMO1-cost unite [45412.4 $]; Excavator [200 h]; Physical Units [391292 h] | 45,412.39 | 45,412.39 | ZNA | CON |  |
| A69790 |  | Pipe Laying | 10d | 2026-08-20 A | 2026-09-28 A | A69780 | 100% | 2026-03-29 | 2026-04-08 |  |  | ICKMO1-cost unite [30274.9 $]; boom truck [200 h]; labor [1200 h]; Storm Network Circular pipes (GRP) [80.79]; Physical Units [260861 h] | 30,274.93 | 30,274.93 | ZNA | CON | LAY |
| A69800 |  | Install Manhole | 10d | 2026-08-20 A | 2026-09-28 A | A69780 | 100% | 2026-03-29 | 2026-04-08 |  |  | ICKMO1-cost unite [136237 $]; boom truck [200 h]; labor [1200 h]; Physical Units [1173876 h] | 136,237.16 | 136,237.16 | ZNA | CON | MH |
| A69810 |  | Testing & Inspection | 10d | 2026-08-20 A | 2026-09-28 A | A69790 | 100% | 2026-10-29 | 2026-11-10 |  |  | ICKMO1-cost unite [30274.9 $]; labor [1200 h]; Physical Units [260861 h] | 30,274.93 | 30,274.93 | ZNA | CON |  |
| A69820 |  | Backfilling & Compaction | 10d | 2026-08-20 A | 2026-09-28 A | A69810, A69800 | 100% | 2026-11-10 | 2026-11-22 |  |  | ICKMO1-cost unite [60549.8 $]; Roller compactor [200 h]; Physical Units [521722 h] | 60,549.84 | 60,549.84 | ZNA | CON |  |
|  | LR 012 | **LR 012** |  | 2026-08-20 | 2026-12-21 |  |  |  |  |  |  |  |  |  |  |  |  |
|  | MH-32-A-16-5-1 /MH-32-A-16-5 | **MH-32-A-16-5-1 /MH-32-A-16-5** |  | 2026-08-20 | 2026-12-21 |  |  |  |  |  |  |  |  |  |  |  |  |
| A69530 |  | Excavation | 10d | 2026-08-20 A | 2026-09-28 A | A69580, A1080 | 100% | 2026-11-01 | 2026-11-11 |  |  | ICKMO1-cost unite [45412.4 $]; Excavator [200 h]; Physical Units [391292 h] | 45,412.39 | 45,412.39 | ZNA | CON |  |
| A69540 |  | Pipe Laying | 4d | 2026-08-20 A | 2026-09-28 A | A69530 | 100% | 2026-11-12 | 2026-11-16 |  |  | ICKMO1-cost unite [30274.9 $]; boom truck [200 h]; labor [1200 h]; Storm Network Circular pipes (GRP) [80.79]; Physical Units [260861 h] | 30,274.93 | 30,274.93 | ZNA | CON | LAY |
| A69550 |  | Install Manhole | 4d | 2026-08-20 A | 2026-09-28 A | A69530 | 100% | 2026-11-12 | 2026-11-16 |  |  | ICKMO1-cost unite [136237 $]; boom truck [200 h]; labor [1200 h]; Physical Units [1173876 h] | 136,237.16 | 136,237.16 | ZNA | CON | MH |
| A69570 |  | Backfilling & Compaction | 10d | 2026-08-20 A | 2026-09-28 A | A69560, A69550, A69620 | 100% | 2027-06-08 | 2027-06-20 |  |  | ICKMO1-cost unite [60549.8 $]; Roller compactor [200 h]; Physical Units [521722 h] | 60,549.84 | 60,549.84 | ZNA | CON |  |
| A69560 |  | Testing & Inspection | 10d | 2026-12-09 | 2026-12-21 | A69540 |  |  |  | 33.28d | 0d | ICKMO1-cost unite [30274.9 $]; labor [1200 h]; Physical Units [260861 h] | 30,274.93 |  | ZNA | CON |  |
|  | MH-32-A-16-5-2 /MH-32-A-16-5-1 | **MH-32-A-16-5-2 /MH-32-A-16-5-1** |  | 2026-08-20 | 2026-12-12 |  |  |  |  |  |  |  |  |  |  |  |  |
| A69580 |  | Excavation | 10d | 2026-08-20 A | 2026-09-28 A | A69630, A1080, A58910 | 100% | 2026-10-20 | 2026-10-31 |  |  | ICKMO1-cost unite [45412.4 $]; Excavator [200 h]; Physical Units [391292 h] | 45,412.39 | 45,412.39 | ZNA | CON |  |
| A69590 |  | Pipe Laying | 10d | 2026-08-20 A | 2026-09-28 A | A69580 | 100% | 2026-11-01 | 2026-11-11 |  |  | ICKMO1-cost unite [30274.9 $]; boom truck [200 h]; labor [1200 h]; Storm Network Circular pipes (GRP) [80.79]; Physical Units [260861 h] | 30,274.93 | 30,274.93 | ZNA | CON | LAY |
| A69600 |  | Install Manhole | 10d | 2026-08-20 A | 2026-09-28 A | A69580 | 100% | 2026-11-01 | 2026-11-11 |  |  | ICKMO1-cost unite [136237 $]; boom truck [200 h]; labor [1200 h]; Physical Units [1173876 h] | 136,237.16 | 136,237.16 | ZNA | CON | MH |
| A69620 |  | Backfilling & Compaction | 10d | 2026-08-20 A | 2026-09-28 A | A69610, A69600, A69670 | 100% | 2027-05-27 | 2027-06-08 |  |  | ICKMO1-cost unite [60549.8 $]; Roller compactor [200 h]; Physical Units [521722 h] | 60,549.84 | 60,549.84 | ZNA | CON |  |
| A69610 |  | Testing & Inspection | 2d | 2026-12-09 | 2026-12-12 | A69590 |  |  |  | 41.28d | 0d | ICKMO1-cost unite [30274.9 $]; labor [1200 h]; Physical Units [260861 h] | 30,274.93 |  | ZNA | CON |  |

| ID | WBS | Activity | Duration | Start | Finish | Predecessors | Complete | Planned start | Planned finish | Resources | Cost | Actual cost | ALKHARJ INDUSTERIAL AREA - PROJECT ZONES | ALKHARJ INDUSTERIAL AREA - DECEPLINS | ALKHARJ INDUSTERIAL AREA - Wet networks |
| --- | --- | --- | --- | --- | --- | --- | --- | --- | --- | --- | --- | --- | --- | --- | --- |
|  | MH-32-A-16-5-3 /MH-32-A-16-5-2 | **MH-32-A-16-5-3 /MH-32-A-16-5-2** |  | 2026-08-20 | 2026-09-28 |  |  |  |  |  |  |  |  |  |  |
| A69630 |  | Excavation | 3d | 2026-08-20 A | 2026-09-28 A | A59560, A59570, A1080, A69680 | 100% | 2026-10-17 | 2026-10-19 | ICKMO1-cost unite [45412.4 $]; Excavator [200 h]; Physical Units [391292 h] | 45,412.39 | 45,412.39 | ZNA | CON |  |
| A69640 |  | Pipe Laying | 3d | 2026-08-20 A | 2026-09-28 A | A69630 | 100% | 2026-10-20 | 2026-10-22 | ICKMO1-cost unite [30274.9 $]; boom truck [200 h]; labor [1200 h]; Storm Network Circular pipes (GRP) [80.79]; Physical Units [260861 h] | 30,274.93 | 30,274.93 | ZNA | CON | LAY |
| A69650 |  | Install Manhole | 3d | 2026-08-20 A | 2026-09-28 A | A69630 | 100% | 2026-10-20 | 2026-10-22 | ICKMO1-cost unite [136237 $]; boom truck [200 h]; labor [1200 h]; Physical Units [1173876 h] | 136,237.16 | 136,237.16 | ZNA | CON | MH |
| A69660 |  | Testing & Inspection | 3d | 2026-08-20 A | 2026-09-28 A | A69640 | 100% | 2027-05-20 | 2027-05-24 | ICKMO1-cost unite [30274.9 $]; labor [1200 h]; Physical Units [260861 h] | 30,274.93 | 30,274.93 | ZNA | CON |  |
| A69670 |  | Backfilling & Compaction | 3d | 2026-08-20 A | 2026-09-28 A | A69660, A69650 | 100% | 2027-05-24 | 2027-05-27 | ICKMO1-cost unite [60549.8 $]; Roller compactor [200 h]; Physical Units [521722 h] | 60,549.84 | 60,549.84 | ZNA | CON |  |
|  | LR 013 | **LR 013** |  | 2026-08-20 | 2026-09-28 |  |  |  |  |  |  |  |  |  |  |
|  | MH-36-A-3-2-1 /MH-36-A-3-2 | **MH-36-A-3-2-1 /MH-36-A-3-2** |  | 2026-08-20 | 2026-09-28 |  |  |  |  |  |  |  |  |  |  |
| A69380 |  | Excavation | 4d | 2026-08-20 A | 2026-09-28 A | A69430, A1080 | 100% | 2026-10-05 | 2026-10-08 | ICKMO1-cost unite [45412.4 $]; Excavator [200 h]; Physical Units [391292 h] | 45,412.39 | 45,412.39 | ZNA | CON |  |
| A69390 |  | Pipe Laying | 10d | 2026-08-20 A | 2026-09-28 A | A69380 | 100% | 2026-10-10 | 2026-10-20 | ICKMO1-cost unite [30274.9 $]; boom truck [200 h]; labor [1200 h]; Storm Network Circular pipes (GRP) [80.79]; Physical Units [260861 h] | 30,274.93 | 30,274.93 | ZNA | CON | LAY |
| A69400 |  | Install Manhole | 10d | 2026-08-20 A | 2026-09-28 A | A69380 | 100% | 2026-10-10 | 2026-10-20 | ICKMO1-cost unite [136237 $]; boom truck [200 h]; labor [1200 h]; Physical Units [1173876 h] | 136,237.16 | 136,237.16 | ZNA | CON | MH |
| A69410 |  | Testing & Inspection | 10d | 2026-08-20 A | 2026-09-28 A | A69390 | 100% | 2027-05-20 | 2027-06-01 | ICKMO1-cost unite [30274.9 $]; labor [1200 h]; Physical Units [260861 h] | 30,274.93 | 30,274.93 | ZNA | CON |  |
| A69420 |  | Backfilling & Compaction | 10d | 2026-08-20 A | 2026-09-28 A | A69410, A69400, A69470 | 100% | 2027-06-13 | 2027-06-24 | ICKMO1-cost unite [60549.8 $]; Roller compactor [200 h]; Physical Units [521722 h] | 60,549.84 | 60,549.84 | ZNA | CON |  |
|  | MH-36-A-3-2-2 /MH-36-A-3-2-1 | **MH-36-A-3-2-2 /MH-36-A-3-2-1** |  | 2026-08-20 | 2026-09-28 |  |  |  |  |  |  |  |  |  |  |
| A69430 |  | Excavation | 10d | 2026-08-20 A | 2026-09-28 A | A69480, A1080, A58910 | 100% | 2026-09-23 | 2026-10-04 | ICKMO1-cost unite [45412.4 $]; Excavator [200 h]; Physical Units [391292 h] | 45,412.39 | 45,412.39 | ZNA | CON |  |
| A69440 |  | Pipe Laying | 4d | 2026-08-20 A | 2026-09-28 A | A69430 | 100% | 2026-10-05 | 2026-10-08 | ICKMO1-cost unite [30274.9 $]; boom truck [200 h]; labor [1200 h]; Storm Network Circular pipes (GRP) [80.79]; Physical Units [260861 h] | 30,274.93 | 30,274.93 | ZNA | CON | LAY |
| A69450 |  | Install Manhole | 4d | 2026-08-20 A | 2026-09-28 A | A69430 | 100% | 2026-10-05 | 2026-10-08 | ICKMO1-cost unite [136237 $]; boom truck [200 h]; labor [1200 h]; Physical Units [1173876 h] | 136,237.16 | 136,237.16 | ZNA | CON | MH |
| A69460 |  | Testing & Inspection | 10d | 2026-08-20 A | 2026-09-28 A | A69440 | 100% | 2027-05-20 | 2027-06-01 | ICKMO1-cost unite [30274.9 $]; labor [1200 h]; Physical Units [260861 h] | 30,274.93 | 30,274.93 | ZNA | CON |  |
| A69470 |  | Backfilling & Compaction | 10d | 2026-08-20 A | 2026-09-28 A | A69460, A69450, A69520 | 100% | 2027-06-01 | 2027-06-13 | ICKMO1-cost unite [60549.8 $]; Roller compactor [200 h]; Physical Units [521722 h] | 60,549.84 | 60,549.84 | ZNA | CON |  |
|  | MH-36-A-3-2-3 /MH-36-A-3-2-2 | **MH-36-A-3-2-3 /MH-36-A-3-2-2** |  | 2026-08-20 | 2026-09-28 |  |  |  |  |  |  |  |  |  |  |
| A69480 |  | Excavation | 10d | 2026-08-20 A | 2026-09-28 A | A59590, A59600, A1080 | 100% | 2026-04-19 | 2026-04-29 | ICKMO1-cost unite [45412.4 $]; Excavator [200 h]; Physical Units [391292 h] | 45,412.39 | 45,412.39 | ZNA | CON |  |
| A69490 |  | Pipe Laying | 10d | 2026-08-20 A | 2026-09-28 A | A69480 | 100% | 2026-04-30 | 2026-05-11 | ICKMO1-cost unite [30274.9 $]; boom truck [200 h]; labor [1200 h]; Storm Network Circular pipes (GRP) [80.79]; Physical Units [260861 h] | 30,274.93 | 30,274.93 | ZNA | CON | LAY |
| A69500 |  | Install Manhole | 10d | 2026-08-20 A | 2026-09-28 A | A69480 | 100% | 2026-04-30 | 2026-05-11 | ICKMO1-cost unite [136237 $]; boom truck [200 h]; labor [1200 h]; Physical Units [1173876 h] | 136,237.16 | 136,237.16 | ZNA | CON | MH |
| A69510 |  | Testing & Inspection | 2d | 2026-08-20 A | 2026-09-28 A | A69490 | 100% | 2026-11-11 | 2026-11-14 | ICKMO1-cost unite [30274.9 $]; labor [1200 h]; Physical Units [260861 h] | 30,274.93 | 30,274.93 | ZNA | CON |  |
| A69520 |  | Backfilling & Compaction | 10d | 2026-08-20 A | 2026-09-28 A | A69510, A69500 | 100% | 2026-11-14 | 2026-11-25 | ICKMO1-cost unite [60549.8 $]; Roller compactor [200 h]; Physical Units [521722 h] | 60,549.84 | 60,549.84 | ZNA | CON |  |

| ID | WBS | Activity | Duration | Start | Finish | Predecessors | Complete | Planned start | Planned finish | Resources | Cost | Actual cost | ALKHARJ INDUSTERIAL AREA - PROJECT ZONES | ALKHARJ INDUSTERIAL AREA - DECEPLINS | ALKHARJ INDUSTERIAL AREA - Wet networks |
| --- | --- | --- | --- | --- | --- | --- | --- | --- | --- | --- | --- | --- | --- | --- | --- |
|  | LR 014 | **LR 014** |  | 2026-08-20 | 2026-09-28 |  |  |  |  |  |  |  |  |  |  |
|  | MH-36-A-3-5 /MH-36-A-3-4 | **MH-36-A-3-5 /MH-36-A-3-4** |  | 2026-08-20 | 2026-09-28 |  |  |  |  |  |  |  |  |  |  |
| A69330 |  | Excavation | 10d | 2026-08-20 A | 2026-09-28 A | A59620, A59630, A1080 | 100% | 2026-05-05 | 2026-05-16 | ICKMO1-cost unite [36067.7 $]; Excavator [200 h]; Physical Units [310774 h] | 36,067.66 | 36,067.66 | ZNA | CON |  |
| A69340 |  | Pipe Laying | 4d | 2026-08-20 A | 2026-09-28 A | A69330 | 100% | 2026-05-17 | 2026-05-20 | ICKMO1-cost unite [24045.1 $]; boom truck [200 h]; labor [1200 h]; Storm Network Circular pipes (GRP) [80.79]; Physical Units [207183 h] | 24,045.1 | 24,045.1 | ZNA | CON | LAY |
| A69350 |  | Install Manhole | 4d | 2026-08-20 A | 2026-09-28 A | A69330 | 100% | 2026-05-17 | 2026-05-20 | ICKMO1-cost unite [108203 $]; boom truck [200 h]; labor [1200 h]; Physical Units [932322 h] | 108,202.97 | 108,202.97 | ZNA | CON | MH |
| A69360 |  | Testing & Inspection | 10d | 2026-08-20 A | 2026-09-28 A | A69340 | 100% | 2026-11-07 | 2026-11-18 | ICKMO1-cost unite [24045.1 $]; labor [1200 h]; Physical Units [207183 h] | 24,045.1 | 24,045.1 | ZNA | CON |  |
| A69370 |  | Backfilling & Compaction | 10d | 2026-08-20 A | 2026-09-28 A | A69360, A69350 | 100% | 2026-11-18 | 2026-11-30 | ICKMO1-cost unite [48090.2 $]; Roller compactor [200 h]; Physical Units [414365 h] | 48,090.21 | 48,090.21 | ZNA | CON |  |
|  | MH-36-A-3-6 /MH-36-A-3-5 | **MH-36-A-3-6 /MH-36-A-3-5** |  | 2026-08-20 | 2026-09-28 |  |  |  |  |  |  |  |  |  |  |
| A69280 |  | Excavation | 4d | 2026-08-20 A | 2026-09-28 A | A69330, A1080, A58910 | 100% | 2026-09-23 | 2026-09-27 | ICKMO1-cost unite [36067.7 $]; Excavator [200 h]; Physical Units [310774 h] | 36,067.66 | 36,067.66 | ZNA | CON |  |
| A69290 |  | Pipe Laying | 10d | 2026-08-20 A | 2026-09-28 A | A69280 | 100% | 2026-09-28 | 2026-10-08 | ICKMO1-cost unite [24045.1 $]; boom truck [200 h]; labor [1200 h]; Storm Network Circular pipes (GRP) [80.79]; Physical Units [207183 h] | 24,045.1 | 24,045.1 | ZNA | CON | LAY |
| A69300 |  | Install Manhole | 10d | 2026-08-20 A | 2026-09-28 A | A69280 | 100% | 2026-09-28 | 2026-10-08 | ICKMO1-cost unite [108203 $]; boom truck [200 h]; labor [1200 h]; Physical Units [932322 h] | 108,202.97 | 108,202.97 | ZNA | CON | MH |
| A69310 |  | Testing & Inspection | 10d | 2026-08-20 A | 2026-09-28 A | A69290 | 100% | 2027-05-20 | 2027-06-01 | ICKMO1-cost unite [24045.1 $]; labor [1200 h]; Physical Units [207183 h] | 24,045.1 | 24,045.1 | ZNA | CON |  |
| A69320 |  | Backfilling & Compaction | 10d | 2026-08-20 A | 2026-09-28 A | A69310, A69300, A69370 | 100% | 2027-06-01 | 2027-06-13 | ICKMO1-cost unite [48090.2 $]; Roller compactor [200 h]; Physical Units [414365 h] | 48,090.21 | 48,090.21 | ZNA | CON |  |
|  | MH-36-A-3-6-1 /MH-36-A-3-6 | **MH-36-A-3-6-1 /MH-36-A-3-6** |  | 2026-08-20 | 2026-09-28 |  |  |  |  |  |  |  |  |  |  |
| A69180 |  | Excavation | 10d | 2026-08-20 A | 2026-09-28 A | A69230, A1080 | 100% | 2026-10-10 | 2026-10-20 | ICKMO1-cost unite [36067.7 $]; Excavator [200 h]; Physical Units [310774 h] | 36,067.66 | 36,067.66 | ZNA | CON |  |
| A69190 |  | Pipe Laying | 4d | 2026-08-20 A | 2026-09-28 A | A69180 | 100% | 2026-10-21 | 2026-10-25 | ICKMO1-cost unite [24045.1 $]; boom truck [200 h]; labor [1200 h]; Storm Network Circular pipes (GRP) [80.79]; Physical Units [207183 h] | 24,045.1 | 24,045.1 | ZNA | CON | LAY |
| A69200 |  | Install Manhole | 4d | 2026-08-20 A | 2026-09-28 A | A69180 | 100% | 2026-10-21 | 2026-10-25 | ICKMO1-cost unite [108203 $]; boom truck [200 h]; labor [1200 h]; Physical Units [932322 h] | 108,202.97 | 108,202.97 | ZNA | CON | MH |
| A69210 |  | Testing & Inspection | 10d | 2026-08-20 A | 2026-09-28 A | A69190 | 100% | 2027-05-20 | 2027-06-01 | ICKMO1-cost unite [24045.1 $]; labor [1200 h]; Physical Units [207183 h] | 24,045.1 | 24,045.1 | ZNA | CON |  |
| A69220 |  | Backfilling & Compaction | 4d | 2026-08-20 A | 2026-09-28 A | A69210, A69200, A69270 | 100% | 2027-06-17 | 2027-06-22 | ICKMO1-cost unite [48090.2 $]; Roller compactor [200 h]; Physical Units [414365 h] | 48,090.21 | 48,090.21 | ZNA | CON |  |
|  | MH-36-A-3-6-2 /MH-36-A-3-6-1 | **MH-36-A-3-6-2 /MH-36-A-3-6-1** |  | 2026-08-20 | 2026-09-28 |  |  |  |  |  |  |  |  |  |  |
| A69230 |  | Excavation | 10d | 2026-08-20 A | 2026-09-28 A | A69280, A1080 | 100% | 2026-09-28 | 2026-10-08 | ICKMO1-cost unite [36067.7 $]; Excavator [200 h]; Physical Units [310774 h] | 36,067.66 | 36,067.66 | ZNA | CON |  |
| A69240 |  | Pipe Laying | 10d | 2026-08-20 A | 2026-09-28 A | A69230 | 100% | 2026-10-10 | 2026-10-20 | ICKMO1-cost unite [24045.1 $]; boom truck [200 h]; labor [1200 h]; Storm Network Circular pipes (GRP) [80.79]; Physical Units [207183 h] | 24,045.1 | 24,045.1 | ZNA | CON | LAY |
| A69250 |  | Install Manhole | 10d | 2026-08-20 A | 2026-09-28 A | A69230 | 100% | 2026-10-10 | 2026-10-20 | ICKMO1-cost unite [108203 $]; boom truck [200 h]; labor [1200 h]; Physical Units [932322 h] | 108,202.97 | 108,202.97 | ZNA | CON | MH |
| A69260 |  | Testing & Inspection | 10d | 2026-08-20 A | 2026-09-28 A | A69240 | 100% | 2027-05-20 | 2027-06-01 | ICKMO1-cost unite [24045.1 $]; labor [1200 h]; Physical Units [207183 h] | 24,045.1 | 24,045.1 | ZNA | CON |  |
| A69270 |  | Backfilling & Compaction | 4d | 2026-08-20 A | 2026-09-28 A | A69260, A69250, A69320 | 100% | 2027-06-13 | 2027-06-17 | ICKMO1-cost unite [48090.2 $]; Roller compactor [200 h]; Physical Units [414365 h] | 48,090.21 | 48,090.21 | ZNA | CON |  |

| ID | WBS | Activity | Duration | Start | Finish | Predecessors | Complete | Planned start | Planned finish | Total float | Free float | Resources | Cost | Actual cost | ALKHARJ INDUSTERIAL AREA - PROJECT ZONES | ALKHARJ INDUSTERIAL AREA - DECEPLINS | ALKHARJ INDUSTERIAL AREA - Wet networks |
| --- | --- | --- | --- | --- | --- | --- | --- | --- | --- | --- | --- | --- | --- | --- | --- | --- | --- |
|  | LR 015 | **LR 015** |  | 2026-08-20 | 2026-09-28 |  |  |  |  |  |  |  |  |  |  |  |  |
|  | MH-36-A-3-7 /MH-36-A-3-6 | **MH-36-A-3-7 /MH-36-A-3-6** |  | 2026-08-20 | 2026-09-28 |  |  |  |  |  |  |  |  |  |  |  |  |
| A69130 |  | Excavation | 6d | 2026-08-20 A | 2026-09-28 A | A59650, A59660, A1080, A58910 | 100% | 2026-09-23 | 2026-09-29 |  |  | ICKMO1-cost unite [48090.2 $]; Excavator [200 h]; Physical Units [414365 h] | 48,090.21 | 48,090.21 | ZNA | CON |  |
| A69140 |  | Pipe Laying | 4d | 2026-08-20 A | 2026-09-28 A | A69130 | 100% | 2026-09-30 | 2026-10-04 |  |  | ICKMO1-cost unite [32060.1 $]; boom truck [200 h]; labor [1200 h]; Storm Network Circular pipes (GRP) [80.79]; Physical Units [276243 h] | 32,060.13 | 32,060.13 | ZNA | CON | LAY |
| A69150 |  | Install Manhole | 4d | 2026-08-20 A | 2026-09-28 A | A69130 | 100% | 2026-09-30 | 2026-10-04 |  |  | ICKMO1-cost unite [144271 $]; boom truck [200 h]; labor [1200 h]; Physical Units [1243095 h] | 144,270.63 | 144,270.63 | ZNA | CON | MH |
| A69160 |  | Testing & Inspection | 6d | 2026-08-20 A | 2026-09-28 A | A69140 | 100% | 2027-05-20 | 2027-05-27 |  |  | ICKMO1-cost unite [32060.1 $]; labor [1200 h]; Physical Units [276243 h] | 32,060.13 | 32,060.13 | ZNA | CON |  |
| A69170 |  | Backfilling & Compaction | 6d | 2026-08-20 A | 2026-09-28 A | A69160, A69150 | 100% | 2027-05-27 | 2027-06-03 |  |  | ICKMO1-cost unite [64120.3 $]; Roller compactor [200 h]; Physical Units [552487 h] | 64,120.28 | 64,120.28 | ZNA | CON |  |
|  | MH-36-A-3-8 /MH-36-A-3-7 | **MH-36-A-3-8 /MH-36-A-3-7** |  | 2026-08-20 | 2026-09-28 |  |  |  |  |  |  |  |  |  |  |  |  |
| A69080 |  | Excavation | 4d | 2026-08-20 A | 2026-09-28 A | A69130, A1080, A58910 | 100% | 2026-09-30 | 2026-10-04 |  |  | ICKMO1-cost unite [48090.2 $]; Excavator [200 h]; Physical Units [414365 h] | 48,090.21 | 48,090.21 | ZNA | CON |  |
| A69090 |  | Pipe Laying | 6d | 2026-08-20 A | 2026-09-28 A | A69080 | 100% | 2026-10-05 | 2026-10-11 |  |  | ICKMO1-cost unite [32060.1 $]; boom truck [200 h]; labor [1200 h]; Storm Network Circular pipes (GRP) [80.79]; Physical Units [276243 h] | 32,060.13 | 32,060.13 | ZNA | CON | LAY |
| A69100 |  | Install Manhole | 6d | 2026-08-20 A | 2026-09-28 A | A69080 | 100% | 2026-10-05 | 2026-10-11 |  |  | ICKMO1-cost unite [144271 $]; boom truck [200 h]; labor [1200 h]; Physical Units [1243095 h] | 144,270.63 | 144,270.63 | ZNA | CON | MH |
| A69110 |  | Testing & Inspection | 6d | 2026-08-20 A | 2026-09-28 A | A69090 | 100% | 2027-05-20 | 2027-05-27 |  |  | ICKMO1-cost unite [32060.1 $]; labor [1200 h]; Physical Units [276243 h] | 32,060.13 | 32,060.13 | ZNA | CON |  |
| A69120 |  | Backfilling & Compaction | 6d | 2026-08-20 A | 2026-09-28 A | A69110, A69100, A69170 | 100% | 2027-06-03 | 2027-06-10 |  |  | ICKMO1-cost unite [64120.3 $]; Roller compactor [200 h]; Physical Units [552487 h] | 64,120.28 | 64,120.28 | ZNA | CON |  |
|  | MH-36-A-3-9 /MH-36-A-3-8 | **MH-36-A-3-9 /MH-36-A-3-8** |  | 2026-08-20 | 2026-09-28 |  |  |  |  |  |  |  |  |  |  |  |  |
| A69030 |  | Excavation | 6d | 2026-08-20 A | 2026-09-28 A | A69080, A1080 | 100% | 2026-10-05 | 2026-10-11 |  |  | ICKMO1-cost unite [48090.2 $]; Excavator [200 h]; Physical Units [414365 h] | 48,090.21 | 48,090.21 | ZNA | CON |  |
| A69040 |  | Pipe Laying | 6d | 2026-08-20 A | 2026-09-28 A | A69030 | 100% | 2026-10-12 | 2026-10-18 |  |  | ICKMO1-cost unite [32060.1 $]; boom truck [200 h]; labor [1200 h]; Storm Network Circular pipes (GRP) [80.79]; Physical Units [276243 h] | 32,060.13 | 32,060.13 | ZNA | CON | LAY |
| A69050 |  | Install Manhole | 6d | 2026-08-20 A | 2026-09-28 A | A69030 | 100% | 2026-10-12 | 2026-10-18 |  |  | ICKMO1-cost unite [144271 $]; boom truck [200 h]; labor [1200 h]; Physical Units [1243095 h] | 144,270.63 | 144,270.63 | ZNA | CON | MH |
| A69060 |  | Testing & Inspection | 6d | 2026-08-20 A | 2026-09-28 A | A69040 | 100% | 2027-05-20 | 2027-05-27 |  |  | ICKMO1-cost unite [32060.1 $]; labor [1200 h]; Physical Units [276243 h] | 32,060.13 | 32,060.13 | ZNA | CON |  |
| A69070 |  | Backfilling & Compaction | 4d | 2026-08-20 A | 2026-09-28 A | A69060, A69050, A69120 | 100% | 2027-06-10 | 2027-06-15 |  |  | ICKMO1-cost unite [64120.3 $]; Roller compactor [200 h]; Physical Units [552487 h] | 64,120.28 | 64,120.28 | ZNA | CON |  |
|  | EX LR 02 | **EX LR 02** |  | 2026-12-09 | 2027-01-05 |  |  |  |  |  |  |  |  |  |  |  |  |
|  | MH-32-A-12-9 /MH-32-A-12-8 | **MH-32-A-12-9 /MH-32-A-12-8** |  | 2026-12-09 | 2027-01-05 |  |  |  |  |  |  |  |  |  |  |  |  |
| A68980 |  | Excavation | 6d | 2026-12-09 | 2026-12-16 | A69030, A1080 |  |  |  | -20.96d | 0d | ICKMO1-cost unite [144271 $]; Excavator [200 h]; Physical Units [1243095 h] | 144,270.63 |  | ZNA | CON |  |
| A68990 |  | Pipe Laying | 6d | 2026-12-16 | 2026-12-23 | A68980 |  |  |  | -20.96d | 0d | ICKMO1-cost unite [96180.4 $]; boom truck [200 h]; labor [1200 h]; Storm Network Circular pipes (GRP) [80.79]; Physical Units [828730 h] | 96,180.42 |  | ZNA | CON | LAY |
| A69000 |  | Install Manhole | 6d | 2026-12-16 | 2026-12-23 | A68980 |  |  |  | -14.96d | 6d | ICKMO1-cost unite [432812 $]; boom truck [200 h]; labor [1200 h]; Physical Units [3729286 h] | 432,811.89 |  | ZNA | CON | MH |
| A69010 |  | Testing & Inspection | 6d | 2026-12-23 | 2026-12-30 | A68990 |  |  |  | -20.96d | 0d | ICKMO1-cost unite [96180.4 $]; labor [1200 h]; Physical Units [828730 h] | 96,180.42 |  | ZNA | CON |  |
| A69020 |  | Backfilling & Compaction | 5d | 2026-12-30 | 2027-01-05 | A69010, A69000 |  |  |  | -20.96d | 0d | ICKMO1-cost unite [192361 $]; Roller compactor [200 h]; Physical Units [1657461 h] | 192,360.83 |  | ZNA | CON |  |

| ID | WBS | Activity | Duration | Start | Finish | Predecessors | Complete | Planned start | Planned finish | Total float | Free float | Resources | Cost | Actual cost | ALKHARJ INDUSTERIAL AREA - PROJECT ZONES | ALKHARJ INDUSTERIAL AREA - DECEPLINS | ALKHARJ INDUSTERIAL AREA - Wet networks |
| --- | --- | --- | --- | --- | --- | --- | --- | --- | --- | --- | --- | --- | --- | --- | --- | --- | --- |
|  | COLLECTOR R-01 L | **COLLECTOR R-01 L** |  | 2026-08-20 | 2026-10-20 |  |  |  |  |  |  |  |  |  |  |  |  |
|  | MH-32-A-13 /MH-32-A-12 | **MH-32-A-13 /MH-32-A-12** |  | 2026-08-20 | 2026-09-28 |  |  |  |  |  |  |  |  |  |  |  |  |
| A68930 |  | Excavation | 10d | 2026-08-20 A | 2026-09-28 A | A59800, A59810, A1080 | 100% | 2026-06-28 | 2026-07-08 |  |  | ICKMO1-cost unite [17029.7 $]; Excavator [200 h]; Physical Units [146735 h] | 17,029.65 | 17,029.65 | ZNA | CON |  |
| A68940 |  | Pipe Laying | 10d | 2026-08-20 A | 2026-09-28 A | A68930 | 100% | 2026-07-09 | 2026-07-20 |  |  | ICKMO1-cost unite [11353.1 $]; boom truck [200 h]; labor [1200 h]; Storm Network Circular pipes (GRP) [80.79]; Physical Units [97822.9 h] | 11,353.09 | 11,353.09 | ZNA | CON | LAY |
| A68950 |  | Install Manhole | 10d | 2026-08-20 A | 2026-09-28 A | A68930 | 100% | 2026-09-26 | 2026-10-06 |  |  | ICKMO1-cost unite [51088.9 $]; boom truck [200 h]; labor [1200 h]; Physical Units [440203 h] | 51,088.93 | 51,088.93 | ZNA | CON | MH |
| A68960 |  | Testing & Inspection | 10d | 2026-08-20 A | 2026-09-28 A | A68940 | 100% | 2026-10-07 | 2026-10-18 |  |  | ICKMO1-cost unite [11353.1 $]; labor [1200 h]; Physical Units [97822.9 h] | 11,353.09 | 11,353.09 | ZNA | CON |  |
| A68970 |  | Backfilling & Compaction | 10d | 2026-08-20 A | 2026-09-28 A | A68960, A68950 | 100% | 2026-10-19 | 2026-10-29 |  |  | ICKMO1-cost unite [22706.2 $]; Roller compactor [200 h]; Physical Units [195646 h] | 22,706.19 | 22,706.19 | ZNA | CON |  |
|  | MH-32-A-14 /MH-32-A-13 | **MH-32-A-14 /MH-32-A-13** |  | 2026-08-20 | 2026-09-28 |  |  |  |  |  |  |  |  |  |  |  |  |
| A68880 |  | Excavation | 10d | 2026-08-20 A | 2026-09-28 A | A68930, A1080 | 100% | 2026-07-09 | 2026-07-20 |  |  | ICKMO1-cost unite [17029.7 $]; Excavator [200 h]; Physical Units [146735 h] | 17,029.65 | 17,029.65 | ZNA | CON |  |
| A68890 |  | Pipe Laying | 10d | 2026-08-20 A | 2026-09-28 A | A68880 | 100% | 2026-07-21 | 2026-08-01 |  |  | ICKMO1-cost unite [11353.1 $]; boom truck [200 h]; labor [1200 h]; Storm Network Circular pipes (GRP) [80.79]; Physical Units [97822.9 h] | 11,353.09 | 11,353.09 | ZNA | CON | LAY |
| A68900 |  | Install Manhole | 10d | 2026-08-20 A | 2026-09-28 A | A68880 | 100% | 2026-07-21 | 2026-08-01 |  |  | ICKMO1-cost unite [51088.9 $]; boom truck [200 h]; labor [1200 h]; Physical Units [440203 h] | 51,088.93 | 51,088.93 | ZNA | CON | MH |
| A68910 |  | Testing & Inspection | 10d | 2026-08-20 A | 2026-09-28 A | A68890 | 100% | 2026-10-10 | 2026-10-20 |  |  | ICKMO1-cost unite [11353.1 $]; labor [1200 h]; Physical Units [97822.9 h] | 11,353.09 | 11,353.09 | ZNA | CON |  |
| A68920 |  | Backfilling & Compaction | 10d | 2026-08-20 A | 2026-09-28 A | A68910, A68900, A68970 | 100% | 2027-01-07 | 2027-01-19 |  |  | ICKMO1-cost unite [22706.2 $]; Roller compactor [200 h]; Physical Units [195646 h] | 22,706.19 | 22,706.19 | ZNA | CON |  |
|  | MH-32-A-14-1 /MH-32-A-14 | **MH-32-A-14-1 /MH-32-A-14** |  | 2026-08-20 | 2026-10-20 |  |  |  |  |  |  |  |  |  |  |  |  |
| A68830 |  | Excavation | 10d | 2026-08-20 A | 2026-09-28 A | A68880, A1080 | 100% | 2026-07-21 | 2026-08-01 |  |  | ICKMO1-cost unite [17029.7 $]; Excavator [200 h]; Physical Units [146735 h] | 17,029.65 | 17,029.65 | ZNA | CON |  |
| A68840 |  | Pipe Laying | 10d | 2026-08-20 A | 2026-09-28 A | A68830 | 100% | 2026-08-02 | 2026-08-12 |  |  | ICKMO1-cost unite [11353.1 $]; boom truck [200 h]; labor [1200 h]; Storm Network Circular pipes (GRP) [80.79]; Physical Units [97822.9 h] | 11,353.09 | 11,353.09 | ZNA | CON | LAY |
| A68850 |  | Install Manhole | 10d | 2026-08-20 A | 2026-09-28 A | A68830 | 100% | 2026-08-02 | 2026-08-12 |  |  | ICKMO1-cost unite [51088.9 $]; boom truck [200 h]; labor [1200 h]; Physical Units [440203 h] | 51,088.93 | 51,088.93 | ZNA | CON | MH |
| A68870 |  | Backfilling & Compaction | 10d | 2026-08-20 A | 2026-09-28 A | A68860, A68850, A68920 | 100% | 2027-01-19 | 2027-01-31 |  |  | ICKMO1-cost unite [22706.2 $]; Roller compactor [200 h]; Physical Units [195646 h] | 22,706.19 | 22,706.19 | ZNA | CON |  |
| A68860 |  | Testing & Inspection | 10d | 2026-10-10 | 2026-10-20 | A68840 |  |  |  | 86d | 0d | ICKMO1-cost unite [11353.1 $]; labor [1200 h]; Physical Units [97822.9 h] | 11,353.09 |  | ZNA | CON |  |
|  | MH-32-A-14-2 /MH-32-A-14-1 | **MH-32-A-14-2 /MH-32-A-14-1** |  | 2026-08-20 | 2026-10-20 |  |  |  |  |  |  |  |  |  |  |  |  |
| A68780 |  | Excavation | 10d | 2026-08-20 A | 2026-09-28 A | A68830, A1080 | 100% | 2026-08-02 | 2026-08-12 |  |  | ICKMO1-cost unite [17029.7 $]; Excavator [200 h]; Physical Units [146735 h] | 17,029.65 | 17,029.65 | ZNA | CON |  |
| A68790 |  | Pipe Laying | 10d | 2026-08-20 A | 2026-09-28 A | A68780 | 100% | 2026-08-13 | 2026-08-24 |  |  | ICKMO1-cost unite [11353.1 $]; boom truck [200 h]; labor [1200 h]; Storm Network Circular pipes (GRP) [80.79]; Physical Units [97822.9 h] | 11,353.09 | 11,353.09 | ZNA | CON | LAY |
| A68800 |  | Install Manhole | 10d | 2026-08-20 A | 2026-09-28 A | A68780 | 100% | 2026-08-13 | 2026-08-24 |  |  | ICKMO1-cost unite [51088.9 $]; boom truck [200 h]; labor [1200 h]; Physical Units [440203 h] | 51,088.93 | 51,088.93 | ZNA | CON | MH |
| A68820 |  | Backfilling & Compaction | 10d | 2026-08-20 A | 2026-09-28 A | A68810, A68800, A68870 | 100% | 2027-01-31 | 2027-02-11 |  |  | ICKMO1-cost unite [22706.2 $]; Roller compactor [200 h]; Physical Units [195646 h] | 22,706.19 | 22,706.19 | ZNA | CON |  |
| A68810 |  | Testing & Inspection | 10d | 2026-10-10 | 2026-10-20 | A68790 |  |  |  | 86d | 0d | ICKMO1-cost unite [11353.1 $]; labor [1200 h]; Physical Units [97822.9 h] | 11,353.09 |  | ZNA | CON |  |

| ID | WBS | Activity | Duration | Start | Finish | Predecessors | Complete | Planned start | Planned finish | Total float | Free float | Resources | Cost | Actual cost | ALKHARJ INDUSTERIAL AREA - PROJECT ZONES | ALKHARJ INDUSTERIAL AREA - DECEPLINS | ALKHARJ INDUSTERIAL AREA - Wet networks |
| --- | --- | --- | --- | --- | --- | --- | --- | --- | --- | --- | --- | --- | --- | --- | --- | --- | --- |
|  | MH-32-A-14-3 /MH-32-A-14-2 | **MH-32-A-14-3 /MH-32-A-14-2** |  | 2026-08-20 | 2026-10-20 |  |  |  |  |  |  |  |  |  |  |  |  |
| A68730 |  | Excavation | 10d | 2026-08-20 A | 2026-09-28 A | A68780, A1080 | 100% | 2026-08-13 | 2026-08-24 |  |  | ICKMO1-cost unite [17029.7 $]; Excavator [200 h]; Physical Units [146735 h] | 17,029.65 | 17,029.65 | ZNA | CON |  |
| A68740 |  | Pipe Laying | 10d | 2026-08-20 A | 2026-09-28 A | A68730 | 100% | 2026-08-25 | 2026-09-05 |  |  | ICKMO1-cost unite [11353.1 $]; boom truck [200 h]; labor [1200 h]; Storm Network Circular pipes (GRP) [80.79]; Physical Units [97822.9 h] | 11,353.09 | 11,353.09 | ZNA | CON | LAY |
| A68750 |  | Install Manhole | 10d | 2026-08-20 A | 2026-09-28 A | A68730 | 100% | 2026-08-25 | 2026-09-05 |  |  | ICKMO1-cost unite [51088.9 $]; boom truck [200 h]; labor [1200 h]; Physical Units [440203 h] | 51,088.93 | 51,088.93 | ZNA | CON | MH |
| A68770 |  | Backfilling & Compaction | 10d | 2026-08-20 A | 2026-09-28 A | A68760, A68750, A68820 | 100% | 2027-02-11 | 2027-02-23 |  |  | ICKMO1-cost unite [22706.2 $]; Roller compactor [200 h]; Physical Units [195646 h] | 22,706.19 | 22,706.19 | ZNA | CON |  |
| A68760 |  | Testing & Inspection | 10d | 2026-10-10 | 2026-10-20 | A68740 |  |  |  | 86d | 0d | ICKMO1-cost unite [11353.1 $]; labor [1200 h]; Physical Units [97822.9 h] | 11,353.09 |  | ZNA | CON |  |
|  | MH-32-A-14-4 /MH-32-A-14-3 | **MH-32-A-14-4 /MH-32-A-14-3** |  | 2026-08-20 | 2026-10-20 |  |  |  |  |  |  |  |  |  |  |  |  |
| A68680 |  | Excavation | 10d | 2026-08-20 A | 2026-09-28 A | A68730, A1080 | 100% | 2026-08-25 | 2026-09-05 |  |  | ICKMO1-cost unite [17029.7 $]; Excavator [200 h]; Physical Units [146735 h] | 17,029.65 | 17,029.65 | ZNA | CON |  |
| A68690 |  | Pipe Laying | 10d | 2026-08-20 A | 2026-09-28 A | A68680 | 100% | 2026-09-06 | 2026-09-16 |  |  | ICKMO1-cost unite [11353.1 $]; boom truck [200 h]; labor [1200 h]; Storm Network Circular pipes (GRP) [80.79]; Physical Units [97822.9 h] | 11,353.09 | 11,353.09 | ZNA | CON | LAY |
| A68700 |  | Install Manhole | 10d | 2026-08-20 A | 2026-09-28 A | A68680 | 100% | 2026-09-06 | 2026-09-16 |  |  | ICKMO1-cost unite [51088.9 $]; boom truck [200 h]; labor [1200 h]; Physical Units [440203 h] | 51,088.93 | 51,088.93 | ZNA | CON | MH |
| A68720 |  | Backfilling & Compaction | 10d | 2026-08-20 A | 2026-09-28 A | A68710, A68700, A68770 | 100% | 2027-02-23 | 2027-03-07 |  |  | ICKMO1-cost unite [22706.2 $]; Roller compactor [200 h]; Physical Units [195646 h] | 22,706.19 | 22,706.19 | ZNA | CON |  |
| A68710 |  | Testing & Inspection | 10d | 2026-10-10 | 2026-10-20 | A68690 |  |  |  | 86d | 0d | ICKMO1-cost unite [11353.1 $]; labor [1200 h]; Physical Units [97822.9 h] | 11,353.09 |  | ZNA | CON |  |
|  | MH-32-A-14-5 /MH-32-A-14-4 | **MH-32-A-14-5 /MH-32-A-14-4** |  | 2026-08-20 | 2026-10-20 |  |  |  |  |  |  |  |  |  |  |  |  |
| A68630 |  | Excavation | 10d | 2026-08-20 A | 2026-09-28 A | A68680, A1080 | 100% | 2026-09-06 | 2026-09-16 |  |  | ICKMO1-cost unite [17029.7 $]; Excavator [200 h]; Physical Units [146735 h] | 17,029.65 | 17,029.65 | ZNA | CON |  |
| A68640 |  | Pipe Laying | 10d | 2026-08-20 A | 2026-09-28 A | A68630 | 100% | 2026-09-17 | 2026-09-28 |  |  | ICKMO1-cost unite [11353.1 $]; boom truck [200 h]; labor [1200 h]; Storm Network Circular pipes (GRP) [80.79]; Physical Units [97822.9 h] | 11,353.09 | 11,353.09 | ZNA | CON | LAY |
| A68650 |  | Install Manhole | 10d | 2026-08-20 A | 2026-09-28 A | A68630 | 100% | 2026-09-17 | 2026-09-28 |  |  | ICKMO1-cost unite [51088.9 $]; boom truck [200 h]; labor [1200 h]; Physical Units [440203 h] | 51,088.93 | 51,088.93 | ZNA | CON | MH |
| A68670 |  | Backfilling & Compaction | 10d | 2026-08-20 A | 2026-09-28 A | A68660, A68650, A68720 | 100% | 2027-03-07 | 2027-03-18 |  |  | ICKMO1-cost unite [22706.2 $]; Roller compactor [200 h]; Physical Units [195646 h] | 22,706.19 | 22,706.19 | ZNA | CON |  |
| A68660 |  | Testing & Inspection | 10d | 2026-10-10 | 2026-10-20 | A68640 |  |  |  | 86d | 0d | ICKMO1-cost unite [11353.1 $]; labor [1200 h]; Physical Units [97822.9 h] | 11,353.09 |  | ZNA | CON |  |
|  | MH-59-A-1 /MH-1 | **MH-59-A-1 /MH-1** |  | 2026-08-20 | 2026-10-20 |  |  |  |  |  |  |  |  |  |  |  |  |
| A68580 |  | Excavation | 10d | 2026-08-20 A | 2026-09-28 A | A68630, A1080 | 100% | 2026-09-17 | 2026-09-28 |  |  | ICKMO1-cost unite [17029.7 $]; Excavator [200 h]; Physical Units [146735 h] | 17,029.65 | 17,029.65 | ZNA | CON |  |
| A68590 |  | Pipe Laying | 10d | 2026-08-20 A | 2026-09-28 A | A68580 | 100% | 2026-09-29 | 2026-10-10 |  |  | ICKMO1-cost unite [11353.1 $]; boom truck [200 h]; labor [1200 h]; Storm Network Circular pipes (GRP) [80.79]; Physical Units [97822.9 h] | 11,353.09 | 11,353.09 | ZNA | CON | LAY |
| A68600 |  | Install Manhole | 10d | 2026-08-20 A | 2026-09-28 A | A68580 | 100% | 2026-09-29 | 2026-10-10 |  |  | ICKMO1-cost unite [51088.9 $]; boom truck [200 h]; labor [1200 h]; Physical Units [440203 h] | 51,088.93 | 51,088.93 | ZNA | CON | MH |
| A68620 |  | Backfilling & Compaction | 10d | 2026-08-20 A | 2026-09-28 A | A68610, A68600, A68670 | 100% | 2027-03-18 | 2027-03-30 |  |  | ICKMO1-cost unite [22706.2 $]; Roller compactor [200 h]; Physical Units [195646 h] | 22,706.19 | 22,706.19 | ZNA | CON |  |
| A68610 |  | Testing & Inspection | 10d | 2026-10-10 | 2026-10-20 | A68590 |  |  |  | 86d | 0d | ICKMO1-cost unite [11353.1 $]; labor [1200 h]; Physical Units [97822.9 h] | 11,353.09 |  | ZNA | CON |  |

| ID | WBS | Activity | Duration | Start | Finish | Predecessors | Complete | Planned start | Planned finish | Resources | Cost | Actual cost | ALKHARJ INDUSTERIAL AREA - PROJECT ZONES | ALKHARJ INDUSTERIAL AREA - DECEPLINS | ALKHARJ INDUSTERIAL AREA - Wet networks |
| --- | --- | --- | --- | --- | --- | --- | --- | --- | --- | --- | --- | --- | --- | --- | --- |
|  | COLLECTOR R-01 R | **COLLECTOR R-01 R** |  | 2026-08-20 | 2026-09-28 |  |  |  |  |  |  |  |  |  |  |
|  | MH-32-A-11-1 /MH-32-A-11 | **MH-32-A-11-1 /MH-32-A-11** |  | 2026-08-20 | 2026-09-28 |  |  |  |  |  |  |  |  |  |  |
| A68530 |  | Excavation | 10d | 2026-08-20 A | 2026-09-28 A | A59800, A59810, A1080 | 100% | 2026-06-28 | 2026-07-08 | ICKMO1-cost unite [18033.8 $]; Excavator [200 h]; Physical Units [155387 h] | 18,033.84 | 18,033.84 | ZNA | CON |  |
| A68540 |  | Pipe Laying | 10d | 2026-08-20 A | 2026-09-28 A | A68530 | 100% | 2026-07-09 | 2026-07-20 | ICKMO1-cost unite [12022.5 $]; boom truck [200 h]; labor [1200 h]; Storm Network Circular pipes (GRP) [80.79]; Physical Units [103591 h] | 12,022.55 | 12,022.55 | ZNA | CON | LAY |
| A68550 |  | Install Manhole | 10d | 2026-08-20 A | 2026-09-28 A | A68530 | 100% | 2026-12-03 | 2026-12-15 | ICKMO1-cost unite [54101.5 $]; boom truck [200 h]; labor [1200 h]; Physical Units [466161 h] | 54,101.49 | 54,101.49 | ZNA | CON | MH |
| A68560 |  | Testing & Inspection | 10d | 2026-08-20 A | 2026-09-28 A | A68540 | 100% | 2026-12-15 | 2026-12-27 | ICKMO1-cost unite [12022.5 $]; labor [1200 h]; Physical Units [103591 h] | 12,022.55 | 12,022.55 | ZNA | CON |  |
| A68570 |  | Backfilling & Compaction | 10d | 2026-08-20 A | 2026-09-28 A | A68560, A68550 | 100% | 2026-12-27 | 2027-01-07 | ICKMO1-cost unite [24045.1 $]; Roller compactor [200 h]; Physical Units [207183 h] | 24,045.1 | 24,045.1 | ZNA | CON |  |
|  | MH-32-A-11-2 /MH-32-A-11-1 | **MH-32-A-11-2 /MH-32-A-11-1** |  | 2026-08-20 | 2026-09-28 |  |  |  |  |  |  |  |  |  |  |
| A68480 |  | Excavation | 10d | 2026-08-20 A | 2026-09-28 A | A68530, A1080 | 100% | 2026-07-09 | 2026-07-20 | ICKMO1-cost unite [18033.8 $]; Excavator [200 h]; Physical Units [155387 h] | 18,033.84 | 18,033.84 | ZNA | CON |  |
| A68490 |  | Pipe Laying | 10d | 2026-08-20 A | 2026-09-28 A | A68480 | 100% | 2026-07-21 | 2026-08-01 | ICKMO1-cost unite [12022.5 $]; boom truck [200 h]; labor [1200 h]; Storm Network Circular pipes (GRP) [80.79]; Physical Units [103591 h] | 12,022.55 | 12,022.55 | ZNA | CON | LAY |
| A68500 |  | Install Manhole | 10d | 2026-08-20 A | 2026-09-28 A | A68480 | 100% | 2026-07-21 | 2026-08-01 | ICKMO1-cost unite [54101.5 $]; boom truck [200 h]; labor [1200 h]; Physical Units [466161 h] | 54,101.49 | 54,101.49 | ZNA | CON | MH |
| A68510 |  | Testing & Inspection | 10d | 2026-08-20 A | 2026-09-28 A | A68490 | 100% | 2026-12-03 | 2026-12-15 | ICKMO1-cost unite [12022.5 $]; labor [1200 h]; Physical Units [103591 h] | 12,022.55 | 12,022.55 | ZNA | CON |  |
| A68520 |  | Backfilling & Compaction | 10d | 2026-08-20 A | 2026-09-28 A | A68510, A68500, A68570 | 100% | 2027-01-07 | 2027-01-19 | ICKMO1-cost unite [24045.1 $]; Roller compactor [200 h]; Physical Units [207183 h] | 24,045.1 | 24,045.1 | ZNA | CON |  |
|  | MH-32-A-11-3 /MH-32-A-11-2 | **MH-32-A-11-3 /MH-32-A-11-2** |  | 2026-08-20 | 2026-09-28 |  |  |  |  |  |  |  |  |  |  |
| A68430 |  | Excavation | 10d | 2026-08-20 A | 2026-09-28 A | A68480, A1080 | 100% | 2026-07-21 | 2026-08-01 | ICKMO1-cost unite [18033.8 $]; Excavator [200 h]; Physical Units [155387 h] | 18,033.84 | 18,033.84 | ZNA | CON |  |
| A68440 |  | Pipe Laying | 10d | 2026-08-20 A | 2026-09-28 A | A68430 | 100% | 2026-08-02 | 2026-08-12 | ICKMO1-cost unite [12022.5 $]; boom truck [200 h]; labor [1200 h]; Storm Network Circular pipes (GRP) [80.79]; Physical Units [103591 h] | 12,022.55 | 12,022.55 | ZNA | CON | LAY |
| A68450 |  | Install Manhole | 10d | 2026-08-20 A | 2026-09-28 A | A68430 | 100% | 2026-08-02 | 2026-08-12 | ICKMO1-cost unite [54101.5 $]; boom truck [200 h]; labor [1200 h]; Physical Units [466161 h] | 54,101.49 | 54,101.49 | ZNA | CON | MH |
| A68460 |  | Testing & Inspection | 10d | 2026-08-20 A | 2026-09-28 A | A68440 | 100% | 2026-12-03 | 2026-12-15 | ICKMO1-cost unite [12022.5 $]; labor [1200 h]; Physical Units [103591 h] | 12,022.55 | 12,022.55 | ZNA | CON |  |
| A68470 |  | Backfilling & Compaction | 10d | 2026-08-20 A | 2026-09-28 A | A68460, A68450, A68520 | 100% | 2027-01-19 | 2027-01-31 | ICKMO1-cost unite [24045.1 $]; Roller compactor [200 h]; Physical Units [207183 h] | 24,045.1 | 24,045.1 | ZNA | CON |  |
|  | MH-32-A-11-4 /MH-32-A-11-3 | **MH-32-A-11-4 /MH-32-A-11-3** |  | 2026-08-20 | 2026-09-28 |  |  |  |  |  |  |  |  |  |  |
| A68380 |  | Excavation | 10d | 2026-08-20 A | 2026-09-28 A | A68430, A1080 | 100% | 2026-08-02 | 2026-08-12 | ICKMO1-cost unite [18033.8 $]; Excavator [200 h]; Physical Units [155387 h] | 18,033.84 | 18,033.84 | ZNA | CON |  |
| A68390 |  | Pipe Laying | 10d | 2026-08-20 A | 2026-09-28 A | A68380 | 100% | 2026-08-13 | 2026-08-24 | ICKMO1-cost unite [12022.5 $]; boom truck [200 h]; labor [1200 h]; Storm Network Circular pipes (GRP) [80.79]; Physical Units [103591 h] | 12,022.55 | 12,022.55 | ZNA | CON | LAY |
| A68400 |  | Install Manhole | 10d | 2026-08-20 A | 2026-09-28 A | A68380 | 100% | 2026-08-13 | 2026-08-24 | ICKMO1-cost unite [54101.5 $]; boom truck [200 h]; labor [1200 h]; Physical Units [466161 h] | 54,101.49 | 54,101.49 | ZNA | CON | MH |
| A68410 |  | Testing & Inspection | 10d | 2026-08-20 A | 2026-09-28 A | A68390 | 100% | 2026-12-03 | 2026-12-15 | ICKMO1-cost unite [12022.5 $]; labor [1200 h]; Physical Units [103591 h] | 12,022.55 | 12,022.55 | ZNA | CON |  |
| A68420 |  | Backfilling & Compaction | 10d | 2026-08-20 A | 2026-09-28 A | A68410, A68400, A68470 | 100% | 2027-01-31 | 2027-02-11 | ICKMO1-cost unite [24045.1 $]; Roller compactor [200 h]; Physical Units [207183 h] | 24,045.1 | 24,045.1 | ZNA | CON |  |

| ID | WBS | Activity | Duration | Start | Finish | Predecessors | Complete | Planned start | Planned finish | Resources | Cost | Actual cost | ALKHARJ INDUSTERIAL AREA - PROJECT ZONES | ALKHARJ INDUSTERIAL AREA - DECEPLINS | ALKHARJ INDUSTERIAL AREA - Wet networks |
| --- | --- | --- | --- | --- | --- | --- | --- | --- | --- | --- | --- | --- | --- | --- | --- |
|  | MH-32-A-11-5 /MH-32-A-11-4 | **MH-32-A-11-5 /MH-32-A-11-4** |  | 2026-08-20 | 2026-09-28 |  |  |  |  |  |  |  |  |  |  |
| A68330 |  | Excavation | 10d | 2026-08-20 A | 2026-09-28 A | A68380, A1080 | 100% | 2026-08-13 | 2026-08-24 | ICKMO1-cost unite [18033.8 $]; Excavator [200 h]; Physical Units [155387 h] | 18,033.84 | 18,033.84 | ZNA | CON |  |
| A68340 |  | Pipe Laying | 10d | 2026-08-20 A | 2026-09-28 A | A68330 | 100% | 2026-08-25 | 2026-09-05 | ICKMO1-cost unite [12022.5 $]; boom truck [200 h]; labor [1200 h]; Storm Network Circular pipes (GRP) [80.79]; Physical Units [103591 h] | 12,022.55 | 12,022.55 | ZNA | CON | LAY |
| A68350 |  | Install Manhole | 10d | 2026-08-20 A | 2026-09-28 A | A68330 | 100% | 2026-08-25 | 2026-09-05 | ICKMO1-cost unite [54101.5 $]; boom truck [200 h]; labor [1200 h]; Physical Units [466161 h] | 54,101.49 | 54,101.49 | ZNA | CON | MH |
| A68360 |  | Testing & Inspection | 10d | 2026-08-20 A | 2026-09-28 A | A68340 | 100% | 2026-12-03 | 2026-12-15 | ICKMO1-cost unite [12022.5 $]; labor [1200 h]; Physical Units [103591 h] | 12,022.55 | 12,022.55 | ZNA | CON |  |
| A68370 |  | Backfilling & Compaction | 10d | 2026-08-20 A | 2026-09-28 A | A68360, A68350, A68420 | 100% | 2027-02-11 | 2027-02-23 | ICKMO1-cost unite [24045.1 $]; Roller compactor [200 h]; Physical Units [207183 h] | 24,045.1 | 24,045.1 | ZNA | CON |  |
|  | MH-32-A-11-6 /MH-32-A-11-5 | **MH-32-A-11-6 /MH-32-A-11-5** |  | 2026-08-20 | 2026-09-28 |  |  |  |  |  |  |  |  |  |  |
| A68280 |  | Excavation | 10d | 2026-08-20 A | 2026-09-28 A | A68330, A1080 | 100% | 2026-08-25 | 2026-09-05 | ICKMO1-cost unite [18033.8 $]; Excavator [200 h]; Physical Units [155387 h] | 18,033.84 | 18,033.84 | ZNA | CON |  |
| A68290 |  | Pipe Laying | 10d | 2026-08-20 A | 2026-09-28 A | A68280 | 100% | 2026-09-06 | 2026-09-16 | ICKMO1-cost unite [12022.5 $]; boom truck [200 h]; labor [1200 h]; Storm Network Circular pipes (GRP) [80.79]; Physical Units [103591 h] | 12,022.55 | 12,022.55 | ZNA | CON | LAY |
| A68300 |  | Install Manhole | 10d | 2026-08-20 A | 2026-09-28 A | A68280 | 100% | 2026-09-06 | 2026-09-16 | ICKMO1-cost unite [54101.5 $]; boom truck [200 h]; labor [1200 h]; Physical Units [466161 h] | 54,101.49 | 54,101.49 | ZNA | CON | MH |
| A68310 |  | Testing & Inspection | 10d | 2026-08-20 A | 2026-09-28 A | A68290 | 100% | 2026-12-03 | 2026-12-15 | ICKMO1-cost unite [12022.5 $]; labor [1200 h]; Physical Units [103591 h] | 12,022.55 | 12,022.55 | ZNA | CON |  |
| A68320 |  | Backfilling & Compaction | 10d | 2026-08-20 A | 2026-09-28 A | A68310, A68300, A68370 | 100% | 2027-02-23 | 2027-03-07 | ICKMO1-cost unite [24045.1 $]; Roller compactor [200 h]; Physical Units [207183 h] | 24,045.1 | 24,045.1 | ZNA | CON |  |
|  | MH-32-A-11-7 /MH-32-A-11-6 | **MH-32-A-11-7 /MH-32-A-11-6** |  | 2026-08-20 | 2026-09-28 |  |  |  |  |  |  |  |  |  |  |
| A68230 |  | Excavation | 10d | 2026-08-20 A | 2026-09-28 A | A68280, A1080 | 100% | 2026-09-06 | 2026-09-16 | ICKMO1-cost unite [18033.8 $]; Excavator [200 h]; Physical Units [155387 h] | 18,033.84 | 18,033.84 | ZNA | CON |  |
| A68240 |  | Pipe Laying | 10d | 2026-08-20 A | 2026-09-28 A | A68230 | 100% | 2026-09-17 | 2026-09-28 | ICKMO1-cost unite [12022.5 $]; boom truck [200 h]; labor [1200 h]; Storm Network Circular pipes (GRP) [80.79]; Physical Units [103591 h] | 12,022.55 | 12,022.55 | ZNA | CON | LAY |
| A68250 |  | Install Manhole | 10d | 2026-08-20 A | 2026-09-28 A | A68230 | 100% | 2026-09-17 | 2026-09-28 | ICKMO1-cost unite [54101.5 $]; boom truck [200 h]; labor [1200 h]; Physical Units [466161 h] | 54,101.49 | 54,101.49 | ZNA | CON | MH |
| A68260 |  | Testing & Inspection | 10d | 2026-08-20 A | 2026-09-28 A | A68240 | 100% | 2026-12-03 | 2026-12-15 | ICKMO1-cost unite [12022.5 $]; labor [1200 h]; Physical Units [103591 h] | 12,022.55 | 12,022.55 | ZNA | CON |  |
| A68270 |  | Backfilling & Compaction | 10d | 2026-08-20 A | 2026-09-28 A | A68260, A68250, A68320 | 100% | 2027-03-07 | 2027-03-18 | ICKMO1-cost unite [24045.1 $]; Roller compactor [200 h]; Physical Units [207183 h] | 24,045.1 | 24,045.1 | ZNA | CON |  |
|  | MH-58-A-1 /MH-58-A | **MH-58-A-1 /MH-58-A** |  | 2026-08-20 | 2026-09-28 |  |  |  |  |  |  |  |  |  |  |
| A68180 |  | Excavation | 10d | 2026-08-20 A | 2026-09-28 A | A68230, A1080 | 100% | 2026-09-17 | 2026-09-28 | ICKMO1-cost unite [18033.8 $]; Excavator [200 h]; Physical Units [155387 h] | 18,033.84 | 18,033.84 | ZNA | CON |  |
| A68190 |  | Pipe Laying | 10d | 2026-08-20 A | 2026-09-28 A | A68180 | 100% | 2026-09-29 | 2026-10-10 | ICKMO1-cost unite [12022.5 $]; boom truck [200 h]; labor [1200 h]; Storm Network Circular pipes (GRP) [80.79]; Physical Units [103591 h] | 12,022.55 | 12,022.55 | ZNA | CON | LAY |
| A68200 |  | Install Manhole | 10d | 2026-08-20 A | 2026-09-28 A | A68180 | 100% | 2026-09-29 | 2026-10-10 | ICKMO1-cost unite [54101.5 $]; boom truck [200 h]; labor [1200 h]; Physical Units [466161 h] | 54,101.49 | 54,101.49 | ZNA | CON | MH |
| A68210 |  | Testing & Inspection | 10d | 2026-08-20 A | 2026-09-28 A | A68190 | 100% | 2026-12-03 | 2026-12-15 | ICKMO1-cost unite [12022.5 $]; labor [1200 h]; Physical Units [103591 h] | 12,022.55 | 12,022.55 | ZNA | CON |  |
| A68220 |  | Backfilling & Compaction | 10d | 2026-08-20 A | 2026-09-28 A | A68210, A68200, A68270 | 100% | 2027-03-18 | 2027-03-30 | ICKMO1-cost unite [24045.1 $]; Roller compactor [200 h]; Physical Units [207183 h] | 24,045.1 | 24,045.1 | ZNA | CON |  |

| ID | WBS | Activity | Duration | Start | Finish | Predecessors | Complete | Planned start | Planned finish | Resources | Cost | Actual cost | ALKHARJ INDUSTERIAL AREA - PROJECT ZONES | ALKHARJ INDUSTERIAL AREA - DECEPLINS | ALKHARJ INDUSTERIAL AREA - Wet networks |
| --- | --- | --- | --- | --- | --- | --- | --- | --- | --- | --- | --- | --- | --- | --- | --- |
|  | SEWEGE NETWORK | **SEWEGE NETWORK** |  | 2026-03-04 | 2027-03-01 |  |  |  |  |  |  |  |  |  |  |
|  | LR 01 | **LR 01** |  | 2026-03-04 | 2026-12-10 |  |  |  |  |  |  |  |  |  |  |
|  | MH-1.10 / MH-1.11 | **MH-1.10 / MH-1.11** |  | 2026-03-04 | 2026-04-05 |  |  |  |  |  |  |  |  |  |  |
| A38560 |  | Excavation | 2d | 2026-03-04 A | 2026-04-05 A | A74620, A1190, A1180, A1220, A1210, A1200, A10940, A10960, A10950 | 100% | 2027-04-04 | 2027-04-05 | ICKMO1-cost unite [3096.49 $]; Excavator [200 h]; Physical Units [26680.6 h] | 3,096.49 | 3,096.49 | ZNA | CON |  |
| A38580 |  | Pipe Laying | 8d | 2026-03-04 A | 2026-04-05 A | A38560 | 100% | 2027-04-06 | 2027-04-14 | ICKMO1-cost unite [2064.32 $]; boom truck [200 h]; labor [1200 h]; Sewage Network Circular pipes (GRP) [63.28]; Physical Units [17787 h] | 2,064.32 | 2,064.32 | ZNA | CON | LAY |
| A38610 |  | Install Manhole | 4d | 2026-03-04 A | 2026-04-05 A | A38560 | 100% | 2027-04-06 | 2027-04-10 | ICKMO1-cost unite [9289.47 $]; boom truck [200 h]; labor [1200 h]; Physical Units [80041.9 h] | 9,289.47 | 9,289.47 | ZNA | CON | MH |
| A38620 |  | Testing & Inspection | 2d | 2026-03-04 A | 2026-04-05 A | A38580 | 100% | 2027-04-15 | 2027-04-17 | ICKMO1-cost unite [2064.32 $]; labor [1200 h]; Physical Units [17787 h] | 2,064.32 | 2,064.32 | ZNA | CON |  |
| A38640 |  | Backfilling & Compaction | 4d | 2026-03-04 A | 2026-04-05 A | A38620, A38610 | 100% | 2027-04-18 | 2027-04-21 | ICKMO1-cost unite [4128.66 $]; Roller compactor [200 h]; Physical Units [35574.2 h] | 4,128.66 | 4,128.66 | ZNA | CON |  |
|  | MH-1.10.0 / MH-1.10.1 | **MH-1.10.0 / MH-1.10.1** |  | 2026-03-04 | 2026-04-05 |  |  |  |  |  |  |  |  |  |  |
| A38650 |  | Excavation | 2d | 2026-03-04 A | 2026-04-05 A | A38560, A1190 | 100% | 2027-04-06 | 2027-04-07 | ICKMO1-cost unite [3096.49 $]; Excavator [200 h]; Physical Units [26680.6 h] | 3,096.49 | 3,096.49 | ZNA | CON |  |
| A38660 |  | Pipe Laying | 8d | 2026-03-04 A | 2026-04-05 A | A38650 | 100% | 2027-04-08 | 2027-04-17 | ICKMO1-cost unite [2064.32 $]; boom truck [200 h]; labor [1200 h]; Sewage Network Circular pipes (GRP) [63.28]; Physical Units [17787 h] | 2,064.32 | 2,064.32 | ZNA | CON | LAY |
| A38670 |  | Install Manhole | 4d | 2026-03-04 A | 2026-04-05 A | A38650 | 100% | 2027-04-08 | 2027-04-12 | ICKMO1-cost unite [9289.47 $]; boom truck [200 h]; labor [1200 h]; Physical Units [80041.9 h] | 9,289.47 | 9,289.47 | ZNA | CON | MH |
| A38680 |  | Testing & Inspection | 2d | 2026-03-04 A | 2026-04-05 A | A38660 | 100% | 2027-04-18 | 2027-04-19 | ICKMO1-cost unite [2064.32 $]; labor [1200 h]; Physical Units [17787 h] | 2,064.32 | 2,064.32 | ZNA | CON |  |
| A38690 |  | Backfilling & Compaction | 4d | 2026-03-04 A | 2026-04-05 A | A38680, A38670, A38640 | 100% | 2027-04-22 | 2027-04-26 | ICKMO1-cost unite [4128.66 $]; Roller compactor [200 h]; Physical Units [35574.2 h] | 4,128.66 | 4,128.66 | ZNA | CON |  |
|  | MH-1.10.1 / MH-1.10.2 | **MH-1.10.1 / MH-1.10.2** |  | 2026-03-04 | 2026-04-05 |  |  |  |  |  |  |  |  |  |  |
| A38700 |  | Excavation | 2d | 2026-03-04 A | 2026-04-05 A | A38650, A1190 | 100% | 2027-04-08 | 2027-04-10 | ICKMO1-cost unite [3096.49 $]; Excavator [200 h]; Physical Units [26680.6 h] | 3,096.49 | 3,096.49 | ZNA | CON |  |
| A38710 |  | Pipe Laying | 8d | 2026-03-04 A | 2026-04-05 A | A38700 | 100% | 2027-04-11 | 2027-04-19 | ICKMO1-cost unite [2064.32 $]; boom truck [200 h]; labor [1200 h]; Sewage Network Circular pipes (GRP) [63.28]; Physical Units [17787 h] | 2,064.32 | 2,064.32 | ZNA | CON | LAY |
| A38720 |  | Install Manhole | 4d | 2026-03-04 A | 2026-04-05 A | A38700 | 100% | 2027-04-11 | 2027-04-14 | ICKMO1-cost unite [9289.47 $]; boom truck [200 h]; labor [1200 h]; Physical Units [80041.9 h] | 9,289.47 | 9,289.47 | ZNA | CON | MH |
| A38730 |  | Testing & Inspection | 2d | 2026-03-04 A | 2026-04-05 A | A38710 | 100% | 2027-04-20 | 2027-04-21 | ICKMO1-cost unite [2064.32 $]; labor [1200 h]; Physical Units [17787 h] | 2,064.32 | 2,064.32 | ZNA | CON |  |
| A38740 |  | Backfilling & Compaction | 4d | 2026-03-04 A | 2026-04-05 A | A38730, A38720, A38690 | 100% | 2027-04-27 | 2027-05-01 | ICKMO1-cost unite [4128.66 $]; Roller compactor [200 h]; Physical Units [35574.2 h] | 4,128.66 | 4,128.66 | ZNA | CON |  |
|  | MH-1.11 / MH-1.12 | **MH-1.11 / MH-1.12** |  | 2026-03-04 | 2026-04-05 |  |  |  |  |  |  |  |  |  |  |
| A38750 |  | Excavation | 2d | 2026-03-04 A | 2026-04-05 A | A38700, A1190 | 100% | 2027-04-11 | 2027-04-12 | ICKMO1-cost unite [3096.49 $]; Excavator [200 h]; Physical Units [26680.6 h] | 3,096.49 | 3,096.49 | ZNA | CON |  |
| A38760 |  | Pipe Laying | 8d | 2026-03-04 A | 2026-04-05 A | A38750 | 100% | 2027-04-13 | 2027-04-21 | ICKMO1-cost unite [2064.32 $]; boom truck [200 h]; labor [1200 h]; Sewage Network Circular pipes (GRP) [63.28]; Physical Units [17787 h] | 2,064.32 | 2,064.32 | ZNA | CON | LAY |
| A38770 |  | Install Manhole | 4d | 2026-03-04 A | 2026-04-05 A | A38750 | 100% | 2027-04-13 | 2027-04-17 | ICKMO1-cost unite [9289.47 $]; boom truck [200 h]; labor [1200 h]; Physical Units [80041.9 h] | 9,289.47 | 9,289.47 | ZNA | CON | MH |
| A38780 |  | Testing & Inspection | 2d | 2026-03-04 A | 2026-04-05 A | A38760 | 100% | 2027-04-22 | 2027-04-24 | ICKMO1-cost unite [2064.32 $]; labor [1200 h]; Physical Units [17787 h] | 2,064.32 | 2,064.32 | ZNA | CON |  |
| A38790 |  | Backfilling & Compaction | 4d | 2026-03-04 A | 2026-04-05 A | A38780, A38770, A38740 | 100% | 2027-05-02 | 2027-05-05 | ICKMO1-cost unite [4128.66 $]; Roller compactor [200 h]; Physical Units [35574.2 h] | 4,128.66 | 4,128.66 | ZNA | CON |  |

| ID | WBS | Activity | Duration | Start | Finish | Predecessors | Complete | Planned start | Planned finish | Total float | Free float | Resources | Cost | Actual cost | ALKHARJ INDUSTERIAL AREA - PROJECT ZONES | ALKHARJ INDUSTERIAL AREA - DECEPLINS | ALKHARJ INDUSTERIAL AREA - Wet networks |
| --- | --- | --- | --- | --- | --- | --- | --- | --- | --- | --- | --- | --- | --- | --- | --- | --- | --- |
|  | MH-1.12.0 / MH-1.12.1 | **MH-1.12.0 / MH-1.12.1** |  | 2026-03-04 | 2026-11-19 |  |  |  |  |  |  |  |  |  |  |  |  |
| A38800 |  | Excavation | 2d | 2026-03-04 A | 2026-04-05 A | A38750, A1190 | 100% | 2027-04-13 | 2027-04-14 |  |  | ICKMO1-cost unite [3096.49 $]; Excavator [200 h]; Physical Units [26680.6 h] | 3,096.49 | 3,096.49 | ZNA | CON |  |
| A38810 |  | Pipe Laying | 8d | 2026-03-04 A | 2026-04-05 A | A38800 | 100% | 2027-04-15 | 2027-04-24 |  |  | ICKMO1-cost unite [2064.32 $]; boom truck [200 h]; labor [1200 h]; Sewage Network Circular pipes (GRP) [63.28]; Physical Units [17787 h] | 2,064.32 | 2,064.32 | ZNA | CON | LAY |
| A38820 |  | Install Manhole | 4d | 2026-03-04 A | 2026-04-05 A | A38800 | 100% | 2027-04-15 | 2027-04-19 |  |  | ICKMO1-cost unite [9289.47 $]; boom truck [200 h]; labor [1200 h]; Physical Units [80041.9 h] | 9,289.47 | 9,289.47 | ZNA | CON | MH |
| A38840 |  | Backfilling & Compaction | 4d | 2026-03-04 A | 2026-04-05 A | A38830, A38820, A38790 | 100% | 2027-05-06 | 2027-05-10 |  |  | ICKMO1-cost unite [4128.66 $]; Roller compactor [200 h]; Physical Units [35574.2 h] | 4,128.66 | 4,128.66 | ZNA | CON |  |
| A38830 |  | Testing & Inspection | 2d | 2026-11-18 | 2026-11-19 | A38810 |  |  |  | 51d | 0d | ICKMO1-cost unite [2064.32 $]; labor [1200 h]; Physical Units [17787 h] | 2,064.32 |  | ZNA | CON |  |
|  | MH-1.12.1 / MH-1.12.2 | **MH-1.12.1 / MH-1.12.2** |  | 2026-03-04 | 2026-11-19 |  |  |  |  |  |  |  |  |  |  |  |  |
| A38850 |  | Excavation | 2d | 2026-03-04 A | 2026-04-05 A | A38800, A1190 | 100% | 2027-04-15 | 2027-04-17 |  |  | ICKMO1-cost unite [3096.49 $]; Excavator [200 h]; Physical Units [26680.6 h] | 3,096.49 | 3,096.49 | ZNA | CON |  |
| A38860 |  | Pipe Laying | 8d | 2026-03-04 A | 2026-04-05 A | A38850 | 100% | 2027-04-18 | 2027-04-26 |  |  | ICKMO1-cost unite [2064.32 $]; boom truck [200 h]; labor [1200 h]; Sewage Network Circular pipes (GRP) [63.28]; Physical Units [17787 h] | 2,064.32 | 2,064.32 | ZNA | CON | LAY |
| A38870 |  | Install Manhole | 4d | 2026-03-04 A | 2026-04-05 A | A38850 | 100% | 2027-04-18 | 2027-04-21 |  |  | ICKMO1-cost unite [9289.47 $]; boom truck [200 h]; labor [1200 h]; Physical Units [80041.9 h] | 9,289.47 | 9,289.47 | ZNA | CON | MH |
| A38890 |  | Backfilling & Compaction | 4d | 2026-03-04 A | 2026-04-05 A | A38880, A38870, A38840 | 100% | 2027-05-11 | 2027-05-15 |  |  | ICKMO1-cost unite [4128.66 $]; Roller compactor [200 h]; Physical Units [35574.2 h] | 4,128.66 | 4,128.66 | ZNA | CON |  |
| A38880 |  | Testing & Inspection | 2d | 2026-11-18 | 2026-11-19 | A38860 |  |  |  | 51d | 0d | ICKMO1-cost unite [2064.32 $]; labor [1200 h]; Physical Units [17787 h] | 2,064.32 |  | ZNA | CON |  |
|  | MH-1.12.1.0 / MH-1.12.1.1 | **MH-1.12.1.0 / MH-1.12.1.1** |  | 2026-03-04 | 2026-11-19 |  |  |  |  |  |  |  |  |  |  |  |  |
| A38900 |  | Excavation | 2d | 2026-03-04 A | 2026-04-05 A | A38850, A1190 | 100% | 2027-04-18 | 2027-04-19 |  |  | ICKMO1-cost unite [3096.49 $]; Excavator [200 h]; Physical Units [26680.6 h] | 3,096.49 | 3,096.49 | ZNA | CON |  |
| A38910 |  | Pipe Laying | 8d | 2026-03-04 A | 2026-04-05 A | A38900 | 100% | 2027-04-20 | 2027-04-28 |  |  | ICKMO1-cost unite [2064.32 $]; boom truck [200 h]; labor [1200 h]; Sewage Network Circular pipes (GRP) [63.28]; Physical Units [17787 h] | 2,064.32 | 2,064.32 | ZNA | CON | LAY |
| A38920 |  | Install Manhole | 4d | 2026-03-04 A | 2026-04-05 A | A38900 | 100% | 2027-04-20 | 2027-04-24 |  |  | ICKMO1-cost unite [9289.47 $]; boom truck [200 h]; labor [1200 h]; Physical Units [80041.9 h] | 9,289.47 | 9,289.47 | ZNA | CON | MH |
| A38940 |  | Backfilling & Compaction | 4d | 2026-03-04 A | 2026-04-05 A | A38930, A38920, A38890 | 100% | 2027-05-16 | 2027-05-19 |  |  | ICKMO1-cost unite [4128.66 $]; Roller compactor [200 h]; Physical Units [35574.2 h] | 4,128.66 | 4,128.66 | ZNA | CON |  |
| A38930 |  | Testing & Inspection | 2d | 2026-11-18 | 2026-11-19 | A38910 |  |  |  | 51d | 0d | ICKMO1-cost unite [2064.32 $]; labor [1200 h]; Physical Units [17787 h] | 2,064.32 |  | ZNA | CON |  |
|  | MH-1.12.2 / MH-1.12.3 | **MH-1.12.2 / MH-1.12.3** |  | 2026-03-04 | 2026-11-19 |  |  |  |  |  |  |  |  |  |  |  |  |
| A38950 |  | Excavation | 2d | 2026-03-04 A | 2026-04-05 A | A38900, A1190 | 100% | 2027-04-20 | 2027-04-21 |  |  | ICKMO1-cost unite [3096.49 $]; Excavator [200 h]; Physical Units [26680.6 h] | 3,096.49 | 3,096.49 | ZNA | CON |  |
| A38960 |  | Pipe Laying | 8d | 2026-03-04 A | 2026-04-05 A | A38950 | 100% | 2027-04-22 | 2027-05-01 |  |  | ICKMO1-cost unite [2064.32 $]; boom truck [200 h]; labor [1200 h]; Sewage Network Circular pipes (GRP) [63.28]; Physical Units [17787 h] | 2,064.32 | 2,064.32 | ZNA | CON | LAY |
| A38970 |  | Install Manhole | 4d | 2026-03-04 A | 2026-04-05 A | A38950 | 100% | 2027-04-22 | 2027-04-26 |  |  | ICKMO1-cost unite [9289.47 $]; boom truck [200 h]; labor [1200 h]; Physical Units [80041.9 h] | 9,289.47 | 9,289.47 | ZNA | CON | MH |
| A38990 |  | Backfilling & Compaction | 4d | 2026-03-04 A | 2026-04-05 A | A38980, A38970, A38940 | 100% | 2027-05-20 | 2027-05-24 |  |  | ICKMO1-cost unite [4128.66 $]; Roller compactor [200 h]; Physical Units [35574.2 h] | 4,128.66 | 4,128.66 | ZNA | CON |  |
| A38980 |  | Testing & Inspection | 2d | 2026-11-18 | 2026-11-19 | A38960 |  |  |  | 51d | 0d | ICKMO1-cost unite [2064.32 $]; labor [1200 h]; Physical Units [17787 h] | 2,064.32 |  | ZNA | CON |  |

| ID | WBS | Activity | Duration | Start | Finish | Predecessors | Complete | Planned start | Planned finish | Total float | Free float | Resources | Cost | Actual cost | ALKHARJ INDUSTERIAL AREA - PROJECT ZONES | ALKHARJ INDUSTERIAL AREA - DECEPLINS | ALKHARJ INDUSTERIAL AREA - Wet networks |
| --- | --- | --- | --- | --- | --- | --- | --- | --- | --- | --- | --- | --- | --- | --- | --- | --- | --- |
|  | MH-1.12.2.0 / MH-1.12.2.1 | **MH-1.12.2.0 / MH-1.12.2.1** |  | 2026-03-04 | 2026-11-19 |  |  |  |  |  |  |  |  |  |  |  |  |
| A39000 |  | Excavation | 2d | 2026-03-04 A | 2026-04-05 A | A38950, A1190 | 100% | 2027-04-22 | 2027-04-24 |  |  | ICKMO1-cost unite [3096.49 $]; Excavator [200 h]; Physical Units [26680.6 h] | 3,096.49 | 3,096.49 | ZNA | CON |  |
| A39010 |  | Pipe Laying | 8d | 2026-03-04 A | 2026-04-05 A | A39000 | 100% | 2027-04-25 | 2027-05-03 |  |  | ICKMO1-cost unite [2064.32 $]; boom truck [200 h]; labor [1200 h]; Sewage Network Circular pipes (GRP) [63.28]; Physical Units [17787 h] | 2,064.32 | 2,064.32 | ZNA | CON | LAY |
| A39020 |  | Install Manhole | 4d | 2026-03-04 A | 2026-04-05 A | A39000 | 100% | 2027-04-25 | 2027-04-28 |  |  | ICKMO1-cost unite [9289.47 $]; boom truck [200 h]; labor [1200 h]; Physical Units [80041.9 h] | 9,289.47 | 9,289.47 | ZNA | CON | MH |
| A39040 |  | Backfilling & Compaction | 4d | 2026-03-04 A | 2026-04-05 A | A39030, A39020, A38990 | 100% | 2027-05-25 | 2027-05-29 |  |  | ICKMO1-cost unite [4128.66 $]; Roller compactor [200 h]; Physical Units [35574.2 h] | 4,128.66 | 4,128.66 | ZNA | CON |  |
| A39030 |  | Testing & Inspection | 2d | 2026-11-18 | 2026-11-19 | A39010 |  |  |  | 51d | 0d | ICKMO1-cost unite [2064.32 $]; labor [1200 h]; Physical Units [17787 h] | 2,064.32 |  | ZNA | CON |  |
|  | MH-1.12.3.0 / MH-1.12.3.1 | **MH-1.12.3.0 / MH-1.12.3.1** |  | 2026-03-04 | 2026-11-19 |  |  |  |  |  |  |  |  |  |  |  |  |
| A39050 |  | Excavation | 2d | 2026-03-04 A | 2026-04-05 A | A39000, A1190 | 100% | 2027-04-25 | 2027-04-26 |  |  | ICKMO1-cost unite [3096.49 $]; Excavator [200 h]; Physical Units [26680.6 h] | 3,096.49 | 3,096.49 | ZNA | CON |  |
| A39060 |  | Pipe Laying | 8d | 2026-03-04 A | 2026-04-05 A | A39050 | 100% | 2027-04-27 | 2027-05-05 |  |  | ICKMO1-cost unite [2064.32 $]; boom truck [200 h]; labor [1200 h]; Sewage Network Circular pipes (GRP) [63.28]; Physical Units [17787 h] | 2,064.32 | 2,064.32 | ZNA | CON | LAY |
| A39070 |  | Install Manhole | 4d | 2026-03-04 A | 2026-04-05 A | A39050 | 100% | 2027-04-27 | 2027-05-01 |  |  | ICKMO1-cost unite [9289.47 $]; boom truck [200 h]; labor [1200 h]; Physical Units [80041.9 h] | 9,289.47 | 9,289.47 | ZNA | CON | MH |
| A39090 |  | Backfilling & Compaction | 4d | 2026-03-04 A | 2026-04-05 A | A39080, A39070, A39040 | 100% | 2027-05-30 | 2027-06-02 |  |  | ICKMO1-cost unite [4128.66 $]; Roller compactor [200 h]; Physical Units [35574.2 h] | 4,128.66 | 4,128.66 | ZNA | CON |  |
| A39080 |  | Testing & Inspection | 2d | 2026-11-18 | 2026-11-19 | A39060 |  |  |  | 51d | 0d | ICKMO1-cost unite [2064.32 $]; labor [1200 h]; Physical Units [17787 h] | 2,064.32 |  | ZNA | CON |  |
|  | MH-1.12.3.1 / MH-1.12.3.2 | **MH-1.12.3.1 / MH-1.12.3.2** |  | 2026-03-04 | 2026-11-19 |  |  |  |  |  |  |  |  |  |  |  |  |
| A39100 |  | Excavation | 2d | 2026-03-04 A | 2026-04-05 A | A39050, A1190 | 100% | 2027-04-27 | 2027-04-28 |  |  | ICKMO1-cost unite [3096.49 $]; Excavator [200 h]; Physical Units [26680.6 h] | 3,096.49 | 3,096.49 | ZNA | CON |  |
| A39110 |  | Pipe Laying | 8d | 2026-03-04 A | 2026-04-05 A | A39100 | 100% | 2027-04-29 | 2027-05-08 |  |  | ICKMO1-cost unite [2064.32 $]; boom truck [200 h]; labor [1200 h]; Sewage Network Circular pipes (GRP) [63.28]; Physical Units [17787 h] | 2,064.32 | 2,064.32 | ZNA | CON | LAY |
| A39120 |  | Install Manhole | 4d | 2026-03-04 A | 2026-04-05 A | A39100 | 100% | 2027-04-29 | 2027-05-03 |  |  | ICKMO1-cost unite [9289.47 $]; boom truck [200 h]; labor [1200 h]; Physical Units [80041.9 h] | 9,289.47 | 9,289.47 | ZNA | CON | MH |
| A39140 |  | Backfilling & Compaction | 4d | 2026-03-04 A | 2026-04-05 A | A39130, A39120, A39090 | 100% | 2027-06-03 | 2027-06-07 |  |  | ICKMO1-cost unite [4128.66 $]; Roller compactor [200 h]; Physical Units [35574.2 h] | 4,128.66 | 4,128.66 | ZNA | CON |  |
| A39130 |  | Testing & Inspection | 2d | 2026-11-18 | 2026-11-19 | A39110 |  |  |  | 51d | 0d | ICKMO1-cost unite [2064.32 $]; labor [1200 h]; Physical Units [17787 h] | 2,064.32 |  | ZNA | CON |  |
|  | MH-1.12.3.2.0 / MH-1.12.3.2.1 | **MH-1.12.3.2.0 / MH-1.12.3.2.1** |  | 2026-03-04 | 2026-11-19 |  |  |  |  |  |  |  |  |  |  |  |  |
| A39150 |  | Excavation | 2d | 2026-03-04 A | 2026-04-05 A | A39100, A1190 | 100% | 2027-04-29 | 2027-05-01 |  |  | ICKMO1-cost unite [3096.49 $]; Excavator [200 h]; Physical Units [26680.6 h] | 3,096.49 | 3,096.49 | ZNA | CON |  |
| A39160 |  | Pipe Laying | 8d | 2026-03-04 A | 2026-04-05 A | A39150 | 100% | 2027-05-02 | 2027-05-10 |  |  | ICKMO1-cost unite [2064.32 $]; boom truck [200 h]; labor [1200 h]; Sewage Network Circular pipes (GRP) [63.28]; Physical Units [17787 h] | 2,064.32 | 2,064.32 | ZNA | CON | LAY |
| A39170 |  | Install Manhole | 4d | 2026-03-04 A | 2026-04-05 A | A39150 | 100% | 2027-05-02 | 2027-05-05 |  |  | ICKMO1-cost unite [9289.47 $]; boom truck [200 h]; labor [1200 h]; Physical Units [80041.9 h] | 9,289.47 | 9,289.47 | ZNA | CON | MH |
| A39190 |  | Backfilling & Compaction | 4d | 2026-03-04 A | 2026-04-05 A | A39180, A39170, A39140 | 100% | 2027-06-08 | 2027-06-12 |  |  | ICKMO1-cost unite [4128.66 $]; Roller compactor [200 h]; Physical Units [35574.2 h] | 4,128.66 | 4,128.66 | ZNA | CON |  |
| A39180 |  | Testing & Inspection | 2d | 2026-11-18 | 2026-11-19 | A39160 |  |  |  | 51d | 0d | ICKMO1-cost unite [2064.32 $]; labor [1200 h]; Physical Units [17787 h] | 2,064.32 |  | ZNA | CON |  |

| ID | WBS | Activity | Duration | Start | Finish | Predecessors | Complete | Planned start | Planned finish | Total float | Free float | Resources | Cost | Actual cost | ALKHARJ INDUSTERIAL AREA - PROJECT ZONES | ALKHARJ INDUSTERIAL AREA - DECEPLINS | ALKHARJ INDUSTERIAL AREA - Wet networks |
| --- | --- | --- | --- | --- | --- | --- | --- | --- | --- | --- | --- | --- | --- | --- | --- | --- | --- |
|  | MH-1.9 / MH-1.10 | **MH-1.9 / MH-1.10** |  | 2026-03-04 | 2026-11-19 |  |  |  |  |  |  |  |  |  |  |  |  |
| A39200 |  | Excavation | 2d | 2026-03-04 A | 2026-04-05 A | A39150, A1190 | 100% | 2027-05-02 | 2027-05-03 |  |  | ICKMO1-cost unite [3096.49 $]; Excavator [200 h]; Physical Units [26680.6 h] | 3,096.49 | 3,096.49 | ZNA | CON |  |
| A39210 |  | Pipe Laying | 8d | 2026-03-04 A | 2026-04-05 A | A39200 | 100% | 2027-05-04 | 2027-05-12 |  |  | ICKMO1-cost unite [2064.32 $]; boom truck [200 h]; labor [1200 h]; Sewage Network Circular pipes (GRP) [63.28]; Physical Units [17787 h] | 2,064.32 | 2,064.32 | ZNA | CON | LAY |
| A39220 |  | Install Manhole | 4d | 2026-03-04 A | 2026-04-05 A | A39200 | 100% | 2027-05-04 | 2027-05-08 |  |  | ICKMO1-cost unite [9289.47 $]; boom truck [200 h]; labor [1200 h]; Physical Units [80041.9 h] | 9,289.47 | 9,289.47 | ZNA | CON | MH |
| A39240 |  | Backfilling & Compaction | 4d | 2026-03-04 A | 2026-04-05 A | A39230, A39220, A39190 | 100% | 2027-06-13 | 2027-06-16 |  |  | ICKMO1-cost unite [4128.66 $]; Roller compactor [200 h]; Physical Units [35574.2 h] | 4,128.66 | 4,128.66 | ZNA | CON |  |
| A39230 |  | Testing & Inspection | 2d | 2026-11-18 | 2026-11-19 | A39210 |  |  |  | 51d | 0d | ICKMO1-cost unite [2064.32 $]; labor [1200 h]; Physical Units [17787 h] | 2,064.32 |  | ZNA | CON |  |
|  | MH-2.17 / MH-2.18 | **MH-2.17 / MH-2.18** |  | 2026-03-04 | 2026-11-19 |  |  |  |  |  |  |  |  |  |  |  |  |
| A39250 |  | Excavation | 2d | 2026-03-04 A | 2026-04-05 A | A39200, A1190 | 100% | 2027-05-04 | 2027-05-05 |  |  | ICKMO1-cost unite [3096.49 $]; Excavator [200 h]; Physical Units [26680.6 h] | 3,096.49 | 3,096.49 | ZNA | CON |  |
| A39260 |  | Pipe Laying | 8d | 2026-03-04 A | 2026-04-05 A | A39250 | 100% | 2027-05-06 | 2027-05-15 |  |  | ICKMO1-cost unite [2064.32 $]; boom truck [200 h]; labor [1200 h]; Sewage Network Circular pipes (GRP) [63.28]; Physical Units [17787 h] | 2,064.32 | 2,064.32 | ZNA | CON | LAY |
| A39270 |  | Install Manhole | 4d | 2026-03-04 A | 2026-04-05 A | A39250 | 100% | 2027-05-06 | 2027-05-10 |  |  | ICKMO1-cost unite [9289.47 $]; boom truck [200 h]; labor [1200 h]; Physical Units [80041.9 h] | 9,289.47 | 9,289.47 | ZNA | CON | MH |
| A39290 |  | Backfilling & Compaction | 4d | 2026-03-04 A | 2026-04-05 A | A39280, A39270, A39240 | 100% | 2027-06-17 | 2027-06-21 |  |  | ICKMO1-cost unite [4128.66 $]; Roller compactor [200 h]; Physical Units [35574.2 h] | 4,128.66 | 4,128.66 | ZNA | CON |  |
| A39280 |  | Testing & Inspection | 2d | 2026-11-18 | 2026-11-19 | A39260 |  |  |  | 51d | 0d | ICKMO1-cost unite [2064.32 $]; labor [1200 h]; Physical Units [17787 h] | 2,064.32 |  | ZNA | CON |  |
|  | MH-2.18 / MH-2.19 | **MH-2.18 / MH-2.19** |  | 2026-03-04 | 2026-11-19 |  |  |  |  |  |  |  |  |  |  |  |  |
| A39300 |  | Excavation | 2d | 2026-03-04 A | 2026-04-05 A | A39250, A1190 | 100% | 2027-05-06 | 2027-05-08 |  |  | ICKMO1-cost unite [3096.49 $]; Excavator [200 h]; Physical Units [26680.6 h] | 3,096.49 | 3,096.49 | ZNA | CON |  |
| A39310 |  | Pipe Laying | 8d | 2026-03-04 A | 2026-04-05 A | A39300 | 100% | 2027-05-09 | 2027-05-17 |  |  | ICKMO1-cost unite [2064.32 $]; boom truck [200 h]; labor [1200 h]; Sewage Network Circular pipes (GRP) [63.28]; Physical Units [17787 h] | 2,064.32 | 2,064.32 | ZNA | CON | LAY |
| A39320 |  | Install Manhole | 4d | 2026-03-04 A | 2026-04-05 A | A39300 | 100% | 2027-05-09 | 2027-05-12 |  |  | ICKMO1-cost unite [9289.47 $]; boom truck [200 h]; labor [1200 h]; Physical Units [80041.9 h] | 9,289.47 | 9,289.47 | ZNA | CON | MH |
| A39340 |  | Backfilling & Compaction | 4d | 2026-03-04 A | 2026-04-05 A | A39330, A39320, A39290 | 100% | 2027-06-22 | 2027-06-26 |  |  | ICKMO1-cost unite [4128.66 $]; Roller compactor [200 h]; Physical Units [35574.2 h] | 4,128.66 | 4,128.66 | ZNA | CON |  |
| A39330 |  | Testing & Inspection | 2d | 2026-11-18 | 2026-11-19 | A39310 |  |  |  | 51d | 0d | ICKMO1-cost unite [2064.32 $]; labor [1200 h]; Physical Units [17787 h] | 2,064.32 |  | ZNA | CON |  |
|  | MH-2.19 / MH-2.20 | **MH-2.19 / MH-2.20** |  | 2026-04-04 | 2026-11-19 |  |  |  |  |  |  |  |  |  |  |  |  |
| A39350 |  | Excavation | 2d | 2026-04-04 A | 2026-05-05 A | A39300, A1190 | 100% | 2027-05-09 | 2027-05-10 |  |  | ICKMO1-cost unite [3096.49 $]; Excavator [200 h]; Physical Units [26680.6 h] | 3,096.49 | 3,096.49 | ZNA | CON |  |
| A39360 |  | Pipe Laying | 8d | 2026-04-04 A | 2026-05-05 A | A39350 | 100% | 2027-05-11 | 2027-05-19 |  |  | ICKMO1-cost unite [2064.32 $]; boom truck [200 h]; labor [1200 h]; Sewage Network Circular pipes (GRP) [63.28]; Physical Units [17787 h] | 2,064.32 | 2,064.32 | ZNA | CON | LAY |
| A39370 |  | Install Manhole | 4d | 2026-04-04 A | 2026-05-05 A | A39350 | 100% | 2027-05-11 | 2027-05-15 |  |  | ICKMO1-cost unite [9289.47 $]; boom truck [200 h]; labor [1200 h]; Physical Units [80041.9 h] | 9,289.47 | 9,289.47 | ZNA | CON | MH |
| A39390 |  | Backfilling & Compaction | 4d | 2026-04-04 A | 2026-05-05 A | A39380, A39370, A39340 | 100% | 2027-06-27 | 2027-06-30 |  |  | ICKMO1-cost unite [4128.66 $]; Roller compactor [200 h]; Physical Units [35574.2 h] | 4,128.66 | 4,128.66 | ZNA | CON |  |
| A39380 |  | Testing & Inspection | 2d | 2026-11-18 | 2026-11-19 | A39360 |  |  |  | 51d | 0d | ICKMO1-cost unite [2064.32 $]; labor [1200 h]; Physical Units [17787 h] | 2,064.32 |  | ZNA | CON |  |

| ID | WBS | Activity | Duration | Start | Finish | Predecessors | Complete | Planned start | Planned finish | Total float | Free float | Resources | Cost | Actual cost | ALKHARJ INDUSTERIAL AREA - PROJECT ZONES | ALKHARJ INDUSTERIAL AREA - DECEPLINS | ALKHARJ INDUSTERIAL AREA - Wet networks |
| --- | --- | --- | --- | --- | --- | --- | --- | --- | --- | --- | --- | --- | --- | --- | --- | --- | --- |
|  | MH-2.20 / MH-2.21 | **MH-2.20 / MH-2.21** |  | 2026-04-04 | 2026-11-19 |  |  |  |  |  |  |  |  |  |  |  |  |
| A39400 |  | Excavation | 2d | 2026-04-04 A | 2026-05-05 A | A39350, A1190 | 100% | 2027-05-11 | 2027-05-12 |  |  | ICKMO1-cost unite [3096.49 $]; Excavator [200 h]; Physical Units [26680.6 h] | 3,096.49 | 3,096.49 | ZNA | CON |  |
| A39410 |  | Pipe Laying | 8d | 2026-04-04 A | 2026-05-05 A | A39400 | 100% | 2027-05-13 | 2027-05-22 |  |  | ICKMO1-cost unite [2064.32 $]; boom truck [200 h]; labor [1200 h]; Sewage Network Circular pipes (GRP) [63.28]; Physical Units [17787 h] | 2,064.32 | 2,064.32 | ZNA | CON | LAY |
| A39420 |  | Install Manhole | 4d | 2026-04-04 A | 2026-05-05 A | A39400 | 100% | 2027-05-13 | 2027-05-17 |  |  | ICKMO1-cost unite [9289.47 $]; boom truck [200 h]; labor [1200 h]; Physical Units [80041.9 h] | 9,289.47 | 9,289.47 | ZNA | CON | MH |
| A39440 |  | Backfilling & Compaction | 4d | 2026-04-04 A | 2026-05-05 A | A39430, A39420, A39390 | 100% | 2027-07-01 | 2027-07-05 |  |  | ICKMO1-cost unite [4128.66 $]; Roller compactor [200 h]; Physical Units [35574.2 h] | 4,128.66 | 4,128.66 | ZNA | CON |  |
| A39430 |  | Testing & Inspection | 2d | 2026-11-18 | 2026-11-19 | A39410 |  |  |  | 51d | 0d | ICKMO1-cost unite [2064.32 $]; labor [1200 h]; Physical Units [17787 h] | 2,064.32 |  | ZNA | CON |  |
|  | MH-2.21 / MH-2.22 | **MH-2.21 / MH-2.22** |  | 2026-04-04 | 2026-11-19 |  |  |  |  |  |  |  |  |  |  |  |  |
| A39450 |  | Excavation | 2d | 2026-04-04 A | 2026-05-05 A | A39400, A1190 | 100% | 2027-05-13 | 2027-05-15 |  |  | ICKMO1-cost unite [3096.49 $]; Excavator [200 h]; Physical Units [26680.6 h] | 3,096.49 | 3,096.49 | ZNA | CON |  |
| A39460 |  | Pipe Laying | 4d | 2026-04-04 A | 2026-05-05 A | A39450 | 100% | 2027-05-16 | 2027-05-19 |  |  | ICKMO1-cost unite [2064.32 $]; boom truck [200 h]; labor [1200 h]; Sewage Network Circular pipes (GRP) [63.28]; Physical Units [17787 h] | 2,064.32 | 2,064.32 | ZNA | CON | LAY |
| A39470 |  | Install Manhole | 4d | 2026-04-04 A | 2026-05-05 A | A39450 | 100% | 2027-05-16 | 2027-05-19 |  |  | ICKMO1-cost unite [9289.47 $]; boom truck [200 h]; labor [1200 h]; Physical Units [80041.9 h] | 9,289.47 | 9,289.47 | ZNA | CON | MH |
| A39490 |  | Backfilling & Compaction | 4d | 2026-04-04 A | 2026-05-05 A | A39480, A39470, A39440 | 100% | 2027-07-06 | 2027-07-10 |  |  | ICKMO1-cost unite [4128.66 $]; Roller compactor [200 h]; Physical Units [35574.2 h] | 4,128.66 | 4,128.66 | ZNA | CON |  |
| A39480 |  | Testing & Inspection | 2d | 2026-11-18 | 2026-11-19 | A39460 |  |  |  | 51d | 0d | ICKMO1-cost unite [2064.32 $]; labor [1200 h]; Physical Units [17787 h] | 2,064.32 |  | ZNA | CON |  |
|  | MH-2.22 / MH-2.23 | **MH-2.22 / MH-2.23** |  | 2026-04-04 | 2026-11-19 |  |  |  |  |  |  |  |  |  |  |  |  |
| A39500 |  | Excavation | 2d | 2026-04-04 A | 2026-05-05 A | A39450, A1190 | 100% | 2027-05-16 | 2027-05-17 |  |  | ICKMO1-cost unite [3096.49 $]; Excavator [200 h]; Physical Units [26680.6 h] | 3,096.49 | 3,096.49 | ZNA | CON |  |
| A39510 |  | Pipe Laying | 8d | 2026-04-04 A | 2026-05-05 A | A39500 | 100% | 2027-05-18 | 2027-05-26 |  |  | ICKMO1-cost unite [2064.32 $]; boom truck [200 h]; labor [1200 h]; Sewage Network Circular pipes (GRP) [63.28]; Physical Units [17787 h] | 2,064.32 | 2,064.32 | ZNA | CON | LAY |
| A39520 |  | Install Manhole | 4d | 2026-04-04 A | 2026-05-05 A | A39500 | 100% | 2027-05-18 | 2027-05-22 |  |  | ICKMO1-cost unite [9289.47 $]; boom truck [200 h]; labor [1200 h]; Physical Units [80041.9 h] | 9,289.47 | 9,289.47 | ZNA | CON | MH |
| A39540 |  | Backfilling & Compaction | 4d | 2026-04-04 A | 2026-05-05 A | A39530, A39520, A39490 | 100% | 2027-07-11 | 2027-07-14 |  |  | ICKMO1-cost unite [4128.66 $]; Roller compactor [200 h]; Physical Units [35574.2 h] | 4,128.66 | 4,128.66 | ZNA | CON |  |
| A39530 |  | Testing & Inspection | 2d | 2026-11-18 | 2026-11-19 | A39510 |  |  |  | 51d | 0d | ICKMO1-cost unite [2064.32 $]; labor [1200 h]; Physical Units [17787 h] | 2,064.32 |  | ZNA | CON |  |
|  | MH-2.23 / MH-2.24 | **MH-2.23 / MH-2.24** |  | 2026-04-04 | 2026-11-19 |  |  |  |  |  |  |  |  |  |  |  |  |
| A39550 |  | Excavation | 2d | 2026-04-04 A | 2026-05-05 A | A39500, A1190 | 100% | 2027-05-18 | 2027-05-19 |  |  | ICKMO1-cost unite [3096.49 $]; Excavator [200 h]; Physical Units [26680.6 h] | 3,096.49 | 3,096.49 | ZNA | CON |  |
| A39560 |  | Pipe Laying | 8d | 2026-04-04 A | 2026-05-05 A | A39550 | 100% | 2027-05-20 | 2027-05-29 |  |  | ICKMO1-cost unite [2064.32 $]; boom truck [200 h]; labor [1200 h]; Sewage Network Circular pipes (GRP) [63.28]; Physical Units [17787 h] | 2,064.32 | 2,064.32 | ZNA | CON | LAY |
| A39570 |  | Install Manhole | 4d | 2026-04-04 A | 2026-05-05 A | A39550 | 100% | 2027-05-20 | 2027-05-24 |  |  | ICKMO1-cost unite [9289.47 $]; boom truck [200 h]; labor [1200 h]; Physical Units [80041.9 h] | 9,289.47 | 9,289.47 | ZNA | CON | MH |
| A39590 |  | Backfilling & Compaction | 4d | 2026-04-04 A | 2026-05-05 A | A39580, A39570, A39540 | 100% | 2027-07-15 | 2027-07-19 |  |  | ICKMO1-cost unite [4128.66 $]; Roller compactor [200 h]; Physical Units [35574.2 h] | 4,128.66 | 4,128.66 | ZNA | CON |  |
| A39580 |  | Testing & Inspection | 2d | 2026-11-18 | 2026-11-19 | A39560 |  |  |  | 51d | 0d | ICKMO1-cost unite [2064.32 $]; labor [1200 h]; Physical Units [17787 h] | 2,064.32 |  | ZNA | CON |  |

| ID | WBS | Activity | Duration | Start | Finish | Predecessors | Complete | Planned start | Planned finish | Total float | Free float | Resources | Cost | Actual cost | ALKHARJ INDUSTERIAL AREA - PROJECT ZONES | ALKHARJ INDUSTERIAL AREA - DECEPLINS | ALKHARJ INDUSTERIAL AREA - Wet networks |
| --- | --- | --- | --- | --- | --- | --- | --- | --- | --- | --- | --- | --- | --- | --- | --- | --- | --- |
|  | MH-2.24 / MH-2.25 | **MH-2.24 / MH-2.25** |  | 2026-11-18 | 2026-12-06 |  |  |  |  |  |  |  |  |  |  |  |  |
| A39600 |  | Excavation | 2d | 2026-11-18 | 2026-11-19 | A39550, A1190 |  |  |  | 19.42d | 0d | ICKMO1-cost unite [3096.49 $]; Excavator [200 h]; Physical Units [26680.6 h] | 3,096.49 |  | ZNA | CON |  |
| A39610 |  | Pipe Laying | 8d | 2026-11-21 | 2026-11-29 | A39600 |  |  |  | 41d | 0d | ICKMO1-cost unite [2064.32 $]; boom truck [200 h]; labor [1200 h]; Sewage Network Circular pipes (GRP) [63.28]; Physical Units [17787 h] | 2,064.32 |  | ZNA | CON | LAY |
| A39620 |  | Install Manhole | 4d | 2026-11-21 | 2026-11-24 | A39600 |  |  |  | 47d | 6d | ICKMO1-cost unite [9289.47 $]; boom truck [200 h]; labor [1200 h]; Physical Units [80041.9 h] | 9,289.47 |  | ZNA | CON | MH |
| A39630 |  | Testing & Inspection | 2d | 2026-11-30 | 2026-12-01 | A39610 |  |  |  | 41d | 0d | ICKMO1-cost unite [2064.32 $]; labor [1200 h]; Physical Units [17787 h] | 2,064.32 |  | ZNA | CON |  |
| A39640 |  | Backfilling & Compaction | 4d | 2026-12-02 | 2026-12-06 | A39630, A39620, A39590 |  |  |  | 41d | 0d | ICKMO1-cost unite [4128.66 $]; Roller compactor [200 h]; Physical Units [35574.2 h] | 4,128.66 |  | ZNA | CON |  |
|  | MH-2.25 / MH-2.26 | **MH-2.25 / MH-2.26** |  | 2026-11-21 | 2026-12-10 |  |  |  |  |  |  |  |  |  |  |  |  |
| A39650 |  | Excavation | 2d | 2026-11-21 | 2026-11-22 | A39600, A1190 |  |  |  | 19.42d | 0d | ICKMO1-cost unite [3096.49 $]; Excavator [200 h]; Physical Units [26680.6 h] | 3,096.49 |  | ZNA | CON |  |
| A39660 |  | Pipe Laying | 8d | 2026-11-23 | 2026-12-01 | A39650 |  |  |  | 43d | 0d | ICKMO1-cost unite [2064.32 $]; boom truck [200 h]; labor [1200 h]; Sewage Network Circular pipes (GRP) [63.28]; Physical Units [17787 h] | 2,064.32 |  | ZNA | CON | LAY |
| A39670 |  | Install Manhole | 4d | 2026-11-23 | 2026-11-26 | A39650 |  |  |  | 49d | 8d | ICKMO1-cost unite [9289.47 $]; boom truck [200 h]; labor [1200 h]; Physical Units [80041.9 h] | 9,289.47 |  | ZNA | CON | MH |
| A39680 |  | Testing & Inspection | 2d | 2026-12-02 | 2026-12-03 | A39660 |  |  |  | 43d | 2d | ICKMO1-cost unite [2064.32 $]; labor [1200 h]; Physical Units [17787 h] | 2,064.32 |  | ZNA | CON |  |
| A39690 |  | Backfilling & Compaction | 4d | 2026-12-07 | 2026-12-10 | A39680, A39670, A39640 |  |  |  | 41d | 0d | ICKMO1-cost unite [4128.66 $]; Roller compactor [200 h]; Physical Units [35574.2 h] | 4,128.66 |  | ZNA | CON |  |
|  | MH-2.8.7 / MH-2.8.8 | **MH-2.8.7 / MH-2.8.8** |  | 2026-04-04 | 2026-11-24 |  |  |  |  |  |  |  |  |  |  |  |  |
| A39700 |  | Excavation | 2d | 2026-04-04 A | 2026-05-05 A | A39650, A1190 | 100% | 2027-05-25 | 2027-05-26 |  |  | ICKMO1-cost unite [3096.49 $]; Excavator [200 h]; Physical Units [26680.6 h] | 3,096.49 | 3,096.49 | ZNA | CON |  |
| A39710 |  | Pipe Laying | 8d | 2026-04-04 A | 2026-05-05 A | A39700 | 100% | 2027-05-27 | 2027-06-05 |  |  | ICKMO1-cost unite [2064.32 $]; boom truck [200 h]; labor [1200 h]; Sewage Network Circular pipes (GRP) [63.28]; Physical Units [17787 h] | 2,064.32 | 2,064.32 | ZNA | CON | LAY |
| A39720 |  | Install Manhole | 4d | 2026-04-04 A | 2026-05-05 A | A39700 | 100% | 2027-05-27 | 2027-05-31 |  |  | ICKMO1-cost unite [9289.47 $]; boom truck [200 h]; labor [1200 h]; Physical Units [80041.9 h] | 9,289.47 | 9,289.47 | ZNA | CON | MH |
| A39740 |  | Backfilling & Compaction | 4d | 2026-04-04 A | 2026-05-05 A | A39730, A39720, A39690 | 100% | 2027-07-29 | 2027-08-02 |  |  | ICKMO1-cost unite [4128.66 $]; Roller compactor [200 h]; Physical Units [35574.2 h] | 4,128.66 | 4,128.66 | ZNA | CON |  |
| A39730 |  | Testing & Inspection | 2d | 2026-11-23 | 2026-11-24 | A39710 |  |  |  | 55d | 14d | ICKMO1-cost unite [2064.32 $]; labor [1200 h]; Physical Units [17787 h] | 2,064.32 |  | ZNA | CON |  |
|  | LR 02 | **LR 02** |  | 2026-04-04 | 2026-11-21 |  |  |  |  |  |  |  |  |  |  |  |  |
|  | MH-1.7.0 / MH-1.7.1 | **MH-1.7.0 / MH-1.7.1** |  | 2026-04-04 | 2026-10-24 |  |  |  |  |  |  |  |  |  |  |  |  |
| A39750 |  | Excavation | 4d | 2026-04-04 A | 2026-05-05 A | A74120, A1190 | 100% | 2026-12-20 | 2026-12-24 |  |  | ICKMO1-cost unite [3011.11 $]; Excavator [200 h]; Physical Units [25945 h] | 3,011.11 | 3,011.11 | ZNA | CON |  |
| A39760 |  | Pipe Laying | 8d | 2026-04-04 A | 2026-05-05 A | A39750 | 100% | 2026-12-24 | 2027-01-03 |  |  | ICKMO1-cost unite [2007.41 $]; boom truck [200 h]; labor [1200 h]; Sewage Network Circular pipes (GRP) [63.28]; Physical Units [17296.7 h] | 2,007.41 | 2,007.41 | ZNA | CON | LAY |
| A39770 |  | Install Manhole | 4d | 2026-04-04 A | 2026-05-05 A | A39750 | 100% | 2026-12-24 | 2026-12-29 |  |  | ICKMO1-cost unite [9033.33 $]; boom truck [200 h]; labor [1200 h]; Physical Units [77834.9 h] | 9,033.33 | 9,033.33 | ZNA | CON | MH |
| A39790 |  | Backfilling & Compaction | 4d | 2026-04-04 A | 2026-05-05 A | A39780, A39770 | 100% | 2027-01-05 | 2027-01-10 |  |  | ICKMO1-cost unite [4014.81 $]; Roller compactor [200 h]; Physical Units [34593.3 h] | 4,014.81 | 4,014.81 | ZNA | CON |  |
| A39780 |  | Testing & Inspection | 2d | 2026-10-21 | 2026-10-24 | A39760 |  |  |  | 58.86d | 0d | ICKMO1-cost unite [2007.41 $]; labor [1200 h]; Physical Units [17296.7 h] | 2,007.41 |  | ZNA | CON |  |

| ID | WBS | Activity | Duration | Start | Finish | Predecessors | Complete | Planned start | Planned finish | Total float | Free float | Resources | Cost | Actual cost | ALKHARJ INDUSTERIAL AREA - PROJECT ZONES | ALKHARJ INDUSTERIAL AREA - DECEPLINS | ALKHARJ INDUSTERIAL AREA - Wet networks |
| --- | --- | --- | --- | --- | --- | --- | --- | --- | --- | --- | --- | --- | --- | --- | --- | --- | --- |
|  | MH-1.7.1 / MH-1.7.2 | **MH-1.7.1 / MH-1.7.2** |  | 2026-04-04 | 2026-10-24 |  |  |  |  |  |  |  |  |  |  |  |  |
| A39800 |  | Excavation | 4d | 2026-04-04 A | 2026-05-05 A | A39750, A1190 | 100% | 2026-12-24 | 2026-12-29 |  |  | ICKMO1-cost unite [3011.11 $]; Excavator [200 h]; Physical Units [25945 h] | 3,011.11 | 3,011.11 | ZNA | CON |  |
| A39810 |  | Pipe Laying | 8d | 2026-04-04 A | 2026-05-05 A | A39800 | 100% | 2026-12-29 | 2027-01-07 |  |  | ICKMO1-cost unite [2007.41 $]; boom truck [200 h]; labor [1200 h]; Sewage Network Circular pipes (GRP) [63.28]; Physical Units [17296.7 h] | 2,007.41 | 2,007.41 | ZNA | CON | LAY |
| A39820 |  | Install Manhole | 4d | 2026-04-04 A | 2026-05-05 A | A39800 | 100% | 2026-12-29 | 2027-01-03 |  |  | ICKMO1-cost unite [9033.33 $]; boom truck [200 h]; labor [1200 h]; Physical Units [77834.9 h] | 9,033.33 | 9,033.33 | ZNA | CON | MH |
| A39840 |  | Backfilling & Compaction | 4d | 2026-04-04 A | 2026-05-05 A | A39830, A39820, A39790 | 100% | 2027-01-10 | 2027-01-14 |  |  | ICKMO1-cost unite [4014.81 $]; Roller compactor [200 h]; Physical Units [34593.3 h] | 4,014.81 | 4,014.81 | ZNA | CON |  |
| A39830 |  | Testing & Inspection | 2d | 2026-10-21 | 2026-10-24 | A39810 |  |  |  | 58.86d | 0d | ICKMO1-cost unite [2007.41 $]; labor [1200 h]; Physical Units [17296.7 h] | 2,007.41 |  | ZNA | CON |  |
|  | MH-1.7.1.0 / MH-1.7.1.1 | **MH-1.7.1.0 / MH-1.7.1.1** |  | 2026-04-04 | 2026-10-24 |  |  |  |  |  |  |  |  |  |  |  |  |
| A39850 |  | Excavation | 4d | 2026-04-04 A | 2026-05-05 A | A39800, A1190 | 100% | 2026-12-29 | 2027-01-03 |  |  | ICKMO1-cost unite [3011.11 $]; Excavator [200 h]; Physical Units [25945 h] | 3,011.11 | 3,011.11 | ZNA | CON |  |
| A39860 |  | Pipe Laying | 8d | 2026-04-04 A | 2026-05-05 A | A39850 | 100% | 2027-01-03 | 2027-01-12 |  |  | ICKMO1-cost unite [2007.41 $]; boom truck [200 h]; labor [1200 h]; Sewage Network Circular pipes (GRP) [63.28]; Physical Units [17296.7 h] | 2,007.41 | 2,007.41 | ZNA | CON | LAY |
| A39870 |  | Install Manhole | 4d | 2026-04-04 A | 2026-05-05 A | A39850 | 100% | 2027-01-03 | 2027-01-07 |  |  | ICKMO1-cost unite [9033.33 $]; boom truck [200 h]; labor [1200 h]; Physical Units [77834.9 h] | 9,033.33 | 9,033.33 | ZNA | CON | MH |
| A39890 |  | Backfilling & Compaction | 4d | 2026-04-04 A | 2026-05-05 A | A39880, A39870, A39840 | 100% | 2027-01-14 | 2027-01-19 |  |  | ICKMO1-cost unite [4014.81 $]; Roller compactor [200 h]; Physical Units [34593.3 h] | 4,014.81 | 4,014.81 | ZNA | CON |  |
| A39880 |  | Testing & Inspection | 2d | 2026-10-21 | 2026-10-24 | A39860 |  |  |  | 58.86d | 0d | ICKMO1-cost unite [2007.41 $]; labor [1200 h]; Physical Units [17296.7 h] | 2,007.41 |  | ZNA | CON |  |
|  | MH-1.7.10 / MH-1.7.11 | **MH-1.7.10 / MH-1.7.11** |  | 2026-04-04 | 2026-10-24 |  |  |  |  |  |  |  |  |  |  |  |  |
| A39900 |  | Excavation | 4d | 2026-04-04 A | 2026-05-05 A | A39850, A1190 | 100% | 2027-01-03 | 2027-01-07 |  |  | ICKMO1-cost unite [3011.11 $]; Excavator [200 h]; Physical Units [25945 h] | 3,011.11 | 3,011.11 | ZNA | CON |  |
| A39910 |  | Pipe Laying | 8d | 2026-04-04 A | 2026-05-05 A | A39900 | 100% | 2027-01-07 | 2027-01-17 |  |  | ICKMO1-cost unite [2007.41 $]; boom truck [200 h]; labor [1200 h]; Sewage Network Circular pipes (GRP) [63.28]; Physical Units [17296.7 h] | 2,007.41 | 2,007.41 | ZNA | CON | LAY |
| A39920 |  | Install Manhole | 4d | 2026-04-04 A | 2026-05-05 A | A39900 | 100% | 2027-01-07 | 2027-01-12 |  |  | ICKMO1-cost unite [9033.33 $]; boom truck [200 h]; labor [1200 h]; Physical Units [77834.9 h] | 9,033.33 | 9,033.33 | ZNA | CON | MH |
| A39940 |  | Backfilling & Compaction | 4d | 2026-04-04 A | 2026-05-05 A | A39930, A39920, A39890 | 100% | 2027-01-19 | 2027-01-24 |  |  | ICKMO1-cost unite [4014.81 $]; Roller compactor [200 h]; Physical Units [34593.3 h] | 4,014.81 | 4,014.81 | ZNA | CON |  |
| A39930 |  | Testing & Inspection | 2d | 2026-10-21 | 2026-10-24 | A39910 |  |  |  | 58.86d | 0d | ICKMO1-cost unite [2007.41 $]; labor [1200 h]; Physical Units [17296.7 h] | 2,007.41 |  | ZNA | CON |  |
|  | MH-1.7.10.0 / MH-1.7.10.1 | **MH-1.7.10.0 / MH-1.7.10.1** |  | 2026-04-04 | 2026-10-24 |  |  |  |  |  |  |  |  |  |  |  |  |
| A39950 |  | Excavation | 4d | 2026-04-04 A | 2026-05-05 A | A39900, A1190 | 100% | 2027-01-07 | 2027-01-12 |  |  | ICKMO1-cost unite [3011.11 $]; Excavator [200 h]; Physical Units [25945 h] | 3,011.11 | 3,011.11 | ZNA | CON |  |
| A39960 |  | Pipe Laying | 8d | 2026-04-04 A | 2026-05-05 A | A39950 | 100% | 2027-01-12 | 2027-01-21 |  |  | ICKMO1-cost unite [2007.41 $]; boom truck [200 h]; labor [1200 h]; Sewage Network Circular pipes (GRP) [63.28]; Physical Units [17296.7 h] | 2,007.41 | 2,007.41 | ZNA | CON | LAY |
| A39970 |  | Install Manhole | 4d | 2026-04-04 A | 2026-05-05 A | A39950 | 100% | 2027-01-12 | 2027-01-17 |  |  | ICKMO1-cost unite [9033.33 $]; boom truck [200 h]; labor [1200 h]; Physical Units [77834.9 h] | 9,033.33 | 9,033.33 | ZNA | CON | MH |
| A39990 |  | Backfilling & Compaction | 4d | 2026-04-04 A | 2026-05-05 A | A39980, A39970, A39940 | 100% | 2027-01-24 | 2027-01-28 |  |  | ICKMO1-cost unite [4014.81 $]; Roller compactor [200 h]; Physical Units [34593.3 h] | 4,014.81 | 4,014.81 | ZNA | CON |  |
| A39980 |  | Testing & Inspection | 2d | 2026-10-21 | 2026-10-24 | A39960 |  |  |  | 58.86d | 0d | ICKMO1-cost unite [2007.41 $]; labor [1200 h]; Physical Units [17296.7 h] | 2,007.41 |  | ZNA | CON |  |

| ID | WBS | Activity | Duration | Start | Finish | Predecessors | Complete | Planned start | Planned finish | Total float | Free float | Resources | Cost | Actual cost | ALKHARJ INDUSTERIAL AREA - PROJECT ZONES | ALKHARJ INDUSTERIAL AREA - DECEPLINS | ALKHARJ INDUSTERIAL AREA - Wet networks |
| --- | --- | --- | --- | --- | --- | --- | --- | --- | --- | --- | --- | --- | --- | --- | --- | --- | --- |
|  | MH-1.7.11 / MH-1.7.12 | **MH-1.7.11 / MH-1.7.12** |  | 2026-04-04 | 2026-10-24 |  |  |  |  |  |  |  |  |  |  |  |  |
| A40000 |  | Excavation | 4d | 2026-04-04 A | 2026-05-05 A | A39950, A1190 | 100% | 2027-01-12 | 2027-01-17 |  |  | ICKMO1-cost unite [3011.11 $]; Excavator [200 h]; Physical Units [25945 h] | 3,011.11 | 3,011.11 | ZNA | CON |  |
| A40010 |  | Pipe Laying | 8d | 2026-04-04 A | 2026-05-05 A | A40000 | 100% | 2027-01-17 | 2027-01-26 |  |  | ICKMO1-cost unite [2007.41 $]; boom truck [200 h]; labor [1200 h]; Sewage Network Circular pipes (GRP) [63.28]; Physical Units [17296.7 h] | 2,007.41 | 2,007.41 | ZNA | CON | LAY |
| A40020 |  | Install Manhole | 4d | 2026-04-04 A | 2026-05-05 A | A40000 | 100% | 2027-01-17 | 2027-01-21 |  |  | ICKMO1-cost unite [9033.33 $]; boom truck [200 h]; labor [1200 h]; Physical Units [77834.9 h] | 9,033.33 | 9,033.33 | ZNA | CON | MH |
| A40040 |  | Backfilling & Compaction | 4d | 2026-04-04 A | 2026-05-05 A | A40030, A40020, A39990 | 100% | 2027-01-28 | 2027-02-02 |  |  | ICKMO1-cost unite [4014.81 $]; Roller compactor [200 h]; Physical Units [34593.3 h] | 4,014.81 | 4,014.81 | ZNA | CON |  |
| A40030 |  | Testing & Inspection | 2d | 2026-10-21 | 2026-10-24 | A40010 |  |  |  | 58.86d | 0d | ICKMO1-cost unite [2007.41 $]; labor [1200 h]; Physical Units [17296.7 h] | 2,007.41 |  | ZNA | CON |  |
|  | MH-1.7.2 / MH-1.7.3 | **MH-1.7.2 / MH-1.7.3** |  | 2026-04-04 | 2026-10-24 |  |  |  |  |  |  |  |  |  |  |  |  |
| A40050 |  | Excavation | 4d | 2026-04-04 A | 2026-05-05 A | A40000, A1190 | 100% | 2027-01-17 | 2027-01-21 |  |  | ICKMO1-cost unite [3011.11 $]; Excavator [200 h]; Physical Units [25945 h] | 3,011.11 | 3,011.11 | ZNA | CON |  |
| A40060 |  | Pipe Laying | 8d | 2026-04-04 A | 2026-05-05 A | A40050 | 100% | 2027-01-21 | 2027-01-31 |  |  | ICKMO1-cost unite [2007.41 $]; boom truck [200 h]; labor [1200 h]; Sewage Network Circular pipes (GRP) [63.28]; Physical Units [17296.7 h] | 2,007.41 | 2,007.41 | ZNA | CON | LAY |
| A40070 |  | Install Manhole | 4d | 2026-04-04 A | 2026-05-05 A | A40050 | 100% | 2027-01-21 | 2027-01-26 |  |  | ICKMO1-cost unite [9033.33 $]; boom truck [200 h]; labor [1200 h]; Physical Units [77834.9 h] | 9,033.33 | 9,033.33 | ZNA | CON | MH |
| A40090 |  | Backfilling & Compaction | 4d | 2026-04-04 A | 2026-05-05 A | A40080, A40070, A40040 | 100% | 2027-02-02 | 2027-02-07 |  |  | ICKMO1-cost unite [4014.81 $]; Roller compactor [200 h]; Physical Units [34593.3 h] | 4,014.81 | 4,014.81 | ZNA | CON |  |
| A40080 |  | Testing & Inspection | 2d | 2026-10-21 | 2026-10-24 | A40060 |  |  |  | 58.86d | 0d | ICKMO1-cost unite [2007.41 $]; labor [1200 h]; Physical Units [17296.7 h] | 2,007.41 |  | ZNA | CON |  |
|  | MH-1.7.2.0 / MH-1.7.2.1 | **MH-1.7.2.0 / MH-1.7.2.1** |  | 2026-04-04 | 2026-10-24 |  |  |  |  |  |  |  |  |  |  |  |  |
| A40100 |  | Excavation | 4d | 2026-04-04 A | 2026-05-05 A | A40050, A1190 | 100% | 2027-01-21 | 2027-01-26 |  |  | ICKMO1-cost unite [3011.11 $]; Excavator [200 h]; Physical Units [25945 h] | 3,011.11 | 3,011.11 | ZNA | CON |  |
| A40110 |  | Pipe Laying | 8d | 2026-04-04 A | 2026-05-05 A | A40100 | 100% | 2027-01-26 | 2027-02-04 |  |  | ICKMO1-cost unite [2007.41 $]; boom truck [200 h]; labor [1200 h]; Sewage Network Circular pipes (GRP) [63.28]; Physical Units [17296.7 h] | 2,007.41 | 2,007.41 | ZNA | CON | LAY |
| A40120 |  | Install Manhole | 4d | 2026-04-04 A | 2026-05-05 A | A40100 | 100% | 2027-01-26 | 2027-01-31 |  |  | ICKMO1-cost unite [9033.33 $]; boom truck [200 h]; labor [1200 h]; Physical Units [77834.9 h] | 9,033.33 | 9,033.33 | ZNA | CON | MH |
| A40140 |  | Backfilling & Compaction | 4d | 2026-04-04 A | 2026-05-05 A | A40130, A40120, A40090 | 100% | 2027-02-07 | 2027-02-11 |  |  | ICKMO1-cost unite [4014.81 $]; Roller compactor [200 h]; Physical Units [34593.3 h] | 4,014.81 | 4,014.81 | ZNA | CON |  |
| A40130 |  | Testing & Inspection | 2d | 2026-10-21 | 2026-10-24 | A40110 |  |  |  | 58.86d | 0d | ICKMO1-cost unite [2007.41 $]; labor [1200 h]; Physical Units [17296.7 h] | 2,007.41 |  | ZNA | CON |  |
|  | MH-1.7.3 / MH-1.7.4 | **MH-1.7.3 / MH-1.7.4** |  | 2026-04-04 | 2026-10-24 |  |  |  |  |  |  |  |  |  |  |  |  |
| A40150 |  | Excavation | 4d | 2026-04-04 A | 2026-05-05 A | A40100, A1190 | 100% | 2027-01-26 | 2027-01-31 |  |  | ICKMO1-cost unite [3011.11 $]; Excavator [200 h]; Physical Units [25945 h] | 3,011.11 | 3,011.11 | ZNA | CON |  |
| A40160 |  | Pipe Laying | 8d | 2026-04-04 A | 2026-05-05 A | A40150 | 100% | 2027-01-31 | 2027-02-09 |  |  | ICKMO1-cost unite [2007.41 $]; boom truck [200 h]; labor [1200 h]; Sewage Network Circular pipes (GRP) [63.28]; Physical Units [17296.7 h] | 2,007.41 | 2,007.41 | ZNA | CON | LAY |
| A40170 |  | Install Manhole | 4d | 2026-04-04 A | 2026-05-05 A | A40150 | 100% | 2027-01-31 | 2027-02-04 |  |  | ICKMO1-cost unite [9033.33 $]; boom truck [200 h]; labor [1200 h]; Physical Units [77834.9 h] | 9,033.33 | 9,033.33 | ZNA | CON | MH |
| A40190 |  | Backfilling & Compaction | 4d | 2026-04-04 A | 2026-05-05 A | A40180, A40170, A40140 | 100% | 2027-02-11 | 2027-02-16 |  |  | ICKMO1-cost unite [4014.81 $]; Roller compactor [200 h]; Physical Units [34593.3 h] | 4,014.81 | 4,014.81 | ZNA | CON |  |
| A40180 |  | Testing & Inspection | 2d | 2026-10-21 | 2026-10-24 | A40160 |  |  |  | 58.86d | 0d | ICKMO1-cost unite [2007.41 $]; labor [1200 h]; Physical Units [17296.7 h] | 2,007.41 |  | ZNA | CON |  |

| ID | WBS | Activity | Duration | Start | Finish | Predecessors | Complete | Planned start | Planned finish | Total float | Free float | Resources | Cost | Actual cost | ALKHARJ INDUSTERIAL AREA - PROJECT ZONES | ALKHARJ INDUSTERIAL AREA - DECEPLINS | ALKHARJ INDUSTERIAL AREA - Wet networks |
| --- | --- | --- | --- | --- | --- | --- | --- | --- | --- | --- | --- | --- | --- | --- | --- | --- | --- |
|  | MH-1.7.3.0 / MH-1.7.3.1 | **MH-1.7.3.0 / MH-1.7.3.1** |  | 2026-04-04 | 2026-10-24 |  |  |  |  |  |  |  |  |  |  |  |  |
| A40200 |  | Excavation | 4d | 2026-04-04 A | 2026-05-05 A | A40150, A1190 | 100% | 2027-01-31 | 2027-02-04 |  |  | ICKMO1-cost unite [3011.11 $]; Excavator [200 h]; Physical Units [25945 h] | 3,011.11 | 3,011.11 | ZNA | CON |  |
| A40210 |  | Pipe Laying | 8d | 2026-04-04 A | 2026-05-05 A | A40200 | 100% | 2027-02-04 | 2027-02-14 |  |  | ICKMO1-cost unite [2007.41 $]; boom truck [200 h]; labor [1200 h]; Sewage Network Circular pipes (GRP) [63.28]; Physical Units [17296.7 h] | 2,007.41 | 2,007.41 | ZNA | CON | LAY |
| A40220 |  | Install Manhole | 4d | 2026-04-04 A | 2026-05-05 A | A40200 | 100% | 2027-02-04 | 2027-02-09 |  |  | ICKMO1-cost unite [9033.33 $]; boom truck [200 h]; labor [1200 h]; Physical Units [77834.9 h] | 9,033.33 | 9,033.33 | ZNA | CON | MH |
| A40240 |  | Backfilling & Compaction | 4d | 2026-04-04 A | 2026-05-05 A | A40230, A40220, A40190 | 100% | 2027-02-16 | 2027-02-21 |  |  | ICKMO1-cost unite [4014.81 $]; Roller compactor [200 h]; Physical Units [34593.3 h] | 4,014.81 | 4,014.81 | ZNA | CON |  |
| A40230 |  | Testing & Inspection | 2d | 2026-10-21 | 2026-10-24 | A40210 |  |  |  | 58.86d | 0d | ICKMO1-cost unite [2007.41 $]; labor [1200 h]; Physical Units [17296.7 h] | 2,007.41 |  | ZNA | CON |  |
|  | MH-1.7.4 / MH-1.7.5 | **MH-1.7.4 / MH-1.7.5** |  | 2026-04-04 | 2026-10-24 |  |  |  |  |  |  |  |  |  |  |  |  |
| A40250 |  | Excavation | 4d | 2026-04-04 A | 2026-05-05 A | A40200, A1190 | 100% | 2027-02-04 | 2027-02-09 |  |  | ICKMO1-cost unite [3011.11 $]; Excavator [200 h]; Physical Units [25945 h] | 3,011.11 | 3,011.11 | ZNA | CON |  |
| A40260 |  | Pipe Laying | 8d | 2026-04-04 A | 2026-05-05 A | A40250 | 100% | 2027-02-09 | 2027-02-18 |  |  | ICKMO1-cost unite [2007.41 $]; boom truck [200 h]; labor [1200 h]; Sewage Network Circular pipes (GRP) [63.28]; Physical Units [17296.7 h] | 2,007.41 | 2,007.41 | ZNA | CON | LAY |
| A40270 |  | Install Manhole | 4d | 2026-04-04 A | 2026-05-05 A | A40250 | 100% | 2027-02-09 | 2027-02-14 |  |  | ICKMO1-cost unite [9033.33 $]; boom truck [200 h]; labor [1200 h]; Physical Units [77834.9 h] | 9,033.33 | 9,033.33 | ZNA | CON | MH |
| A40290 |  | Backfilling & Compaction | 4d | 2026-04-04 A | 2026-05-05 A | A40280, A40270, A40240 | 100% | 2027-02-21 | 2027-02-25 |  |  | ICKMO1-cost unite [4014.81 $]; Roller compactor [200 h]; Physical Units [34593.3 h] | 4,014.81 | 4,014.81 | ZNA | CON |  |
| A40280 |  | Testing & Inspection | 2d | 2026-10-21 | 2026-10-24 | A40260 |  |  |  | 58.86d | 0d | ICKMO1-cost unite [2007.41 $]; labor [1200 h]; Physical Units [17296.7 h] | 2,007.41 |  | ZNA | CON |  |
|  | MH-1.7.4.0 / MH-1.7.4.1 | **MH-1.7.4.0 / MH-1.7.4.1** |  | 2026-04-04 | 2026-10-24 |  |  |  |  |  |  |  |  |  |  |  |  |
| A40300 |  | Excavation | 4d | 2026-04-04 A | 2026-05-05 A | A40250, A1190 | 100% | 2027-02-09 | 2027-02-14 |  |  | ICKMO1-cost unite [3011.11 $]; Excavator [200 h]; Physical Units [25945 h] | 3,011.11 | 3,011.11 | ZNA | CON |  |
| A40310 |  | Pipe Laying | 8d | 2026-04-04 A | 2026-05-05 A | A40300 | 100% | 2027-02-14 | 2027-02-23 |  |  | ICKMO1-cost unite [2007.41 $]; boom truck [200 h]; labor [1200 h]; Sewage Network Circular pipes (GRP) [63.28]; Physical Units [17296.7 h] | 2,007.41 | 2,007.41 | ZNA | CON | LAY |
| A40320 |  | Install Manhole | 4d | 2026-04-04 A | 2026-05-05 A | A40300 | 100% | 2027-02-14 | 2027-02-18 |  |  | ICKMO1-cost unite [9033.33 $]; boom truck [200 h]; labor [1200 h]; Physical Units [77834.9 h] | 9,033.33 | 9,033.33 | ZNA | CON | MH |
| A40340 |  | Backfilling & Compaction | 4d | 2026-04-04 A | 2026-05-05 A | A40330, A40320, A40290 | 100% | 2027-02-25 | 2027-03-02 |  |  | ICKMO1-cost unite [4014.81 $]; Roller compactor [200 h]; Physical Units [34593.3 h] | 4,014.81 | 4,014.81 | ZNA | CON |  |
| A40330 |  | Testing & Inspection | 2d | 2026-10-21 | 2026-10-24 | A40310 |  |  |  | 58.86d | 0d | ICKMO1-cost unite [2007.41 $]; labor [1200 h]; Physical Units [17296.7 h] | 2,007.41 |  | ZNA | CON |  |
|  | MH-1.7.5 / MH-1.7.6 | **MH-1.7.5 / MH-1.7.6** |  | 2026-04-04 | 2026-10-24 |  |  |  |  |  |  |  |  |  |  |  |  |
| A40350 |  | Excavation | 4d | 2026-04-04 A | 2026-05-05 A | A40300, A1190 | 100% | 2027-02-14 | 2027-02-18 |  |  | ICKMO1-cost unite [3011.11 $]; Excavator [200 h]; Physical Units [25945 h] | 3,011.11 | 3,011.11 | ZNA | CON |  |
| A40360 |  | Pipe Laying | 4d | 2026-04-04 A | 2026-05-05 A | A40350 | 100% | 2027-02-18 | 2027-02-23 |  |  | ICKMO1-cost unite [2007.41 $]; boom truck [200 h]; labor [1200 h]; Sewage Network Circular pipes (GRP) [63.28]; Physical Units [17296.7 h] | 2,007.41 | 2,007.41 | ZNA | CON | LAY |
| A40370 |  | Install Manhole | 4d | 2026-05-04 A | 2026-06-05 A | A40350 | 100% | 2027-02-18 | 2027-02-23 |  |  | ICKMO1-cost unite [9033.33 $]; boom truck [200 h]; labor [1200 h]; Physical Units [77834.9 h] | 9,033.33 | 9,033.33 | ZNA | CON | MH |
| A40390 |  | Backfilling & Compaction | 4d | 2026-05-04 A | 2026-06-05 A | A40380, A40370, A40340 | 100% | 2027-03-02 | 2027-03-07 |  |  | ICKMO1-cost unite [4014.81 $]; Roller compactor [200 h]; Physical Units [34593.3 h] | 4,014.81 | 4,014.81 | ZNA | CON |  |
| A40380 |  | Testing & Inspection | 2d | 2026-10-21 | 2026-10-24 | A40360 |  |  |  | 58.86d | 0d | ICKMO1-cost unite [2007.41 $]; labor [1200 h]; Physical Units [17296.7 h] | 2,007.41 |  | ZNA | CON |  |

| ID | WBS | Activity | Duration | Start | Finish | Predecessors | Complete | Planned start | Planned finish | Total float | Free float | Resources | Cost | Actual cost | ALKHARJ INDUSTERIAL AREA - PROJECT ZONES | ALKHARJ INDUSTERIAL AREA - DECEPLINS | ALKHARJ INDUSTERIAL AREA - Wet networks |
| --- | --- | --- | --- | --- | --- | --- | --- | --- | --- | --- | --- | --- | --- | --- | --- | --- | --- |
|  | MH-1.7.5.0 / MH-1.7.5.1 | **MH-1.7.5.0 / MH-1.7.5.1** |  | 2026-05-04 | 2026-10-24 |  |  |  |  |  |  |  |  |  |  |  |  |
| A40400 |  | Excavation | 4d | 2026-05-04 A | 2026-06-05 A | A40350, A1190 | 100% | 2027-02-18 | 2027-02-23 |  |  | ICKMO1-cost unite [3011.11 $]; Excavator [200 h]; Physical Units [25945 h] | 3,011.11 | 3,011.11 | ZNA | CON |  |
| A40410 |  | Pipe Laying | 8d | 2026-05-04 A | 2026-06-05 A | A40400 | 100% | 2027-02-23 | 2027-03-04 |  |  | ICKMO1-cost unite [2007.41 $]; boom truck [200 h]; labor [1200 h]; Sewage Network Circular pipes (GRP) [63.28]; Physical Units [17296.7 h] | 2,007.41 | 2,007.41 | ZNA | CON | LAY |
| A40420 |  | Install Manhole | 4d | 2026-05-04 A | 2026-06-05 A | A40400 | 100% | 2027-02-23 | 2027-02-28 |  |  | ICKMO1-cost unite [9033.33 $]; boom truck [200 h]; labor [1200 h]; Physical Units [77834.9 h] | 9,033.33 | 9,033.33 | ZNA | CON | MH |
| A40440 |  | Backfilling & Compaction | 4d | 2026-05-04 A | 2026-06-05 A | A40430, A40420, A40390 | 100% | 2027-03-07 | 2027-03-11 |  |  | ICKMO1-cost unite [4014.81 $]; Roller compactor [200 h]; Physical Units [34593.3 h] | 4,014.81 | 4,014.81 | ZNA | CON |  |
| A40430 |  | Testing & Inspection | 2d | 2026-10-21 | 2026-10-24 | A40410 |  |  |  | 58.86d | 0d | ICKMO1-cost unite [2007.41 $]; labor [1200 h]; Physical Units [17296.7 h] | 2,007.41 |  | ZNA | CON |  |
|  | MH-1.7.6 / MH-1.7.7 | **MH-1.7.6 / MH-1.7.7** |  | 2026-05-04 | 2026-10-24 |  |  |  |  |  |  |  |  |  |  |  |  |
| A40450 |  | Excavation | 4d | 2026-05-04 A | 2026-06-05 A | A40400, A1190 | 100% | 2027-02-23 | 2027-02-28 |  |  | ICKMO1-cost unite [3011.11 $]; Excavator [200 h]; Physical Units [25945 h] | 3,011.11 | 3,011.11 | ZNA | CON |  |
| A40460 |  | Pipe Laying | 8d | 2026-05-04 A | 2026-06-05 A | A40450 | 100% | 2027-02-28 | 2027-03-09 |  |  | ICKMO1-cost unite [2007.41 $]; boom truck [200 h]; labor [1200 h]; Sewage Network Circular pipes (GRP) [63.28]; Physical Units [17296.7 h] | 2,007.41 | 2,007.41 | ZNA | CON | LAY |
| A40470 |  | Install Manhole | 4d | 2026-05-04 A | 2026-06-05 A | A40450 | 100% | 2027-02-28 | 2027-03-04 |  |  | ICKMO1-cost unite [9033.33 $]; boom truck [200 h]; labor [1200 h]; Physical Units [77834.9 h] | 9,033.33 | 9,033.33 | ZNA | CON | MH |
| A40490 |  | Backfilling & Compaction | 4d | 2026-05-04 A | 2026-06-05 A | A40480, A40470, A40440 | 100% | 2027-03-11 | 2027-03-16 |  |  | ICKMO1-cost unite [4014.81 $]; Roller compactor [200 h]; Physical Units [34593.3 h] | 4,014.81 | 4,014.81 | ZNA | CON |  |
| A40480 |  | Testing & Inspection | 2d | 2026-10-21 | 2026-10-24 | A40460 |  |  |  | 58.86d | 0d | ICKMO1-cost unite [2007.41 $]; labor [1200 h]; Physical Units [17296.7 h] | 2,007.41 |  | ZNA | CON |  |
|  | MH-1.7.6.0 / MH-1.7.6.1 | **MH-1.7.6.0 / MH-1.7.6.1** |  | 2026-05-04 | 2026-10-24 |  |  |  |  |  |  |  |  |  |  |  |  |
| A40500 |  | Excavation | 4d | 2026-05-04 A | 2026-06-05 A | A40450, A1190 | 100% | 2027-02-28 | 2027-03-04 |  |  | ICKMO1-cost unite [3011.11 $]; Excavator [200 h]; Physical Units [25945 h] | 3,011.11 | 3,011.11 | ZNA | CON |  |
| A40510 |  | Pipe Laying | 8d | 2026-05-04 A | 2026-06-05 A | A40500 | 100% | 2027-03-04 | 2027-03-14 |  |  | ICKMO1-cost unite [2007.41 $]; boom truck [200 h]; labor [1200 h]; Sewage Network Circular pipes (GRP) [63.28]; Physical Units [17296.7 h] | 2,007.41 | 2,007.41 | ZNA | CON | LAY |
| A40520 |  | Install Manhole | 4d | 2026-05-04 A | 2026-06-05 A | A40500 | 100% | 2027-03-04 | 2027-03-09 |  |  | ICKMO1-cost unite [9033.33 $]; boom truck [200 h]; labor [1200 h]; Physical Units [77834.9 h] | 9,033.33 | 9,033.33 | ZNA | CON | MH |
| A40540 |  | Backfilling & Compaction | 4d | 2026-05-04 A | 2026-06-05 A | A40530, A40520, A40490 | 100% | 2027-03-16 | 2027-03-21 |  |  | ICKMO1-cost unite [4014.81 $]; Roller compactor [200 h]; Physical Units [34593.3 h] | 4,014.81 | 4,014.81 | ZNA | CON |  |
| A40530 |  | Testing & Inspection | 2d | 2026-10-21 | 2026-10-24 | A40510 |  |  |  | 58.86d | 0d | ICKMO1-cost unite [2007.41 $]; labor [1200 h]; Physical Units [17296.7 h] | 2,007.41 |  | ZNA | CON |  |
|  | MH-1.7.7 / MH-1.7.8 | **MH-1.7.7 / MH-1.7.8** |  | 2026-05-04 | 2026-10-24 |  |  |  |  |  |  |  |  |  |  |  |  |
| A40550 |  | Excavation | 4d | 2026-05-04 A | 2026-06-05 A | A40500, A1190 | 100% | 2027-03-04 | 2027-03-09 |  |  | ICKMO1-cost unite [3011.11 $]; Excavator [200 h]; Physical Units [25945 h] | 3,011.11 | 3,011.11 | ZNA | CON |  |
| A40560 |  | Pipe Laying | 8d | 2026-05-04 A | 2026-06-05 A | A40550 | 100% | 2027-03-09 | 2027-03-18 |  |  | ICKMO1-cost unite [2007.41 $]; boom truck [200 h]; labor [1200 h]; Sewage Network Circular pipes (GRP) [63.28]; Physical Units [17296.7 h] | 2,007.41 | 2,007.41 | ZNA | CON | LAY |
| A40570 |  | Install Manhole | 4d | 2026-05-04 A | 2026-06-05 A | A40550 | 100% | 2027-03-09 | 2027-03-14 |  |  | ICKMO1-cost unite [9033.33 $]; boom truck [200 h]; labor [1200 h]; Physical Units [77834.9 h] | 9,033.33 | 9,033.33 | ZNA | CON | MH |
| A40590 |  | Backfilling & Compaction | 4d | 2026-05-04 A | 2026-06-05 A | A40580, A40570, A40540 | 100% | 2027-03-21 | 2027-03-25 |  |  | ICKMO1-cost unite [4014.81 $]; Roller compactor [200 h]; Physical Units [34593.3 h] | 4,014.81 | 4,014.81 | ZNA | CON |  |
| A40580 |  | Testing & Inspection | 2d | 2026-10-21 | 2026-10-24 | A40560 |  |  |  | 58.86d | 0d | ICKMO1-cost unite [2007.41 $]; labor [1200 h]; Physical Units [17296.7 h] | 2,007.41 |  | ZNA | CON |  |

| ID | WBS | Activity | Duration | Start | Finish | Predecessors | Complete | Planned start | Planned finish | Total float | Free float | Resources | Cost | Actual cost | ALKHARJ INDUSTERIAL AREA - PROJECT ZONES | ALKHARJ INDUSTERIAL AREA - DECEPLINS | ALKHARJ INDUSTERIAL AREA - Wet networks |
| --- | --- | --- | --- | --- | --- | --- | --- | --- | --- | --- | --- | --- | --- | --- | --- | --- | --- |
|  | MH-1.7.7.0 / MH-1.7.7.1 | **MH-1.7.7.0 / MH-1.7.7.1** |  | 2026-05-04 | 2026-10-24 |  |  |  |  |  |  |  |  |  |  |  |  |
| A40600 |  | Excavation | 4d | 2026-05-04 A | 2026-06-05 A | A40550, A1190 | 100% | 2027-03-09 | 2027-03-14 |  |  | ICKMO1-cost unite [3011.11 $]; Excavator [200 h]; Physical Units [25945 h] | 3,011.11 | 3,011.11 | ZNA | CON |  |
| A40610 |  | Pipe Laying | 8d | 2026-05-04 A | 2026-06-05 A | A40600 | 100% | 2027-03-14 | 2027-03-23 |  |  | ICKMO1-cost unite [2007.41 $]; boom truck [200 h]; labor [1200 h]; Sewage Network Circular pipes (GRP) [63.28]; Physical Units [17296.7 h] | 2,007.41 | 2,007.41 | ZNA | CON | LAY |
| A40620 |  | Install Manhole | 4d | 2026-05-04 A | 2026-06-05 A | A40600 | 100% | 2027-03-14 | 2027-03-18 |  |  | ICKMO1-cost unite [9033.33 $]; boom truck [200 h]; labor [1200 h]; Physical Units [77834.9 h] | 9,033.33 | 9,033.33 | ZNA | CON | MH |
| A40640 |  | Backfilling & Compaction | 4d | 2026-05-04 A | 2026-06-05 A | A40630, A40620, A40590 | 100% | 2027-03-25 | 2027-03-30 |  |  | ICKMO1-cost unite [4014.81 $]; Roller compactor [200 h]; Physical Units [34593.3 h] | 4,014.81 | 4,014.81 | ZNA | CON |  |
| A40630 |  | Testing & Inspection | 2d | 2026-10-21 | 2026-10-24 | A40610 |  |  |  | 58.86d | 0d | ICKMO1-cost unite [2007.41 $]; labor [1200 h]; Physical Units [17296.7 h] | 2,007.41 |  | ZNA | CON |  |
|  | MH-1.7.8 / MH-1.7.9 | **MH-1.7.8 / MH-1.7.9** |  | 2026-05-04 | 2026-10-24 |  |  |  |  |  |  |  |  |  |  |  |  |
| A40650 |  | Excavation | 4d | 2026-05-04 A | 2026-06-05 A | A40600, A1190 | 100% | 2027-03-14 | 2027-03-18 |  |  | ICKMO1-cost unite [3011.11 $]; Excavator [200 h]; Physical Units [25945 h] | 3,011.11 | 3,011.11 | ZNA | CON |  |
| A40660 |  | Pipe Laying | 8d | 2026-05-04 A | 2026-06-05 A | A40650 | 100% | 2027-03-18 | 2027-03-28 |  |  | ICKMO1-cost unite [2007.41 $]; boom truck [200 h]; labor [1200 h]; Sewage Network Circular pipes (GRP) [63.28]; Physical Units [17296.7 h] | 2,007.41 | 2,007.41 | ZNA | CON | LAY |
| A40670 |  | Install Manhole | 4d | 2026-05-04 A | 2026-06-05 A | A40650 | 100% | 2027-03-18 | 2027-03-23 |  |  | ICKMO1-cost unite [9033.33 $]; boom truck [200 h]; labor [1200 h]; Physical Units [77834.9 h] | 9,033.33 | 9,033.33 | ZNA | CON | MH |
| A40690 |  | Backfilling & Compaction | 4d | 2026-05-04 A | 2026-06-05 A | A40680, A40670, A40640 | 100% | 2027-03-30 | 2027-04-04 |  |  | ICKMO1-cost unite [4014.81 $]; Roller compactor [200 h]; Physical Units [34593.3 h] | 4,014.81 | 4,014.81 | ZNA | CON |  |
| A40680 |  | Testing & Inspection | 2d | 2026-10-21 | 2026-10-24 | A40660 |  |  |  | 58.86d | 0d | ICKMO1-cost unite [2007.41 $]; labor [1200 h]; Physical Units [17296.7 h] | 2,007.41 |  | ZNA | CON |  |
|  | MH-1.7.8.0 / MH-1.7.8.1 | **MH-1.7.8.0 / MH-1.7.8.1** |  | 2026-05-04 | 2026-10-24 |  |  |  |  |  |  |  |  |  |  |  |  |
| A40700 |  | Excavation | 4d | 2026-05-04 A | 2026-06-05 A | A40650, A1190 | 100% | 2027-03-18 | 2027-03-23 |  |  | ICKMO1-cost unite [3011.11 $]; Excavator [200 h]; Physical Units [25945 h] | 3,011.11 | 3,011.11 | ZNA | CON |  |
| A40710 |  | Pipe Laying | 8d | 2026-05-04 A | 2026-06-05 A | A40700 | 100% | 2027-03-23 | 2027-04-01 |  |  | ICKMO1-cost unite [2007.41 $]; boom truck [200 h]; labor [1200 h]; Sewage Network Circular pipes (GRP) [63.28]; Physical Units [17296.7 h] | 2,007.41 | 2,007.41 | ZNA | CON | LAY |
| A40720 |  | Install Manhole | 4d | 2026-05-04 A | 2026-06-05 A | A40700 | 100% | 2027-03-23 | 2027-03-28 |  |  | ICKMO1-cost unite [9033.33 $]; boom truck [200 h]; labor [1200 h]; Physical Units [77834.9 h] | 9,033.33 | 9,033.33 | ZNA | CON | MH |
| A40740 |  | Backfilling & Compaction | 4d | 2026-05-04 A | 2026-06-05 A | A40730, A40720, A40690 | 100% | 2027-04-04 | 2027-04-08 |  |  | ICKMO1-cost unite [4014.81 $]; Roller compactor [200 h]; Physical Units [34593.3 h] | 4,014.81 | 4,014.81 | ZNA | CON |  |
| A40730 |  | Testing & Inspection | 2d | 2026-10-21 | 2026-10-24 | A40710 |  |  |  | 58.86d | 0d | ICKMO1-cost unite [2007.41 $]; labor [1200 h]; Physical Units [17296.7 h] | 2,007.41 |  | ZNA | CON |  |
|  | MH-1.7.9 / MH-1.7.10 | **MH-1.7.9 / MH-1.7.10** |  | 2026-05-04 | 2026-10-24 |  |  |  |  |  |  |  |  |  |  |  |  |
| A40750 |  | Excavation | 4d | 2026-05-04 A | 2026-06-05 A | A40700, A1190 | 100% | 2027-03-23 | 2027-03-28 |  |  | ICKMO1-cost unite [3011.11 $]; Excavator [200 h]; Physical Units [25945 h] | 3,011.11 | 3,011.11 | ZNA | CON |  |
| A40760 |  | Pipe Laying | 8d | 2026-05-04 A | 2026-06-05 A | A40750 | 100% | 2027-03-28 | 2027-04-06 |  |  | ICKMO1-cost unite [2007.41 $]; boom truck [200 h]; labor [1200 h]; Sewage Network Circular pipes (GRP) [63.28]; Physical Units [17296.7 h] | 2,007.41 | 2,007.41 | ZNA | CON | LAY |
| A40770 |  | Install Manhole | 4d | 2026-05-04 A | 2026-06-05 A | A40750 | 100% | 2027-03-28 | 2027-04-01 |  |  | ICKMO1-cost unite [9033.33 $]; boom truck [200 h]; labor [1200 h]; Physical Units [77834.9 h] | 9,033.33 | 9,033.33 | ZNA | CON | MH |
| A40790 |  | Backfilling & Compaction | 4d | 2026-05-04 A | 2026-06-05 A | A40780, A40770, A40740 | 100% | 2027-04-08 | 2027-04-13 |  |  | ICKMO1-cost unite [4014.81 $]; Roller compactor [200 h]; Physical Units [34593.3 h] | 4,014.81 | 4,014.81 | ZNA | CON |  |
| A40780 |  | Testing & Inspection | 2d | 2026-10-21 | 2026-10-24 | A40760 |  |  |  | 58.86d | 0d | ICKMO1-cost unite [2007.41 $]; labor [1200 h]; Physical Units [17296.7 h] | 2,007.41 |  | ZNA | CON |  |

| ID | WBS | Activity | Duration | Start | Finish | Predecessors | Complete | Planned start | Planned finish | Total float | Free float | Resources | Cost | Actual cost | ALKHARJ INDUSTERIAL AREA - PROJECT ZONES | ALKHARJ INDUSTERIAL AREA - DECEPLINS | ALKHARJ INDUSTERIAL AREA - Wet networks |
| --- | --- | --- | --- | --- | --- | --- | --- | --- | --- | --- | --- | --- | --- | --- | --- | --- | --- |
|  | MH-1.7.9.0 / MH-1.7.9.1 | **MH-1.7.9.0 / MH-1.7.9.1** |  | 2026-05-04 | 2026-10-24 |  |  |  |  |  |  |  |  |  |  |  |  |
| A40800 |  | Excavation | 4d | 2026-05-04 A | 2026-06-05 A | A40750, A1190 | 100% | 2027-03-28 | 2027-04-01 |  |  | ICKMO1-cost unite [3011.11 $]; Excavator [200 h]; Physical Units [25945 h] | 3,011.11 | 3,011.11 | ZNA | CON |  |
| A40810 |  | Pipe Laying | 8d | 2026-05-04 A | 2026-06-05 A | A40800 | 100% | 2027-04-01 | 2027-04-11 |  |  | ICKMO1-cost unite [2007.41 $]; boom truck [200 h]; labor [1200 h]; Sewage Network Circular pipes (GRP) [63.28]; Physical Units [17296.7 h] | 2,007.41 | 2,007.41 | ZNA | CON | LAY |
| A40820 |  | Install Manhole | 4d | 2026-05-04 A | 2026-06-05 A | A40800 | 100% | 2027-04-01 | 2027-04-06 |  |  | ICKMO1-cost unite [9033.33 $]; boom truck [200 h]; labor [1200 h]; Physical Units [77834.9 h] | 9,033.33 | 9,033.33 | ZNA | CON | MH |
| A40840 |  | Backfilling & Compaction | 4d | 2026-05-04 A | 2026-06-05 A | A40830, A40820, A40790 | 100% | 2027-04-13 | 2027-04-18 |  |  | ICKMO1-cost unite [4014.81 $]; Roller compactor [200 h]; Physical Units [34593.3 h] | 4,014.81 | 4,014.81 | ZNA | CON |  |
| A40830 |  | Testing & Inspection | 2d | 2026-10-21 | 2026-10-24 | A40810 |  |  |  | 58.86d | 0d | ICKMO1-cost unite [2007.41 $]; labor [1200 h]; Physical Units [17296.7 h] | 2,007.41 |  | ZNA | CON |  |
|  | MH-2.19.2 / MH-2.19.3 | **MH-2.19.2 / MH-2.19.3** |  | 2026-05-04 | 2026-10-24 |  |  |  |  |  |  |  |  |  |  |  |  |
| A40850 |  | Excavation | 4d | 2026-05-04 A | 2026-06-05 A | A40800, A1190 | 100% | 2027-04-01 | 2027-04-06 |  |  | ICKMO1-cost unite [3011.11 $]; Excavator [200 h]; Physical Units [25945 h] | 3,011.11 | 3,011.11 | ZNA | CON |  |
| A40860 |  | Pipe Laying | 8d | 2026-05-04 A | 2026-06-05 A | A40850 | 100% | 2027-04-06 | 2027-04-15 |  |  | ICKMO1-cost unite [2007.41 $]; boom truck [200 h]; labor [1200 h]; Sewage Network Circular pipes (GRP) [63.28]; Physical Units [17296.7 h] | 2,007.41 | 2,007.41 | ZNA | CON | LAY |
| A40870 |  | Install Manhole | 4d | 2026-05-04 A | 2026-06-05 A | A40850 | 100% | 2027-04-06 | 2027-04-11 |  |  | ICKMO1-cost unite [9033.33 $]; boom truck [200 h]; labor [1200 h]; Physical Units [77834.9 h] | 9,033.33 | 9,033.33 | ZNA | CON | MH |
| A40890 |  | Backfilling & Compaction | 4d | 2026-05-04 A | 2026-06-05 A | A40880, A40870, A40840 | 100% | 2027-04-18 | 2027-04-22 |  |  | ICKMO1-cost unite [4014.81 $]; Roller compactor [200 h]; Physical Units [34593.3 h] | 4,014.81 | 4,014.81 | ZNA | CON |  |
| A40880 |  | Testing & Inspection | 2d | 2026-10-21 | 2026-10-24 | A40860 |  |  |  | 58.86d | 0d | ICKMO1-cost unite [2007.41 $]; labor [1200 h]; Physical Units [17296.7 h] | 2,007.41 |  | ZNA | CON |  |
|  | MH-2.19.3 / MH-2.19.4 | **MH-2.19.3 / MH-2.19.4** |  | 2026-05-04 | 2026-10-24 |  |  |  |  |  |  |  |  |  |  |  |  |
| A40900 |  | Excavation | 4d | 2026-05-04 A | 2026-06-05 A | A40850, A1190 | 100% | 2027-04-06 | 2027-04-11 |  |  | ICKMO1-cost unite [3011.11 $]; Excavator [200 h]; Physical Units [25945 h] | 3,011.11 | 3,011.11 | ZNA | CON |  |
| A40910 |  | Pipe Laying | 8d | 2026-05-04 A | 2026-06-05 A | A40900 | 100% | 2027-04-11 | 2027-04-20 |  |  | ICKMO1-cost unite [2007.41 $]; boom truck [200 h]; labor [1200 h]; Sewage Network Circular pipes (GRP) [63.28]; Physical Units [17296.7 h] | 2,007.41 | 2,007.41 | ZNA | CON | LAY |
| A40920 |  | Install Manhole | 4d | 2026-05-04 A | 2026-06-05 A | A40900 | 100% | 2027-04-11 | 2027-04-15 |  |  | ICKMO1-cost unite [9033.33 $]; boom truck [200 h]; labor [1200 h]; Physical Units [77834.9 h] | 9,033.33 | 9,033.33 | ZNA | CON | MH |
| A40940 |  | Backfilling & Compaction | 4d | 2026-05-04 A | 2026-06-05 A | A40930, A40920, A40890 | 100% | 2027-04-22 | 2027-04-27 |  |  | ICKMO1-cost unite [4014.81 $]; Roller compactor [200 h]; Physical Units [34593.3 h] | 4,014.81 | 4,014.81 | ZNA | CON |  |
| A40930 |  | Testing & Inspection | 2d | 2026-10-21 | 2026-10-24 | A40910 |  |  |  | 58.86d | 0d | ICKMO1-cost unite [2007.41 $]; labor [1200 h]; Physical Units [17296.7 h] | 2,007.41 |  | ZNA | CON |  |
|  | MH-2.19.3.0 / MH-2.19.3.1 | **MH-2.19.3.0 / MH-2.19.3.1** |  | 2026-05-04 | 2026-10-24 |  |  |  |  |  |  |  |  |  |  |  |  |
| A40950 |  | Excavation | 4d | 2026-05-04 A | 2026-06-05 A | A40900, A1190 | 100% | 2027-04-11 | 2027-04-15 |  |  | ICKMO1-cost unite [3011.11 $]; Excavator [200 h]; Physical Units [25945 h] | 3,011.11 | 3,011.11 | ZNA | CON |  |
| A40960 |  | Pipe Laying | 8d | 2026-05-04 A | 2026-06-05 A | A40950 | 100% | 2027-04-15 | 2027-04-25 |  |  | ICKMO1-cost unite [2007.41 $]; boom truck [200 h]; labor [1200 h]; Sewage Network Circular pipes (GRP) [63.28]; Physical Units [17296.7 h] | 2,007.41 | 2,007.41 | ZNA | CON | LAY |
| A40970 |  | Install Manhole | 4d | 2026-05-04 A | 2026-06-05 A | A40950 | 100% | 2027-04-15 | 2027-04-20 |  |  | ICKMO1-cost unite [9033.33 $]; boom truck [200 h]; labor [1200 h]; Physical Units [77834.9 h] | 9,033.33 | 9,033.33 | ZNA | CON | MH |
| A40990 |  | Backfilling & Compaction | 4d | 2026-05-04 A | 2026-06-05 A | A40980, A40970, A40940 | 100% | 2027-04-27 | 2027-05-02 |  |  | ICKMO1-cost unite [4014.81 $]; Roller compactor [200 h]; Physical Units [34593.3 h] | 4,014.81 | 4,014.81 | ZNA | CON |  |
| A40980 |  | Testing & Inspection | 2d | 2026-10-21 | 2026-10-24 | A40960 |  |  |  | 58.86d | 0d | ICKMO1-cost unite [2007.41 $]; labor [1200 h]; Physical Units [17296.7 h] | 2,007.41 |  | ZNA | CON |  |

| ID | WBS | Activity | Duration | Start | Finish | Predecessors | Complete | Planned start | Planned finish | Total float | Free float | Resources | Cost | Actual cost | ALKHARJ INDUSTERIAL AREA - PROJECT ZONES | ALKHARJ INDUSTERIAL AREA - DECEPLINS | ALKHARJ INDUSTERIAL AREA - Wet networks |
| --- | --- | --- | --- | --- | --- | --- | --- | --- | --- | --- | --- | --- | --- | --- | --- | --- | --- |
|  | MH-2.19.4 / MH-2.19.5 | **MH-2.19.4 / MH-2.19.5** |  | 2026-05-04 | 2026-10-24 |  |  |  |  |  |  |  |  |  |  |  |  |
| A41000 |  | Excavation | 4d | 2026-05-04 A | 2026-06-05 A | A40950, A1190 | 100% | 2027-04-15 | 2027-04-20 |  |  | ICKMO1-cost unite [3011.11 $]; Excavator [200 h]; Physical Units [25945 h] | 3,011.11 | 3,011.11 | ZNA | CON |  |
| A41010 |  | Pipe Laying | 8d | 2026-05-04 A | 2026-06-05 A | A41000 | 100% | 2027-04-20 | 2027-04-29 |  |  | ICKMO1-cost unite [2007.41 $]; boom truck [200 h]; labor [1200 h]; Sewage Network Circular pipes (GRP) [63.28]; Physical Units [17296.7 h] | 2,007.41 | 2,007.41 | ZNA | CON | LAY |
| A41020 |  | Install Manhole | 4d | 2026-05-04 A | 2026-06-05 A | A41000 | 100% | 2027-04-20 | 2027-04-25 |  |  | ICKMO1-cost unite [9033.33 $]; boom truck [200 h]; labor [1200 h]; Physical Units [77834.9 h] | 9,033.33 | 9,033.33 | ZNA | CON | MH |
| A41040 |  | Backfilling & Compaction | 4d | 2026-05-04 A | 2026-06-05 A | A41030, A41020, A40990 | 100% | 2027-05-02 | 2027-05-06 |  |  | ICKMO1-cost unite [4014.81 $]; Roller compactor [200 h]; Physical Units [34593.3 h] | 4,014.81 | 4,014.81 | ZNA | CON |  |
| A41030 |  | Testing & Inspection | 2d | 2026-10-21 | 2026-10-24 | A41010 |  |  |  | 58.86d | 0d | ICKMO1-cost unite [2007.41 $]; labor [1200 h]; Physical Units [17296.7 h] | 2,007.41 |  | ZNA | CON |  |
|  | MH-2.19.4.0 / MH-2.19.4.1 | **MH-2.19.4.0 / MH-2.19.4.1** |  | 2026-05-04 | 2026-10-28 |  |  |  |  |  |  |  |  |  |  |  |  |
| A41050 |  | Excavation | 4d | 2026-05-04 A | 2026-06-05 A | A41000, A1190 | 100% | 2027-04-20 | 2027-04-25 |  |  | ICKMO1-cost unite [3011.11 $]; Excavator [200 h]; Physical Units [25945 h] | 3,011.11 | 3,011.11 | ZNA | CON |  |
| A41060 |  | Pipe Laying | 8d | 2026-08-21 A | 2026-10-01 A | A41050 | 100% | 2027-04-25 | 2027-05-04 |  |  | ICKMO1-cost unite [2007.41 $]; boom truck [200 h]; labor [1200 h]; Sewage Network Circular pipes (GRP) [63.28]; Physical Units [17296.7 h] | 2,007.41 | 2,007.41 | ZNA | CON | LAY |
| A41070 |  | Install Manhole | 4d | 2026-08-21 A | 2026-10-01 A | A41050 | 100% | 2026-10-14 | 2026-10-19 |  |  | ICKMO1-cost unite [9033.33 $]; boom truck [200 h]; labor [1200 h]; Physical Units [77834.9 h] | 9,033.33 | 9,033.33 | ZNA | CON | MH |
| A41080 |  | Testing & Inspection | 2d | 2026-10-21 | 2026-10-24 | A41060 |  |  |  | 58.86d | 0d | ICKMO1-cost unite [2007.41 $]; labor [1200 h]; Physical Units [17296.7 h] | 2,007.41 |  | ZNA | CON |  |
| A41090 |  | Backfilling & Compaction | 4d | 2026-10-24 | 2026-10-28 | A41080, A41070, A41040 |  |  |  | 58.86d | 0d | ICKMO1-cost unite [4014.81 $]; Roller compactor [200 h]; Physical Units [34593.3 h] | 4,014.81 |  | ZNA | CON |  |
|  | MH-2.19.5 / MH-2.19.6 | **MH-2.19.5 / MH-2.19.6** |  | 2026-05-04 | 2026-11-02 |  |  |  |  |  |  |  |  |  |  |  |  |
| A41100 |  | Excavation | 4d | 2026-05-04 A | 2026-06-05 A | A41050, A1190 | 100% | 2027-04-25 | 2027-04-29 |  |  | ICKMO1-cost unite [3011.11 $]; Excavator [200 h]; Physical Units [25945 h] | 3,011.11 | 3,011.11 | ZNA | CON |  |
| A41110 |  | Pipe Laying | 8d | 2026-08-21 A | 2026-10-01 A | A41100 | 100% | 2027-04-29 | 2027-05-09 |  |  | ICKMO1-cost unite [2007.41 $]; boom truck [200 h]; labor [1200 h]; Sewage Network Circular pipes (GRP) [63.28]; Physical Units [17296.7 h] | 2,007.41 | 2,007.41 | ZNA | CON | LAY |
| A41120 |  | Install Manhole | 4d | 2026-08-21 A | 2026-10-01 A | A41100 | 100% | 2026-10-14 | 2026-10-19 |  |  | ICKMO1-cost unite [9033.33 $]; boom truck [200 h]; labor [1200 h]; Physical Units [77834.9 h] | 9,033.33 | 9,033.33 | ZNA | CON | MH |
| A41130 |  | Testing & Inspection | 2d | 2026-10-21 | 2026-10-24 | A41110 |  |  |  | 62.86d | 4d | ICKMO1-cost unite [2007.41 $]; labor [1200 h]; Physical Units [17296.7 h] | 2,007.41 |  | ZNA | CON |  |
| A41140 |  | Backfilling & Compaction | 4d | 2026-10-28 | 2026-11-02 | A41130, A41120, A41090 |  |  |  | 58.86d | 0d | ICKMO1-cost unite [4014.81 $]; Roller compactor [200 h]; Physical Units [34593.3 h] | 4,014.81 |  | ZNA | CON |  |
|  | MH-2.19.5.0 / MH-2.19.5.1 | **MH-2.19.5.0 / MH-2.19.5.1** |  | 2026-05-04 | 2026-11-07 |  |  |  |  |  |  |  |  |  |  |  |  |
| A41150 |  | Excavation | 4d | 2026-05-04 A | 2026-06-05 A | A41100, A1190 | 100% | 2027-04-29 | 2027-05-04 |  |  | ICKMO1-cost unite [3011.11 $]; Excavator [200 h]; Physical Units [25945 h] | 3,011.11 | 3,011.11 | ZNA | CON |  |
| A41160 |  | Pipe Laying | 8d | 2026-08-21 A | 2026-10-01 A | A41150 | 100% | 2027-05-04 | 2027-05-13 |  |  | ICKMO1-cost unite [2007.41 $]; boom truck [200 h]; labor [1200 h]; Sewage Network Circular pipes (GRP) [63.28]; Physical Units [17296.7 h] | 2,007.41 | 2,007.41 | ZNA | CON | LAY |
| A41170 |  | Install Manhole | 4d | 2026-08-21 A | 2026-10-01 A | A41150 | 100% | 2026-10-14 | 2026-10-19 |  |  | ICKMO1-cost unite [9033.33 $]; boom truck [200 h]; labor [1200 h]; Physical Units [77834.9 h] | 9,033.33 | 9,033.33 | ZNA | CON | MH |
| A41180 |  | Testing & Inspection | 2d | 2026-10-21 | 2026-10-24 | A41160 |  |  |  | 66.86d | 8d | ICKMO1-cost unite [2007.41 $]; labor [1200 h]; Physical Units [17296.7 h] | 2,007.41 |  | ZNA | CON |  |
| A41190 |  | Backfilling & Compaction | 4d | 2026-11-02 | 2026-11-07 | A41180, A41170, A41140 |  |  |  | 58.86d | 0d | ICKMO1-cost unite [4014.81 $]; Roller compactor [200 h]; Physical Units [34593.3 h] | 4,014.81 |  | ZNA | CON |  |

| ID | WBS | Activity | Duration | Start | Finish | Predecessors | Complete | Planned start | Planned finish | Total float | Free float | Resources | Cost | Actual cost | ALKHARJ INDUSTERIAL AREA - PROJECT ZONES | ALKHARJ INDUSTERIAL AREA - DECEPLINS | ALKHARJ INDUSTERIAL AREA - Wet networks |
| --- | --- | --- | --- | --- | --- | --- | --- | --- | --- | --- | --- | --- | --- | --- | --- | --- | --- |
|  | MH-2.19.6 / MH-2.19.7 | **MH-2.19.6 / MH-2.19.7** |  | 2026-05-04 | 2026-11-11 |  |  |  |  |  |  |  |  |  |  |  |  |
| A41200 |  | Excavation | 4d | 2026-05-04 A | 2026-06-05 A | A41150, A1190 | 100% | 2027-05-04 | 2027-05-09 |  |  | ICKMO1-cost unite [3011.11 $]; Excavator [200 h]; Physical Units [25945 h] | 3,011.11 | 3,011.11 | ZNA | CON |  |
| A41210 |  | Pipe Laying | 8d | 2026-08-21 A | 2026-10-01 A | A41200 | 100% | 2027-05-09 | 2027-05-18 |  |  | ICKMO1-cost unite [2007.41 $]; boom truck [200 h]; labor [1200 h]; Sewage Network Circular pipes (GRP) [63.28]; Physical Units [17296.7 h] | 2,007.41 | 2,007.41 | ZNA | CON | LAY |
| A41220 |  | Install Manhole | 4d | 2026-08-21 A | 2026-10-01 A | A41200 | 100% | 2026-10-14 | 2026-10-19 |  |  | ICKMO1-cost unite [9033.33 $]; boom truck [200 h]; labor [1200 h]; Physical Units [77834.9 h] | 9,033.33 | 9,033.33 | ZNA | CON | MH |
| A41230 |  | Testing & Inspection | 2d | 2026-10-21 | 2026-10-24 | A41210 |  |  |  | 70.86d | 12d | ICKMO1-cost unite [2007.41 $]; labor [1200 h]; Physical Units [17296.7 h] | 2,007.41 |  | ZNA | CON |  |
| A41240 |  | Backfilling & Compaction | 4d | 2026-11-07 | 2026-11-11 | A41230, A41220, A41190 |  |  |  | 58.86d | 0d | ICKMO1-cost unite [4014.81 $]; Roller compactor [200 h]; Physical Units [34593.3 h] | 4,014.81 |  | ZNA | CON |  |
|  | MH-2.19.6.0 / MH-2.19.6.1 | **MH-2.19.6.0 / MH-2.19.6.1** |  | 2026-05-04 | 2026-11-16 |  |  |  |  |  |  |  |  |  |  |  |  |
| A41250 |  | Excavation | 4d | 2026-05-04 A | 2026-06-05 A | A41200, A1190 | 100% | 2027-05-09 | 2027-05-13 |  |  | ICKMO1-cost unite [3011.11 $]; Excavator [200 h]; Physical Units [25945 h] | 3,011.11 | 3,011.11 | ZNA | CON |  |
| A41260 |  | Pipe Laying | 8d | 2026-08-21 A | 2026-10-01 A | A41250 | 100% | 2027-05-13 | 2027-05-23 |  |  | ICKMO1-cost unite [2007.41 $]; boom truck [200 h]; labor [1200 h]; Sewage Network Circular pipes (GRP) [63.28]; Physical Units [17296.7 h] | 2,007.41 | 2,007.41 | ZNA | CON | LAY |
| A41270 |  | Install Manhole | 4d | 2026-08-21 A | 2026-10-01 A | A41250 | 100% | 2026-10-14 | 2026-10-19 |  |  | ICKMO1-cost unite [9033.33 $]; boom truck [200 h]; labor [1200 h]; Physical Units [77834.9 h] | 9,033.33 | 9,033.33 | ZNA | CON | MH |
| A41280 |  | Testing & Inspection | 2d | 2026-10-21 | 2026-10-24 | A41260 |  |  |  | 74.86d | 16d | ICKMO1-cost unite [2007.41 $]; labor [1200 h]; Physical Units [17296.7 h] | 2,007.41 |  | ZNA | CON |  |
| A41290 |  | Backfilling & Compaction | 4d | 2026-11-11 | 2026-11-16 | A41280, A41270, A41240 |  |  |  | 58.86d | 0d | ICKMO1-cost unite [4014.81 $]; Roller compactor [200 h]; Physical Units [34593.3 h] | 4,014.81 |  | ZNA | CON |  |
|  | MH-2.19.7 / MH-2.19.8 | **MH-2.19.7 / MH-2.19.8** |  | 2026-05-04 | 2026-11-21 |  |  |  |  |  |  |  |  |  |  |  |  |
| A41300 |  | Excavation | 4d | 2026-05-04 A | 2026-06-05 A | A41250, A1190 | 100% | 2027-05-13 | 2027-05-18 |  |  | ICKMO1-cost unite [3011.11 $]; Excavator [200 h]; Physical Units [25945 h] | 3,011.11 | 3,011.11 | ZNA | CON |  |
| A41310 |  | Pipe Laying | 8d | 2026-08-21 A | 2026-10-01 A | A41300 | 100% | 2027-05-18 | 2027-05-27 |  |  | ICKMO1-cost unite [2007.41 $]; boom truck [200 h]; labor [1200 h]; Sewage Network Circular pipes (GRP) [63.28]; Physical Units [17296.7 h] | 2,007.41 | 2,007.41 | ZNA | CON | LAY |
| A41320 |  | Install Manhole | 4d | 2026-08-21 A | 2026-10-01 A | A41300 | 100% | 2026-10-14 | 2026-10-19 |  |  | ICKMO1-cost unite [9033.33 $]; boom truck [200 h]; labor [1200 h]; Physical Units [77834.9 h] | 9,033.33 | 9,033.33 | ZNA | CON | MH |
| A41330 |  | Testing & Inspection | 2d | 2026-10-21 | 2026-10-24 | A41310 |  |  |  | 78.86d | 20d | ICKMO1-cost unite [2007.41 $]; labor [1200 h]; Physical Units [17296.7 h] | 2,007.41 |  | ZNA | CON |  |
| A41340 |  | Backfilling & Compaction | 4d | 2026-11-16 | 2026-11-21 | A41330, A41320, A41290 |  |  |  | 58.86d | 79.82d | ICKMO1-cost unite [4014.81 $]; Roller compactor [200 h]; Physical Units [34593.3 h] | 4,014.81 |  | ZNA | CON |  |
|  | LR 03 | **LR 03** |  | 2026-05-04 | 2026-07-05 |  |  |  |  |  |  |  |  |  |  |  |  |
|  | MH-1.10.10 / MH-1.10.11 | **MH-1.10.10 / MH-1.10.11** |  | 2026-05-04 | 2026-06-05 |  |  |  |  |  |  |  |  |  |  |  |  |
| A41350 |  | Excavation | 1d | 2026-05-04 A | 2026-06-05 A | A72970, A1190 | 100% | 2027-05-30 | 2027-05-31 |  |  | ICKMO1-cost unite [2959.15 $]; Excavator [200 h]; Physical Units [25497.3 h] | 2,959.15 | 2,959.15 | ZNA | CON |  |
| A41360 |  | Pipe Laying | 1d | 2026-05-04 A | 2026-06-05 A | A41350 | 100% | 2027-02-21 | 2027-02-22 |  |  | ICKMO1-cost unite [1972.77 $]; boom truck [200 h]; labor [1200 h]; Sewage Network Circular pipes (GRP) [63.28]; Physical Units [16998.2 h] | 1,972.77 | 1,972.77 | ZNA | CON | LAY |
| A41370 |  | Install Manhole | 1d | 2026-05-04 A | 2026-06-05 A | A41350 | 100% | 2027-02-21 | 2027-02-22 |  |  | ICKMO1-cost unite [8877.47 $]; boom truck [200 h]; labor [1200 h]; Physical Units [76492 h] | 8,877.47 | 8,877.47 | ZNA | CON | MH |
| A41380 |  | Testing & Inspection | 1d | 2026-05-04 A | 2026-06-05 A | A41360 | 100% | 2027-02-22 | 2027-02-23 |  |  | ICKMO1-cost unite [1972.77 $]; labor [1200 h]; Physical Units [16998.2 h] | 1,972.77 | 1,972.77 | ZNA | CON |  |
| A41390 |  | Backfilling & Compaction | 1d | 2026-05-04 A | 2026-06-05 A | A41380, A41370 | 100% | 2027-02-23 | 2027-02-24 |  |  | ICKMO1-cost unite [3945.54 $]; Roller compactor [200 h]; Physical Units [33996.4 h] | 3,945.54 | 3,945.54 | ZNA | CON |  |

| ID | WBS | Activity | Duration | Start | Finish | Predecessors | Complete | Planned start | Planned finish | Resources | Cost | Actual cost | ALKHARJ INDUSTERIAL AREA - PROJECT ZONES | ALKHARJ INDUSTERIAL AREA - DECEPLINS | ALKHARJ INDUSTERIAL AREA - Wet networks |
| --- | --- | --- | --- | --- | --- | --- | --- | --- | --- | --- | --- | --- | --- | --- | --- |
|  | MH-1.10.11 / MH-1.10.12 | **MH-1.10.11 / MH-1.10.12** |  | 2026-05-04 | 2026-06-05 |  |  |  |  |  |  |  |  |  |  |
| A41400 |  | Excavation | 1d | 2026-05-04 A | 2026-06-05 A | A41350, A1190 | 100% | 2027-05-31 | 2027-06-01 | ICKMO1-cost unite [2959.15 $]; Excavator [200 h]; Physical Units [25497.3 h] | 2,959.15 | 2,959.15 | ZNA | CON |  |
| A41410 |  | Pipe Laying | 1d | 2026-05-04 A | 2026-06-05 A | A41400 | 100% | 2027-02-21 | 2027-02-22 | ICKMO1-cost unite [1972.77 $]; boom truck [200 h]; labor [1200 h]; Sewage Network Circular pipes (GRP) [63.28]; Physical Units [16998.2 h] | 1,972.77 | 1,972.77 | ZNA | CON | LAY |
| A41420 |  | Install Manhole | 1d | 2026-05-04 A | 2026-06-05 A | A41400 | 100% | 2027-02-21 | 2027-02-22 | ICKMO1-cost unite [8877.47 $]; boom truck [200 h]; labor [1200 h]; Physical Units [76492 h] | 8,877.47 | 8,877.47 | ZNA | CON | MH |
| A41430 |  | Testing & Inspection | 1d | 2026-05-04 A | 2026-06-05 A | A41410 | 100% | 2027-02-22 | 2027-02-23 | ICKMO1-cost unite [1972.77 $]; labor [1200 h]; Physical Units [16998.2 h] | 1,972.77 | 1,972.77 | ZNA | CON |  |
| A41440 |  | Backfilling & Compaction | 1d | 2026-05-04 A | 2026-06-05 A | A41430, A41420, A41390 | 100% | 2027-02-24 | 2027-02-25 | ICKMO1-cost unite [3945.54 $]; Roller compactor [200 h]; Physical Units [33996.4 h] | 3,945.54 | 3,945.54 | ZNA | CON |  |
|  | MH-1.10.11.0 / MH-1.10.11.1 | **MH-1.10.11.0 / MH-1.10.11.1** |  | 2026-05-04 | 2026-06-05 |  |  |  |  |  |  |  |  |  |  |
| A41450 |  | Excavation | 1d | 2026-05-04 A | 2026-06-05 A | A41400, A1190 | 100% | 2027-06-01 | 2027-06-02 | ICKMO1-cost unite [2959.15 $]; Excavator [200 h]; Physical Units [25497.3 h] | 2,959.15 | 2,959.15 | ZNA | CON |  |
| A41460 |  | Pipe Laying | 1d | 2026-05-04 A | 2026-06-05 A | A41450 | 100% | 2027-06-02 | 2027-06-03 | ICKMO1-cost unite [1972.77 $]; boom truck [200 h]; labor [1200 h]; Sewage Network Circular pipes (GRP) [63.28]; Physical Units [16998.2 h] | 1,972.77 | 1,972.77 | ZNA | CON | LAY |
| A41470 |  | Install Manhole | 1d | 2026-05-04 A | 2026-06-05 A | A41450 | 100% | 2027-06-02 | 2027-06-03 | ICKMO1-cost unite [8877.47 $]; boom truck [200 h]; labor [1200 h]; Physical Units [76492 h] | 8,877.47 | 8,877.47 | ZNA | CON | MH |
| A41480 |  | Testing & Inspection | 1d | 2026-05-04 A | 2026-06-05 A | A41460 | 100% | 2027-02-21 | 2027-02-22 | ICKMO1-cost unite [1972.77 $]; labor [1200 h]; Physical Units [16998.2 h] | 1,972.77 | 1,972.77 | ZNA | CON |  |
| A41490 |  | Backfilling & Compaction | 1d | 2026-05-04 A | 2026-06-05 A | A41480, A41470, A41440 | 100% | 2027-06-05 | 2027-06-06 | ICKMO1-cost unite [3945.54 $]; Roller compactor [200 h]; Physical Units [33996.4 h] | 3,945.54 | 3,945.54 | ZNA | CON |  |
|  | MH-1.10.12 / MH-1.10.13 | **MH-1.10.12 / MH-1.10.13** |  | 2026-05-04 | 2026-06-05 |  |  |  |  |  |  |  |  |  |  |
| A41500 |  | Excavation | 1d | 2026-05-04 A | 2026-06-05 A | A41450, A1190 | 100% | 2027-02-21 | 2027-02-22 | ICKMO1-cost unite [2959.15 $]; Excavator [200 h]; Physical Units [25497.3 h] | 2,959.15 | 2,959.15 | ZNA | CON |  |
| A41510 |  | Pipe Laying | 1d | 2026-05-04 A | 2026-06-05 A | A41500 | 100% | 2027-02-22 | 2027-02-23 | ICKMO1-cost unite [1972.77 $]; boom truck [200 h]; labor [1200 h]; Sewage Network Circular pipes (GRP) [63.28]; Physical Units [16998.2 h] | 1,972.77 | 1,972.77 | ZNA | CON | LAY |
| A41520 |  | Install Manhole | 1d | 2026-05-04 A | 2026-06-05 A | A41500 | 100% | 2027-02-22 | 2027-02-23 | ICKMO1-cost unite [8877.47 $]; boom truck [200 h]; labor [1200 h]; Physical Units [76492 h] | 8,877.47 | 8,877.47 | ZNA | CON | MH |
| A41530 |  | Testing & Inspection | 1d | 2026-05-04 A | 2026-06-05 A | A41510 | 100% | 2027-02-23 | 2027-02-24 | ICKMO1-cost unite [1972.77 $]; labor [1200 h]; Physical Units [16998.2 h] | 1,972.77 | 1,972.77 | ZNA | CON |  |
| A41540 |  | Backfilling & Compaction | 1d | 2026-05-04 A | 2026-06-05 A | A41530, A41520, A41490 | 100% | 2027-02-25 | 2027-02-27 | ICKMO1-cost unite [3945.54 $]; Roller compactor [200 h]; Physical Units [33996.4 h] | 3,945.54 | 3,945.54 | ZNA | CON |  |
|  | MH-1.10.9 / MH-1.10.10 | **MH-1.10.9 / MH-1.10.10** |  | 2026-05-04 | 2026-06-05 |  |  |  |  |  |  |  |  |  |  |
| A41550 |  | Excavation | 1d | 2026-05-04 A | 2026-06-05 A | A41500, A1190 | 100% | 2027-06-03 | 2027-06-05 | ICKMO1-cost unite [2959.15 $]; Excavator [200 h]; Physical Units [25497.3 h] | 2,959.15 | 2,959.15 | ZNA | CON |  |
| A41560 |  | Pipe Laying | 1d | 2026-05-04 A | 2026-06-05 A | A41550 | 100% | 2027-06-05 | 2027-06-06 | ICKMO1-cost unite [1972.77 $]; boom truck [200 h]; labor [1200 h]; Sewage Network Circular pipes (GRP) [63.28]; Physical Units [16998.2 h] | 1,972.77 | 1,972.77 | ZNA | CON | LAY |
| A41570 |  | Install Manhole | 1d | 2026-05-04 A | 2026-06-05 A | A41550 | 100% | 2027-06-05 | 2027-06-06 | ICKMO1-cost unite [8877.47 $]; boom truck [200 h]; labor [1200 h]; Physical Units [76492 h] | 8,877.47 | 8,877.47 | ZNA | CON | MH |
| A41580 |  | Testing & Inspection | 1d | 2026-05-04 A | 2026-06-05 A | A41560 | 100% | 2027-02-22 | 2027-02-23 | ICKMO1-cost unite [1972.77 $]; labor [1200 h]; Physical Units [16998.2 h] | 1,972.77 | 1,972.77 | ZNA | CON |  |
| A41590 |  | Backfilling & Compaction | 1d | 2026-05-04 A | 2026-06-05 A | A41580, A41570, A41540 | 100% | 2027-06-07 | 2027-06-08 | ICKMO1-cost unite [3945.54 $]; Roller compactor [200 h]; Physical Units [33996.4 h] | 3,945.54 | 3,945.54 | ZNA | CON |  |

| ID | WBS | Activity | Duration | Start | Finish | Predecessors | Complete | Planned start | Planned finish | Resources | Cost | Actual cost | ALKHARJ INDUSTERIAL AREA - PROJECT ZONES | ALKHARJ INDUSTERIAL AREA - DECEPLINS | ALKHARJ INDUSTERIAL AREA - Wet networks |
| --- | --- | --- | --- | --- | --- | --- | --- | --- | --- | --- | --- | --- | --- | --- | --- |
|  | MH-1.22 / MH-1.22.1 | **MH-1.22 / MH-1.22.1** |  | 2026-05-04 | 2026-06-05 |  |  |  |  |  |  |  |  |  |  |
| A41600 |  | Excavation | 1d | 2026-05-04 A | 2026-06-05 A | A41550, A1190 | 100% | 2027-06-05 | 2027-06-06 | ICKMO1-cost unite [2959.15 $]; Excavator [200 h]; Physical Units [25497.3 h] | 2,959.15 | 2,959.15 | ZNA | CON |  |
| A41610 |  | Pipe Laying | 1d | 2026-05-04 A | 2026-06-05 A | A41600 | 100% | 2027-02-22 | 2027-02-23 | ICKMO1-cost unite [1972.77 $]; boom truck [200 h]; labor [1200 h]; Sewage Network Circular pipes (GRP) [63.28]; Physical Units [16998.2 h] | 1,972.77 | 1,972.77 | ZNA | CON | LAY |
| A41620 |  | Install Manhole | 1d | 2026-05-04 A | 2026-06-05 A | A41600 | 100% | 2027-02-22 | 2027-02-23 | ICKMO1-cost unite [8877.47 $]; boom truck [200 h]; labor [1200 h]; Physical Units [76492 h] | 8,877.47 | 8,877.47 | ZNA | CON | MH |
| A41630 |  | Testing & Inspection | 1d | 2026-05-04 A | 2026-06-05 A | A41610 | 100% | 2027-02-23 | 2027-02-24 | ICKMO1-cost unite [1972.77 $]; labor [1200 h]; Physical Units [16998.2 h] | 1,972.77 | 1,972.77 | ZNA | CON |  |
| A41640 |  | Backfilling & Compaction | 1d | 2026-05-04 A | 2026-06-05 A | A41630, A41620, A41590 | 100% | 2027-02-27 | 2027-02-28 | ICKMO1-cost unite [3945.54 $]; Roller compactor [200 h]; Physical Units [33996.4 h] | 3,945.54 | 3,945.54 | ZNA | CON |  |
|  | MH-1.22 / MH-1.23 | **MH-1.22 / MH-1.23** |  | 2026-05-04 | 2026-06-05 |  |  |  |  |  |  |  |  |  |  |
| A41650 |  | Excavation | 1d | 2026-05-04 A | 2026-06-05 A | A41600, A1190 | 100% | 2027-06-06 | 2027-06-07 | ICKMO1-cost unite [2959.15 $]; Excavator [200 h]; Physical Units [25497.3 h] | 2,959.15 | 2,959.15 | ZNA | CON |  |
| A41660 |  | Pipe Laying | 1d | 2026-05-04 A | 2026-06-05 A | A41650 | 100% | 2027-02-22 | 2027-02-23 | ICKMO1-cost unite [1972.77 $]; boom truck [200 h]; labor [1200 h]; Sewage Network Circular pipes (GRP) [63.28]; Physical Units [16998.2 h] | 1,972.77 | 1,972.77 | ZNA | CON | LAY |
| A41670 |  | Install Manhole | 1d | 2026-05-04 A | 2026-06-05 A | A41650 | 100% | 2027-02-22 | 2027-02-23 | ICKMO1-cost unite [8877.47 $]; boom truck [200 h]; labor [1200 h]; Physical Units [76492 h] | 8,877.47 | 8,877.47 | ZNA | CON | MH |
| A41680 |  | Testing & Inspection | 1d | 2026-05-04 A | 2026-06-05 A | A41660 | 100% | 2027-02-23 | 2027-02-24 | ICKMO1-cost unite [1972.77 $]; labor [1200 h]; Physical Units [16998.2 h] | 1,972.77 | 1,972.77 | ZNA | CON |  |
| A41690 |  | Backfilling & Compaction | 1d | 2026-05-04 A | 2026-06-05 A | A41680, A41670, A41640 | 100% | 2027-02-28 | 2027-03-01 | ICKMO1-cost unite [3945.54 $]; Roller compactor [200 h]; Physical Units [33996.4 h] | 3,945.54 | 3,945.54 | ZNA | CON |  |
|  | MH-1.23 / MH-1.24 | **MH-1.23 / MH-1.24** |  | 2026-05-04 | 2026-06-05 |  |  |  |  |  |  |  |  |  |  |
| A41700 |  | Excavation | 1d | 2026-05-04 A | 2026-06-05 A | A41650, A1190 | 100% | 2027-06-07 | 2027-06-08 | ICKMO1-cost unite [2959.15 $]; Excavator [200 h]; Physical Units [25497.3 h] | 2,959.15 | 2,959.15 | ZNA | CON |  |
| A41710 |  | Pipe Laying | 1d | 2026-05-04 A | 2026-06-05 A | A41700 | 100% | 2027-06-08 | 2027-06-09 | ICKMO1-cost unite [1972.77 $]; boom truck [200 h]; labor [1200 h]; Sewage Network Circular pipes (GRP) [63.28]; Physical Units [16998.2 h] | 1,972.77 | 1,972.77 | ZNA | CON | LAY |
| A41720 |  | Install Manhole | 1d | 2026-05-04 A | 2026-06-05 A | A41700 | 100% | 2027-06-08 | 2027-06-09 | ICKMO1-cost unite [8877.47 $]; boom truck [200 h]; labor [1200 h]; Physical Units [76492 h] | 8,877.47 | 8,877.47 | ZNA | CON | MH |
| A41730 |  | Testing & Inspection | 1d | 2026-05-04 A | 2026-06-05 A | A41710 | 100% | 2027-02-22 | 2027-02-23 | ICKMO1-cost unite [1972.77 $]; labor [1200 h]; Physical Units [16998.2 h] | 1,972.77 | 1,972.77 | ZNA | CON |  |
| A41740 |  | Backfilling & Compaction | 1d | 2026-05-04 A | 2026-06-05 A | A41730, A41720, A41690 | 100% | 2027-06-10 | 2027-06-12 | ICKMO1-cost unite [3945.54 $]; Roller compactor [200 h]; Physical Units [33996.4 h] | 3,945.54 | 3,945.54 | ZNA | CON |  |
|  | MH-2.21.10 / MH-2.21.11 | **MH-2.21.10 / MH-2.21.11** |  | 2026-05-04 | 2026-06-05 |  |  |  |  |  |  |  |  |  |  |
| A41750 |  | Excavation | 1d | 2026-05-04 A | 2026-06-05 A | A41700, A1190 | 100% | 2027-06-08 | 2027-06-09 | ICKMO1-cost unite [2959.15 $]; Excavator [200 h]; Physical Units [25497.3 h] | 2,959.15 | 2,959.15 | ZNA | CON |  |
| A41760 |  | Pipe Laying | 1d | 2026-05-04 A | 2026-06-05 A | A41750 | 100% | 2027-06-09 | 2027-06-10 | ICKMO1-cost unite [1972.77 $]; boom truck [200 h]; labor [1200 h]; Sewage Network Circular pipes (GRP) [63.28]; Physical Units [16998.2 h] | 1,972.77 | 1,972.77 | ZNA | CON | LAY |
| A41770 |  | Install Manhole | 1d | 2026-05-04 A | 2026-06-05 A | A41750 | 100% | 2027-06-09 | 2027-06-10 | ICKMO1-cost unite [8877.47 $]; boom truck [200 h]; labor [1200 h]; Physical Units [76492 h] | 8,877.47 | 8,877.47 | ZNA | CON | MH |
| A41780 |  | Testing & Inspection | 1d | 2026-05-04 A | 2026-06-05 A | A41760 | 100% | 2027-02-22 | 2027-02-23 | ICKMO1-cost unite [1972.77 $]; labor [1200 h]; Physical Units [16998.2 h] | 1,972.77 | 1,972.77 | ZNA | CON |  |
| A41790 |  | Backfilling & Compaction | 1d | 2026-05-04 A | 2026-06-05 A | A41780, A41770, A41740 | 100% | 2027-06-12 | 2027-06-13 | ICKMO1-cost unite [3945.54 $]; Roller compactor [200 h]; Physical Units [33996.4 h] | 3,945.54 | 3,945.54 | ZNA | CON |  |

| ID | WBS | Activity | Duration | Start | Finish | Predecessors | Complete | Planned start | Planned finish | Resources | Cost | Actual cost | ALKHARJ INDUSTERIAL AREA - PROJECT ZONES | ALKHARJ INDUSTERIAL AREA - DECEPLINS | ALKHARJ INDUSTERIAL AREA - Wet networks |
| --- | --- | --- | --- | --- | --- | --- | --- | --- | --- | --- | --- | --- | --- | --- | --- |
|  | MH-2.21.8 / MH-2.21.9 | **MH-2.21.8 / MH-2.21.9** |  | 2026-05-04 | 2026-06-05 |  |  |  |  |  |  |  |  |  |  |
| A41800 |  | Excavation | 1d | 2026-05-04 A | 2026-06-05 A | A41750, A1190 | 100% | 2027-06-09 | 2027-06-10 | ICKMO1-cost unite [2959.15 $]; Excavator [200 h]; Physical Units [25497.3 h] | 2,959.15 | 2,959.15 | ZNA | CON |  |
| A41810 |  | Pipe Laying | 1d | 2026-05-04 A | 2026-06-05 A | A41800 | 100% | 2027-06-10 | 2027-06-12 | ICKMO1-cost unite [1972.77 $]; boom truck [200 h]; labor [1200 h]; Sewage Network Circular pipes (GRP) [63.28]; Physical Units [16998.2 h] | 1,972.77 | 1,972.77 | ZNA | CON | LAY |
| A41820 |  | Install Manhole | 1d | 2026-05-04 A | 2026-06-05 A | A41800 | 100% | 2027-06-10 | 2027-06-12 | ICKMO1-cost unite [8877.47 $]; boom truck [200 h]; labor [1200 h]; Physical Units [76492 h] | 8,877.47 | 8,877.47 | ZNA | CON | MH |
| A41830 |  | Testing & Inspection | 1d | 2026-05-04 A | 2026-06-05 A | A41810 | 100% | 2027-02-22 | 2027-02-23 | ICKMO1-cost unite [1972.77 $]; labor [1200 h]; Physical Units [16998.2 h] | 1,972.77 | 1,972.77 | ZNA | CON |  |
| A41840 |  | Backfilling & Compaction | 1d | 2026-05-04 A | 2026-06-05 A | A41830, A41820, A41790 | 100% | 2027-06-13 | 2027-06-14 | ICKMO1-cost unite [3945.54 $]; Roller compactor [200 h]; Physical Units [33996.4 h] | 3,945.54 | 3,945.54 | ZNA | CON |  |
|  | MH-2.21.8.0 / MH-2.21.8.1 | **MH-2.21.8.0 / MH-2.21.8.1** |  | 2026-05-04 | 2026-06-05 |  |  |  |  |  |  |  |  |  |  |
| A41850 |  | Excavation | 1d | 2026-05-04 A | 2026-06-05 A | A41800, A1190 | 100% | 2027-06-10 | 2027-06-12 | ICKMO1-cost unite [2959.15 $]; Excavator [200 h]; Physical Units [25497.3 h] | 2,959.15 | 2,959.15 | ZNA | CON |  |
| A41860 |  | Pipe Laying | 1d | 2026-05-04 A | 2026-06-05 A | A41850 | 100% | 2027-06-12 | 2027-06-13 | ICKMO1-cost unite [1972.77 $]; boom truck [200 h]; labor [1200 h]; Sewage Network Circular pipes (GRP) [63.28]; Physical Units [16998.2 h] | 1,972.77 | 1,972.77 | ZNA | CON | LAY |
| A41870 |  | Install Manhole | 1d | 2026-05-04 A | 2026-06-05 A | A41850 | 100% | 2027-06-12 | 2027-06-13 | ICKMO1-cost unite [8877.47 $]; boom truck [200 h]; labor [1200 h]; Physical Units [76492 h] | 8,877.47 | 8,877.47 | ZNA | CON | MH |
| A41880 |  | Testing & Inspection | 1d | 2026-05-04 A | 2026-06-05 A | A41860 | 100% | 2027-02-22 | 2027-02-23 | ICKMO1-cost unite [1972.77 $]; labor [1200 h]; Physical Units [16998.2 h] | 1,972.77 | 1,972.77 | ZNA | CON |  |
| A41890 |  | Backfilling & Compaction | 1d | 2026-05-04 A | 2026-06-05 A | A41880, A41870, A41840 | 100% | 2027-06-14 | 2027-06-15 | ICKMO1-cost unite [3945.54 $]; Roller compactor [200 h]; Physical Units [33996.4 h] | 3,945.54 | 3,945.54 | ZNA | CON |  |
|  | MH-2.21.9 / MH-2.21.10 | **MH-2.21.9 / MH-2.21.10** |  | 2026-05-04 | 2026-06-05 |  |  |  |  |  |  |  |  |  |  |
| A41900 |  | Excavation | 1d | 2026-05-04 A | 2026-06-05 A | A41850, A1190 | 100% | 2027-06-12 | 2027-06-13 | ICKMO1-cost unite [2959.15 $]; Excavator [200 h]; Physical Units [25497.3 h] | 2,959.15 | 2,959.15 | ZNA | CON |  |
| A41910 |  | Pipe Laying | 1d | 2026-05-04 A | 2026-06-05 A | A41900 | 100% | 2027-06-13 | 2027-06-14 | ICKMO1-cost unite [1972.77 $]; boom truck [200 h]; labor [1200 h]; Sewage Network Circular pipes (GRP) [63.28]; Physical Units [16998.2 h] | 1,972.77 | 1,972.77 | ZNA | CON | LAY |
| A41920 |  | Install Manhole | 1d | 2026-05-04 A | 2026-06-05 A | A41900 | 100% | 2027-06-13 | 2027-06-14 | ICKMO1-cost unite [8877.47 $]; boom truck [200 h]; labor [1200 h]; Physical Units [76492 h] | 8,877.47 | 8,877.47 | ZNA | CON | MH |
| A41930 |  | Testing & Inspection | 1d | 2026-05-04 A | 2026-06-05 A | A41910 | 100% | 2027-06-14 | 2027-06-15 | ICKMO1-cost unite [1972.77 $]; labor [1200 h]; Physical Units [16998.2 h] | 1,972.77 | 1,972.77 | ZNA | CON |  |
| A41940 |  | Backfilling & Compaction | 1d | 2026-05-04 A | 2026-06-05 A | A41930, A41920, A41890 | 100% | 2027-06-15 | 2027-06-16 | ICKMO1-cost unite [3945.54 $]; Roller compactor [200 h]; Physical Units [33996.4 h] | 3,945.54 | 3,945.54 | ZNA | CON |  |
|  | MH-2.21.9.0 / MH-2.21.9.1 | **MH-2.21.9.0 / MH-2.21.9.1** |  | 2026-05-04 | 2026-06-05 |  |  |  |  |  |  |  |  |  |  |
| A41950 |  | Excavation | 1d | 2026-05-04 A | 2026-06-05 A | A41900, A1190 | 100% | 2027-06-13 | 2027-06-14 | ICKMO1-cost unite [2959.15 $]; Excavator [200 h]; Physical Units [25497.3 h] | 2,959.15 | 2,959.15 | ZNA | CON |  |
| A41960 |  | Pipe Laying | 1d | 2026-05-04 A | 2026-06-05 A | A41950 | 100% | 2027-06-14 | 2027-06-15 | ICKMO1-cost unite [1972.77 $]; boom truck [200 h]; labor [1200 h]; Sewage Network Circular pipes (GRP) [63.28]; Physical Units [16998.2 h] | 1,972.77 | 1,972.77 | ZNA | CON | LAY |
| A41970 |  | Install Manhole | 1d | 2026-05-04 A | 2026-06-05 A | A41950 | 100% | 2027-06-14 | 2027-06-15 | ICKMO1-cost unite [8877.47 $]; boom truck [200 h]; labor [1200 h]; Physical Units [76492 h] | 8,877.47 | 8,877.47 | ZNA | CON | MH |
| A41980 |  | Testing & Inspection | 1d | 2026-05-04 A | 2026-06-05 A | A41960 | 100% | 2027-06-15 | 2027-06-16 | ICKMO1-cost unite [1972.77 $]; labor [1200 h]; Physical Units [16998.2 h] | 1,972.77 | 1,972.77 | ZNA | CON |  |
| A41990 |  | Backfilling & Compaction | 1d | 2026-05-04 A | 2026-06-05 A | A41980, A41970, A41940 | 100% | 2027-06-16 | 2027-06-17 | ICKMO1-cost unite [3945.54 $]; Roller compactor [200 h]; Physical Units [33996.4 h] | 3,945.54 | 3,945.54 | ZNA | CON |  |

| ID | WBS | Activity | Duration | Start | Finish | Predecessors | Complete | Planned start | Planned finish | Resources | Cost | Actual cost | ALKHARJ INDUSTERIAL AREA - PROJECT ZONES | ALKHARJ INDUSTERIAL AREA - DECEPLINS | ALKHARJ INDUSTERIAL AREA - Wet networks |
| --- | --- | --- | --- | --- | --- | --- | --- | --- | --- | --- | --- | --- | --- | --- | --- |
|  | MH-2.26 / MH-2.27 | **MH-2.26 / MH-2.27** |  | 2026-05-04 | 2026-06-05 |  |  |  |  |  |  |  |  |  |  |
| A42000 |  | Excavation | 1d | 2026-05-04 A | 2026-06-05 A | A41950, A1190 | 100% | 2027-06-14 | 2027-06-15 | ICKMO1-cost unite [2959.15 $]; Excavator [200 h]; Physical Units [25497.3 h] | 2,959.15 | 2,959.15 | ZNA | CON |  |
| A42010 |  | Pipe Laying | 1d | 2026-05-04 A | 2026-06-05 A | A42000 | 100% | 2027-02-22 | 2027-02-23 | ICKMO1-cost unite [1972.77 $]; boom truck [200 h]; labor [1200 h]; Sewage Network Circular pipes (GRP) [63.28]; Physical Units [16998.2 h] | 1,972.77 | 1,972.77 | ZNA | CON | LAY |
| A42020 |  | Install Manhole | 1d | 2026-05-04 A | 2026-06-05 A | A42000 | 100% | 2027-02-22 | 2027-02-23 | ICKMO1-cost unite [8877.47 $]; boom truck [200 h]; labor [1200 h]; Physical Units [76492 h] | 8,877.47 | 8,877.47 | ZNA | CON | MH |
| A42030 |  | Testing & Inspection | 1d | 2026-05-04 A | 2026-06-05 A | A42010 | 100% | 2027-02-23 | 2027-02-24 | ICKMO1-cost unite [1972.77 $]; labor [1200 h]; Physical Units [16998.2 h] | 1,972.77 | 1,972.77 | ZNA | CON |  |
| A42040 |  | Backfilling & Compaction | 1d | 2026-05-04 A | 2026-06-05 A | A42030, A42020, A41990 | 100% | 2027-03-01 | 2027-03-02 | ICKMO1-cost unite [3945.54 $]; Roller compactor [200 h]; Physical Units [33996.4 h] | 3,945.54 | 3,945.54 | ZNA | CON |  |
|  | MH-2.26.0 / MH-2.26.1 | **MH-2.26.0 / MH-2.26.1** |  | 2026-05-04 | 2026-06-05 |  |  |  |  |  |  |  |  |  |  |
| A42050 |  | Excavation | 1d | 2026-05-04 A | 2026-06-05 A | A42000, A1190 | 100% | 2027-02-22 | 2027-02-23 | ICKMO1-cost unite [2959.15 $]; Excavator [200 h]; Physical Units [25497.3 h] | 2,959.15 | 2,959.15 | ZNA | CON |  |
| A42060 |  | Pipe Laying | 1d | 2026-05-04 A | 2026-06-05 A | A42050 | 100% | 2027-02-23 | 2027-02-24 | ICKMO1-cost unite [1972.77 $]; boom truck [200 h]; labor [1200 h]; Sewage Network Circular pipes (GRP) [63.28]; Physical Units [16998.2 h] | 1,972.77 | 1,972.77 | ZNA | CON | LAY |
| A42070 |  | Install Manhole | 1d | 2026-05-04 A | 2026-06-05 A | A42050 | 100% | 2027-02-23 | 2027-02-24 | ICKMO1-cost unite [8877.47 $]; boom truck [200 h]; labor [1200 h]; Physical Units [76492 h] | 8,877.47 | 8,877.47 | ZNA | CON | MH |
| A42080 |  | Testing & Inspection | 1d | 2026-05-04 A | 2026-06-05 A | A42060 | 100% | 2027-02-24 | 2027-02-25 | ICKMO1-cost unite [1972.77 $]; labor [1200 h]; Physical Units [16998.2 h] | 1,972.77 | 1,972.77 | ZNA | CON |  |
| A42090 |  | Backfilling & Compaction | 1d | 2026-05-04 A | 2026-06-05 A | A42080, A42070, A42040 | 100% | 2027-03-02 | 2027-03-03 | ICKMO1-cost unite [3945.54 $]; Roller compactor [200 h]; Physical Units [33996.4 h] | 3,945.54 | 3,945.54 | ZNA | CON |  |
|  | MH-2.26.0 / MH-2.26.1A | **MH-2.26.0 / MH-2.26.1A** |  | 2026-05-04 | 2026-06-05 |  |  |  |  |  |  |  |  |  |  |
| A42100 |  | Excavation | 1d | 2026-05-04 A | 2026-06-05 A | A42050, A1190 | 100% | 2027-02-23 | 2027-02-24 | ICKMO1-cost unite [2959.15 $]; Excavator [200 h]; Physical Units [25497.3 h] | 2,959.15 | 2,959.15 | ZNA | CON |  |
| A42110 |  | Pipe Laying | 1d | 2026-05-04 A | 2026-06-05 A | A42100 | 100% | 2027-02-24 | 2027-02-25 | ICKMO1-cost unite [1972.77 $]; boom truck [200 h]; labor [1200 h]; Sewage Network Circular pipes (GRP) [63.28]; Physical Units [16998.2 h] | 1,972.77 | 1,972.77 | ZNA | CON | LAY |
| A42120 |  | Install Manhole | 1d | 2026-05-04 A | 2026-06-05 A | A42100 | 100% | 2027-02-24 | 2027-02-25 | ICKMO1-cost unite [8877.47 $]; boom truck [200 h]; labor [1200 h]; Physical Units [76492 h] | 8,877.47 | 8,877.47 | ZNA | CON | MH |
| A42130 |  | Testing & Inspection | 1d | 2026-05-04 A | 2026-06-05 A | A42110 | 100% | 2027-02-25 | 2027-02-27 | ICKMO1-cost unite [1972.77 $]; labor [1200 h]; Physical Units [16998.2 h] | 1,972.77 | 1,972.77 | ZNA | CON |  |
| A42140 |  | Backfilling & Compaction | 1d | 2026-05-04 A | 2026-06-05 A | A42130, A42120, A42090 | 100% | 2027-03-03 | 2027-03-04 | ICKMO1-cost unite [3945.54 $]; Roller compactor [200 h]; Physical Units [33996.4 h] | 3,945.54 | 3,945.54 | ZNA | CON |  |
|  | MH-2.26.1 / MH-2.26.2 | **MH-2.26.1 / MH-2.26.2** |  | 2026-05-04 | 2026-06-05 |  |  |  |  |  |  |  |  |  |  |
| A42150 |  | Excavation | 1d | 2026-05-04 A | 2026-06-05 A | A42100, A1190 | 100% | 2027-02-24 | 2027-02-25 | ICKMO1-cost unite [2959.15 $]; Excavator [200 h]; Physical Units [25497.3 h] | 2,959.15 | 2,959.15 | ZNA | CON |  |
| A42160 |  | Pipe Laying | 1d | 2026-05-04 A | 2026-06-05 A | A42150 | 100% | 2027-02-25 | 2027-02-27 | ICKMO1-cost unite [1972.77 $]; boom truck [200 h]; labor [1200 h]; Sewage Network Circular pipes (GRP) [63.28]; Physical Units [16998.2 h] | 1,972.77 | 1,972.77 | ZNA | CON | LAY |
| A42170 |  | Install Manhole | 1d | 2026-05-04 A | 2026-06-05 A | A42150 | 100% | 2027-02-25 | 2027-02-27 | ICKMO1-cost unite [8877.47 $]; boom truck [200 h]; labor [1200 h]; Physical Units [76492 h] | 8,877.47 | 8,877.47 | ZNA | CON | MH |
| A42180 |  | Testing & Inspection | 1d | 2026-05-04 A | 2026-06-05 A | A42160 | 100% | 2027-02-27 | 2027-02-28 | ICKMO1-cost unite [1972.77 $]; labor [1200 h]; Physical Units [16998.2 h] | 1,972.77 | 1,972.77 | ZNA | CON |  |
| A42190 |  | Backfilling & Compaction | 1d | 2026-05-04 A | 2026-06-05 A | A42180, A42170, A42140 | 100% | 2027-03-04 | 2027-03-06 | ICKMO1-cost unite [3945.54 $]; Roller compactor [200 h]; Physical Units [33996.4 h] | 3,945.54 | 3,945.54 | ZNA | CON |  |

| ID | WBS | Activity | Duration | Start | Finish | Predecessors | Complete | Planned start | Planned finish | Resources | Cost | Actual cost | ALKHARJ INDUSTERIAL AREA - PROJECT ZONES | ALKHARJ INDUSTERIAL AREA - DECEPLINS | ALKHARJ INDUSTERIAL AREA - Wet networks |
| --- | --- | --- | --- | --- | --- | --- | --- | --- | --- | --- | --- | --- | --- | --- | --- |
|  | MH-2.27 / MH-2.28 | **MH-2.27 / MH-2.28** |  | 2026-05-04 | 2026-06-05 |  |  |  |  |  |  |  |  |  |  |
| A42200 |  | Excavation | 1d | 2026-05-04 A | 2026-06-05 A | A42150, A1190 | 100% | 2027-02-25 | 2027-02-27 | ICKMO1-cost unite [2959.15 $]; Excavator [200 h]; Physical Units [25497.3 h] | 2,959.15 | 2,959.15 | ZNA | CON |  |
| A42210 |  | Pipe Laying | 1d | 2026-05-04 A | 2026-06-05 A | A42200 | 100% | 2027-02-27 | 2027-02-28 | ICKMO1-cost unite [1972.77 $]; boom truck [200 h]; labor [1200 h]; Sewage Network Circular pipes (GRP) [63.28]; Physical Units [16998.2 h] | 1,972.77 | 1,972.77 | ZNA | CON | LAY |
| A42220 |  | Install Manhole | 1d | 2026-05-04 A | 2026-06-05 A | A42200 | 100% | 2027-02-27 | 2027-02-28 | ICKMO1-cost unite [8877.47 $]; boom truck [200 h]; labor [1200 h]; Physical Units [76492 h] | 8,877.47 | 8,877.47 | ZNA | CON | MH |
| A42230 |  | Testing & Inspection | 1d | 2026-05-04 A | 2026-06-05 A | A42210 | 100% | 2027-02-28 | 2027-03-01 | ICKMO1-cost unite [1972.77 $]; labor [1200 h]; Physical Units [16998.2 h] | 1,972.77 | 1,972.77 | ZNA | CON |  |
| A42240 |  | Backfilling & Compaction | 1d | 2026-05-04 A | 2026-06-05 A | A42230, A42220, A42190 | 100% | 2027-03-06 | 2027-03-07 | ICKMO1-cost unite [3945.54 $]; Roller compactor [200 h]; Physical Units [33996.4 h] | 3,945.54 | 3,945.54 | ZNA | CON |  |
|  | MH-2.27.0 / MH-2.27.1 | **MH-2.27.0 / MH-2.27.1** |  | 2026-05-04 | 2026-06-05 |  |  |  |  |  |  |  |  |  |  |
| A42250 |  | Excavation | 1d | 2026-05-04 A | 2026-06-05 A | A42200, A1190 | 100% | 2027-02-27 | 2027-02-28 | ICKMO1-cost unite [2959.15 $]; Excavator [200 h]; Physical Units [25497.3 h] | 2,959.15 | 2,959.15 | ZNA | CON |  |
| A42260 |  | Pipe Laying | 1d | 2026-05-04 A | 2026-06-05 A | A42250 | 100% | 2027-02-28 | 2027-03-01 | ICKMO1-cost unite [1972.77 $]; boom truck [200 h]; labor [1200 h]; Sewage Network Circular pipes (GRP) [63.28]; Physical Units [16998.2 h] | 1,972.77 | 1,972.77 | ZNA | CON | LAY |
| A42270 |  | Install Manhole | 1d | 2026-05-04 A | 2026-06-05 A | A42250 | 100% | 2027-02-28 | 2027-03-01 | ICKMO1-cost unite [8877.47 $]; boom truck [200 h]; labor [1200 h]; Physical Units [76492 h] | 8,877.47 | 8,877.47 | ZNA | CON | MH |
| A42280 |  | Testing & Inspection | 1d | 2026-05-04 A | 2026-06-05 A | A42260 | 100% | 2027-03-01 | 2027-03-02 | ICKMO1-cost unite [1972.77 $]; labor [1200 h]; Physical Units [16998.2 h] | 1,972.77 | 1,972.77 | ZNA | CON |  |
| A42290 |  | Backfilling & Compaction | 1d | 2026-05-04 A | 2026-06-05 A | A42280, A42270, A42240 | 100% | 2027-03-07 | 2027-03-08 | ICKMO1-cost unite [3945.54 $]; Roller compactor [200 h]; Physical Units [33996.4 h] | 3,945.54 | 3,945.54 | ZNA | CON |  |
|  | MH-2.28 / MH-2.29 | **MH-2.28 / MH-2.29** |  | 2026-05-04 | 2026-06-05 |  |  |  |  |  |  |  |  |  |  |
| A42300 |  | Excavation | 1d | 2026-05-04 A | 2026-06-05 A | A42250, A1190 | 100% | 2027-02-28 | 2027-03-01 | ICKMO1-cost unite [2959.15 $]; Excavator [200 h]; Physical Units [25497.3 h] | 2,959.15 | 2,959.15 | ZNA | CON |  |
| A42310 |  | Pipe Laying | 1d | 2026-05-04 A | 2026-06-05 A | A42300 | 100% | 2027-03-01 | 2027-03-02 | ICKMO1-cost unite [1972.77 $]; boom truck [200 h]; labor [1200 h]; Sewage Network Circular pipes (GRP) [63.28]; Physical Units [16998.2 h] | 1,972.77 | 1,972.77 | ZNA | CON | LAY |
| A42320 |  | Install Manhole | 1d | 2026-05-04 A | 2026-06-05 A | A42300 | 100% | 2027-03-01 | 2027-03-02 | ICKMO1-cost unite [8877.47 $]; boom truck [200 h]; labor [1200 h]; Physical Units [76492 h] | 8,877.47 | 8,877.47 | ZNA | CON | MH |
| A42330 |  | Testing & Inspection | 1d | 2026-05-04 A | 2026-06-05 A | A42310 | 100% | 2027-03-02 | 2027-03-03 | ICKMO1-cost unite [1972.77 $]; labor [1200 h]; Physical Units [16998.2 h] | 1,972.77 | 1,972.77 | ZNA | CON |  |
| A42340 |  | Backfilling & Compaction | 1d | 2026-05-04 A | 2026-06-05 A | A42330, A42320, A42290 | 100% | 2027-03-08 | 2027-03-09 | ICKMO1-cost unite [3945.54 $]; Roller compactor [200 h]; Physical Units [33996.4 h] | 3,945.54 | 3,945.54 | ZNA | CON |  |
|  | MH-2.28.0 / MH-2.28.1 | **MH-2.28.0 / MH-2.28.1** |  | 2026-05-04 | 2026-06-05 |  |  |  |  |  |  |  |  |  |  |
| A42350 |  | Excavation | 1d | 2026-05-04 A | 2026-06-05 A | A42300, A1190 | 100% | 2027-03-01 | 2027-03-02 | ICKMO1-cost unite [2959.15 $]; Excavator [200 h]; Physical Units [25497.3 h] | 2,959.15 | 2,959.15 | ZNA | CON |  |
| A42360 |  | Pipe Laying | 1d | 2026-05-04 A | 2026-06-05 A | A42350 | 100% | 2027-03-02 | 2027-03-03 | ICKMO1-cost unite [1972.77 $]; boom truck [200 h]; labor [1200 h]; Sewage Network Circular pipes (GRP) [63.28]; Physical Units [16998.2 h] | 1,972.77 | 1,972.77 | ZNA | CON | LAY |
| A42370 |  | Install Manhole | 1d | 2026-05-04 A | 2026-06-05 A | A42350 | 100% | 2027-03-02 | 2027-03-03 | ICKMO1-cost unite [8877.47 $]; boom truck [200 h]; labor [1200 h]; Physical Units [76492 h] | 8,877.47 | 8,877.47 | ZNA | CON | MH |
| A42380 |  | Testing & Inspection | 1d | 2026-05-04 A | 2026-06-05 A | A42360 | 100% | 2027-03-03 | 2027-03-04 | ICKMO1-cost unite [1972.77 $]; labor [1200 h]; Physical Units [16998.2 h] | 1,972.77 | 1,972.77 | ZNA | CON |  |
| A42390 |  | Backfilling & Compaction | 1d | 2026-05-04 A | 2026-06-05 A | A42380, A42370, A42340 | 100% | 2027-03-09 | 2027-03-10 | ICKMO1-cost unite [3945.54 $]; Roller compactor [200 h]; Physical Units [33996.4 h] | 3,945.54 | 3,945.54 | ZNA | CON |  |

| ID | WBS | Activity | Duration | Start | Finish | Predecessors | Complete | Planned start | Planned finish | Resources | Cost | Actual cost | ALKHARJ INDUSTERIAL AREA - PROJECT ZONES | ALKHARJ INDUSTERIAL AREA - DECEPLINS | ALKHARJ INDUSTERIAL AREA - Wet networks |
| --- | --- | --- | --- | --- | --- | --- | --- | --- | --- | --- | --- | --- | --- | --- | --- |
|  | MH-2.29 / MH-2.30 | **MH-2.29 / MH-2.30** |  | 2026-05-04 | 2026-06-05 |  |  |  |  |  |  |  |  |  |  |
| A42400 |  | Excavation | 1d | 2026-05-04 A | 2026-06-05 A | A42350, A1190 | 100% | 2027-06-23 | 2027-06-24 | ICKMO1-cost unite [2959.15 $]; Excavator [200 h]; Physical Units [25497.3 h] | 2,959.15 | 2,959.15 | ZNA | CON |  |
| A42410 |  | Pipe Laying | 1d | 2026-05-04 A | 2026-06-05 A | A42400 | 100% | 2027-03-02 | 2027-03-03 | ICKMO1-cost unite [1972.77 $]; boom truck [200 h]; labor [1200 h]; Sewage Network Circular pipes (GRP) [63.28]; Physical Units [16998.2 h] | 1,972.77 | 1,972.77 | ZNA | CON | LAY |
| A42420 |  | Install Manhole | 1d | 2026-05-04 A | 2026-06-05 A | A42400 | 100% | 2027-03-02 | 2027-03-03 | ICKMO1-cost unite [8877.47 $]; boom truck [200 h]; labor [1200 h]; Physical Units [76492 h] | 8,877.47 | 8,877.47 | ZNA | CON | MH |
| A42430 |  | Testing & Inspection | 1d | 2026-05-04 A | 2026-06-05 A | A42410 | 100% | 2027-03-03 | 2027-03-04 | ICKMO1-cost unite [1972.77 $]; labor [1200 h]; Physical Units [16998.2 h] | 1,972.77 | 1,972.77 | ZNA | CON |  |
| A42440 |  | Backfilling & Compaction | 1d | 2026-05-04 A | 2026-06-05 A | A42430, A42420, A42390 | 100% | 2027-03-10 | 2027-03-11 | ICKMO1-cost unite [3945.54 $]; Roller compactor [200 h]; Physical Units [33996.4 h] | 3,945.54 | 3,945.54 | ZNA | CON |  |
|  | MH-2.29.0 / MH-2.29.1 | **MH-2.29.0 / MH-2.29.1** |  | 2026-05-04 | 2026-06-05 |  |  |  |  |  |  |  |  |  |  |
| A42450 |  | Excavation | 1d | 2026-05-04 A | 2026-06-05 A | A42400, A1190 | 100% | 2027-03-02 | 2027-03-03 | ICKMO1-cost unite [2959.15 $]; Excavator [200 h]; Physical Units [25497.3 h] | 2,959.15 | 2,959.15 | ZNA | CON |  |
| A42460 |  | Pipe Laying | 1d | 2026-05-04 A | 2026-06-05 A | A42450 | 100% | 2027-03-03 | 2027-03-04 | ICKMO1-cost unite [1972.77 $]; boom truck [200 h]; labor [1200 h]; Sewage Network Circular pipes (GRP) [63.28]; Physical Units [16998.2 h] | 1,972.77 | 1,972.77 | ZNA | CON | LAY |
| A42470 |  | Install Manhole | 1d | 2026-05-04 A | 2026-06-05 A | A42450 | 100% | 2027-03-03 | 2027-03-04 | ICKMO1-cost unite [8877.47 $]; boom truck [200 h]; labor [1200 h]; Physical Units [76492 h] | 8,877.47 | 8,877.47 | ZNA | CON | MH |
| A42480 |  | Testing & Inspection | 1d | 2026-05-04 A | 2026-06-05 A | A42460 | 100% | 2027-03-04 | 2027-03-06 | ICKMO1-cost unite [1972.77 $]; labor [1200 h]; Physical Units [16998.2 h] | 1,972.77 | 1,972.77 | ZNA | CON |  |
| A42490 |  | Backfilling & Compaction | 1d | 2026-05-04 A | 2026-06-05 A | A42480, A42470, A42440 | 100% | 2027-03-11 | 2027-03-13 | ICKMO1-cost unite [3945.54 $]; Roller compactor [200 h]; Physical Units [33996.4 h] | 3,945.54 | 3,945.54 | ZNA | CON |  |
|  | MH-2.30 / MH-2.31 | **MH-2.30 / MH-2.31** |  | 2026-05-04 | 2026-06-05 |  |  |  |  |  |  |  |  |  |  |
| A42500 |  | Excavation | 1d | 2026-05-04 A | 2026-06-05 A | A42450, A1190 | 100% | 2027-06-26 | 2027-06-27 | ICKMO1-cost unite [2959.15 $]; Excavator [200 h]; Physical Units [25497.3 h] | 2,959.15 | 2,959.15 | ZNA | CON |  |
| A42510 |  | Pipe Laying | 1d | 2026-05-04 A | 2026-06-05 A | A42500 | 100% | 2027-03-03 | 2027-03-04 | ICKMO1-cost unite [1972.77 $]; boom truck [200 h]; labor [1200 h]; Sewage Network Circular pipes (GRP) [63.28]; Physical Units [16998.2 h] | 1,972.77 | 1,972.77 | ZNA | CON | LAY |
| A42520 |  | Install Manhole | 1d | 2026-05-04 A | 2026-06-05 A | A42500 | 100% | 2027-03-03 | 2027-03-04 | ICKMO1-cost unite [8877.47 $]; boom truck [200 h]; labor [1200 h]; Physical Units [76492 h] | 8,877.47 | 8,877.47 | ZNA | CON | MH |
| A42530 |  | Testing & Inspection | 1d | 2026-05-04 A | 2026-06-05 A | A42510 | 100% | 2027-03-04 | 2027-03-06 | ICKMO1-cost unite [1972.77 $]; labor [1200 h]; Physical Units [16998.2 h] | 1,972.77 | 1,972.77 | ZNA | CON |  |
| A42540 |  | Backfilling & Compaction | 1d | 2026-05-04 A | 2026-06-05 A | A42530, A42520, A42490 | 100% | 2027-03-13 | 2027-03-14 | ICKMO1-cost unite [3945.54 $]; Roller compactor [200 h]; Physical Units [33996.4 h] | 3,945.54 | 3,945.54 | ZNA | CON |  |
|  | MH-2.30.0 / MH-2.30.1 | **MH-2.30.0 / MH-2.30.1** |  | 2026-05-04 | 2026-06-05 |  |  |  |  |  |  |  |  |  |  |
| A42550 |  | Excavation | 1d | 2026-05-04 A | 2026-06-05 A | A42500, A1190 | 100% | 2027-06-27 | 2027-06-28 | ICKMO1-cost unite [2959.15 $]; Excavator [200 h]; Physical Units [25497.3 h] | 2,959.15 | 2,959.15 | ZNA | CON |  |
| A42560 |  | Pipe Laying | 1d | 2026-05-04 A | 2026-06-05 A | A42550 | 100% | 2027-06-28 | 2027-06-29 | ICKMO1-cost unite [1972.77 $]; boom truck [200 h]; labor [1200 h]; Sewage Network Circular pipes (GRP) [63.28]; Physical Units [16998.2 h] | 1,972.77 | 1,972.77 | ZNA | CON | LAY |
| A42570 |  | Install Manhole | 1d | 2026-05-04 A | 2026-06-05 A | A42550 | 100% | 2027-06-28 | 2027-06-29 | ICKMO1-cost unite [8877.47 $]; boom truck [200 h]; labor [1200 h]; Physical Units [76492 h] | 8,877.47 | 8,877.47 | ZNA | CON | MH |
| A42580 |  | Testing & Inspection | 1d | 2026-05-04 A | 2026-06-05 A | A42560 | 100% | 2027-06-29 | 2027-06-30 | ICKMO1-cost unite [1972.77 $]; labor [1200 h]; Physical Units [16998.2 h] | 1,972.77 | 1,972.77 | ZNA | CON |  |
| A42590 |  | Backfilling & Compaction | 1d | 2026-05-04 A | 2026-06-05 A | A42580, A42570, A42540 | 100% | 2027-06-30 | 2027-07-01 | ICKMO1-cost unite [3945.54 $]; Roller compactor [200 h]; Physical Units [33996.4 h] | 3,945.54 | 3,945.54 | ZNA | CON |  |

| ID | WBS | Activity | Duration | Start | Finish | Predecessors | Complete | Planned start | Planned finish | Resources | Cost | Actual cost | ALKHARJ INDUSTERIAL AREA - PROJECT ZONES | ALKHARJ INDUSTERIAL AREA - DECEPLINS | ALKHARJ INDUSTERIAL AREA - Wet networks |
| --- | --- | --- | --- | --- | --- | --- | --- | --- | --- | --- | --- | --- | --- | --- | --- |
|  | MH-2.31 / MH-2.32 | **MH-2.31 / MH-2.32** |  | 2026-05-04 | 2026-06-05 |  |  |  |  |  |  |  |  |  |  |
| A42600 |  | Excavation | 1d | 2026-05-04 A | 2026-06-05 A | A42550, A1190 | 100% | 2027-06-28 | 2027-06-29 | ICKMO1-cost unite [2959.15 $]; Excavator [200 h]; Physical Units [25497.3 h] | 2,959.15 | 2,959.15 | ZNA | CON |  |
| A42610 |  | Pipe Laying | 1d | 2026-05-04 A | 2026-06-05 A | A42600 | 100% | 2027-03-03 | 2027-03-04 | ICKMO1-cost unite [1972.77 $]; boom truck [200 h]; labor [1200 h]; Sewage Network Circular pipes (GRP) [63.28]; Physical Units [16998.2 h] | 1,972.77 | 1,972.77 | ZNA | CON | LAY |
| A42620 |  | Install Manhole | 1d | 2026-05-04 A | 2026-06-05 A | A42600 | 100% | 2027-03-03 | 2027-03-04 | ICKMO1-cost unite [8877.47 $]; boom truck [200 h]; labor [1200 h]; Physical Units [76492 h] | 8,877.47 | 8,877.47 | ZNA | CON | MH |
| A42630 |  | Testing & Inspection | 1d | 2026-05-04 A | 2026-06-05 A | A42610 | 100% | 2027-03-04 | 2027-03-06 | ICKMO1-cost unite [1972.77 $]; labor [1200 h]; Physical Units [16998.2 h] | 1,972.77 | 1,972.77 | ZNA | CON |  |
| A42640 |  | Backfilling & Compaction | 1d | 2026-05-04 A | 2026-06-05 A | A42630, A42620, A42590 | 100% | 2027-03-14 | 2027-03-15 | ICKMO1-cost unite [3945.54 $]; Roller compactor [200 h]; Physical Units [33996.4 h] | 3,945.54 | 3,945.54 | ZNA | CON |  |
|  | MH-2.31.0 / MH-2.31.1 | **MH-2.31.0 / MH-2.31.1** |  | 2026-05-04 | 2026-06-05 |  |  |  |  |  |  |  |  |  |  |
| A42650 |  | Excavation | 1d | 2026-05-04 A | 2026-06-05 A | A42600, A1190 | 100% | 2027-03-03 | 2027-03-04 | ICKMO1-cost unite [2959.15 $]; Excavator [200 h]; Physical Units [25497.3 h] | 2,959.15 | 2,959.15 | ZNA | CON |  |
| A42660 |  | Pipe Laying | 1d | 2026-05-04 A | 2026-06-05 A | A42650 | 100% | 2027-03-04 | 2027-03-06 | ICKMO1-cost unite [1972.77 $]; boom truck [200 h]; labor [1200 h]; Sewage Network Circular pipes (GRP) [63.28]; Physical Units [16998.2 h] | 1,972.77 | 1,972.77 | ZNA | CON | LAY |
| A42670 |  | Install Manhole | 1d | 2026-05-04 A | 2026-06-05 A | A42650 | 100% | 2027-03-04 | 2027-03-06 | ICKMO1-cost unite [8877.47 $]; boom truck [200 h]; labor [1200 h]; Physical Units [76492 h] | 8,877.47 | 8,877.47 | ZNA | CON | MH |
| A42680 |  | Testing & Inspection | 1d | 2026-05-04 A | 2026-06-05 A | A42660 | 100% | 2027-03-06 | 2027-03-07 | ICKMO1-cost unite [1972.77 $]; labor [1200 h]; Physical Units [16998.2 h] | 1,972.77 | 1,972.77 | ZNA | CON |  |
| A42690 |  | Backfilling & Compaction | 1d | 2026-05-04 A | 2026-06-05 A | A42680, A42670, A42640 | 100% | 2027-03-15 | 2027-03-16 | ICKMO1-cost unite [3945.54 $]; Roller compactor [200 h]; Physical Units [33996.4 h] | 3,945.54 | 3,945.54 | ZNA | CON |  |
|  | MH-2.32 / MH-2.33 | **MH-2.32 / MH-2.33** |  | 2026-05-04 | 2026-06-05 |  |  |  |  |  |  |  |  |  |  |
| A42700 |  | Excavation | 1d | 2026-05-04 A | 2026-06-05 A | A42650, A1190 | 100% | 2027-06-30 | 2027-07-01 | ICKMO1-cost unite [2959.15 $]; Excavator [200 h]; Physical Units [25497.3 h] | 2,959.15 | 2,959.15 | ZNA | CON |  |
| A42710 |  | Pipe Laying | 1d | 2026-05-04 A | 2026-06-05 A | A42700 | 100% | 2027-07-01 | 2027-07-03 | ICKMO1-cost unite [1972.77 $]; boom truck [200 h]; labor [1200 h]; Sewage Network Circular pipes (GRP) [63.28]; Physical Units [16998.2 h] | 1,972.77 | 1,972.77 | ZNA | CON | LAY |
| A42720 |  | Install Manhole | 1d | 2026-05-04 A | 2026-06-05 A | A42700 | 100% | 2027-07-01 | 2027-07-03 | ICKMO1-cost unite [8877.47 $]; boom truck [200 h]; labor [1200 h]; Physical Units [76492 h] | 8,877.47 | 8,877.47 | ZNA | CON | MH |
| A42730 |  | Testing & Inspection | 1d | 2026-05-04 A | 2026-06-05 A | A42710 | 100% | 2027-07-03 | 2027-07-04 | ICKMO1-cost unite [1972.77 $]; labor [1200 h]; Physical Units [16998.2 h] | 1,972.77 | 1,972.77 | ZNA | CON |  |
| A42740 |  | Backfilling & Compaction | 1d | 2026-05-04 A | 2026-06-05 A | A42730, A42720, A42690 | 100% | 2027-07-04 | 2027-07-05 | ICKMO1-cost unite [3945.54 $]; Roller compactor [200 h]; Physical Units [33996.4 h] | 3,945.54 | 3,945.54 | ZNA | CON |  |
|  | MH-2.32.0 / MH-2.32.1 | **MH-2.32.0 / MH-2.32.1** |  | 2026-05-04 | 2026-06-05 |  |  |  |  |  |  |  |  |  |  |
| A42750 |  | Excavation | 1d | 2026-05-04 A | 2026-06-05 A | A42700, A1190 | 100% | 2027-03-04 | 2027-03-06 | ICKMO1-cost unite [2959.15 $]; Excavator [200 h]; Physical Units [25497.3 h] | 2,959.15 | 2,959.15 | ZNA | CON |  |
| A42760 |  | Pipe Laying | 1d | 2026-05-04 A | 2026-06-05 A | A42750 | 100% | 2027-03-06 | 2027-03-07 | ICKMO1-cost unite [1972.77 $]; boom truck [200 h]; labor [1200 h]; Sewage Network Circular pipes (GRP) [63.28]; Physical Units [16998.2 h] | 1,972.77 | 1,972.77 | ZNA | CON | LAY |
| A42770 |  | Install Manhole | 1d | 2026-05-04 A | 2026-06-05 A | A42750 | 100% | 2027-03-06 | 2027-03-07 | ICKMO1-cost unite [8877.47 $]; boom truck [200 h]; labor [1200 h]; Physical Units [76492 h] | 8,877.47 | 8,877.47 | ZNA | CON | MH |
| A42780 |  | Testing & Inspection | 1d | 2026-05-04 A | 2026-06-05 A | A42760 | 100% | 2027-03-07 | 2027-03-08 | ICKMO1-cost unite [1972.77 $]; labor [1200 h]; Physical Units [16998.2 h] | 1,972.77 | 1,972.77 | ZNA | CON |  |
| A42790 |  | Backfilling & Compaction | 1d | 2026-05-04 A | 2026-06-05 A | A42780, A42770, A42740 | 100% | 2027-03-16 | 2027-03-17 | ICKMO1-cost unite [3945.54 $]; Roller compactor [200 h]; Physical Units [33996.4 h] | 3,945.54 | 3,945.54 | ZNA | CON |  |

| ID | WBS | Activity | Duration | Start | Finish | Predecessors | Complete | Planned start | Planned finish | Resources | Cost | Actual cost | ALKHARJ INDUSTERIAL AREA - PROJECT ZONES | ALKHARJ INDUSTERIAL AREA - DECEPLINS | ALKHARJ INDUSTERIAL AREA - Wet networks |
| --- | --- | --- | --- | --- | --- | --- | --- | --- | --- | --- | --- | --- | --- | --- | --- |
|  | MH-2.33 / MH-2.34 | **MH-2.33 / MH-2.34** |  | 2026-05-04 | 2026-06-05 |  |  |  |  |  |  |  |  |  |  |
| A42800 |  | Excavation | 1d | 2026-05-04 A | 2026-06-05 A | A42750, A1190 | 100% | 2027-07-03 | 2027-07-04 | ICKMO1-cost unite [2959.15 $]; Excavator [200 h]; Physical Units [25497.3 h] | 2,959.15 | 2,959.15 | ZNA | CON |  |
| A42810 |  | Pipe Laying | 1d | 2026-05-04 A | 2026-06-05 A | A42800 | 100% | 2027-03-06 | 2027-03-07 | ICKMO1-cost unite [1972.77 $]; boom truck [200 h]; labor [1200 h]; Sewage Network Circular pipes (GRP) [63.28]; Physical Units [16998.2 h] | 1,972.77 | 1,972.77 | ZNA | CON | LAY |
| A42820 |  | Install Manhole | 1d | 2026-05-04 A | 2026-06-05 A | A42800 | 100% | 2027-03-06 | 2027-03-07 | ICKMO1-cost unite [8877.47 $]; boom truck [200 h]; labor [1200 h]; Physical Units [76492 h] | 8,877.47 | 8,877.47 | ZNA | CON | MH |
| A42830 |  | Testing & Inspection | 1d | 2026-05-04 A | 2026-06-05 A | A42810 | 100% | 2027-03-07 | 2027-03-08 | ICKMO1-cost unite [1972.77 $]; labor [1200 h]; Physical Units [16998.2 h] | 1,972.77 | 1,972.77 | ZNA | CON |  |
| A42840 |  | Backfilling & Compaction | 1d | 2026-05-04 A | 2026-06-05 A | A42830, A42820, A42790 | 100% | 2027-03-17 | 2027-03-18 | ICKMO1-cost unite [3945.54 $]; Roller compactor [200 h]; Physical Units [33996.4 h] | 3,945.54 | 3,945.54 | ZNA | CON |  |
|  | MH-2.5 / MH-2.6 | **MH-2.5 / MH-2.6** |  | 2026-05-04 | 2026-06-05 |  |  |  |  |  |  |  |  |  |  |
| A42850 |  | Excavation | 1d | 2026-05-04 A | 2026-06-05 A | A42800, A1190 | 100% | 2027-07-04 | 2027-07-05 | ICKMO1-cost unite [2959.15 $]; Excavator [200 h]; Physical Units [25497.3 h] | 2,959.15 | 2,959.15 | ZNA | CON |  |
| A42860 |  | Pipe Laying | 1d | 2026-05-04 A | 2026-06-05 A | A42850 | 100% | 2027-03-06 | 2027-03-07 | ICKMO1-cost unite [1972.77 $]; boom truck [200 h]; labor [1200 h]; Sewage Network Circular pipes (GRP) [63.28]; Physical Units [16998.2 h] | 1,972.77 | 1,972.77 | ZNA | CON | LAY |
| A42870 |  | Install Manhole | 1d | 2026-05-04 A | 2026-06-05 A | A42850 | 100% | 2027-03-06 | 2027-03-07 | ICKMO1-cost unite [8877.47 $]; boom truck [200 h]; labor [1200 h]; Physical Units [76492 h] | 8,877.47 | 8,877.47 | ZNA | CON | MH |
| A42880 |  | Testing & Inspection | 1d | 2026-05-04 A | 2026-06-05 A | A42860 | 100% | 2027-03-07 | 2027-03-08 | ICKMO1-cost unite [1972.77 $]; labor [1200 h]; Physical Units [16998.2 h] | 1,972.77 | 1,972.77 | ZNA | CON |  |
| A42890 |  | Backfilling & Compaction | 1d | 2026-05-04 A | 2026-06-05 A | A42880, A42870, A42840 | 100% | 2027-03-18 | 2027-03-20 | ICKMO1-cost unite [3945.54 $]; Roller compactor [200 h]; Physical Units [33996.4 h] | 3,945.54 | 3,945.54 | ZNA | CON |  |
|  | MH-2.5.0 / MH-2.5.1 | **MH-2.5.0 / MH-2.5.1** |  | 2026-05-04 | 2026-06-05 |  |  |  |  |  |  |  |  |  |  |
| A42900 |  | Excavation | 1d | 2026-05-04 A | 2026-06-05 A | A42850, A1190 | 100% | 2027-07-05 | 2027-07-06 | ICKMO1-cost unite [2959.15 $]; Excavator [200 h]; Physical Units [25497.3 h] | 2,959.15 | 2,959.15 | ZNA | CON |  |
| A42910 |  | Pipe Laying | 1d | 2026-05-04 A | 2026-06-05 A | A42900 | 100% | 2027-07-06 | 2027-07-07 | ICKMO1-cost unite [1972.77 $]; boom truck [200 h]; labor [1200 h]; Sewage Network Circular pipes (GRP) [63.28]; Physical Units [16998.2 h] | 1,972.77 | 1,972.77 | ZNA | CON | LAY |
| A42920 |  | Install Manhole | 1d | 2026-05-04 A | 2026-06-05 A | A42900 | 100% | 2027-03-06 | 2027-03-07 | ICKMO1-cost unite [8877.47 $]; boom truck [200 h]; labor [1200 h]; Physical Units [76492 h] | 8,877.47 | 8,877.47 | ZNA | CON | MH |
| A42930 |  | Testing & Inspection | 1d | 2026-05-04 A | 2026-06-05 A | A42910 | 100% | 2027-03-06 | 2027-03-07 | ICKMO1-cost unite [1972.77 $]; labor [1200 h]; Physical Units [16998.2 h] | 1,972.77 | 1,972.77 | ZNA | CON |  |
| A42940 |  | Backfilling & Compaction | 1d | 2026-05-04 A | 2026-06-05 A | A42930, A42920, A42890 | 100% | 2027-03-20 | 2027-03-21 | ICKMO1-cost unite [3945.54 $]; Roller compactor [200 h]; Physical Units [33996.4 h] | 3,945.54 | 3,945.54 | ZNA | CON |  |
|  | MH-2.5.1 / MH-2.5.2 | **MH-2.5.1 / MH-2.5.2** |  | 2026-05-04 | 2026-06-05 |  |  |  |  |  |  |  |  |  |  |
| A42950 |  | Excavation | 1d | 2026-05-04 A | 2026-06-05 A | A42900, A1190 | 100% | 2027-07-06 | 2027-07-07 | ICKMO1-cost unite [2959.15 $]; Excavator [200 h]; Physical Units [25497.3 h] | 2,959.15 | 2,959.15 | ZNA | CON |  |
| A42960 |  | Pipe Laying | 1d | 2026-05-04 A | 2026-06-05 A | A42950 | 100% | 2027-07-07 | 2027-07-08 | ICKMO1-cost unite [1972.77 $]; boom truck [200 h]; labor [1200 h]; Sewage Network Circular pipes (GRP) [63.28]; Physical Units [16998.2 h] | 1,972.77 | 1,972.77 | ZNA | CON | LAY |
| A42970 |  | Install Manhole | 1d | 2026-05-04 A | 2026-06-05 A | A42950 | 100% | 2027-03-06 | 2027-03-07 | ICKMO1-cost unite [8877.47 $]; boom truck [200 h]; labor [1200 h]; Physical Units [76492 h] | 8,877.47 | 8,877.47 | ZNA | CON | MH |
| A42980 |  | Testing & Inspection | 1d | 2026-05-04 A | 2026-06-05 A | A42960 | 100% | 2027-03-06 | 2027-03-07 | ICKMO1-cost unite [1972.77 $]; labor [1200 h]; Physical Units [16998.2 h] | 1,972.77 | 1,972.77 | ZNA | CON |  |
| A42990 |  | Backfilling & Compaction | 1d | 2026-05-04 A | 2026-06-05 A | A42980, A42970, A42940 | 100% | 2027-03-21 | 2027-03-22 | ICKMO1-cost unite [3945.54 $]; Roller compactor [200 h]; Physical Units [33996.4 h] | 3,945.54 | 3,945.54 | ZNA | CON |  |

| ID | WBS | Activity | Duration | Start | Finish | Predecessors | Complete | Planned start | Planned finish | Resources | Cost | Actual cost | ALKHARJ INDUSTERIAL AREA - PROJECT ZONES | ALKHARJ INDUSTERIAL AREA - DECEPLINS | ALKHARJ INDUSTERIAL AREA - Wet networks |
| --- | --- | --- | --- | --- | --- | --- | --- | --- | --- | --- | --- | --- | --- | --- | --- |
|  | MH-2.6 / MH-2.7 | **MH-2.6 / MH-2.7** |  | 2026-05-04 | 2026-06-05 |  |  |  |  |  |  |  |  |  |  |
| A43000 |  | Excavation | 1d | 2026-05-04 A | 2026-06-05 A | A42950, A1190 | 100% | 2027-07-07 | 2027-07-08 | ICKMO1-cost unite [2959.15 $]; Excavator [200 h]; Physical Units [25497.3 h] | 2,959.15 | 2,959.15 | ZNA | CON |  |
| A43010 |  | Pipe Laying | 1d | 2026-05-04 A | 2026-06-05 A | A43000 | 100% | 2027-03-06 | 2027-03-07 | ICKMO1-cost unite [1972.77 $]; boom truck [200 h]; labor [1200 h]; Sewage Network Circular pipes (GRP) [63.28]; Physical Units [16998.2 h] | 1,972.77 | 1,972.77 | ZNA | CON | LAY |
| A43020 |  | Install Manhole | 1d | 2026-05-04 A | 2026-06-05 A | A43000 | 100% | 2027-03-06 | 2027-03-07 | ICKMO1-cost unite [8877.47 $]; boom truck [200 h]; labor [1200 h]; Physical Units [76492 h] | 8,877.47 | 8,877.47 | ZNA | CON | MH |
| A43030 |  | Testing & Inspection | 1d | 2026-05-04 A | 2026-06-05 A | A43010 | 100% | 2027-03-07 | 2027-03-08 | ICKMO1-cost unite [1972.77 $]; labor [1200 h]; Physical Units [16998.2 h] | 1,972.77 | 1,972.77 | ZNA | CON |  |
| A43040 |  | Backfilling & Compaction | 1d | 2026-05-04 A | 2026-06-05 A | A43030, A43020, A42990 | 100% | 2027-03-22 | 2027-03-23 | ICKMO1-cost unite [3945.54 $]; Roller compactor [200 h]; Physical Units [33996.4 h] | 3,945.54 | 3,945.54 | ZNA | CON |  |
|  | MH-2.6.1 / MH-2.6.1A | **MH-2.6.1 / MH-2.6.1A** |  | 2026-05-04 | 2026-06-05 |  |  |  |  |  |  |  |  |  |  |
| A43050 |  | Excavation | 1d | 2026-05-04 A | 2026-06-05 A | A43000, A1190 | 100% | 2027-07-08 | 2027-07-10 | ICKMO1-cost unite [2959.15 $]; Excavator [200 h]; Physical Units [25497.3 h] | 2,959.15 | 2,959.15 | ZNA | CON |  |
| A43060 |  | Pipe Laying | 1d | 2026-05-04 A | 2026-06-05 A | A43050 | 100% | 2027-03-06 | 2027-03-07 | ICKMO1-cost unite [1972.77 $]; boom truck [200 h]; labor [1200 h]; Sewage Network Circular pipes (GRP) [63.28]; Physical Units [16998.2 h] | 1,972.77 | 1,972.77 | ZNA | CON | LAY |
| A43070 |  | Install Manhole | 1d | 2026-05-04 A | 2026-06-05 A | A43050 | 100% | 2027-03-06 | 2027-03-07 | ICKMO1-cost unite [8877.47 $]; boom truck [200 h]; labor [1200 h]; Physical Units [76492 h] | 8,877.47 | 8,877.47 | ZNA | CON | MH |
| A43080 |  | Testing & Inspection | 1d | 2026-05-04 A | 2026-06-05 A | A43060 | 100% | 2027-03-07 | 2027-03-08 | ICKMO1-cost unite [1972.77 $]; labor [1200 h]; Physical Units [16998.2 h] | 1,972.77 | 1,972.77 | ZNA | CON |  |
| A43090 |  | Backfilling & Compaction | 1d | 2026-05-04 A | 2026-06-05 A | A43080, A43070, A43040 | 100% | 2027-03-23 | 2027-03-24 | ICKMO1-cost unite [3945.54 $]; Roller compactor [200 h]; Physical Units [33996.4 h] | 3,945.54 | 3,945.54 | ZNA | CON |  |
|  | MH-2.7.0 / MH-2.7.1 | **MH-2.7.0 / MH-2.7.1** |  | 2026-05-04 | 2026-06-05 |  |  |  |  |  |  |  |  |  |  |
| A43100 |  | Excavation | 1d | 2026-05-04 A | 2026-06-05 A | A43050, A1190 | 100% | 2027-07-10 | 2027-07-11 | ICKMO1-cost unite [2959.15 $]; Excavator [200 h]; Physical Units [25497.3 h] | 2,959.15 | 2,959.15 | ZNA | CON |  |
| A43110 |  | Pipe Laying | 1d | 2026-05-04 A | 2026-06-05 A | A43100 | 100% | 2027-03-06 | 2027-03-07 | ICKMO1-cost unite [1972.77 $]; boom truck [200 h]; labor [1200 h]; Sewage Network Circular pipes (GRP) [63.28]; Physical Units [16998.2 h] | 1,972.77 | 1,972.77 | ZNA | CON | LAY |
| A43120 |  | Install Manhole | 1d | 2026-05-04 A | 2026-06-05 A | A43100 | 100% | 2027-03-06 | 2027-03-07 | ICKMO1-cost unite [8877.47 $]; boom truck [200 h]; labor [1200 h]; Physical Units [76492 h] | 8,877.47 | 8,877.47 | ZNA | CON | MH |
| A43130 |  | Testing & Inspection | 1d | 2026-05-04 A | 2026-06-05 A | A43110 | 100% | 2027-03-07 | 2027-03-08 | ICKMO1-cost unite [1972.77 $]; labor [1200 h]; Physical Units [16998.2 h] | 1,972.77 | 1,972.77 | ZNA | CON |  |
| A43140 |  | Backfilling & Compaction | 1d | 2026-05-04 A | 2026-06-05 A | A43130, A43120, A43090 | 100% | 2027-03-24 | 2027-03-25 | ICKMO1-cost unite [3945.54 $]; Roller compactor [200 h]; Physical Units [33996.4 h] | 3,945.54 | 3,945.54 | ZNA | CON |  |
|  | MH-2.8 / MH-2.9 | **MH-2.8 / MH-2.9** |  | 2026-05-04 | 2026-06-05 |  |  |  |  |  |  |  |  |  |  |
| A43150 |  | Excavation | 1d | 2026-05-04 A | 2026-06-05 A | A43100, A1190 | 100% | 2027-07-11 | 2027-07-12 | ICKMO1-cost unite [2959.15 $]; Excavator [200 h]; Physical Units [25497.3 h] | 2,959.15 | 2,959.15 | ZNA | CON |  |
| A43160 |  | Pipe Laying | 1d | 2026-05-04 A | 2026-06-05 A | A43150 | 100% | 2027-07-12 | 2027-07-13 | ICKMO1-cost unite [1972.77 $]; boom truck [200 h]; labor [1200 h]; Sewage Network Circular pipes (GRP) [63.28]; Physical Units [16998.2 h] | 1,972.77 | 1,972.77 | ZNA | CON | LAY |
| A43170 |  | Install Manhole | 1d | 2026-05-04 A | 2026-06-05 A | A43150 | 100% | 2027-07-12 | 2027-07-13 | ICKMO1-cost unite [8877.47 $]; boom truck [200 h]; labor [1200 h]; Physical Units [76492 h] | 8,877.47 | 8,877.47 | ZNA | CON | MH |
| A43180 |  | Testing & Inspection | 1d | 2026-05-04 A | 2026-06-05 A | A43160 | 100% | 2027-07-13 | 2027-07-14 | ICKMO1-cost unite [1972.77 $]; labor [1200 h]; Physical Units [16998.2 h] | 1,972.77 | 1,972.77 | ZNA | CON |  |
| A43190 |  | Backfilling & Compaction | 1d | 2026-05-04 A | 2026-06-05 A | A43180, A43170, A43140 | 100% | 2027-07-14 | 2027-07-15 | ICKMO1-cost unite [3945.54 $]; Roller compactor [200 h]; Physical Units [33996.4 h] | 3,945.54 | 3,945.54 | ZNA | CON |  |

| ID | WBS | Activity | Duration | Start | Finish | Predecessors | Complete | Planned start | Planned finish | Resources | Cost | Actual cost | ALKHARJ INDUSTERIAL AREA - PROJECT ZONES | ALKHARJ INDUSTERIAL AREA - DECEPLINS | ALKHARJ INDUSTERIAL AREA - Wet networks |
| --- | --- | --- | --- | --- | --- | --- | --- | --- | --- | --- | --- | --- | --- | --- | --- |
|  | MH-2.8.1 / MH-2.8.1A | **MH-2.8.1 / MH-2.8.1A** |  | 2026-05-04 | 2026-06-05 |  |  |  |  |  |  |  |  |  |  |
| A43200 |  | Excavation | 1d | 2026-05-04 A | 2026-06-05 A | A43150, A1190 | 100% | 2027-07-12 | 2027-07-13 | ICKMO1-cost unite [2959.15 $]; Excavator [200 h]; Physical Units [25497.3 h] | 2,959.15 | 2,959.15 | ZNA | CON |  |
| A43210 |  | Pipe Laying | 1d | 2026-05-04 A | 2026-06-05 A | A43200 | 100% | 2027-07-13 | 2027-07-14 | ICKMO1-cost unite [1972.77 $]; boom truck [200 h]; labor [1200 h]; Sewage Network Circular pipes (GRP) [63.28]; Physical Units [16998.2 h] | 1,972.77 | 1,972.77 | ZNA | CON | LAY |
| A43220 |  | Install Manhole | 1d | 2026-05-04 A | 2026-06-05 A | A43200 | 100% | 2027-07-13 | 2027-07-14 | ICKMO1-cost unite [8877.47 $]; boom truck [200 h]; labor [1200 h]; Physical Units [76492 h] | 8,877.47 | 8,877.47 | ZNA | CON | MH |
| A43230 |  | Testing & Inspection | 1d | 2026-05-04 A | 2026-06-05 A | A43210 | 100% | 2027-07-14 | 2027-07-15 | ICKMO1-cost unite [1972.77 $]; labor [1200 h]; Physical Units [16998.2 h] | 1,972.77 | 1,972.77 | ZNA | CON |  |
| A43240 |  | Backfilling & Compaction | 1d | 2026-05-04 A | 2026-06-05 A | A43230, A43220, A43190 | 100% | 2027-07-15 | 2027-07-17 | ICKMO1-cost unite [3945.54 $]; Roller compactor [200 h]; Physical Units [33996.4 h] | 3,945.54 | 3,945.54 | ZNA | CON |  |
|  | MH-2.9 / MH-2.10 | **MH-2.9 / MH-2.10** |  | 2026-05-04 | 2026-06-05 |  |  |  |  |  |  |  |  |  |  |
| A43250 |  | Excavation | 1d | 2026-05-04 A | 2026-06-05 A | A43200, A1190 | 100% | 2027-07-13 | 2027-07-14 | ICKMO1-cost unite [2959.15 $]; Excavator [200 h]; Physical Units [25497.3 h] | 2,959.15 | 2,959.15 | ZNA | CON |  |
| A43260 |  | Pipe Laying | 1d | 2026-05-04 A | 2026-06-05 A | A43250 | 100% | 2027-07-14 | 2027-07-15 | ICKMO1-cost unite [1972.77 $]; boom truck [200 h]; labor [1200 h]; Sewage Network Circular pipes (GRP) [63.28]; Physical Units [16998.2 h] | 1,972.77 | 1,972.77 | ZNA | CON | LAY |
| A43270 |  | Install Manhole | 1d | 2026-05-04 A | 2026-06-05 A | A43250 | 100% | 2027-07-14 | 2027-07-15 | ICKMO1-cost unite [8877.47 $]; boom truck [200 h]; labor [1200 h]; Physical Units [76492 h] | 8,877.47 | 8,877.47 | ZNA | CON | MH |
| A43280 |  | Testing & Inspection | 1d | 2026-05-04 A | 2026-06-05 A | A43260 | 100% | 2027-07-15 | 2027-07-17 | ICKMO1-cost unite [1972.77 $]; labor [1200 h]; Physical Units [16998.2 h] | 1,972.77 | 1,972.77 | ZNA | CON |  |
| A43290 |  | Backfilling & Compaction | 1d | 2026-05-04 A | 2026-06-05 A | A43280, A43270, A43240 | 100% | 2027-07-17 | 2027-07-18 | ICKMO1-cost unite [3945.54 $]; Roller compactor [200 h]; Physical Units [33996.4 h] | 3,945.54 | 3,945.54 | ZNA | CON |  |
|  | MH-2.9.0 / MH-2.9.1 | **MH-2.9.0 / MH-2.9.1** |  | 2026-05-04 | 2026-06-05 |  |  |  |  |  |  |  |  |  |  |
| A43300 |  | Excavation | 1d | 2026-05-04 A | 2026-06-05 A | A43250, A1190 | 100% | 2027-07-14 | 2027-07-15 | ICKMO1-cost unite [2959.15 $]; Excavator [200 h]; Physical Units [25497.3 h] | 2,959.15 | 2,959.15 | ZNA | CON |  |
| A43310 |  | Pipe Laying | 1d | 2026-05-04 A | 2026-06-05 A | A43300 | 100% | 2027-07-15 | 2027-07-17 | ICKMO1-cost unite [1972.77 $]; boom truck [200 h]; labor [1200 h]; Sewage Network Circular pipes (GRP) [63.28]; Physical Units [16998.2 h] | 1,972.77 | 1,972.77 | ZNA | CON | LAY |
| A43320 |  | Install Manhole | 1d | 2026-05-04 A | 2026-06-05 A | A43300 | 100% | 2027-07-15 | 2027-07-17 | ICKMO1-cost unite [8877.47 $]; boom truck [200 h]; labor [1200 h]; Physical Units [76492 h] | 8,877.47 | 8,877.47 | ZNA | CON | MH |
| A43330 |  | Testing & Inspection | 1d | 2026-05-04 A | 2026-06-05 A | A43310 | 100% | 2027-03-06 | 2027-03-07 | ICKMO1-cost unite [1972.77 $]; labor [1200 h]; Physical Units [16998.2 h] | 1,972.77 | 1,972.77 | ZNA | CON |  |
| A43340 |  | Backfilling & Compaction | 1d | 2026-05-04 A | 2026-06-05 A | A43330, A43320, A43290 | 100% | 2027-07-18 | 2027-07-19 | ICKMO1-cost unite [3945.54 $]; Roller compactor [200 h]; Physical Units [33996.4 h] | 3,945.54 | 3,945.54 | ZNA | CON |  |
|  | MH-2.7 / MH-2.8 | **MH-2.7 / MH-2.8** |  | 2026-05-04 | 2026-06-05 |  |  |  |  |  |  |  |  |  |  |
| A43350 |  | Excavation | 1d | 2026-05-04 A | 2026-06-05 A | A43300, A1190 | 100% | 2027-07-15 | 2027-07-17 | ICKMO1-cost unite [2959.15 $]; Excavator [200 h]; Physical Units [25497.3 h] | 2,959.15 | 2,959.15 | ZNA | CON |  |
| A43360 |  | Pipe Laying | 1d | 2026-05-04 A | 2026-06-05 A | A43350 | 100% | 2027-03-06 | 2027-03-07 | ICKMO1-cost unite [1972.77 $]; boom truck [200 h]; labor [1200 h]; Sewage Network Circular pipes (GRP) [63.28]; Physical Units [16998.2 h] | 1,972.77 | 1,972.77 | ZNA | CON | LAY |
| A43370 |  | Install Manhole | 1d | 2026-05-04 A | 2026-06-05 A | A43350 | 100% | 2027-03-06 | 2027-03-07 | ICKMO1-cost unite [8877.47 $]; boom truck [200 h]; labor [1200 h]; Physical Units [76492 h] | 8,877.47 | 8,877.47 | ZNA | CON | MH |
| A43380 |  | Testing & Inspection | 1d | 2026-05-04 A | 2026-06-05 A | A43360 | 100% | 2027-03-07 | 2027-03-08 | ICKMO1-cost unite [1972.77 $]; labor [1200 h]; Physical Units [16998.2 h] | 1,972.77 | 1,972.77 | ZNA | CON |  |
| A43390 |  | Backfilling & Compaction | 1d | 2026-05-04 A | 2026-06-05 A | A43380, A43370, A43340 | 100% | 2027-03-25 | 2027-03-27 | ICKMO1-cost unite [3945.54 $]; Roller compactor [200 h]; Physical Units [33996.4 h] | 3,945.54 | 3,945.54 | ZNA | CON |  |

| ID | WBS | Activity | Duration | Start | Finish | Predecessors | Complete | Planned start | Planned finish | Resources | Cost | Actual cost | ALKHARJ INDUSTERIAL AREA - PROJECT ZONES | ALKHARJ INDUSTERIAL AREA - DECEPLINS | ALKHARJ INDUSTERIAL AREA - Wet networks |
| --- | --- | --- | --- | --- | --- | --- | --- | --- | --- | --- | --- | --- | --- | --- | --- |
|  | MH-1.10.10.0 / MH-1.10.10.1 | **MH-1.10.10.0 / MH-1.10.10.1** |  | 2026-05-04 | 2026-07-05 |  |  |  |  |  |  |  |  |  |  |
| A43400 |  | Excavation | 1d | 2026-05-04 A | 2026-06-05 A | A43350, A1190 | 100% | 2027-07-17 | 2027-07-18 | ICKMO1-cost unite [2959.15 $]; Excavator [200 h]; Physical Units [25497.3 h] | 2,959.15 | 2,959.15 | ZNA | CON |  |
| A43410 |  | Pipe Laying | 1d | 2026-05-04 A | 2026-06-05 A | A43400 | 100% | 2027-07-18 | 2027-07-19 | ICKMO1-cost unite [1972.77 $]; boom truck [200 h]; labor [1200 h]; Sewage Network Circular pipes (GRP) [63.28]; Physical Units [16998.2 h] | 1,972.77 | 1,972.77 | ZNA | CON | LAY |
| A43420 |  | Install Manhole | 1d | 2026-06-04 A | 2026-07-05 A | A43400 | 100% | 2027-07-18 | 2027-07-19 | ICKMO1-cost unite [8877.47 $]; boom truck [200 h]; labor [1200 h]; Physical Units [76492 h] | 8,877.47 | 8,877.47 | ZNA | CON | MH |
| A43430 |  | Testing & Inspection | 1d | 2026-06-04 A | 2026-07-05 A | A43410 | 100% | 2027-03-06 | 2027-03-07 | ICKMO1-cost unite [1972.77 $]; labor [1200 h]; Physical Units [16998.2 h] | 1,972.77 | 1,972.77 | ZNA | CON |  |
| A43440 |  | Backfilling & Compaction | 1d | 2026-06-04 A | 2026-07-05 A | A43430, A43420, A43390 | 100% | 2027-07-20 | 2027-07-21 | ICKMO1-cost unite [3945.54 $]; Roller compactor [200 h]; Physical Units [33996.4 h] | 3,945.54 | 3,945.54 | ZNA | CON |  |
|  | LR 04 | **LR 04** |  | 2026-06-04 | 2026-07-05 |  |  |  |  |  |  |  |  |  |  |
|  | MH-2.21.0 / MH-2.21.1 | **MH-2.21.0 / MH-2.21.1** |  | 2026-06-04 | 2026-07-05 |  |  |  |  |  |  |  |  |  |  |
| A43650 |  | Excavation | 2d | 2026-06-04 A | 2026-07-05 A | A71770, A1190, A58760 | 100% | 2027-05-04 | 2027-05-06 | ICKMO1-cost unite [3427.67 $]; Excavator [200 h]; Physical Units [29534.2 h] | 3,427.67 | 3,427.67 | ZNA | CON |  |
| A43660 |  | Pipe Laying | 8d | 2026-06-04 A | 2026-07-05 A | A43650 | 100% | 2027-05-06 | 2027-05-16 | ICKMO1-cost unite [2285.11 $]; boom truck [200 h]; labor [1200 h]; Sewage Network Circular pipes (GRP) [63.28]; Physical Units [19689.5 h] | 2,285.11 | 2,285.11 | ZNA | CON | LAY |
| A43670 |  | Install Manhole | 4d | 2026-06-04 A | 2026-07-05 A | A43650 | 100% | 2027-05-06 | 2027-05-11 | ICKMO1-cost unite [10283 $]; boom truck [200 h]; labor [1200 h]; Physical Units [88602.6 h] | 10,283 | 10,283 | ZNA | CON | MH |
| A43680 |  | Testing & Inspection | 2d | 2026-06-04 A | 2026-07-05 A | A43660 | 100% | 2027-05-16 | 2027-05-18 | ICKMO1-cost unite [2285.11 $]; labor [1200 h]; Physical Units [19689.5 h] | 2,285.11 | 2,285.11 | ZNA | CON |  |
| A43690 |  | Backfilling & Compaction | 4d | 2026-06-04 A | 2026-07-05 A | A43680, A43670 | 100% | 2027-05-18 | 2027-05-23 | ICKMO1-cost unite [4570.22 $]; Roller compactor [200 h]; Physical Units [39378.9 h] | 4,570.22 | 4,570.22 | ZNA | CON |  |
|  | MH-2.21.1 / MH-2.21.2 | **MH-2.21.1 / MH-2.21.2** |  | 2026-06-04 | 2026-07-05 |  |  |  |  |  |  |  |  |  |  |
| A43450 |  | Excavation | 4d | 2026-06-04 A | 2026-07-05 A | A43650, A1190 | 100% | 2027-05-06 | 2027-05-11 | ICKMO1-cost unite [3427.67 $]; Excavator [200 h]; Physical Units [29534.2 h] | 3,427.67 | 3,427.67 | ZNA | CON |  |
| A43460 |  | Pipe Laying | 8d | 2026-06-04 A | 2026-07-05 A | A43450 | 100% | 2027-05-11 | 2027-05-20 | ICKMO1-cost unite [2285.11 $]; boom truck [200 h]; labor [1200 h]; Sewage Network Circular pipes (GRP) [63.28]; Physical Units [19689.5 h] | 2,285.11 | 2,285.11 | ZNA | CON | LAY |
| A43470 |  | Install Manhole | 4d | 2026-06-04 A | 2026-07-05 A | A43450 | 100% | 2027-05-11 | 2027-05-16 | ICKMO1-cost unite [10283 $]; boom truck [200 h]; labor [1200 h]; Physical Units [88602.6 h] | 10,283 | 10,283 | ZNA | CON | MH |
| A43480 |  | Testing & Inspection | 2d | 2026-06-04 A | 2026-07-05 A | A43460 | 100% | 2027-05-20 | 2027-05-23 | ICKMO1-cost unite [2285.11 $]; labor [1200 h]; Physical Units [19689.5 h] | 2,285.11 | 2,285.11 | ZNA | CON |  |
| A43490 |  | Backfilling & Compaction | 4d | 2026-06-04 A | 2026-07-05 A | A43480, A43470, A43690 | 100% | 2027-05-23 | 2027-05-27 | ICKMO1-cost unite [4570.22 $]; Roller compactor [200 h]; Physical Units [39378.9 h] | 4,570.22 | 4,570.22 | ZNA | CON |  |
|  | MH-2.21.1.0 / MH-2.21.1.1 | **MH-2.21.1.0 / MH-2.21.1.1** |  | 2026-06-04 | 2026-07-05 |  |  |  |  |  |  |  |  |  |  |
| A43500 |  | Excavation | 4d | 2026-06-04 A | 2026-07-05 A | A43450, A1190 | 100% | 2027-05-11 | 2027-05-16 | ICKMO1-cost unite [3427.67 $]; Excavator [200 h]; Physical Units [29534.2 h] | 3,427.67 | 3,427.67 | ZNA | CON |  |
| A43510 |  | Pipe Laying | 8d | 2026-06-04 A | 2026-07-05 A | A43500 | 100% | 2027-05-16 | 2027-05-25 | ICKMO1-cost unite [2285.11 $]; boom truck [200 h]; labor [1200 h]; Sewage Network Circular pipes (GRP) [63.28]; Physical Units [19689.5 h] | 2,285.11 | 2,285.11 | ZNA | CON | LAY |
| A43520 |  | Install Manhole | 4d | 2026-06-04 A | 2026-07-05 A | A43500 | 100% | 2027-05-16 | 2027-05-20 | ICKMO1-cost unite [10283 $]; boom truck [200 h]; labor [1200 h]; Physical Units [88602.6 h] | 10,283 | 10,283 | ZNA | CON | MH |
| A43530 |  | Testing & Inspection | 2d | 2026-06-04 A | 2026-07-05 A | A43510 | 100% | 2027-05-25 | 2027-05-27 | ICKMO1-cost unite [2285.11 $]; labor [1200 h]; Physical Units [19689.5 h] | 2,285.11 | 2,285.11 | ZNA | CON |  |
| A43540 |  | Backfilling & Compaction | 4d | 2026-06-04 A | 2026-07-05 A | A43530, A43520, A43490 | 100% | 2027-05-27 | 2027-06-01 | ICKMO1-cost unite [4570.22 $]; Roller compactor [200 h]; Physical Units [39378.9 h] | 4,570.22 | 4,570.22 | ZNA | CON |  |

| ID | WBS | Activity | Duration | Start | Finish | Predecessors | Complete | Planned start | Planned finish | Resources | Cost | Actual cost | ALKHARJ INDUSTERIAL AREA - PROJECT ZONES | ALKHARJ INDUSTERIAL AREA - DECEPLINS | ALKHARJ INDUSTERIAL AREA - Wet networks |
| --- | --- | --- | --- | --- | --- | --- | --- | --- | --- | --- | --- | --- | --- | --- | --- |
|  | MH-2.21.2 / MH-2.21.3 | **MH-2.21.2 / MH-2.21.3** |  | 2026-06-04 | 2026-07-05 |  |  |  |  |  |  |  |  |  |  |
| A43550 |  | Excavation | 4d | 2026-06-04 A | 2026-07-05 A | A43500, A1190 | 100% | 2027-05-16 | 2027-05-20 | ICKMO1-cost unite [3427.67 $]; Excavator [200 h]; Physical Units [29534.2 h] | 3,427.67 | 3,427.67 | ZNA | CON |  |
| A43560 |  | Pipe Laying | 8d | 2026-06-04 A | 2026-07-05 A | A43550 | 100% | 2027-05-20 | 2027-05-30 | ICKMO1-cost unite [2285.11 $]; boom truck [200 h]; labor [1200 h]; Sewage Network Circular pipes (GRP) [63.28]; Physical Units [19689.5 h] | 2,285.11 | 2,285.11 | ZNA | CON | LAY |
| A43570 |  | Install Manhole | 4d | 2026-06-04 A | 2026-07-05 A | A43550 | 100% | 2027-05-20 | 2027-05-25 | ICKMO1-cost unite [10283 $]; boom truck [200 h]; labor [1200 h]; Physical Units [88602.6 h] | 10,283 | 10,283 | ZNA | CON | MH |
| A43580 |  | Testing & Inspection | 2d | 2026-06-04 A | 2026-07-05 A | A43560 | 100% | 2027-05-30 | 2027-06-01 | ICKMO1-cost unite [2285.11 $]; labor [1200 h]; Physical Units [19689.5 h] | 2,285.11 | 2,285.11 | ZNA | CON |  |
| A43590 |  | Backfilling & Compaction | 4d | 2026-06-04 A | 2026-07-05 A | A43580, A43570, A43540 | 100% | 2027-06-01 | 2027-06-06 | ICKMO1-cost unite [4570.22 $]; Roller compactor [200 h]; Physical Units [39378.9 h] | 4,570.22 | 4,570.22 | ZNA | CON |  |
|  | MH-2.21.2.0 / MH-2.21.2.1 | **MH-2.21.2.0 / MH-2.21.2.1** |  | 2026-06-04 | 2026-07-05 |  |  |  |  |  |  |  |  |  |  |
| A43700 |  | Excavation | 4d | 2026-06-04 A | 2026-07-05 A | A43550, A1190 | 100% | 2027-05-20 | 2027-05-25 | ICKMO1-cost unite [3427.67 $]; Excavator [200 h]; Physical Units [29534.2 h] | 3,427.67 | 3,427.67 | ZNA | CON |  |
| A43710 |  | Pipe Laying | 8d | 2026-06-04 A | 2026-07-05 A | A43700 | 100% | 2027-05-25 | 2027-06-03 | ICKMO1-cost unite [2285.11 $]; boom truck [200 h]; labor [1200 h]; Sewage Network Circular pipes (GRP) [63.28]; Physical Units [19689.5 h] | 2,285.11 | 2,285.11 | ZNA | CON | LAY |
| A43720 |  | Install Manhole | 4d | 2026-06-04 A | 2026-07-05 A | A43700 | 100% | 2027-05-25 | 2027-05-30 | ICKMO1-cost unite [10283 $]; boom truck [200 h]; labor [1200 h]; Physical Units [88602.6 h] | 10,283 | 10,283 | ZNA | CON | MH |
| A43730 |  | Testing & Inspection | 2d | 2026-06-04 A | 2026-07-05 A | A43710 | 100% | 2027-06-03 | 2027-06-06 | ICKMO1-cost unite [2285.11 $]; labor [1200 h]; Physical Units [19689.5 h] | 2,285.11 | 2,285.11 | ZNA | CON |  |
| A43740 |  | Backfilling & Compaction | 4d | 2026-06-04 A | 2026-07-05 A | A43730, A43720, A43590 | 100% | 2027-06-06 | 2027-06-10 | ICKMO1-cost unite [4570.22 $]; Roller compactor [200 h]; Physical Units [39378.9 h] | 4,570.22 | 4,570.22 | ZNA | CON |  |
|  | MH-2.21.3 / MH-2.21.4 | **MH-2.21.3 / MH-2.21.4** |  | 2026-06-04 | 2026-07-05 |  |  |  |  |  |  |  |  |  |  |
| A43750 |  | Excavation | 4d | 2026-06-04 A | 2026-07-05 A | A43700, A1190 | 100% | 2027-05-25 | 2027-05-30 | ICKMO1-cost unite [3427.67 $]; Excavator [200 h]; Physical Units [29534.2 h] | 3,427.67 | 3,427.67 | ZNA | CON |  |
| A43760 |  | Pipe Laying | 8d | 2026-06-04 A | 2026-07-05 A | A43750 | 100% | 2027-05-30 | 2027-06-08 | ICKMO1-cost unite [2285.11 $]; boom truck [200 h]; labor [1200 h]; Sewage Network Circular pipes (GRP) [63.28]; Physical Units [19689.5 h] | 2,285.11 | 2,285.11 | ZNA | CON | LAY |
| A43770 |  | Install Manhole | 4d | 2026-06-04 A | 2026-07-05 A | A43750 | 100% | 2027-05-30 | 2027-06-03 | ICKMO1-cost unite [10283 $]; boom truck [200 h]; labor [1200 h]; Physical Units [88602.6 h] | 10,283 | 10,283 | ZNA | CON | MH |
| A43780 |  | Testing & Inspection | 2d | 2026-06-04 A | 2026-07-05 A | A43760 | 100% | 2027-06-08 | 2027-06-10 | ICKMO1-cost unite [2285.11 $]; labor [1200 h]; Physical Units [19689.5 h] | 2,285.11 | 2,285.11 | ZNA | CON |  |
| A43790 |  | Backfilling & Compaction | 4d | 2026-06-04 A | 2026-07-05 A | A43780, A43770, A43740 | 100% | 2027-06-10 | 2027-06-15 | ICKMO1-cost unite [4570.22 $]; Roller compactor [200 h]; Physical Units [39378.9 h] | 4,570.22 | 4,570.22 | ZNA | CON |  |
|  | MH-2.21.3.0 / MH-2.21.3.1 | **MH-2.21.3.0 / MH-2.21.3.1** |  | 2026-06-04 | 2026-07-05 |  |  |  |  |  |  |  |  |  |  |
| A43800 |  | Excavation | 4d | 2026-06-04 A | 2026-07-05 A | A43750, A1190 | 100% | 2027-05-30 | 2027-06-03 | ICKMO1-cost unite [3427.67 $]; Excavator [200 h]; Physical Units [29534.2 h] | 3,427.67 | 3,427.67 | ZNA | CON |  |
| A43810 |  | Pipe Laying | 8d | 2026-06-04 A | 2026-07-05 A | A43800 | 100% | 2027-06-03 | 2027-06-13 | ICKMO1-cost unite [2285.11 $]; boom truck [200 h]; labor [1200 h]; Sewage Network Circular pipes (GRP) [63.28]; Physical Units [19689.5 h] | 2,285.11 | 2,285.11 | ZNA | CON | LAY |
| A43820 |  | Install Manhole | 4d | 2026-06-04 A | 2026-07-05 A | A43800 | 100% | 2027-06-03 | 2027-06-08 | ICKMO1-cost unite [10283 $]; boom truck [200 h]; labor [1200 h]; Physical Units [88602.6 h] | 10,283 | 10,283 | ZNA | CON | MH |
| A43830 |  | Testing & Inspection | 2d | 2026-06-04 A | 2026-07-05 A | A43810 | 100% | 2027-06-13 | 2027-06-15 | ICKMO1-cost unite [2285.11 $]; labor [1200 h]; Physical Units [19689.5 h] | 2,285.11 | 2,285.11 | ZNA | CON |  |
| A43840 |  | Backfilling & Compaction | 4d | 2026-06-04 A | 2026-07-05 A | A43830, A43820, A43790 | 100% | 2027-06-15 | 2027-06-20 | ICKMO1-cost unite [4570.22 $]; Roller compactor [200 h]; Physical Units [39378.9 h] | 4,570.22 | 4,570.22 | ZNA | CON |  |

| ID | WBS | Activity | Duration | Start | Finish | Predecessors | Complete | Planned start | Planned finish | Resources | Cost | Actual cost | ALKHARJ INDUSTERIAL AREA - PROJECT ZONES | ALKHARJ INDUSTERIAL AREA - DECEPLINS | ALKHARJ INDUSTERIAL AREA - Wet networks |
| --- | --- | --- | --- | --- | --- | --- | --- | --- | --- | --- | --- | --- | --- | --- | --- |
|  | MH-2.21.4 / MH-2.21.5 | **MH-2.21.4 / MH-2.21.5** |  | 2026-06-04 | 2026-07-05 |  |  |  |  |  |  |  |  |  |  |
| A43850 |  | Excavation | 4d | 2026-06-04 A | 2026-07-05 A | A43800, A1190 | 100% | 2027-06-03 | 2027-06-08 | ICKMO1-cost unite [3427.67 $]; Excavator [200 h]; Physical Units [29534.2 h] | 3,427.67 | 3,427.67 | ZNA | CON |  |
| A43860 |  | Pipe Laying | 8d | 2026-06-04 A | 2026-07-05 A | A43850 | 100% | 2027-06-08 | 2027-06-17 | ICKMO1-cost unite [2285.11 $]; boom truck [200 h]; labor [1200 h]; Sewage Network Circular pipes (GRP) [63.28]; Physical Units [19689.5 h] | 2,285.11 | 2,285.11 | ZNA | CON | LAY |
| A43870 |  | Install Manhole | 4d | 2026-06-04 A | 2026-07-05 A | A43850 | 100% | 2027-06-08 | 2027-06-13 | ICKMO1-cost unite [10283 $]; boom truck [200 h]; labor [1200 h]; Physical Units [88602.6 h] | 10,283 | 10,283 | ZNA | CON | MH |
| A43880 |  | Testing & Inspection | 2d | 2026-06-04 A | 2026-07-05 A | A43860 | 100% | 2027-06-17 | 2027-06-20 | ICKMO1-cost unite [2285.11 $]; labor [1200 h]; Physical Units [19689.5 h] | 2,285.11 | 2,285.11 | ZNA | CON |  |
| A43890 |  | Backfilling & Compaction | 4d | 2026-06-04 A | 2026-07-05 A | A43880, A43870, A43840 | 100% | 2027-06-20 | 2027-06-24 | ICKMO1-cost unite [4570.22 $]; Roller compactor [200 h]; Physical Units [39378.9 h] | 4,570.22 | 4,570.22 | ZNA | CON |  |
|  | MH-2.21.5 / MH-2.21.6 | **MH-2.21.5 / MH-2.21.6** |  | 2026-06-04 | 2026-07-05 |  |  |  |  |  |  |  |  |  |  |
| A43900 |  | Excavation | 4d | 2026-06-04 A | 2026-07-05 A | A43850, A1190 | 100% | 2027-06-08 | 2027-06-13 | ICKMO1-cost unite [3427.67 $]; Excavator [200 h]; Physical Units [29534.2 h] | 3,427.67 | 3,427.67 | ZNA | CON |  |
| A43910 |  | Pipe Laying | 8d | 2026-06-04 A | 2026-07-05 A | A43900 | 100% | 2027-06-13 | 2027-06-22 | ICKMO1-cost unite [2285.11 $]; boom truck [200 h]; labor [1200 h]; Sewage Network Circular pipes (GRP) [63.28]; Physical Units [19689.5 h] | 2,285.11 | 2,285.11 | ZNA | CON | LAY |
| A43920 |  | Install Manhole | 4d | 2026-06-04 A | 2026-07-05 A | A43900 | 100% | 2027-06-13 | 2027-06-17 | ICKMO1-cost unite [10283 $]; boom truck [200 h]; labor [1200 h]; Physical Units [88602.6 h] | 10,283 | 10,283 | ZNA | CON | MH |
| A43930 |  | Testing & Inspection | 2d | 2026-06-04 A | 2026-07-05 A | A43910 | 100% | 2027-06-22 | 2027-06-24 | ICKMO1-cost unite [2285.11 $]; labor [1200 h]; Physical Units [19689.5 h] | 2,285.11 | 2,285.11 | ZNA | CON |  |
| A43940 |  | Backfilling & Compaction | 4d | 2026-06-04 A | 2026-07-05 A | A43930, A43920, A43890 | 100% | 2027-06-24 | 2027-06-29 | ICKMO1-cost unite [4570.22 $]; Roller compactor [200 h]; Physical Units [39378.9 h] | 4,570.22 | 4,570.22 | ZNA | CON |  |
|  | MH-2.21.6 / MH-2.21.7 | **MH-2.21.6 / MH-2.21.7** |  | 2026-06-04 | 2026-07-05 |  |  |  |  |  |  |  |  |  |  |
| A43950 |  | Excavation | 4d | 2026-06-04 A | 2026-07-05 A | A43900, A1190 | 100% | 2027-06-13 | 2027-06-17 | ICKMO1-cost unite [3427.67 $]; Excavator [200 h]; Physical Units [29534.2 h] | 3,427.67 | 3,427.67 | ZNA | CON |  |
| A43960 |  | Pipe Laying | 8d | 2026-06-04 A | 2026-07-05 A | A43950 | 100% | 2027-06-17 | 2027-06-27 | ICKMO1-cost unite [2285.11 $]; boom truck [200 h]; labor [1200 h]; Sewage Network Circular pipes (GRP) [63.28]; Physical Units [19689.5 h] | 2,285.11 | 2,285.11 | ZNA | CON | LAY |
| A43970 |  | Install Manhole | 4d | 2026-06-04 A | 2026-07-05 A | A43950 | 100% | 2027-06-17 | 2027-06-22 | ICKMO1-cost unite [10283 $]; boom truck [200 h]; labor [1200 h]; Physical Units [88602.6 h] | 10,283 | 10,283 | ZNA | CON | MH |
| A43980 |  | Testing & Inspection | 2d | 2026-06-04 A | 2026-07-05 A | A43960 | 100% | 2027-06-27 | 2027-06-29 | ICKMO1-cost unite [2285.11 $]; labor [1200 h]; Physical Units [19689.5 h] | 2,285.11 | 2,285.11 | ZNA | CON |  |
| A43990 |  | Backfilling & Compaction | 4d | 2026-06-04 A | 2026-07-05 A | A43980, A43970, A43940 | 100% | 2027-06-29 | 2027-07-04 | ICKMO1-cost unite [4570.22 $]; Roller compactor [200 h]; Physical Units [39378.9 h] | 4,570.22 | 4,570.22 | ZNA | CON |  |
|  | MH-2.21.7 / MH-2.21.8 | **MH-2.21.7 / MH-2.21.8** |  | 2026-06-04 | 2026-07-05 |  |  |  |  |  |  |  |  |  |  |
| A44000 |  | Excavation | 4d | 2026-06-04 A | 2026-07-05 A | A43950, A1190 | 100% | 2027-06-17 | 2027-06-22 | ICKMO1-cost unite [3427.67 $]; Excavator [200 h]; Physical Units [29534.2 h] | 3,427.67 | 3,427.67 | ZNA | CON |  |
| A44010 |  | Pipe Laying | 4d | 2026-06-04 A | 2026-07-05 A | A44000 | 100% | 2027-06-22 | 2027-06-27 | ICKMO1-cost unite [2285.11 $]; boom truck [200 h]; labor [1200 h]; Sewage Network Circular pipes (GRP) [63.28]; Physical Units [19689.5 h] | 2,285.11 | 2,285.11 | ZNA | CON | LAY |
| A44020 |  | Install Manhole | 4d | 2026-06-04 A | 2026-07-05 A | A44000 | 100% | 2027-06-22 | 2027-06-27 | ICKMO1-cost unite [10283 $]; boom truck [200 h]; labor [1200 h]; Physical Units [88602.6 h] | 10,283 | 10,283 | ZNA | CON | MH |
| A44030 |  | Testing & Inspection | 2d | 2026-06-04 A | 2026-07-05 A | A44010 | 100% | 2027-06-27 | 2027-06-29 | ICKMO1-cost unite [2285.11 $]; labor [1200 h]; Physical Units [19689.5 h] | 2,285.11 | 2,285.11 | ZNA | CON |  |
| A44040 |  | Backfilling & Compaction | 4d | 2026-06-04 A | 2026-07-05 A | A44030, A44020, A43990 | 100% | 2027-07-04 | 2027-07-08 | ICKMO1-cost unite [4570.22 $]; Roller compactor [200 h]; Physical Units [39378.9 h] | 4,570.22 | 4,570.22 | ZNA | CON |  |

| ID | WBS | Activity | Duration | Start | Finish | Predecessors | Complete | Planned start | Planned finish | Total float | Free float | Resources | Cost | Actual cost | ALKHARJ INDUSTERIAL AREA - PROJECT ZONES | ALKHARJ INDUSTERIAL AREA - DECEPLINS | ALKHARJ INDUSTERIAL AREA - Wet networks |
| --- | --- | --- | --- | --- | --- | --- | --- | --- | --- | --- | --- | --- | --- | --- | --- | --- | --- |
|  | LR 05 | **LR 05** |  | 2026-06-04 | 2027-03-01 |  |  |  |  |  |  |  |  |  |  |  |  |
|  | MH-2.10 / MH-2.11 | **MH-2.10 / MH-2.11** |  | 2026-06-04 | 2026-11-09 |  |  |  |  |  |  |  |  |  |  |  |  |
| A44050 |  | Excavation | 4d | 2026-06-04 A | 2026-07-05 A | A71420, A1190 | 100% | 2027-01-11 | 2027-01-16 |  |  | ICKMO1-cost unite [3291.64 $]; Excavator [200 h]; Physical Units [28362.1 h] | 3,291.64 | 3,291.64 | ZNA | CON |  |
| A44060 |  | Pipe Laying | 8d | 2026-06-04 A | 2026-07-05 A | A44050 | 100% | 2026-10-19 | 2026-10-28 |  |  | ICKMO1-cost unite [2194.43 $]; boom truck [200 h]; labor [1200 h]; Sewage Network Circular pipes (GRP) [63.28]; Physical Units [18908.1 h] | 2,194.43 | 2,194.43 | ZNA | CON | LAY |
| A44070 |  | Install Manhole | 4d | 2026-06-04 A | 2026-07-05 A | A44050 | 100% | 2026-10-19 | 2026-10-24 |  |  | ICKMO1-cost unite [9874.94 $]; boom truck [200 h]; labor [1200 h]; Physical Units [85086.6 h] | 9,874.94 | 9,874.94 | ZNA | CON | MH |
| A44080 |  | Testing & Inspection | 2d | 2026-11-02 | 2026-11-04 | A44060 |  |  |  | -34.1d | 0d | ICKMO1-cost unite [2194.43 $]; labor [1200 h]; Physical Units [18908.1 h] | 2,194.43 |  | ZNA | CON |  |
| A44090 |  | Backfilling & Compaction | 4d | 2026-11-04 | 2026-11-09 | A44080, A44070 |  |  |  | -34.1d | 0d | ICKMO1-cost unite [4388.86 $]; Roller compactor [200 h]; Physical Units [37816.2 h] | 4,388.86 |  | ZNA | CON |  |
|  | MH-2.10.0 / MH-2.10.1 | **MH-2.10.0 / MH-2.10.1** |  | 2026-06-04 | 2026-11-14 |  |  |  |  |  |  |  |  |  |  |  |  |
| A44100 |  | Excavation | 4d | 2026-06-04 A | 2026-07-05 A | A44050, A1190 | 100% | 2027-01-16 | 2027-01-20 |  |  | ICKMO1-cost unite [3291.64 $]; Excavator [200 h]; Physical Units [28362.1 h] | 3,291.64 | 3,291.64 | ZNA | CON |  |
| A44110 |  | Pipe Laying | 8d | 2026-06-04 A | 2026-07-05 A | A44100 | 100% | 2026-10-19 | 2026-10-28 |  |  | ICKMO1-cost unite [2194.43 $]; boom truck [200 h]; labor [1200 h]; Sewage Network Circular pipes (GRP) [63.28]; Physical Units [18908.1 h] | 2,194.43 | 2,194.43 | ZNA | CON | LAY |
| A44120 |  | Install Manhole | 4d | 2026-06-04 A | 2026-07-05 A | A44100 | 100% | 2026-10-19 | 2026-10-24 |  |  | ICKMO1-cost unite [9874.94 $]; boom truck [200 h]; labor [1200 h]; Physical Units [85086.6 h] | 9,874.94 | 9,874.94 | ZNA | CON | MH |
| A44130 |  | Testing & Inspection | 2d | 2026-11-02 | 2026-11-04 | A44110 |  |  |  | -30.1d | 4d | ICKMO1-cost unite [2194.43 $]; labor [1200 h]; Physical Units [18908.1 h] | 2,194.43 |  | ZNA | CON |  |
| A44140 |  | Backfilling & Compaction | 4d | 2026-11-09 | 2026-11-14 | A44130, A44120, A44090 |  |  |  | -34.1d | 0d | ICKMO1-cost unite [4388.86 $]; Roller compactor [200 h]; Physical Units [37816.2 h] | 4,388.86 |  | ZNA | CON |  |
|  | MH-2.11 / MH-2.12 | **MH-2.11 / MH-2.12** |  | 2026-06-04 | 2026-11-18 |  |  |  |  |  |  |  |  |  |  |  |  |
| A44150 |  | Excavation | 4d | 2026-06-04 A | 2026-07-05 A | A44100, A1190 | 100% | 2027-01-20 | 2027-01-25 |  |  | ICKMO1-cost unite [3291.64 $]; Excavator [200 h]; Physical Units [28362.1 h] | 3,291.64 | 3,291.64 | ZNA | CON |  |
| A44160 |  | Pipe Laying | 8d | 2026-06-04 A | 2026-07-05 A | A44150 | 100% | 2026-10-19 | 2026-10-28 |  |  | ICKMO1-cost unite [2194.43 $]; boom truck [200 h]; labor [1200 h]; Sewage Network Circular pipes (GRP) [63.28]; Physical Units [18908.1 h] | 2,194.43 | 2,194.43 | ZNA | CON | LAY |
| A44170 |  | Install Manhole | 4d | 2026-06-04 A | 2026-07-05 A | A44150 | 100% | 2026-10-19 | 2026-10-24 |  |  | ICKMO1-cost unite [9874.94 $]; boom truck [200 h]; labor [1200 h]; Physical Units [85086.6 h] | 9,874.94 | 9,874.94 | ZNA | CON | MH |
| A44180 |  | Testing & Inspection | 2d | 2026-11-02 | 2026-11-04 | A44160 |  |  |  | -26.1d | 8d | ICKMO1-cost unite [2194.43 $]; labor [1200 h]; Physical Units [18908.1 h] | 2,194.43 |  | ZNA | CON |  |
| A44190 |  | Backfilling & Compaction | 4d | 2026-11-14 | 2026-11-18 | A44180, A44170, A44140 |  |  |  | -34.1d | 0d | ICKMO1-cost unite [4388.86 $]; Roller compactor [200 h]; Physical Units [37816.2 h] | 4,388.86 |  | ZNA | CON |  |
|  | MH-2.11.0 / MH-2.11.1 | **MH-2.11.0 / MH-2.11.1** |  | 2026-06-04 | 2026-11-23 |  |  |  |  |  |  |  |  |  |  |  |  |
| A44200 |  | Excavation | 4d | 2026-06-04 A | 2026-07-05 A | A44150, A1190 | 100% | 2027-01-25 | 2027-01-30 |  |  | ICKMO1-cost unite [3291.64 $]; Excavator [200 h]; Physical Units [28362.1 h] | 3,291.64 | 3,291.64 | ZNA | CON |  |
| A44210 |  | Pipe Laying | 8d | 2026-06-04 A | 2026-07-05 A | A44200 | 100% | 2026-10-19 | 2026-10-28 |  |  | ICKMO1-cost unite [2194.43 $]; boom truck [200 h]; labor [1200 h]; Sewage Network Circular pipes (GRP) [63.28]; Physical Units [18908.1 h] | 2,194.43 | 2,194.43 | ZNA | CON | LAY |
| A44220 |  | Install Manhole | 4d | 2026-06-04 A | 2026-07-05 A | A44200 | 100% | 2026-10-19 | 2026-10-24 |  |  | ICKMO1-cost unite [9874.94 $]; boom truck [200 h]; labor [1200 h]; Physical Units [85086.6 h] | 9,874.94 | 9,874.94 | ZNA | CON | MH |
| A44230 |  | Testing & Inspection | 2d | 2026-11-02 | 2026-11-04 | A44210 |  |  |  | -22.1d | 12d | ICKMO1-cost unite [2194.43 $]; labor [1200 h]; Physical Units [18908.1 h] | 2,194.43 |  | ZNA | CON |  |
| A44240 |  | Backfilling & Compaction | 4d | 2026-11-18 | 2026-11-23 | A44230, A44220, A44190 |  |  |  | -34.1d | 0d | ICKMO1-cost unite [4388.86 $]; Roller compactor [200 h]; Physical Units [37816.2 h] | 4,388.86 |  | ZNA | CON |  |

| ID | WBS | Activity | Duration | Start | Finish | Predecessors | Complete | Planned start | Planned finish | Total float | Free float | Resources | Cost | Actual cost | ALKHARJ INDUSTERIAL AREA - PROJECT ZONES | ALKHARJ INDUSTERIAL AREA - DECEPLINS | ALKHARJ INDUSTERIAL AREA - Wet networks |
| --- | --- | --- | --- | --- | --- | --- | --- | --- | --- | --- | --- | --- | --- | --- | --- | --- | --- |
|  | MH-2.12 / MH-2.13 | **MH-2.12 / MH-2.13** |  | 2026-06-04 | 2026-11-28 |  |  |  |  |  |  |  |  |  |  |  |  |
| A44250 |  | Excavation | 4d | 2026-06-04 A | 2026-07-05 A | A44200, A1190 | 100% | 2027-01-30 | 2027-02-03 |  |  | ICKMO1-cost unite [3291.64 $]; Excavator [200 h]; Physical Units [28362.1 h] | 3,291.64 | 3,291.64 | ZNA | CON |  |
| A44260 |  | Pipe Laying | 8d | 2026-06-04 A | 2026-07-05 A | A44250 | 100% | 2026-10-19 | 2026-10-28 |  |  | ICKMO1-cost unite [2194.43 $]; boom truck [200 h]; labor [1200 h]; Sewage Network Circular pipes (GRP) [63.28]; Physical Units [18908.1 h] | 2,194.43 | 2,194.43 | ZNA | CON | LAY |
| A44270 |  | Install Manhole | 4d | 2026-06-04 A | 2026-07-05 A | A44250 | 100% | 2026-10-19 | 2026-10-24 |  |  | ICKMO1-cost unite [9874.94 $]; boom truck [200 h]; labor [1200 h]; Physical Units [85086.6 h] | 9,874.94 | 9,874.94 | ZNA | CON | MH |
| A44280 |  | Testing & Inspection | 2d | 2026-11-02 | 2026-11-04 | A44260 |  |  |  | -18.1d | 16d | ICKMO1-cost unite [2194.43 $]; labor [1200 h]; Physical Units [18908.1 h] | 2,194.43 |  | ZNA | CON |  |
| A44290 |  | Backfilling & Compaction | 4d | 2026-11-23 | 2026-11-28 | A44280, A44270, A44240 |  |  |  | -34.1d | 0d | ICKMO1-cost unite [4388.86 $]; Roller compactor [200 h]; Physical Units [37816.2 h] | 4,388.86 |  | ZNA | CON |  |
|  | MH-2.12.0 / MH-2.12.1 | **MH-2.12.0 / MH-2.12.1** |  | 2026-06-04 | 2026-12-02 |  |  |  |  |  |  |  |  |  |  |  |  |
| A44300 |  | Excavation | 4d | 2026-06-04 A | 2026-07-05 A | A44250, A1190 | 100% | 2027-02-03 | 2027-02-08 |  |  | ICKMO1-cost unite [3291.64 $]; Excavator [200 h]; Physical Units [28362.1 h] | 3,291.64 | 3,291.64 | ZNA | CON |  |
| A44310 |  | Pipe Laying | 8d | 2026-06-04 A | 2026-07-05 A | A44300 | 100% | 2026-10-19 | 2026-10-28 |  |  | ICKMO1-cost unite [2194.43 $]; boom truck [200 h]; labor [1200 h]; Sewage Network Circular pipes (GRP) [63.28]; Physical Units [18908.1 h] | 2,194.43 | 2,194.43 | ZNA | CON | LAY |
| A44320 |  | Install Manhole | 4d | 2026-06-04 A | 2026-07-05 A | A44300 | 100% | 2026-10-19 | 2026-10-24 |  |  | ICKMO1-cost unite [9874.94 $]; boom truck [200 h]; labor [1200 h]; Physical Units [85086.6 h] | 9,874.94 | 9,874.94 | ZNA | CON | MH |
| A44330 |  | Testing & Inspection | 2d | 2026-11-02 | 2026-11-04 | A44310 |  |  |  | -14.1d | 20d | ICKMO1-cost unite [2194.43 $]; labor [1200 h]; Physical Units [18908.1 h] | 2,194.43 |  | ZNA | CON |  |
| A44340 |  | Backfilling & Compaction | 4d | 2026-11-28 | 2026-12-02 | A44330, A44320, A44290 |  |  |  | -34.1d | 0d | ICKMO1-cost unite [4388.86 $]; Roller compactor [200 h]; Physical Units [37816.2 h] | 4,388.86 |  | ZNA | CON |  |
|  | MH-2.13 / MH-2.14 | **MH-2.13 / MH-2.14** |  | 2026-06-04 | 2026-12-07 |  |  |  |  |  |  |  |  |  |  |  |  |
| A44350 |  | Excavation | 4d | 2026-06-04 A | 2026-07-05 A | A44300, A1190 | 100% | 2027-02-08 | 2027-02-13 |  |  | ICKMO1-cost unite [3291.64 $]; Excavator [200 h]; Physical Units [28362.1 h] | 3,291.64 | 3,291.64 | ZNA | CON |  |
| A44360 |  | Pipe Laying | 8d | 2026-06-04 A | 2026-07-05 A | A44350 | 100% | 2026-10-19 | 2026-10-28 |  |  | ICKMO1-cost unite [2194.43 $]; boom truck [200 h]; labor [1200 h]; Sewage Network Circular pipes (GRP) [63.28]; Physical Units [18908.1 h] | 2,194.43 | 2,194.43 | ZNA | CON | LAY |
| A44370 |  | Install Manhole | 4d | 2026-06-04 A | 2026-07-05 A | A44350 | 100% | 2026-10-19 | 2026-10-24 |  |  | ICKMO1-cost unite [9874.94 $]; boom truck [200 h]; labor [1200 h]; Physical Units [85086.6 h] | 9,874.94 | 9,874.94 | ZNA | CON | MH |
| A44380 |  | Testing & Inspection | 2d | 2026-11-02 | 2026-11-04 | A44360 |  |  |  | -10.1d | 24d | ICKMO1-cost unite [2194.43 $]; labor [1200 h]; Physical Units [18908.1 h] | 2,194.43 |  | ZNA | CON |  |
| A44390 |  | Backfilling & Compaction | 4d | 2026-12-02 | 2026-12-07 | A44380, A44370, A44340 |  |  |  | -34.1d | 0d | ICKMO1-cost unite [4388.86 $]; Roller compactor [200 h]; Physical Units [37816.2 h] | 4,388.86 |  | ZNA | CON |  |
|  | MH-2.13.0 / MH-2.13.1 | **MH-2.13.0 / MH-2.13.1** |  | 2026-06-04 | 2026-12-12 |  |  |  |  |  |  |  |  |  |  |  |  |
| A44400 |  | Excavation | 4d | 2026-06-04 A | 2026-07-05 A | A44350, A1190 | 100% | 2027-02-13 | 2027-02-17 |  |  | ICKMO1-cost unite [3291.64 $]; Excavator [200 h]; Physical Units [28362.1 h] | 3,291.64 | 3,291.64 | ZNA | CON |  |
| A44410 |  | Pipe Laying | 8d | 2026-06-04 A | 2026-07-05 A | A44400 | 100% | 2026-10-19 | 2026-10-28 |  |  | ICKMO1-cost unite [2194.43 $]; boom truck [200 h]; labor [1200 h]; Sewage Network Circular pipes (GRP) [63.28]; Physical Units [18908.1 h] | 2,194.43 | 2,194.43 | ZNA | CON | LAY |
| A44420 |  | Install Manhole | 4d | 2026-06-04 A | 2026-07-05 A | A44400 | 100% | 2026-10-19 | 2026-10-24 |  |  | ICKMO1-cost unite [9874.94 $]; boom truck [200 h]; labor [1200 h]; Physical Units [85086.6 h] | 9,874.94 | 9,874.94 | ZNA | CON | MH |
| A44430 |  | Testing & Inspection | 2d | 2026-11-02 | 2026-11-04 | A44410 |  |  |  | -6.1d | 28d | ICKMO1-cost unite [2194.43 $]; labor [1200 h]; Physical Units [18908.1 h] | 2,194.43 |  | ZNA | CON |  |
| A44440 |  | Backfilling & Compaction | 4d | 2026-12-07 | 2026-12-12 | A44430, A44420, A44390 |  |  |  | -34.1d | 0d | ICKMO1-cost unite [4388.86 $]; Roller compactor [200 h]; Physical Units [37816.2 h] | 4,388.86 |  | ZNA | CON |  |

| ID | WBS | Activity | Duration | Start | Finish | Predecessors | Complete | Planned start | Planned finish | Total float | Free float | Resources | Cost | Actual cost | ALKHARJ INDUSTERIAL AREA - PROJECT ZONES | ALKHARJ INDUSTERIAL AREA - DECEPLINS | ALKHARJ INDUSTERIAL AREA - Wet networks |
| --- | --- | --- | --- | --- | --- | --- | --- | --- | --- | --- | --- | --- | --- | --- | --- | --- | --- |
|  | MH-2.14 / MH-2.15 | **MH-2.14 / MH-2.15** |  | 2026-06-04 | 2026-12-16 |  |  |  |  |  |  |  |  |  |  |  |  |
| A44450 |  | Excavation | 4d | 2026-06-04 A | 2026-07-05 A | A44400, A1190 | 100% | 2027-02-17 | 2027-02-22 |  |  | ICKMO1-cost unite [3291.64 $]; Excavator [200 h]; Physical Units [28362.1 h] | 3,291.64 | 3,291.64 | ZNA | CON |  |
| A44460 |  | Pipe Laying | 8d | 2026-06-04 A | 2026-07-05 A | A44450 | 100% | 2026-10-19 | 2026-10-28 |  |  | ICKMO1-cost unite [2194.43 $]; boom truck [200 h]; labor [1200 h]; Sewage Network Circular pipes (GRP) [63.28]; Physical Units [18908.1 h] | 2,194.43 | 2,194.43 | ZNA | CON | LAY |
| A44470 |  | Install Manhole | 4d | 2026-06-04 A | 2026-07-05 A | A44450 | 100% | 2026-10-19 | 2026-10-24 |  |  | ICKMO1-cost unite [9874.94 $]; boom truck [200 h]; labor [1200 h]; Physical Units [85086.6 h] | 9,874.94 | 9,874.94 | ZNA | CON | MH |
| A44480 |  | Testing & Inspection | 2d | 2026-11-02 | 2026-11-04 | A44460 |  |  |  | -2.1d | 32d | ICKMO1-cost unite [2194.43 $]; labor [1200 h]; Physical Units [18908.1 h] | 2,194.43 |  | ZNA | CON |  |
| A44490 |  | Backfilling & Compaction | 4d | 2026-12-12 | 2026-12-16 | A44480, A44470, A44440 |  |  |  | -34.1d | 0d | ICKMO1-cost unite [4388.86 $]; Roller compactor [200 h]; Physical Units [37816.2 h] | 4,388.86 |  | ZNA | CON |  |
|  | MH-2.14.0 / MH-2.14.1 | **MH-2.14.0 / MH-2.14.1** |  | 2026-06-04 | 2026-12-21 |  |  |  |  |  |  |  |  |  |  |  |  |
| A44500 |  | Excavation | 4d | 2026-06-04 A | 2026-07-05 A | A44450, A1190 | 100% | 2027-02-22 | 2027-02-27 |  |  | ICKMO1-cost unite [3291.64 $]; Excavator [200 h]; Physical Units [28362.1 h] | 3,291.64 | 3,291.64 | ZNA | CON |  |
| A44510 |  | Pipe Laying | 4d | 2026-06-04 A | 2026-07-05 A | A44500 | 100% | 2026-10-19 | 2026-10-24 |  |  | ICKMO1-cost unite [2194.43 $]; boom truck [200 h]; labor [1200 h]; Sewage Network Circular pipes (GRP) [63.28]; Physical Units [18908.1 h] | 2,194.43 | 2,194.43 | ZNA | CON | LAY |
| A44520 |  | Install Manhole | 4d | 2026-06-04 A | 2026-07-05 A | A44500 | 100% | 2026-10-19 | 2026-10-24 |  |  | ICKMO1-cost unite [9874.94 $]; boom truck [200 h]; labor [1200 h]; Physical Units [85086.6 h] | 9,874.94 | 9,874.94 | ZNA | CON | MH |
| A44530 |  | Testing & Inspection | 2d | 2026-06-04 A | 2026-07-05 A | A44510 | 100% | 2026-10-24 | 2026-10-26 |  |  | ICKMO1-cost unite [2194.43 $]; labor [1200 h]; Physical Units [18908.1 h] | 2,194.43 | 2,194.43 | ZNA | CON |  |
| A44540 |  | Backfilling & Compaction | 4d | 2026-12-16 | 2026-12-21 | A44530, A44520, A44490 |  |  |  | -34.1d | 0d | ICKMO1-cost unite [4388.86 $]; Roller compactor [200 h]; Physical Units [37816.2 h] | 4,388.86 |  | ZNA | CON |  |
|  | MH-2.15 / MH-2.16 | **MH-2.15 / MH-2.16** |  | 2026-06-04 | 2026-12-26 |  |  |  |  |  |  |  |  |  |  |  |  |
| A44550 |  | Excavation | 4d | 2026-06-04 A | 2026-07-05 A | A44500, A1190 | 100% | 2027-02-27 | 2027-03-03 |  |  | ICKMO1-cost unite [3291.64 $]; Excavator [200 h]; Physical Units [28362.1 h] | 3,291.64 | 3,291.64 | ZNA | CON |  |
| A44560 |  | Pipe Laying | 8d | 2026-06-04 A | 2026-07-05 A | A44550 | 100% | 2026-10-19 | 2026-10-28 |  |  | ICKMO1-cost unite [2194.43 $]; boom truck [200 h]; labor [1200 h]; Sewage Network Circular pipes (GRP) [63.28]; Physical Units [18908.1 h] | 2,194.43 | 2,194.43 | ZNA | CON | LAY |
| A44570 |  | Install Manhole | 4d | 2026-06-04 A | 2026-07-05 A | A44550 | 100% | 2026-10-19 | 2026-10-24 |  |  | ICKMO1-cost unite [9874.94 $]; boom truck [200 h]; labor [1200 h]; Physical Units [85086.6 h] | 9,874.94 | 9,874.94 | ZNA | CON | MH |
| A44580 |  | Testing & Inspection | 2d | 2026-11-02 | 2026-11-04 | A44560 |  |  |  | 5.9d | 40d | ICKMO1-cost unite [2194.43 $]; labor [1200 h]; Physical Units [18908.1 h] | 2,194.43 |  | ZNA | CON |  |
| A44590 |  | Backfilling & Compaction | 4d | 2026-12-21 | 2026-12-26 | A44580, A44570, A44540 |  |  |  | -34.1d | 56d | ICKMO1-cost unite [4388.86 $]; Roller compactor [200 h]; Physical Units [37816.2 h] | 4,388.86 |  | ZNA | CON |  |
|  | MH-2.15.0 / MH-2.15.1 | **MH-2.15.0 / MH-2.15.1** |  | 2026-06-04 | 2027-03-01 |  |  |  |  |  |  |  |  |  |  |  |  |
| A44600 |  | Excavation | 4d | 2026-06-04 A | 2026-07-05 A | A44550, A1190 | 100% | 2027-03-03 | 2027-03-08 |  |  | ICKMO1-cost unite [3291.64 $]; Excavator [200 h]; Physical Units [28362.1 h] | 3,291.64 | 3,291.64 | ZNA | CON |  |
| A44610 |  | Pipe Laying | 8d | 2026-06-04 A | 2026-07-05 A | A44600 | 100% | 2026-10-19 | 2026-10-28 |  |  | ICKMO1-cost unite [2194.43 $]; boom truck [200 h]; labor [1200 h]; Sewage Network Circular pipes (GRP) [63.28]; Physical Units [18908.1 h] | 2,194.43 | 2,194.43 | ZNA | CON | LAY |
| A44620 |  | Install Manhole | 4d | 2026-06-04 A | 2026-09-30 A | A44600 | 100% | 2026-10-26 | 2026-10-31 |  |  | ICKMO1-cost unite [9874.94 $]; boom truck [200 h]; labor [1200 h]; Physical Units [85086.6 h] | 9,874.94 | 9,874.94 | ZNA | CON | MH |
| A44640 |  | Backfilling & Compaction | 4d | 2026-06-04 A | 2026-09-30 A | A44630, A44620, A44590 | 100% | 2026-12-19 | 2026-12-23 |  |  | ICKMO1-cost unite [4388.86 $]; Roller compactor [200 h]; Physical Units [37816.2 h] | 4,388.86 | 4,388.86 | ZNA | CON |  |
| A44630 |  | Testing & Inspection | 102d | 2026-11-02 | 2027-03-01 | A44610 |  |  |  | -90.1d | 0d | ICKMO1-cost unite [2194.43 $]; labor [1200 h]; Physical Units [18908.1 h] | 2,194.43 |  | ZNA | CON |  |

| ID | WBS | Activity | Duration | Start | Finish | Predecessors | Complete | Planned start | Planned finish | Total float | Free float | Resources | Cost | Actual cost | ALKHARJ INDUSTERIAL AREA - PROJECT ZONES | ALKHARJ INDUSTERIAL AREA - DECEPLINS | ALKHARJ INDUSTERIAL AREA - Wet networks |
| --- | --- | --- | --- | --- | --- | --- | --- | --- | --- | --- | --- | --- | --- | --- | --- | --- | --- |
|  | MH-2.16 / MH-2.17 | **MH-2.16 / MH-2.17** |  | 2026-06-04 | 2027-03-01 |  |  |  |  |  |  |  |  |  |  |  |  |
| A44650 |  | Excavation | 4d | 2026-06-04 A | 2026-07-05 A | A44600, A1190 | 100% | 2027-03-08 | 2027-03-13 |  |  | ICKMO1-cost unite [3291.64 $]; Excavator [200 h]; Physical Units [28362.1 h] | 3,291.64 | 3,291.64 | ZNA | CON |  |
| A44660 |  | Pipe Laying | 8d | 2026-06-04 A | 2026-07-05 A | A44650 | 100% | 2026-10-19 | 2026-10-28 |  |  | ICKMO1-cost unite [2194.43 $]; boom truck [200 h]; labor [1200 h]; Sewage Network Circular pipes (GRP) [63.28]; Physical Units [18908.1 h] | 2,194.43 | 2,194.43 | ZNA | CON | LAY |
| A44670 |  | Install Manhole | 4d | 2026-06-04 A | 2026-09-30 A | A44650 | 100% | 2026-10-26 | 2026-10-31 |  |  | ICKMO1-cost unite [9874.94 $]; boom truck [200 h]; labor [1200 h]; Physical Units [85086.6 h] | 9,874.94 | 9,874.94 | ZNA | CON | MH |
| A44690 |  | Backfilling & Compaction | 4d | 2026-06-04 A | 2026-09-30 A | A44680, A44670, A44640 | 100% | 2026-12-23 | 2026-12-28 |  |  | ICKMO1-cost unite [4388.86 $]; Roller compactor [200 h]; Physical Units [37816.2 h] | 4,388.86 | 4,388.86 | ZNA | CON |  |
| A44680 |  | Testing & Inspection | 102d | 2026-11-02 | 2027-03-01 | A44660 |  |  |  | -90.1d | 0d | ICKMO1-cost unite [2194.43 $]; labor [1200 h]; Physical Units [18908.1 h] | 2,194.43 |  | ZNA | CON |  |
|  | MH-2.16.0 / MH-2.16.1 | **MH-2.16.0 / MH-2.16.1** |  | 2026-06-04 | 2026-11-04 |  |  |  |  |  |  |  |  |  |  |  |  |
| A44700 |  | Excavation | 4d | 2026-06-04 A | 2026-07-05 A | A44650, A1190 | 100% | 2027-03-13 | 2027-03-17 |  |  | ICKMO1-cost unite [3291.64 $]; Excavator [200 h]; Physical Units [28362.1 h] | 3,291.64 | 3,291.64 | ZNA | CON |  |
| A44710 |  | Pipe Laying | 8d | 2026-06-04 A | 2026-07-05 A | A44700 | 100% | 2026-10-19 | 2026-10-28 |  |  | ICKMO1-cost unite [2194.43 $]; boom truck [200 h]; labor [1200 h]; Sewage Network Circular pipes (GRP) [63.28]; Physical Units [18908.1 h] | 2,194.43 | 2,194.43 | ZNA | CON | LAY |
| A44720 |  | Install Manhole | 4d | 2026-06-04 A | 2026-09-30 A | A44700, A11080 | 100% | 2026-10-26 | 2026-10-31 |  |  | ICKMO1-cost unite [9874.94 $]; boom truck [200 h]; labor [1200 h]; Physical Units [85086.6 h] | 9,874.94 | 9,874.94 | ZNA | CON | MH |
| A44740 |  | Backfilling & Compaction | 4d | 2026-06-04 A | 2026-09-30 A | A44730, A44720, A44690 | 100% | 2026-12-28 | 2027-01-02 |  |  | ICKMO1-cost unite [4388.86 $]; Roller compactor [200 h]; Physical Units [37816.2 h] | 4,388.86 | 4,388.86 | ZNA | CON |  |
| A44730 |  | Testing & Inspection | 2d | 2026-11-02 | 2026-11-04 | A44710 |  |  |  | 9.9d | 100d | ICKMO1-cost unite [2194.43 $]; labor [1200 h]; Physical Units [18908.1 h] | 2,194.43 |  | ZNA | CON |  |
|  | LR 06 | **LR 06** |  | 2026-06-04 | 2026-11-23 |  |  |  |  |  |  |  |  |  |  |  |  |
|  | MH-2.8.0 / MH-2.8.1 | **MH-2.8.0 / MH-2.8.1** |  | 2026-06-04 | 2026-07-05 |  |  |  |  |  |  |  |  |  |  |  |  |
| A44750 |  | Excavation | 4d | 2026-06-04 A | 2026-07-05 A | A71170, A1190 | 100% | 2027-01-24 | 2027-01-28 |  |  | ICKMO1-cost unite [3330.01 $]; Excavator [200 h]; Physical Units [28692.7 h] | 3,330.01 | 3,330.01 | ZNA | CON |  |
| A44760 |  | Pipe Laying | 8d | 2026-06-04 A | 2026-07-05 A | A44750 | 100% | 2027-01-28 | 2027-02-07 |  |  | ICKMO1-cost unite [2220 $]; boom truck [200 h]; labor [1200 h]; Sewage Network Circular pipes (GRP) [63.28]; Physical Units [19128.4 h] | 2,220 | 2,220 | ZNA | CON | LAY |
| A44770 |  | Install Manhole | 4d | 2026-06-04 A | 2026-07-05 A | A44750 | 100% | 2027-01-28 | 2027-02-02 |  |  | ICKMO1-cost unite [9990.03 $]; boom truck [200 h]; labor [1200 h]; Physical Units [86078.2 h] | 9,990.03 | 9,990.03 | ZNA | CON | MH |
| A44780 |  | Testing & Inspection | 2d | 2026-06-04 A | 2026-07-05 A | A44760 | 100% | 2027-02-07 | 2027-02-09 |  |  | ICKMO1-cost unite [2220 $]; labor [1200 h]; Physical Units [19128.4 h] | 2,220 | 2,220 | ZNA | CON |  |
| A44790 |  | Backfilling & Compaction | 4d | 2026-06-04 A | 2026-07-05 A | A44780, A44770 | 100% | 2027-02-09 | 2027-02-14 |  |  | ICKMO1-cost unite [4440.02 $]; Roller compactor [200 h]; Physical Units [38257.1 h] | 4,440.02 | 4,440.02 | ZNA | CON |  |
|  | MH-2.8.1 / MH-2.8.2 | **MH-2.8.1 / MH-2.8.2** |  | 2026-06-04 | 2026-07-05 |  |  |  |  |  |  |  |  |  |  |  |  |
| A44800 |  | Excavation | 4d | 2026-06-04 A | 2026-07-05 A | A44750, A1190 | 100% | 2027-01-28 | 2027-02-02 |  |  | ICKMO1-cost unite [3330.01 $]; Excavator [200 h]; Physical Units [28692.7 h] | 3,330.01 | 3,330.01 | ZNA | CON |  |
| A44810 |  | Pipe Laying | 8d | 2026-06-04 A | 2026-07-05 A | A44800 | 100% | 2027-02-02 | 2027-02-11 |  |  | ICKMO1-cost unite [2220 $]; boom truck [200 h]; labor [1200 h]; Sewage Network Circular pipes (GRP) [63.28]; Physical Units [19128.4 h] | 2,220 | 2,220 | ZNA | CON | LAY |
| A44820 |  | Install Manhole | 4d | 2026-06-04 A | 2026-07-05 A | A44800 | 100% | 2027-02-02 | 2027-02-07 |  |  | ICKMO1-cost unite [9990.03 $]; boom truck [200 h]; labor [1200 h]; Physical Units [86078.2 h] | 9,990.03 | 9,990.03 | ZNA | CON | MH |
| A44830 |  | Testing & Inspection | 2d | 2026-06-04 A | 2026-07-05 A | A44810 | 100% | 2027-02-11 | 2027-02-14 |  |  | ICKMO1-cost unite [2220 $]; labor [1200 h]; Physical Units [19128.4 h] | 2,220 | 2,220 | ZNA | CON |  |
| A44840 |  | Backfilling & Compaction | 4d | 2026-06-04 A | 2026-07-05 A | A44830, A44820, A44790 | 100% | 2027-02-14 | 2027-02-18 |  |  | ICKMO1-cost unite [4440.02 $]; Roller compactor [200 h]; Physical Units [38257.1 h] | 4,440.02 | 4,440.02 | ZNA | CON |  |

| ID | WBS | Activity | Duration | Start | Finish | Predecessors | Complete | Planned start | Planned finish | Total float | Free float | Resources | Cost | Actual cost | ALKHARJ INDUSTERIAL AREA - PROJECT ZONES | ALKHARJ INDUSTERIAL AREA - DECEPLINS | ALKHARJ INDUSTERIAL AREA - Wet networks |
| --- | --- | --- | --- | --- | --- | --- | --- | --- | --- | --- | --- | --- | --- | --- | --- | --- | --- |
|  | MH-2.8.1.0 / MH-2.8.1.1 | **MH-2.8.1.0 / MH-2.8.1.1** |  | 2026-06-04 | 2026-09-29 |  |  |  |  |  |  |  |  |  |  |  |  |
| A44850 |  | Excavation | 4d | 2026-06-04 A | 2026-07-05 A | A44800, A1190 | 100% | 2027-02-02 | 2027-02-07 |  |  | ICKMO1-cost unite [3330.01 $]; Excavator [200 h]; Physical Units [28692.7 h] | 3,330.01 | 3,330.01 | ZNA | CON |  |
| A44860 |  | Pipe Laying | 8d | 2026-09-13 A | 2026-09-29 A | A44850 | 100% | 2026-11-18 | 2026-11-28 |  |  | ICKMO1-cost unite [2220 $]; boom truck [200 h]; labor [1200 h]; Sewage Network Circular pipes (GRP) [63.28]; Physical Units [19128.4 h] | 2,220 | 2,220 | ZNA | CON | LAY |
| A44870 |  | Install Manhole | 4d | 2026-09-13 A | 2026-09-29 A | A44850 | 100% | 2026-11-18 | 2026-11-23 |  |  | ICKMO1-cost unite [9990.03 $]; boom truck [200 h]; labor [1200 h]; Physical Units [86078.2 h] | 9,990.03 | 9,990.03 | ZNA | CON | MH |
| A44880 |  | Testing & Inspection | 2d | 2026-09-13 A | 2026-09-29 A | A44860 | 100% | 2026-11-02 | 2026-11-04 |  |  | ICKMO1-cost unite [2220 $]; labor [1200 h]; Physical Units [19128.4 h] | 2,220 | 2,220 | ZNA | CON |  |
| A44890 |  | Backfilling & Compaction | 4d | 2026-09-13 A | 2026-09-29 A | A44880, A44870, A44840 | 100% | 2026-11-04 | 2026-11-09 |  |  | ICKMO1-cost unite [4440.02 $]; Roller compactor [200 h]; Physical Units [38257.1 h] | 4,440.02 | 4,440.02 | ZNA | CON |  |
|  | MH-2.8.2 / MH-2.8.3 | **MH-2.8.2 / MH-2.8.3** |  | 2026-06-04 | 2026-07-05 |  |  |  |  |  |  |  |  |  |  |  |  |
| A44900 |  | Excavation | 4d | 2026-06-04 A | 2026-07-05 A | A44850, A1190 | 100% | 2027-02-07 | 2027-02-11 |  |  | ICKMO1-cost unite [3330.01 $]; Excavator [200 h]; Physical Units [28692.7 h] | 3,330.01 | 3,330.01 | ZNA | CON |  |
| A44910 |  | Pipe Laying | 8d | 2026-06-04 A | 2026-07-05 A | A44900 | 100% | 2027-02-11 | 2027-02-21 |  |  | ICKMO1-cost unite [2220 $]; boom truck [200 h]; labor [1200 h]; Sewage Network Circular pipes (GRP) [63.28]; Physical Units [19128.4 h] | 2,220 | 2,220 | ZNA | CON | LAY |
| A44920 |  | Install Manhole | 4d | 2026-06-04 A | 2026-07-05 A | A44900 | 100% | 2027-02-11 | 2027-02-16 |  |  | ICKMO1-cost unite [9990.03 $]; boom truck [200 h]; labor [1200 h]; Physical Units [86078.2 h] | 9,990.03 | 9,990.03 | ZNA | CON | MH |
| A44930 |  | Testing & Inspection | 2d | 2026-06-04 A | 2026-07-05 A | A44910 | 100% | 2027-02-21 | 2027-02-23 |  |  | ICKMO1-cost unite [2220 $]; labor [1200 h]; Physical Units [19128.4 h] | 2,220 | 2,220 | ZNA | CON |  |
| A44940 |  | Backfilling & Compaction | 4d | 2026-06-04 A | 2026-07-05 A | A44930, A44920, A44890 | 100% | 2027-02-23 | 2027-02-28 |  |  | ICKMO1-cost unite [4440.02 $]; Roller compactor [200 h]; Physical Units [38257.1 h] | 4,440.02 | 4,440.02 | ZNA | CON |  |
|  | MH-2.8.2.0 / MH-2.8.2.1 | **MH-2.8.2.0 / MH-2.8.2.1** |  | 2026-06-04 | 2026-10-26 |  |  |  |  |  |  |  |  |  |  |  |  |
| A44950 |  | Excavation | 4d | 2026-06-04 A | 2026-07-05 A | A44900, A1190 | 100% | 2027-02-11 | 2027-02-16 |  |  | ICKMO1-cost unite [3330.01 $]; Excavator [200 h]; Physical Units [28692.7 h] | 3,330.01 | 3,330.01 | ZNA | CON |  |
| A44960 |  | Pipe Laying | 8d | 2026-10-10 | 2026-10-19 | A44950 |  |  |  | -79.3d | 0d | ICKMO1-cost unite [2220 $]; boom truck [200 h]; labor [1200 h]; Sewage Network Circular pipes (GRP) [63.28]; Physical Units [19128.4 h] | 2,220 |  | ZNA | CON | LAY |
| A44970 |  | Install Manhole | 4d | 2026-10-10 | 2026-10-14 | A44950 |  |  |  | -73.3d | 6d | ICKMO1-cost unite [9990.03 $]; boom truck [200 h]; labor [1200 h]; Physical Units [86078.2 h] | 9,990.03 |  | ZNA | CON | MH |
| A44980 |  | Testing & Inspection | 2d | 2026-10-19 | 2026-10-21 | A44960 |  |  |  | -79.3d | 0d | ICKMO1-cost unite [2220 $]; labor [1200 h]; Physical Units [19128.4 h] | 2,220 |  | ZNA | CON |  |
| A44990 |  | Backfilling & Compaction | 4d | 2026-10-21 | 2026-10-26 | A44980, A44970, A44940 |  |  |  | -79.3d | 0d | ICKMO1-cost unite [4440.02 $]; Roller compactor [200 h]; Physical Units [38257.1 h] | 4,440.02 |  | ZNA | CON |  |
|  | MH-2.8.3 / MH-2.8.4 | **MH-2.8.3 / MH-2.8.4** |  | 2026-06-04 | 2026-07-05 |  |  |  |  |  |  |  |  |  |  |  |  |
| A45000 |  | Excavation | 4d | 2026-06-04 A | 2026-07-05 A | A44950, A1190 | 100% | 2027-02-16 | 2027-02-21 |  |  | ICKMO1-cost unite [3330.01 $]; Excavator [200 h]; Physical Units [28692.7 h] | 3,330.01 | 3,330.01 | ZNA | CON |  |
| A45010 |  | Pipe Laying | 8d | 2026-06-04 A | 2026-07-05 A | A45000 | 100% | 2027-02-21 | 2027-03-02 |  |  | ICKMO1-cost unite [2220 $]; boom truck [200 h]; labor [1200 h]; Sewage Network Circular pipes (GRP) [63.28]; Physical Units [19128.4 h] | 2,220 | 2,220 | ZNA | CON | LAY |
| A45020 |  | Install Manhole | 4d | 2026-06-04 A | 2026-07-05 A | A45000 | 100% | 2027-02-21 | 2027-02-25 |  |  | ICKMO1-cost unite [9990.03 $]; boom truck [200 h]; labor [1200 h]; Physical Units [86078.2 h] | 9,990.03 | 9,990.03 | ZNA | CON | MH |
| A45030 |  | Testing & Inspection | 2d | 2026-06-04 A | 2026-07-05 A | A45010 | 100% | 2027-03-02 | 2027-03-04 |  |  | ICKMO1-cost unite [2220 $]; labor [1200 h]; Physical Units [19128.4 h] | 2,220 | 2,220 | ZNA | CON |  |
| A45040 |  | Backfilling & Compaction | 4d | 2026-06-04 A | 2026-07-05 A | A45030, A45020, A44990 | 100% | 2027-03-04 | 2027-03-09 |  |  | ICKMO1-cost unite [4440.02 $]; Roller compactor [200 h]; Physical Units [38257.1 h] | 4,440.02 | 4,440.02 | ZNA | CON |  |

| ID | WBS | Activity | Duration | Start | Finish | Predecessors | Complete | Planned start | Planned finish | Total float | Free float | Resources | Cost | Actual cost | ALKHARJ INDUSTERIAL AREA - PROJECT ZONES | ALKHARJ INDUSTERIAL AREA - DECEPLINS | ALKHARJ INDUSTERIAL AREA - Wet networks |
| --- | --- | --- | --- | --- | --- | --- | --- | --- | --- | --- | --- | --- | --- | --- | --- | --- | --- |
|  | MH-2.8.3.0 / MH-2.8.3.1 | **MH-2.8.3.0 / MH-2.8.3.1** |  | 2026-06-04 | 2026-10-31 |  |  |  |  |  |  |  |  |  |  |  |  |
| A45050 |  | Excavation | 4d | 2026-06-04 A | 2026-07-05 A | A45000, A1190 | 100% | 2027-02-21 | 2027-02-25 |  |  | ICKMO1-cost unite [3330.01 $]; Excavator [200 h]; Physical Units [28692.7 h] | 3,330.01 | 3,330.01 | ZNA | CON |  |
| A45060 |  | Pipe Laying | 8d | 2026-10-10 | 2026-10-19 | A45050 |  |  |  | -75.3d | 0d | ICKMO1-cost unite [2220 $]; boom truck [200 h]; labor [1200 h]; Sewage Network Circular pipes (GRP) [63.28]; Physical Units [19128.4 h] | 2,220 |  | ZNA | CON | LAY |
| A45070 |  | Install Manhole | 4d | 2026-10-10 | 2026-10-14 | A45050 |  |  |  | -69.3d | 10d | ICKMO1-cost unite [9990.03 $]; boom truck [200 h]; labor [1200 h]; Physical Units [86078.2 h] | 9,990.03 |  | ZNA | CON | MH |
| A45080 |  | Testing & Inspection | 2d | 2026-10-19 | 2026-10-21 | A45060 |  |  |  | -75.3d | 4d | ICKMO1-cost unite [2220 $]; labor [1200 h]; Physical Units [19128.4 h] | 2,220 |  | ZNA | CON |  |
| A45090 |  | Backfilling & Compaction | 4d | 2026-10-26 | 2026-10-31 | A45080, A45070, A45040 |  |  |  | -79.3d | 0d | ICKMO1-cost unite [4440.02 $]; Roller compactor [200 h]; Physical Units [38257.1 h] | 4,440.02 |  | ZNA | CON |  |
|  | MH-2.8.4 / MH-2.8.5 | **MH-2.8.4 / MH-2.8.5** |  | 2026-06-04 | 2026-11-04 |  |  |  |  |  |  |  |  |  |  |  |  |
| A45100 |  | Excavation | 4d | 2026-06-04 A | 2026-07-05 A | A45050, A1190 | 100% | 2027-02-25 | 2027-03-02 |  |  | ICKMO1-cost unite [3330.01 $]; Excavator [200 h]; Physical Units [28692.7 h] | 3,330.01 | 3,330.01 | ZNA | CON |  |
| A45110 |  | Pipe Laying | 8d | 2026-10-10 | 2026-10-19 | A45100 |  |  |  | -71.3d | 0d | ICKMO1-cost unite [2220 $]; boom truck [200 h]; labor [1200 h]; Sewage Network Circular pipes (GRP) [63.28]; Physical Units [19128.4 h] | 2,220 |  | ZNA | CON | LAY |
| A45120 |  | Install Manhole | 4d | 2026-10-10 | 2026-10-14 | A45100 |  |  |  | -65.3d | 14d | ICKMO1-cost unite [9990.03 $]; boom truck [200 h]; labor [1200 h]; Physical Units [86078.2 h] | 9,990.03 |  | ZNA | CON | MH |
| A45130 |  | Testing & Inspection | 2d | 2026-10-19 | 2026-10-21 | A45110 |  |  |  | -71.3d | 8d | ICKMO1-cost unite [2220 $]; labor [1200 h]; Physical Units [19128.4 h] | 2,220 |  | ZNA | CON |  |
| A45140 |  | Backfilling & Compaction | 4d | 2026-10-31 | 2026-11-04 | A45130, A45120, A45090 |  |  |  | -79.3d | 0d | ICKMO1-cost unite [4440.02 $]; Roller compactor [200 h]; Physical Units [38257.1 h] | 4,440.02 |  | ZNA | CON |  |
|  | MH-2.8.4.0 / MH-2.8.4.1 | **MH-2.8.4.0 / MH-2.8.4.1** |  | 2026-06-04 | 2026-11-09 |  |  |  |  |  |  |  |  |  |  |  |  |
| A45150 |  | Excavation | 4d | 2026-06-04 A | 2026-07-05 A | A45100, A1190 | 100% | 2027-03-02 | 2027-03-07 |  |  | ICKMO1-cost unite [3330.01 $]; Excavator [200 h]; Physical Units [28692.7 h] | 3,330.01 | 3,330.01 | ZNA | CON |  |
| A45160 |  | Pipe Laying | 4d | 2026-10-10 | 2026-10-14 | A45150 |  |  |  | -63.3d | 0d | ICKMO1-cost unite [2220 $]; boom truck [200 h]; labor [1200 h]; Sewage Network Circular pipes (GRP) [63.28]; Physical Units [19128.4 h] | 2,220 |  | ZNA | CON | LAY |
| A45170 |  | Install Manhole | 4d | 2026-10-10 | 2026-10-14 | A45150 |  |  |  | -61.3d | 18d | ICKMO1-cost unite [9990.03 $]; boom truck [200 h]; labor [1200 h]; Physical Units [86078.2 h] | 9,990.03 |  | ZNA | CON | MH |
| A45180 |  | Testing & Inspection | 2d | 2026-10-14 | 2026-10-17 | A45160 |  |  |  | -63.3d | 16d | ICKMO1-cost unite [2220 $]; labor [1200 h]; Physical Units [19128.4 h] | 2,220 |  | ZNA | CON |  |
| A45190 |  | Backfilling & Compaction | 4d | 2026-11-04 | 2026-11-09 | A45180, A45170, A45140 |  |  |  | -79.3d | 0d | ICKMO1-cost unite [4440.02 $]; Roller compactor [200 h]; Physical Units [38257.1 h] | 4,440.02 |  | ZNA | CON |  |
|  | MH-2.8.5 / MH-2.8.6 | **MH-2.8.5 / MH-2.8.6** |  | 2026-06-04 | 2026-11-14 |  |  |  |  |  |  |  |  |  |  |  |  |
| A45200 |  | Excavation | 4d | 2026-06-04 A | 2026-07-05 A | A45150, A1190 | 100% | 2027-03-07 | 2027-03-11 |  |  | ICKMO1-cost unite [3330.01 $]; Excavator [200 h]; Physical Units [28692.7 h] | 3,330.01 | 3,330.01 | ZNA | CON |  |
| A45210 |  | Pipe Laying | 8d | 2026-10-10 | 2026-10-19 | A45200 |  |  |  | -63.3d | 0d | ICKMO1-cost unite [2220 $]; boom truck [200 h]; labor [1200 h]; Sewage Network Circular pipes (GRP) [63.28]; Physical Units [19128.4 h] | 2,220 |  | ZNA | CON | LAY |
| A45220 |  | Install Manhole | 4d | 2026-10-10 | 2026-10-14 | A45200 |  |  |  | -57.3d | 22d | ICKMO1-cost unite [9990.03 $]; boom truck [200 h]; labor [1200 h]; Physical Units [86078.2 h] | 9,990.03 |  | ZNA | CON | MH |
| A45230 |  | Testing & Inspection | 2d | 2026-10-19 | 2026-10-21 | A45210 |  |  |  | -63.3d | 16d | ICKMO1-cost unite [2220 $]; labor [1200 h]; Physical Units [19128.4 h] | 2,220 |  | ZNA | CON |  |
| A45240 |  | Backfilling & Compaction | 4d | 2026-11-09 | 2026-11-14 | A45230, A45220, A45190 |  |  |  | -79.3d | 0d | ICKMO1-cost unite [4440.02 $]; Roller compactor [200 h]; Physical Units [38257.1 h] | 4,440.02 |  | ZNA | CON |  |

| ID | WBS | Activity | Duration | Start | Finish | Predecessors | Complete | Planned start | Planned finish | Total float | Free float | Resources | Cost | Actual cost | ALKHARJ INDUSTERIAL AREA - PROJECT ZONES | ALKHARJ INDUSTERIAL AREA - DECEPLINS | ALKHARJ INDUSTERIAL AREA - Wet networks |
| --- | --- | --- | --- | --- | --- | --- | --- | --- | --- | --- | --- | --- | --- | --- | --- | --- | --- |
|  | MH-2.8.5.0 / MH-2.8.5.1 | **MH-2.8.5.0 / MH-2.8.5.1** |  | 2026-06-04 | 2026-11-18 |  |  |  |  |  |  |  |  |  |  |  |  |
| A45250 |  | Excavation | 4d | 2026-06-04 A | 2026-07-05 A | A45200, A1190 | 100% | 2027-03-11 | 2027-03-16 |  |  | ICKMO1-cost unite [3330.01 $]; Excavator [200 h]; Physical Units [28692.7 h] | 3,330.01 | 3,330.01 | ZNA | CON |  |
| A45260 |  | Pipe Laying | 8d | 2026-10-10 | 2026-10-19 | A45250 |  |  |  | -59.3d | 0d | ICKMO1-cost unite [2220 $]; boom truck [200 h]; labor [1200 h]; Sewage Network Circular pipes (GRP) [63.28]; Physical Units [19128.4 h] | 2,220 |  | ZNA | CON | LAY |
| A45270 |  | Install Manhole | 4d | 2026-10-10 | 2026-10-14 | A45250 |  |  |  | -53.3d | 26d | ICKMO1-cost unite [9990.03 $]; boom truck [200 h]; labor [1200 h]; Physical Units [86078.2 h] | 9,990.03 |  | ZNA | CON | MH |
| A45280 |  | Testing & Inspection | 2d | 2026-10-19 | 2026-10-21 | A45260 |  |  |  | -59.3d | 20d | ICKMO1-cost unite [2220 $]; labor [1200 h]; Physical Units [19128.4 h] | 2,220 |  | ZNA | CON |  |
| A45290 |  | Backfilling & Compaction | 4d | 2026-11-14 | 2026-11-18 | A45280, A45270, A45240 |  |  |  | -79.3d | 0d | ICKMO1-cost unite [4440.02 $]; Roller compactor [200 h]; Physical Units [38257.1 h] | 4,440.02 |  | ZNA | CON |  |
|  | MH-2.8.6 / MH-2.8.7 | **MH-2.8.6 / MH-2.8.7** |  | 2026-06-04 | 2026-07-05 |  |  |  |  |  |  |  |  |  |  |  |  |
| A45300 |  | Excavation | 4d | 2026-06-04 A | 2026-07-05 A | A45250, A1190 | 100% | 2027-03-16 | 2027-03-21 |  |  | ICKMO1-cost unite [3330.01 $]; Excavator [200 h]; Physical Units [28692.7 h] | 3,330.01 | 3,330.01 | ZNA | CON |  |
| A45310 |  | Pipe Laying | 8d | 2026-06-04 A | 2026-07-05 A | A45300 | 100% | 2027-03-21 | 2027-03-30 |  |  | ICKMO1-cost unite [2220 $]; boom truck [200 h]; labor [1200 h]; Sewage Network Circular pipes (GRP) [63.28]; Physical Units [19128.4 h] | 2,220 | 2,220 | ZNA | CON | LAY |
| A45320 |  | Install Manhole | 4d | 2026-06-04 A | 2026-07-05 A | A45300 | 100% | 2027-03-21 | 2027-03-25 |  |  | ICKMO1-cost unite [9990.03 $]; boom truck [200 h]; labor [1200 h]; Physical Units [86078.2 h] | 9,990.03 | 9,990.03 | ZNA | CON | MH |
| A45330 |  | Testing & Inspection | 2d | 2026-06-04 A | 2026-07-05 A | A45310 | 100% | 2027-03-30 | 2027-04-01 |  |  | ICKMO1-cost unite [2220 $]; labor [1200 h]; Physical Units [19128.4 h] | 2,220 | 2,220 | ZNA | CON |  |
| A45340 |  | Backfilling & Compaction | 4d | 2026-06-04 A | 2026-07-05 A | A45330, A45320, A45290 | 100% | 2027-04-01 | 2027-04-06 |  |  | ICKMO1-cost unite [4440.02 $]; Roller compactor [200 h]; Physical Units [38257.1 h] | 4,440.02 | 4,440.02 | ZNA | CON |  |
|  | MH-2.8.6.0 / MH-2.8.6.1 | **MH-2.8.6.0 / MH-2.8.6.1** |  | 2026-06-04 | 2026-11-23 |  |  |  |  |  |  |  |  |  |  |  |  |
| A45350 |  | Excavation | 4d | 2026-06-04 A | 2026-07-05 A | A45300, A1190 | 100% | 2027-03-21 | 2027-03-25 |  |  | ICKMO1-cost unite [3330.01 $]; Excavator [200 h]; Physical Units [28692.7 h] | 3,330.01 | 3,330.01 | ZNA | CON |  |
| A45360 |  | Pipe Laying | 8d | 2026-10-10 | 2026-10-19 | A45350 |  |  |  | -55.3d | 0d | ICKMO1-cost unite [2220 $]; boom truck [200 h]; labor [1200 h]; Sewage Network Circular pipes (GRP) [63.28]; Physical Units [19128.4 h] | 2,220 |  | ZNA | CON | LAY |
| A45370 |  | Install Manhole | 4d | 2026-10-10 | 2026-10-14 | A45350 |  |  |  | -49.3d | 30d | ICKMO1-cost unite [9990.03 $]; boom truck [200 h]; labor [1200 h]; Physical Units [86078.2 h] | 9,990.03 |  | ZNA | CON | MH |
| A45380 |  | Testing & Inspection | 2d | 2026-10-19 | 2026-10-21 | A45360 |  |  |  | -55.3d | 24d | ICKMO1-cost unite [2220 $]; labor [1200 h]; Physical Units [19128.4 h] | 2,220 |  | ZNA | CON |  |
| A45390 |  | Backfilling & Compaction | 4d | 2026-11-18 | 2026-11-23 | A45380, A45370, A45340 |  |  |  | -79.3d | 0d | ICKMO1-cost unite [4440.02 $]; Roller compactor [200 h]; Physical Units [38257.1 h] | 4,440.02 |  | ZNA | CON |  |
|  | LR 07 | **LR 07** |  | 2026-06-04 | 2026-08-05 |  |  |  |  |  |  |  |  |  |  |  |  |
|  | MH-1.12.3.3.0 / MH-1.12.3.3.0 | **MH-1.12.3.3.0 / MH-1.12.3.3.0** |  | 2026-06-04 | 2026-07-05 |  |  |  |  |  |  |  |  |  |  |  |  |
| A45400 |  | Excavation | 4d | 2026-06-04 A | 2026-07-05 A | A70820, A1190 | 100% | 2026-12-30 | 2027-01-04 |  |  | ICKMO1-cost unite [3374.77 $]; Excavator [200 h]; Physical Units [29078.4 h] | 3,374.77 | 3,374.77 | ZNA | CON |  |
| A45410 |  | Pipe Laying | 8d | 2026-06-04 A | 2026-07-05 A | A45400 | 100% | 2027-01-04 | 2027-01-13 |  |  | ICKMO1-cost unite [2249.85 $]; boom truck [200 h]; labor [1200 h]; Sewage Network Circular pipes (GRP) [63.28]; Physical Units [19385.6 h] | 2,249.85 | 2,249.85 | ZNA | CON | LAY |
| A45420 |  | Install Manhole | 4d | 2026-06-04 A | 2026-07-05 A | A45400 | 100% | 2027-01-04 | 2027-01-09 |  |  | ICKMO1-cost unite [10124.3 $]; boom truck [200 h]; labor [1200 h]; Physical Units [87235.2 h] | 10,124.31 | 10,124.31 | ZNA | CON | MH |
| A45430 |  | Testing & Inspection | 2d | 2026-06-04 A | 2026-07-05 A | A45410 | 100% | 2027-01-13 | 2027-01-16 |  |  | ICKMO1-cost unite [2249.85 $]; labor [1200 h]; Physical Units [19385.6 h] | 2,249.85 | 2,249.85 | ZNA | CON |  |
| A45440 |  | Backfilling & Compaction | 4d | 2026-06-04 A | 2026-07-05 A | A45430, A45420 | 100% | 2027-01-16 | 2027-01-20 |  |  | ICKMO1-cost unite [4499.69 $]; Roller compactor [200 h]; Physical Units [38771.2 h] | 4,499.69 | 4,499.69 | ZNA | CON |  |

| ID | WBS | Activity | Duration | Start | Finish | Predecessors | Complete | Planned start | Planned finish | Resources | Cost | Actual cost | ALKHARJ INDUSTERIAL AREA - PROJECT ZONES | ALKHARJ INDUSTERIAL AREA - DECEPLINS | ALKHARJ INDUSTERIAL AREA - Wet networks |
| --- | --- | --- | --- | --- | --- | --- | --- | --- | --- | --- | --- | --- | --- | --- | --- |
|  | MH-1.12.3.2 / MH-1.12.3.3 | **MH-1.12.3.2 / MH-1.12.3.3** |  | 2026-06-04 | 2026-07-05 |  |  |  |  |  |  |  |  |  |  |
| A45450 |  | Excavation | 4d | 2026-06-04 A | 2026-07-05 A | A45400, A1190 | 100% | 2027-01-04 | 2027-01-09 | ICKMO1-cost unite [3374.77 $]; Excavator [200 h]; Physical Units [29078.4 h] | 3,374.77 | 3,374.77 | ZNA | CON |  |
| A45460 |  | Pipe Laying | 8d | 2026-06-04 A | 2026-07-05 A | A45450 | 100% | 2027-01-09 | 2027-01-18 | ICKMO1-cost unite [2249.85 $]; boom truck [200 h]; labor [1200 h]; Sewage Network Circular pipes (GRP) [63.28]; Physical Units [19385.6 h] | 2,249.85 | 2,249.85 | ZNA | CON | LAY |
| A45470 |  | Install Manhole | 4d | 2026-06-04 A | 2026-07-05 A | A45450 | 100% | 2027-01-09 | 2027-01-13 | ICKMO1-cost unite [10124.3 $]; boom truck [200 h]; labor [1200 h]; Physical Units [87235.2 h] | 10,124.31 | 10,124.31 | ZNA | CON | MH |
| A45480 |  | Testing & Inspection | 2d | 2026-06-04 A | 2026-07-05 A | A45460 | 100% | 2027-01-18 | 2027-01-20 | ICKMO1-cost unite [2249.85 $]; labor [1200 h]; Physical Units [19385.6 h] | 2,249.85 | 2,249.85 | ZNA | CON |  |
| A45490 |  | Backfilling & Compaction | 4d | 2026-06-04 A | 2026-07-05 A | A45480, A45470, A45440 | 100% | 2027-01-20 | 2027-01-25 | ICKMO1-cost unite [4499.69 $]; Roller compactor [200 h]; Physical Units [38771.2 h] | 4,499.69 | 4,499.69 | ZNA | CON |  |
|  | MH-1.12.3.3 / MH-1.12.3.4 | **MH-1.12.3.3 / MH-1.12.3.4** |  | 2026-06-04 | 2026-07-05 |  |  |  |  |  |  |  |  |  |  |
| A45500 |  | Excavation | 4d | 2026-06-04 A | 2026-07-05 A | A45450, A1190 | 100% | 2027-01-09 | 2027-01-13 | ICKMO1-cost unite [3374.77 $]; Excavator [200 h]; Physical Units [29078.4 h] | 3,374.77 | 3,374.77 | ZNA | CON |  |
| A45510 |  | Pipe Laying | 8d | 2026-06-04 A | 2026-07-05 A | A45500 | 100% | 2027-01-13 | 2027-01-23 | ICKMO1-cost unite [2249.85 $]; boom truck [200 h]; labor [1200 h]; Sewage Network Circular pipes (GRP) [63.28]; Physical Units [19385.6 h] | 2,249.85 | 2,249.85 | ZNA | CON | LAY |
| A45520 |  | Install Manhole | 4d | 2026-06-04 A | 2026-07-05 A | A45500 | 100% | 2027-01-13 | 2027-01-18 | ICKMO1-cost unite [10124.3 $]; boom truck [200 h]; labor [1200 h]; Physical Units [87235.2 h] | 10,124.31 | 10,124.31 | ZNA | CON | MH |
| A45530 |  | Testing & Inspection | 2d | 2026-06-04 A | 2026-07-05 A | A45510 | 100% | 2027-01-23 | 2027-01-25 | ICKMO1-cost unite [2249.85 $]; labor [1200 h]; Physical Units [19385.6 h] | 2,249.85 | 2,249.85 | ZNA | CON |  |
| A45540 |  | Backfilling & Compaction | 4d | 2026-06-04 A | 2026-07-05 A | A45530, A45520, A45490 | 100% | 2027-01-25 | 2027-01-30 | ICKMO1-cost unite [4499.69 $]; Roller compactor [200 h]; Physical Units [38771.2 h] | 4,499.69 | 4,499.69 | ZNA | CON |  |
|  | MH-1.12.3.4 / MH-1.12.3.5 | **MH-1.12.3.4 / MH-1.12.3.5** |  | 2026-06-04 | 2026-07-05 |  |  |  |  |  |  |  |  |  |  |
| A45900 |  | Excavation | 4d | 2026-06-04 A | 2026-07-05 A | A45850, A1190 | 100% | 2027-02-15 | 2027-02-20 | ICKMO1-cost unite [3374.77 $]; Excavator [200 h]; Physical Units [29078.4 h] | 3,374.77 | 3,374.77 | ZNA | CON |  |
| A45910 |  | Pipe Laying | 8d | 2026-06-04 A | 2026-07-05 A | A45900 | 100% | 2027-02-20 | 2027-03-01 | ICKMO1-cost unite [2249.85 $]; boom truck [200 h]; labor [1200 h]; Sewage Network Circular pipes (GRP) [63.28]; Physical Units [19385.6 h] | 2,249.85 | 2,249.85 | ZNA | CON | LAY |
| A45920 |  | Install Manhole | 4d | 2026-06-04 A | 2026-07-05 A | A45900 | 100% | 2027-02-20 | 2027-02-24 | ICKMO1-cost unite [10124.3 $]; boom truck [200 h]; labor [1200 h]; Physical Units [87235.2 h] | 10,124.31 | 10,124.31 | ZNA | CON | MH |
| A45930 |  | Testing & Inspection | 2d | 2026-06-04 A | 2026-07-05 A | A45910 | 100% | 2027-03-01 | 2027-03-03 | ICKMO1-cost unite [2249.85 $]; labor [1200 h]; Physical Units [19385.6 h] | 2,249.85 | 2,249.85 | ZNA | CON |  |
| A45940 |  | Backfilling & Compaction | 4d | 2026-06-04 A | 2026-07-05 A | A45930, A45920, A45890 | 100% | 2027-03-03 | 2027-03-08 | ICKMO1-cost unite [4499.69 $]; Roller compactor [200 h]; Physical Units [38771.2 h] | 4,499.69 | 4,499.69 | ZNA | CON |  |
|  | MH-2.6.1 / MH-2.6.2 | **MH-2.6.1 / MH-2.6.2** |  | 2026-06-04 | 2026-07-05 |  |  |  |  |  |  |  |  |  |  |
| A45550 |  | Excavation | 4d | 2026-06-04 A | 2026-07-05 A | A45500, A1190 | 100% | 2027-01-13 | 2027-01-18 | ICKMO1-cost unite [3374.77 $]; Excavator [200 h]; Physical Units [29078.4 h] | 3,374.77 | 3,374.77 | ZNA | CON |  |
| A45560 |  | Pipe Laying | 8d | 2026-06-04 A | 2026-07-05 A | A45550 | 100% | 2027-01-18 | 2027-01-27 | ICKMO1-cost unite [2249.85 $]; boom truck [200 h]; labor [1200 h]; Sewage Network Circular pipes (GRP) [63.28]; Physical Units [19385.6 h] | 2,249.85 | 2,249.85 | ZNA | CON | LAY |
| A45570 |  | Install Manhole | 4d | 2026-06-04 A | 2026-07-05 A | A45550 | 100% | 2027-01-18 | 2027-01-23 | ICKMO1-cost unite [10124.3 $]; boom truck [200 h]; labor [1200 h]; Physical Units [87235.2 h] | 10,124.31 | 10,124.31 | ZNA | CON | MH |
| A45580 |  | Testing & Inspection | 2d | 2026-06-04 A | 2026-07-05 A | A45560 | 100% | 2027-01-27 | 2027-01-30 | ICKMO1-cost unite [2249.85 $]; labor [1200 h]; Physical Units [19385.6 h] | 2,249.85 | 2,249.85 | ZNA | CON |  |
| A45590 |  | Backfilling & Compaction | 4d | 2026-06-04 A | 2026-07-05 A | A45580, A45570, A45540 | 100% | 2027-01-30 | 2027-02-03 | ICKMO1-cost unite [4499.69 $]; Roller compactor [200 h]; Physical Units [38771.2 h] | 4,499.69 | 4,499.69 | ZNA | CON |  |

| ID | WBS | Activity | Duration | Start | Finish | Predecessors | Complete | Planned start | Planned finish | Resources | Cost | Actual cost | ALKHARJ INDUSTERIAL AREA - PROJECT ZONES | ALKHARJ INDUSTERIAL AREA - DECEPLINS | ALKHARJ INDUSTERIAL AREA - Wet networks |
| --- | --- | --- | --- | --- | --- | --- | --- | --- | --- | --- | --- | --- | --- | --- | --- |
|  | MH-2.6.1.0 / MH-2.6.1.1 | **MH-2.6.1.0 / MH-2.6.1.1** |  | 2026-06-04 | 2026-07-05 |  |  |  |  |  |  |  |  |  |  |
| A45600 |  | Excavation | 4d | 2026-06-04 A | 2026-07-05 A | A45550, A1190 | 100% | 2027-01-18 | 2027-01-23 | ICKMO1-cost unite [3374.77 $]; Excavator [200 h]; Physical Units [29078.4 h] | 3,374.77 | 3,374.77 | ZNA | CON |  |
| A45610 |  | Pipe Laying | 8d | 2026-06-04 A | 2026-07-05 A | A45600 | 100% | 2027-01-23 | 2027-02-01 | ICKMO1-cost unite [2249.85 $]; boom truck [200 h]; labor [1200 h]; Sewage Network Circular pipes (GRP) [63.28]; Physical Units [19385.6 h] | 2,249.85 | 2,249.85 | ZNA | CON | LAY |
| A45620 |  | Install Manhole | 4d | 2026-06-04 A | 2026-07-05 A | A45600 | 100% | 2027-01-23 | 2027-01-27 | ICKMO1-cost unite [10124.3 $]; boom truck [200 h]; labor [1200 h]; Physical Units [87235.2 h] | 10,124.31 | 10,124.31 | ZNA | CON | MH |
| A45630 |  | Testing & Inspection | 2d | 2026-06-04 A | 2026-07-05 A | A45610 | 100% | 2027-02-01 | 2027-02-03 | ICKMO1-cost unite [2249.85 $]; labor [1200 h]; Physical Units [19385.6 h] | 2,249.85 | 2,249.85 | ZNA | CON |  |
| A45640 |  | Backfilling & Compaction | 4d | 2026-06-04 A | 2026-07-05 A | A45630, A45620, A45590 | 100% | 2027-02-03 | 2027-02-08 | ICKMO1-cost unite [4499.69 $]; Roller compactor [200 h]; Physical Units [38771.2 h] | 4,499.69 | 4,499.69 | ZNA | CON |  |
|  | MH-2.6.2 / MH-2.6.3 | **MH-2.6.2 / MH-2.6.3** |  | 2026-06-04 | 2026-07-05 |  |  |  |  |  |  |  |  |  |  |
| A45650 |  | Excavation | 4d | 2026-06-04 A | 2026-07-05 A | A45600, A1190 | 100% | 2027-01-23 | 2027-01-27 | ICKMO1-cost unite [3374.77 $]; Excavator [200 h]; Physical Units [29078.4 h] | 3,374.77 | 3,374.77 | ZNA | CON |  |
| A45660 |  | Pipe Laying | 8d | 2026-06-04 A | 2026-07-05 A | A45650 | 100% | 2027-01-27 | 2027-02-06 | ICKMO1-cost unite [2249.85 $]; boom truck [200 h]; labor [1200 h]; Sewage Network Circular pipes (GRP) [63.28]; Physical Units [19385.6 h] | 2,249.85 | 2,249.85 | ZNA | CON | LAY |
| A45670 |  | Install Manhole | 4d | 2026-06-04 A | 2026-07-05 A | A45650 | 100% | 2027-01-27 | 2027-02-01 | ICKMO1-cost unite [10124.3 $]; boom truck [200 h]; labor [1200 h]; Physical Units [87235.2 h] | 10,124.31 | 10,124.31 | ZNA | CON | MH |
| A45680 |  | Testing & Inspection | 2d | 2026-06-04 A | 2026-07-05 A | A45660 | 100% | 2027-02-06 | 2027-02-08 | ICKMO1-cost unite [2249.85 $]; labor [1200 h]; Physical Units [19385.6 h] | 2,249.85 | 2,249.85 | ZNA | CON |  |
| A45690 |  | Backfilling & Compaction | 4d | 2026-06-04 A | 2026-07-05 A | A45680, A45670, A45640 | 100% | 2027-02-08 | 2027-02-13 | ICKMO1-cost unite [4499.69 $]; Roller compactor [200 h]; Physical Units [38771.2 h] | 4,499.69 | 4,499.69 | ZNA | CON |  |
|  | MH-2.6.2.0 / MH-2.6.2.1 | **MH-2.6.2.0 / MH-2.6.2.1** |  | 2026-06-04 | 2026-07-05 |  |  |  |  |  |  |  |  |  |  |
| A45700 |  | Excavation | 4d | 2026-06-04 A | 2026-07-05 A | A45650, A1190 | 100% | 2027-01-27 | 2027-02-01 | ICKMO1-cost unite [3374.77 $]; Excavator [200 h]; Physical Units [29078.4 h] | 3,374.77 | 3,374.77 | ZNA | CON |  |
| A45710 |  | Pipe Laying | 8d | 2026-06-04 A | 2026-07-05 A | A45700 | 100% | 2027-02-01 | 2027-02-10 | ICKMO1-cost unite [2249.85 $]; boom truck [200 h]; labor [1200 h]; Sewage Network Circular pipes (GRP) [63.28]; Physical Units [19385.6 h] | 2,249.85 | 2,249.85 | ZNA | CON | LAY |
| A45720 |  | Install Manhole | 4d | 2026-06-04 A | 2026-07-05 A | A45700 | 100% | 2027-02-01 | 2027-02-06 | ICKMO1-cost unite [10124.3 $]; boom truck [200 h]; labor [1200 h]; Physical Units [87235.2 h] | 10,124.31 | 10,124.31 | ZNA | CON | MH |
| A45730 |  | Testing & Inspection | 2d | 2026-06-04 A | 2026-07-05 A | A45710 | 100% | 2027-02-10 | 2027-02-13 | ICKMO1-cost unite [2249.85 $]; labor [1200 h]; Physical Units [19385.6 h] | 2,249.85 | 2,249.85 | ZNA | CON |  |
| A45740 |  | Backfilling & Compaction | 4d | 2026-06-04 A | 2026-07-05 A | A45730, A45720, A45690 | 100% | 2027-02-13 | 2027-02-17 | ICKMO1-cost unite [4499.69 $]; Roller compactor [200 h]; Physical Units [38771.2 h] | 4,499.69 | 4,499.69 | ZNA | CON |  |
|  | MH-2.6.3 / MH-2.6.4 | **MH-2.6.3 / MH-2.6.4** |  | 2026-06-04 | 2026-07-05 |  |  |  |  |  |  |  |  |  |  |
| A45750 |  | Excavation | 4d | 2026-06-04 A | 2026-07-05 A | A45700, A1190 | 100% | 2027-02-01 | 2027-02-06 | ICKMO1-cost unite [3374.77 $]; Excavator [200 h]; Physical Units [29078.4 h] | 3,374.77 | 3,374.77 | ZNA | CON |  |
| A45760 |  | Pipe Laying | 8d | 2026-06-04 A | 2026-07-05 A | A45750 | 100% | 2027-02-06 | 2027-02-15 | ICKMO1-cost unite [2249.85 $]; boom truck [200 h]; labor [1200 h]; Sewage Network Circular pipes (GRP) [63.28]; Physical Units [19385.6 h] | 2,249.85 | 2,249.85 | ZNA | CON | LAY |
| A45770 |  | Install Manhole | 4d | 2026-06-04 A | 2026-07-05 A | A45750 | 100% | 2027-02-06 | 2027-02-10 | ICKMO1-cost unite [10124.3 $]; boom truck [200 h]; labor [1200 h]; Physical Units [87235.2 h] | 10,124.31 | 10,124.31 | ZNA | CON | MH |
| A45780 |  | Testing & Inspection | 2d | 2026-06-04 A | 2026-07-05 A | A45760 | 100% | 2027-02-15 | 2027-02-17 | ICKMO1-cost unite [2249.85 $]; labor [1200 h]; Physical Units [19385.6 h] | 2,249.85 | 2,249.85 | ZNA | CON |  |
| A45790 |  | Backfilling & Compaction | 4d | 2026-06-04 A | 2026-07-05 A | A45780, A45770, A45740 | 100% | 2027-02-17 | 2027-02-22 | ICKMO1-cost unite [4499.69 $]; Roller compactor [200 h]; Physical Units [38771.2 h] | 4,499.69 | 4,499.69 | ZNA | CON |  |

| ID | WBS | Activity | Duration | Start | Finish | Predecessors | Complete | Planned start | Planned finish | Resources | Cost | Actual cost | ALKHARJ INDUSTERIAL AREA - PROJECT ZONES | ALKHARJ INDUSTERIAL AREA - DECEPLINS | ALKHARJ INDUSTERIAL AREA - Wet networks |
| --- | --- | --- | --- | --- | --- | --- | --- | --- | --- | --- | --- | --- | --- | --- | --- |
|  | MH-2.6.3.0 / MH-2.6.3.1 | **MH-2.6.3.0 / MH-2.6.3.1** |  | 2026-07-04 | 2026-08-05 |  |  |  |  |  |  |  |  |  |  |
| A45800 |  | Excavation | 4d | 2026-07-04 A | 2026-08-05 A | A45750, A1190 | 100% | 2027-02-06 | 2027-02-10 | ICKMO1-cost unite [3374.77 $]; Excavator [200 h]; Physical Units [29078.4 h] | 3,374.77 | 3,374.77 | ZNA | CON |  |
| A45810 |  | Pipe Laying | 8d | 2026-07-04 A | 2026-08-05 A | A45800 | 100% | 2027-02-10 | 2027-02-20 | ICKMO1-cost unite [2249.85 $]; boom truck [200 h]; labor [1200 h]; Sewage Network Circular pipes (GRP) [63.28]; Physical Units [19385.6 h] | 2,249.85 | 2,249.85 | ZNA | CON | LAY |
| A45820 |  | Install Manhole | 4d | 2026-07-04 A | 2026-08-05 A | A45800 | 100% | 2027-02-10 | 2027-02-15 | ICKMO1-cost unite [10124.3 $]; boom truck [200 h]; labor [1200 h]; Physical Units [87235.2 h] | 10,124.31 | 10,124.31 | ZNA | CON | MH |
| A45830 |  | Testing & Inspection | 2d | 2026-07-04 A | 2026-08-05 A | A45810 | 100% | 2027-02-20 | 2027-02-22 | ICKMO1-cost unite [2249.85 $]; labor [1200 h]; Physical Units [19385.6 h] | 2,249.85 | 2,249.85 | ZNA | CON |  |
| A45840 |  | Backfilling & Compaction | 4d | 2026-07-04 A | 2026-08-05 A | A45830, A45820, A45790 | 100% | 2027-02-22 | 2027-02-27 | ICKMO1-cost unite [4499.69 $]; Roller compactor [200 h]; Physical Units [38771.2 h] | 4,499.69 | 4,499.69 | ZNA | CON |  |
|  | MH-2.6.4 / MH-2.6.5 | **MH-2.6.4 / MH-2.6.5** |  | 2026-06-04 | 2026-07-05 |  |  |  |  |  |  |  |  |  |  |
| A45850 |  | Excavation | 4d | 2026-06-04 A | 2026-07-05 A | A45800, A1190 | 100% | 2027-02-10 | 2027-02-15 | ICKMO1-cost unite [3374.77 $]; Excavator [200 h]; Physical Units [29078.4 h] | 3,374.77 | 3,374.77 | ZNA | CON |  |
| A45860 |  | Pipe Laying | 8d | 2026-06-04 A | 2026-07-05 A | A45850 | 100% | 2027-02-15 | 2027-02-24 | ICKMO1-cost unite [2249.85 $]; boom truck [200 h]; labor [1200 h]; Sewage Network Circular pipes (GRP) [63.28]; Physical Units [19385.6 h] | 2,249.85 | 2,249.85 | ZNA | CON | LAY |
| A45870 |  | Install Manhole | 4d | 2026-06-04 A | 2026-07-05 A | A45850 | 100% | 2027-02-15 | 2027-02-20 | ICKMO1-cost unite [10124.3 $]; boom truck [200 h]; labor [1200 h]; Physical Units [87235.2 h] | 10,124.31 | 10,124.31 | ZNA | CON | MH |
| A45880 |  | Testing & Inspection | 2d | 2026-06-04 A | 2026-07-05 A | A45860 | 100% | 2027-02-24 | 2027-02-27 | ICKMO1-cost unite [2249.85 $]; labor [1200 h]; Physical Units [19385.6 h] | 2,249.85 | 2,249.85 | ZNA | CON |  |
| A45890 |  | Backfilling & Compaction | 4d | 2026-06-04 A | 2026-07-05 A | A45880, A45870, A45840 | 100% | 2027-02-27 | 2027-03-03 | ICKMO1-cost unite [4499.69 $]; Roller compactor [200 h]; Physical Units [38771.2 h] | 4,499.69 | 4,499.69 | ZNA | CON |  |
|  | MH-2.6.0 / MH-2.6.1 | **MH-2.6.0 / MH-2.6.1** |  | 2026-06-04 | 2026-08-05 |  |  |  |  |  |  |  |  |  |  |
| A45950 |  | Excavation | 4d | 2026-06-04 A | 2026-07-05 A | A45900, A1190 | 100% | 2027-02-20 | 2027-02-24 | ICKMO1-cost unite [3374.77 $]; Excavator [200 h]; Physical Units [29078.4 h] | 3,374.77 | 3,374.77 | ZNA | CON |  |
| A45960 |  | Pipe Laying | 8d | 2026-07-04 A | 2026-08-05 A | A45950 | 100% | 2027-02-24 | 2027-03-06 | ICKMO1-cost unite [2249.85 $]; boom truck [200 h]; labor [1200 h]; Sewage Network Circular pipes (GRP) [63.28]; Physical Units [19385.6 h] | 2,249.85 | 2,249.85 | ZNA | CON | LAY |
| A45970 |  | Install Manhole | 4d | 2026-07-04 A | 2026-08-05 A | A45950 | 100% | 2027-02-24 | 2027-03-01 | ICKMO1-cost unite [10124.3 $]; boom truck [200 h]; labor [1200 h]; Physical Units [87235.2 h] | 10,124.31 | 10,124.31 | ZNA | CON | MH |
| A45980 |  | Testing & Inspection | 2d | 2026-07-04 A | 2026-08-05 A | A45960 | 100% | 2027-03-06 | 2027-03-08 | ICKMO1-cost unite [2249.85 $]; labor [1200 h]; Physical Units [19385.6 h] | 2,249.85 | 2,249.85 | ZNA | CON |  |
| A45990 |  | Backfilling & Compaction | 4d | 2026-07-04 A | 2026-08-05 A | A45980, A45970, A45940 | 100% | 2027-03-08 | 2027-03-13 | ICKMO1-cost unite [4499.69 $]; Roller compactor [200 h]; Physical Units [38771.2 h] | 4,499.69 | 4,499.69 | ZNA | CON |  |
|  | LR 08 | **LR 08** |  | 2026-07-04 | 2026-08-05 |  |  |  |  |  |  |  |  |  |  |
|  | MH-1.12.3 / MH-1.12.4 | **MH-1.12.3 / MH-1.12.4** |  | 2026-07-04 | 2026-08-05 |  |  |  |  |  |  |  |  |  |  |
| A46000 |  | Excavation | 4d | 2026-07-04 A | 2026-08-05 A | A70470, A1190 | 100% | 2027-01-09 | 2027-01-13 | ICKMO1-cost unite [3374.77 $]; Physical Units [29078.4 h] | 3,374.77 | 3,374.77 | ZNA | CON |  |
| A46010 |  | Pipe Laying | 8d | 2026-07-04 A | 2026-08-05 A | A46000 | 100% | 2027-01-13 | 2027-01-23 | ICKMO1-cost unite [2249.85 $]; Excavator [200 h]; Sewage Network Circular pipes (GRP) [63.28]; Physical Units [19385.6 h] | 2,249.85 | 2,249.85 | ZNA | CON | LAY |
| A46020 |  | Install Manhole | 4d | 2026-07-04 A | 2026-08-05 A | A46000 | 100% | 2027-01-13 | 2027-01-18 | ICKMO1-cost unite [10124.3 $]; boom truck [200 h]; labor [1200 h]; Physical Units [87235.2 h] | 10,124.31 | 10,124.31 | ZNA | CON | MH |
| A46030 |  | Testing & Inspection | 2d | 2026-07-04 A | 2026-08-05 A | A46010 | 100% | 2027-01-23 | 2027-01-25 | ICKMO1-cost unite [2249.85 $]; boom truck [200 h]; labor [1200 h]; Physical Units [19385.6 h] | 2,249.85 | 2,249.85 | ZNA | CON |  |
| A46040 |  | Backfilling & Compaction | 4d | 2026-07-04 A | 2026-08-05 A | A46030, A46020 | 100% | 2027-01-25 | 2027-01-30 | ICKMO1-cost unite [4499.69 $]; labor [1200 h]; Physical Units [38771.2 h] | 4,499.69 | 4,499.69 | ZNA | CON |  |

| ID | WBS | Activity | Duration | Start | Finish | Predecessors | Complete | Planned start | Planned finish | Resources | Cost | Actual cost | ALKHARJ INDUSTERIAL AREA - PROJECT ZONES | ALKHARJ INDUSTERIAL AREA - DECEPLINS | ALKHARJ INDUSTERIAL AREA - Wet networks |
| --- | --- | --- | --- | --- | --- | --- | --- | --- | --- | --- | --- | --- | --- | --- | --- |
|  | MH-1.12.4 / MH-1.12.5 | **MH-1.12.4 / MH-1.12.5** |  | 2026-07-04 | 2026-08-05 |  |  |  |  |  |  |  |  |  |  |
| A46050 |  | Excavation | 4d | 2026-07-04 A | 2026-08-05 A | A46000, A1190 | 100% | 2027-01-13 | 2027-01-18 | ICKMO1-cost unite [3374.77 $]; Physical Units [29078.4 h] | 3,374.77 | 3,374.77 | ZNA | CON |  |
| A46060 |  | Pipe Laying | 8d | 2026-07-04 A | 2026-08-05 A | A46050 | 100% | 2027-01-18 | 2027-01-27 | ICKMO1-cost unite [2249.85 $]; Excavator [200 h]; Sewage Network Circular pipes (GRP) [63.28]; Physical Units [19385.6 h] | 2,249.85 | 2,249.85 | ZNA | CON | LAY |
| A46070 |  | Install Manhole | 4d | 2026-07-04 A | 2026-08-05 A | A46050 | 100% | 2027-01-18 | 2027-01-23 | ICKMO1-cost unite [10124.3 $]; boom truck [200 h]; labor [1200 h]; Physical Units [87235.2 h] | 10,124.31 | 10,124.31 | ZNA | CON | MH |
| A46080 |  | Testing & Inspection | 2d | 2026-07-04 A | 2026-08-05 A | A46060 | 100% | 2027-01-27 | 2027-01-30 | ICKMO1-cost unite [2249.85 $]; boom truck [200 h]; labor [1200 h]; Physical Units [19385.6 h] | 2,249.85 | 2,249.85 | ZNA | CON |  |
| A46090 |  | Backfilling & Compaction | 4d | 2026-07-04 A | 2026-08-05 A | A46080, A46070, A46040 | 100% | 2027-01-30 | 2027-02-03 | ICKMO1-cost unite [4499.69 $]; labor [1200 h]; Physical Units [38771.2 h] | 4,499.69 | 4,499.69 | ZNA | CON |  |
|  | MH-1.12.4.0 / MH-1.12.4.1 | **MH-1.12.4.0 / MH-1.12.4.1** |  | 2026-07-04 | 2026-08-05 |  |  |  |  |  |  |  |  |  |  |
| A46100 |  | Excavation | 4d | 2026-07-04 A | 2026-08-05 A | A46050, A1190 | 100% | 2027-01-18 | 2027-01-23 | ICKMO1-cost unite [3374.77 $]; Physical Units [29078.4 h] | 3,374.77 | 3,374.77 | ZNA | CON |  |
| A46110 |  | Pipe Laying | 8d | 2026-07-04 A | 2026-08-05 A | A46100 | 100% | 2027-01-23 | 2027-02-01 | ICKMO1-cost unite [2249.85 $]; Excavator [200 h]; Sewage Network Circular pipes (GRP) [63.28]; Physical Units [19385.6 h] | 2,249.85 | 2,249.85 | ZNA | CON | LAY |
| A46120 |  | Install Manhole | 4d | 2026-07-04 A | 2026-08-05 A | A46100 | 100% | 2027-01-23 | 2027-01-27 | ICKMO1-cost unite [10124.3 $]; boom truck [200 h]; labor [1200 h]; Physical Units [87235.2 h] | 10,124.31 | 10,124.31 | ZNA | CON | MH |
| A46130 |  | Testing & Inspection | 2d | 2026-07-04 A | 2026-08-05 A | A46110 | 100% | 2027-02-01 | 2027-02-03 | ICKMO1-cost unite [2249.85 $]; boom truck [200 h]; labor [1200 h]; Physical Units [19385.6 h] | 2,249.85 | 2,249.85 | ZNA | CON |  |
| A46140 |  | Backfilling & Compaction | 4d | 2026-07-04 A | 2026-08-05 A | A46130, A46120, A46090 | 100% | 2027-02-03 | 2027-02-08 | ICKMO1-cost unite [4499.69 $]; labor [1200 h]; Physical Units [38771.2 h] | 4,499.69 | 4,499.69 | ZNA | CON |  |
|  | MH-1.12.5 / MH-1.12.6 | **MH-1.12.5 / MH-1.12.6** |  | 2026-07-04 | 2026-08-05 |  |  |  |  |  |  |  |  |  |  |
| A46150 |  | Excavation | 4d | 2026-07-04 A | 2026-08-05 A | A46100, A1190 | 100% | 2027-01-23 | 2027-01-27 | ICKMO1-cost unite [3374.77 $]; Physical Units [29078.4 h] | 3,374.77 | 3,374.77 | ZNA | CON |  |
| A46160 |  | Pipe Laying | 8d | 2026-07-04 A | 2026-08-05 A | A46150 | 100% | 2027-01-27 | 2027-02-06 | ICKMO1-cost unite [2249.85 $]; Excavator [200 h]; Sewage Network Circular pipes (GRP) [63.28]; Physical Units [19385.6 h] | 2,249.85 | 2,249.85 | ZNA | CON | LAY |
| A46170 |  | Install Manhole | 4d | 2026-07-04 A | 2026-08-05 A | A46150 | 100% | 2027-01-27 | 2027-02-01 | ICKMO1-cost unite [10124.3 $]; boom truck [200 h]; labor [1200 h]; Physical Units [87235.2 h] | 10,124.31 | 10,124.31 | ZNA | CON | MH |
| A46180 |  | Testing & Inspection | 2d | 2026-07-04 A | 2026-08-05 A | A46160 | 100% | 2027-02-06 | 2027-02-08 | ICKMO1-cost unite [2249.85 $]; boom truck [200 h]; labor [1200 h]; Physical Units [19385.6 h] | 2,249.85 | 2,249.85 | ZNA | CON |  |
| A46190 |  | Backfilling & Compaction | 4d | 2026-07-04 A | 2026-08-05 A | A46180, A46170, A46140 | 100% | 2027-02-08 | 2027-02-13 | ICKMO1-cost unite [4499.69 $]; labor [1200 h]; Physical Units [38771.2 h] | 4,499.69 | 4,499.69 | ZNA | CON |  |
|  | MH-1.12.5.0 / MH-1.12.5.1 | **MH-1.12.5.0 / MH-1.12.5.1** |  | 2026-07-04 | 2026-08-05 |  |  |  |  |  |  |  |  |  |  |
| A46200 |  | Excavation | 4d | 2026-07-04 A | 2026-08-05 A | A46150, A1190 | 100% | 2027-01-27 | 2027-02-01 | ICKMO1-cost unite [3374.77 $]; Physical Units [29078.4 h] | 3,374.77 | 3,374.77 | ZNA | CON |  |
| A46210 |  | Pipe Laying | 8d | 2026-07-04 A | 2026-08-05 A | A46200 | 100% | 2027-02-01 | 2027-02-10 | ICKMO1-cost unite [2249.85 $]; Excavator [200 h]; Sewage Network Circular pipes (GRP) [63.28]; Physical Units [19385.6 h] | 2,249.85 | 2,249.85 | ZNA | CON | LAY |
| A46220 |  | Install Manhole | 4d | 2026-07-04 A | 2026-08-05 A | A46200 | 100% | 2027-02-01 | 2027-02-06 | ICKMO1-cost unite [10124.3 $]; boom truck [200 h]; labor [1200 h]; Physical Units [87235.2 h] | 10,124.31 | 10,124.31 | ZNA | CON | MH |
| A46230 |  | Testing & Inspection | 2d | 2026-07-04 A | 2026-08-05 A | A46210 | 100% | 2027-02-10 | 2027-02-13 | ICKMO1-cost unite [2249.85 $]; boom truck [200 h]; labor [1200 h]; Physical Units [19385.6 h] | 2,249.85 | 2,249.85 | ZNA | CON |  |
| A46240 |  | Backfilling & Compaction | 4d | 2026-07-04 A | 2026-08-05 A | A46230, A46220, A46190 | 100% | 2027-02-13 | 2027-02-17 | ICKMO1-cost unite [4499.69 $]; labor [1200 h]; Physical Units [38771.2 h] | 4,499.69 | 4,499.69 | ZNA | CON |  |

| ID | WBS | Activity | Duration | Start | Finish | Predecessors | Complete | Planned start | Planned finish | Resources | Cost | Actual cost | ALKHARJ INDUSTERIAL AREA - PROJECT ZONES | ALKHARJ INDUSTERIAL AREA - DECEPLINS | ALKHARJ INDUSTERIAL AREA - Wet networks |
| --- | --- | --- | --- | --- | --- | --- | --- | --- | --- | --- | --- | --- | --- | --- | --- |
|  | MH-1.12.6 / MH-1.12.7 | **MH-1.12.6 / MH-1.12.7** |  | 2026-07-04 | 2026-08-05 |  |  |  |  |  |  |  |  |  |  |
| A46250 |  | Excavation | 4d | 2026-07-04 A | 2026-08-05 A | A46200, A1190 | 100% | 2027-02-01 | 2027-02-06 | ICKMO1-cost unite [3374.77 $]; Physical Units [29078.4 h] | 3,374.77 | 3,374.77 | ZNA | CON |  |
| A46260 |  | Pipe Laying | 4d | 2026-07-04 A | 2026-08-05 A | A46250 | 100% | 2027-02-06 | 2027-02-10 | ICKMO1-cost unite [2249.85 $]; Excavator [200 h]; Sewage Network Circular pipes (GRP) [63.28]; Physical Units [19385.6 h] | 2,249.85 | 2,249.85 | ZNA | CON | LAY |
| A46270 |  | Install Manhole | 4d | 2026-07-04 A | 2026-08-05 A | A46250 | 100% | 2027-02-06 | 2027-02-10 | ICKMO1-cost unite [10124.3 $]; boom truck [200 h]; labor [1200 h]; Physical Units [87235.2 h] | 10,124.31 | 10,124.31 | ZNA | CON | MH |
| A46280 |  | Testing & Inspection | 2d | 2026-07-04 A | 2026-08-05 A | A46260 | 100% | 2027-02-10 | 2027-02-13 | ICKMO1-cost unite [2249.85 $]; boom truck [200 h]; labor [1200 h]; Physical Units [19385.6 h] | 2,249.85 | 2,249.85 | ZNA | CON |  |
| A46290 |  | Backfilling & Compaction | 4d | 2026-07-04 A | 2026-08-05 A | A46280, A46270, A46240 | 100% | 2027-02-17 | 2027-02-22 | ICKMO1-cost unite [4499.69 $]; labor [1200 h]; Physical Units [38771.2 h] | 4,499.69 | 4,499.69 | ZNA | CON |  |
|  | MH-1.12.6.0 / MH-1.12.6.1 | **MH-1.12.6.0 / MH-1.12.6.1** |  | 2026-07-04 | 2026-08-05 |  |  |  |  |  |  |  |  |  |  |
| A46300 |  | Excavation | 4d | 2026-07-04 A | 2026-08-05 A | A46250, A1190 | 100% | 2027-02-06 | 2027-02-10 | ICKMO1-cost unite [3374.77 $]; Physical Units [29078.4 h] | 3,374.77 | 3,374.77 | ZNA | CON |  |
| A46310 |  | Pipe Laying | 8d | 2026-07-04 A | 2026-08-05 A | A46300 | 100% | 2027-02-10 | 2027-02-20 | ICKMO1-cost unite [2249.85 $]; Excavator [200 h]; Sewage Network Circular pipes (GRP) [63.28]; Physical Units [19385.6 h] | 2,249.85 | 2,249.85 | ZNA | CON | LAY |
| A46320 |  | Install Manhole | 4d | 2026-07-04 A | 2026-08-05 A | A46300 | 100% | 2027-02-10 | 2027-02-15 | ICKMO1-cost unite [10124.3 $]; boom truck [200 h]; labor [1200 h]; Physical Units [87235.2 h] | 10,124.31 | 10,124.31 | ZNA | CON | MH |
| A46330 |  | Testing & Inspection | 2d | 2026-07-04 A | 2026-08-05 A | A46310 | 100% | 2027-02-20 | 2027-02-22 | ICKMO1-cost unite [2249.85 $]; boom truck [200 h]; labor [1200 h]; Physical Units [19385.6 h] | 2,249.85 | 2,249.85 | ZNA | CON |  |
| A46340 |  | Backfilling & Compaction | 4d | 2026-07-04 A | 2026-08-05 A | A46330, A46320, A46290 | 100% | 2027-02-22 | 2027-02-27 | ICKMO1-cost unite [4499.69 $]; labor [1200 h]; Physical Units [38771.2 h] | 4,499.69 | 4,499.69 | ZNA | CON |  |
|  | MH-1.12.7 / MH-1.12.8 | **MH-1.12.7 / MH-1.12.8** |  | 2026-07-04 | 2026-08-05 |  |  |  |  |  |  |  |  |  |  |
| A46350 |  | Excavation | 4d | 2026-07-04 A | 2026-08-05 A | A46300, A1190 | 100% | 2027-02-10 | 2027-02-15 | ICKMO1-cost unite [3374.77 $]; Physical Units [29078.4 h] | 3,374.77 | 3,374.77 | ZNA | CON |  |
| A46360 |  | Pipe Laying | 8d | 2026-07-04 A | 2026-08-05 A | A46350 | 100% | 2027-02-15 | 2027-02-24 | ICKMO1-cost unite [2249.85 $]; Excavator [200 h]; Sewage Network Circular pipes (GRP) [63.28]; Physical Units [19385.6 h] | 2,249.85 | 2,249.85 | ZNA | CON | LAY |
| A46370 |  | Install Manhole | 4d | 2026-07-04 A | 2026-08-05 A | A46350 | 100% | 2027-02-15 | 2027-02-20 | ICKMO1-cost unite [10124.3 $]; boom truck [200 h]; labor [1200 h]; Physical Units [87235.2 h] | 10,124.31 | 10,124.31 | ZNA | CON | MH |
| A46380 |  | Testing & Inspection | 2d | 2026-07-04 A | 2026-08-05 A | A46360 | 100% | 2027-02-24 | 2027-02-27 | ICKMO1-cost unite [2249.85 $]; boom truck [200 h]; labor [1200 h]; Physical Units [19385.6 h] | 2,249.85 | 2,249.85 | ZNA | CON |  |
| A46390 |  | Backfilling & Compaction | 4d | 2026-07-04 A | 2026-08-05 A | A46380, A46370, A46340 | 100% | 2027-02-27 | 2027-03-03 | ICKMO1-cost unite [4499.69 $]; labor [1200 h]; Physical Units [38771.2 h] | 4,499.69 | 4,499.69 | ZNA | CON |  |
|  | MH-1.12.7.0 / MH-1.12.7.1 | **MH-1.12.7.0 / MH-1.12.7.1** |  | 2026-07-04 | 2026-08-05 |  |  |  |  |  |  |  |  |  |  |
| A46400 |  | Excavation | 4d | 2026-07-04 A | 2026-08-05 A | A46350, A1190 | 100% | 2027-02-15 | 2027-02-20 | ICKMO1-cost unite [3374.77 $]; Physical Units [29078.4 h] | 3,374.77 | 3,374.77 | ZNA | CON |  |
| A46410 |  | Pipe Laying | 8d | 2026-07-04 A | 2026-08-05 A | A46400 | 100% | 2027-02-20 | 2027-03-01 | ICKMO1-cost unite [2249.85 $]; Excavator [200 h]; Sewage Network Circular pipes (GRP) [63.28]; Physical Units [19385.6 h] | 2,249.85 | 2,249.85 | ZNA | CON | LAY |
| A46420 |  | Install Manhole | 4d | 2026-07-04 A | 2026-08-05 A | A46400 | 100% | 2027-02-20 | 2027-02-24 | ICKMO1-cost unite [10124.3 $]; boom truck [200 h]; labor [1200 h]; Physical Units [87235.2 h] | 10,124.31 | 10,124.31 | ZNA | CON | MH |
| A46430 |  | Testing & Inspection | 2d | 2026-07-04 A | 2026-08-05 A | A46410 | 100% | 2027-03-01 | 2027-03-03 | ICKMO1-cost unite [2249.85 $]; boom truck [200 h]; labor [1200 h]; Physical Units [19385.6 h] | 2,249.85 | 2,249.85 | ZNA | CON |  |
| A46440 |  | Backfilling & Compaction | 4d | 2026-07-04 A | 2026-08-05 A | A46430, A46420, A46390 | 100% | 2027-03-03 | 2027-03-08 | ICKMO1-cost unite [4499.69 $]; labor [1200 h]; Physical Units [38771.2 h] | 4,499.69 | 4,499.69 | ZNA | CON |  |

| ID | WBS | Activity | Duration | Start | Finish | Predecessors | Complete | Planned start | Planned finish | Resources | Cost | Actual cost | ALKHARJ INDUSTERIAL AREA - PROJECT ZONES | ALKHARJ INDUSTERIAL AREA - DECEPLINS | ALKHARJ INDUSTERIAL AREA - Wet networks |
| --- | --- | --- | --- | --- | --- | --- | --- | --- | --- | --- | --- | --- | --- | --- | --- |
|  | MH-1.12.8 / MH-1.12.9 | **MH-1.12.8 / MH-1.12.9** |  | 2026-07-04 | 2026-08-05 |  |  |  |  |  |  |  |  |  |  |
| A46450 |  | Excavation | 4d | 2026-07-04 A | 2026-08-05 A | A46400, A1190 | 100% | 2027-02-20 | 2027-02-24 | ICKMO1-cost unite [3374.77 $]; Physical Units [29078.4 h] | 3,374.77 | 3,374.77 | ZNA | CON |  |
| A46460 |  | Pipe Laying | 8d | 2026-07-04 A | 2026-08-05 A | A46450 | 100% | 2027-02-24 | 2027-03-06 | ICKMO1-cost unite [2249.85 $]; Excavator [200 h]; Sewage Network Circular pipes (GRP) [63.28]; Physical Units [19385.6 h] | 2,249.85 | 2,249.85 | ZNA | CON | LAY |
| A46470 |  | Install Manhole | 4d | 2026-07-04 A | 2026-08-05 A | A46450 | 100% | 2027-02-24 | 2027-03-01 | ICKMO1-cost unite [10124.3 $]; boom truck [200 h]; labor [1200 h]; Physical Units [87235.2 h] | 10,124.31 | 10,124.31 | ZNA | CON | MH |
| A46480 |  | Testing & Inspection | 2d | 2026-07-04 A | 2026-08-05 A | A46460 | 100% | 2027-03-06 | 2027-03-08 | ICKMO1-cost unite [2249.85 $]; boom truck [200 h]; labor [1200 h]; Physical Units [19385.6 h] | 2,249.85 | 2,249.85 | ZNA | CON |  |
| A46490 |  | Backfilling & Compaction | 4d | 2026-07-04 A | 2026-08-05 A | A46480, A46470, A46440 | 100% | 2027-03-08 | 2027-03-13 | ICKMO1-cost unite [4499.69 $]; labor [1200 h]; Physical Units [38771.2 h] | 4,499.69 | 4,499.69 | ZNA | CON |  |
|  | MH-1.12.8.0 / MH-1.12.8.1 | **MH-1.12.8.0 / MH-1.12.8.1** |  | 2026-07-04 | 2026-08-05 |  |  |  |  |  |  |  |  |  |  |
| A46500 |  | Excavation | 4d | 2026-07-04 A | 2026-08-05 A | A46450, A1190 | 100% | 2027-02-24 | 2027-03-01 | ICKMO1-cost unite [3374.77 $]; Physical Units [29078.4 h] | 3,374.77 | 3,374.77 | ZNA | CON |  |
| A46510 |  | Pipe Laying | 8d | 2026-07-04 A | 2026-08-05 A | A46500 | 100% | 2027-03-01 | 2027-03-10 | ICKMO1-cost unite [2249.85 $]; Excavator [200 h]; Sewage Network Circular pipes (GRP) [63.28]; Physical Units [19385.6 h] | 2,249.85 | 2,249.85 | ZNA | CON | LAY |
| A46520 |  | Install Manhole | 4d | 2026-07-04 A | 2026-08-05 A | A46500 | 100% | 2027-03-01 | 2027-03-06 | ICKMO1-cost unite [10124.3 $]; boom truck [200 h]; labor [1200 h]; Physical Units [87235.2 h] | 10,124.31 | 10,124.31 | ZNA | CON | MH |
| A46530 |  | Testing & Inspection | 2d | 2026-07-04 A | 2026-08-05 A | A46510 | 100% | 2027-03-10 | 2027-03-13 | ICKMO1-cost unite [2249.85 $]; boom truck [200 h]; labor [1200 h]; Physical Units [19385.6 h] | 2,249.85 | 2,249.85 | ZNA | CON |  |
| A46540 |  | Backfilling & Compaction | 4d | 2026-07-04 A | 2026-08-05 A | A46530, A46520, A46490 | 100% | 2027-03-13 | 2027-03-17 | ICKMO1-cost unite [4499.69 $]; labor [1200 h]; Physical Units [38771.2 h] | 4,499.69 | 4,499.69 | ZNA | CON |  |
|  | MH-1.12.9 / MH-1.12.10 | **MH-1.12.9 / MH-1.12.10** |  | 2026-07-04 | 2026-08-05 |  |  |  |  |  |  |  |  |  |  |
| A46550 |  | Excavation | 4d | 2026-07-04 A | 2026-08-05 A | A46500, A1190 | 100% | 2027-03-01 | 2027-03-06 | ICKMO1-cost unite [3374.77 $]; Physical Units [29078.4 h] | 3,374.77 | 3,374.77 | ZNA | CON |  |
| A46560 |  | Pipe Laying | 8d | 2026-07-04 A | 2026-08-05 A | A46550 | 100% | 2027-03-06 | 2027-03-15 | ICKMO1-cost unite [2249.85 $]; Excavator [200 h]; Sewage Network Circular pipes (GRP) [63.28]; Physical Units [19385.6 h] | 2,249.85 | 2,249.85 | ZNA | CON | LAY |
| A46570 |  | Install Manhole | 4d | 2026-07-04 A | 2026-08-05 A | A46550 | 100% | 2027-03-06 | 2027-03-10 | ICKMO1-cost unite [10124.3 $]; boom truck [200 h]; labor [1200 h]; Physical Units [87235.2 h] | 10,124.31 | 10,124.31 | ZNA | CON | MH |
| A46580 |  | Testing & Inspection | 2d | 2026-07-04 A | 2026-08-05 A | A46560 | 100% | 2027-03-15 | 2027-03-17 | ICKMO1-cost unite [2249.85 $]; boom truck [200 h]; labor [1200 h]; Physical Units [19385.6 h] | 2,249.85 | 2,249.85 | ZNA | CON |  |
| A46590 |  | Backfilling & Compaction | 4d | 2026-07-04 A | 2026-08-05 A | A46580, A46570, A46540 | 100% | 2027-03-17 | 2027-03-22 | ICKMO1-cost unite [4499.69 $]; labor [1200 h]; Physical Units [38771.2 h] | 4,499.69 | 4,499.69 | ZNA | CON |  |
|  | LR 09 | **LR 09** |  | 2026-07-04 | 2026-08-05 |  |  |  |  |  |  |  |  |  |  |
|  | MH-1.12 / MH-1.13 | **MH-1.12 / MH-1.13** |  | 2026-07-04 | 2026-08-05 |  |  |  |  |  |  |  |  |  |  |
| A46600 |  | Excavation | 4d | 2026-07-04 A | 2026-08-05 A | A70120, A1190 | 100% | 2026-11-25 | 2026-11-30 | ICKMO1-cost unite [3491.14 $]; Physical Units [30081.1 h] | 3,491.14 | 3,491.14 | ZNA | CON |  |
| A46610 |  | Pipe Laying | 8d | 2026-07-04 A | 2026-08-05 A | A46600 | 100% | 2026-11-30 | 2026-12-09 | ICKMO1-cost unite [2327.43 $]; Excavator [200 h]; Sewage Network Circular pipes (GRP) [63.28]; Physical Units [20054.1 h] | 2,327.43 | 2,327.43 | ZNA | CON | LAY |
| A46620 |  | Install Manhole | 4d | 2026-07-04 A | 2026-08-05 A | A46600 | 100% | 2026-11-30 | 2026-12-05 | ICKMO1-cost unite [10473.4 $]; boom truck [200 h]; labor [1200 h]; Physical Units [90243.3 h] | 10,473.42 | 10,473.42 | ZNA | CON | MH |
| A46630 |  | Testing & Inspection | 2d | 2026-07-04 A | 2026-08-05 A | A46610 | 100% | 2026-12-09 | 2026-12-12 | ICKMO1-cost unite [2327.43 $]; boom truck [200 h]; labor [1200 h]; Physical Units [20054.1 h] | 2,327.43 | 2,327.43 | ZNA | CON |  |
| A46640 |  | Backfilling & Compaction | 4d | 2026-07-04 A | 2026-08-05 A | A46630, A46620 | 100% | 2026-12-12 | 2026-12-16 | ICKMO1-cost unite [4654.85 $]; labor [1200 h]; Physical Units [40108.1 h] | 4,654.85 | 4,654.85 | ZNA | CON |  |

| ID | WBS | Activity | Duration | Start | Finish | Predecessors | Complete | Planned start | Planned finish | Resources | Cost | Actual cost | ALKHARJ INDUSTERIAL AREA - PROJECT ZONES | ALKHARJ INDUSTERIAL AREA - DECEPLINS | ALKHARJ INDUSTERIAL AREA - Wet networks |
| --- | --- | --- | --- | --- | --- | --- | --- | --- | --- | --- | --- | --- | --- | --- | --- |
|  | MH-1.14 / MH-1.15 | **MH-1.14 / MH-1.15** |  | 2026-07-04 | 2026-08-05 |  |  |  |  |  |  |  |  |  |  |
| A46650 |  | Excavation | 4d | 2026-07-04 A | 2026-08-05 A | A46600, A1190 | 100% | 2026-11-30 | 2026-12-05 | ICKMO1-cost unite [3491.14 $]; Physical Units [30081.1 h] | 3,491.14 | 3,491.14 | ZNA | CON |  |
| A46660 |  | Pipe Laying | 4d | 2026-07-04 A | 2026-08-05 A | A46650 | 100% | 2026-12-05 | 2026-12-09 | ICKMO1-cost unite [2327.43 $]; Excavator [200 h]; Sewage Network Circular pipes (GRP) [63.28]; Physical Units [20054.1 h] | 2,327.43 | 2,327.43 | ZNA | CON | LAY |
| A46670 |  | Install Manhole | 4d | 2026-07-04 A | 2026-08-05 A | A46650 | 100% | 2026-12-05 | 2026-12-09 | ICKMO1-cost unite [10473.4 $]; boom truck [200 h]; labor [1200 h]; Physical Units [90243.3 h] | 10,473.42 | 10,473.42 | ZNA | CON | MH |
| A46680 |  | Testing & Inspection | 2d | 2026-07-04 A | 2026-08-05 A | A46660 | 100% | 2026-12-09 | 2026-12-12 | ICKMO1-cost unite [2327.43 $]; boom truck [200 h]; labor [1200 h]; Physical Units [20054.1 h] | 2,327.43 | 2,327.43 | ZNA | CON |  |
| A46690 |  | Backfilling & Compaction | 4d | 2026-07-04 A | 2026-08-05 A | A46680, A46670, A46640 | 100% | 2026-12-16 | 2026-12-21 | ICKMO1-cost unite [4654.85 $]; labor [1200 h]; Physical Units [40108.1 h] | 4,654.85 | 4,654.85 | ZNA | CON |  |
|  | MH-1.15 / MH-1.16 | **MH-1.15 / MH-1.16** |  | 2026-07-04 | 2026-08-05 |  |  |  |  |  |  |  |  |  |  |
| A46700 |  | Excavation | 4d | 2026-07-04 A | 2026-08-05 A | A46650, A1190 | 100% | 2026-12-05 | 2026-12-09 | ICKMO1-cost unite [3491.14 $]; Physical Units [30081.1 h] | 3,491.14 | 3,491.14 | ZNA | CON |  |
| A46710 |  | Pipe Laying | 8d | 2026-07-04 A | 2026-08-05 A | A46700 | 100% | 2026-12-09 | 2026-12-19 | ICKMO1-cost unite [2327.43 $]; Excavator [200 h]; Sewage Network Circular pipes (GRP) [63.28]; Physical Units [20054.1 h] | 2,327.43 | 2,327.43 | ZNA | CON | LAY |
| A46720 |  | Install Manhole | 4d | 2026-07-04 A | 2026-08-05 A | A46700 | 100% | 2026-12-09 | 2026-12-14 | ICKMO1-cost unite [10473.4 $]; boom truck [200 h]; labor [1200 h]; Physical Units [90243.3 h] | 10,473.42 | 10,473.42 | ZNA | CON | MH |
| A46730 |  | Testing & Inspection | 2d | 2026-07-04 A | 2026-08-05 A | A46710 | 100% | 2026-12-19 | 2026-12-21 | ICKMO1-cost unite [2327.43 $]; boom truck [200 h]; labor [1200 h]; Physical Units [20054.1 h] | 2,327.43 | 2,327.43 | ZNA | CON |  |
| A46740 |  | Backfilling & Compaction | 4d | 2026-07-04 A | 2026-08-05 A | A46730, A46720, A46690 | 100% | 2026-12-21 | 2026-12-26 | ICKMO1-cost unite [4654.85 $]; labor [1200 h]; Physical Units [40108.1 h] | 4,654.85 | 4,654.85 | ZNA | CON |  |
|  | MH-1.16 / MH-1.17 | **MH-1.16 / MH-1.17** |  | 2026-07-04 | 2026-08-05 |  |  |  |  |  |  |  |  |  |  |
| A46750 |  | Excavation | 4d | 2026-07-04 A | 2026-08-05 A | A46700, A1190 | 100% | 2026-12-09 | 2026-12-14 | ICKMO1-cost unite [3491.14 $]; Physical Units [30081.1 h] | 3,491.14 | 3,491.14 | ZNA | CON |  |
| A46760 |  | Pipe Laying | 8d | 2026-07-04 A | 2026-08-05 A | A46750 | 100% | 2026-12-14 | 2026-12-23 | ICKMO1-cost unite [2327.43 $]; Excavator [200 h]; Sewage Network Circular pipes (GRP) [63.28]; Physical Units [20054.1 h] | 2,327.43 | 2,327.43 | ZNA | CON | LAY |
| A46770 |  | Install Manhole | 4d | 2026-07-04 A | 2026-08-05 A | A46750 | 100% | 2026-12-14 | 2026-12-19 | ICKMO1-cost unite [10473.4 $]; boom truck [200 h]; labor [1200 h]; Physical Units [90243.3 h] | 10,473.42 | 10,473.42 | ZNA | CON | MH |
| A46780 |  | Testing & Inspection | 2d | 2026-07-04 A | 2026-08-05 A | A46760 | 100% | 2026-12-23 | 2026-12-26 | ICKMO1-cost unite [2327.43 $]; boom truck [200 h]; labor [1200 h]; Physical Units [20054.1 h] | 2,327.43 | 2,327.43 | ZNA | CON |  |
| A46790 |  | Backfilling & Compaction | 4d | 2026-07-04 A | 2026-08-05 A | A46780, A46770, A46740 | 100% | 2026-12-26 | 2026-12-30 | ICKMO1-cost unite [4654.85 $]; labor [1200 h]; Physical Units [40108.1 h] | 4,654.85 | 4,654.85 | ZNA | CON |  |
|  | MH-1.17.0 / MH-1.17.1 | **MH-1.17.0 / MH-1.17.1** |  | 2026-07-04 | 2026-08-05 |  |  |  |  |  |  |  |  |  |  |
| A46800 |  | Excavation | 4d | 2026-07-04 A | 2026-08-05 A | A46750, A1190 | 100% | 2026-12-14 | 2026-12-19 | ICKMO1-cost unite [3491.14 $]; Physical Units [30081.1 h] | 3,491.14 | 3,491.14 | ZNA | CON |  |
| A46810 |  | Pipe Laying | 8d | 2026-07-04 A | 2026-08-05 A | A46800 | 100% | 2026-12-19 | 2026-12-28 | ICKMO1-cost unite [2327.43 $]; Excavator [200 h]; Sewage Network Circular pipes (GRP) [63.28]; Physical Units [20054.1 h] | 2,327.43 | 2,327.43 | ZNA | CON | LAY |
| A46820 |  | Install Manhole | 4d | 2026-07-04 A | 2026-08-05 A | A46800 | 100% | 2026-12-19 | 2026-12-23 | ICKMO1-cost unite [10473.4 $]; boom truck [200 h]; labor [1200 h]; Physical Units [90243.3 h] | 10,473.42 | 10,473.42 | ZNA | CON | MH |
| A46830 |  | Testing & Inspection | 2d | 2026-07-04 A | 2026-08-05 A | A46810 | 100% | 2026-12-28 | 2026-12-30 | ICKMO1-cost unite [2327.43 $]; boom truck [200 h]; labor [1200 h]; Physical Units [20054.1 h] | 2,327.43 | 2,327.43 | ZNA | CON |  |
| A46840 |  | Backfilling & Compaction | 4d | 2026-07-04 A | 2026-08-05 A | A46830, A46820, A46790 | 100% | 2026-12-30 | 2027-01-04 | ICKMO1-cost unite [4654.85 $]; labor [1200 h]; Physical Units [40108.1 h] | 4,654.85 | 4,654.85 | ZNA | CON |  |

| ID | WBS | Activity | Duration | Start | Finish | Predecessors | Complete | Planned start | Planned finish | Resources | Cost | Actual cost | ALKHARJ INDUSTERIAL AREA - PROJECT ZONES | ALKHARJ INDUSTERIAL AREA - DECEPLINS | ALKHARJ INDUSTERIAL AREA - Wet networks |
| --- | --- | --- | --- | --- | --- | --- | --- | --- | --- | --- | --- | --- | --- | --- | --- |
|  | MH-1.17.1 / MH-1.17.2 | **MH-1.17.1 / MH-1.17.2** |  | 2026-07-04 | 2026-08-05 |  |  |  |  |  |  |  |  |  |  |
| A46850 |  | Excavation | 4d | 2026-07-04 A | 2026-08-05 A | A46800, A1190 | 100% | 2026-12-19 | 2026-12-23 | ICKMO1-cost unite [3491.14 $]; Physical Units [30081.1 h] | 3,491.14 | 3,491.14 | ZNA | CON |  |
| A46860 |  | Pipe Laying | 4d | 2026-07-04 A | 2026-08-05 A | A46850 | 100% | 2026-12-23 | 2026-12-28 | ICKMO1-cost unite [2327.43 $]; Excavator [200 h]; Sewage Network Circular pipes (GRP) [63.28]; Physical Units [20054.1 h] | 2,327.43 | 2,327.43 | ZNA | CON | LAY |
| A46870 |  | Install Manhole | 4d | 2026-07-04 A | 2026-08-05 A | A46850 | 100% | 2026-12-23 | 2026-12-28 | ICKMO1-cost unite [10473.4 $]; boom truck [200 h]; labor [1200 h]; Physical Units [90243.3 h] | 10,473.42 | 10,473.42 | ZNA | CON | MH |
| A46880 |  | Testing & Inspection | 2d | 2026-07-04 A | 2026-08-05 A | A46860 | 100% | 2026-12-28 | 2026-12-30 | ICKMO1-cost unite [2327.43 $]; boom truck [200 h]; labor [1200 h]; Physical Units [20054.1 h] | 2,327.43 | 2,327.43 | ZNA | CON |  |
| A46890 |  | Backfilling & Compaction | 4d | 2026-07-04 A | 2026-08-05 A | A46880, A46870, A46840 | 100% | 2027-01-04 | 2027-01-09 | ICKMO1-cost unite [4654.85 $]; labor [1200 h]; Physical Units [40108.1 h] | 4,654.85 | 4,654.85 | ZNA | CON |  |
|  | MH-1.17.1.0 / MH-1.17.1.1 | **MH-1.17.1.0 / MH-1.17.1.1** |  | 2026-07-04 | 2026-08-05 |  |  |  |  |  |  |  |  |  |  |
| A46900 |  | Excavation | 4d | 2026-07-04 A | 2026-08-05 A | A46850, A1190 | 100% | 2026-12-23 | 2026-12-28 | ICKMO1-cost unite [3491.14 $]; Physical Units [30081.1 h] | 3,491.14 | 3,491.14 | ZNA | CON |  |
| A46910 |  | Pipe Laying | 4d | 2026-07-04 A | 2026-08-05 A | A46900 | 100% | 2026-12-28 | 2027-01-02 | ICKMO1-cost unite [2327.43 $]; Excavator [200 h]; Sewage Network Circular pipes (GRP) [63.28]; Physical Units [20054.1 h] | 2,327.43 | 2,327.43 | ZNA | CON | LAY |
| A46920 |  | Install Manhole | 4d | 2026-07-04 A | 2026-08-05 A | A46900 | 100% | 2026-12-28 | 2027-01-02 | ICKMO1-cost unite [10473.4 $]; boom truck [200 h]; labor [1200 h]; Physical Units [90243.3 h] | 10,473.42 | 10,473.42 | ZNA | CON | MH |
| A46930 |  | Testing & Inspection | 2d | 2026-07-04 A | 2026-08-05 A | A46910 | 100% | 2027-01-02 | 2027-01-04 | ICKMO1-cost unite [2327.43 $]; boom truck [200 h]; labor [1200 h]; Physical Units [20054.1 h] | 2,327.43 | 2,327.43 | ZNA | CON |  |
| A46940 |  | Backfilling & Compaction | 4d | 2026-07-04 A | 2026-08-05 A | A46930, A46920, A46890 | 100% | 2027-01-09 | 2027-01-13 | ICKMO1-cost unite [4654.85 $]; labor [1200 h]; Physical Units [40108.1 h] | 4,654.85 | 4,654.85 | ZNA | CON |  |
|  | MH-1.17.2 / MH-1.17.3 | **MH-1.17.2 / MH-1.17.3** |  | 2026-07-04 | 2026-08-05 |  |  |  |  |  |  |  |  |  |  |
| A46950 |  | Excavation | 4d | 2026-07-04 A | 2026-08-05 A | A46900, A1190 | 100% | 2026-12-28 | 2027-01-02 | ICKMO1-cost unite [3491.14 $]; Physical Units [30081.1 h] | 3,491.14 | 3,491.14 | ZNA | CON |  |
| A46960 |  | Pipe Laying | 8d | 2026-07-04 A | 2026-08-05 A | A46950 | 100% | 2027-01-02 | 2027-01-11 | ICKMO1-cost unite [2327.43 $]; Excavator [200 h]; Sewage Network Circular pipes (GRP) [63.28]; Physical Units [20054.1 h] | 2,327.43 | 2,327.43 | ZNA | CON | LAY |
| A46970 |  | Install Manhole | 4d | 2026-07-04 A | 2026-08-05 A | A46950 | 100% | 2027-01-02 | 2027-01-06 | ICKMO1-cost unite [10473.4 $]; boom truck [200 h]; labor [1200 h]; Physical Units [90243.3 h] | 10,473.42 | 10,473.42 | ZNA | CON | MH |
| A46980 |  | Testing & Inspection | 2d | 2026-07-04 A | 2026-08-05 A | A46960 | 100% | 2027-01-11 | 2027-01-13 | ICKMO1-cost unite [2327.43 $]; boom truck [200 h]; labor [1200 h]; Physical Units [20054.1 h] | 2,327.43 | 2,327.43 | ZNA | CON |  |
| A46990 |  | Backfilling & Compaction | 4d | 2026-07-04 A | 2026-08-05 A | A46980, A46970, A46940 | 100% | 2027-01-13 | 2027-01-18 | ICKMO1-cost unite [4654.85 $]; labor [1200 h]; Physical Units [40108.1 h] | 4,654.85 | 4,654.85 | ZNA | CON |  |
|  | MH-1.17.2.0 / MH-1.17.2.1 | **MH-1.17.2.0 / MH-1.17.2.1** |  | 2026-07-04 | 2026-08-05 |  |  |  |  |  |  |  |  |  |  |
| A47000 |  | Excavation | 4d | 2026-07-04 A | 2026-08-05 A | A46950, A1190 | 100% | 2027-01-02 | 2027-01-06 | ICKMO1-cost unite [3491.14 $]; Physical Units [30081.1 h] | 3,491.14 | 3,491.14 | ZNA | CON |  |
| A47010 |  | Pipe Laying | 8d | 2026-07-04 A | 2026-08-05 A | A47000 | 100% | 2027-01-06 | 2027-01-16 | ICKMO1-cost unite [2327.43 $]; Excavator [200 h]; Sewage Network Circular pipes (GRP) [63.28]; Physical Units [20054.1 h] | 2,327.43 | 2,327.43 | ZNA | CON | LAY |
| A47020 |  | Install Manhole | 4d | 2026-07-04 A | 2026-08-05 A | A47000 | 100% | 2027-01-06 | 2027-01-11 | ICKMO1-cost unite [10473.4 $]; boom truck [200 h]; labor [1200 h]; Physical Units [90243.3 h] | 10,473.42 | 10,473.42 | ZNA | CON | MH |
| A47030 |  | Testing & Inspection | 2d | 2026-07-04 A | 2026-08-05 A | A47010 | 100% | 2027-01-16 | 2027-01-18 | ICKMO1-cost unite [2327.43 $]; boom truck [200 h]; labor [1200 h]; Physical Units [20054.1 h] | 2,327.43 | 2,327.43 | ZNA | CON |  |
| A47040 |  | Backfilling & Compaction | 4d | 2026-07-04 A | 2026-08-05 A | A47030, A47020, A46990 | 100% | 2027-01-18 | 2027-01-23 | ICKMO1-cost unite [4654.85 $]; labor [1200 h]; Physical Units [40108.1 h] | 4,654.85 | 4,654.85 | ZNA | CON |  |

| ID | WBS | Activity | Duration | Start | Finish | Predecessors | Complete | Planned start | Planned finish | Resources | Cost | Actual cost | ALKHARJ INDUSTERIAL AREA - PROJECT ZONES | ALKHARJ INDUSTERIAL AREA - DECEPLINS | ALKHARJ INDUSTERIAL AREA - Wet networks |
| --- | --- | --- | --- | --- | --- | --- | --- | --- | --- | --- | --- | --- | --- | --- | --- |
|  | MH-1.17.3 / MH-1.17.4 | **MH-1.17.3 / MH-1.17.4** |  | 2026-07-04 | 2026-08-05 |  |  |  |  |  |  |  |  |  |  |
| A47050 |  | Excavation | 4d | 2026-07-04 A | 2026-08-05 A | A47000, A1190 | 100% | 2027-01-06 | 2027-01-11 | ICKMO1-cost unite [3491.14 $]; Physical Units [30081.1 h] | 3,491.14 | 3,491.14 | ZNA | CON |  |
| A47060 |  | Pipe Laying | 8d | 2026-07-04 A | 2026-08-05 A | A47050 | 100% | 2027-01-11 | 2027-01-20 | ICKMO1-cost unite [2327.43 $]; Excavator [200 h]; Sewage Network Circular pipes (GRP) [63.28]; Physical Units [20054.1 h] | 2,327.43 | 2,327.43 | ZNA | CON | LAY |
| A47070 |  | Install Manhole | 4d | 2026-07-04 A | 2026-08-05 A | A47050 | 100% | 2027-01-11 | 2027-01-16 | ICKMO1-cost unite [10473.4 $]; boom truck [200 h]; labor [1200 h]; Physical Units [90243.3 h] | 10,473.42 | 10,473.42 | ZNA | CON | MH |
| A47080 |  | Testing & Inspection | 2d | 2026-07-04 A | 2026-08-05 A | A47060 | 100% | 2027-01-20 | 2027-01-23 | ICKMO1-cost unite [2327.43 $]; boom truck [200 h]; labor [1200 h]; Physical Units [20054.1 h] | 2,327.43 | 2,327.43 | ZNA | CON |  |
| A47090 |  | Backfilling & Compaction | 4d | 2026-07-04 A | 2026-08-05 A | A47080, A47070, A47040 | 100% | 2027-01-23 | 2027-01-27 | ICKMO1-cost unite [4654.85 $]; labor [1200 h]; Physical Units [40108.1 h] | 4,654.85 | 4,654.85 | ZNA | CON |  |
|  | LR 10 | **LR 10** |  | 2026-07-04 | 2026-08-05 |  |  |  |  |  |  |  |  |  |  |
|  | MH-2.23.0 / MH-2.23.1 | **MH-2.23.0 / MH-2.23.1** |  | 2026-07-04 | 2026-08-05 |  |  |  |  |  |  |  |  |  |  |
| A47100 |  | Excavation | 3d | 2026-07-04 A | 2026-08-05 A | A69920, A1190 | 100% | 2027-06-07 | 2027-06-10 | ICKMO1-cost unite [3790.38 $]; Physical Units [32659.5 h] | 3,790.38 | 3,790.38 | ZNA | CON |  |
| A47110 |  | Pipe Laying | 3d | 2026-07-04 A | 2026-08-05 A | A47100 | 100% | 2027-06-10 | 2027-06-14 | ICKMO1-cost unite [2526.92 $]; Excavator [200 h]; Sewage Network Circular pipes (GRP) [63.28]; Physical Units [21773 h] | 2,526.92 | 2,526.92 | ZNA | CON | LAY |
| A47120 |  | Install Manhole | 3d | 2026-07-04 A | 2026-08-05 A | A47100 | 100% | 2027-06-10 | 2027-06-14 | ICKMO1-cost unite [11371.1 $]; boom truck [200 h]; labor [1200 h]; Physical Units [97978.5 h] | 11,371.15 | 11,371.15 | ZNA | CON | MH |
| A47130 |  | Testing & Inspection | 3d | 2026-07-04 A | 2026-08-05 A | A47110 | 100% | 2027-06-14 | 2027-06-17 | ICKMO1-cost unite [2526.92 $]; boom truck [200 h]; labor [1200 h]; Physical Units [21773 h] | 2,526.92 | 2,526.92 | ZNA | CON |  |
| A47140 |  | Backfilling & Compaction | 3d | 2026-07-04 A | 2026-08-05 A | A47130, A47120 | 100% | 2027-06-17 | 2027-06-21 | ICKMO1-cost unite [5053.84 $]; labor [1200 h]; Physical Units [43546 h] | 5,053.84 | 5,053.84 | ZNA | CON |  |
|  | MH-2.23.1 / MH-2.23.1.1 | **MH-2.23.1 / MH-2.23.1.1** |  | 2026-07-04 | 2026-08-05 |  |  |  |  |  |  |  |  |  |  |
| A47200 |  | Excavation | 3d | 2026-07-04 A | 2026-08-05 A | A47150, A1190 | 100% | 2027-06-14 | 2027-06-17 | ICKMO1-cost unite [3790.38 $]; Physical Units [32659.5 h] | 3,790.38 | 3,790.38 | ZNA | CON |  |
| A47210 |  | Pipe Laying | 3d | 2026-07-04 A | 2026-08-05 A | A47200 | 100% | 2027-06-17 | 2027-06-21 | ICKMO1-cost unite [2526.92 $]; Excavator [200 h]; Sewage Network Circular pipes (GRP) [63.28]; Physical Units [21773 h] | 2,526.92 | 2,526.92 | ZNA | CON | LAY |
| A47220 |  | Install Manhole | 3d | 2026-07-04 A | 2026-08-05 A | A47200 | 100% | 2027-06-17 | 2027-06-21 | ICKMO1-cost unite [11371.1 $]; boom truck [200 h]; labor [1200 h]; Physical Units [97978.5 h] | 11,371.15 | 11,371.15 | ZNA | CON | MH |
| A47230 |  | Testing & Inspection | 3d | 2026-07-04 A | 2026-08-05 A | A47210 | 100% | 2027-06-21 | 2027-06-24 | ICKMO1-cost unite [2526.92 $]; boom truck [200 h]; labor [1200 h]; Physical Units [21773 h] | 2,526.92 | 2,526.92 | ZNA | CON |  |
| A47240 |  | Backfilling & Compaction | 3d | 2026-07-04 A | 2026-08-05 A | A47230, A47220, A47190 | 100% | 2027-06-24 | 2027-06-28 | ICKMO1-cost unite [5053.84 $]; labor [1200 h]; Physical Units [43546 h] | 5,053.84 | 5,053.84 | ZNA | CON |  |
|  | MH-2.23.1 / MH-2.23.2 | **MH-2.23.1 / MH-2.23.2** |  | 2026-07-04 | 2026-08-05 |  |  |  |  |  |  |  |  |  |  |
| A47150 |  | Excavation | 3d | 2026-07-04 A | 2026-08-05 A | A47100, A1190 | 100% | 2027-06-10 | 2027-06-14 | ICKMO1-cost unite [3790.38 $]; Physical Units [32659.5 h] | 3,790.38 | 3,790.38 | ZNA | CON |  |
| A47160 |  | Pipe Laying | 3d | 2026-07-04 A | 2026-08-05 A | A47150 | 100% | 2027-06-14 | 2027-06-17 | ICKMO1-cost unite [2526.92 $]; Excavator [200 h]; Sewage Network Circular pipes (GRP) [63.28]; Physical Units [21773 h] | 2,526.92 | 2,526.92 | ZNA | CON | LAY |
| A47170 |  | Install Manhole | 3d | 2026-07-04 A | 2026-08-05 A | A47150 | 100% | 2027-06-14 | 2027-06-17 | ICKMO1-cost unite [11371.1 $]; boom truck [200 h]; labor [1200 h]; Physical Units [97978.5 h] | 11,371.15 | 11,371.15 | ZNA | CON | MH |
| A47180 |  | Testing & Inspection | 3d | 2026-07-04 A | 2026-08-05 A | A47160 | 100% | 2027-06-17 | 2027-06-21 | ICKMO1-cost unite [2526.92 $]; boom truck [200 h]; labor [1200 h]; Physical Units [21773 h] | 2,526.92 | 2,526.92 | ZNA | CON |  |
| A47190 |  | Backfilling & Compaction | 3d | 2026-07-04 A | 2026-08-05 A | A47180, A47170, A47140 | 100% | 2027-06-21 | 2027-06-24 | ICKMO1-cost unite [5053.84 $]; labor [1200 h]; Physical Units [43546 h] | 5,053.84 | 5,053.84 | ZNA | CON |  |

| ID | WBS | Activity | Duration | Start | Finish | Predecessors | Complete | Planned start | Planned finish | Resources | Cost | Actual cost | ALKHARJ INDUSTERIAL AREA - PROJECT ZONES | ALKHARJ INDUSTERIAL AREA - DECEPLINS | ALKHARJ INDUSTERIAL AREA - Wet networks |
| --- | --- | --- | --- | --- | --- | --- | --- | --- | --- | --- | --- | --- | --- | --- | --- |
|  | MH-2.23.1.0 / MH-2.23.1.1 | **MH-2.23.1.0 / MH-2.23.1.1** |  | 2026-07-04 | 2026-08-05 |  |  |  |  |  |  |  |  |  |  |
| A47250 |  | Excavation | 3d | 2026-07-04 A | 2026-08-05 A | A47200, A1190 | 100% | 2027-06-17 | 2027-06-21 | ICKMO1-cost unite [3790.38 $]; Physical Units [32659.5 h] | 3,790.38 | 3,790.38 | ZNA | CON |  |
| A47260 |  | Pipe Laying | 3d | 2026-07-04 A | 2026-08-05 A | A47250 | 100% | 2027-06-21 | 2027-06-24 | ICKMO1-cost unite [2526.92 $]; Excavator [200 h]; Sewage Network Circular pipes (GRP) [63.28]; Physical Units [21773 h] | 2,526.92 | 2,526.92 | ZNA | CON | LAY |
| A47270 |  | Install Manhole | 3d | 2026-07-04 A | 2026-08-05 A | A47250 | 100% | 2027-06-21 | 2027-06-24 | ICKMO1-cost unite [11371.1 $]; boom truck [200 h]; labor [1200 h]; Physical Units [97978.5 h] | 11,371.15 | 11,371.15 | ZNA | CON | MH |
| A47280 |  | Testing & Inspection | 2d | 2026-07-04 A | 2026-08-05 A | A47260 | 100% | 2027-06-24 | 2027-06-27 | ICKMO1-cost unite [2526.92 $]; boom truck [200 h]; labor [1200 h]; Physical Units [21773 h] | 2,526.92 | 2,526.92 | ZNA | CON |  |
| A47290 |  | Backfilling & Compaction | 3d | 2026-07-04 A | 2026-08-05 A | A47280, A47270, A47240 | 100% | 2027-06-28 | 2027-07-01 | ICKMO1-cost unite [5053.84 $]; labor [1200 h]; Physical Units [43546 h] | 5,053.84 | 5,053.84 | ZNA | CON |  |
|  | MH-2.23.2 / MH-2.23.3 | **MH-2.23.2 / MH-2.23.3** |  | 2026-07-04 | 2026-08-05 |  |  |  |  |  |  |  |  |  |  |
| A47300 |  | Excavation | 3d | 2026-07-04 A | 2026-08-05 A | A47250, A1190 | 100% | 2027-06-21 | 2027-06-24 | ICKMO1-cost unite [3790.38 $]; Physical Units [32659.5 h] | 3,790.38 | 3,790.38 | ZNA | CON |  |
| A47310 |  | Pipe Laying | 3d | 2026-07-04 A | 2026-08-05 A | A47300 | 100% | 2027-06-24 | 2027-06-28 | ICKMO1-cost unite [2526.92 $]; Excavator [200 h]; Sewage Network Circular pipes (GRP) [63.28]; Physical Units [21773 h] | 2,526.92 | 2,526.92 | ZNA | CON | LAY |
| A47320 |  | Install Manhole | 3d | 2026-07-04 A | 2026-08-05 A | A47300 | 100% | 2027-06-24 | 2027-06-28 | ICKMO1-cost unite [11371.1 $]; boom truck [200 h]; labor [1200 h]; Physical Units [97978.5 h] | 11,371.15 | 11,371.15 | ZNA | CON | MH |
| A47330 |  | Testing & Inspection | 3d | 2026-07-04 A | 2026-08-05 A | A47310 | 100% | 2027-06-28 | 2027-07-01 | ICKMO1-cost unite [2526.92 $]; boom truck [200 h]; labor [1200 h]; Physical Units [21773 h] | 2,526.92 | 2,526.92 | ZNA | CON |  |
| A47340 |  | Backfilling & Compaction | 3d | 2026-07-04 A | 2026-08-05 A | A47330, A47320, A47290 | 100% | 2027-07-01 | 2027-07-05 | ICKMO1-cost unite [5053.84 $]; labor [1200 h]; Physical Units [43546 h] | 5,053.84 | 5,053.84 | ZNA | CON |  |
|  | MH-2.23.2.0 / MH-2.23.2.1 | **MH-2.23.2.0 / MH-2.23.2.1** |  | 2026-07-04 | 2026-08-05 |  |  |  |  |  |  |  |  |  |  |
| A47350 |  | Excavation | 3d | 2026-07-04 A | 2026-08-05 A | A47300, A1190 | 100% | 2027-06-24 | 2027-06-28 | ICKMO1-cost unite [3790.38 $]; Physical Units [32659.5 h] | 3,790.38 | 3,790.38 | ZNA | CON |  |
| A47360 |  | Pipe Laying | 3d | 2026-07-04 A | 2026-08-05 A | A47350 | 100% | 2027-06-28 | 2027-07-01 | ICKMO1-cost unite [2526.92 $]; Excavator [200 h]; Sewage Network Circular pipes (GRP) [63.28]; Physical Units [21773 h] | 2,526.92 | 2,526.92 | ZNA | CON | LAY |
| A47370 |  | Install Manhole | 3d | 2026-07-04 A | 2026-08-05 A | A47350 | 100% | 2027-06-28 | 2027-07-01 | ICKMO1-cost unite [11371.1 $]; boom truck [200 h]; labor [1200 h]; Physical Units [97978.5 h] | 11,371.15 | 11,371.15 | ZNA | CON | MH |
| A47380 |  | Testing & Inspection | 3d | 2026-07-04 A | 2026-08-05 A | A47360 | 100% | 2027-07-01 | 2027-07-05 | ICKMO1-cost unite [2526.92 $]; boom truck [200 h]; labor [1200 h]; Physical Units [21773 h] | 2,526.92 | 2,526.92 | ZNA | CON |  |
| A47390 |  | Backfilling & Compaction | 3d | 2026-07-04 A | 2026-08-05 A | A47380, A47370, A47340 | 100% | 2027-07-05 | 2027-07-08 | ICKMO1-cost unite [5053.84 $]; labor [1200 h]; Physical Units [43546 h] | 5,053.84 | 5,053.84 | ZNA | CON |  |
|  | MH-2.23.3 / MH-2.23.4 | **MH-2.23.3 / MH-2.23.4** |  | 2026-07-04 | 2026-08-05 |  |  |  |  |  |  |  |  |  |  |
| A47400 |  | Excavation | 4d | 2026-07-04 A | 2026-08-05 A | A47350, A1190 | 100% | 2027-06-28 | 2027-07-03 | ICKMO1-cost unite [3790.38 $]; Physical Units [32659.5 h] | 3,790.38 | 3,790.38 | ZNA | CON |  |
| A47410 |  | Pipe Laying | 8d | 2026-07-04 A | 2026-08-05 A | A47400 | 100% | 2027-07-03 | 2027-07-12 | ICKMO1-cost unite [2526.92 $]; Excavator [200 h]; Sewage Network Circular pipes (GRP) [63.28]; Physical Units [21773 h] | 2,526.92 | 2,526.92 | ZNA | CON | LAY |
| A47420 |  | Install Manhole | 4d | 2026-07-04 A | 2026-08-05 A | A47400 | 100% | 2027-07-03 | 2027-07-07 | ICKMO1-cost unite [11371.1 $]; boom truck [200 h]; labor [1200 h]; Physical Units [97978.5 h] | 11,371.15 | 11,371.15 | ZNA | CON | MH |
| A47430 |  | Testing & Inspection | 2d | 2026-07-04 A | 2026-08-05 A | A47410 | 100% | 2027-07-12 | 2027-07-14 | ICKMO1-cost unite [2526.92 $]; boom truck [200 h]; labor [1200 h]; Physical Units [21773 h] | 2,526.92 | 2,526.92 | ZNA | CON |  |
| A47440 |  | Backfilling & Compaction | 4d | 2026-07-04 A | 2026-08-05 A | A47430, A47420, A47390 | 100% | 2027-07-14 | 2027-07-19 | ICKMO1-cost unite [5053.84 $]; labor [1200 h]; Physical Units [43546 h] | 5,053.84 | 5,053.84 | ZNA | CON |  |

| ID | WBS | Activity | Duration | Start | Finish | Predecessors | Complete | Planned start | Planned finish | Resources | Cost | Actual cost | ALKHARJ INDUSTERIAL AREA - PROJECT ZONES | ALKHARJ INDUSTERIAL AREA - DECEPLINS | ALKHARJ INDUSTERIAL AREA - Wet networks |
| --- | --- | --- | --- | --- | --- | --- | --- | --- | --- | --- | --- | --- | --- | --- | --- |
|  | LR 11 | **LR 11** |  | 2026-07-04 | 2026-08-05 |  |  |  |  |  |  |  |  |  |  |
|  | MH-2.21.4.0 / MH-2.21.4.1 | **MH-2.21.4.0 / MH-2.21.4.1** |  | 2026-07-04 | 2026-08-05 |  |  |  |  |  |  |  |  |  |  |
| A47450 |  | Excavation | 2d | 2026-07-04 A | 2026-08-05 A | A69820, A1190, A47400 | 100% | 2027-07-03 | 2027-07-05 | ICKMO1-cost unite [3956.62 $]; Physical Units [34091.9 h] | 3,956.62 | 3,956.62 | ZNA | CON |  |
| A47460 |  | Pipe Laying | 2d | 2026-07-04 A | 2026-08-05 A | A47450 | 100% | 2027-07-05 | 2027-07-07 | ICKMO1-cost unite [2637.75 $]; Excavator [200 h]; Sewage Network Circular pipes (GRP) [63.28]; Physical Units [22728 h] | 2,637.75 | 2,637.75 | ZNA | CON | LAY |
| A47470 |  | Install Manhole | 2d | 2026-07-04 A | 2026-08-05 A | A47450 | 100% | 2027-07-05 | 2027-07-07 | ICKMO1-cost unite [11869.9 $]; boom truck [200 h]; labor [1200 h]; Physical Units [102276 h] | 11,869.87 | 11,869.87 | ZNA | CON | MH |
| A47480 |  | Testing & Inspection | 2d | 2026-07-04 A | 2026-08-05 A | A47460 | 100% | 2027-07-07 | 2027-07-10 | ICKMO1-cost unite [2637.75 $]; boom truck [200 h]; labor [1200 h]; Physical Units [22728 h] | 2,637.75 | 2,637.75 | ZNA | CON |  |
| A47490 |  | Backfilling & Compaction | 2d | 2026-07-04 A | 2026-08-05 A | A47480, A47470 | 100% | 2027-07-10 | 2027-07-12 | ICKMO1-cost unite [5275.5 $]; labor [1200 h]; Physical Units [45455.9 h] | 5,275.5 | 5,275.5 | ZNA | CON |  |
|  | MH-2.21.4.1 / MH-2.21.4.2 | **MH-2.21.4.1 / MH-2.21.4.2** |  | 2026-07-04 | 2026-08-05 |  |  |  |  |  |  |  |  |  |  |
| A47500 |  | Excavation | 2d | 2026-07-04 A | 2026-08-05 A | A47450, A1190 | 100% | 2027-07-05 | 2027-07-07 | ICKMO1-cost unite [3956.62 $]; Physical Units [34091.9 h] | 3,956.62 | 3,956.62 | ZNA | CON |  |
| A47510 |  | Pipe Laying | 2d | 2026-07-04 A | 2026-08-05 A | A47500 | 100% | 2027-07-07 | 2027-07-10 | ICKMO1-cost unite [2637.75 $]; Excavator [200 h]; Sewage Network Circular pipes (GRP) [63.28]; Physical Units [22728 h] | 2,637.75 | 2,637.75 | ZNA | CON | LAY |
| A47520 |  | Install Manhole | 2d | 2026-07-04 A | 2026-08-05 A | A47500 | 100% | 2027-07-07 | 2027-07-10 | ICKMO1-cost unite [11869.9 $]; boom truck [200 h]; labor [1200 h]; Physical Units [102276 h] | 11,869.87 | 11,869.87 | ZNA | CON | MH |
| A47530 |  | Testing & Inspection | 2d | 2026-07-04 A | 2026-08-05 A | A47510 | 100% | 2027-07-10 | 2027-07-12 | ICKMO1-cost unite [2637.75 $]; boom truck [200 h]; labor [1200 h]; Physical Units [22728 h] | 2,637.75 | 2,637.75 | ZNA | CON |  |
| A47540 |  | Backfilling & Compaction | 2d | 2026-07-04 A | 2026-08-05 A | A47530, A47520, A47490 | 100% | 2027-07-12 | 2027-07-14 | ICKMO1-cost unite [5275.5 $]; labor [1200 h]; Physical Units [45455.9 h] | 5,275.5 | 5,275.5 | ZNA | CON |  |
|  | MH-2.21.4.1.0 / MH-2.21.4.1.1 | **MH-2.21.4.1.0 / MH-2.21.4.1.1** |  | 2026-07-04 | 2026-08-05 |  |  |  |  |  |  |  |  |  |  |
| A47550 |  | Excavation | 2d | 2026-07-04 A | 2026-08-05 A | A47500, A1190 | 100% | 2027-07-07 | 2027-07-10 | ICKMO1-cost unite [3956.62 $]; Physical Units [34091.9 h] | 3,956.62 | 3,956.62 | ZNA | CON |  |
| A47560 |  | Pipe Laying | 2d | 2026-07-04 A | 2026-08-05 A | A47550 | 100% | 2027-07-10 | 2027-07-12 | ICKMO1-cost unite [2637.75 $]; Excavator [200 h]; Sewage Network Circular pipes (GRP) [63.28]; Physical Units [22728 h] | 2,637.75 | 2,637.75 | ZNA | CON | LAY |
| A47570 |  | Install Manhole | 2d | 2026-07-04 A | 2026-08-05 A | A47550 | 100% | 2027-07-10 | 2027-07-12 | ICKMO1-cost unite [11869.9 $]; boom truck [200 h]; labor [1200 h]; Physical Units [102276 h] | 11,869.87 | 11,869.87 | ZNA | CON | MH |
| A47580 |  | Testing & Inspection | 2d | 2026-07-04 A | 2026-08-05 A | A47560 | 100% | 2027-07-12 | 2027-07-14 | ICKMO1-cost unite [2637.75 $]; boom truck [200 h]; labor [1200 h]; Physical Units [22728 h] | 2,637.75 | 2,637.75 | ZNA | CON |  |
| A47590 |  | Backfilling & Compaction | 2d | 2026-07-04 A | 2026-08-05 A | A47580, A47570, A47540 | 100% | 2027-07-14 | 2027-07-17 | ICKMO1-cost unite [5275.5 $]; labor [1200 h]; Physical Units [45455.9 h] | 5,275.5 | 5,275.5 | ZNA | CON |  |
|  | MH-2.21.4.2 / MH-2.21.4.3 | **MH-2.21.4.2 / MH-2.21.4.3** |  | 2026-07-04 | 2026-08-05 |  |  |  |  |  |  |  |  |  |  |
| A47600 |  | Excavation | 2d | 2026-07-04 A | 2026-08-05 A | A47550, A1190 | 100% | 2027-07-10 | 2027-07-12 | ICKMO1-cost unite [3956.62 $]; Physical Units [34091.9 h] | 3,956.62 | 3,956.62 | ZNA | CON |  |
| A47610 |  | Pipe Laying | 2d | 2026-07-04 A | 2026-08-05 A | A47600 | 100% | 2027-07-12 | 2027-07-14 | ICKMO1-cost unite [2637.75 $]; Excavator [200 h]; Sewage Network Circular pipes (GRP) [63.28]; Physical Units [22728 h] | 2,637.75 | 2,637.75 | ZNA | CON | LAY |
| A47620 |  | Install Manhole | 2d | 2026-07-04 A | 2026-08-05 A | A47600 | 100% | 2027-07-12 | 2027-07-14 | ICKMO1-cost unite [11869.9 $]; boom truck [200 h]; labor [1200 h]; Physical Units [102276 h] | 11,869.87 | 11,869.87 | ZNA | CON | MH |
| A47630 |  | Testing & Inspection | 2d | 2026-07-04 A | 2026-08-05 A | A47610 | 100% | 2027-07-14 | 2027-07-17 | ICKMO1-cost unite [2637.75 $]; boom truck [200 h]; labor [1200 h]; Physical Units [22728 h] | 2,637.75 | 2,637.75 | ZNA | CON |  |
| A47640 |  | Backfilling & Compaction | 2d | 2026-07-04 A | 2026-08-05 A | A47630, A47620, A47590 | 100% | 2027-07-17 | 2027-07-19 | ICKMO1-cost unite [5275.5 $]; labor [1200 h]; Physical Units [45455.9 h] | 5,275.5 | 5,275.5 | ZNA | CON |  |

| ID | WBS | Activity | Duration | Start | Finish | Predecessors | Complete | Planned start | Planned finish | Resources | Cost | Actual cost | ALKHARJ INDUSTERIAL AREA - PROJECT ZONES | ALKHARJ INDUSTERIAL AREA - DECEPLINS | ALKHARJ INDUSTERIAL AREA - Wet networks |
| --- | --- | --- | --- | --- | --- | --- | --- | --- | --- | --- | --- | --- | --- | --- | --- |
|  | MH-2.21.4.2.0 / MH-2.21.4.2.1 | **MH-2.21.4.2.0 / MH-2.21.4.2.1** |  | 2026-07-04 | 2026-08-05 |  |  |  |  |  |  |  |  |  |  |
| A47650 |  | Excavation | 2d | 2026-07-04 A | 2026-08-05 A | A47600, A1190 | 100% | 2027-07-12 | 2027-07-14 | ICKMO1-cost unite [3956.62 $]; Physical Units [34091.9 h] | 3,956.62 | 3,956.62 | ZNA | CON |  |
| A47660 |  | Pipe Laying | 2d | 2026-07-04 A | 2026-08-05 A | A47650 | 100% | 2027-07-14 | 2027-07-17 | ICKMO1-cost unite [2637.75 $]; Excavator [200 h]; Sewage Network Circular pipes (GRP) [63.28]; Physical Units [22728 h] | 2,637.75 | 2,637.75 | ZNA | CON | LAY |
| A47670 |  | Install Manhole | 2d | 2026-07-04 A | 2026-08-05 A | A47650 | 100% | 2027-07-14 | 2027-07-17 | ICKMO1-cost unite [11869.9 $]; boom truck [200 h]; labor [1200 h]; Physical Units [102276 h] | 11,869.87 | 11,869.87 | ZNA | CON | MH |
| A47680 |  | Testing & Inspection | 2d | 2026-07-04 A | 2026-08-05 A | A47660 | 100% | 2027-07-17 | 2027-07-19 | ICKMO1-cost unite [2637.75 $]; boom truck [200 h]; labor [1200 h]; Physical Units [22728 h] | 2,637.75 | 2,637.75 | ZNA | CON |  |
| A47690 |  | Backfilling & Compaction | 2d | 2026-07-04 A | 2026-08-05 A | A47680, A47670, A47640 | 100% | 2027-07-19 | 2027-07-21 | ICKMO1-cost unite [5275.5 $]; labor [1200 h]; Physical Units [45455.9 h] | 5,275.5 | 5,275.5 | ZNA | CON |  |
|  | MH-2.21.4.3 / MH-2.21.4.4 | **MH-2.21.4.3 / MH-2.21.4.4** |  | 2026-07-04 | 2026-08-05 |  |  |  |  |  |  |  |  |  |  |
| A47700 |  | Excavation | 2d | 2026-07-04 A | 2026-08-05 A | A47650, A1190 | 100% | 2027-07-14 | 2027-07-17 | ICKMO1-cost unite [3956.62 $]; Physical Units [34091.9 h] | 3,956.62 | 3,956.62 | ZNA | CON |  |
| A47710 |  | Pipe Laying | 2d | 2026-07-04 A | 2026-08-05 A | A47700 | 100% | 2027-07-17 | 2027-07-19 | ICKMO1-cost unite [2637.75 $]; Excavator [200 h]; Sewage Network Circular pipes (GRP) [63.28]; Physical Units [22728 h] | 2,637.75 | 2,637.75 | ZNA | CON | LAY |
| A47720 |  | Install Manhole | 2d | 2026-07-04 A | 2026-08-05 A | A47700 | 100% | 2027-07-17 | 2027-07-19 | ICKMO1-cost unite [11869.9 $]; boom truck [200 h]; labor [1200 h]; Physical Units [102276 h] | 11,869.87 | 11,869.87 | ZNA | CON | MH |
| A47730 |  | Testing & Inspection | 2d | 2026-07-04 A | 2026-08-05 A | A47710 | 100% | 2027-07-19 | 2027-07-21 | ICKMO1-cost unite [2637.75 $]; boom truck [200 h]; labor [1200 h]; Physical Units [22728 h] | 2,637.75 | 2,637.75 | ZNA | CON |  |
| A47740 |  | Backfilling & Compaction | 2d | 2026-07-04 A | 2026-08-05 A | A47730, A47720, A47690 | 100% | 2027-07-21 | 2027-07-24 | ICKMO1-cost unite [5275.5 $]; labor [1200 h]; Physical Units [45455.9 h] | 5,275.5 | 5,275.5 | ZNA | CON |  |
|  | LR 12 | **LR 12** |  | 2026-07-04 | 2026-08-05 |  |  |  |  |  |  |  |  |  |  |
|  | MH-2.21.6.0 / MH-2.21.6.1 | **MH-2.21.6.0 / MH-2.21.6.1** |  | 2026-07-04 | 2026-08-05 |  |  |  |  |  |  |  |  |  |  |
| A47750 |  | Excavation | 4d | 2026-07-04 A | 2026-08-05 A | A69670, A1190 | 100% | 2027-05-27 | 2027-06-01 | ICKMO1-cost unite [3956.62 $]; Physical Units [34091.9 h] | 3,956.62 | 3,956.62 | ZNA | CON |  |
| A47760 |  | Pipe Laying | 8d | 2026-07-04 A | 2026-08-05 A | A47750 | 100% | 2027-06-01 | 2027-06-10 | ICKMO1-cost unite [2637.75 $]; Excavator [200 h]; Sewage Network Circular pipes (GRP) [63.28]; Physical Units [22728 h] | 2,637.75 | 2,637.75 | ZNA | CON | LAY |
| A47770 |  | Install Manhole | 4d | 2026-07-04 A | 2026-08-05 A | A47750 | 100% | 2027-06-01 | 2027-06-06 | ICKMO1-cost unite [11869.9 $]; boom truck [200 h]; labor [1200 h]; Physical Units [102276 h] | 11,869.87 | 11,869.87 | ZNA | CON | MH |
| A47780 |  | Testing & Inspection | 2d | 2026-07-04 A | 2026-08-05 A | A47760 | 100% | 2027-06-10 | 2027-06-13 | ICKMO1-cost unite [2637.75 $]; boom truck [200 h]; labor [1200 h]; Physical Units [22728 h] | 2,637.75 | 2,637.75 | ZNA | CON |  |
| A47790 |  | Backfilling & Compaction | 4d | 2026-07-04 A | 2026-08-05 A | A47780, A47770 | 100% | 2027-06-13 | 2027-06-17 | ICKMO1-cost unite [5275.5 $]; labor [1200 h]; Physical Units [45455.9 h] | 5,275.5 | 5,275.5 | ZNA | CON |  |
|  | MH-2.21.6.1 / MH-2.21.6.2 | **MH-2.21.6.1 / MH-2.21.6.2** |  | 2026-07-04 | 2026-08-05 |  |  |  |  |  |  |  |  |  |  |
| A47800 |  | Excavation | 4d | 2026-07-04 A | 2026-08-05 A | A47750, A1190 | 100% | 2027-06-01 | 2027-06-06 | ICKMO1-cost unite [3956.62 $]; Physical Units [34091.9 h] | 3,956.62 | 3,956.62 | ZNA | CON |  |
| A47810 |  | Pipe Laying | 8d | 2026-07-04 A | 2026-08-05 A | A47800 | 100% | 2027-06-06 | 2027-06-15 | ICKMO1-cost unite [2637.75 $]; Excavator [200 h]; Sewage Network Circular pipes (GRP) [63.28]; Physical Units [22728 h] | 2,637.75 | 2,637.75 | ZNA | CON | LAY |
| A47820 |  | Install Manhole | 4d | 2026-07-04 A | 2026-08-05 A | A47800 | 100% | 2027-06-06 | 2027-06-10 | ICKMO1-cost unite [11869.9 $]; boom truck [200 h]; labor [1200 h]; Physical Units [102276 h] | 11,869.87 | 11,869.87 | ZNA | CON | MH |
| A47830 |  | Testing & Inspection | 2d | 2026-07-04 A | 2026-08-05 A | A47810 | 100% | 2027-06-15 | 2027-06-17 | ICKMO1-cost unite [2637.75 $]; boom truck [200 h]; labor [1200 h]; Physical Units [22728 h] | 2,637.75 | 2,637.75 | ZNA | CON |  |
| A47840 |  | Backfilling & Compaction | 4d | 2026-07-04 A | 2026-08-05 A | A47830, A47820, A47790 | 100% | 2027-06-17 | 2027-06-22 | ICKMO1-cost unite [5275.5 $]; labor [1200 h]; Physical Units [45455.9 h] | 5,275.5 | 5,275.5 | ZNA | CON |  |

| ID | WBS | Activity | Duration | Start | Finish | Predecessors | Complete | Planned start | Planned finish | Resources | Cost | Actual cost | ALKHARJ INDUSTERIAL AREA - PROJECT ZONES | ALKHARJ INDUSTERIAL AREA - DECEPLINS | ALKHARJ INDUSTERIAL AREA - Wet networks |
| --- | --- | --- | --- | --- | --- | --- | --- | --- | --- | --- | --- | --- | --- | --- | --- |
|  | MH-2.21.6.1.0 / MH-2.21.6.1.1 | **MH-2.21.6.1.0 / MH-2.21.6.1.1** |  | 2026-07-04 | 2026-08-05 |  |  |  |  |  |  |  |  |  |  |
| A47850 |  | Excavation | 4d | 2026-07-04 A | 2026-08-05 A | A47800, A1190 | 100% | 2027-06-06 | 2027-06-10 | ICKMO1-cost unite [3956.62 $]; Physical Units [34091.9 h] | 3,956.62 | 3,956.62 | ZNA | CON |  |
| A47860 |  | Pipe Laying | 4d | 2026-07-04 A | 2026-08-05 A | A47850 | 100% | 2027-06-10 | 2027-06-15 | ICKMO1-cost unite [2637.75 $]; Excavator [200 h]; Sewage Network Circular pipes (GRP) [63.28]; Physical Units [22728 h] | 2,637.75 | 2,637.75 | ZNA | CON | LAY |
| A47870 |  | Install Manhole | 4d | 2026-07-04 A | 2026-08-05 A | A47850 | 100% | 2027-06-10 | 2027-06-15 | ICKMO1-cost unite [11869.9 $]; boom truck [200 h]; labor [1200 h]; Physical Units [102276 h] | 11,869.87 | 11,869.87 | ZNA | CON | MH |
| A47880 |  | Testing & Inspection | 2d | 2026-07-04 A | 2026-08-05 A | A47860 | 100% | 2027-06-15 | 2027-06-17 | ICKMO1-cost unite [2637.75 $]; boom truck [200 h]; labor [1200 h]; Physical Units [22728 h] | 2,637.75 | 2,637.75 | ZNA | CON |  |
| A47890 |  | Backfilling & Compaction | 4d | 2026-07-04 A | 2026-08-05 A | A47880, A47870, A47840 | 100% | 2027-06-22 | 2027-06-27 | ICKMO1-cost unite [5275.5 $]; labor [1200 h]; Physical Units [45455.9 h] | 5,275.5 | 5,275.5 | ZNA | CON |  |
|  | MH-2.21.6.1.1 / MH-2.21.6.1.2 | **MH-2.21.6.1.1 / MH-2.21.6.1.2** |  | 2026-07-04 | 2026-08-05 |  |  |  |  |  |  |  |  |  |  |
| A47900 |  | Excavation | 4d | 2026-07-04 A | 2026-08-05 A | A47850, A1190 | 100% | 2027-06-10 | 2027-06-15 | ICKMO1-cost unite [3956.62 $]; Physical Units [34091.9 h] | 3,956.62 | 3,956.62 | ZNA | CON |  |
| A47910 |  | Pipe Laying | 4d | 2026-07-04 A | 2026-08-05 A | A47900 | 100% | 2027-06-15 | 2027-06-20 | ICKMO1-cost unite [2637.75 $]; Excavator [200 h]; Sewage Network Circular pipes (GRP) [63.28]; Physical Units [22728 h] | 2,637.75 | 2,637.75 | ZNA | CON | LAY |
| A47920 |  | Install Manhole | 4d | 2026-07-04 A | 2026-08-05 A | A47900 | 100% | 2027-06-15 | 2027-06-20 | ICKMO1-cost unite [11869.9 $]; boom truck [200 h]; labor [1200 h]; Physical Units [102276 h] | 11,869.87 | 11,869.87 | ZNA | CON | MH |
| A47930 |  | Testing & Inspection | 2d | 2026-07-04 A | 2026-08-05 A | A47910 | 100% | 2027-06-20 | 2027-06-22 | ICKMO1-cost unite [2637.75 $]; boom truck [200 h]; labor [1200 h]; Physical Units [22728 h] | 2,637.75 | 2,637.75 | ZNA | CON |  |
| A47940 |  | Backfilling & Compaction | 4d | 2026-07-04 A | 2026-08-05 A | A47930, A47920, A47890 | 100% | 2027-06-27 | 2027-07-01 | ICKMO1-cost unite [5275.5 $]; labor [1200 h]; Physical Units [45455.9 h] | 5,275.5 | 5,275.5 | ZNA | CON |  |
|  | MH-2.21.6.2 / MH-2.21.6.3 | **MH-2.21.6.2 / MH-2.21.6.3** |  | 2026-07-04 | 2026-08-05 |  |  |  |  |  |  |  |  |  |  |
| A47950 |  | Excavation | 4d | 2026-07-04 A | 2026-08-05 A | A47900, A1190 | 100% | 2027-06-15 | 2027-06-20 | ICKMO1-cost unite [3956.62 $]; Physical Units [34091.9 h] | 3,956.62 | 3,956.62 | ZNA | CON |  |
| A47960 |  | Pipe Laying | 8d | 2026-07-04 A | 2026-08-05 A | A47950 | 100% | 2027-06-20 | 2027-06-29 | ICKMO1-cost unite [2637.75 $]; Excavator [200 h]; Sewage Network Circular pipes (GRP) [63.28]; Physical Units [22728 h] | 2,637.75 | 2,637.75 | ZNA | CON | LAY |
| A47970 |  | Install Manhole | 4d | 2026-07-04 A | 2026-08-05 A | A47950 | 100% | 2027-06-20 | 2027-06-24 | ICKMO1-cost unite [11869.9 $]; boom truck [200 h]; labor [1200 h]; Physical Units [102276 h] | 11,869.87 | 11,869.87 | ZNA | CON | MH |
| A47980 |  | Testing & Inspection | 2d | 2026-07-04 A | 2026-08-05 A | A47960 | 100% | 2027-06-29 | 2027-07-01 | ICKMO1-cost unite [2637.75 $]; boom truck [200 h]; labor [1200 h]; Physical Units [22728 h] | 2,637.75 | 2,637.75 | ZNA | CON |  |
| A47990 |  | Backfilling & Compaction | 4d | 2026-07-04 A | 2026-08-05 A | A47980, A47970, A47940 | 100% | 2027-07-01 | 2027-07-06 | ICKMO1-cost unite [5275.5 $]; labor [1200 h]; Physical Units [45455.9 h] | 5,275.5 | 5,275.5 | ZNA | CON |  |
|  | MH-2.21.6.3 / MH-2.21.6.4 | **MH-2.21.6.3 / MH-2.21.6.4** |  | 2026-07-04 | 2026-08-05 |  |  |  |  |  |  |  |  |  |  |
| A48000 |  | Excavation | 4d | 2026-07-04 A | 2026-08-05 A | A47950, A1190 | 100% | 2027-06-20 | 2027-06-24 | ICKMO1-cost unite [3956.62 $]; Physical Units [34091.9 h] | 3,956.62 | 3,956.62 | ZNA | CON |  |
| A48010 |  | Pipe Laying | 8d | 2026-07-04 A | 2026-08-05 A | A48000 | 100% | 2027-06-24 | 2027-07-04 | ICKMO1-cost unite [2637.75 $]; Excavator [200 h]; Sewage Network Circular pipes (GRP) [63.28]; Physical Units [22728 h] | 2,637.75 | 2,637.75 | ZNA | CON | LAY |
| A48020 |  | Install Manhole | 4d | 2026-07-04 A | 2026-08-05 A | A48000 | 100% | 2027-06-24 | 2027-06-29 | ICKMO1-cost unite [11869.9 $]; boom truck [200 h]; labor [1200 h]; Physical Units [102276 h] | 11,869.87 | 11,869.87 | ZNA | CON | MH |
| A48030 |  | Testing & Inspection | 2d | 2026-07-04 A | 2026-08-05 A | A48010 | 100% | 2027-07-04 | 2027-07-06 | ICKMO1-cost unite [2637.75 $]; boom truck [200 h]; labor [1200 h]; Physical Units [22728 h] | 2,637.75 | 2,637.75 | ZNA | CON |  |
| A48040 |  | Backfilling & Compaction | 4d | 2026-07-04 A | 2026-08-05 A | A48030, A48020, A47990 | 100% | 2027-07-06 | 2027-07-11 | ICKMO1-cost unite [5275.5 $]; labor [1200 h]; Physical Units [45455.9 h] | 5,275.5 | 5,275.5 | ZNA | CON |  |

| ID | WBS | Activity | Duration | Start | Finish | Predecessors | Complete | Planned start | Planned finish | Resources | Cost | Actual cost | ALKHARJ INDUSTERIAL AREA - PROJECT ZONES | ALKHARJ INDUSTERIAL AREA - DECEPLINS | ALKHARJ INDUSTERIAL AREA - Wet networks |
| --- | --- | --- | --- | --- | --- | --- | --- | --- | --- | --- | --- | --- | --- | --- | --- |
|  | LR 13 | **LR 13** |  | 2026-07-04 | 2026-08-05 |  |  |  |  |  |  |  |  |  |  |
|  | MH-1.13 / MH-1.14 | **MH-1.13 / MH-1.14** |  | 2026-07-04 | 2026-08-05 |  |  |  |  |  |  |  |  |  |  |
| A48050 |  | Excavation | 4d | 2026-07-04 A | 2026-08-05 A | A69520, A1190 | 100% | 2026-11-25 | 2026-11-30 | ICKMO1-cost unite [3956.62 $]; Physical Units [34091.9 h] | 3,956.62 | 3,956.62 | ZNA | CON |  |
| A48060 |  | Pipe Laying | 8d | 2026-07-04 A | 2026-08-05 A | A48050 | 100% | 2026-11-30 | 2026-12-09 | ICKMO1-cost unite [2637.75 $]; Excavator [200 h]; Sewage Network Circular pipes (GRP) [63.28]; Physical Units [22728 h] | 2,637.75 | 2,637.75 | ZNA | CON | LAY |
| A48070 |  | Install Manhole | 4d | 2026-07-04 A | 2026-08-05 A | A48050 | 100% | 2026-11-30 | 2026-12-05 | ICKMO1-cost unite [11869.9 $]; boom truck [200 h]; labor [1200 h]; Physical Units [102276 h] | 11,869.87 | 11,869.87 | ZNA | CON | MH |
| A48080 |  | Testing & Inspection | 2d | 2026-07-04 A | 2026-08-05 A | A48060 | 100% | 2026-12-09 | 2026-12-12 | ICKMO1-cost unite [2637.75 $]; boom truck [200 h]; labor [1200 h]; Physical Units [22728 h] | 2,637.75 | 2,637.75 | ZNA | CON |  |
| A48090 |  | Backfilling & Compaction | 4d | 2026-07-04 A | 2026-08-05 A | A48080, A48070 | 100% | 2026-12-12 | 2026-12-16 | ICKMO1-cost unite [5275.5 $]; labor [1200 h]; Physical Units [45455.9 h] | 5,275.5 | 5,275.5 | ZNA | CON |  |
|  | MH-1.15.0 / MH-1.15.1 | **MH-1.15.0 / MH-1.15.1** |  | 2026-07-04 | 2026-08-05 |  |  |  |  |  |  |  |  |  |  |
| A48100 |  | Excavation | 4d | 2026-07-04 A | 2026-08-05 A | A48050, A1190 | 100% | 2026-11-30 | 2026-12-05 | ICKMO1-cost unite [3956.62 $]; Physical Units [34091.9 h] | 3,956.62 | 3,956.62 | ZNA | CON |  |
| A48110 |  | Pipe Laying | 4d | 2026-07-04 A | 2026-08-05 A | A48100 | 100% | 2026-12-05 | 2026-12-09 | ICKMO1-cost unite [2637.75 $]; Excavator [200 h]; Sewage Network Circular pipes (GRP) [63.28]; Physical Units [22728 h] | 2,637.75 | 2,637.75 | ZNA | CON | LAY |
| A48120 |  | Install Manhole | 4d | 2026-07-04 A | 2026-08-05 A | A48100 | 100% | 2026-12-05 | 2026-12-09 | ICKMO1-cost unite [11869.9 $]; boom truck [200 h]; labor [1200 h]; Physical Units [102276 h] | 11,869.87 | 11,869.87 | ZNA | CON | MH |
| A48130 |  | Testing & Inspection | 2d | 2026-07-04 A | 2026-08-05 A | A48110 | 100% | 2026-12-09 | 2026-12-12 | ICKMO1-cost unite [2637.75 $]; boom truck [200 h]; labor [1200 h]; Physical Units [22728 h] | 2,637.75 | 2,637.75 | ZNA | CON |  |
| A48140 |  | Backfilling & Compaction | 4d | 2026-07-04 A | 2026-08-05 A | A48130, A48120, A48090 | 100% | 2026-12-16 | 2026-12-21 | ICKMO1-cost unite [5275.5 $]; labor [1200 h]; Physical Units [45455.9 h] | 5,275.5 | 5,275.5 | ZNA | CON |  |
|  | MH-1.15.1 / MH-1.15.2 | **MH-1.15.1 / MH-1.15.2** |  | 2026-07-04 | 2026-08-05 |  |  |  |  |  |  |  |  |  |  |
| A48150 |  | Excavation | 4d | 2026-07-04 A | 2026-08-05 A | A48100, A1190 | 100% | 2026-12-05 | 2026-12-09 | ICKMO1-cost unite [3956.62 $]; Physical Units [34091.9 h] | 3,956.62 | 3,956.62 | ZNA | CON |  |
| A48160 |  | Pipe Laying | 4d | 2026-07-04 A | 2026-08-05 A | A48150 | 100% | 2026-12-09 | 2026-12-14 | ICKMO1-cost unite [2637.75 $]; Excavator [200 h]; Sewage Network Circular pipes (GRP) [63.28]; Physical Units [22728 h] | 2,637.75 | 2,637.75 | ZNA | CON | LAY |
| A48170 |  | Install Manhole | 4d | 2026-07-04 A | 2026-08-05 A | A48150 | 100% | 2026-12-09 | 2026-12-14 | ICKMO1-cost unite [11869.9 $]; boom truck [200 h]; labor [1200 h]; Physical Units [102276 h] | 11,869.87 | 11,869.87 | ZNA | CON | MH |
| A48180 |  | Testing & Inspection | 2d | 2026-07-04 A | 2026-08-05 A | A48160 | 100% | 2026-12-14 | 2026-12-16 | ICKMO1-cost unite [2637.75 $]; boom truck [200 h]; labor [1200 h]; Physical Units [22728 h] | 2,637.75 | 2,637.75 | ZNA | CON |  |
| A48190 |  | Backfilling & Compaction | 4d | 2026-07-04 A | 2026-08-05 A | A48180, A48170, A48140 | 100% | 2026-12-21 | 2026-12-26 | ICKMO1-cost unite [5275.5 $]; labor [1200 h]; Physical Units [45455.9 h] | 5,275.5 | 5,275.5 | ZNA | CON |  |
|  | MH-1.15.2 / MH-1.15.3 | **MH-1.15.2 / MH-1.15.3** |  | 2026-07-04 | 2026-08-05 |  |  |  |  |  |  |  |  |  |  |
| A48200 |  | Excavation | 4d | 2026-07-04 A | 2026-08-05 A | A48150, A1190 | 100% | 2026-12-09 | 2026-12-14 | ICKMO1-cost unite [3956.62 $]; Physical Units [34091.9 h] | 3,956.62 | 3,956.62 | ZNA | CON |  |
| A48210 |  | Pipe Laying | 8d | 2026-07-04 A | 2026-08-05 A | A48200 | 100% | 2026-12-14 | 2026-12-23 | ICKMO1-cost unite [2637.75 $]; Excavator [200 h]; Sewage Network Circular pipes (GRP) [63.28]; Physical Units [22728 h] | 2,637.75 | 2,637.75 | ZNA | CON | LAY |
| A48220 |  | Install Manhole | 4d | 2026-07-04 A | 2026-08-05 A | A48200 | 100% | 2026-12-14 | 2026-12-19 | ICKMO1-cost unite [11869.9 $]; boom truck [200 h]; labor [1200 h]; Physical Units [102276 h] | 11,869.87 | 11,869.87 | ZNA | CON | MH |
| A48230 |  | Testing & Inspection | 2d | 2026-07-04 A | 2026-08-05 A | A48210 | 100% | 2026-12-23 | 2026-12-26 | ICKMO1-cost unite [2637.75 $]; boom truck [200 h]; labor [1200 h]; Physical Units [22728 h] | 2,637.75 | 2,637.75 | ZNA | CON |  |
| A48240 |  | Backfilling & Compaction | 4d | 2026-07-04 A | 2026-08-05 A | A48230, A48220, A48190 | 100% | 2026-12-26 | 2026-12-30 | ICKMO1-cost unite [5275.5 $]; labor [1200 h]; Physical Units [45455.9 h] | 5,275.5 | 5,275.5 | ZNA | CON |  |

| ID | WBS | Activity | Duration | Start | Finish | Predecessors | Complete | Planned start | Planned finish | Resources | Cost | Actual cost | ALKHARJ INDUSTERIAL AREA - PROJECT ZONES | ALKHARJ INDUSTERIAL AREA - DECEPLINS | ALKHARJ INDUSTERIAL AREA - Wet networks |
| --- | --- | --- | --- | --- | --- | --- | --- | --- | --- | --- | --- | --- | --- | --- | --- |
|  | MH-1.15.2.0 / MH-1.15.2.1 | **MH-1.15.2.0 / MH-1.15.2.1** |  | 2026-07-04 | 2026-08-05 |  |  |  |  |  |  |  |  |  |  |
| A48250 |  | Excavation | 4d | 2026-07-04 A | 2026-08-05 A | A48200, A1190 | 100% | 2026-12-14 | 2026-12-19 | ICKMO1-cost unite [3956.62 $]; Physical Units [34091.9 h] | 3,956.62 | 3,956.62 | ZNA | CON |  |
| A48260 |  | Pipe Laying | 8d | 2026-07-04 A | 2026-08-05 A | A48250 | 100% | 2026-12-19 | 2026-12-28 | ICKMO1-cost unite [2637.75 $]; Excavator [200 h]; Sewage Network Circular pipes (GRP) [63.28]; Physical Units [22728 h] | 2,637.75 | 2,637.75 | ZNA | CON | LAY |
| A48270 |  | Install Manhole | 4d | 2026-07-04 A | 2026-08-05 A | A48250 | 100% | 2026-12-19 | 2026-12-23 | ICKMO1-cost unite [11869.9 $]; boom truck [200 h]; labor [1200 h]; Physical Units [102276 h] | 11,869.87 | 11,869.87 | ZNA | CON | MH |
| A48280 |  | Testing & Inspection | 2d | 2026-07-04 A | 2026-08-05 A | A48260 | 100% | 2026-12-28 | 2026-12-30 | ICKMO1-cost unite [2637.75 $]; boom truck [200 h]; labor [1200 h]; Physical Units [22728 h] | 2,637.75 | 2,637.75 | ZNA | CON |  |
| A48290 |  | Backfilling & Compaction | 4d | 2026-07-04 A | 2026-08-05 A | A48280, A48270, A48240 | 100% | 2026-12-30 | 2027-01-04 | ICKMO1-cost unite [5275.5 $]; labor [1200 h]; Physical Units [45455.9 h] | 5,275.5 | 5,275.5 | ZNA | CON |  |
|  | MH-1.15.3 / MH-1.15.4 | **MH-1.15.3 / MH-1.15.4** |  | 2026-07-04 | 2026-08-05 |  |  |  |  |  |  |  |  |  |  |
| A48300 |  | Excavation | 4d | 2026-07-04 A | 2026-08-05 A | A48250, A1190 | 100% | 2026-12-19 | 2026-12-23 | ICKMO1-cost unite [3956.62 $]; Physical Units [34091.9 h] | 3,956.62 | 3,956.62 | ZNA | CON |  |
| A48310 |  | Pipe Laying | 8d | 2026-07-04 A | 2026-08-05 A | A48300 | 100% | 2026-12-23 | 2027-01-02 | ICKMO1-cost unite [2637.75 $]; Excavator [200 h]; Sewage Network Circular pipes (GRP) [63.28]; Physical Units [22728 h] | 2,637.75 | 2,637.75 | ZNA | CON | LAY |
| A48320 |  | Install Manhole | 4d | 2026-07-04 A | 2026-08-05 A | A48300 | 100% | 2026-12-23 | 2026-12-28 | ICKMO1-cost unite [11869.9 $]; boom truck [200 h]; labor [1200 h]; Physical Units [102276 h] | 11,869.87 | 11,869.87 | ZNA | CON | MH |
| A48330 |  | Testing & Inspection | 2d | 2026-07-04 A | 2026-08-05 A | A48310 | 100% | 2027-01-02 | 2027-01-04 | ICKMO1-cost unite [2637.75 $]; boom truck [200 h]; labor [1200 h]; Physical Units [22728 h] | 2,637.75 | 2,637.75 | ZNA | CON |  |
| A48340 |  | Backfilling & Compaction | 4d | 2026-07-04 A | 2026-08-05 A | A48330, A48320, A48290 | 100% | 2027-01-04 | 2027-01-09 | ICKMO1-cost unite [5275.5 $]; labor [1200 h]; Physical Units [45455.9 h] | 5,275.5 | 5,275.5 | ZNA | CON |  |
|  | LR 14 | **LR 14** |  | 2026-07-04 | 2026-08-05 |  |  |  |  |  |  |  |  |  |  |
|  | MH-1.17 / MH-1.18 | **MH-1.17 / MH-1.18** |  | 2026-07-04 | 2026-08-05 |  |  |  |  |  |  |  |  |  |  |
| A48350 |  | Excavation | 4d | 2026-07-04 A | 2026-08-05 A | A69370, A1190 | 100% | 2026-11-30 | 2026-12-05 | ICKMO1-cost unite [5120.34 $]; Physical Units [44119 h] | 5,120.34 | 5,120.34 | ZNA | CON |  |
| A48360 |  | Pipe Laying | 4d | 2026-07-04 A | 2026-08-05 A | A48350 | 100% | 2026-12-05 | 2026-12-09 | ICKMO1-cost unite [3413.56 $]; Excavator [200 h]; Sewage Network Circular pipes (GRP) [63.28]; Physical Units [29412.7 h] | 3,413.56 | 3,413.56 | ZNA | CON | LAY |
| A48370 |  | Install Manhole | 4d | 2026-07-04 A | 2026-08-05 A | A48350 | 100% | 2026-12-05 | 2026-12-09 | ICKMO1-cost unite [15361 $]; boom truck [200 h]; labor [1200 h]; Physical Units [132357 h] | 15,361.02 | 15,361.02 | ZNA | CON | MH |
| A48380 |  | Testing & Inspection | 2d | 2026-07-04 A | 2026-08-05 A | A48360 | 100% | 2026-12-09 | 2026-12-12 | ICKMO1-cost unite [3413.56 $]; boom truck [200 h]; labor [1200 h]; Physical Units [29412.7 h] | 3,413.56 | 3,413.56 | ZNA | CON |  |
| A48390 |  | Backfilling & Compaction | 4d | 2026-07-04 A | 2026-08-05 A | A48380, A48370 | 100% | 2026-12-12 | 2026-12-16 | ICKMO1-cost unite [6827.12 $]; labor [1200 h]; Physical Units [58825.3 h] | 6,827.12 | 6,827.12 | ZNA | CON |  |
|  | MH-1.18 / MH-1.19 | **MH-1.18 / MH-1.19** |  | 2026-07-04 | 2026-08-05 |  |  |  |  |  |  |  |  |  |  |
| A48400 |  | Excavation | 4d | 2026-07-04 A | 2026-08-05 A | A48350, A1190 | 100% | 2026-12-05 | 2026-12-09 | ICKMO1-cost unite [5120.34 $]; Physical Units [44119 h] | 5,120.34 | 5,120.34 | ZNA | CON |  |
| A48410 |  | Pipe Laying | 4d | 2026-07-04 A | 2026-08-05 A | A48400 | 100% | 2026-12-09 | 2026-12-14 | ICKMO1-cost unite [3413.56 $]; Excavator [200 h]; Sewage Network Circular pipes (GRP) [63.28]; Physical Units [29412.7 h] | 3,413.56 | 3,413.56 | ZNA | CON | LAY |
| A48420 |  | Install Manhole | 4d | 2026-07-04 A | 2026-08-05 A | A48400 | 100% | 2026-12-09 | 2026-12-14 | ICKMO1-cost unite [15361 $]; boom truck [200 h]; labor [1200 h]; Physical Units [132357 h] | 15,361.02 | 15,361.02 | ZNA | CON | MH |
| A48430 |  | Testing & Inspection | 2d | 2026-07-04 A | 2026-08-05 A | A48410 | 100% | 2026-12-14 | 2026-12-16 | ICKMO1-cost unite [3413.56 $]; boom truck [200 h]; labor [1200 h]; Physical Units [29412.7 h] | 3,413.56 | 3,413.56 | ZNA | CON |  |
| A48440 |  | Backfilling & Compaction | 4d | 2026-07-04 A | 2026-08-05 A | A48430, A48420, A48390 | 100% | 2026-12-16 | 2026-12-21 | ICKMO1-cost unite [6827.12 $]; labor [1200 h]; Physical Units [58825.3 h] | 6,827.12 | 6,827.12 | ZNA | CON |  |

| ID | WBS | Activity | Duration | Start | Finish | Predecessors | Complete | Planned start | Planned finish | Resources | Cost | Actual cost | ALKHARJ INDUSTERIAL AREA - PROJECT ZONES | ALKHARJ INDUSTERIAL AREA - DECEPLINS | ALKHARJ INDUSTERIAL AREA - Wet networks |
| --- | --- | --- | --- | --- | --- | --- | --- | --- | --- | --- | --- | --- | --- | --- | --- |
|  | MH-1.19.0 / MH-1.19.1 | **MH-1.19.0 / MH-1.19.1** |  | 2026-07-04 | 2026-08-05 |  |  |  |  |  |  |  |  |  |  |
| A48450 |  | Excavation | 4d | 2026-07-04 A | 2026-08-05 A | A48400, A1190 | 100% | 2026-12-09 | 2026-12-14 | ICKMO1-cost unite [5120.34 $]; Physical Units [44119 h] | 5,120.34 | 5,120.34 | ZNA | CON |  |
| A48460 |  | Pipe Laying | 8d | 2026-07-04 A | 2026-08-05 A | A48450 | 100% | 2026-12-14 | 2026-12-23 | ICKMO1-cost unite [3413.56 $]; Excavator [200 h]; Sewage Network Circular pipes (GRP) [63.28]; Physical Units [29412.7 h] | 3,413.56 | 3,413.56 | ZNA | CON | LAY |
| A48470 |  | Install Manhole | 4d | 2026-07-04 A | 2026-08-05 A | A48450 | 100% | 2026-12-14 | 2026-12-19 | ICKMO1-cost unite [15361 $]; boom truck [200 h]; labor [1200 h]; Physical Units [132357 h] | 15,361.02 | 15,361.02 | ZNA | CON | MH |
| A48480 |  | Testing & Inspection | 2d | 2026-07-04 A | 2026-08-05 A | A48460 | 100% | 2026-12-23 | 2026-12-26 | ICKMO1-cost unite [3413.56 $]; boom truck [200 h]; labor [1200 h]; Physical Units [29412.7 h] | 3,413.56 | 3,413.56 | ZNA | CON |  |
| A48490 |  | Backfilling & Compaction | 4d | 2026-07-04 A | 2026-08-05 A | A48480, A48470, A48440 | 100% | 2026-12-26 | 2026-12-30 | ICKMO1-cost unite [6827.12 $]; labor [1200 h]; Physical Units [58825.3 h] | 6,827.12 | 6,827.12 | ZNA | CON |  |
|  | LR 15 | **LR 15** |  | 2026-07-04 | 2026-08-05 |  |  |  |  |  |  |  |  |  |  |
|  | MH-1.19 / MH-1.20 | **MH-1.19 / MH-1.20** |  | 2026-07-04 | 2026-08-05 |  |  |  |  |  |  |  |  |  |  |
| A48500 |  | Excavation | 4d | 2026-07-04 A | 2026-08-05 A | A69170, A1190 | 100% | 2027-06-03 | 2027-06-08 | ICKMO1-cost unite [4189.37 $]; Physical Units [36097.3 h] | 4,189.37 | 4,189.37 | ZNA | CON |  |
| A48510 |  | Pipe Laying | 4d | 2026-07-04 A | 2026-08-05 A | A48500 | 100% | 2027-06-08 | 2027-06-13 | ICKMO1-cost unite [2792.91 $]; Excavator [200 h]; Sewage Network Circular pipes (GRP) [63.28]; Physical Units [24064.9 h] | 2,792.91 | 2,792.91 | ZNA | CON | LAY |
| A48520 |  | Install Manhole | 4d | 2026-07-04 A | 2026-08-05 A | A48500 | 100% | 2027-06-08 | 2027-06-13 | ICKMO1-cost unite [12568.1 $]; boom truck [200 h]; labor [1200 h]; Physical Units [108292 h] | 12,568.1 | 12,568.1 | ZNA | CON | MH |
| A48530 |  | Testing & Inspection | 4d | 2026-07-04 A | 2026-08-05 A | A48510 | 100% | 2027-06-13 | 2027-06-17 | ICKMO1-cost unite [2792.91 $]; boom truck [200 h]; labor [1200 h]; Physical Units [24064.9 h] | 2,792.91 | 2,792.91 | ZNA | CON |  |
| A48540 |  | Backfilling & Compaction | 4d | 2026-07-04 A | 2026-08-05 A | A48530, A48520 | 100% | 2027-06-17 | 2027-06-22 | ICKMO1-cost unite [5585.83 $]; labor [1200 h]; Physical Units [48129.8 h] | 5,585.83 | 5,585.83 | ZNA | CON |  |
|  | MH-1.20 / MH-1.20.1 | **MH-1.20 / MH-1.20.1** |  | 2026-07-04 | 2026-08-05 |  |  |  |  |  |  |  |  |  |  |
| A48550 |  | Excavation | 4d | 2026-07-04 A | 2026-08-05 A | A48500, A1190 | 100% | 2027-06-08 | 2027-06-13 | ICKMO1-cost unite [4189.37 $]; Physical Units [36097.3 h] | 4,189.37 | 4,189.37 | ZNA | CON |  |
| A48560 |  | Pipe Laying | 4d | 2026-07-04 A | 2026-08-05 A | A48550 | 100% | 2027-06-13 | 2027-06-17 | ICKMO1-cost unite [2792.91 $]; Excavator [200 h]; Sewage Network Circular pipes (GRP) [63.28]; Physical Units [24064.9 h] | 2,792.91 | 2,792.91 | ZNA | CON | LAY |
| A48570 |  | Install Manhole | 4d | 2026-07-04 A | 2026-08-05 A | A48550 | 100% | 2027-06-13 | 2027-06-17 | ICKMO1-cost unite [12568.1 $]; boom truck [200 h]; labor [1200 h]; Physical Units [108292 h] | 12,568.1 | 12,568.1 | ZNA | CON | MH |
| A48580 |  | Testing & Inspection | 4d | 2026-07-04 A | 2026-08-05 A | A48560 | 100% | 2027-06-17 | 2027-06-22 | ICKMO1-cost unite [2792.91 $]; boom truck [200 h]; labor [1200 h]; Physical Units [24064.9 h] | 2,792.91 | 2,792.91 | ZNA | CON |  |
| A48590 |  | Backfilling & Compaction | 4d | 2026-07-04 A | 2026-08-05 A | A48580, A48570, A48540 | 100% | 2027-06-22 | 2027-06-27 | ICKMO1-cost unite [5585.83 $]; labor [1200 h]; Physical Units [48129.8 h] | 5,585.83 | 5,585.83 | ZNA | CON |  |
|  | MH-1.20 / MH-1.21 | **MH-1.20 / MH-1.21** |  | 2026-07-04 | 2026-08-05 |  |  |  |  |  |  |  |  |  |  |
| A48600 |  | Excavation | 4d | 2026-07-04 A | 2026-08-05 A | A48550, A1190 | 100% | 2027-06-13 | 2027-06-17 | ICKMO1-cost unite [4189.37 $]; Physical Units [36097.3 h] | 4,189.37 | 4,189.37 | ZNA | CON |  |
| A48610 |  | Pipe Laying | 4d | 2026-07-04 A | 2026-08-05 A | A48600 | 100% | 2027-06-17 | 2027-06-22 | ICKMO1-cost unite [2792.91 $]; Excavator [200 h]; Sewage Network Circular pipes (GRP) [63.28]; Physical Units [24064.9 h] | 2,792.91 | 2,792.91 | ZNA | CON | LAY |
| A48620 |  | Install Manhole | 4d | 2026-07-04 A | 2026-08-05 A | A48600 | 100% | 2027-06-17 | 2027-06-22 | ICKMO1-cost unite [12568.1 $]; boom truck [200 h]; labor [1200 h]; Physical Units [108292 h] | 12,568.1 | 12,568.1 | ZNA | CON | MH |
| A48630 |  | Testing & Inspection | 4d | 2026-07-04 A | 2026-08-05 A | A48610 | 100% | 2027-06-22 | 2027-06-27 | ICKMO1-cost unite [2792.91 $]; boom truck [200 h]; labor [1200 h]; Physical Units [24064.9 h] | 2,792.91 | 2,792.91 | ZNA | CON |  |
| A48640 |  | Backfilling & Compaction | 4d | 2026-07-04 A | 2026-08-05 A | A48630, A48620, A48590 | 100% | 2027-06-27 | 2027-07-01 | ICKMO1-cost unite [5585.83 $]; labor [1200 h]; Physical Units [48129.8 h] | 5,585.83 | 5,585.83 | ZNA | CON |  |

| ID | WBS | Activity | Duration | Start | Finish | Predecessors | Complete | Planned start | Planned finish | Total float | Free float | Resources | Cost | Actual cost | ALKHARJ INDUSTERIAL AREA - PROJECT ZONES | ALKHARJ INDUSTERIAL AREA - DECEPLINS | ALKHARJ INDUSTERIAL AREA - Wet networks |
| --- | --- | --- | --- | --- | --- | --- | --- | --- | --- | --- | --- | --- | --- | --- | --- | --- | --- |
|  | MH-1.21 / MH-1.21.1 | **MH-1.21 / MH-1.21.1** |  | 2026-07-04 | 2026-08-05 |  |  |  |  |  |  |  |  |  |  |  |  |
| A48700 |  | Excavation | 4d | 2026-07-04 A | 2026-08-05 A | A48650, A1190 | 100% | 2027-06-22 | 2027-06-27 |  |  | ICKMO1-cost unite [4189.37 $]; Physical Units [36097.3 h] | 4,189.37 | 4,189.37 | ZNA | CON |  |
| A48710 |  | Pipe Laying | 4d | 2026-07-04 A | 2026-08-05 A | A48700 | 100% | 2027-06-27 | 2027-07-01 |  |  | ICKMO1-cost unite [2792.91 $]; Excavator [200 h]; Sewage Network Circular pipes (GRP) [63.28]; Physical Units [24064.9 h] | 2,792.91 | 2,792.91 | ZNA | CON | LAY |
| A48720 |  | Install Manhole | 4d | 2026-07-04 A | 2026-08-05 A | A48700 | 100% | 2027-06-27 | 2027-07-01 |  |  | ICKMO1-cost unite [12568.1 $]; boom truck [200 h]; labor [1200 h]; Physical Units [108292 h] | 12,568.1 | 12,568.1 | ZNA | CON | MH |
| A48730 |  | Testing & Inspection | 4d | 2026-07-04 A | 2026-08-05 A | A48710 | 100% | 2027-07-01 | 2027-07-06 |  |  | ICKMO1-cost unite [2792.91 $]; boom truck [200 h]; labor [1200 h]; Physical Units [24064.9 h] | 2,792.91 | 2,792.91 | ZNA | CON |  |
| A48740 |  | Backfilling & Compaction | 4d | 2026-07-04 A | 2026-08-05 A | A48730, A48720, A48690 | 100% | 2027-07-06 | 2027-07-11 |  |  | ICKMO1-cost unite [5585.83 $]; labor [1200 h]; Physical Units [48129.8 h] | 5,585.83 | 5,585.83 | ZNA | CON |  |
|  | MH-1.21 / MH-1.22 | **MH-1.21 / MH-1.22** |  | 2026-07-04 | 2026-08-05 |  |  |  |  |  |  |  |  |  |  |  |  |
| A48650 |  | Excavation | 4d | 2026-07-04 A | 2026-08-05 A | A48600, A1190 | 100% | 2027-06-17 | 2027-06-22 |  |  | ICKMO1-cost unite [4189.37 $]; Physical Units [36097.3 h] | 4,189.37 | 4,189.37 | ZNA | CON |  |
| A48660 |  | Pipe Laying | 4d | 2026-07-04 A | 2026-08-05 A | A48650 | 100% | 2027-06-22 | 2027-06-27 |  |  | ICKMO1-cost unite [2792.91 $]; Excavator [200 h]; Sewage Network Circular pipes (GRP) [63.28]; Physical Units [24064.9 h] | 2,792.91 | 2,792.91 | ZNA | CON | LAY |
| A48670 |  | Install Manhole | 4d | 2026-07-04 A | 2026-08-05 A | A48650 | 100% | 2027-06-22 | 2027-06-27 |  |  | ICKMO1-cost unite [12568.1 $]; boom truck [200 h]; labor [1200 h]; Physical Units [108292 h] | 12,568.1 | 12,568.1 | ZNA | CON | MH |
| A48680 |  | Testing & Inspection | 4d | 2026-07-04 A | 2026-08-05 A | A48660 | 100% | 2027-06-27 | 2027-07-01 |  |  | ICKMO1-cost unite [2792.91 $]; boom truck [200 h]; labor [1200 h]; Physical Units [24064.9 h] | 2,792.91 | 2,792.91 | ZNA | CON |  |
| A48690 |  | Backfilling & Compaction | 4d | 2026-07-04 A | 2026-08-05 A | A48680, A48670, A48640 | 100% | 2027-07-01 | 2027-07-06 |  |  | ICKMO1-cost unite [5585.83 $]; labor [1200 h]; Physical Units [48129.8 h] | 5,585.83 | 5,585.83 | ZNA | CON |  |
|  | LR 16 | **LR 16** |  | 2026-07-04 | 2026-08-05 |  |  |  |  |  |  |  |  |  |  |  |  |
|  | MH-2.4 / MH-2.5 | **MH-2.4 / MH-2.5** |  | 2026-07-04 | 2026-08-05 |  |  |  |  |  |  |  |  |  |  |  |  |
| A48750 |  | Excavation | 4d | 2026-07-04 A | 2026-08-05 A | A48700, A1190 | 100% | 2027-06-27 | 2027-07-01 |  |  | ICKMO1-cost unite [9775.19 $]; Physical Units [84227.1 h] | 9,775.19 | 9,775.19 | ZNA | CON |  |
| A48760 |  | Pipe Laying | 4d | 2026-07-04 A | 2026-08-05 A | A48750 | 100% | 2027-07-01 | 2027-07-06 |  |  | ICKMO1-cost unite [6516.8 $]; Excavator [200 h]; Sewage Network Circular pipes (GRP) [63.28]; Physical Units [56151.4 h] | 6,516.8 | 6,516.8 | ZNA | CON | LAY |
| A48770 |  | Install Manhole | 4d | 2026-07-04 A | 2026-08-05 A | A48750 | 100% | 2027-07-01 | 2027-07-06 |  |  | ICKMO1-cost unite [29325.6 $]; boom truck [200 h]; labor [1200 h]; Physical Units [252681 h] | 29,325.58 | 29,325.58 | ZNA | CON | MH |
| A48780 |  | Testing & Inspection | 4d | 2026-07-04 A | 2026-08-05 A | A48760 | 100% | 2027-02-11 | 2027-02-16 |  |  | ICKMO1-cost unite [6516.8 $]; boom truck [200 h]; labor [1200 h]; Physical Units [56151.4 h] | 6,516.8 | 6,516.8 | ZNA | CON |  |
| A48790 |  | Backfilling & Compaction | 4d | 2026-07-04 A | 2026-08-05 A | A48780, A48770 | 100% | 2027-02-16 | 2027-02-21 |  |  | ICKMO1-cost unite [13033.6 $]; labor [1200 h]; Physical Units [112303 h] | 13,033.59 | 13,033.59 | ZNA | CON |  |
|  | EX LR 01 | **EX LR 01** |  | 2026-12-09 | 2027-01-04 |  |  |  |  |  |  |  |  |  |  |  |  |
|  | MH-1.8 / MH-1.9 | **MH-1.8 / MH-1.9** |  | 2026-12-09 | 2026-12-30 |  |  |  |  |  |  |  |  |  |  |  |  |
| A48800 |  | Excavation | 4d | 2026-12-09 | 2026-12-14 | A48750, A1190 |  |  |  | 20.28d | 0d | ICKMO1-cost unite [6284.06 $]; Physical Units [54146.1 h] | 6,284.06 |  | ZNA | CON |  |
| A48810 |  | Pipe Laying | 8d | 2026-12-14 | 2026-12-23 | A48800 |  |  |  | 20.28d | 0d | ICKMO1-cost unite [4189.37 $]; Excavator [200 h]; Sewage Network Circular pipes (GRP) [63.28]; Physical Units [36097.3 h] | 4,189.37 |  | ZNA | CON | LAY |
| A48820 |  | Install Manhole | 4d | 2026-12-14 | 2026-12-19 | A48800 |  |  |  | 26.28d | 6d | ICKMO1-cost unite [18852.2 $]; boom truck [200 h]; labor [1200 h]; Physical Units [162438 h] | 18,852.16 |  | ZNA | CON | MH |
| A48830 |  | Testing & Inspection | 2d | 2026-12-23 | 2026-12-26 | A48810 |  |  |  | 20.28d | 0d | ICKMO1-cost unite [4189.37 $]; boom truck [200 h]; labor [1200 h]; Physical Units [36097.3 h] | 4,189.37 |  | ZNA | CON |  |
| A48840 |  | Backfilling & Compaction | 4d | 2026-12-26 | 2026-12-30 | A48830, A48820 |  |  |  | 20.28d | 0d | ICKMO1-cost unite [8378.74 $]; labor [1200 h]; Physical Units [72194.7 h] | 8,378.74 |  | ZNA | CON |  |

| ID | WBS | Activity | Duration | Start | Finish | Predecessors | Total float | Free float | Resources | Cost | ALKHARJ INDUSTERIAL AREA - PROJECT ZONES | ALKHARJ INDUSTERIAL AREA - DECEPLINS | ALKHARJ INDUSTERIAL AREA - Wet networks |
| --- | --- | --- | --- | --- | --- | --- | --- | --- | --- | --- | --- | --- | --- |
|  | MH-1.9 / MH-1.9 | **MH-1.9 / MH-1.9** |  | 2026-12-14 | 2027-01-04 |  |  |  |  |  |  |  |  |
| A48850 |  | Excavation | 4d | 2026-12-14 | 2026-12-19 | A48800, A1190 | 20.28d | 0d | ICKMO1-cost unite [6284.06 $]; Physical Units [54146.1 h] | 6,284.06 | ZNA | CON |  |
| A48860 |  | Pipe Laying | 8d | 2026-12-19 | 2026-12-28 | A48850 | 20.28d | 0d | ICKMO1-cost unite [4189.37 $]; Sewage Network Circular pipes (GRP) [63.28]; Physical Units [36097.3 h] | 4,189.37 | ZNA | CON | LAY |
| A48870 |  | Install Manhole | 4d | 2026-12-19 | 2026-12-23 | A48850 | 26.28d | 6d | ICKMO1-cost unite [18852.2 $]; Excavator [200 h]; Physical Units [162438 h] | 18,852.16 | ZNA | CON | MH |
| A48880 |  | Testing & Inspection | 2d | 2026-12-28 | 2026-12-30 | A48860 | 20.28d | 0d | ICKMO1-cost unite [4189.37 $]; boom truck [200 h]; labor [1200 h]; Physical Units [36097.3 h] | 4,189.37 | ZNA | CON |  |
| A48890 |  | Backfilling & Compaction | 4d | 2026-12-30 | 2027-01-04 | A48880, A48870, A48840 | 20.28d | 41.24d | ICKMO1-cost unite [8378.74 $]; boom truck [200 h]; labor [1200 h]; Physical Units [72194.7 h] | 8,378.74 | ZNA | CON |  |
|  | COLLECTOR R- 01 | **COLLECTOR R- 01** |  | 2026-10-10 | 2026-11-03 |  |  |  |  |  |  |  |  |
|  | MH-2.19.0 / MH-2.19.1 | **MH-2.19.0 / MH-2.19.1** |  | 2026-10-10 | 2026-10-29 |  |  |  |  |  |  |  |  |
| A48900 |  | Excavation | 4d | 2026-10-10 | 2026-10-13 | A68970, A68570, A1190 | 17d | 0d | ICKMO1-cost unite [6284.06 $]; Excavator [200 h]; Physical Units [54146.1 h] | 6,284.06 | ZNA | CON |  |
| A48910 |  | Pipe Laying | 8d | 2026-10-14 | 2026-10-22 | A48900 | 17d | 0d | ICKMO1-cost unite [4189.37 $]; boom truck [200 h]; labor [1200 h]; Sewage Network Circular pipes (GRP) [63.28]; Physical Units [36097.3 h] | 4,189.37 | ZNA | CON | LAY |
| A48920 |  | Install Manhole | 4d | 2026-10-14 | 2026-10-18 | A48900 | 23d | 6d | ICKMO1-cost unite [18852.2 $]; boom truck [200 h]; labor [1200 h]; Physical Units [162438 h] | 18,852.16 | ZNA | CON | MH |
| A48930 |  | Testing & Inspection | 2d | 2026-10-24 | 2026-10-25 | A48910 | 17d | 0d | ICKMO1-cost unite [4189.37 $]; labor [1200 h]; Physical Units [36097.3 h] | 4,189.37 | ZNA | CON |  |
| A48940 |  | Backfilling & Compaction | 4d | 2026-10-26 | 2026-10-29 | A48930, A48920 | 17d | 0d | ICKMO1-cost unite [8378.74 $]; Marking Machines [200 h]; Physical Units [72194.7 h] | 8,378.74 | ZNA | CON |  |
|  | MH-2.19.1 / MH-2.19.2 | **MH-2.19.1 / MH-2.19.2** |  | 2026-10-14 | 2026-11-03 |  |  |  |  |  |  |  |  |
| A48950 |  | Excavation | 4d | 2026-10-14 | 2026-10-18 | A48900, A1190 | 17d | 0d | ICKMO1-cost unite [6284.06 $]; Excavator [200 h]; Physical Units [54146.1 h] | 6,284.06 | ZNA | CON |  |
| A48960 |  | Pipe Laying | 8d | 2026-10-19 | 2026-10-27 | A48950 | 17d | 0d | ICKMO1-cost unite [4189.37 $]; boom truck [200 h]; labor [1200 h]; Sewage Network Circular pipes (GRP) [63.28]; Physical Units [36097.3 h] | 4,189.37 | ZNA | CON | LAY |
| A48970 |  | Install Manhole | 4d | 2026-10-19 | 2026-10-22 | A48950 | 23d | 6d | ICKMO1-cost unite [18852.2 $]; boom truck [200 h]; labor [1200 h]; Physical Units [162438 h] | 18,852.16 | ZNA | CON | MH |
| A48980 |  | Testing & Inspection | 2d | 2026-10-28 | 2026-10-29 | A48960 | 17d | 0d | ICKMO1-cost unite [4189.37 $]; labor [1200 h]; Physical Units [36097.3 h] | 4,189.37 | ZNA | CON |  |
| A48990 |  | Backfilling & Compaction | 4d | 2026-10-31 | 2026-11-03 | A48980, A48970, A48940 | 17d | 30.72d | ICKMO1-cost unite [8378.74 $]; Marking Machines [200 h]; Physical Units [72194.7 h] | 8,378.74 | ZNA | CON |  |
|  | EX LR 02 | **EX LR 02** |  | 2027-01-05 | 2027-02-21 |  |  |  |  |  |  |  |  |
|  | MH-1.1 / MH-1.2 | **MH-1.1 / MH-1.2** |  | 2027-01-05 | 2027-01-24 |  |  |  |  |  |  |  |  |
| A49000 |  | Excavation | 4d | 2027-01-05 | 2027-01-10 | A69020, A1190 | -20.96d | 0d | ICKMO1-cost unite [3790.38 $]; Excavator [200 h]; Physical Units [32659.5 h] | 3,790.38 | ZNA | CON |  |
| A49010 |  | Pipe Laying | 4d | 2027-01-10 | 2027-01-14 | A49000 | -20.72d | 0d | ICKMO1-cost unite [2526.92 $]; boom truck [200 h]; labor [1200 h]; Sewage Network Circular pipes (GRP) [63.28]; Physical Units [21773 h] | 2,526.92 | ZNA | CON | LAY |
| A49020 |  | Install Manhole | 4d | 2027-01-10 | 2027-01-14 | A49000 | -16.72d | 4d | ICKMO1-cost unite [11371.1 $]; boom truck [200 h]; labor [1200 h]; Physical Units [97978.5 h] | 11,371.15 | ZNA | CON | MH |
| A49030 |  | Testing & Inspection | 4d | 2027-01-14 | 2027-01-19 | A49010 | -20.72d | 0d | ICKMO1-cost unite [2526.92 $]; labor [1200 h]; Physical Units [21773 h] | 2,526.92 | ZNA | CON |  |
| A49040 |  | Backfilling & Compaction | 4d | 2027-01-19 | 2027-01-24 | A49030, A49020 | -20.72d | 0d | ICKMO1-cost unite [5053.84 $]; Marking Machines [200 h]; Physical Units [43546 h] | 5,053.84 | ZNA | CON |  |

| ID | WBS | Activity | Duration | Start | Finish | Predecessors | Total float | Free float | Resources | Cost | ALKHARJ INDUSTERIAL AREA - PROJECT ZONES | ALKHARJ INDUSTERIAL AREA - DECEPLINS | ALKHARJ INDUSTERIAL AREA - Wet networks |
| --- | --- | --- | --- | --- | --- | --- | --- | --- | --- | --- | --- | --- | --- |
|  | MH-1.2 / MH-1.3 | **MH-1.2 / MH-1.3** |  | 2027-01-10 | 2027-01-28 |  |  |  |  |  |  |  |  |
| A49050 |  | Excavation | 4d | 2027-01-10 | 2027-01-14 | A49000, A1190 | -20.72d | 0d | ICKMO1-cost unite [3790.38 $]; Excavator [200 h]; Physical Units [32659.5 h] | 3,790.38 | ZNA | CON |  |
| A49060 |  | Pipe Laying | 4d | 2027-01-14 | 2027-01-19 | A49050 | -20.72d | 0d | ICKMO1-cost unite [2526.92 $]; boom truck [200 h]; labor [1200 h]; Sewage Network Circular pipes (GRP) [63.28]; Physical Units [21773 h] | 2,526.92 | ZNA | CON | LAY |
| A49070 |  | Install Manhole | 4d | 2027-01-14 | 2027-01-19 | A49050 | -16.72d | 4d | ICKMO1-cost unite [11371.1 $]; boom truck [200 h]; labor [1200 h]; Physical Units [97978.5 h] | 11,371.15 | ZNA | CON | MH |
| A49080 |  | Testing & Inspection | 4d | 2027-01-19 | 2027-01-24 | A49060 | -20.72d | 0d | ICKMO1-cost unite [2526.92 $]; labor [1200 h]; Physical Units [21773 h] | 2,526.92 | ZNA | CON |  |
| A49090 |  | Backfilling & Compaction | 4d | 2027-01-24 | 2027-01-28 | A49080, A49070, A49040 | -20.72d | 0d | ICKMO1-cost unite [5053.84 $]; Marking Machines [200 h]; Physical Units [43546 h] | 5,053.84 | ZNA | CON |  |
|  | MH-1.3 / MH-1.4 | **MH-1.3 / MH-1.4** |  | 2027-01-14 | 2027-02-02 |  |  |  |  |  |  |  |  |
| A49100 |  | Excavation | 4d | 2027-01-14 | 2027-01-19 | A49050, A1190 | -20.72d | 0d | ICKMO1-cost unite [3790.38 $]; Excavator [200 h]; Physical Units [32659.5 h] | 3,790.38 | ZNA | CON |  |
| A49110 |  | Pipe Laying | 4d | 2027-01-19 | 2027-01-24 | A49100 | -20.72d | 0d | ICKMO1-cost unite [2526.92 $]; boom truck [200 h]; labor [1200 h]; Sewage Network Circular pipes (GRP) [63.28]; Physical Units [21773 h] | 2,526.92 | ZNA | CON | LAY |
| A49120 |  | Install Manhole | 4d | 2027-01-19 | 2027-01-24 | A49100 | -16.72d | 4d | ICKMO1-cost unite [11371.1 $]; boom truck [200 h]; labor [1200 h]; Physical Units [97978.5 h] | 11,371.15 | ZNA | CON | MH |
| A49130 |  | Testing & Inspection | 4d | 2027-01-24 | 2027-01-28 | A49110 | -20.72d | 0d | ICKMO1-cost unite [2526.92 $]; labor [1200 h]; Physical Units [21773 h] | 2,526.92 | ZNA | CON |  |
| A49140 |  | Backfilling & Compaction | 4d | 2027-01-28 | 2027-02-02 | A49130, A49120, A49090 | -20.72d | 0d | ICKMO1-cost unite [5053.84 $]; Marking Machines [200 h]; Physical Units [43546 h] | 5,053.84 | ZNA | CON |  |
|  | MH-1.4 / MH-1.5 | **MH-1.4 / MH-1.5** |  | 2027-01-19 | 2027-02-07 |  |  |  |  |  |  |  |  |
| A49150 |  | Excavation | 4d | 2027-01-19 | 2027-01-24 | A49100, A1190 | -20.72d | 0d | ICKMO1-cost unite [3790.38 $]; Excavator [200 h]; Physical Units [32659.5 h] | 3,790.38 | ZNA | CON |  |
| A49160 |  | Pipe Laying | 4d | 2027-01-24 | 2027-01-28 | A49150 | -20.72d | 0d | ICKMO1-cost unite [2526.92 $]; boom truck [200 h]; labor [1200 h]; Sewage Network Circular pipes (GRP) [63.28]; Physical Units [21773 h] | 2,526.92 | ZNA | CON | LAY |
| A49170 |  | Install Manhole | 4d | 2027-01-24 | 2027-01-28 | A49150 | -16.72d | 4d | ICKMO1-cost unite [11371.1 $]; boom truck [200 h]; labor [1200 h]; Physical Units [97978.5 h] | 11,371.15 | ZNA | CON | MH |
| A49180 |  | Testing & Inspection | 4d | 2027-01-28 | 2027-02-02 | A49160 | -20.72d | 0d | ICKMO1-cost unite [2526.92 $]; labor [1200 h]; Physical Units [21773 h] | 2,526.92 | ZNA | CON |  |
| A49190 |  | Backfilling & Compaction | 4d | 2027-02-02 | 2027-02-07 | A49180, A49170, A49140 | -20.72d | 0d | ICKMO1-cost unite [5053.84 $]; Marking Machines [200 h]; Physical Units [43546 h] | 5,053.84 | ZNA | CON |  |
|  | MH-1.5 / MH-1.6 | **MH-1.5 / MH-1.6** |  | 2027-01-24 | 2027-02-11 |  |  |  |  |  |  |  |  |
| A49200 |  | Excavation | 4d | 2027-01-24 | 2027-01-28 | A49150, A1190 | -20.72d | 0d | ICKMO1-cost unite [3790.38 $]; Excavator [200 h]; Physical Units [32659.5 h] | 3,790.38 | ZNA | CON |  |
| A49210 |  | Pipe Laying | 4d | 2027-01-28 | 2027-02-02 | A49200 | -20.72d | 0d | ICKMO1-cost unite [2526.92 $]; boom truck [200 h]; labor [1200 h]; Sewage Network Circular pipes (GRP) [63.28]; Physical Units [21773 h] | 2,526.92 | ZNA | CON | LAY |
| A49220 |  | Install Manhole | 4d | 2027-01-28 | 2027-02-02 | A49200 | -16.72d | 4d | ICKMO1-cost unite [11371.1 $]; boom truck [200 h]; labor [1200 h]; Physical Units [97978.5 h] | 11,371.15 | ZNA | CON | MH |
| A49230 |  | Testing & Inspection | 4d | 2027-02-02 | 2027-02-07 | A49210 | -20.72d | 0d | ICKMO1-cost unite [2526.92 $]; labor [1200 h]; Physical Units [21773 h] | 2,526.92 | ZNA | CON |  |
| A49240 |  | Backfilling & Compaction | 4d | 2027-02-07 | 2027-02-11 | A49230, A49220, A49190 | -20.72d | 0d | ICKMO1-cost unite [5053.84 $]; Marking Machines [200 h]; Physical Units [43546 h] | 5,053.84 | ZNA | CON |  |

| ID | WBS | Activity | Duration | Start | Finish | Predecessors | Complete | Remaining | Planned start | Planned finish | Total float | Free float | Resources | Cost | Actual cost | ALKHARJ INDUSTERIAL AREA - PROJECT ZONES | ALKHARJ INDUSTERIAL AREA - DECEPLINS | ALKHARJ INDUSTERIAL AREA - Wet networks |
| --- | --- | --- | --- | --- | --- | --- | --- | --- | --- | --- | --- | --- | --- | --- | --- | --- | --- | --- |
|  | MH-1.6 / MH-1.7 | **MH-1.6 / MH-1.7** |  | 2027-01-28 | 2027-02-16 |  |  |  |  |  |  |  |  |  |  |  |  |  |
| A49250 |  | Excavation | 4d | 2027-01-28 | 2027-02-02 | A49200, A1190 |  |  |  |  | -20.72d | 0d | ICKMO1-cost unite [3790.38 $]; Excavator [200 h]; Physical Units [32659.5 h] | 3,790.38 |  | ZNA | CON |  |
| A49260 |  | Pipe Laying | 4d | 2027-02-02 | 2027-02-07 | A49250 |  |  |  |  | -20.72d | 0d | ICKMO1-cost unite [2526.92 $]; boom truck [200 h]; labor [1200 h]; Sewage Network Circular pipes (GRP) [63.28]; Physical Units [21773 h] | 2,526.92 |  | ZNA | CON | LAY |
| A49270 |  | Install Manhole | 4d | 2027-02-02 | 2027-02-07 | A49250 |  |  |  |  | -16.72d | 4d | ICKMO1-cost unite [11371.1 $]; boom truck [200 h]; labor [1200 h]; Physical Units [97978.5 h] | 11,371.15 |  | ZNA | CON | MH |
| A49280 |  | Testing & Inspection | 4d | 2027-02-07 | 2027-02-11 | A49260 |  |  |  |  | -20.72d | 0d | ICKMO1-cost unite [2526.92 $]; labor [1200 h]; Physical Units [21773 h] | 2,526.92 |  | ZNA | CON |  |
| A49290 |  | Backfilling & Compaction | 4d | 2027-02-11 | 2027-02-16 | A49280, A49270, A49240 |  |  |  |  | -20.72d | 0d | ICKMO1-cost unite [5053.84 $]; Marking Machines [200 h]; Physical Units [43546 h] | 5,053.84 |  | ZNA | CON |  |
|  | MH-1.7 / MH-1.8 | **MH-1.7 / MH-1.8** |  | 2027-02-02 | 2027-02-21 |  |  |  |  |  |  |  |  |  |  |  |  |  |
| A49300 |  | Excavation | 4d | 2027-02-02 | 2027-02-07 | A49250, A1190 |  |  |  |  | -20.72d | 0d | ICKMO1-cost unite [3790.38 $]; Excavator [200 h]; Physical Units [32659.5 h] | 3,790.38 |  | ZNA | CON |  |
| A49310 |  | Pipe Laying | 4d | 2027-02-07 | 2027-02-11 | A49300 |  |  |  |  | -20.72d | 0d | ICKMO1-cost unite [2526.92 $]; boom truck [200 h]; labor [1200 h]; Sewage Network Circular pipes (GRP) [63.28]; Physical Units [21773 h] | 2,526.92 |  | ZNA | CON | LAY |
| A49320 |  | Install Manhole | 4d | 2027-02-07 | 2027-02-11 | A49300 |  |  |  |  | -16.72d | 4d | ICKMO1-cost unite [11371.1 $]; boom truck [200 h]; labor [1200 h]; Physical Units [97978.5 h] | 11,371.15 |  | ZNA | CON | MH |
| A49330 |  | Testing & Inspection | 4d | 2027-02-11 | 2027-02-16 | A49310 |  |  |  |  | -20.72d | 0d | ICKMO1-cost unite [2526.92 $]; labor [1200 h]; Physical Units [21773 h] | 2,526.92 |  | ZNA | CON |  |
| A49340 |  | Backfilling & Compaction | 4d | 2027-02-16 | 2027-02-21 | A49330, A49320, A49290 |  |  |  |  | -20.72d | 0.24d | ICKMO1-cost unite [5053.84 $]; Marking Machines [200 h]; Physical Units [43546 h] | 5,053.84 |  | ZNA | CON |  |
|  | EX LR 03 | **EX LR 03** |  | 2026-08-21 | 2027-02-21 |  |  |  |  |  |  |  |  |  |  |  |  |  |
|  | MH-1.10.2 / MH-1.10.3 | **MH-1.10.2 / MH-1.10.3** |  | 2026-08-21 | 2027-01-24 |  |  |  |  |  |  |  |  |  |  |  |  |  |
| A49350 |  | Excavation | 4d | 2026-08-21 A | 2027-01-10 | A49000, A1190 | 94% | 0.24d | 2027-06-21 | 2027-06-26 | -20.96d | 0d | ICKMO1-cost unite [3790.38 $]; Excavator [200 h]; Physical Units [32659.5 h] | 3,790.38 | 3,562.96 | ZNA | CON |  |
| A49360 |  | Pipe Laying | 4d | 2027-01-10 | 2027-01-14 | A49350 |  |  |  |  | -20.96d | 0d | ICKMO1-cost unite [2526.92 $]; boom truck [200 h]; labor [1200 h]; Sewage Network Circular pipes (GRP) [63.28]; Physical Units [21773 h] | 2,526.92 |  | ZNA | CON | LAY |
| A49370 |  | Install Manhole | 4d | 2027-01-10 | 2027-01-14 | A49350 |  |  |  |  | -16.96d | 4d | ICKMO1-cost unite [11371.1 $]; boom truck [200 h]; labor [1200 h]; Physical Units [97978.5 h] | 11,371.15 |  | ZNA | CON | MH |
| A49380 |  | Testing & Inspection | 4d | 2027-01-14 | 2027-01-19 | A49360 |  |  |  |  | -20.96d | 0d | ICKMO1-cost unite [2526.92 $]; labor [1200 h]; Physical Units [21773 h] | 2,526.92 |  | ZNA | CON |  |
| A49390 |  | Backfilling & Compaction | 4d | 2027-01-19 | 2027-01-24 | A49380, A49370 |  |  |  |  | -20.96d | 0d | ICKMO1-cost unite [5053.84 $]; Marking Machines [200 h]; Physical Units [43546 h] | 5,053.84 |  | ZNA | CON |  |
|  | MH-1.10.3 / MH-1.10.4 | **MH-1.10.3 / MH-1.10.4** |  | 2026-08-21 | 2027-01-28 |  |  |  |  |  |  |  |  |  |  |  |  |  |
| A49400 |  | Excavation | 4d | 2026-08-21 A | 2027-01-11 | A49350, A1190 | 94% | 0.24d | 2027-06-26 | 2027-06-30 | -17.2d | 0d | ICKMO1-cost unite [3790.38 $]; Excavator [200 h]; Physical Units [32659.5 h] | 3,790.38 | 3,562.96 | ZNA | CON |  |
| A49410 |  | Pipe Laying | 4d | 2027-01-11 | 2027-01-16 | A49400 |  |  |  |  | -17.2d | 0d | ICKMO1-cost unite [2526.92 $]; boom truck [200 h]; labor [1200 h]; Sewage Network Circular pipes (GRP) [63.28]; Physical Units [21773 h] | 2,526.92 |  | ZNA | CON | LAY |
| A49420 |  | Install Manhole | 4d | 2027-01-11 | 2027-01-16 | A49400 |  |  |  |  | -13.2d | 7.76d | ICKMO1-cost unite [11371.1 $]; boom truck [200 h]; labor [1200 h]; Physical Units [97978.5 h] | 11,371.15 |  | ZNA | CON | MH |
| A49430 |  | Testing & Inspection | 4d | 2027-01-16 | 2027-01-20 | A49410 |  |  |  |  | -17.2d | 3.76d | ICKMO1-cost unite [2526.92 $]; labor [1200 h]; Physical Units [21773 h] | 2,526.92 |  | ZNA | CON |  |
| A49440 |  | Backfilling & Compaction | 4d | 2027-01-24 | 2027-01-28 | A49430, A49420, A49390 |  |  |  |  | -20.96d | 0d | ICKMO1-cost unite [5053.84 $]; Marking Machines [200 h]; Physical Units [43546 h] | 5,053.84 |  | ZNA | CON |  |

| ID | WBS | Activity | Duration | Start | Finish | Predecessors | Complete | Remaining | Planned start | Planned finish | Total float | Free float | Resources | Cost | Actual cost | ALKHARJ INDUSTERIAL AREA - PROJECT ZONES | ALKHARJ INDUSTERIAL AREA - DECEPLINS | ALKHARJ INDUSTERIAL AREA - Wet networks |
| --- | --- | --- | --- | --- | --- | --- | --- | --- | --- | --- | --- | --- | --- | --- | --- | --- | --- | --- |
|  | MH-1.10.4 / MH-1.10.5 | **MH-1.10.4 / MH-1.10.5** |  | 2026-08-21 | 2027-02-02 |  |  |  |  |  |  |  |  |  |  |  |  |  |
| A49450 |  | Excavation | 4d | 2026-08-21 A | 2027-01-11 | A49400, A1190 | 94% | 0.24d | 2027-06-30 | 2027-07-05 | -14.4d | 0d | ICKMO1-cost unite [3790.38 $]; Excavator [200 h]; Physical Units [32659.5 h] | 3,790.38 | 3,562.96 | ZNA | CON |  |
| A49460 |  | Pipe Laying | 4d | 2027-01-11 | 2027-01-16 | A49450 |  |  |  |  | -13.44d | 0d | ICKMO1-cost unite [2526.92 $]; boom truck [200 h]; labor [1200 h]; Sewage Network Circular pipes (GRP) [63.28]; Physical Units [21773 h] | 2,526.92 |  | ZNA | CON | LAY |
| A49470 |  | Install Manhole | 4d | 2027-01-11 | 2027-01-16 | A49450 |  |  |  |  | -9.44d | 11.52d | ICKMO1-cost unite [11371.1 $]; boom truck [200 h]; labor [1200 h]; Physical Units [97978.5 h] | 11,371.15 |  | ZNA | CON | MH |
| A49480 |  | Testing & Inspection | 4d | 2027-01-16 | 2027-01-20 | A49460 |  |  |  |  | -13.44d | 7.52d | ICKMO1-cost unite [2526.92 $]; labor [1200 h]; Physical Units [21773 h] | 2,526.92 |  | ZNA | CON |  |
| A49490 |  | Backfilling & Compaction | 4d | 2027-01-28 | 2027-02-02 | A49480, A49470, A49440 |  |  |  |  | -20.96d | 0d | ICKMO1-cost unite [5053.84 $]; Marking Machines [200 h]; Physical Units [43546 h] | 5,053.84 |  | ZNA | CON |  |
|  | MH-1.10.5 / MH-1.10.6 | **MH-1.10.5 / MH-1.10.6** |  | 2026-08-21 | 2027-02-07 |  |  |  |  |  |  |  |  |  |  |  |  |  |
| A49500 |  | Excavation | 4d | 2026-08-21 A | 2027-01-11 | A49450, A1190 | 94% | 0.24d | 2027-07-05 | 2027-07-10 | -14.4d | 0d | ICKMO1-cost unite [3790.38 $]; Excavator [200 h]; Physical Units [32659.5 h] | 3,790.38 | 3,562.96 | ZNA | CON |  |
| A49510 |  | Pipe Laying | 4d | 2027-01-11 | 2027-01-16 | A49500 |  |  |  |  | -9.68d | 0d | ICKMO1-cost unite [2526.92 $]; boom truck [200 h]; labor [1200 h]; Sewage Network Circular pipes (GRP) [63.28]; Physical Units [21773 h] | 2,526.92 |  | ZNA | CON | LAY |
| A49520 |  | Install Manhole | 4d | 2027-01-11 | 2027-01-16 | A49500 |  |  |  |  | -5.68d | 15.28d | ICKMO1-cost unite [11371.1 $]; boom truck [200 h]; labor [1200 h]; Physical Units [97978.5 h] | 11,371.15 |  | ZNA | CON | MH |
| A49530 |  | Testing & Inspection | 4d | 2027-01-16 | 2027-01-20 | A49510 |  |  |  |  | -9.68d | 11.28d | ICKMO1-cost unite [2526.92 $]; labor [1200 h]; Physical Units [21773 h] | 2,526.92 |  | ZNA | CON |  |
| A49540 |  | Backfilling & Compaction | 4d | 2027-02-02 | 2027-02-07 | A49530, A49520, A49490 |  |  |  |  | -20.96d | 0d | ICKMO1-cost unite [5053.84 $]; Marking Machines [200 h]; Physical Units [43546 h] | 5,053.84 |  | ZNA | CON |  |
|  | MH-1.10.6 / MH-1.10.7 | **MH-1.10.6 / MH-1.10.7** |  | 2026-08-21 | 2027-02-11 |  |  |  |  |  |  |  |  |  |  |  |  |  |
| A49550 |  | Excavation | 4d | 2026-08-21 A | 2027-01-11 | A49500, A1190 | 94% | 0.24d | 2027-07-10 | 2027-07-14 | -14.4d | 0d | ICKMO1-cost unite [3790.38 $]; Excavator [200 h]; Physical Units [32659.5 h] | 3,790.38 | 3,562.96 | ZNA | CON |  |
| A49560 |  | Pipe Laying | 4d | 2027-01-11 | 2027-01-16 | A49550 |  |  |  |  | -5.92d | 0d | ICKMO1-cost unite [2526.92 $]; boom truck [200 h]; labor [1200 h]; Sewage Network Circular pipes (GRP) [63.28]; Physical Units [21773 h] | 2,526.92 |  | ZNA | CON | LAY |
| A49570 |  | Install Manhole | 4d | 2027-01-11 | 2027-01-16 | A49550 |  |  |  |  | -1.92d | 19.04d | ICKMO1-cost unite [11371.1 $]; boom truck [200 h]; labor [1200 h]; Physical Units [97978.5 h] | 11,371.15 |  | ZNA | CON | MH |
| A49580 |  | Testing & Inspection | 4d | 2027-01-16 | 2027-01-20 | A49560 |  |  |  |  | -5.92d | 15.04d | ICKMO1-cost unite [2526.92 $]; labor [1200 h]; Physical Units [21773 h] | 2,526.92 |  | ZNA | CON |  |
| A49590 |  | Backfilling & Compaction | 4d | 2027-02-07 | 2027-02-11 | A49580, A49570, A49540 |  |  |  |  | -20.96d | 0d | ICKMO1-cost unite [5053.84 $]; Marking Machines [200 h]; Physical Units [43546 h] | 5,053.84 |  | ZNA | CON |  |
|  | MH-1.10.7 / MH-1.10.8 | **MH-1.10.7 / MH-1.10.8** |  | 2026-08-21 | 2027-02-16 |  |  |  |  |  |  |  |  |  |  |  |  |  |
| A49600 |  | Excavation | 4d | 2026-08-21 A | 2027-01-12 | A49550, A1190 | 94% | 0.24d | 2027-07-14 | 2027-07-19 | -14.4d | 0d | ICKMO1-cost unite [3790.38 $]; Excavator [200 h]; Physical Units [32659.5 h] | 3,790.38 | 3,562.96 | ZNA | CON |  |
| A49610 |  | Pipe Laying | 4d | 2027-01-12 | 2027-01-17 | A49600 |  |  |  |  | -2.16d | 0d | ICKMO1-cost unite [2526.92 $]; boom truck [200 h]; labor [1200 h]; Sewage Network Circular pipes (GRP) [63.28]; Physical Units [21773 h] | 2,526.92 |  | ZNA | CON | LAY |
| A49620 |  | Install Manhole | 4d | 2027-01-12 | 2027-01-17 | A49600 |  |  |  |  | 1.84d | 22.8d | ICKMO1-cost unite [11371.1 $]; boom truck [200 h]; labor [1200 h]; Physical Units [97978.5 h] | 11,371.15 |  | ZNA | CON | MH |
| A49630 |  | Testing & Inspection | 4d | 2027-01-17 | 2027-01-21 | A49610 |  |  |  |  | -2.16d | 18.8d | ICKMO1-cost unite [2526.92 $]; labor [1200 h]; Physical Units [21773 h] | 2,526.92 |  | ZNA | CON |  |
| A49640 |  | Backfilling & Compaction | 4d | 2027-02-11 | 2027-02-16 | A49630, A49620, A49590 |  |  |  |  | -20.96d | 0d | ICKMO1-cost unite [5053.84 $]; Marking Machines [200 h]; Physical Units [43546 h] | 5,053.84 |  | ZNA | CON |  |

| ID | WBS | Activity | Duration | Start | Finish | Predecessors | Complete | Remaining | Planned start | Planned finish | Total float | Free float | Resources | Cost | Actual cost | ALKHARJ INDUSTERIAL AREA - PROJECT ZONES | ALKHARJ INDUSTERIAL AREA - DECEPLINS | ALKHARJ INDUSTERIAL AREA - Wet networks |
| --- | --- | --- | --- | --- | --- | --- | --- | --- | --- | --- | --- | --- | --- | --- | --- | --- | --- | --- |
|  | MH-1.10.8 / MH-1.10.9 | **MH-1.10.8 / MH-1.10.9** |  | 2026-08-21 | 2027-02-21 |  |  |  |  |  |  |  |  |  |  |  |  |  |
| A49650 |  | Excavation | 4d | 2026-08-21 A | 2027-01-12 | A49600, A1190 | 94% | 0.24d | 2027-07-19 | 2027-07-24 | -14.4d | 0d | ICKMO1-cost unite [3790.38 $]; Excavator [200 h]; Physical Units [32659.5 h] | 3,790.38 | 3,562.96 | ZNA | CON |  |
| A49660 |  | Pipe Laying | 4d | 2027-01-12 | 2027-01-17 | A49650 |  |  |  |  | 1.6d | 0d | ICKMO1-cost unite [2526.92 $]; boom truck [200 h]; labor [1200 h]; Sewage Network Circular pipes (GRP) [63.28]; Physical Units [21773 h] | 2,526.92 |  | ZNA | CON | LAY |
| A49670 |  | Install Manhole | 4d | 2027-01-12 | 2027-01-17 | A49650 |  |  |  |  | 5.6d | 26.56d | ICKMO1-cost unite [11371.1 $]; boom truck [200 h]; labor [1200 h]; Physical Units [97978.5 h] | 11,371.15 |  | ZNA | CON | MH |
| A49680 |  | Testing & Inspection | 4d | 2027-01-17 | 2027-01-21 | A49660 |  |  |  |  | 1.6d | 22.56d | ICKMO1-cost unite [2526.92 $]; labor [1200 h]; Physical Units [21773 h] | 2,526.92 |  | ZNA | CON |  |
| A49690 |  | Backfilling & Compaction | 4d | 2027-02-16 | 2027-02-21 | A49680, A49670, A49640 |  |  |  |  | -20.96d | 0d | ICKMO1-cost unite [5053.84 $]; Marking Machines [200 h]; Physical Units [43546 h] | 5,053.84 |  | ZNA | CON |  |
|  | EX LR 016 | **EX LR 016** |  | 2026-07-04 | 2027-02-14 |  |  |  |  |  |  |  |  |  |  |  |  |  |
|  | MH-2.0 / MH-2.1 | **MH-2.0 / MH-2.1** |  | 2027-01-12 | 2027-01-31 |  |  |  |  |  |  |  |  |  |  |  |  |  |
| A49700 |  | Excavation | 4d | 2027-01-12 | 2027-01-17 | A49650, A1190 |  |  |  |  | -14.4d | 0d | ICKMO1-cost unite [4538.49 $]; Excavator [200 h]; Physical Units [39105.5 h] | 4,538.49 |  | ZNA | CON |  |
| A49710 |  | Pipe Laying | 4d | 2027-01-17 | 2027-01-21 | A49700 |  |  |  |  | -14.4d | 0d | ICKMO1-cost unite [3025.65 $]; boom truck [200 h]; labor [1200 h]; Sewage Network Circular pipes (GRP) [63.28]; Physical Units [26070.2 h] | 3,025.65 |  | ZNA | CON | LAY |
| A49720 |  | Install Manhole | 4d | 2027-01-17 | 2027-01-21 | A49700 |  |  |  |  | -10.4d | 4d | ICKMO1-cost unite [13615.5 $]; boom truck [200 h]; labor [1200 h]; Physical Units [117316 h] | 13,615.45 |  | ZNA | CON | MH |
| A49730 |  | Testing & Inspection | 4d | 2027-01-21 | 2027-01-26 | A49710 |  |  |  |  | -14.4d | 0d | ICKMO1-cost unite [3025.65 $]; labor [1200 h]; Physical Units [26070.2 h] | 3,025.65 |  | ZNA | CON |  |
| A49740 |  | Backfilling & Compaction | 4d | 2027-01-26 | 2027-01-31 | A49730, A49720 |  |  |  |  | -14.4d | 0d | ICKMO1-cost unite [6051.31 $]; Marking Machines [200 h]; Physical Units [52140.6 h] | 6,051.31 |  | ZNA | CON |  |
|  | MH-2.1 / MH-2.2 | **MH-2.1 / MH-2.2** |  | 2027-01-17 | 2027-02-04 |  |  |  |  |  |  |  |  |  |  |  |  |  |
| A49750 |  | Excavation | 4d | 2027-01-17 | 2027-01-21 | A49700, A1190 |  |  |  |  | -14.4d | 0d | ICKMO1-cost unite [4538.49 $]; Excavator [200 h]; Physical Units [39105.5 h] | 4,538.49 |  | ZNA | CON |  |
| A49760 |  | Pipe Laying | 4d | 2027-01-21 | 2027-01-26 | A49750 |  |  |  |  | -14.4d | 0d | ICKMO1-cost unite [3025.65 $]; boom truck [200 h]; labor [1200 h]; Sewage Network Circular pipes (GRP) [63.28]; Physical Units [26070.2 h] | 3,025.65 |  | ZNA | CON | LAY |
| A49770 |  | Install Manhole | 4d | 2027-01-21 | 2027-01-26 | A49750 |  |  |  |  | -10.4d | 4d | ICKMO1-cost unite [13615.5 $]; boom truck [200 h]; labor [1200 h]; Physical Units [117316 h] | 13,615.45 |  | ZNA | CON | MH |
| A49780 |  | Testing & Inspection | 4d | 2027-01-26 | 2027-01-31 | A49760 |  |  |  |  | -14.4d | 0d | ICKMO1-cost unite [3025.65 $]; labor [1200 h]; Physical Units [26070.2 h] | 3,025.65 |  | ZNA | CON |  |
| A49790 |  | Backfilling & Compaction | 4d | 2027-01-31 | 2027-02-04 | A49780, A49770, A49740 |  |  |  |  | -14.4d | 0d | ICKMO1-cost unite [6051.31 $]; Marking Machines [200 h]; Physical Units [52140.6 h] | 6,051.31 |  | ZNA | CON |  |
|  | MH-2.2 / MH-2.3 | **MH-2.2 / MH-2.3** |  | 2027-01-21 | 2027-02-09 |  |  |  |  |  |  |  |  |  |  |  |  |  |
| A49800 |  | Excavation | 4d | 2027-01-21 | 2027-01-26 | A49750, A1190 |  |  |  |  | -14.4d | 0d | ICKMO1-cost unite [4538.49 $]; Excavator [200 h]; Physical Units [39105.5 h] | 4,538.49 |  | ZNA | CON |  |
| A49810 |  | Pipe Laying | 4d | 2027-01-26 | 2027-01-31 | A49800 |  |  |  |  | -14.4d | 0d | ICKMO1-cost unite [3025.65 $]; boom truck [200 h]; labor [1200 h]; Sewage Network Circular pipes (GRP) [63.28]; Physical Units [26070.2 h] | 3,025.65 |  | ZNA | CON | LAY |
| A49820 |  | Install Manhole | 4d | 2027-01-26 | 2027-01-31 | A49800 |  |  |  |  | -10.4d | 4d | ICKMO1-cost unite [13615.5 $]; boom truck [200 h]; labor [1200 h]; Physical Units [117316 h] | 13,615.45 |  | ZNA | CON | MH |
| A49830 |  | Testing & Inspection | 4d | 2027-01-31 | 2027-02-04 | A49810 |  |  |  |  | -14.4d | 0d | ICKMO1-cost unite [3025.65 $]; labor [1200 h]; Physical Units [26070.2 h] | 3,025.65 |  | ZNA | CON |  |
| A49840 |  | Backfilling & Compaction | 4d | 2027-02-04 | 2027-02-09 | A49830, A49820, A49790 |  |  |  |  | -14.4d | 0d | ICKMO1-cost unite [6051.31 $]; Roller compactor [200 h]; Physical Units [52140.6 h] | 6,051.31 |  | ZNA | CON |  |

| ID | WBS | Activity | Duration | Start | Finish | Predecessors | Complete | Remaining | Planned start | Planned finish | Total float | Free float | Resources | Cost | Actual cost | ALKHARJ INDUSTERIAL AREA - PROJECT ZONES | ALKHARJ INDUSTERIAL AREA - DECEPLINS | ALKHARJ INDUSTERIAL AREA - Wet networks |
| --- | --- | --- | --- | --- | --- | --- | --- | --- | --- | --- | --- | --- | --- | --- | --- | --- | --- | --- |
|  | MH-2.3 / MH-2.4 | **MH-2.3 / MH-2.4** |  | 2026-07-04 | 2027-02-14 |  |  |  |  |  |  |  |  |  |  |  |  |  |
| A49850 |  | Excavation | 4d | 2026-07-04 A | 2026-08-05 A | A49800, A1190 | 100% |  | 2027-08-07 | 2027-08-11 |  |  | ICKMO1-cost unite [4538.49 $]; Excavator [200 h]; Physical Units [39105.5 h] | 4,538.49 | 4,538.49 | ZNA | CON |  |
| A49860 |  | Pipe Laying | 4d | 2026-07-04 A | 2026-08-05 A | A49850 | 100% |  | 2027-08-11 | 2027-08-16 |  |  | ICKMO1-cost unite [3025.65 $]; boom truck [200 h]; labor [1200 h]; Sewage Network Circular pipes (GRP) [63.28]; Physical Units [26070.2 h] | 3,025.65 | 3,025.65 | ZNA | CON | LAY |
| A49870 |  | Install Manhole | 4d | 2026-07-04 A | 2026-08-05 A | A49850 | 100% |  | 2027-08-11 | 2027-08-16 |  |  | ICKMO1-cost unite [13615.5 $]; boom truck [200 h]; labor [1200 h]; Physical Units [117316 h] | 13,615.45 | 13,615.45 | ZNA | CON | MH |
| A49880 |  | Testing & Inspection | 4d | 2027-01-26 | 2027-01-31 | A49860 |  |  |  |  | -6.4d | 8d | ICKMO1-cost unite [3025.65 $]; labor [1200 h]; Physical Units [26070.2 h] | 3,025.65 |  | ZNA | CON |  |
| A49890 |  | Backfilling & Compaction | 4d | 2027-02-09 | 2027-02-14 | A49880, A49870, A49840 |  |  |  |  | -14.4d | 6.56d | ICKMO1-cost unite [6051.31 $]; Roller compactor [200 h]; Physical Units [52140.6 h] | 6,051.31 |  | ZNA | CON |  |
|  | PW | **POTABLE NETWORK** |  | 2026-08-20 | 2027-05-15 |  |  |  |  |  |  |  |  |  |  |  |  |  |
|  | R1 | **Road 1** |  | 2026-08-20 | 2027-02-24 |  |  |  |  |  |  |  |  |  |  |  |  |  |
| A86670 |  | Road Crossing Works | 12d | 2026-08-20 A | 2026-09-28 A | A39700, A47100 | 100% |  | 2027-06-10 | 2027-06-24 |  |  | ICKMO1-cost unite [15277.7 $]; labor [800 h]; Physical Units [131639 h] | 15,277.72 | 15,277.72 | ZNA | CON |  |
| A86610 |  | Trenching & Bedding | 10d | 2026-09-15 A | 2027-01-11 | A86670 SS, A1340, A1350, A1360, A1370, A1380, A11020, A11010, A11000, A10990, A11100, A11170, A11180, A11030, A11050, A11060, A86670 FF | 95% | 0.5d | 2027-09-08 | 2027-09-19 | -22.58d | 0d | ICKMO1-cost unite [45833.2 $]; Roller compactor [200 h]; JCB [200 h]; Physical Units [394918 h] | 45,833.17 | 43,541.52 | ZNA | CON |  |
| A86620 |  | Pipe Laying | 17d | 2026-09-15 A | 2027-01-14 | A86610 SS+3d, A86670 SS+4d, A86610 FF+3d, A86670 FF+4d | 95% | 0.85d | 2027-09-12 | 2027-09-30 | -22.58d | 0d | ICKMO1-cost unite [30555.4 $]; Roller compactor [200 h]; JCB [200 h]; Physical Units [263278 h] | 30,555.44 | 29,027.67 | ZNA | CON | LAY |
| A86630 |  | Backfilling & Compaction | 8d | 2026-09-15 A | 2027-01-16 | A86640 | 95% | 0.4d | 2027-10-06 | 2027-10-14 | 11.02d | 101.12d | ICKMO1-cost unite [61110.9 $]; labor [800 h]; Physical Units [526557 h] | 61,110.9 | 58,055.35 | ZNA | CON |  |
| A86640 |  | Testing | 4d | 2026-09-15 A | 2027-01-16 | A86620 | 73% | 1.08d | 2027-01-14 | 2027-01-19 | -22.58d | 0d | ICKMO1-cost unite [15277.7 $]; labor [800 h]; Physical Units [131639 h] | 15,277.72 | 11,152.74 | ZNA | CON |  |
| A86650 |  | Chambers Construction works | 16d | 2027-01-16 | 2027-02-03 | A86640 |  |  |  |  | -22.58d | 0d | ICKMO1-cost unite [91666.3 $]; Roller compactor [200 h]; JCB [200 h]; Physical Units [789835 h] | 91,666.34 |  | ZNA | CON |  |
| A86660 |  | Valves & Fittings Installation | 18d | 2027-02-03 | 2027-02-24 | A86650 |  |  |  |  | -22.58d | 67.52d | ICKMO1-cost unite [45833.2 $]; labor [800 h]; Physical Units [394918 h] | 45,833.17 |  | ZNA | CON |  |
|  | R11 | **Road 2** |  | 2026-08-20 | 2027-01-31 |  |  |  |  |  |  |  |  |  |  |  |  |  |
| A86690 |  | Road Crossing Works | 16d | 2026-08-20 A | 2026-09-28 A | A41300, A47100 | 100% |  | 2027-06-10 | 2027-06-29 |  |  | ICKMO1-cost unite [30555.4 $]; labor [800 h]; Physical Units [263278 h] | 30,555.44 | 30,555.44 | ZNA | CON |  |
| A86680 |  | Trenching & Bedding | 14d | 2026-09-15 A | 2026-12-10 | A86690 SS, A41300, A86690 FF | 95% | 0.7d | 2027-06-13 | 2027-06-29 | -1.42d | 0d | ICKMO1-cost unite [45833.2 $]; Roller compactor [200 h]; JCB [200 h]; Physical Units [394918 h] | 45,833.17 | 43,541.52 | ZNA | CON |  |
| A86700 |  | Pipe Laying | 18d | 2026-09-15 A | 2026-12-20 | A86680 SS+8d, A86690 SS+8d, A86680 FF+8d, A86690 FF+8d | 95% | 0.9d | 2027-06-22 | 2027-07-13 | -1.42d | 0d | ICKMO1-cost unite [61110.9 $]; labor [800 h]; Physical Units [526557 h] | 61,110.9 | 58,055.35 | ZNA | CON | LAY |
| A86710 |  | Testing | 4d | 2026-09-15 A | 2026-12-22 | A86700, A86700 FF | 50% | 2d | 2027-01-18 | 2027-01-23 | -1.42d | 0d | ICKMO1-cost unite [15277.7 $]; Roller compactor [200 h]; JCB [200 h]; Physical Units [131639 h] | 15,277.72 | 7,638.86 | ZNA | CON |  |
| A86720 |  | Backfilling & Compaction | 16d | 2026-09-15 A | 2026-12-23 | A86710, A86710 FF | 95% | 0.8d | 2027-07-18 | 2027-08-05 | 31.78d | 121.88d | ICKMO1-cost unite [91666.3 $]; labor [800 h]; Physical Units [789835 h] | 91,666.34 | 87,083.02 | ZNA | CON |  |
| A86730 |  | Chambers Construction works | 16d | 2026-12-22 | 2027-01-10 | A86710 |  |  |  |  | -1.42d | 0d | ICKMO1-cost unite [45833.2 $]; labor [800 h]; Physical Units [394918 h] | 45,833.17 |  | ZNA | CON |  |
| A86740 |  | Valves & Fittings Installation | 18d | 2027-01-10 | 2027-01-31 | A86730 |  |  |  |  | -1.42d | 88.68d | ICKMO1-cost unite [15277.7 $]; Physical Units [131639 h] | 15,277.72 |  | ZNA | CON |  |
|  | R12 | **Road 3** |  | 2026-08-20 | 2027-01-23 |  |  |  |  |  |  |  |  |  |  |  |  |  |
| A86750 |  | Trenching & Bedding | 10d | 2026-08-20 A | 2026-09-28 A | A86760 SS, A86760 FF | 100% |  | 2027-03-31 | 2027-04-12 |  |  | ICKMO1-cost unite [45833.2 $]; Roller compactor [200 h]; JCB [200 h]; Physical Units [394918 h] | 45,833.17 | 45,833.17 | ZNA | CON |  |
| A86760 |  | Road Crossing Works | 14d | 2026-08-20 A | 2026-09-28 A | A43440 | 100% |  | 2027-03-27 | 2027-04-12 |  |  | ICKMO1-cost unite [30555.4 $]; labor [800 h]; Physical Units [263278 h] | 30,555.44 | 30,555.44 | ZNA | CON |  |
| A86770 |  | Pipe Laying | 14d | 2026-09-29 A | 2026-12-27 | A86750 SS+8d, A86760 SS+8d, A86750 FF+8d, A86760 FF+8d | 50% | 7d | 2027-01-12 | 2027-01-28 | 5.28d | 0d | ICKMO1-cost unite [61110.9 $]; labor [800 h]; Physical Units [526557 h] | 61,110.9 | 30,555.45 | ZNA | CON | LAY |
| A86780 |  | Testing | 4d | 2026-12-27 | 2026-12-31 | A86770, A86770 FF |  |  |  |  | 5.28d | 0d | ICKMO1-cost unite [15277.7 $]; Roller compactor [200 h]; JCB [200 h]; Physical Units [131639 h] | 15,277.72 |  | ZNA | CON |  |
| A86790 |  | Backfilling & Compaction | 7d | 2026-12-31 | 2027-01-09 | A86780, A86780 FF |  |  |  |  | 17.28d | 107.38d | ICKMO1-cost unite [91666.3 $]; labor [800 h]; Physical Units [789835 h] | 91,666.34 |  | ZNA | CON |  |
| A86800 |  | Chambers Construction works | 8d | 2026-12-31 | 2027-01-10 | A86780 |  |  |  |  | 5.28d | 0d | ICKMO1-cost unite [45833.2 $]; labor [800 h]; Physical Units [394918 h] | 45,833.17 |  | ZNA | CON |  |
| A86810 |  | Valves & Fittings Installation | 11d | 2027-01-10 | 2027-01-23 | A86800 |  |  |  |  | 5.28d | 95.38d | ICKMO1-cost unite [15277.7 $]; Physical Units [131639 h] | 15,277.72 |  | ZNA | CON |  |

| ID | WBS | Activity | Duration | Start | Finish | Predecessors | Complete | Planned start | Planned finish | Total float | Free float | Resources | Cost | Actual cost | ALKHARJ INDUSTERIAL AREA - PROJECT ZONES | ALKHARJ INDUSTERIAL AREA - DECEPLINS | ALKHARJ INDUSTERIAL AREA - Wet networks |
| --- | --- | --- | --- | --- | --- | --- | --- | --- | --- | --- | --- | --- | --- | --- | --- | --- | --- |
|  | R13 | **Road 4** |  | 2026-08-20 | 2027-02-10 |  |  |  |  |  |  |  |  |  |  |  |  |
| A86830 |  | Road Crossing Works | 16d | 2026-08-20 A | 2026-09-28 A | A44040 | 100% | 2027-01-31 | 2027-02-18 |  |  | ICKMO1-cost unite [30555.4 $]; labor [800 h]; Physical Units [263278 h] | 30,555.44 | 30,555.44 | ZNA | CON |  |
| A86820 |  | Trenching & Bedding | 14d | 2026-11-28 | 2026-12-14 | A86830 SS, A86830 FF |  |  |  | -10.72d | 0d | ICKMO1-cost unite [45833.2 $]; Roller compactor [200 h]; JCB [200 h]; Physical Units [394918 h] | 45,833.17 |  | ZNA | CON |  |
| A86840 |  | Pipe Laying | 18d | 2026-12-07 | 2026-12-28 | A86820 SS+8d, A86830 SS+8d, A86820 FF+8d, A86830 FF+8d |  |  |  | -10.72d | 0d | ICKMO1-cost unite [61110.9 $]; labor [800 h]; Physical Units [526557 h] | 61,110.9 |  | ZNA | CON | LAY |
| A86850 |  | Testing | 4d | 2026-12-28 | 2027-01-02 | A86840, A86840 FF |  |  |  | -10.72d | 0d | ICKMO1-cost unite [15277.7 $]; Roller compactor [200 h]; JCB [200 h]; Physical Units [131639 h] | 15,277.72 |  | ZNA | CON |  |
| A86860 |  | Backfilling & Compaction | 16d | 2027-01-02 | 2027-01-20 | A86850, A86850 FF |  |  |  | 7.28d | 97.38d | ICKMO1-cost unite [91666.3 $]; labor [800 h]; Physical Units [789835 h] | 91,666.34 |  | ZNA | CON |  |
| A86870 |  | Chambers Construction works | 16d | 2027-01-02 | 2027-01-20 | A86850 |  |  |  | -10.72d | 0d | ICKMO1-cost unite [45833.2 $]; labor [800 h]; Physical Units [394918 h] | 45,833.17 |  | ZNA | CON |  |
| A86880 |  | Valves & Fittings Installation | 18d | 2027-01-20 | 2027-02-10 | A86870 |  |  |  | -10.72d | 79.38d | ICKMO1-cost unite [15277.7 $]; Physical Units [131639 h] | 15,277.72 |  | ZNA | CON |  |
|  | R14 | **Road 5** |  | 2026-08-20 | 2027-05-15 |  |  |  |  |  |  |  |  |  |  |  |  |
| A86900 |  | Road Crossing Works | 16d | 2026-08-20 A | 2026-09-28 A | A44740, A47100 | 100% | 2027-02-11 | 2027-03-02 |  |  | ICKMO1-cost unite [30555.4 $]; labor [800 h]; Physical Units [263278 h] | 30,555.44 | 30,555.44 | ZNA | CON |  |
| A86890 |  | Trenching & Bedding | 14d | 2027-03-01 | 2027-03-17 | A86900 SS, A86900 FF |  |  |  | -90.1d | 0d | ICKMO1-cost unite [45833.2 $]; Roller compactor [200 h]; JCB [200 h]; Physical Units [394918 h] | 45,833.17 |  | ZNA | CON |  |
| A86910 |  | Pipe Laying | 18d | 2027-03-10 | 2027-03-31 | A86890 SS+8d, A86900 SS+8d, A86890 FF+8d, A86900 FF+8d |  |  |  | -90.1d | 0d | ICKMO1-cost unite [61110.9 $]; labor [800 h]; Physical Units [526557 h] | 61,110.9 |  | ZNA | CON | LAY |
| A86920 |  | Testing | 4d | 2027-03-31 | 2027-04-05 | A86910, A86910 FF |  |  |  | -90.1d | 0d | ICKMO1-cost unite [15277.7 $]; Roller compactor [200 h]; JCB [200 h]; Physical Units [131639 h] | 15,277.72 |  | ZNA | CON |  |
| A86930 |  | Backfilling & Compaction | 16d | 2027-04-05 | 2027-04-24 | A86920, A86920 FF |  |  |  | -72.1d | 18d | ICKMO1-cost unite [91666.3 $]; labor [800 h]; Physical Units [789835 h] | 91,666.34 |  | ZNA | CON |  |
| A86940 |  | Chambers Construction works | 16d | 2027-04-05 | 2027-04-24 | A86920 |  |  |  | -90.1d | 0d | ICKMO1-cost unite [45833.2 $]; labor [800 h]; Physical Units [394918 h] | 45,833.17 |  | ZNA | CON |  |
| A86950 |  | Valves & Fittings Installation | 18d | 2027-04-24 | 2027-05-15 | A86940 |  |  |  | -90.1d | 0d | ICKMO1-cost unite [15277.7 $]; Physical Units [131639 h] | 15,277.72 |  | ZNA | CON |  |
|  | R15 | **Road 6** |  | 2026-08-20 | 2027-02-06 |  |  |  |  |  |  |  |  |  |  |  |  |
| A86970 |  | Road Crossing Works | 16d | 2026-08-20 A | 2026-09-28 A | A45390 | 100% | 2026-12-30 | 2027-01-18 |  |  | ICKMO1-cost unite [30555.4 $]; labor [800 h]; Physical Units [263278 h] | 30,555.44 | 30,555.44 | ZNA | CON |  |
| A86960 |  | Trenching & Bedding | 14d | 2026-11-23 | 2026-12-09 | A86970 SS, A86970 FF |  |  |  | -79.3d | 0d | ICKMO1-cost unite [45833.2 $]; Roller compactor [200 h]; JCB [200 h]; Physical Units [394918 h] | 45,833.17 |  | ZNA | CON |  |
| A86980 |  | Pipe Laying | 18d | 2026-12-02 | 2026-12-23 | A86960 SS+8d, A86970 SS+8d, A86960 FF+8d, A86970 FF+8d |  |  |  | -79.3d | 0d | ICKMO1-cost unite [61110.9 $]; labor [800 h]; Physical Units [526557 h] | 61,110.9 |  | ZNA | CON | LAY |
| A86990 |  | Testing | 4d | 2026-12-23 | 2026-12-28 | A86980, A86980 FF |  |  |  | -79.3d | 0d | ICKMO1-cost unite [15277.7 $]; Roller compactor [200 h]; JCB [200 h]; Physical Units [131639 h] | 15,277.72 |  | ZNA | CON |  |
| A87000 |  | Backfilling & Compaction | 16d | 2026-12-28 | 2027-01-16 | A86990, A86990 FF |  |  |  | 11.7d | 101.8d | ICKMO1-cost unite [91666.3 $]; labor [800 h]; Physical Units [789835 h] | 91,666.34 |  | ZNA | CON |  |
| A87010 |  | Chambers Construction works | 16d | 2026-12-28 | 2027-01-16 | A86990 |  |  |  | -79.3d | 0d | ICKMO1-cost unite [45833.2 $]; labor [800 h]; Physical Units [394918 h] | 45,833.17 |  | ZNA | CON |  |
| A87020 |  | Valves & Fittings Installation | 18d | 2027-01-16 | 2027-02-06 | A87010 |  |  |  | -6.3d | 83.8d | ICKMO1-cost unite [15277.7 $]; Physical Units [131639 h] | 15,277.72 |  | ZNA | CON |  |

| ID | WBS | Activity | Duration | Start | Finish | Predecessors | Complete | Planned start | Planned finish | Total float | Free float | Resources | Cost | Actual cost | ALKHARJ INDUSTERIAL AREA - PROJECT ZONES | ALKHARJ INDUSTERIAL AREA - DECEPLINS | ALKHARJ INDUSTERIAL AREA - Wet networks |
| --- | --- | --- | --- | --- | --- | --- | --- | --- | --- | --- | --- | --- | --- | --- | --- | --- | --- |
|  | R16 | **Road 7** |  | 2026-08-20 | 2027-02-22 |  |  |  |  |  |  |  |  |  |  |  |  |
| A87040 |  | Road Crossing Works | 16d | 2026-08-20 A | 2026-09-28 A | A45990, A47100 | 100% | 2027-02-11 | 2027-03-02 |  |  | ICKMO1-cost unite [30555.4 $]; labor [800 h]; Physical Units [263278 h] | 30,555.44 | 30,555.44 | ZNA | CON |  |
| A87030 |  | Trenching & Bedding | 14d | 2026-12-09 | 2026-12-26 | A87040 SS, A87040 FF |  |  |  | -25.72d | 0d | ICKMO1-cost unite [45833.2 $]; Roller compactor [200 h]; JCB [200 h]; Physical Units [394918 h] | 45,833.17 |  | ZNA | CON |  |
| A87050 |  | Pipe Laying | 18d | 2026-12-19 | 2027-01-09 | A87030 SS+8d, A87040 SS+8d, A87030 FF+8d, A87040 FF+8d |  |  |  | -20.72d | 0d | ICKMO1-cost unite [61110.9 $]; labor [800 h]; Physical Units [526557 h] | 61,110.9 |  | ZNA | CON | LAY |
| A87060 |  | Testing | 4d | 2027-01-09 | 2027-01-13 | A87050, A87050 FF |  |  |  | -20.72d | 0d | ICKMO1-cost unite [15277.7 $]; Roller compactor [200 h]; JCB [200 h]; Physical Units [131639 h] | 15,277.72 |  | ZNA | CON |  |
| A87070 |  | Backfilling & Compaction | 16d | 2027-01-13 | 2027-02-01 | A87060, A87060 FF |  |  |  | -2.72d | 87.38d | ICKMO1-cost unite [91666.3 $]; labor [800 h]; Physical Units [789835 h] | 91,666.34 |  | ZNA | CON |  |
| A87080 |  | Chambers Construction works | 16d | 2027-01-13 | 2027-02-01 | A87060 |  |  |  | -20.72d | 0d | ICKMO1-cost unite [45833.2 $]; labor [800 h]; Physical Units [394918 h] | 45,833.17 |  | ZNA | CON |  |
| A87090 |  | Valves & Fittings Installation | 18d | 2027-02-01 | 2027-02-22 | A87080 |  |  |  | -20.72d | 69.38d | ICKMO1-cost unite [15277.7 $]; Physical Units [131639 h] | 15,277.72 |  | ZNA | CON |  |
|  | R17 | **Road 8** |  | 2026-08-20 | 2027-02-22 |  |  |  |  |  |  |  |  |  |  |  |  |
| A87110 |  | Road Crossing Works | 16d | 2026-08-20 A | 2026-09-28 A | A46590, A47100 | 100% | 2027-02-11 | 2027-03-02 |  |  | ICKMO1-cost unite [30555.4 $]; labor [800 h]; Physical Units [263278 h] | 30,555.44 | 30,555.44 | ZNA | CON |  |
| A87100 |  | Trenching & Bedding | 14d | 2026-12-09 | 2026-12-26 | A87110 SS, A87110 FF |  |  |  | -20.72d | 0d | ICKMO1-cost unite [45833.2 $]; Roller compactor [200 h]; JCB [200 h]; Physical Units [394918 h] | 45,833.17 |  | ZNA | CON |  |
| A87120 |  | Pipe Laying | 18d | 2026-12-19 | 2027-01-09 | A87100 SS+8d, A87110 SS+8d, A87100 FF+8d, A87110 FF+8d |  |  |  | -20.72d | 0d | ICKMO1-cost unite [61110.9 $]; labor [800 h]; Physical Units [526557 h] | 61,110.9 |  | ZNA | CON | LAY |
| A87130 |  | Testing | 4d | 2027-01-09 | 2027-01-13 | A87120, A87120 FF |  |  |  | -20.72d | 0d | ICKMO1-cost unite [15277.7 $]; Roller compactor [200 h]; JCB [200 h]; Physical Units [131639 h] | 15,277.72 |  | ZNA | CON |  |
| A87140 |  | Backfilling & Compaction | 16d | 2027-01-13 | 2027-02-01 | A87130, A87130 FF |  |  |  | -2.72d | 87.38d | ICKMO1-cost unite [91666.3 $]; labor [800 h]; Physical Units [789835 h] | 91,666.34 |  | ZNA | CON |  |
| A87150 |  | Chambers Construction works | 16d | 2027-01-13 | 2027-02-01 | A87130 |  |  |  | -20.72d | 0d | ICKMO1-cost unite [45833.2 $]; labor [800 h]; Physical Units [394918 h] | 45,833.17 |  | ZNA | CON |  |
| A87160 |  | Valves & Fittings Installation | 18d | 2027-02-01 | 2027-02-22 | A87150 |  |  |  | -20.72d | 69.38d | ICKMO1-cost unite [15277.7 $]; Physical Units [131639 h] | 15,277.72 |  | ZNA | CON |  |
|  | R18 | **Road 9** |  | 2026-08-20 | 2027-02-22 |  |  |  |  |  |  |  |  |  |  |  |  |
| A87180 |  | Road Crossing Works | 16d | 2026-08-20 A | 2026-09-28 A | A47090, A87110 | 100% | 2027-03-02 | 2027-03-21 |  |  | ICKMO1-cost unite [30555.4 $]; labor [800 h]; Physical Units [263278 h] | 30,555.44 | 30,555.44 | ZNA | CON |  |
| A87170 |  | Trenching & Bedding | 14d | 2026-12-09 | 2026-12-26 | A87180 SS, A87180 FF |  |  |  | -20.72d | 0d | ICKMO1-cost unite [45833.2 $]; Roller compactor [200 h]; JCB [200 h]; Physical Units [394918 h] | 45,833.17 |  | ZNA | CON |  |
| A87190 |  | Pipe Laying | 18d | 2026-12-19 | 2027-01-09 | A87170 SS+8d, A87180 SS+8d, A87170 FF+8d, A87180 FF+8d |  |  |  | -20.72d | 0d | ICKMO1-cost unite [61110.9 $]; labor [800 h]; Physical Units [526557 h] | 61,110.9 |  | ZNA | CON | LAY |
| A87200 |  | Testing | 4d | 2027-01-09 | 2027-01-13 | A87190, A87190 FF |  |  |  | -20.72d | 0d | ICKMO1-cost unite [15277.7 $]; Roller compactor [200 h]; JCB [200 h]; Physical Units [131639 h] | 15,277.72 |  | ZNA | CON |  |
| A87210 |  | Backfilling & Compaction | 16d | 2027-01-13 | 2027-02-01 | A87200, A87200 FF |  |  |  | -2.72d | 87.38d | ICKMO1-cost unite [91666.3 $]; labor [800 h]; Physical Units [789835 h] | 91,666.34 |  | ZNA | CON |  |
| A87220 |  | Chambers Construction works | 16d | 2027-01-13 | 2027-02-01 | A87200 |  |  |  | -20.72d | 0d | ICKMO1-cost unite [45833.2 $]; labor [800 h]; Physical Units [394918 h] | 45,833.17 |  | ZNA | CON |  |
| A87230 |  | Valves & Fittings Installation | 18d | 2027-02-01 | 2027-02-22 | A87220 |  |  |  | -20.72d | 69.38d | ICKMO1-cost unite [15277.7 $]; Physical Units [131639 h] | 15,277.72 |  | ZNA | CON |  |

| ID | WBS | Activity | Duration | Start | Finish | Predecessors | Complete | Remaining | Planned start | Planned finish | Total float | Free float | Resources | Cost | Actual cost | ALKHARJ INDUSTERIAL AREA - PROJECT ZONES | ALKHARJ INDUSTERIAL AREA - DECEPLINS | ALKHARJ INDUSTERIAL AREA - Wet networks |
| --- | --- | --- | --- | --- | --- | --- | --- | --- | --- | --- | --- | --- | --- | --- | --- | --- | --- | --- |
|  | R19 | **Road 10** |  | 2026-08-20 | 2027-01-20 |  |  |  |  |  |  |  |  |  |  |  |  |  |
| A87250 |  | Road Crossing Works | 10d | 2026-08-20 A | 2026-09-28 A | A47440 | 100% |  | 2027-02-11 | 2027-02-23 |  |  | ICKMO1-cost unite [30555.4 $]; labor [800 h]; Physical Units [263278 h] | 30,555.44 | 30,555.44 | ZNA | CON |  |
| A87240 |  | Trenching & Bedding | 10d | 2026-12-09 | 2026-12-21 | A87250 SS, A87250 FF |  |  |  |  | 7.28d | 0d | ICKMO1-cost unite [45833.2 $]; Roller compactor [200 h]; JCB [200 h]; Physical Units [394918 h] | 45,833.17 |  | ZNA | CON |  |
| A87260 |  | Pipe Laying | 10d | 2026-12-19 | 2026-12-30 | A87240 SS+8d, A87250 SS+8d, A87240 FF+8d, A87250 FF+8d |  |  |  |  | 7.28d | 0d | ICKMO1-cost unite [61110.9 $]; labor [800 h]; Physical Units [526557 h] | 61,110.9 |  | ZNA | CON | LAY |
| A87270 |  | Testing | 4d | 2026-12-30 | 2027-01-04 | A87260, A87260 FF |  |  |  |  | 7.28d | 0d | ICKMO1-cost unite [15277.7 $]; Roller compactor [200 h]; JCB [200 h]; Physical Units [131639 h] | 15,277.72 |  | ZNA | CON |  |
| A87280 |  | Backfilling & Compaction | 7d | 2027-01-04 | 2027-01-12 | A87270, A87270 FF |  |  |  |  | 14.28d | 104.38d | ICKMO1-cost unite [91666.3 $]; labor [800 h]; Physical Units [789835 h] | 91,666.34 |  | ZNA | CON |  |
| A87290 |  | Chambers Construction works | 7d | 2027-01-04 | 2027-01-12 | A87270 |  |  |  |  | 7.28d | 0d | ICKMO1-cost unite [45833.2 $]; labor [800 h]; Physical Units [394918 h] | 45,833.17 |  | ZNA | CON |  |
| A87300 |  | Valves & Fittings Installation | 7d | 2027-01-12 | 2027-01-20 | A87290 |  |  |  |  | 7.28d | 97.38d | ICKMO1-cost unite [15277.7 $]; Physical Units [131639 h] | 15,277.72 |  | ZNA | CON |  |
|  | R110 | **Road 11** |  | 2026-08-20 | 2027-01-06 |  |  |  |  |  |  |  |  |  |  |  |  |  |
| A87320 |  | Road Crossing Works | 5d | 2026-08-20 A | 2026-09-28 A | A47740 | 100% |  | 2027-07-24 | 2027-07-29 |  |  | ICKMO1-cost unite [30555.4 $]; labor [800 h]; Physical Units [263278 h] | 30,555.44 | 30,555.44 | ZNA | CON |  |
| A87310 |  | Trenching & Bedding | 5d | 2026-09-15 A | 2026-12-10 | A87320 SS, A87320 FF | 90% | 0.5d | 2027-07-24 | 2027-07-29 | 19.78d | 0d | ICKMO1-cost unite [45833.2 $]; Roller compactor [200 h]; JCB [200 h]; Physical Units [394918 h] | 45,833.17 | 41,249.86 | ZNA | CON |  |
| A87330 |  | Pipe Laying | 5d | 2026-09-15 A | 2026-12-20 | A87310 SS+8d, A87320 SS+8d, A87310 FF+8d, A87320 FF+8d | 90% | 0.5d | 2027-08-02 | 2027-08-08 | 19.78d | 0d | ICKMO1-cost unite [61110.9 $]; labor [800 h]; Physical Units [526557 h] | 61,110.9 | 54,999.81 | ZNA | CON | LAY |
| A87350 |  | Backfilling & Compaction | 5d | 2026-09-15 A | 2026-12-26 | A87340, A87340 FF | 90% | 0.5d | 2027-03-01 | 2027-03-07 | 29.28d | 119.38d | ICKMO1-cost unite [91666.3 $]; labor [800 h]; Physical Units [789835 h] | 91,666.34 | 82,499.7 | ZNA | CON |  |
| A87340 |  | Testing | 5d | 2026-12-20 | 2026-12-26 | A87330, A87330 FF |  |  |  |  | 19.78d | 0d | ICKMO1-cost unite [15277.7 $]; Roller compactor [200 h]; JCB [200 h]; Physical Units [131639 h] | 15,277.72 |  | ZNA | CON |  |
| A87360 |  | Chambers Construction works | 5d | 2026-12-26 | 2026-12-31 | A87340 |  |  |  |  | 19.78d | 0d | ICKMO1-cost unite [45833.2 $]; labor [800 h]; Physical Units [394918 h] | 45,833.17 |  | ZNA | CON |  |
| A87370 |  | Valves & Fittings Installation | 5d | 2026-12-31 | 2027-01-06 | A87360 |  |  |  |  | 19.78d | 109.88d | ICKMO1-cost unite [15277.7 $]; Physical Units [131639 h] | 15,277.72 |  | ZNA | CON |  |
|  | R111 | **Road 12** |  | 2026-08-20 | 2027-01-10 |  |  |  |  |  |  |  |  |  |  |  |  |  |
| A87390 |  | Road Crossing Works | 3d | 2026-08-20 A | 2026-09-28 A | A48040 | 100% |  | 2027-02-11 | 2027-02-15 |  |  | ICKMO1-cost unite [30555.4 $]; labor [800 h]; Physical Units [263278 h] | 30,555.44 | 30,555.44 | ZNA | CON |  |
| A87380 |  | Trenching & Bedding | 3d | 2026-12-09 | 2026-12-13 | A87390 SS, A87390 FF |  |  |  |  | 16.28d | 0d | ICKMO1-cost unite [45833.2 $]; Roller compactor [200 h]; JCB [200 h]; Physical Units [394918 h] | 45,833.17 |  | ZNA | CON |  |
| A87400 |  | Pipe Laying | 5d | 2026-12-19 | 2026-12-24 | A87380 SS+8d, A87390 SS+8d, A87380 FF+8d, A87390 FF+8d |  |  |  |  | 16.28d | 0d | ICKMO1-cost unite [61110.9 $]; labor [800 h]; Physical Units [526557 h] | 61,110.9 |  | ZNA | CON | LAY |
| A87410 |  | Testing | 4d | 2026-12-24 | 2026-12-29 | A87400, A87400 FF |  |  |  |  | 16.28d | 0d | ICKMO1-cost unite [15277.7 $]; Roller compactor [200 h]; JCB [200 h]; Physical Units [131639 h] | 15,277.72 |  | ZNA | CON |  |
| A87420 |  | Backfilling & Compaction | 5d | 2026-12-29 | 2027-01-04 | A87410, A87410 FF |  |  |  |  | 21.28d | 111.38d | ICKMO1-cost unite [91666.3 $]; labor [800 h]; Physical Units [789835 h] | 91,666.34 |  | ZNA | CON |  |
| A87430 |  | Chambers Construction works | 5d | 2026-12-29 | 2027-01-04 | A87410 |  |  |  |  | 16.28d | 0d | ICKMO1-cost unite [45833.2 $]; labor [800 h]; Physical Units [394918 h] | 45,833.17 |  | ZNA | CON |  |
| A87440 |  | Valves & Fittings Installation | 5d | 2027-01-04 | 2027-01-10 | A87430 |  |  |  |  | 16.28d | 106.38d | ICKMO1-cost unite [15277.7 $]; Physical Units [131639 h] | 15,277.72 |  | ZNA | CON |  |

| ID | WBS | Activity | Duration | Start | Finish | Predecessors | Complete | Remaining | Planned start | Planned finish | Total float | Free float | Resources | Cost | Actual cost | ALKHARJ INDUSTERIAL AREA - PROJECT ZONES | ALKHARJ INDUSTERIAL AREA - DECEPLINS | ALKHARJ INDUSTERIAL AREA - Wet networks |
| --- | --- | --- | --- | --- | --- | --- | --- | --- | --- | --- | --- | --- | --- | --- | --- | --- | --- | --- |
|  | R112 | **Road 13** |  | 2026-08-20 | 2027-02-22 |  |  |  |  |  |  |  |  |  |  |  |  |  |
| A87460 |  | Road Crossing Works | 16d | 2026-08-20 A | 2026-09-28 A | A48340, A48500 | 100% |  | 2027-02-11 | 2027-03-02 |  |  | ICKMO1-cost unite [30555.4 $]; labor [800 h]; Physical Units [263278 h] | 30,555.44 | 30,555.44 | ZNA | CON |  |
| A87450 |  | Trenching & Bedding | 14d | 2026-12-09 | 2026-12-26 | A87460 SS, A87460 FF |  |  |  |  | -20.72d | 0d | ICKMO1-cost unite [45833.2 $]; Roller compactor [200 h]; JCB [200 h]; Physical Units [394918 h] | 45,833.17 |  | ZNA | CON |  |
| A87470 |  | Pipe Laying | 18d | 2026-12-19 | 2027-01-09 | A87450 SS+8d, A87460 SS+8d, A87450 FF+8d, A87460 FF+8d |  |  |  |  | -20.72d | 0d | ICKMO1-cost unite [61110.9 $]; labor [800 h]; Physical Units [526557 h] | 61,110.9 |  | ZNA | CON | LAY |
| A87480 |  | Testing | 4d | 2027-01-09 | 2027-01-13 | A87470, A87470 FF |  |  |  |  | -20.72d | 0d | ICKMO1-cost unite [15277.7 $]; Roller compactor [200 h]; JCB [200 h]; Physical Units [131639 h] | 15,277.72 |  | ZNA | CON |  |
| A87490 |  | Backfilling & Compaction | 16d | 2027-01-13 | 2027-02-01 | A87480, A87480 FF |  |  |  |  | -2.72d | 87.38d | ICKMO1-cost unite [91666.3 $]; labor [800 h]; Physical Units [789835 h] | 91,666.34 |  | ZNA | CON |  |
| A87500 |  | Chambers Construction works | 16d | 2027-01-13 | 2027-02-01 | A87480 |  |  |  |  | -20.72d | 0d | ICKMO1-cost unite [45833.2 $]; labor [800 h]; Physical Units [394918 h] | 45,833.17 |  | ZNA | CON |  |
| A87510 |  | Valves & Fittings Installation | 18d | 2027-02-01 | 2027-02-22 | A87500 |  |  |  |  | -20.72d | 69.38d | ICKMO1-cost unite [15277.7 $]; Physical Units [131639 h] | 15,277.72 |  | ZNA | CON |  |
|  | R113 | **Road 14** |  | 2026-08-20 | 2027-02-22 |  |  |  |  |  |  |  |  |  |  |  |  |  |
| A87530 |  | Road Crossing Works | 16d | 2026-08-20 A | 2026-09-28 A | A48490, A48500 | 100% |  | 2027-02-11 | 2027-03-02 |  |  | ICKMO1-cost unite [30555.4 $]; labor [800 h]; Physical Units [263278 h] | 30,555.44 | 30,555.44 | ZNA | CON |  |
| A87520 |  | Trenching & Bedding | 14d | 2026-12-09 | 2026-12-26 | A87530 SS, A87530 FF |  |  |  |  | -20.72d | 0d | ICKMO1-cost unite [45833.2 $]; Roller compactor [200 h]; JCB [200 h]; Physical Units [394918 h] | 45,833.17 |  | ZNA | CON |  |
| A87540 |  | Pipe Laying | 18d | 2026-12-19 | 2027-01-09 | A87520 SS+8d, A87530 SS+8d, A87520 FF+8d, A87530 FF+8d |  |  |  |  | -20.72d | 0d | ICKMO1-cost unite [61110.9 $]; labor [800 h]; Physical Units [526557 h] | 61,110.9 |  | ZNA | CON | LAY |
| A87550 |  | Testing | 4d | 2027-01-09 | 2027-01-13 | A87540, A87540 FF |  |  |  |  | -20.72d | 0d | ICKMO1-cost unite [15277.7 $]; Roller compactor [200 h]; JCB [200 h]; Physical Units [131639 h] | 15,277.72 |  | ZNA | CON |  |
| A87560 |  | Backfilling & Compaction | 16d | 2027-01-13 | 2027-02-01 | A87550, A87550 FF |  |  |  |  | -2.72d | 87.38d | ICKMO1-cost unite [91666.3 $]; labor [800 h]; Physical Units [789835 h] | 91,666.34 |  | ZNA | CON |  |
| A87570 |  | Chambers Construction works | 16d | 2027-01-13 | 2027-02-01 | A87550 |  |  |  |  | -20.72d | 0d | ICKMO1-cost unite [45833.2 $]; labor [800 h]; Physical Units [394918 h] | 45,833.17 |  | ZNA | CON |  |
| A87580 |  | Valves & Fittings Installation | 18d | 2027-02-01 | 2027-02-22 | A87570 |  |  |  |  | -20.72d | 69.38d | ICKMO1-cost unite [15277.7 $]; Physical Units [131639 h] | 15,277.72 |  | ZNA | CON |  |
|  | R114 | **Road 15** |  | 2026-08-20 | 2026-12-29 |  |  |  |  |  |  |  |  |  |  |  |  |  |
| A87600 |  | Road Crossing Works | 4d | 2026-08-20 A | 2026-09-28 A | A48740 | 100% |  | 2027-02-11 | 2027-02-16 |  |  | ICKMO1-cost unite [30555.4 $]; labor [800 h]; Physical Units [263278 h] | 30,555.44 | 30,555.44 | ZNA | CON |  |
| A87590 |  | Trenching & Bedding | 4d | 2026-10-01 A | 2026-12-10 | A87600 SS, A87600 FF | 88% | 0.48d | 2027-01-07 | 2027-01-12 | 26.32d | 0d | ICKMO1-cost unite [45833.2 $]; Roller compactor [200 h]; JCB [200 h]; Physical Units [394918 h] | 45,833.17 | 40,333.19 | ZNA | CON |  |
| A87610 |  | Pipe Laying | 4d | 2026-10-01 A | 2026-12-20 | A87590 SS+8d, A87600 SS+8d, A87590 FF+8d, A87600 FF+8d | 88% | 0.48d | 2027-01-17 | 2027-01-21 | 26.32d | 0d | ICKMO1-cost unite [61110.9 $]; labor [800 h]; Physical Units [526557 h] | 61,110.9 | 53,777.59 | ZNA | CON | LAY |
| A87620 |  | Testing | 4d | 2026-10-01 A | 2026-12-20 | A87610, A87610 FF | 88% | 0.48d | 2027-01-21 | 2027-01-26 | 26.32d | 0d | ICKMO1-cost unite [15277.7 $]; Roller compactor [200 h]; JCB [200 h]; Physical Units [131639 h] | 15,277.72 | 13,444.39 | ZNA | CON |  |
| A87630 |  | Backfilling & Compaction | 4d | 2026-12-20 | 2026-12-24 | A87620, A87620 FF |  |  |  |  | 30.32d | 120.42d | ICKMO1-cost unite [91666.3 $]; labor [800 h]; Physical Units [789835 h] | 91,666.34 |  | ZNA | CON |  |
| A87640 |  | Chambers Construction works | 4d | 2026-12-20 | 2026-12-24 | A87620 |  |  |  |  | 26.32d | 0d | ICKMO1-cost unite [45833.2 $]; labor [800 h]; Physical Units [394918 h] | 45,833.17 |  | ZNA | CON |  |
| A87650 |  | Valves & Fittings Installation | 4d | 2026-12-24 | 2026-12-29 | A87640 |  |  |  |  | 26.32d | 116.42d | ICKMO1-cost unite [15277.7 $]; Physical Units [131639 h] | 15,277.72 |  | ZNA | CON |  |

| ID | WBS | Activity | Duration | Start | Finish | Predecessors | Complete | Planned start | Planned finish | Total float | Free float | Resources | Cost | Actual cost | ALKHARJ INDUSTERIAL AREA - PROJECT ZONES | ALKHARJ INDUSTERIAL AREA - DECEPLINS | ALKHARJ INDUSTERIAL AREA - Wet networks |
| --- | --- | --- | --- | --- | --- | --- | --- | --- | --- | --- | --- | --- | --- | --- | --- | --- | --- |
|  | R115 | **Road 16** |  | 2026-08-20 | 2027-01-06 |  |  |  |  |  |  |  |  |  |  |  |  |
| A87670 |  | Road Crossing Works | 4d | 2026-08-20 A | 2026-09-28 A | A48790 | 100% | 2027-02-21 | 2027-02-25 |  |  | ICKMO1-cost unite [30555.4 $]; labor [800 h]; Physical Units [263278 h] | 30,555.44 | 30,555.44 | ZNA | CON |  |
| A87660 |  | Trenching & Bedding | 4d | 2026-12-09 | 2026-12-14 | A87670 SS, A87670 FF |  |  |  | 19.28d | 0d | ICKMO1-cost unite [45833.2 $]; Roller compactor [200 h]; JCB [200 h]; Physical Units [394918 h] | 45,833.17 |  | ZNA | CON |  |
| A87680 |  | Pipe Laying | 4d | 2026-12-19 | 2026-12-23 | A87660 SS+8d, A87670 SS+8d, A87660 FF+8d, A87670 FF+8d |  |  |  | 19.28d | 0d | ICKMO1-cost unite [61110.9 $]; labor [800 h]; Physical Units [526557 h] | 61,110.9 |  | ZNA | CON | LAY |
| A87690 |  | Testing | 4d | 2026-12-23 | 2026-12-28 | A87680, A87680 FF |  |  |  | 19.28d | 0d | ICKMO1-cost unite [15277.7 $]; Roller compactor [200 h]; JCB [200 h]; Physical Units [131639 h] | 15,277.72 |  | ZNA | CON |  |
| A87700 |  | Backfilling & Compaction | 4d | 2026-12-28 | 2027-01-02 | A87690, A87690 FF |  |  |  | 23.28d | 113.38d | ICKMO1-cost unite [91666.3 $]; labor [800 h]; Physical Units [789835 h] | 91,666.34 |  | ZNA | CON |  |
| A87710 |  | Chambers Construction works | 4d | 2026-12-28 | 2027-01-02 | A87690 |  |  |  | 19.28d | 0d | ICKMO1-cost unite [45833.2 $]; labor [800 h]; Physical Units [394918 h] | 45,833.17 |  | ZNA | CON |  |
| A87720 |  | Valves & Fittings Installation | 4d | 2027-01-02 | 2027-01-06 | A87710 |  |  |  | 19.28d | 109.38d | ICKMO1-cost unite [15277.7 $]; Physical Units [131639 h] | 15,277.72 |  | ZNA | CON |  |
|  | R1171 | **Collector 1** |  | 2026-08-20 | 2027-02-14 |  |  |  |  |  |  |  |  |  |  |  |  |
| A87740 |  | Road Crossing Works | 11d | 2026-08-20 A | 2026-09-28 A | A48990, A47100 | 100% | 2027-02-11 | 2027-02-24 |  |  | ICKMO1-cost unite [30555.4 $]; labor [800 h]; Physical Units [263278 h] | 30,555.44 | 30,555.44 | ZNA | CON |  |
| A87730 |  | Trenching & Bedding | 10d | 2026-12-09 | 2026-12-21 | A87740 SS, A87740 FF |  |  |  | -13.72d | 0d | ICKMO1-cost unite [45833.2 $]; Roller compactor [200 h]; JCB [200 h]; Physical Units [394918 h] | 45,833.17 |  | ZNA | CON |  |
| A87750 |  | Pipe Laying | 11d | 2026-12-19 | 2026-12-31 | A87730 SS+8d, A87740 SS+8d, A87730 FF+8d, A87740 FF+8d |  |  |  | -13.72d | 0d | ICKMO1-cost unite [61110.9 $]; labor [800 h]; Physical Units [526557 h] | 61,110.9 |  | ZNA | CON | LAY |
| A87760 |  | Testing | 4d | 2026-12-31 | 2027-01-05 | A87750, A87750 FF |  |  |  | -13.72d | 0d | ICKMO1-cost unite [15277.7 $]; Roller compactor [200 h]; JCB [200 h]; Physical Units [131639 h] | 15,277.72 |  | ZNA | CON |  |
| A87770 |  | Backfilling & Compaction | 11d | 2027-01-05 | 2027-01-18 | A87760, A87760 FF |  |  |  | 9.28d | 99.38d | ICKMO1-cost unite [91666.3 $]; labor [800 h]; Physical Units [789835 h] | 91,666.34 |  | ZNA | CON |  |
| A87780 |  | Chambers Construction works | 16d | 2027-01-05 | 2027-01-24 | A87760 |  |  |  | -13.72d | 0d | ICKMO1-cost unite [45833.2 $]; labor [800 h]; Physical Units [394918 h] | 45,833.17 |  | ZNA | CON |  |
| A87790 |  | Valves & Fittings Installation | 18d | 2027-01-24 | 2027-02-14 | A87780 |  |  |  | -13.72d | 76.38d | ICKMO1-cost unite [15277.7 $]; Physical Units [131639 h] | 15,277.72 |  | ZNA | CON |  |
|  | IRRN | **IRRIGATION NETWORK** |  | 2026-08-20 | 2027-05-08 |  |  |  |  |  |  |  |  |  |  |  |  |
|  | R1 | **Road 1** |  | 2026-08-20 | 2027-02-09 |  |  |  |  |  |  |  |  |  |  |  |  |
| A88640 |  | Road Crossing Works | 4d | 2026-08-20 A | 2026-09-28 A | A72005 | 100% | 2027-08-07 | 2027-08-10 |  |  | ICKMO1-cost unite [4997.9 $]; labor [800 h]; Physical Units [43064 h] | 4,997.9 | 4,997.9 | ZNA | CON |  |
| A88690 |  | Trench Excavation | 4d | 2027-01-11 | 2027-01-14 | A86610 SS, A1440, A1450, A1460, A1470, A1480, A10930, A11090, A86610 FF |  |  |  | -5d | 0d | ICKMO1-cost unite [19991.6 $]; Physical Units [172256 h] | 19,991.61 |  | ZNA | CON |  |
| A72005 |  | Pipe Laying | 6d | 2027-01-16 | 2027-01-21 | A88690 |  |  |  | -5d | 0d | ICKMO1-cost unite [9995.81 $]; Roller compactor [200 h]; JCB [200 h]; Physical Units [86128 h] | 9,995.81 |  | ZNA | CON | LAY |
| A88650 |  | Valve Chambers Civil Works | 6d | 2027-01-23 | 2027-01-28 | A72005 |  |  |  | -5d | 0d | ICKMO1-cost unite [24989.5 $]; labor [800 h]; Physical Units [215320 h] | 24,989.52 |  | ZNA | CON |  |
| A88660 |  | Valve Installation | 4d | 2027-01-30 | 2027-02-02 | A88650 |  |  |  | -5d | 0d | ICKMO1-cost unite [19991.6 $]; Roller compactor [200 h]; JCB [200 h]; Physical Units [172256 h] | 19,991.61 |  | ZNA | CON |  |
| A88670 |  | Testing | 2d | 2027-02-03 | 2027-02-04 | A88660 |  |  |  | -5d | 0d | ICKMO1-cost unite [4997.9 $]; labor [800 h]; Physical Units [43064 h] | 4,997.9 |  | ZNA | CON |  |
| A88680 |  | Backfilling | 4d | 2027-02-06 | 2027-02-09 | A88670, A88640 |  |  |  | -5d | 74.3d | ICKMO1-cost unite [14993.7 $]; labor [800 h]; Physical Units [129192 h] | 14,993.71 |  | ZNA | CON |  |

| ID | WBS | Activity | Duration | Start | Finish | Predecessors | Complete | Planned start | Planned finish | Total float | Free float | Resources | Cost | Actual cost | ALKHARJ INDUSTERIAL AREA - PROJECT ZONES | ALKHARJ INDUSTERIAL AREA - DECEPLINS | ALKHARJ INDUSTERIAL AREA - Wet networks |
| --- | --- | --- | --- | --- | --- | --- | --- | --- | --- | --- | --- | --- | --- | --- | --- | --- | --- |
|  | R11 | **Road 2** |  | 2026-08-20 | 2027-01-09 |  |  |  |  |  |  |  |  |  |  |  |  |
| A88710 |  | Road Crossing Works | 4d | 2026-08-20 A | 2026-09-28 A | A88700 | 100% | 2027-02-23 | 2027-02-28 |  |  | ICKMO1-cost unite [4997.9 $]; labor [800 h]; Physical Units [43064 h] | 4,997.9 | 4,997.9 | ZNA | CON |  |
| A88760 |  | Trench Excavation | 4d | 2026-12-09 | 2026-12-14 | A86680 SS, A86680 FF |  |  |  | 22.28d | 0d | ICKMO1-cost unite [19991.6 $]; Physical Units [172256 h] | 19,991.61 |  | ZNA | CON |  |
| A88700 |  | Pipe Laying | 6d | 2026-12-14 | 2026-12-21 | A88760 |  |  |  | 22.28d | 0d | ICKMO1-cost unite [9995.81 $]; Roller compactor [200 h]; JCB [200 h]; Physical Units [86128 h] | 9,995.81 |  | ZNA | CON | LAY |
| A88720 |  | Valve Chambers Civil Works | 6d | 2026-12-21 | 2026-12-28 | A88700 |  |  |  | 22.28d | 0d | ICKMO1-cost unite [24989.5 $]; labor [800 h]; Physical Units [215320 h] | 24,989.52 |  | ZNA | CON |  |
| A88730 |  | Valve Installation | 4d | 2026-12-28 | 2027-01-02 | A88720 |  |  |  | 22.28d | 0d | ICKMO1-cost unite [19991.6 $]; Roller compactor [200 h]; JCB [200 h]; Physical Units [172256 h] | 19,991.61 |  | ZNA | CON |  |
| A88740 |  | Testing | 2d | 2027-01-02 | 2027-01-04 | A88730 |  |  |  | 22.28d | 0d | ICKMO1-cost unite [4997.9 $]; labor [800 h]; Physical Units [43064 h] | 4,997.9 |  | ZNA | CON |  |
| A88750 |  | Backfilling | 4d | 2027-01-04 | 2027-01-09 | A88740, A88710 |  |  |  | 22.28d | 101.58d | ICKMO1-cost unite [14993.7 $]; labor [800 h]; Physical Units [129192 h] | 14,993.71 |  | ZNA | CON |  |
|  | R1111 | **Road 5** |  | 2026-08-20 | 2027-03-25 |  |  |  |  |  |  |  |  |  |  |  |  |
| A88850 |  | Road Crossing Works | 1d | 2026-08-20 A | 2026-09-28 A | A88840 | 100% | 2027-03-04 | 2027-03-06 |  |  | ICKMO1-cost unite [4997.9 $]; labor [800 h]; Physical Units [43064 h] | 4,997.9 | 4,997.9 | ZNA | CON |  |
| A88900 |  | Trench Excavation | 1d | 2027-03-16 | 2027-03-17 | A86890 SS, A86890 FF |  |  |  | -42.1d | 0d | ICKMO1-cost unite [19991.6 $]; Physical Units [172256 h] | 19,991.61 |  | ZNA | CON |  |
| A88840 |  | Pipe Laying | 2d | 2027-03-17 | 2027-03-20 | A88900 |  |  |  | -42.1d | 0d | ICKMO1-cost unite [9995.81 $]; Roller compactor [200 h]; JCB [200 h]; Physical Units [86128 h] | 9,995.81 |  | ZNA | CON | LAY |
| A88860 |  | Valve Chambers Civil Works | 2d | 2027-03-20 | 2027-03-22 | A88840 |  |  |  | -42.1d | 0d | ICKMO1-cost unite [24989.5 $]; labor [800 h]; Physical Units [215320 h] | 24,989.52 |  | ZNA | CON |  |
| A88870 |  | Valve Installation | 1d | 2027-03-22 | 2027-03-23 | A88860 |  |  |  | -42.1d | 0d | ICKMO1-cost unite [19991.6 $]; Roller compactor [200 h]; JCB [200 h]; Physical Units [172256 h] | 19,991.61 |  | ZNA | CON |  |
| A88880 |  | Testing | 1d | 2027-03-23 | 2027-03-24 | A88870 |  |  |  | -42.1d | 0d | ICKMO1-cost unite [4997.9 $]; labor [800 h]; Physical Units [43064 h] | 4,997.9 |  | ZNA | CON |  |
| A88890 |  | Backfilling | 1d | 2027-03-24 | 2027-03-25 | A88880, A88850 |  |  |  | -42.1d | 37.2d | ICKMO1-cost unite [14993.7 $]; labor [800 h]; Physical Units [129192 h] | 14,993.71 |  | ZNA | CON |  |
|  | R112 | **Road 3** |  | 2026-08-20 | 2027-02-02 |  |  |  |  |  |  |  |  |  |  |  |  |
| A88780 |  | Road Crossing Works | 6d | 2026-08-20 A | 2026-09-28 A | A88770 | 100% | 2027-04-22 | 2027-04-29 |  |  | ICKMO1-cost unite [4997.9 $]; labor [800 h]; Physical Units [43064 h] | 4,997.9 | 4,997.9 | ZNA | CON |  |
| A88830 |  | Trench Excavation | 6d | 2026-12-19 | 2026-12-26 | A86750 SS, A86750 FF |  |  |  | 1.28d | 0d | ICKMO1-cost unite [19991.6 $]; Physical Units [172256 h] | 19,991.61 |  | ZNA | CON |  |
| A88770 |  | Pipe Laying | 9d | 2026-12-26 | 2027-01-05 | A88830 |  |  |  | 1.28d | 0d | ICKMO1-cost unite [9995.81 $]; Roller compactor [200 h]; JCB [200 h]; Physical Units [86128 h] | 9,995.81 |  | ZNA | CON | LAY |
| A88790 |  | Valve Chambers Civil Works | 9d | 2027-01-05 | 2027-01-16 | A88770 |  |  |  | 1.28d | 0d | ICKMO1-cost unite [24989.5 $]; labor [800 h]; Physical Units [215320 h] | 24,989.52 |  | ZNA | CON |  |
| A88800 |  | Valve Installation | 6d | 2027-01-16 | 2027-01-23 | A88790 |  |  |  | 1.28d | 0d | ICKMO1-cost unite [19991.6 $]; Roller compactor [200 h]; JCB [200 h]; Physical Units [172256 h] | 19,991.61 |  | ZNA | CON |  |
| A88810 |  | Testing | 3d | 2027-01-23 | 2027-01-26 | A88800 |  |  |  | 1.28d | 0d | ICKMO1-cost unite [4997.9 $]; labor [800 h]; Physical Units [43064 h] | 4,997.9 |  | ZNA | CON |  |
| A88820 |  | Backfilling | 6d | 2027-01-26 | 2027-02-02 | A88810, A88780 |  |  |  | 1.28d | 80.58d | ICKMO1-cost unite [14993.7 $]; labor [800 h]; Physical Units [129192 h] | 14,993.71 |  | ZNA | CON |  |

| ID | WBS | Activity | Duration | Start | Finish | Predecessors | Complete | Planned start | Planned finish | Total float | Free float | Resources | Cost | Actual cost | ALKHARJ INDUSTERIAL AREA - PROJECT ZONES | ALKHARJ INDUSTERIAL AREA - DECEPLINS | ALKHARJ INDUSTERIAL AREA - Wet networks |
| --- | --- | --- | --- | --- | --- | --- | --- | --- | --- | --- | --- | --- | --- | --- | --- | --- | --- |
|  | R121 | **Road 4** |  | 2026-08-20 | 2026-12-22 |  |  |  |  |  |  |  |  |  |  |  |  |
| A88990 |  | Road Crossing Works | 1d | 2026-08-20 A | 2026-09-28 A | A88980 | 100% | 2027-02-21 | 2027-02-22 |  |  | ICKMO1-cost unite [4997.9 $]; labor [800 h]; Physical Units [43064 h] | 4,997.9 | 4,997.9 | ZNA | CON |  |
| A89040 |  | Trench Excavation | 1d | 2026-12-13 | 2026-12-14 | A86820 SS, A86820 FF |  |  |  | 37.28d | 0d | ICKMO1-cost unite [19991.6 $]; Physical Units [172256 h] | 19,991.61 |  | ZNA | CON |  |
| A88980 |  | Pipe Laying | 2d | 2026-12-14 | 2026-12-16 | A89040 |  |  |  | 37.28d | 0d | ICKMO1-cost unite [9995.81 $]; Roller compactor [200 h]; JCB [200 h]; Physical Units [86128 h] | 9,995.81 |  | ZNA | CON | LAY |
| A89000 |  | Valve Chambers Civil Works | 2d | 2026-12-16 | 2026-12-19 | A88980 |  |  |  | 37.28d | 0d | ICKMO1-cost unite [24989.5 $]; labor [800 h]; Physical Units [215320 h] | 24,989.52 |  | ZNA | CON |  |
| A89010 |  | Valve Installation | 1d | 2026-12-19 | 2026-12-20 | A89000 |  |  |  | 37.28d | 0d | ICKMO1-cost unite [19991.6 $]; Roller compactor [200 h]; JCB [200 h]; Physical Units [172256 h] | 19,991.61 |  | ZNA | CON |  |
| A89020 |  | Testing | 1d | 2026-12-20 | 2026-12-21 | A89010 |  |  |  | 37.28d | 0d | ICKMO1-cost unite [4997.9 $]; labor [800 h]; Physical Units [43064 h] | 4,997.9 |  | ZNA | CON |  |
| A89030 |  | Backfilling | 1d | 2026-12-21 | 2026-12-22 | A89020, A88990 |  |  |  | 37.28d | 116.58d | ICKMO1-cost unite [14993.7 $]; labor [800 h]; Physical Units [129192 h] | 14,993.71 |  | ZNA | CON |  |
|  | R1121 | **Road 7** |  | 2026-08-20 | 2027-03-31 |  |  |  |  |  |  |  |  |  |  |  |  |
| A89130 |  | Road Crossing Works | 4d | 2026-08-20 A | 2026-09-28 A | A89120 | 100% | 2027-04-17 | 2027-04-21 |  |  | ICKMO1-cost unite [4997.9 $]; labor [800 h]; Physical Units [43064 h] | 4,997.9 | 4,997.9 | ZNA | CON |  |
| A89180 |  | Trench Excavation | 4d | 2027-02-22 | 2027-02-27 | A87030 SS, A87030 FF, A89100 |  |  |  | -79.3d | 0d | ICKMO1-cost unite [19991.6 $]; Physical Units [172256 h] | 19,991.61 |  | ZNA | CON |  |
| A89120 |  | Pipe Laying | 8d | 2027-02-27 | 2027-03-08 | A89180 |  |  |  | -79.3d | 0d | ICKMO1-cost unite [9995.81 $]; Roller compactor [200 h]; JCB [200 h]; Physical Units [86128 h] | 9,995.81 |  | ZNA | CON | LAY |
| A89140 |  | Valve Chambers Civil Works | 8d | 2027-03-08 | 2027-03-17 | A89120 |  |  |  | -79.3d | 0d | ICKMO1-cost unite [24989.5 $]; labor [800 h]; Physical Units [215320 h] | 24,989.52 |  | ZNA | CON |  |
| A89150 |  | Valve Installation | 4d | 2027-03-17 | 2027-03-22 | A89140 |  |  |  | -79.3d | 0d | ICKMO1-cost unite [19991.6 $]; Roller compactor [200 h]; JCB [200 h]; Physical Units [172256 h] | 19,991.61 |  | ZNA | CON |  |
| A89160 |  | Testing | 4d | 2027-03-22 | 2027-03-27 | A89150 |  |  |  | -79.3d | 0d | ICKMO1-cost unite [4997.9 $]; labor [800 h]; Physical Units [43064 h] | 4,997.9 |  | ZNA | CON |  |
| A89170 |  | Backfilling | 4d | 2027-03-27 | 2027-03-31 | A89160, A89130 |  |  |  | -79.3d | 0d | ICKMO1-cost unite [14993.7 $]; labor [800 h]; Physical Units [129192 h] | 14,993.71 |  | ZNA | CON |  |
|  | R113 | **Road 6** |  | 2026-08-20 | 2027-02-22 |  |  |  |  |  |  |  |  |  |  |  |  |
| A89060 |  | Road Crossing Works | 4d | 2026-08-20 A | 2026-09-28 A | A89050 | 100% | 2027-03-10 | 2027-03-15 |  |  | ICKMO1-cost unite [4997.9 $]; labor [800 h]; Physical Units [43064 h] | 4,997.9 | 4,997.9 | ZNA | CON |  |
| A89110 |  | Trench Excavation | 4d | 2027-01-16 | 2027-01-20 | A86960 SS, A86960 FF, A87010 |  |  |  | -79.3d | 0d | ICKMO1-cost unite [19991.6 $]; Physical Units [172256 h] | 19,991.61 |  | ZNA | CON |  |
| A89050 |  | Pipe Laying | 8d | 2027-01-20 | 2027-01-30 | A89110 |  |  |  | -79.3d | 0d | ICKMO1-cost unite [9995.81 $]; Roller compactor [200 h]; JCB [200 h]; Physical Units [86128 h] | 9,995.81 |  | ZNA | CON | LAY |
| A89070 |  | Valve Chambers Civil Works | 8d | 2027-01-30 | 2027-02-08 | A89050 |  |  |  | -79.3d | 0d | ICKMO1-cost unite [24989.5 $]; labor [800 h]; Physical Units [215320 h] | 24,989.52 |  | ZNA | CON |  |
| A89080 |  | Valve Installation | 4d | 2027-02-08 | 2027-02-13 | A89070 |  |  |  | -79.3d | 0d | ICKMO1-cost unite [19991.6 $]; Roller compactor [200 h]; JCB [200 h]; Physical Units [172256 h] | 19,991.61 |  | ZNA | CON |  |
| A89090 |  | Testing | 4d | 2027-02-13 | 2027-02-17 | A89080 |  |  |  | -79.3d | 0d | ICKMO1-cost unite [4997.9 $]; labor [800 h]; Physical Units [43064 h] | 4,997.9 |  | ZNA | CON |  |
| A89100 |  | Backfilling | 4d | 2027-02-17 | 2027-02-22 | A89090, A89060 |  |  |  | -79.3d | 0d | ICKMO1-cost unite [14993.7 $]; labor [800 h]; Physical Units [129192 h] | 14,993.71 |  | ZNA | CON |  |

| ID | WBS | Activity | Duration | Start | Finish | Predecessors | Complete | Planned start | Planned finish | Total float | Free float | Resources | Cost | Actual cost | ALKHARJ INDUSTERIAL AREA - PROJECT ZONES | ALKHARJ INDUSTERIAL AREA - DECEPLINS | ALKHARJ INDUSTERIAL AREA - Wet networks |
| --- | --- | --- | --- | --- | --- | --- | --- | --- | --- | --- | --- | --- | --- | --- | --- | --- | --- |
|  | R11111 | **Road 8** |  | 2026-08-20 | 2027-05-08 |  |  |  |  |  |  |  |  |  |  |  |  |
| A89200 |  | Road Crossing Works | 4d | 2026-08-20 A | 2026-09-28 A | A89190 | 100% | 2027-05-24 | 2027-05-29 |  |  | ICKMO1-cost unite [4997.9 $]; labor [800 h]; Physical Units [43064 h] | 4,997.9 | 4,997.9 | ZNA | CON |  |
| A89250 |  | Trench Excavation | 4d | 2027-03-31 | 2027-04-05 | A87100 SS, A87100 FF, A89170 |  |  |  | -79.3d | 0d | ICKMO1-cost unite [19991.6 $]; Physical Units [172256 h] | 19,991.61 |  | ZNA | CON |  |
| A89190 |  | Pipe Laying | 8d | 2027-04-05 | 2027-04-14 | A89250 |  |  |  | -79.3d | 0d | ICKMO1-cost unite [9995.81 $]; Roller compactor [200 h]; JCB [200 h]; Physical Units [86128 h] | 9,995.81 |  | ZNA | CON | LAY |
| A89210 |  | Valve Chambers Civil Works | 8d | 2027-04-14 | 2027-04-24 | A89190 |  |  |  | -79.3d | 0d | ICKMO1-cost unite [24989.5 $]; labor [800 h]; Physical Units [215320 h] | 24,989.52 |  | ZNA | CON |  |
| A89220 |  | Valve Installation | 4d | 2027-04-24 | 2027-04-28 | A89210 |  |  |  | -79.3d | 0d | ICKMO1-cost unite [19991.6 $]; Roller compactor [200 h]; JCB [200 h]; Physical Units [172256 h] | 19,991.61 |  | ZNA | CON |  |
| A89230 |  | Testing | 4d | 2027-04-28 | 2027-05-03 | A89220 |  |  |  | -79.3d | 0d | ICKMO1-cost unite [4997.9 $]; labor [800 h]; Physical Units [43064 h] | 4,997.9 |  | ZNA | CON |  |
| A89240 |  | Backfilling | 4d | 2027-05-03 | 2027-05-08 | A89230, A89200 |  |  |  | -79.3d | 0d | ICKMO1-cost unite [14993.7 $]; labor [800 h]; Physical Units [129192 h] | 14,993.71 |  | ZNA | CON |  |
|  | R13 | **Road 9** |  | 2026-08-20 | 2027-01-03 |  |  |  |  |  |  |  |  |  |  |  |  |
| A89270 |  | Road Crossing Works | 1d | 2026-08-20 A | 2026-09-28 A | A89260 | 100% | 2027-03-23 | 2027-03-24 |  |  | ICKMO1-cost unite [4997.9 $]; labor [800 h]; Physical Units [43064 h] | 4,997.9 | 4,997.9 | ZNA | CON |  |
| A89320 |  | Trench Excavation | 1d | 2026-12-24 | 2026-12-26 | A87170 SS, A87170 FF |  |  |  | 27.28d | 0d | ICKMO1-cost unite [19991.6 $]; Physical Units [172256 h] | 19,991.61 |  | ZNA | CON |  |
| A89260 |  | Pipe Laying | 2d | 2026-12-26 | 2026-12-28 | A89320 |  |  |  | 27.28d | 0d | ICKMO1-cost unite [9995.81 $]; Roller compactor [200 h]; JCB [200 h]; Physical Units [86128 h] | 9,995.81 |  | ZNA | CON | LAY |
| A89280 |  | Valve Chambers Civil Works | 2d | 2026-12-28 | 2026-12-30 | A89260 |  |  |  | 27.28d | 0d | ICKMO1-cost unite [24989.5 $]; labor [800 h]; Physical Units [215320 h] | 24,989.52 |  | ZNA | CON |  |
| A89290 |  | Valve Installation | 1d | 2026-12-30 | 2026-12-31 | A89280 |  |  |  | 27.28d | 0d | ICKMO1-cost unite [19991.6 $]; Roller compactor [200 h]; JCB [200 h]; Physical Units [172256 h] | 19,991.61 |  | ZNA | CON |  |
| A89300 |  | Testing | 1d | 2026-12-31 | 2027-01-02 | A89290 |  |  |  | 27.28d | 0d | ICKMO1-cost unite [4997.9 $]; labor [800 h]; Physical Units [43064 h] | 4,997.9 |  | ZNA | CON |  |
| A89310 |  | Backfilling | 1d | 2027-01-02 | 2027-01-03 | A89300, A89270 |  |  |  | 27.28d | 106.58d | ICKMO1-cost unite [14993.7 $]; labor [800 h]; Physical Units [129192 h] | 14,993.71 |  | ZNA | CON |  |
|  | R12 | **Road 10** |  | 2026-08-20 | 2026-12-29 |  |  |  |  |  |  |  |  |  |  |  |  |
| A89340 |  | Road Crossing Works | 1d | 2026-08-20 A | 2026-09-28 A | A89330 | 100% | 2027-02-25 | 2027-02-27 |  |  | ICKMO1-cost unite [4997.9 $]; labor [800 h]; Physical Units [43064 h] | 4,997.9 | 4,997.9 | ZNA | CON |  |
| A89390 |  | Trench Excavation | 1d | 2026-12-20 | 2026-12-21 | A87240 SS, A87240 FF |  |  |  | 31.28d | 0d | ICKMO1-cost unite [19991.6 $]; Physical Units [172256 h] | 19,991.61 |  | ZNA | CON |  |
| A89330 |  | Pipe Laying | 2d | 2026-12-21 | 2026-12-23 | A89390 |  |  |  | 31.28d | 0d | ICKMO1-cost unite [9995.81 $]; Roller compactor [200 h]; JCB [200 h]; Physical Units [86128 h] | 9,995.81 |  | ZNA | CON | LAY |
| A89350 |  | Valve Chambers Civil Works | 2d | 2026-12-23 | 2026-12-26 | A89330 |  |  |  | 31.28d | 0d | ICKMO1-cost unite [24989.5 $]; labor [800 h]; Physical Units [215320 h] | 24,989.52 |  | ZNA | CON |  |
| A89360 |  | Valve Installation | 1d | 2026-12-26 | 2026-12-27 | A89350 |  |  |  | 31.28d | 0d | ICKMO1-cost unite [19991.6 $]; Roller compactor [200 h]; JCB [200 h]; Physical Units [172256 h] | 19,991.61 |  | ZNA | CON |  |
| A89370 |  | Testing | 1d | 2026-12-27 | 2026-12-28 | A89360 |  |  |  | 31.28d | 0d | ICKMO1-cost unite [4997.9 $]; labor [800 h]; Physical Units [43064 h] | 4,997.9 |  | ZNA | CON |  |
| A89380 |  | Backfilling | 1d | 2026-12-28 | 2026-12-29 | A89370, A89340 |  |  |  | 31.28d | 110.58d | ICKMO1-cost unite [14993.7 $]; labor [800 h]; Physical Units [129192 h] | 14,993.71 |  | ZNA | CON |  |

| ID | WBS | Activity | Duration | Start | Finish | Predecessors | Complete | Planned start | Planned finish | Total float | Free float | Resources | Cost | Actual cost | ALKHARJ INDUSTERIAL AREA - PROJECT ZONES | ALKHARJ INDUSTERIAL AREA - DECEPLINS | ALKHARJ INDUSTERIAL AREA - Wet networks |
| --- | --- | --- | --- | --- | --- | --- | --- | --- | --- | --- | --- | --- | --- | --- | --- | --- | --- |
|  | R111 | **Road 11** |  | 2026-08-20 | 2026-12-19 |  |  |  |  |  |  |  |  |  |  |  |  |
| A89410 |  | Road Crossing Works | 1d | 2026-08-20 A | 2026-09-28 A | A89400 | 100% | 2027-02-16 | 2027-02-17 |  |  | ICKMO1-cost unite [4997.9 $]; labor [800 h]; Physical Units [43064 h] | 4,997.9 | 4,997.9 | ZNA | CON |  |
| A89460 |  | Trench Excavation | 1d | 2026-12-09 | 2026-12-10 | A87310 SS, A87310 FF |  |  |  | 40.28d | 0d | ICKMO1-cost unite [19991.6 $]; Physical Units [172256 h] | 19,991.61 |  | ZNA | CON |  |
| A89400 |  | Pipe Laying | 2d | 2026-12-10 | 2026-12-13 | A89460 |  |  |  | 40.28d | 0d | ICKMO1-cost unite [9995.81 $]; Roller compactor [200 h]; JCB [200 h]; Physical Units [86128 h] | 9,995.81 |  | ZNA | CON | LAY |
| A89420 |  | Valve Chambers Civil Works | 2d | 2026-12-13 | 2026-12-15 | A89400 |  |  |  | 40.28d | 0d | ICKMO1-cost unite [24989.5 $]; labor [800 h]; Physical Units [215320 h] | 24,989.52 |  | ZNA | CON |  |
| A89430 |  | Valve Installation | 1d | 2026-12-15 | 2026-12-16 | A89420 |  |  |  | 40.28d | 0d | ICKMO1-cost unite [19991.6 $]; Roller compactor [200 h]; JCB [200 h]; Physical Units [172256 h] | 19,991.61 |  | ZNA | CON |  |
| A89440 |  | Testing | 1d | 2026-12-16 | 2026-12-17 | A89430 |  |  |  | 40.28d | 0d | ICKMO1-cost unite [4997.9 $]; labor [800 h]; Physical Units [43064 h] | 4,997.9 |  | ZNA | CON |  |
| A89450 |  | Backfilling | 1d | 2026-12-17 | 2026-12-19 | A89440, A89410 |  |  |  | 40.28d | 119.58d | ICKMO1-cost unite [14993.7 $]; labor [800 h]; Physical Units [129192 h] | 14,993.71 |  | ZNA | CON |  |
|  | R1112 | **Road 12** |  | 2026-08-20 | 2026-12-21 |  |  |  |  |  |  |  |  |  |  |  |  |
| A89480 |  | Road Crossing Works | 1d | 2026-08-20 A | 2026-09-28 A | A89470 | 100% | 2027-02-17 | 2027-02-18 |  |  | ICKMO1-cost unite [4997.9 $]; labor [800 h]; Physical Units [43064 h] | 4,997.9 | 4,997.9 | ZNA | CON |  |
| A89530 |  | Trench Excavation | 1d | 2026-12-12 | 2026-12-13 | A87380 SS, A87380 FF |  |  |  | 38.28d | 0d | ICKMO1-cost unite [19991.6 $]; Physical Units [172256 h] | 19,991.61 |  | ZNA | CON |  |
| A89470 |  | Pipe Laying | 2d | 2026-12-13 | 2026-12-15 | A89530 |  |  |  | 38.28d | 0d | ICKMO1-cost unite [9995.81 $]; Roller compactor [200 h]; JCB [200 h]; Physical Units [86128 h] | 9,995.81 |  | ZNA | CON | LAY |
| A89490 |  | Valve Chambers Civil Works | 2d | 2026-12-15 | 2026-12-17 | A89470 |  |  |  | 38.28d | 0d | ICKMO1-cost unite [24989.5 $]; labor [800 h]; Physical Units [215320 h] | 24,989.52 |  | ZNA | CON |  |
| A89500 |  | Valve Installation | 1d | 2026-12-17 | 2026-12-19 | A89490 |  |  |  | 38.28d | 0d | ICKMO1-cost unite [19991.6 $]; Roller compactor [200 h]; JCB [200 h]; Physical Units [172256 h] | 19,991.61 |  | ZNA | CON |  |
| A89510 |  | Testing | 1d | 2026-12-19 | 2026-12-20 | A89500 |  |  |  | 38.28d | 0d | ICKMO1-cost unite [4997.9 $]; labor [800 h]; Physical Units [43064 h] | 4,997.9 |  | ZNA | CON |  |
| A89520 |  | Backfilling | 1d | 2026-12-20 | 2026-12-21 | A89510, A89480 |  |  |  | 38.28d | 117.58d | ICKMO1-cost unite [14993.7 $]; labor [800 h]; Physical Units [129192 h] | 14,993.71 |  | ZNA | CON |  |
|  | R122 | **Road 13** |  | 2026-08-20 | 2027-01-03 |  |  |  |  |  |  |  |  |  |  |  |  |
| A89550 |  | Road Crossing Works | 1d | 2026-08-20 A | 2026-09-28 A | A89540 | 100% | 2027-03-04 | 2027-03-06 |  |  | ICKMO1-cost unite [4997.9 $]; labor [800 h]; Physical Units [43064 h] | 4,997.9 | 4,997.9 | ZNA | CON |  |
| A89600 |  | Trench Excavation | 1d | 2026-12-24 | 2026-12-26 | A87450 SS, A87450 FF |  |  |  | 27.28d | 0d | ICKMO1-cost unite [19991.6 $]; Physical Units [172256 h] | 19,991.61 |  | ZNA | CON |  |
| A89540 |  | Pipe Laying | 2d | 2026-12-26 | 2026-12-28 | A89600 |  |  |  | 27.28d | 0d | ICKMO1-cost unite [9995.81 $]; Roller compactor [200 h]; JCB [200 h]; Physical Units [86128 h] | 9,995.81 |  | ZNA | CON | LAY |
| A89560 |  | Valve Chambers Civil Works | 2d | 2026-12-28 | 2026-12-30 | A89540 |  |  |  | 27.28d | 0d | ICKMO1-cost unite [24989.5 $]; labor [800 h]; Physical Units [215320 h] | 24,989.52 |  | ZNA | CON |  |
| A89570 |  | Valve Installation | 1d | 2026-12-30 | 2026-12-31 | A89560 |  |  |  | 27.28d | 0d | ICKMO1-cost unite [19991.6 $]; Roller compactor [200 h]; JCB [200 h]; Physical Units [172256 h] | 19,991.61 |  | ZNA | CON |  |
| A89580 |  | Testing | 1d | 2026-12-31 | 2027-01-02 | A89570 |  |  |  | 27.28d | 0d | ICKMO1-cost unite [4997.9 $]; labor [800 h]; Physical Units [43064 h] | 4,997.9 |  | ZNA | CON |  |
| A89590 |  | Backfilling | 1d | 2027-01-02 | 2027-01-03 | A89580, A89550 |  |  |  | 27.28d | 106.58d | ICKMO1-cost unite [14993.7 $]; labor [800 h]; Physical Units [129192 h] | 14,993.71 |  | ZNA | CON |  |

| ID | WBS | Activity | Duration | Start | Finish | Predecessors | Complete | Planned start | Planned finish | Total float | Free float | Resources | Cost | Actual cost | ALKHARJ INDUSTERIAL AREA - PROJECT ZONES | ALKHARJ INDUSTERIAL AREA - DECEPLINS | ALKHARJ INDUSTERIAL AREA - Wet networks |
| --- | --- | --- | --- | --- | --- | --- | --- | --- | --- | --- | --- | --- | --- | --- | --- | --- | --- |
|  | R111111 | **Road 14** |  | 2026-08-20 | 2027-01-03 |  |  |  |  |  |  |  |  |  |  |  |  |
| A89620 |  | Road Crossing Works | 1d | 2026-08-20 A | 2026-09-28 A | A89610 | 100% | 2027-03-04 | 2027-03-06 |  |  | ICKMO1-cost unite [4997.9 $]; labor [800 h]; Physical Units [43064 h] | 4,997.9 | 4,997.9 | ZNA | CON |  |
| A89670 |  | Trench Excavation | 1d | 2026-12-24 | 2026-12-26 | A87520 SS, A87520 FF |  |  |  | 27.28d | 0d | ICKMO1-cost unite [19991.6 $]; Physical Units [172256 h] | 19,991.61 |  | ZNA | CON |  |
| A89610 |  | Pipe Laying | 2d | 2026-12-26 | 2026-12-28 | A89670 |  |  |  | 27.28d | 0d | ICKMO1-cost unite [9995.81 $]; Roller compactor [200 h]; JCB [200 h]; Physical Units [86128 h] | 9,995.81 |  | ZNA | CON | LAY |
| A89630 |  | Valve Chambers Civil Works | 2d | 2026-12-28 | 2026-12-30 | A89610 |  |  |  | 27.28d | 0d | ICKMO1-cost unite [24989.5 $]; labor [800 h]; Physical Units [215320 h] | 24,989.52 |  | ZNA | CON |  |
| A89640 |  | Valve Installation | 1d | 2026-12-30 | 2026-12-31 | A89630 |  |  |  | 27.28d | 0d | ICKMO1-cost unite [19991.6 $]; Roller compactor [200 h]; JCB [200 h]; Physical Units [172256 h] | 19,991.61 |  | ZNA | CON |  |
| A89650 |  | Testing | 1d | 2026-12-31 | 2027-01-02 | A89640 |  |  |  | 27.28d | 0d | ICKMO1-cost unite [4997.9 $]; labor [800 h]; Physical Units [43064 h] | 4,997.9 |  | ZNA | CON |  |
| A89660 |  | Backfilling | 1d | 2027-01-02 | 2027-01-03 | A89650, A89620 |  |  |  | 27.28d | 106.58d | ICKMO1-cost unite [14993.7 $]; labor [800 h]; Physical Units [129192 h] | 14,993.71 |  | ZNA | CON |  |
|  | R131 | **Road 15** |  | 2026-08-20 | 2026-12-19 |  |  |  |  |  |  |  |  |  |  |  |  |
| A89690 |  | Road Crossing Works | 1d | 2026-08-20 A | 2026-09-28 A | A89680 | 100% | 2027-02-18 | 2027-02-20 |  |  | ICKMO1-cost unite [4997.9 $]; labor [800 h]; Physical Units [43064 h] | 4,997.9 | 4,997.9 | ZNA | CON |  |
| A89740 |  | Trench Excavation | 1d | 2026-12-09 | 2026-12-10 | A87590 SS, A87590 FF |  |  |  | 40.28d | 0d | ICKMO1-cost unite [19991.6 $]; Physical Units [172256 h] | 19,991.61 |  | ZNA | CON |  |
| A89680 |  | Pipe Laying | 2d | 2026-12-10 | 2026-12-13 | A89740 |  |  |  | 40.28d | 0d | ICKMO1-cost unite [9995.81 $]; Roller compactor [200 h]; JCB [200 h]; Physical Units [86128 h] | 9,995.81 |  | ZNA | CON | LAY |
| A89700 |  | Valve Chambers Civil Works | 2d | 2026-12-13 | 2026-12-15 | A89680 |  |  |  | 40.28d | 0d | ICKMO1-cost unite [24989.5 $]; labor [800 h]; Physical Units [215320 h] | 24,989.52 |  | ZNA | CON |  |
| A89710 |  | Valve Installation | 1d | 2026-12-15 | 2026-12-16 | A89700 |  |  |  | 40.28d | 0d | ICKMO1-cost unite [19991.6 $]; Roller compactor [200 h]; JCB [200 h]; Physical Units [172256 h] | 19,991.61 |  | ZNA | CON |  |
| A89720 |  | Testing | 1d | 2026-12-16 | 2026-12-17 | A89710 |  |  |  | 40.28d | 0d | ICKMO1-cost unite [4997.9 $]; labor [800 h]; Physical Units [43064 h] | 4,997.9 |  | ZNA | CON |  |
| A89730 |  | Backfilling | 1d | 2026-12-17 | 2026-12-19 | A89720, A89690 |  |  |  | 40.28d | 119.58d | ICKMO1-cost unite [14993.7 $]; labor [800 h]; Physical Units [129192 h] | 14,993.71 |  | ZNA | CON |  |
|  | R11211 | **Road 16** |  | 2026-08-20 | 2026-12-22 |  |  |  |  |  |  |  |  |  |  |  |  |
| A89760 |  | Road Crossing Works | 1d | 2026-08-20 A | 2026-09-28 A | A89750 | 100% | 2027-02-28 | 2027-03-01 |  |  | ICKMO1-cost unite [4997.9 $]; labor [800 h]; Physical Units [43064 h] | 4,997.9 | 4,997.9 | ZNA | CON |  |
| A89810 |  | Trench Excavation | 1d | 2026-12-13 | 2026-12-14 | A87660 SS, A87660 FF |  |  |  | 36.28d | 0d | ICKMO1-cost unite [19991.6 $]; Physical Units [172256 h] | 19,991.61 |  | ZNA | CON |  |
| A89750 |  | Pipe Laying | 2d | 2026-12-14 | 2026-12-16 | A89810 |  |  |  | 37.28d | 0d | ICKMO1-cost unite [9995.81 $]; Roller compactor [200 h]; JCB [200 h]; Physical Units [86128 h] | 9,995.81 |  | ZNA | CON | LAY |
| A89770 |  | Valve Chambers Civil Works | 2d | 2026-12-16 | 2026-12-19 | A89750 |  |  |  | 37.28d | 0d | ICKMO1-cost unite [24989.5 $]; labor [800 h]; Physical Units [215320 h] | 24,989.52 |  | ZNA | CON |  |
| A89780 |  | Valve Installation | 1d | 2026-12-19 | 2026-12-20 | A89770 |  |  |  | 37.28d | 0d | ICKMO1-cost unite [19991.6 $]; Roller compactor [200 h]; JCB [200 h]; Physical Units [172256 h] | 19,991.61 |  | ZNA | CON |  |
| A89790 |  | Testing | 1d | 2026-12-20 | 2026-12-21 | A89780 |  |  |  | 37.28d | 0d | ICKMO1-cost unite [4997.9 $]; labor [800 h]; Physical Units [43064 h] | 4,997.9 |  | ZNA | CON |  |
| A89800 |  | Backfilling | 1d | 2026-12-21 | 2026-12-22 | A89790, A89760 |  |  |  | 37.28d | 116.58d | ICKMO1-cost unite [14993.7 $]; labor [800 h]; Physical Units [129192 h] | 14,993.71 |  | ZNA | CON |  |

| ID | WBS | Activity | Duration | Start | Finish | Predecessors | Complete | Remaining | Planned start | Planned finish | Total float | Free float | Resources | Cost | Actual cost | ALKHARJ INDUSTERIAL AREA - PROJECT ZONES | ALKHARJ INDUSTERIAL AREA - DECEPLINS | ALKHARJ INDUSTERIAL AREA - Wet networks |
| --- | --- | --- | --- | --- | --- | --- | --- | --- | --- | --- | --- | --- | --- | --- | --- | --- | --- | --- |
|  | R1131 | **Road 17** |  | 2026-08-20 | 2026-12-23 |  |  |  |  |  |  |  |  |  |  |  |  |  |
| A89830 |  | Road Crossing Works | 1d | 2026-08-20 A | 2026-09-28 A | A89820 | 100% |  | 2027-03-01 | 2027-03-02 |  |  | ICKMO1-cost unite [4997.9 $]; labor [800 h]; Physical Units [43064 h] | 4,997.9 | 4,997.9 | ZNA | CON |  |
| A89880 |  | Trench Excavation | 1d | 2026-12-14 | 2026-12-15 | A89810 |  |  |  |  | 36.28d | 0d | ICKMO1-cost unite [19991.6 $]; Physical Units [172256 h] | 19,991.61 |  | ZNA | CON |  |
| A89820 |  | Pipe Laying | 2d | 2026-12-15 | 2026-12-17 | A89880 |  |  |  |  | 36.28d | 0d | ICKMO1-cost unite [9995.81 $]; Roller compactor [200 h]; JCB [200 h]; Physical Units [86128 h] | 9,995.81 |  | ZNA | CON | LAY |
| A89840 |  | Valve Chambers Civil Works | 2d | 2026-12-17 | 2026-12-20 | A89820 |  |  |  |  | 36.28d | 0d | ICKMO1-cost unite [24989.5 $]; labor [800 h]; Physical Units [215320 h] | 24,989.52 |  | ZNA | CON |  |
| A89850 |  | Valve Installation | 1d | 2026-12-20 | 2026-12-21 | A89840 |  |  |  |  | 36.28d | 0d | ICKMO1-cost unite [19991.6 $]; Roller compactor [200 h]; JCB [200 h]; Physical Units [172256 h] | 19,991.61 |  | ZNA | CON |  |
| A89860 |  | Testing | 1d | 2026-12-21 | 2026-12-22 | A89850 |  |  |  |  | 36.28d | 0d | ICKMO1-cost unite [4997.9 $]; labor [800 h]; Physical Units [43064 h] | 4,997.9 |  | ZNA | CON |  |
| A89870 |  | Backfilling | 1d | 2026-12-22 | 2026-12-23 | A89860, A89830 |  |  |  |  | 36.28d | 115.58d | ICKMO1-cost unite [14993.7 $]; labor [800 h]; Physical Units [129192 h] | 14,993.71 |  | ZNA | CON |  |
|  | R11112 | **Collector 1** |  | 2026-08-20 | 2027-01-10 |  |  |  |  |  |  |  |  |  |  |  |  |  |
| A88920 |  | Road Crossing Works | 4d | 2026-08-20 A | 2026-09-28 A | A88910 | 100% |  | 2027-06-30 | 2027-07-05 |  |  | ICKMO1-cost unite [4997.9 $]; labor [800 h]; Physical Units [43064 h] | 4,997.9 | 4,997.9 | ZNA | CON |  |
| A88910 |  | Pipe Laying | 6d | 2026-09-15 A | 2026-12-22 | A88970 | 80% | 1.2d | 2027-06-23 | 2027-06-30 | 21.08d | 0d | ICKMO1-cost unite [9995.81 $]; Roller compactor [200 h]; JCB [200 h]; Physical Units [86128 h] | 9,995.81 | 7,996.65 | ZNA | CON | LAY |
| A88970 |  | Trench Excavation | 4d | 2026-09-15 A | 2026-12-21 | A87730 SS, A87730 FF | 80% | 0.8d | 2027-06-19 | 2027-06-23 | 21.08d | 0d | ICKMO1-cost unite [19991.6 $]; Physical Units [172256 h] | 19,991.61 | 15,993.29 | ZNA | CON |  |
| A88930 |  | Valve Chambers Civil Works | 6d | 2026-12-22 | 2026-12-29 | A88910 |  |  |  |  | 21.08d | 0d | ICKMO1-cost unite [24989.5 $]; labor [800 h]; Physical Units [215320 h] | 24,989.52 |  | ZNA | CON |  |
| A88940 |  | Valve Installation | 4d | 2026-12-29 | 2027-01-03 | A88930 |  |  |  |  | 21.08d | 0d | ICKMO1-cost unite [19991.6 $]; Roller compactor [200 h]; JCB [200 h]; Physical Units [172256 h] | 19,991.61 |  | ZNA | CON |  |
| A88950 |  | Testing | 2d | 2027-01-03 | 2027-01-05 | A88940 |  |  |  |  | 21.08d | 0d | ICKMO1-cost unite [4997.9 $]; labor [800 h]; Physical Units [43064 h] | 4,997.9 |  | ZNA | CON |  |
| A88960 |  | Backfilling | 4d | 2027-01-05 | 2027-01-10 | A88950, A88920 |  |  |  |  | 21.08d | 100.38d | ICKMO1-cost unite [14993.7 $]; labor [800 h]; Physical Units [129192 h] | 14,993.71 |  | ZNA | CON |  |
|  | MVN | **MV NETWORK** |  | 2026-09-05 | 2027-04-08 |  |  |  |  |  |  |  |  |  |  |  |  |  |
|  | 8 | **PSS 9067 - loop 01 Zone A** |  | 2026-09-05 | 2027-03-30 |  |  |  |  |  |  |  |  |  |  |  |  |  |
| A84010 |  | Trenching & excavation | 8d | 2026-09-05 A | 2027-02-23 | A1540, A1550, A1560, A1570, A1580, A10690, A10700, A10710, A10720, A10730, A10740, A10750, A10760, A10770, A10780, A10790, A10800, A10810, A10820, A10830, A10840, A10850, A10860, A10870, A10880, A10890, A10900, A10910, A10920 | 35% | 5.2d | 2027-04-21 | 2027-04-29 | -166.81d | 0d | ICKMO1-cost unite [285603 $]; Roller compactor [200 h]; JCB [200 h]; Physical Units [2460872 h] | 285,602.83 | 99,960.99 | ZNA | CON |  |
| A84020 |  | Bedding preparation (sand) | 12d | 2026-09-05 A | 2027-02-25 | A84010 SS+4d | 35% | 7.8d | 2027-04-26 | 2027-05-09 | -158.65d | 0d | ICKMO1-cost unite [95200.9 $]; labor [800 h]; Physical Units [820291 h] | 95,200.95 | 33,320.33 | ZNA | CON |  |
| A84030 |  | Duct installation / concrete encasement | 21d | 2026-09-05 A | 2027-03-04 | A84020 SS+4d, A84020 FF+4d | 35% | 13.65d | 2027-05-01 | 2027-05-24 | -158.65d | 0d | ICKMO1-cost unite [571206 $]; labor [800 h]; Physical Units [4921745 h] | 571,205.67 | 199,921.98 | ZNA | CON |  |
| A84040 |  | Backfilling & compaction | 21d | 2026-09-05 A | 2027-03-14 | A84050 SS+4d, A84050 FF+4d | 35% | 13.65d | 2027-05-10 | 2027-06-02 | -158.65d | 0d | ICKMO1-cost unite [190402 $]; Roller compactor [200 h]; JCB [200 h]; Physical Units [1640582 h] | 190,401.9 | 66,640.66 | ZNA | CON |  |
| A84050 |  | Cable Laying | 21d | 2026-09-05 A | 2027-03-09 | A84030 SS+4d, A84030 FF+4d | 35% | 13.65d | 2027-05-05 | 2027-05-29 | -158.65d | 0d | ICKMO1-cost unite [380804 $]; labor [800 h]; Budget Resources [10068.5]; Physical Units [3281163 h] | 380,803.78 | 133,281.32 | ZNA | CON |  |
| A84070 |  | RMU / transformer installation | 10d | 2027-03-14 | 2027-03-25 | A84040 |  |  |  |  | -158.65d | 0d | ICKMO1-cost unite [285603 $]; Physical Units [2460872 h] | 285,602.83 |  | ZNA | CON |  |
| A84060 |  | Testing | 4d | 2027-03-25 | 2027-03-30 | A84070 |  |  |  |  | -158.65d | 8.16d | ICKMO1-cost unite [95200.9 $]; labor [800 h]; Physical Units [820291 h] | 95,200.95 |  | ZNA | CON |  |

| ID | WBS | Activity | Duration | Start | Finish | Predecessors | Complete | Remaining | Planned start | Planned finish | Total float | Free float | Resources | Cost | Actual cost | ALKHARJ INDUSTERIAL AREA - PROJECT ZONES | ALKHARJ INDUSTERIAL AREA - DECEPLINS |
| --- | --- | --- | --- | --- | --- | --- | --- | --- | --- | --- | --- | --- | --- | --- | --- | --- | --- |
|  | 2 | **PSS 9067 - loop 02 Zone A** |  | 2026-09-05 | 2027-04-06 |  |  |  |  |  |  |  |  |  |  |  |  |
| A84080 |  | Trenching & excavation | 8d | 2026-09-05 A | 2027-03-01 | A84010 | 33% | 5.36d | 2027-05-01 | 2027-05-09 | -166.81d | 0d | ICKMO1-cost unite [285603 $]; Roller compactor [200 h]; JCB [200 h]; Physical Units [2460872 h] | 285,602.83 | 94,248.93 | ZNA | CON |
| A84090 |  | Bedding preparation (sand) | 8d | 2026-09-05 A | 2027-03-01 | A84080 SS+4d | 33% | 5.36d | 2027-05-05 | 2027-05-13 | -164.27d | 0d | ICKMO1-cost unite [95200.9 $]; labor [800 h]; Physical Units [820291 h] | 95,200.95 | 31,416.31 | ZNA | CON |
| A84100 |  | Duct installation / concrete encasement | 21d | 2026-09-05 A | 2027-03-11 | A84090 SS+4d, A84090 FF+4d | 33% | 14.07d | 2027-05-10 | 2027-06-02 | -164.27d | 0d | ICKMO1-cost unite [571206 $]; labor [800 h]; Physical Units [4921745 h] | 571,205.67 | 188,497.87 | ZNA | CON |
| A84110 |  | Backfilling & compaction | 21d | 2026-09-05 A | 2027-03-21 | A84120 SS+4d, A84120 FF+4d | 33% | 14.07d | 2027-05-19 | 2027-06-12 | -164.27d | 0d | ICKMO1-cost unite [190402 $]; Roller compactor [200 h]; JCB [200 h]; Physical Units [1640582 h] | 190,401.9 | 62,832.63 | ZNA | CON |
| A84120 |  | Cable Laying | 21d | 2026-09-05 A | 2027-03-16 | A84100 SS+4d, A84100 FF+4d | 33% | 14.07d | 2027-05-15 | 2027-06-07 | -164.27d | 0d | ICKMO1-cost unite [380804 $]; labor [800 h]; Budget Resources [10068.5]; Physical Units [3281163 h] | 380,803.78 | 125,665.25 | ZNA | CON |
| A84140 |  | RMU / transformer installation | 10d | 2027-03-21 | 2027-04-01 | A84110 |  |  |  |  | -164.27d | 0d | ICKMO1-cost unite [285603 $]; Physical Units [2460872 h] | 285,602.83 |  | ZNA | CON |
| A84130 |  | Testing | 4d | 2027-04-01 | 2027-04-06 | A84140 |  |  |  |  | -164.27d | 2.54d | ICKMO1-cost unite [95200.9 $]; labor [800 h]; Physical Units [820291 h] | 95,200.95 |  | ZNA | CON |
|  | 3 | **PSS 9067 - loop 03 Zone A** |  | 2026-09-05 | 2027-04-08 |  |  |  |  |  |  |  |  |  |  |  |  |
| A84150 |  | Trenching & excavation | 8d | 2026-09-05 A | 2027-03-04 | A84080 | 59% | 3.28d | 2027-05-10 | 2027-05-18 | -166.81d | 0d | ICKMO1-cost unite [285603 $]; Roller compactor [200 h]; JCB [200 h]; Physical Units [2460872 h] | 285,602.83 | 168,505.67 | ZNA | CON |
| A84160 |  | Bedding preparation (sand) | 12d | 2026-09-05 A | 2027-03-08 | A84150 SS+3d, A84150 FF+3d | 59% | 4.92d | 2027-05-13 | 2027-05-26 | -166.81d | 0d | ICKMO1-cost unite [95200.9 $]; labor [800 h]; Physical Units [820291 h] | 95,200.95 | 56,168.56 | ZNA | CON |
| A84170 |  | Duct installation / concrete encasement | 17d | 2026-09-05 A | 2027-03-11 | A84160 SS+3d, A84160 FF+3d | 59% | 6.97d | 2027-05-17 | 2027-06-05 | -166.81d | 0d | ICKMO1-cost unite [571206 $]; labor [800 h]; Physical Units [4921745 h] | 571,205.67 | 337,011.35 | ZNA | CON |
| A84180 |  | Backfilling & compaction | 21d | 2026-09-05 A | 2027-03-23 | A84190 SS+3d, A84190 FF+3d | 59% | 8.61d | 2027-06-09 | 2027-07-03 | -166.81d | 0d | ICKMO1-cost unite [190402 $]; Roller compactor [200 h]; JCB [200 h]; Physical Units [1640582 h] | 190,401.9 | 112,337.12 | ZNA | CON |
| A84190 |  | Cable Laying | 17d | 2026-09-05 A | 2027-03-20 | A84170 | 59% | 6.97d | 2027-06-06 | 2027-06-24 | -166.81d | 0d | ICKMO1-cost unite [380804 $]; labor [800 h]; Budget Resources [10068.5]; Physical Units [3281163 h] | 380,803.78 | 224,674.23 | ZNA | CON |
| A84210 |  | RMU / transformer installation | 10d | 2027-03-23 | 2027-04-04 | A84180 |  |  |  |  | -166.81d | 0d | ICKMO1-cost unite [285603 $]; Physical Units [2460872 h] | 285,602.83 |  | ZNA | CON |
| A84200 |  | Testing | 4d | 2027-04-04 | 2027-04-08 | A84210 |  |  |  |  | -166.81d | 0d | ICKMO1-cost unite [95200.9 $]; labor [800 h]; Physical Units [820291 h] | 95,200.95 |  | ZNA | CON |
|  | ROL | **ROAD LIGHING** |  | 2026-09-05 | 2027-05-08 |  |  |  |  |  |  |  |  |  |  |  |  |
|  | 2 | **PSS 9067 - loop 02 Zone A** |  | 2026-09-05 | 2027-04-04 |  |  |  |  |  |  |  |  |  |  |  |  |
| A84220 |  | Trenching for lighting network | 10d | 2026-09-05 A | 2027-03-22 | A84110, A10260 SS+15d, A10260 FF+15d, A56740 | 83% | 1.7d | 2027-12-19 | 2027-12-29 | 100.93d | 0d | ICKMO1-cost unite [230618 $]; labor [800 h]; Physical Units [1987096 h] | 230,617.51 | 191,412.54 | ZNA | CON |
| A84240 |  | Installation of lighting poles foundations | 12d | 2026-09-05 A | 2027-03-23 | A84250 SS+6d | 78% | 2.64d | 2028-01-02 | 2028-01-15 | 195.63d | 0d | ICKMO1-cost unite [230618 $]; labor [800 h]; Physical Units [1987096 h] | 230,617.51 | 179,881.66 | ZNA | CON |
| A84250 |  | LV cable laying & termination / Backfilling | 10d | 2026-09-05 A | 2027-03-23 | A84220 SS+6d | 78% | 2.2d | 2027-12-26 | 2028-01-05 | 136.65d | 0d | ICKMO1-cost unite [230618 $]; labor [800 h]; Physical Units [1987096 h] | 230,617.51 | 179,881.66 | ZNA | CON |
| A84260 |  | Street lighting sub-station construction & installation | 14d | 2026-09-05 A | 2027-03-28 | A84250 | 73% | 3.78d | 2028-01-06 | 2028-01-22 | 136.65d | 132.65d | ICKMO1-cost unite [230618 $]; labor [800 h]; Physical Units [1987096 h] | 230,617.51 | 168,350.79 | ZNA | CON |
| A84230 |  | Installation of lighting poles & luminaires | 12d | 2027-03-21 | 2027-04-04 | A84240 SS+6d, A84240 FF+6d |  |  |  |  | 195.63d |  | ICKMO1-cost unite [230618 $]; labor [800 h]; Physical Units [1987096 h] | 230,617.51 |  | ZNA | CON |
|  | 8 | **PSS 9067 - loop 01 Zone A** |  | 2027-03-22 | 2027-04-26 |  |  |  |  |  |  |  |  |  |  |  |  |
| A84270 |  | Trenching for lighting network | 10d | 2027-03-22 | 2027-04-03 | A84040, A4900, A4910, A4920, A4930, A4940, A84220 |  |  |  |  | 100.93d | 0d | ICKMO1-cost unite [230618 $]; labor [800 h]; Physical Units [1987096 h] | 230,617.51 |  | ZNA | CON |
| A84300 |  | LV cable laying & termination / Backfilling | 10d | 2027-03-29 | 2027-04-10 | A84270 SS+6d |  |  |  |  | 110.93d | 0d | ICKMO1-cost unite [230618 $]; labor [800 h]; Physical Units [1987096 h] | 230,617.51 |  | ZNA | CON |
| A84290 |  | Installation of lighting poles foundations | 12d | 2027-04-05 | 2027-04-19 | A84300 SS+6d |  |  |  |  | 175.93d | 0d | ICKMO1-cost unite [230618 $]; labor [800 h]; Physical Units [1987096 h] | 230,617.51 |  | ZNA | CON |
| A84310 |  | Street lighting sub-station construction & installation | 14d | 2027-04-10 | 2027-04-26 | A84300 |  |  |  |  | 110.93d | 106.93d | ICKMO1-cost unite [230618 $]; labor [800 h]; Physical Units [1987096 h] | 230,617.51 |  | ZNA | CON |
| A84280 |  | Installation of lighting poles & luminaires | 12d | 2027-04-12 | 2027-04-26 | A84290 SS+6d, A84290 FF+6d |  |  |  |  | 175.93d |  | ICKMO1-cost unite [230618 $]; labor [800 h]; Physical Units [1987096 h] | 230,617.51 |  | ZNA | CON |

| ID | WBS | Activity | Duration | Start | Finish | Predecessors | Complete | Planned start | Planned finish | Total float | Free float | Resources | Cost | Actual cost | ALKHARJ INDUSTERIAL AREA - PROJECT ZONES | ALKHARJ INDUSTERIAL AREA - DECEPLINS | ALKHARJ INDUSTERIAL AREA - Wet networks |
| --- | --- | --- | --- | --- | --- | --- | --- | --- | --- | --- | --- | --- | --- | --- | --- | --- | --- |
|  | 3 | **PSS 9067 - loop 03 Zone A** |  | 2027-04-03 | 2027-05-08 |  |  |  |  |  |  |  |  |  |  |  |  |
| A84320 |  | Trenching for lighting network | 10d | 2027-04-03 | 2027-04-14 | A84180, A84270 |  |  |  | 100.93d | 0d | ICKMO1-cost unite [230618 $]; labor [800 h]; Physical Units [1987096 h] | 230,617.51 |  | ZNA | CON |  |
| A84350 |  | LV cable laying & termination / Backfilling | 10d | 2027-04-10 | 2027-04-21 | A84320 SS+6d, A84320 FF+6d |  |  |  | 100.93d | 0d | ICKMO1-cost unite [230618 $]; labor [800 h]; Physical Units [1987096 h] | 230,617.51 |  | ZNA | CON |  |
| A84340 |  | Installation of lighting poles foundations | 12d | 2027-04-17 | 2027-05-01 | A84350 SS+6d |  |  |  | 165.93d | 0d | ICKMO1-cost unite [230618 $]; labor [800 h]; Physical Units [1987096 h] | 230,617.51 |  | ZNA | CON |  |
| A84360 |  | Street lighting sub-station construction & installation | 14d | 2027-04-21 | 2027-05-08 | A84350 |  |  |  | 100.93d | 96.93d | ICKMO1-cost unite [230618 $]; labor [800 h]; Physical Units [1987096 h] | 230,617.51 |  | ZNA | CON |  |
| A84330 |  | Installation of lighting poles & luminaires | 12d | 2027-04-24 | 2027-05-08 | A84340 SS+6d, A84340 FF+6d |  |  |  | 165.93d |  | ICKMO1-cost unite [230618 $]; labor [800 h]; Physical Units [1987096 h] | 230,617.51 |  | ZNA | CON |  |
|  | COM | **TELECOMMUNICATION** |  | 2026-08-20 | 2027-03-20 |  |  |  |  |  |  |  |  |  |  |  |  |
|  | R1 | **Road 1** |  | 2026-08-20 | 2027-03-20 |  |  |  |  |  |  |  |  |  |  |  |  |
| A90960 |  | Road Crossing Encasement | 10d | 2026-08-20 A | 2026-09-28 A | A90950 | 100% | 2027-03-07 | 2027-03-18 |  |  | ICKMO1-cost unite [17030.7 $]; labor [800 h]; Physical Units [146744 h] | 17,030.74 | 17,030.74 | ZNA | CON |  |
| A90940 |  | Excavation | 10d | 2027-02-01 | 2027-02-13 | A5000, A5010, A5020, A5030, A5040, A10250 SS+10d, A11110, A10250 FF+10d, A58910 |  |  |  | -37.9d | 0d | ICKMO1-cost unite [51092.2 $]; Roller compactor [200 h]; JCB [200 h]; Physical Units [440232 h] | 51,092.21 |  | ZNA | CON |  |
| A90950 |  | Duct Jointing & Laying | 10d | 2027-02-13 | 2027-02-24 | A90940 |  |  |  | -37.9d | 0d | ICKMO1-cost unite [25546.1 $]; labor [800 h]; Physical Units [220116 h] | 25,546.11 |  | ZNA | CON |  |
| A90970 |  | Manhole Civil Works | 10d | 2027-02-24 | 2027-03-08 | A90960 |  |  |  | -37.9d | 0d | ICKMO1-cost unite [51092.2 $]; labor [800 h]; Physical Units [440232 h] | 51,092.21 |  | ZNA | CON | MH |
| A90980 |  | Backfilling & Compaction | 10d | 2027-03-08 | 2027-03-20 | A90970 |  |  |  | -37.9d | 0d | ICKMO1-cost unite [25546.1 $]; Roller compactor [200 h]; JCB [200 h]; Physical Units [220116 h] | 25,546.11 |  | ZNA | CON |  |
|  | R2 | **Road 2** |  | 2026-08-20 | 2027-01-21 |  |  |  |  |  |  |  |  |  |  |  |  |
| A91010 |  | Road Crossing Encasement | 10d | 2026-08-20 A | 2026-09-28 A | A91000 | 100% | 2027-03-07 | 2027-03-18 |  |  | ICKMO1-cost unite [17030.7 $]; labor [800 h]; Physical Units [146744 h] | 17,030.74 | 17,030.74 | ZNA | CON |  |
| A90990 |  | Excavation | 10d | 2026-12-14 | 2026-12-24 | A58910, A11110 |  |  |  | 11d | 0d | ICKMO1-cost unite [51092.2 $]; Roller compactor [200 h]; JCB [200 h]; Physical Units [440232 h] | 51,092.21 |  | ZNA | CON |  |
| A91000 |  | Duct Jointing & Laying | 10d | 2026-12-26 | 2027-01-05 | A90990 |  |  |  | 11d | 0d | ICKMO1-cost unite [25546.1 $]; labor [800 h]; Physical Units [220116 h] | 25,546.11 |  | ZNA | CON |  |
| A91020 |  | Manhole Civil Works | 4d | 2027-01-06 | 2027-01-10 | A91010 |  |  |  | 11d | 0d | ICKMO1-cost unite [51092.2 $]; labor [800 h]; Physical Units [440232 h] | 51,092.21 |  | ZNA | CON | MH |
| A91030 |  | Backfilling & Compaction | 10d | 2027-01-11 | 2027-01-21 | A91020 |  |  |  | 11d | 48.9d | ICKMO1-cost unite [25546.1 $]; Roller compactor [200 h]; JCB [200 h]; Physical Units [220116 h] | 25,546.11 |  | ZNA | CON |  |
|  | R3 | **Road 3** |  | 2026-08-20 | 2027-01-21 |  |  |  |  |  |  |  |  |  |  |  |  |
| A91060 |  | Road Crossing Encasement | 10d | 2026-08-20 A | 2026-09-28 A | A91050 | 100% | 2027-03-07 | 2027-03-18 |  |  | ICKMO1-cost unite [17030.7 $]; labor [800 h]; Physical Units [146744 h] | 17,030.74 | 17,030.74 | ZNA | CON |  |
| A91040 |  | Excavation | 10d | 2026-12-14 | 2026-12-24 | A58910, A11110 |  |  |  | 11d | 0d | ICKMO1-cost unite [51092.2 $]; Roller compactor [200 h]; JCB [200 h]; Physical Units [440232 h] | 51,092.21 |  | ZNA | CON |  |
| A91050 |  | Duct Jointing & Laying | 10d | 2026-12-26 | 2027-01-05 | A91040 |  |  |  | 11d | 0d | ICKMO1-cost unite [25546.1 $]; labor [800 h]; Physical Units [220116 h] | 25,546.11 |  | ZNA | CON |  |
| A91070 |  | Manhole Civil Works | 4d | 2027-01-06 | 2027-01-10 | A91060 |  |  |  | 11d | 0d | ICKMO1-cost unite [51092.2 $]; labor [800 h]; Physical Units [440232 h] | 51,092.21 |  | ZNA | CON | MH |
| A91080 |  | Backfilling & Compaction | 10d | 2027-01-11 | 2027-01-21 | A91070 |  |  |  | 11d | 48.9d | ICKMO1-cost unite [25546.1 $]; Roller compactor [200 h]; JCB [200 h]; Physical Units [220116 h] | 25,546.11 |  | ZNA | CON |  |

| ID | WBS | Activity | Duration | Start | Finish | Predecessors | Complete | Planned start | Planned finish | Total float | Free float | Resources | Cost | Actual cost | ALKHARJ INDUSTERIAL AREA - PROJECT ZONES | ALKHARJ INDUSTERIAL AREA - DECEPLINS | ALKHARJ INDUSTERIAL AREA - Wet networks |
| --- | --- | --- | --- | --- | --- | --- | --- | --- | --- | --- | --- | --- | --- | --- | --- | --- | --- |
|  | R4 | **Road 4** |  | 2026-08-20 | 2027-01-21 |  |  |  |  |  |  |  |  |  |  |  |  |
| A91110 |  | Road Crossing Encasement | 10d | 2026-08-20 A | 2026-09-28 A | A91100 | 100% | 2027-03-07 | 2027-03-18 |  |  | ICKMO1-cost unite [17030.7 $]; labor [800 h]; Physical Units [146744 h] | 17,030.74 | 17,030.74 | ZNA | CON |  |
| A91090 |  | Excavation | 10d | 2026-12-14 | 2026-12-24 | A58910, A11110 |  |  |  | 11d | 0d | ICKMO1-cost unite [51092.2 $]; Roller compactor [200 h]; JCB [200 h]; Physical Units [440232 h] | 51,092.21 |  | ZNA | CON |  |
| A91100 |  | Duct Jointing & Laying | 10d | 2026-12-26 | 2027-01-05 | A91090 |  |  |  | 11d | 0d | ICKMO1-cost unite [25546.1 $]; labor [800 h]; Physical Units [220116 h] | 25,546.11 |  | ZNA | CON |  |
| A91120 |  | Manhole Civil Works | 4d | 2027-01-06 | 2027-01-10 | A91110 |  |  |  | 11d | 0d | ICKMO1-cost unite [51092.2 $]; labor [800 h]; Physical Units [440232 h] | 51,092.21 |  | ZNA | CON | MH |
| A91130 |  | Backfilling & Compaction | 10d | 2027-01-11 | 2027-01-21 | A91120 |  |  |  | 11d | 48.9d | ICKMO1-cost unite [25546.1 $]; Roller compactor [200 h]; JCB [200 h]; Physical Units [220116 h] | 25,546.11 |  | ZNA | CON |  |
|  | R5 | **Road 5** |  | 2026-08-20 | 2027-01-21 |  |  |  |  |  |  |  |  |  |  |  |  |
| A91160 |  | Road Crossing Encasement | 10d | 2026-08-20 A | 2026-09-28 A | A91150 | 100% | 2027-03-07 | 2027-03-18 |  |  | ICKMO1-cost unite [17030.7 $]; labor [800 h]; Physical Units [146744 h] | 17,030.74 | 17,030.74 | ZNA | CON |  |
| A91140 |  | Excavation | 10d | 2026-12-14 | 2026-12-24 | A58910, A11110 |  |  |  | 11d | 0d | ICKMO1-cost unite [51092.2 $]; Roller compactor [200 h]; JCB [200 h]; Physical Units [440232 h] | 51,092.21 |  | ZNA | CON |  |
| A91150 |  | Duct Jointing & Laying | 10d | 2026-12-26 | 2027-01-05 | A91140 |  |  |  | 11d | 0d | ICKMO1-cost unite [25546.1 $]; labor [800 h]; Physical Units [220116 h] | 25,546.11 |  | ZNA | CON |  |
| A91170 |  | Manhole Civil Works | 4d | 2027-01-06 | 2027-01-10 | A91160 |  |  |  | 11d | 0d | ICKMO1-cost unite [51092.2 $]; labor [800 h]; Physical Units [440232 h] | 51,092.21 |  | ZNA | CON | MH |
| A91180 |  | Backfilling & Compaction | 10d | 2027-01-11 | 2027-01-21 | A91170 |  |  |  | 11d | 48.9d | ICKMO1-cost unite [25546.1 $]; Roller compactor [200 h]; JCB [200 h]; Physical Units [220116 h] | 25,546.11 |  | ZNA | CON |  |
|  | R6 | **Road 6** |  | 2026-08-20 | 2027-01-21 |  |  |  |  |  |  |  |  |  |  |  |  |
| A91210 |  | Road Crossing Encasement | 10d | 2026-08-20 A | 2026-09-28 A | A91200 | 100% | 2027-03-07 | 2027-03-18 |  |  | ICKMO1-cost unite [17030.7 $]; labor [800 h]; Physical Units [146744 h] | 17,030.74 | 17,030.74 | ZNA | CON |  |
| A91190 |  | Excavation | 10d | 2026-12-14 | 2026-12-24 | A58910, A11110 |  |  |  | 11d | 0d | ICKMO1-cost unite [51092.2 $]; Roller compactor [200 h]; JCB [200 h]; Physical Units [440232 h] | 51,092.21 |  | ZNA | CON |  |
| A91200 |  | Duct Jointing & Laying | 10d | 2026-12-26 | 2027-01-05 | A91190 |  |  |  | 11d | 0d | ICKMO1-cost unite [25546.1 $]; labor [800 h]; Physical Units [220116 h] | 25,546.11 |  | ZNA | CON |  |
| A91220 |  | Manhole Civil Works | 4d | 2027-01-06 | 2027-01-10 | A91210 |  |  |  | 11d | 0d | ICKMO1-cost unite [51092.2 $]; labor [800 h]; Physical Units [440232 h] | 51,092.21 |  | ZNA | CON | MH |
| A91230 |  | Backfilling & Compaction | 10d | 2027-01-11 | 2027-01-21 | A91220 |  |  |  | 11d | 48.9d | ICKMO1-cost unite [25546.1 $]; Roller compactor [200 h]; JCB [200 h]; Physical Units [220116 h] | 25,546.11 |  | ZNA | CON |  |
|  | R7 | **Road 7** |  | 2026-08-20 | 2027-01-21 |  |  |  |  |  |  |  |  |  |  |  |  |
| A91260 |  | Road Crossing Encasement | 10d | 2026-08-20 A | 2026-09-28 A | A91250 | 100% | 2027-03-07 | 2027-03-18 |  |  | ICKMO1-cost unite [17030.7 $]; labor [800 h]; Physical Units [146744 h] | 17,030.74 | 17,030.74 | ZNA | CON |  |
| A91240 |  | Excavation | 10d | 2026-12-14 | 2026-12-24 | A58910, A11110 |  |  |  | 11d | 0d | ICKMO1-cost unite [51092.2 $]; Roller compactor [200 h]; JCB [200 h]; Physical Units [440232 h] | 51,092.21 |  | ZNA | CON |  |
| A91250 |  | Duct Jointing & Laying | 10d | 2026-12-26 | 2027-01-05 | A91240 |  |  |  | 11d | 0d | ICKMO1-cost unite [25546.1 $]; labor [800 h]; Physical Units [220116 h] | 25,546.11 |  | ZNA | CON |  |
| A91270 |  | Manhole Civil Works | 4d | 2027-01-06 | 2027-01-10 | A91260 |  |  |  | 11d | 0d | ICKMO1-cost unite [51092.2 $]; labor [800 h]; Physical Units [440232 h] | 51,092.21 |  | ZNA | CON | MH |
| A91280 |  | Backfilling & Compaction | 10d | 2027-01-11 | 2027-01-21 | A91270 |  |  |  | 11d | 48.9d | ICKMO1-cost unite [25546.1 $]; Roller compactor [200 h]; JCB [200 h]; Physical Units [220116 h] | 25,546.11 |  | ZNA | CON |  |

| ID | WBS | Activity | Duration | Start | Finish | Predecessors | Complete | Planned start | Planned finish | Total float | Free float | Resources | Cost | Actual cost | ALKHARJ INDUSTERIAL AREA - PROJECT ZONES | ALKHARJ INDUSTERIAL AREA - DECEPLINS | ALKHARJ INDUSTERIAL AREA - Wet networks |
| --- | --- | --- | --- | --- | --- | --- | --- | --- | --- | --- | --- | --- | --- | --- | --- | --- | --- |
|  | R8 | **Road 8** |  | 2026-08-20 | 2027-01-21 |  |  |  |  |  |  |  |  |  |  |  |  |
| A91310 |  | Road Crossing Encasement | 10d | 2026-08-20 A | 2026-09-28 A | A91300 | 100% | 2027-03-07 | 2027-03-18 |  |  | ICKMO1-cost unite [17030.7 $]; labor [800 h]; Physical Units [146744 h] | 17,030.74 | 17,030.74 | ZNA | CON |  |
| A91290 |  | Excavation | 10d | 2026-12-14 | 2026-12-24 | A58910, A11110 |  |  |  | 11d | 0d | ICKMO1-cost unite [51092.2 $]; Roller compactor [200 h]; JCB [200 h]; Physical Units [440232 h] | 51,092.21 |  | ZNA | CON |  |
| A91300 |  | Duct Jointing & Laying | 10d | 2026-12-26 | 2027-01-05 | A91290 |  |  |  | 11d | 0d | ICKMO1-cost unite [25546.1 $]; labor [800 h]; Physical Units [220116 h] | 25,546.11 |  | ZNA | CON |  |
| A91320 |  | Manhole Civil Works | 4d | 2027-01-06 | 2027-01-10 | A91310 |  |  |  | 11d | 0d | ICKMO1-cost unite [51092.2 $]; labor [800 h]; Physical Units [440232 h] | 51,092.21 |  | ZNA | CON | MH |
| A91330 |  | Backfilling & Compaction | 10d | 2027-01-11 | 2027-01-21 | A91320 |  |  |  | 11d | 48.9d | ICKMO1-cost unite [25546.1 $]; Roller compactor [200 h]; JCB [200 h]; Physical Units [220116 h] | 25,546.11 |  | ZNA | CON |  |
|  | R9 | **Road 9** |  | 2026-08-20 | 2027-01-21 |  |  |  |  |  |  |  |  |  |  |  |  |
| A91360 |  | Road Crossing Encasement | 10d | 2026-08-20 A | 2026-09-28 A | A91350 | 100% | 2027-03-07 | 2027-03-18 |  |  | ICKMO1-cost unite [17030.7 $]; labor [800 h]; Physical Units [146744 h] | 17,030.74 | 17,030.74 | ZNA | CON |  |
| A91340 |  | Excavation | 10d | 2026-12-14 | 2026-12-24 | A58910, A11110 |  |  |  | 11d | 0d | ICKMO1-cost unite [51092.2 $]; Roller compactor [200 h]; JCB [200 h]; Physical Units [440232 h] | 51,092.21 |  | ZNA | CON |  |
| A91350 |  | Duct Jointing & Laying | 10d | 2026-12-26 | 2027-01-05 | A91340 |  |  |  | 11d | 0d | ICKMO1-cost unite [25546.1 $]; labor [800 h]; Physical Units [220116 h] | 25,546.11 |  | ZNA | CON |  |
| A91370 |  | Manhole Civil Works | 4d | 2027-01-06 | 2027-01-10 | A91360 |  |  |  | 11d | 0d | ICKMO1-cost unite [51092.2 $]; labor [800 h]; Physical Units [440232 h] | 51,092.21 |  | ZNA | CON | MH |
| A91380 |  | Backfilling & Compaction | 10d | 2027-01-11 | 2027-01-21 | A91370 |  |  |  | 11d | 48.9d | ICKMO1-cost unite [25546.1 $]; Roller compactor [200 h]; JCB [200 h]; Physical Units [220116 h] | 25,546.11 |  | ZNA | CON |  |
|  | R10 | **Road 10** |  | 2026-08-20 | 2027-01-21 |  |  |  |  |  |  |  |  |  |  |  |  |
| A91410 |  | Road Crossing Encasement | 10d | 2026-08-20 A | 2026-09-28 A | A91400 | 100% | 2027-03-07 | 2027-03-18 |  |  | ICKMO1-cost unite [17030.7 $]; labor [800 h]; Physical Units [146744 h] | 17,030.74 | 17,030.74 | ZNA | CON |  |
| A91390 |  | Excavation | 10d | 2026-12-14 | 2026-12-24 | A58910, A11110 |  |  |  | 11d | 0d | ICKMO1-cost unite [51092.2 $]; Roller compactor [200 h]; JCB [200 h]; Physical Units [440232 h] | 51,092.21 |  | ZNA | CON |  |
| A91400 |  | Duct Jointing & Laying | 10d | 2026-12-26 | 2027-01-05 | A91390 |  |  |  | 11d | 0d | ICKMO1-cost unite [25546.1 $]; labor [800 h]; Physical Units [220116 h] | 25,546.11 |  | ZNA | CON |  |
| A91420 |  | Manhole Civil Works | 10d | 2027-01-06 | 2027-01-17 | A91410 |  |  |  | 11d | 0d | ICKMO1-cost unite [51092.2 $]; labor [800 h]; Physical Units [440232 h] | 51,092.21 |  | ZNA | CON | MH |
| A91430 |  | Backfilling & Compaction | 4d | 2027-01-18 | 2027-01-21 | A91420 |  |  |  | 11d | 48.9d | ICKMO1-cost unite [25546.1 $]; Roller compactor [200 h]; JCB [200 h]; Physical Units [220116 h] | 25,546.11 |  | ZNA | CON |  |
|  | R11 | **Road 11** |  | 2026-08-20 | 2027-01-21 |  |  |  |  |  |  |  |  |  |  |  |  |
| A91460 |  | Road Crossing Encasement | 10d | 2026-08-20 A | 2026-09-28 A | A91450 | 100% | 2027-03-07 | 2027-03-18 |  |  | ICKMO1-cost unite [17030.7 $]; labor [800 h]; Physical Units [146744 h] | 17,030.74 | 17,030.74 | ZNA | CON |  |
| A91440 |  | Excavation | 10d | 2026-12-14 | 2026-12-24 | A58910, A11110 |  |  |  | 11d | 0d | ICKMO1-cost unite [51092.2 $]; Roller compactor [200 h]; JCB [200 h]; Physical Units [440232 h] | 51,092.21 |  | ZNA | CON |  |
| A91450 |  | Duct Jointing & Laying | 10d | 2026-12-26 | 2027-01-05 | A91440 |  |  |  | 11d | 0d | ICKMO1-cost unite [25546.1 $]; labor [800 h]; Physical Units [220116 h] | 25,546.11 |  | ZNA | CON |  |
| A91470 |  | Manhole Civil Works | 10d | 2027-01-06 | 2027-01-17 | A91460 |  |  |  | 11d | 0d | ICKMO1-cost unite [51092.2 $]; labor [800 h]; Physical Units [440232 h] | 51,092.21 |  | ZNA | CON | MH |
| A91480 |  | Backfilling & Compaction | 4d | 2027-01-18 | 2027-01-21 | A91470 |  |  |  | 11d | 48.9d | ICKMO1-cost unite [25546.1 $]; Roller compactor [200 h]; JCB [200 h]; Physical Units [220116 h] | 25,546.11 |  | ZNA | CON |  |

| ID | WBS | Activity | Duration | Start | Finish | Predecessors | Complete | Planned start | Planned finish | Total float | Free float | Resources | Cost | Actual cost | ALKHARJ INDUSTERIAL AREA - PROJECT ZONES | ALKHARJ INDUSTERIAL AREA - DECEPLINS | ALKHARJ INDUSTERIAL AREA - Wet networks |
| --- | --- | --- | --- | --- | --- | --- | --- | --- | --- | --- | --- | --- | --- | --- | --- | --- | --- |
|  | R12 | **Road 12** |  | 2026-08-20 | 2027-01-21 |  |  |  |  |  |  |  |  |  |  |  |  |
| A91510 |  | Road Crossing Encasement | 10d | 2026-08-20 A | 2026-09-28 A | A91500 | 100% | 2027-03-07 | 2027-03-18 |  |  | ICKMO1-cost unite [17030.7 $]; labor [800 h]; Physical Units [146744 h] | 17,030.74 | 17,030.74 | ZNA | CON |  |
| A91490 |  | Excavation | 10d | 2026-12-14 | 2026-12-24 | A58910, A11110 |  |  |  | 11d | 0d | ICKMO1-cost unite [51092.2 $]; Roller compactor [200 h]; JCB [200 h]; Physical Units [440232 h] | 51,092.21 |  | ZNA | CON |  |
| A91500 |  | Duct Jointing & Laying | 10d | 2026-12-26 | 2027-01-05 | A91490 |  |  |  | 11d | 0d | ICKMO1-cost unite [25546.1 $]; labor [800 h]; Physical Units [220116 h] | 25,546.11 |  | ZNA | CON |  |
| A91520 |  | Manhole Civil Works | 10d | 2027-01-06 | 2027-01-17 | A91510 |  |  |  | 11d | 0d | ICKMO1-cost unite [51092.2 $]; labor [800 h]; Physical Units [440232 h] | 51,092.21 |  | ZNA | CON | MH |
| A91530 |  | Backfilling & Compaction | 4d | 2027-01-18 | 2027-01-21 | A91520 |  |  |  | 11d | 48.9d | ICKMO1-cost unite [25546.1 $]; Roller compactor [200 h]; JCB [200 h]; Physical Units [220116 h] | 25,546.11 |  | ZNA | CON |  |
|  | R13 | **Road 13** |  | 2026-08-20 | 2027-01-21 |  |  |  |  |  |  |  |  |  |  |  |  |
| A91560 |  | Road Crossing Encasement | 10d | 2026-08-20 A | 2026-09-28 A | A91550 | 100% | 2027-03-07 | 2027-03-18 |  |  | ICKMO1-cost unite [17030.7 $]; labor [800 h]; Physical Units [146744 h] | 17,030.74 | 17,030.74 | ZNA | CON |  |
| A91540 |  | Excavation | 10d | 2026-12-14 | 2026-12-24 | A58910, A11110 |  |  |  | 11d | 0d | ICKMO1-cost unite [51092.2 $]; Roller compactor [200 h]; JCB [200 h]; Physical Units [440232 h] | 51,092.21 |  | ZNA | CON |  |
| A91550 |  | Duct Jointing & Laying | 10d | 2026-12-26 | 2027-01-05 | A91540 |  |  |  | 11d | 0d | ICKMO1-cost unite [25546.1 $]; labor [800 h]; Physical Units [220116 h] | 25,546.11 |  | ZNA | CON |  |
| A91570 |  | Manhole Civil Works | 10d | 2027-01-06 | 2027-01-17 | A91560 |  |  |  | 11d | 0d | ICKMO1-cost unite [51092.2 $]; labor [800 h]; Physical Units [440232 h] | 51,092.21 |  | ZNA | CON | MH |
| A91580 |  | Backfilling & Compaction | 4d | 2027-01-18 | 2027-01-21 | A91570 |  |  |  | 11d | 48.9d | ICKMO1-cost unite [25546.1 $]; Roller compactor [200 h]; JCB [200 h]; Physical Units [220116 h] | 25,546.11 |  | ZNA | CON |  |
|  | R14 | **Road 14** |  | 2026-08-20 | 2027-01-21 |  |  |  |  |  |  |  |  |  |  |  |  |
| A91610 |  | Road Crossing Encasement | 10d | 2026-08-20 A | 2026-09-28 A | A91600 | 100% | 2027-03-07 | 2027-03-18 |  |  | ICKMO1-cost unite [17030.7 $]; labor [800 h]; Physical Units [146744 h] | 17,030.74 | 17,030.74 | ZNA | CON |  |
| A91590 |  | Excavation | 10d | 2026-12-14 | 2026-12-24 | A58910, A11110 |  |  |  | 11d | 0d | ICKMO1-cost unite [51092.2 $]; Roller compactor [200 h]; JCB [200 h]; Physical Units [440232 h] | 51,092.21 |  | ZNA | CON |  |
| A91600 |  | Duct Jointing & Laying | 10d | 2026-12-26 | 2027-01-05 | A91590 |  |  |  | 11d | 0d | ICKMO1-cost unite [25546.1 $]; labor [800 h]; Physical Units [220116 h] | 25,546.11 |  | ZNA | CON |  |
| A91620 |  | Manhole Civil Works | 10d | 2027-01-06 | 2027-01-17 | A91610 |  |  |  | 11d | 0d | ICKMO1-cost unite [51092.2 $]; labor [800 h]; Physical Units [440232 h] | 51,092.21 |  | ZNA | CON | MH |
| A91630 |  | Backfilling & Compaction | 4d | 2027-01-18 | 2027-01-21 | A91620 |  |  |  | 11d | 48.9d | ICKMO1-cost unite [25546.1 $]; Roller compactor [200 h]; JCB [200 h]; Physical Units [220116 h] | 25,546.11 |  | ZNA | CON |  |
|  | R15 | **Road 15** |  | 2026-08-20 | 2027-01-21 |  |  |  |  |  |  |  |  |  |  |  |  |
| A91660 |  | Road Crossing Encasement | 10d | 2026-08-20 A | 2026-09-28 A | A91650 | 100% | 2027-03-07 | 2027-03-18 |  |  | ICKMO1-cost unite [17030.7 $]; labor [800 h]; Physical Units [146744 h] | 17,030.74 | 17,030.74 | ZNA | CON |  |
| A91640 |  | Excavation | 10d | 2026-12-14 | 2026-12-24 | A58910, A11110 |  |  |  | 11d | 0d | ICKMO1-cost unite [51092.2 $]; Roller compactor [200 h]; JCB [200 h]; Physical Units [440232 h] | 51,092.21 |  | ZNA | CON |  |
| A91650 |  | Duct Jointing & Laying | 10d | 2026-12-26 | 2027-01-05 | A91640 |  |  |  | 11d | 0d | ICKMO1-cost unite [25546.1 $]; labor [800 h]; Physical Units [220116 h] | 25,546.11 |  | ZNA | CON |  |
| A91670 |  | Manhole Civil Works | 10d | 2027-01-06 | 2027-01-17 | A91660 |  |  |  | 11d | 0d | ICKMO1-cost unite [51092.2 $]; labor [800 h]; Physical Units [440232 h] | 51,092.21 |  | ZNA | CON | MH |
| A91680 |  | Backfilling & Compaction | 4d | 2027-01-18 | 2027-01-21 | A91670 |  |  |  | 11d | 48.9d | ICKMO1-cost unite [25546.1 $]; Roller compactor [200 h]; JCB [200 h]; Physical Units [220116 h] | 25,546.11 |  | ZNA | CON |  |

| ID | WBS | Activity | Duration | Start | Finish | Predecessors | Complete | Remaining | Planned start | Planned finish | Total float | Free float | Resources | Cost | Actual cost | ALKHARJ INDUSTERIAL AREA - PROJECT ZONES | ALKHARJ INDUSTERIAL AREA - DECEPLINS | ALKHARJ INDUSTERIAL AREA - Wet networks | ALKHARJ INDUSTERIAL AREA - ASPHALT WORKS |
| --- | --- | --- | --- | --- | --- | --- | --- | --- | --- | --- | --- | --- | --- | --- | --- | --- | --- | --- | --- |
|  | R16 | **Road 16** |  | 2026-08-20 | 2027-01-21 |  |  |  |  |  |  |  |  |  |  |  |  |  |  |
| A91710 |  | Road Crossing Encasement | 10d | 2026-08-20 A | 2026-09-28 A | A91700 | 100% |  | 2027-03-07 | 2027-03-18 |  |  | ICKMO1-cost unite [17030.7 $]; labor [800 h]; Physical Units [146744 h] | 17,030.74 | 17,030.74 | ZNA | CON |  |  |
| A91690 |  | Excavation | 10d | 2026-12-14 | 2026-12-24 | A58910, A11110 |  |  |  |  | 11d | 0d | ICKMO1-cost unite [51092.2 $]; Roller compactor [200 h]; JCB [200 h]; Physical Units [440232 h] | 51,092.21 |  | ZNA | CON |  |  |
| A91700 |  | Duct Jointing & Laying | 10d | 2026-12-26 | 2027-01-05 | A91690 |  |  |  |  | 11d | 0d | ICKMO1-cost unite [25546.1 $]; labor [800 h]; Physical Units [220116 h] | 25,546.11 |  | ZNA | CON |  |  |
| A91720 |  | Manhole Civil Works | 10d | 2027-01-06 | 2027-01-17 | A91710 |  |  |  |  | 11d | 0d | ICKMO1-cost unite [51092.2 $]; labor [800 h]; Physical Units [440232 h] | 51,092.21 |  | ZNA | CON | MH |  |
| A91730 |  | Backfilling & Compaction | 4d | 2027-01-18 | 2027-01-21 | A91720 |  |  |  |  | 11d | 48.9d | ICKMO1-cost unite [25546.1 $]; Roller compactor [200 h]; JCB [200 h]; Physical Units [220116 h] | 25,546.11 |  | ZNA | CON |  |  |
|  | R17 | **Road 17** |  | 2026-08-20 | 2027-01-21 |  |  |  |  |  |  |  |  |  |  |  |  |  |  |
| A91760 |  | Road Crossing Encasement | 10d | 2026-08-20 A | 2026-09-28 A | A91750 | 100% |  | 2027-03-07 | 2027-03-18 |  |  | ICKMO1-cost unite [17030.7 $]; labor [800 h]; Physical Units [146744 h] | 17,030.74 | 17,030.74 | ZNA | CON |  |  |
| A91740 |  | Excavation | 10d | 2026-12-14 | 2026-12-24 | A58910, A11110 |  |  |  |  | 11d | 0d | ICKMO1-cost unite [51092.2 $]; Roller compactor [200 h]; JCB [200 h]; Physical Units [440232 h] | 51,092.21 |  | ZNA | CON |  |  |
| A91750 |  | Duct Jointing & Laying | 10d | 2026-12-26 | 2027-01-05 | A91740 |  |  |  |  | 11d | 0d | ICKMO1-cost unite [25546.1 $]; labor [800 h]; Physical Units [220116 h] | 25,546.11 |  | ZNA | CON |  |  |
| A91770 |  | Manhole Civil Works | 10d | 2027-01-06 | 2027-01-17 | A91760 |  |  |  |  | 11d | 0d | ICKMO1-cost unite [51092.2 $]; labor [800 h]; Physical Units [440232 h] | 51,092.21 |  | ZNA | CON | MH |  |
| A91780 |  | Backfilling & Compaction | 4d | 2027-01-18 | 2027-01-21 | A91770 |  |  |  |  | 11d | 48.9d | ICKMO1-cost unite [25546.1 $]; Roller compactor [200 h]; JCB [200 h]; Physical Units [220116 h] | 25,546.11 |  | ZNA | CON |  |  |
|  | CO1 | **COLLECTOR 1** |  | 2026-08-20 | 2027-01-21 |  |  |  |  |  |  |  |  |  |  |  |  |  |  |
| A91810 |  | Road Crossing Encasement | 10d | 2026-08-20 A | 2026-09-28 A | A91800 | 100% |  | 2027-03-07 | 2027-03-18 |  |  | ICKMO1-cost unite [17030.7 $]; labor [800 h]; Physical Units [146744 h] | 17,030.74 | 17,030.74 | ZNA | CON |  |  |
| A91790 |  | Excavation | 10d | 2026-12-14 | 2026-12-24 | A58910, A11110 |  |  |  |  | 11d | 0d | ICKMO1-cost unite [51092.2 $]; Roller compactor [200 h]; JCB [200 h]; Physical Units [440232 h] | 51,092.21 |  | ZNA | CON |  |  |
| A91800 |  | Duct Jointing & Laying | 10d | 2026-12-26 | 2027-01-05 | A91790 |  |  |  |  | 11d | 0d | ICKMO1-cost unite [25546.1 $]; labor [800 h]; Physical Units [220116 h] | 25,546.11 |  | ZNA | CON |  |  |
| A91820 |  | Manhole Civil Works | 4d | 2027-01-06 | 2027-01-10 | A91810 |  |  |  |  | 11d | 0d | ICKMO1-cost unite [51092.2 $]; labor [800 h]; Physical Units [440232 h] | 51,092.21 |  | ZNA | CON | MH |  |
| A91830 |  | Backfilling & Compaction | 10d | 2027-01-11 | 2027-01-21 | A91820 |  |  |  |  | 11d | 48.9d | ICKMO1-cost unite [25546.1 $]; Roller compactor [200 h]; JCB [200 h]; Physical Units [220116 h] | 25,546.11 |  | ZNA | CON |  |  |
|  | RW | **ROADS WORK** |  | 2026-08-15 | 2027-04-12 |  |  |  |  |  |  |  |  |  |  |  |  |  |  |
|  | 1 | **Road 1** |  | 2026-08-21 | 2027-03-14 |  |  |  |  |  |  |  |  |  |  |  |  |  |  |
|  | AGG | **Aggregate Base Course** |  | 2026-08-21 | 2026-11-07 |  |  |  |  |  |  |  |  |  |  |  |  |  |  |
| A56660 |  | Aggregate base course | 8d | 2026-08-21 A | 2026-11-07 | A56620, A1650, A1660, A1670, A1680, A1690, A1700, A10270, A10280, A10290 SS+5d, A10300, A10290 FF+5d | 97% | 0.24d | 2026-04-18 | 2026-04-26 | -82.75d | 0d | ICKMO1-cost unite [618150 $]; Rubber compactor [200 h]; Roller compactor [200 h]; Trailers Truck [400 h]; Aggregate base course [3223.11]; Physical Units [5326239 h] | 618,150.3 | 599,605.8 | ZNA | CON |  | ABC |
|  | BIT | **Bituminous Construction** |  | 2026-08-21 | 2026-11-22 |  |  |  |  |  |  |  |  |  |  |  |  |  |  |
| A56670 |  | Bituminous base course (Grading I - Class A) | 3d | 2026-08-21 A | 2026-11-22 | A56660, A56710 | 97% | 0.09d | 2026-05-17 | 2026-05-19 | -43.25d | 15.61d | ICKMO1-cost unite [772688 $]; labor [600 h]; MC Truck [200 h]; Bituminous base course [1425.56]; Physical Units [6657799 h] | 772,687.87 | 749,507.24 | ZNA | CON |  | BBC |

| ID | WBS | Activity | Duration | Start | Finish | Predecessors | Complete | Remaining | Planned start | Planned finish | Total float | Free float | Resources | Cost | Actual cost | ALKHARJ INDUSTERIAL AREA - PROJECT ZONES | ALKHARJ INDUSTERIAL AREA - DECEPLINS | ALKHARJ INDUSTERIAL AREA - ASPHALT WORKS |
| --- | --- | --- | --- | --- | --- | --- | --- | --- | --- | --- | --- | --- | --- | --- | --- | --- | --- | --- |
|  | ASP | **Asphalt Wearing Course** |  | 2027-02-13 | 2027-02-17 |  |  |  |  |  |  |  |  |  |  |  |  |  |
| A56680 |  | Bituminous concrete wearing course | 4d | 2027-02-13 | 2027-02-17 | A56670, A88420 |  |  |  |  | 0d |  | ICKMO1-cost unite [927225 $]; Rubber compactor [200 h]; Roller compactor [200 h]; Trailers Truck [400 h]; Asphalt Paver [200 h]; Bituminous concrete wearing course [761.44]; Physical Units [7989358 h] | 927,225.45 |  | ZNA | CON | BBC |
|  | CON | **Precast Concrete Curb** |  | 2026-08-21 | 2026-11-22 |  |  |  |  |  |  |  |  |  |  |  |  |  |
| A56690 |  | Concrete curb, Type (K1A) | 8d | 2026-08-21 A | 2026-11-14 | A56660 | 24% | 6.08d | 2026-04-27 | 2026-05-05 | -43.25d | 0d | ICKMO1-cost unite [52542.8 $]; Physical Units [452730 h] | 52,542.78 | 12,610.27 | ZNA | CON |  |
| A56700 |  | Concrete curb, Type (K1B) | 5d | 2026-08-21 A | 2026-11-18 | A56690 | 24% | 3.8d | 2026-05-06 | 2026-05-11 | -43.25d | 0d | ICKMO1-cost unite [50997.4 $]; labor [800 h]; Physical Units [439415 h] | 50,997.4 | 12,239.38 | ZNA | CON |  |
| A56710 |  | Concrete curb, Type (K2) | 4d | 2026-08-21 A | 2026-11-22 | A56700 | 24% | 3.04d | 2026-05-12 | 2026-05-16 | -43.25d | 0d | ICKMO1-cost unite [50997.4 $]; labor [800 h]; Physical Units [439415 h] | 50,997.4 | 12,239.38 | ZNA | CON |  |
|  | PAV | **Pavement Markings** |  | 2027-02-17 | 2027-02-22 |  |  |  |  |  |  |  |  |  |  |  |  |  |
| A56720 |  | Retroreflective Thermoplastic White Traffic lines | 2d | 2027-02-17 | 2027-02-20 | A56710, A56680 |  |  |  |  | 120.3d | 0d | ICKMO1-cost unite [154538 $]; labor [400 h]; Marking Machines [200 h]; Physical Units [1331560 h] | 154,537.58 |  | ZNA | CON |  |
| A56730 |  | Retroreflective Thermoplastic Yellow Traffic lines | 2d | 2027-02-20 | 2027-02-22 | A56720 |  |  |  |  | 120.3d | 0d | ICKMO1-cost unite [154538 $]; labor [400 h]; Marking Machines [200 h]; Physical Units [1331560 h] | 154,537.58 |  | ZNA | CON |  |
|  | TRS | **Traffic Signage** |  | 2027-02-22 | 2027-03-14 |  |  |  |  |  |  |  |  |  |  |  |  |  |
| A56740 |  | Traffic signs, ground mounted, 1 Sheet Alumenium, (breakaway) Single post | 3d | 2027-02-22 | 2027-02-25 | A56730 |  |  |  |  | 120.3d | 0d | ICKMO1-cost unite [51512.5 $]; boom truck [200 h]; labor [400 h]; Physical Units [443853 h] | 51,512.52 |  | ZNA | CON |  |
| A56750 |  | Traffic signs, ground mounted, 2 Sheet Alumenium, (breakaway) Single post | 2d | 2027-02-25 | 2027-02-28 | A56740 |  |  |  |  | 179d | 0d | ICKMO1-cost unite [51512.5 $]; boom truck [200 h]; labor [400 h]; Physical Units [443853 h] | 51,512.52 |  | ZNA | CON |  |
| A56760 |  | Traffic signs, ground mounted, Sheet Alumenium, (breakaway) Double post | 4d | 2027-02-28 | 2027-03-04 | A56750 |  |  |  |  | 179d | 0d | ICKMO1-cost unite [51512.5 $]; boom truck [200 h]; labor [400 h]; Physical Units [443853 h] | 51,512.52 |  | ZNA | CON |  |
| A56770 |  | Retroreflective raised pavement markers (Type A) | 3d | 2027-03-04 | 2027-03-08 | A56760 |  |  |  |  | 194d | 0d | ICKMO1-cost unite [51512.5 $]; boom truck [200 h]; labor [400 h]; Physical Units [443853 h] | 51,512.52 |  | ZNA | CON |  |
| A56780 |  | Ceramic raised pavement markers | 3d | 2027-03-08 | 2027-03-11 | A56770 |  |  |  |  | 194d | 0d | ICKMO1-cost unite [51512.5 $]; boom truck [200 h]; labor [400 h]; Physical Units [443853 h] | 51,512.52 |  | ZNA | CON |  |
| A56790 |  | Solar powered lighting cateyes pavement markers | 2d | 2027-03-11 | 2027-03-14 | A56780 |  |  |  |  | 213d |  | ICKMO1-cost unite [51512.5 $]; boom truck [200 h]; labor [400 h]; Physical Units [443853 h] | 51,512.52 |  | ZNA | CON |  |
|  | 2 | **Road 2** |  | 2026-08-15 | 2027-03-20 |  |  |  |  |  |  |  |  |  |  |  |  |  |
|  | AGG | **Aggregate Base Course** |  | 2026-08-15 | 2026-09-20 |  |  |  |  |  |  |  |  |  |  |  |  |  |
| A62580 |  | Aggregate base course | 8d | 2026-08-15 A | 2026-09-20 A | A59220, A56660 | 100% |  | 2026-04-27 | 2026-05-05 |  |  | ICKMO1-cost unite [633227 $]; Aggregate base course [3223.11]; Physical Units [5456147 h] | 633,227.14 | 633,227.14 | ZNA | CON | ABC |
|  | BIT | **Bituminous Construction** |  | 2026-08-15 | 2026-09-20 |  |  |  |  |  |  |  |  |  |  |  |  |  |
| A62590 |  | Bituminous base course (Grading I - Class A) | 3d | 2026-08-15 A | 2026-09-20 A | A62580, A62630 | 100% |  | 2026-05-18 | 2026-05-20 |  |  | ICKMO1-cost unite [791534 $]; Bituminous base course [1425.56]; Physical Units [6820184 h] | 791,533.93 | 791,533.93 | ZNA | CON | BBC |
|  | ASP | **Asphalt Wearing Course** |  | 2027-02-17 | 2027-02-22 |  |  |  |  |  |  |  |  |  |  |  |  |  |
| A62600 |  | Bituminous concrete wearing course | 4d | 2027-02-17 | 2027-02-22 | A62590, A56680 |  |  |  |  | 4d | 0d | ICKMO1-cost unite [949841 $]; Bituminous concrete wearing course [761.44]; Physical Units [8184221 h] | 949,840.71 |  | ZNA | CON | BBC |
|  | CON | **Precast Concrete Curb** |  | 2026-08-29 | 2026-11-15 |  |  |  |  |  |  |  |  |  |  |  |  |  |
| A62610 |  | Concrete curb, Type (K1A) | 3d | 2026-08-29 A | 2026-11-09 | A62580 | 28% | 2.16d | 2026-05-06 | 2026-05-09 | -37.44d | 0d | ICKMO1-cost unite [53824.3 $]; Physical Units [463773 h] | 53,824.31 | 15,070.81 | ZNA | CON |  |
| A62620 |  | Concrete curb, Type (K1B) | 3d | 2026-08-29 A | 2026-11-11 | A62610 | 28% | 2.16d | 2026-05-10 | 2026-05-12 | -37.44d | 0d | ICKMO1-cost unite [52241.2 $]; Physical Units [450132 h] | 52,241.24 | 14,627.55 | ZNA | CON |  |
| A62630 |  | Concrete curb, Type (K2) | 4d | 2026-08-29 A | 2026-11-15 | A62620 | 28% | 2.88d | 2026-05-13 | 2026-05-17 | -37.44d | 0d | ICKMO1-cost unite [52241.2 $]; Physical Units [450132 h] | 52,241.24 | 14,627.55 | ZNA | CON |  |

| ID | WBS | Activity | Duration | Start | Finish | Predecessors | Complete | Remaining | Planned start | Planned finish | Total float | Free float | Resources | Cost | Actual cost | ALKHARJ INDUSTERIAL AREA - PROJECT ZONES | ALKHARJ INDUSTERIAL AREA - DECEPLINS | ALKHARJ INDUSTERIAL AREA - ASPHALT WORKS |
| --- | --- | --- | --- | --- | --- | --- | --- | --- | --- | --- | --- | --- | --- | --- | --- | --- | --- | --- |
|  | PAV | **Pavement Markings** |  | 2027-02-22 | 2027-02-27 |  |  |  |  |  |  |  |  |  |  |  |  |  |
| A62640 |  | Retroreflective Thermoplastic White Traffic lines | 2d | 2027-02-22 | 2027-02-24 | A62600 |  |  |  |  | 174d | 0d | ICKMO1-cost unite [158307 $]; Physical Units [1364037 h] | 158,306.79 |  | ZNA | CON |  |
| A62650 |  | Retroreflective Thermoplastic Yellow Traffic lines | 2d | 2027-02-24 | 2027-02-27 | A62640 |  |  |  |  | 174d | 0d | ICKMO1-cost unite [158307 $]; Physical Units [1364037 h] | 158,306.79 |  | ZNA | CON |  |
|  | TRS | **Traffic Signage** |  | 2027-02-27 | 2027-03-20 |  |  |  |  |  |  |  |  |  |  |  |  |  |
| A62660 |  | Traffic signs, ground mounted, 1 Sheet Alumenium, (breakaway) Single post | 3d | 2027-02-27 | 2027-03-02 | A62650 |  |  |  |  | 174d | 0d | ICKMO1-cost unite [52768.9 $]; Physical Units [454679 h] | 52,768.93 |  | ZNA | CON |  |
| A62670 |  | Traffic signs, ground mounted, 2 Sheet Alumenium, (breakaway) Single post | 2d | 2027-03-02 | 2027-03-04 | A62660 |  |  |  |  | 174d | 0d | ICKMO1-cost unite [52768.9 $]; Physical Units [454679 h] | 52,768.93 |  | ZNA | CON |  |
| A62680 |  | Traffic signs, ground mounted, Sheet Alumenium, (breakaway) Double post | 5d | 2027-03-04 | 2027-03-10 | A62670 |  |  |  |  | 174d | 0d | ICKMO1-cost unite [52768.9 $]; Physical Units [454679 h] | 52,768.93 |  | ZNA | CON |  |
| A62690 |  | Retroreflective raised pavement markers (Type A) | 3d | 2027-03-10 | 2027-03-14 | A62680 |  |  |  |  | 189d | 0d | ICKMO1-cost unite [52768.9 $]; Physical Units [454679 h] | 52,768.93 |  | ZNA | CON |  |
| A62700 |  | Ceramic raised pavement markers | 3d | 2027-03-14 | 2027-03-17 | A62690 |  |  |  |  | 189d | 0d | ICKMO1-cost unite [52768.9 $]; Physical Units [454679 h] | 52,768.93 |  | ZNA | CON |  |
| A62710 |  | Solar powered lighting cateyes pavement markers | 2d | 2027-03-17 | 2027-03-20 | A62700 |  |  |  |  | 208d |  | ICKMO1-cost unite [52768.9 $]; Grader [200 h]; Physical Units [454679 h] | 52,768.93 |  | ZNA | CON |  |
|  | 3 | **Road 3** |  | 2026-08-29 | 2027-04-06 |  |  |  |  |  |  |  |  |  |  |  |  |  |
|  | AGG | **Aggregate Base Course** |  | 2026-08-29 | 2026-11-08 |  |  |  |  |  |  |  |  |  |  |  |  |  |
| A56800 |  | Aggregate base course | 6d | 2026-08-29 A | 2026-11-08 | A59280, A62580 | 80% | 1.2d | 2026-05-06 | 2026-05-12 | -82.75d | 0d | ICKMO1-cost unite [904610 $]; Rubber compactor [200 h]; Roller compactor [200 h]; Trailers Truck [400 h]; Aggregate base course [3223.11]; Physical Units [7794496 h] | 904,610.2 | 723,688.16 | ZNA | CON | ABC |
|  | BIT | **Bituminous Construction** |  | 2026-08-29 | 2026-11-24 |  |  |  |  |  |  |  |  |  |  |  |  |  |
| A56810 |  | Bituminous base course (Grading I - Class A) | 5d | 2026-08-29 A | 2026-11-24 | A56800, A56850 | 75% | 1.25d | 2026-05-28 | 2026-06-02 | -45.69d | 13.17d | ICKMO1-cost unite [1130763 $]; labor [600 h]; MC Truck [200 h]; Bituminous base course [1425.56]; Physical Units [9743120 h] | 1,130,762.75 | 848,072.06 | ZNA | CON | BBC |
|  | ASP | **Asphalt Wearing Course** |  | 2027-02-22 | 2027-03-01 |  |  |  |  |  |  |  |  |  |  |  |  |  |
| A56820 |  | Bituminous concrete wearing course | 6d | 2027-02-22 | 2027-03-01 | A56810, A62600 |  |  |  |  | 4d | 0d | ICKMO1-cost unite [1356915 $]; Rubber compactor [200 h]; Roller compactor [200 h]; Trailers Truck [400 h]; Asphalt Paver [200 h]; Bituminous concrete wearing course [761.44]; Physical Units [11691744 h] | 1,356,915.29 |  | ZNA | CON | BBC |
|  | CON | **Precast Concrete Curb** |  | 2026-11-08 | 2026-11-23 |  |  |  |  |  |  |  |  |  |  |  |  |  |
| A56830 |  | Concrete curb, Type (K1A) | 4d | 2026-11-08 | 2026-11-12 | A56800 |  |  |  |  | -45.69d | 0d | ICKMO1-cost unite [75384.2 $]; Physical Units [649541 h] | 75,384.18 |  | ZNA | CON |  |
| A56840 |  | Concrete curb, Type (K1B) | 4d | 2026-11-12 | 2026-11-17 | A56830 |  |  |  |  | -45.69d | 0d | ICKMO1-cost unite [75384.2 $]; labor [800 h]; Physical Units [649541 h] | 75,384.18 |  | ZNA | CON |  |
| A56850 |  | Concrete curb, Type (K2) | 5d | 2026-11-17 | 2026-11-23 | A56840 |  |  |  |  | -45.69d | 0d | ICKMO1-cost unite [75384.2 $]; labor [800 h]; Physical Units [649541 h] | 75,384.18 |  | ZNA | CON |  |
|  | PAV | **Pavement Markings** |  | 2027-03-01 | 2027-03-08 |  |  |  |  |  |  |  |  |  |  |  |  |  |
| A56860 |  | Retroreflective Thermoplastic White Traffic lines | 3d | 2027-03-01 | 2027-03-04 | A56850, A56820 |  |  |  |  | 162d | 0d | ICKMO1-cost unite [226153 $]; labor [400 h]; Marking Machines [200 h]; Physical Units [1948624 h] | 226,152.55 |  | ZNA | CON |  |
| A56870 |  | Retroreflective Thermoplastic Yellow Traffic lines | 3d | 2027-03-04 | 2027-03-08 | A56860 |  |  |  |  | 162d | 0d | ICKMO1-cost unite [226153 $]; labor [400 h]; Marking Machines [200 h]; Physical Units [1948624 h] | 226,152.55 |  | ZNA | CON |  |

| ID | WBS | Activity | Duration | Start | Finish | Predecessors | Complete | Remaining | Planned start | Planned finish | Total float | Free float | Resources | Cost | Actual cost | ALKHARJ INDUSTERIAL AREA - PROJECT ZONES | ALKHARJ INDUSTERIAL AREA - DECEPLINS | ALKHARJ INDUSTERIAL AREA - ASPHALT WORKS |
| --- | --- | --- | --- | --- | --- | --- | --- | --- | --- | --- | --- | --- | --- | --- | --- | --- | --- | --- |
|  | TRS | **Traffic Signage** |  | 2027-03-08 | 2027-04-06 |  |  |  |  |  |  |  |  |  |  |  |  |  |
| A56880 |  | Traffic signs, ground mounted, 1 Sheet Alumenium, (breakaway) Single post | 4d | 2027-03-08 | 2027-03-13 | A56870 |  |  |  |  | 162d | 0d | ICKMO1-cost unite [75384.2 $]; boom truck [200 h]; labor [400 h]; Physical Units [649541 h] | 75,384.18 |  | ZNA | CON |  |
| A56890 |  | Traffic signs, ground mounted, 2 Sheet Alumenium, (breakaway) Single post | 3d | 2027-03-13 | 2027-03-16 | A56880 |  |  |  |  | 162d | 0d | ICKMO1-cost unite [75384.2 $]; boom truck [200 h]; labor [400 h]; Physical Units [649541 h] | 75,384.18 |  | ZNA | CON |  |
| A56900 |  | Traffic signs, ground mounted, Sheet Alumenium, (breakaway) Double post | 7d | 2027-03-16 | 2027-03-24 | A56890 |  |  |  |  | 162d | 0d | ICKMO1-cost unite [75384.2 $]; boom truck [200 h]; labor [400 h]; Physical Units [649541 h] | 75,384.18 |  | ZNA | CON |  |
| A56910 |  | Retroreflective raised pavement markers (Type A) | 4d | 2027-03-24 | 2027-03-29 | A56900 |  |  |  |  | 175d | 0d | ICKMO1-cost unite [75384.2 $]; boom truck [200 h]; labor [400 h]; Physical Units [649541 h] | 75,384.18 |  | ZNA | CON |  |
| A56920 |  | Ceramic raised pavement markers | 4d | 2027-03-29 | 2027-04-03 | A56910 |  |  |  |  | 175d | 0d | ICKMO1-cost unite [75384.2 $]; boom truck [200 h]; labor [400 h]; Physical Units [649541 h] | 75,384.18 |  | ZNA | CON |  |
| A56930 |  | Solar powered lighting cateyes pavement markers | 3d | 2027-04-03 | 2027-04-06 | A56920 |  |  |  |  | 193d |  | ICKMO1-cost unite [75384.2 $]; boom truck [200 h]; labor [400 h]; Physical Units [649541 h] | 75,384.18 |  | ZNA | CON |  |
|  | 4 | **Road 4** |  | 2026-08-29 | 2027-03-14 |  |  |  |  |  |  |  |  |  |  |  |  |  |
|  | AGG | **Aggregate Base Course** |  | 2026-08-29 | 2026-11-08 |  |  |  |  |  |  |  |  |  |  |  |  |  |
| A56940 |  | Aggregate base course | 6d | 2026-08-29 A | 2026-11-08 | A59340, A56800 | 98% | 0.12d | 2026-05-13 | 2026-05-19 | -82.75d | 0d | ICKMO1-cost unite [241229 $]; Aggregate base course [3223.11]; Physical Units [2078532 h] | 241,229.38 | 236,404.8 | ZNA | CON | ABC |
|  | BIT | **Bituminous Construction** |  | 2026-08-29 | 2026-11-16 |  |  |  |  |  |  |  |  |  |  |  |  |  |
| A56950 |  | Bituminous base course (Grading I - Class A) | 1d | 2026-08-29 A | 2026-11-16 | A56940, A56990 | 98% | 0.02d | 2026-05-28 | 2026-05-28 | -38.58d | 20.28d | ICKMO1-cost unite [301537 $]; Bituminous base course [1425.56]; Physical Units [2598165 h] | 301,536.74 | 295,506 | ZNA | CON | BBC |
|  | ASP | **Asphalt Wearing Course** |  | 2027-03-01 | 2027-03-02 |  |  |  |  |  |  |  |  |  |  |  |  |  |
| A56960 |  | Bituminous concrete wearing course | 1d | 2027-03-01 | 2027-03-02 | A56950, A56820 |  |  |  |  | 4d | 0d | ICKMO1-cost unite [361844 $]; Bituminous concrete wearing course [761.44]; Physical Units [3117798 h] | 361,844.08 |  | ZNA | CON | BBC |
|  | CON | **Precast Concrete Curb** |  | 2026-11-08 | 2026-11-16 |  |  |  |  |  |  |  |  |  |  |  |  |  |
| A56970 |  | Concrete curb, Type (K1A) | 3d | 2026-11-08 | 2026-11-11 | A56940 |  |  |  |  | -38.58d | 0d | ICKMO1-cost unite [20504.5 $]; Physical Units [176675 h] | 20,504.5 |  | ZNA | CON |  |
| A56980 |  | Concrete curb, Type (K1B) | 2d | 2026-11-11 | 2026-11-14 | A56970 |  |  |  |  | -38.58d | 0d | ICKMO1-cost unite [19901.4 $]; Physical Units [171479 h] | 19,901.42 |  | ZNA | CON |  |
| A56990 |  | Concrete curb, Type (K2) | 2d | 2026-11-14 | 2026-11-16 | A56980 |  |  |  |  | -38.58d | 0d | ICKMO1-cost unite [19901.4 $]; Physical Units [171479 h] | 19,901.42 |  | ZNA | CON |  |
|  | PAV | **Pavement Markings** |  | 2027-03-02 | 2027-03-04 |  |  |  |  |  |  |  |  |  |  |  |  |  |
| A57000 |  | Retroreflective Thermoplastic White Traffic lines | 1d | 2027-03-02 | 2027-03-03 | A56990, A56960 |  |  |  |  | 192d | 0d | ICKMO1-cost unite [60307.3 $]; Physical Units [519633 h] | 60,307.35 |  | ZNA | CON |  |
| A57010 |  | Retroreflective Thermoplastic Yellow Traffic lines | 1d | 2027-03-03 | 2027-03-04 | A57000 |  |  |  |  | 192d | 0d | ICKMO1-cost unite [60307.3 $]; Physical Units [519633 h] | 60,307.35 |  | ZNA | CON |  |
|  | TRS | **Traffic Signage** |  | 2027-03-04 | 2027-03-14 |  |  |  |  |  |  |  |  |  |  |  |  |  |
| A57020 |  | Traffic signs, ground mounted, 1 Sheet Alumenium, (breakaway) Single post | 1d | 2027-03-04 | 2027-03-06 | A57010 |  |  |  |  | 192d | 0d | ICKMO1-cost unite [20102.5 $]; Physical Units [173211 h] | 20,102.45 |  | ZNA | CON |  |
| A57030 |  | Traffic signs, ground mounted, 2 Sheet Alumenium, (breakaway) Single post | 1d | 2027-03-06 | 2027-03-07 | A57020 |  |  |  |  | 192d | 0d | ICKMO1-cost unite [20102.5 $]; Physical Units [173211 h] | 20,102.45 |  | ZNA | CON |  |
| A57040 |  | Traffic signs, ground mounted, Sheet Alumenium, (breakaway) Double post | 3d | 2027-03-07 | 2027-03-10 | A57030 |  |  |  |  | 192d | 0d | ICKMO1-cost unite [20102.5 $]; Physical Units [173211 h] | 20,102.45 |  | ZNA | CON |  |
| A57050 |  | Retroreflective raised pavement markers (Type A) | 1d | 2027-03-10 | 2027-03-11 | A57040 |  |  |  |  | 193d | 0d | ICKMO1-cost unite [20102.5 $]; Physical Units [173211 h] | 20,102.45 |  | ZNA | CON |  |
| A57060 |  | Ceramic raised pavement markers | 1d | 2027-03-11 | 2027-03-13 | A57050 |  |  |  |  | 193d | 0d | ICKMO1-cost unite [20102.5 $]; Physical Units [173211 h] | 20,102.45 |  | ZNA | CON |  |
| A57070 |  | Solar powered lighting cateyes pavement markers | 1d | 2027-03-13 | 2027-03-14 | A57060 |  |  |  |  | 213d |  | ICKMO1-cost unite [20102.5 $]; Grader [200 h]; Physical Units [173211 h] | 20,102.45 |  | ZNA | CON |  |

| ID | WBS | Activity | Duration | Start | Finish | Predecessors | Complete | Remaining | Planned start | Planned finish | Total float | Free float | Resources | Cost | Actual cost | ALKHARJ INDUSTERIAL AREA - PROJECT ZONES | ALKHARJ INDUSTERIAL AREA - DECEPLINS | ALKHARJ INDUSTERIAL AREA - ASPHALT WORKS |
| --- | --- | --- | --- | --- | --- | --- | --- | --- | --- | --- | --- | --- | --- | --- | --- | --- | --- | --- |
|  | 5 | **Road 5** |  | 2026-08-29 | 2027-03-15 |  |  |  |  |  |  |  |  |  |  |  |  |  |
|  | AGG | **Aggregate Base Course** |  | 2026-08-29 | 2026-11-12 |  |  |  |  |  |  |  |  |  |  |  |  |  |
| A57080 |  | Aggregate base course | 6d | 2026-08-29 A | 2026-11-12 | A59370, A56940 | 30% | 4.2d | 2026-05-20 | 2026-05-26 | -82.75d | 0d | ICKMO1-cost unite [241229 $]; Rubber compactor [200 h]; Roller compactor [200 h]; Trailers Truck [400 h]; Aggregate base course [3223.11]; Physical Units [2078532 h] | 241,229.38 | 72,368.82 | ZNA | CON | ABC |
|  | BIT | **Bituminous Construction** |  | 2026-08-29 | 2026-11-17 |  |  |  |  |  |  |  |  |  |  |  |  |  |
| A57090 |  | Bituminous base course (Grading I - Class A) | 1d | 2026-08-29 A | 2026-11-17 | A57080, A57130 | 15% | 0.85d | 2026-05-31 | 2026-05-31 | -39.61d | 19.25d | ICKMO1-cost unite [301537 $]; labor [600 h]; MC Truck [200 h]; Bituminous base course [1425.56]; Physical Units [2598165 h] | 301,536.74 | 45,230.51 | ZNA | CON | BBC |
|  | ASP | **Asphalt Wearing Course** |  | 2027-03-02 | 2027-03-03 |  |  |  |  |  |  |  |  |  |  |  |  |  |
| A57100 |  | Bituminous concrete wearing course | 1d | 2027-03-02 | 2027-03-03 | A57090, A56960 |  |  |  |  | 4d | 0d | ICKMO1-cost unite [361844 $]; Rubber compactor [200 h]; Roller compactor [200 h]; Trailers Truck [400 h]; Asphalt Paver [200 h]; Bituminous concrete wearing course [761.44]; Physical Units [3117798 h] | 361,844.08 |  | ZNA | CON | BBC |
|  | CON | **Precast Concrete Curb** |  | 2026-11-12 | 2026-11-16 |  |  |  |  |  |  |  |  |  |  |  |  |  |
| A57110 |  | Concrete curb, Type (K1A) | 1d | 2026-11-12 | 2026-11-14 | A57080 |  |  |  |  | -39.61d | 0d | ICKMO1-cost unite [20504.5 $]; Physical Units [176675 h] | 20,504.5 |  | ZNA | CON |  |
| A57120 |  | Concrete curb, Type (K1B) | 1d | 2026-11-14 | 2026-11-15 | A57110 |  |  |  |  | -39.61d | 0d | ICKMO1-cost unite [19901.4 $]; labor [800 h]; Physical Units [171479 h] | 19,901.42 |  | ZNA | CON |  |
| A57130 |  | Concrete curb, Type (K2) | 1d | 2026-11-15 | 2026-11-16 | A57120 |  |  |  |  | -39.61d | 0d | ICKMO1-cost unite [19901.4 $]; labor [800 h]; Physical Units [171479 h] | 19,901.42 |  | ZNA | CON |  |
|  | PAV | **Pavement Markings** |  | 2027-03-03 | 2027-03-06 |  |  |  |  |  |  |  |  |  |  |  |  |  |
| A57140 |  | Retroreflective Thermoplastic White Traffic lines | 1d | 2027-03-03 | 2027-03-04 | A57130, A57100 |  |  |  |  | 173d | 0d | ICKMO1-cost unite [60307.3 $]; labor [400 h]; Marking Machines [200 h]; Physical Units [519633 h] | 60,307.35 |  | ZNA | CON |  |
| A57150 |  | Retroreflective Thermoplastic Yellow Traffic lines | 1d | 2027-03-04 | 2027-03-06 | A57140 |  |  |  |  | 173d | 0d | ICKMO1-cost unite [60307.3 $]; labor [400 h]; Marking Machines [200 h]; Physical Units [519633 h] | 60,307.35 |  | ZNA | CON |  |
|  | TRS | **Traffic Signage** |  | 2027-03-06 | 2027-03-15 |  |  |  |  |  |  |  |  |  |  |  |  |  |
| A57160 |  | Traffic signs, ground mounted, 1 Sheet Alumenium, (breakaway) Single post | 1d | 2027-03-06 | 2027-03-07 | A57150 |  |  |  |  | 173d | 0d | ICKMO1-cost unite [20102.5 $]; boom truck [200 h]; labor [400 h]; Physical Units [173211 h] | 20,102.45 |  | ZNA | CON |  |
| A57170 |  | Traffic signs, ground mounted, 2 Sheet Alumenium, (breakaway) Single post | 1d | 2027-03-07 | 2027-03-08 | A57160 |  |  |  |  | 173d | 0d | ICKMO1-cost unite [20102.5 $]; boom truck [200 h]; labor [400 h]; Physical Units [173211 h] | 20,102.45 |  | ZNA | CON |  |
| A57180 |  | Traffic signs, ground mounted, Sheet Alumenium, (breakaway) Double post | 3d | 2027-03-08 | 2027-03-11 | A57170 |  |  |  |  | 173d | 0d | ICKMO1-cost unite [20102.5 $]; boom truck [200 h]; labor [400 h]; Physical Units [173211 h] | 20,102.45 |  | ZNA | CON |  |
| A57190 |  | Retroreflective raised pavement markers (Type A) | 1d | 2027-03-11 | 2027-03-13 | A57180 |  |  |  |  | 192d | 0d | ICKMO1-cost unite [20102.5 $]; boom truck [200 h]; labor [400 h]; Physical Units [173211 h] | 20,102.45 |  | ZNA | CON |  |
| A57200 |  | Ceramic raised pavement markers | 1d | 2027-03-13 | 2027-03-14 | A57190 |  |  |  |  | 192d | 0d | ICKMO1-cost unite [20102.5 $]; boom truck [200 h]; labor [400 h]; Physical Units [173211 h] | 20,102.45 |  | ZNA | CON |  |
| A57210 |  | Solar powered lighting cateyes pavement markers | 1d | 2027-03-14 | 2027-03-15 | A57200 |  |  |  |  | 212d |  | ICKMO1-cost unite [20102.5 $]; boom truck [200 h]; labor [400 h]; Physical Units [173211 h] | 20,102.45 |  | ZNA | CON |  |
|  | 6 | **Road 6** |  | 2026-08-29 | 2027-03-16 |  |  |  |  |  |  |  |  |  |  |  |  |  |
|  | AGG | **Aggregate Base Course** |  | 2026-08-29 | 2026-11-17 |  |  |  |  |  |  |  |  |  |  |  |  |  |
| A57220 |  | Aggregate base course | 6d | 2026-08-29 A | 2026-11-17 | A59400, A57080 | 35% | 3.9d | 2026-05-27 | 2026-06-02 | -82.75d | 0d | ICKMO1-cost unite [241229 $]; Aggregate base course [3223.11]; Physical Units [2078532 h] | 241,229.38 | 84,430.28 | ZNA | CON | ABC |

| ID | WBS | Activity | Duration | Start | Finish | Predecessors | Complete | Remaining | Planned start | Planned finish | Total float | Free float | Resources | Cost | Actual cost | ALKHARJ INDUSTERIAL AREA - PROJECT ZONES | ALKHARJ INDUSTERIAL AREA - DECEPLINS | ALKHARJ INDUSTERIAL AREA - ASPHALT WORKS |
| --- | --- | --- | --- | --- | --- | --- | --- | --- | --- | --- | --- | --- | --- | --- | --- | --- | --- | --- |
|  | BIT | **Bituminous Construction** |  | 2026-08-29 | 2026-11-26 |  |  |  |  |  |  |  |  |  |  |  |  |  |
| A57230 |  | Bituminous base course (Grading I - Class A) | 5d | 2026-08-29 A | 2026-11-26 | A57220, A57270 | 10% | 4.5d | 2026-06-07 | 2026-06-11 | -47.16d | 11.56d | ICKMO1-cost unite [301537 $]; Bituminous base course [1425.56]; Physical Units [2598165 h] | 301,536.74 | 30,153.67 | ZNA | CON | BBC |
|  | ASP | **Asphalt Wearing Course** |  | 2027-03-03 | 2027-03-04 |  |  |  |  |  |  |  |  |  |  |  |  |  |
| A57240 |  | Bituminous concrete wearing course | 1d | 2027-03-03 | 2027-03-04 | A57230, A57100 |  |  |  |  | 4d | 0d | ICKMO1-cost unite [361844 $]; Bituminous concrete wearing course [761.44]; Physical Units [3117798 h] | 361,844.08 |  | ZNA | CON | BBC |
|  | CON | **Precast Concrete Curb** |  | 2026-11-17 | 2026-11-21 |  |  |  |  |  |  |  |  |  |  |  |  |  |
| A57250 |  | Concrete curb, Type (K1A) | 1d | 2026-11-17 | 2026-11-18 | A57220 |  |  |  |  | -47.16d | 0d | ICKMO1-cost unite [20504.5 $]; Physical Units [176675 h] | 20,504.5 |  | ZNA | CON |  |
| A57260 |  | Concrete curb, Type (K1B) | 1d | 2026-11-18 | 2026-11-19 | A57250 |  |  |  |  | -47.16d | 0d | ICKMO1-cost unite [19901.4 $]; Physical Units [171479 h] | 19,901.42 |  | ZNA | CON |  |
| A57270 |  | Concrete curb, Type (K2) | 1d | 2026-11-19 | 2026-11-21 | A57260 |  |  |  |  | -47.16d | 0d | ICKMO1-cost unite [19901.4 $]; Physical Units [171479 h] | 19,901.42 |  | ZNA | CON |  |
|  | PAV | **Pavement Markings** |  | 2027-03-04 | 2027-03-07 |  |  |  |  |  |  |  |  |  |  |  |  |  |
| A57280 |  | Retroreflective Thermoplastic White Traffic lines | 1d | 2027-03-04 | 2027-03-06 | A57270, A57240 |  |  |  |  | 172d | 0d | ICKMO1-cost unite [60307.3 $]; Physical Units [519633 h] | 60,307.35 |  | ZNA | CON |  |
| A57290 |  | Retroreflective Thermoplastic Yellow Traffic lines | 1d | 2027-03-06 | 2027-03-07 | A57280 |  |  |  |  | 172d | 0d | ICKMO1-cost unite [60307.3 $]; Physical Units [519633 h] | 60,307.35 |  | ZNA | CON |  |
|  | TRS | **Traffic Signage** |  | 2027-03-07 | 2027-03-16 |  |  |  |  |  |  |  |  |  |  |  |  |  |
| A57300 |  | Traffic signs, ground mounted, 1 Sheet Alumenium, (breakaway) Single post | 1d | 2027-03-07 | 2027-03-08 | A57290 |  |  |  |  | 172d | 0d | ICKMO1-cost unite [20102.5 $]; Physical Units [173211 h] | 20,102.45 |  | ZNA | CON |  |
| A57310 |  | Traffic signs, ground mounted, 2 Sheet Alumenium, (breakaway) Single post | 1d | 2027-03-08 | 2027-03-09 | A57300 |  |  |  |  | 172d | 0d | ICKMO1-cost unite [20102.5 $]; Physical Units [173211 h] | 20,102.45 |  | ZNA | CON |  |
| A57320 |  | Traffic signs, ground mounted, Sheet Alumenium, (breakaway) Double post | 3d | 2027-03-09 | 2027-03-13 | A57310 |  |  |  |  | 172d | 0d | ICKMO1-cost unite [20102.5 $]; Physical Units [173211 h] | 20,102.45 |  | ZNA | CON |  |
| A57330 |  | Retroreflective raised pavement markers (Type A) | 1d | 2027-03-13 | 2027-03-14 | A57320 |  |  |  |  | 191d | 0d | ICKMO1-cost unite [20102.5 $]; Physical Units [173211 h] | 20,102.45 |  | ZNA | CON |  |
| A57340 |  | Ceramic raised pavement markers | 1d | 2027-03-14 | 2027-03-15 | A57330 |  |  |  |  | 191d | 0d | ICKMO1-cost unite [20102.5 $]; Physical Units [173211 h] | 20,102.45 |  | ZNA | CON |  |
| A57350 |  | Solar powered lighting cateyes pavement markers | 1d | 2027-03-15 | 2027-03-16 | A57340 |  |  |  |  | 211d |  | ICKMO1-cost unite [20102.5 $]; Grader [200 h]; Physical Units [173211 h] | 20,102.45 |  | ZNA | CON |  |
|  | 7 | **Road 7** |  | 2026-08-29 | 2027-03-17 |  |  |  |  |  |  |  |  |  |  |  |  |  |
|  | AGG | **Aggregate Base Course** |  | 2026-08-29 | 2026-11-17 |  |  |  |  |  |  |  |  |  |  |  |  |  |
| A57360 |  | Aggregate base course | 6d | 2026-08-29 A | 2026-11-17 | A59430, A57220 | 98% | 0.12d | 2026-06-03 | 2026-06-09 | -82.75d | 0d | ICKMO1-cost unite [241229 $]; Rubber compactor [200 h]; Roller compactor [200 h]; Trailers Truck [400 h]; Aggregate base course [3223.11]; Physical Units [2078532 h] | 241,229.38 | 236,404.8 | ZNA | CON | ABC |
|  | BIT | **Bituminous Construction** |  | 2026-08-29 | 2026-11-21 |  |  |  |  |  |  |  |  |  |  |  |  |  |
| A57370 |  | Bituminous base course (Grading I - Class A) | 5d | 2026-08-29 A | 2026-11-21 | A57360, A57410 | 98% | 0.1d | 2026-06-14 | 2026-06-18 | -42.88d | 15.98d | ICKMO1-cost unite [301537 $]; labor [600 h]; MC Truck [200 h]; Bituminous base course [1425.56]; Physical Units [2598165 h] | 301,536.74 | 295,506 | ZNA | CON | BBC |
|  | ASP | **Asphalt Wearing Course** |  | 2027-03-04 | 2027-03-06 |  |  |  |  |  |  |  |  |  |  |  |  |  |
| A57380 |  | Bituminous concrete wearing course | 1d | 2027-03-04 | 2027-03-06 | A57370, A57240 |  |  |  |  | 4d | 0d | ICKMO1-cost unite [361844 $]; Rubber compactor [200 h]; Roller compactor [200 h]; Trailers Truck [400 h]; Asphalt Paver [200 h]; Bituminous concrete wearing course [761.44]; Physical Units [3117798 h] | 361,844.08 |  | ZNA | CON | BBC |

| ID | WBS | Activity | Duration | Start | Finish | Predecessors | Complete | Planned start | Planned finish | Total float | Free float | Resources | Cost | Actual cost | ALKHARJ INDUSTERIAL AREA - PROJECT ZONES | ALKHARJ INDUSTERIAL AREA - DECEPLINS | ALKHARJ INDUSTERIAL AREA - ASPHALT WORKS |
| --- | --- | --- | --- | --- | --- | --- | --- | --- | --- | --- | --- | --- | --- | --- | --- | --- | --- |
|  | CON | **Precast Concrete Curb** |  | 2026-11-17 | 2026-11-21 |  |  |  |  |  |  |  |  |  |  |  |  |
| A57390 |  | Concrete curb, Type (K1A) | 1d | 2026-11-17 | 2026-11-18 | A57360 |  |  |  | -42.88d | 0d | ICKMO1-cost unite [20504.5 $]; Physical Units [176675 h] | 20,504.5 |  | ZNA | CON |  |
| A57400 |  | Concrete curb, Type (K1B) | 1d | 2026-11-18 | 2026-11-19 | A57390 |  |  |  | -42.88d | 0d | ICKMO1-cost unite [19901.4 $]; labor [800 h]; Physical Units [171479 h] | 19,901.42 |  | ZNA | CON |  |
| A57410 |  | Concrete curb, Type (K2) | 1d | 2026-11-19 | 2026-11-21 | A57400 |  |  |  | -42.88d | 0d | ICKMO1-cost unite [19901.4 $]; labor [800 h]; Physical Units [171479 h] | 19,901.42 |  | ZNA | CON |  |
|  | PAV | **Pavement Markings** |  | 2027-03-06 | 2027-03-08 |  |  |  |  |  |  |  |  |  |  |  |  |
| A57420 |  | Retroreflective Thermoplastic White Traffic lines | 1d | 2027-03-06 | 2027-03-07 | A57410, A57380 |  |  |  | 171d | 0d | ICKMO1-cost unite [60307.3 $]; labor [400 h]; Marking Machines [200 h]; Physical Units [519633 h] | 60,307.35 |  | ZNA | CON |  |
| A57430 |  | Retroreflective Thermoplastic Yellow Traffic lines | 1d | 2027-03-07 | 2027-03-08 | A57420 |  |  |  | 171d | 0d | ICKMO1-cost unite [60307.3 $]; labor [400 h]; Marking Machines [200 h]; Physical Units [519633 h] | 60,307.35 |  | ZNA | CON |  |
|  | TRS | **Traffic Signage** |  | 2027-03-08 | 2027-03-17 |  |  |  |  |  |  |  |  |  |  |  |  |
| A57440 |  | Traffic signs, ground mounted, 1 Sheet Alumenium, (breakaway) Single post | 1d | 2027-03-08 | 2027-03-09 | A57430 |  |  |  | 171d | 0d | ICKMO1-cost unite [20102.5 $]; boom truck [200 h]; labor [400 h]; Physical Units [173211 h] | 20,102.45 |  | ZNA | CON |  |
| A57450 |  | Traffic signs, ground mounted, 2 Sheet Alumenium, (breakaway) Single post | 1d | 2027-03-09 | 2027-03-10 | A57440 |  |  |  | 171d | 0d | ICKMO1-cost unite [20102.5 $]; boom truck [200 h]; labor [400 h]; Physical Units [173211 h] | 20,102.45 |  | ZNA | CON |  |
| A57460 |  | Traffic signs, ground mounted, Sheet Alumenium, (breakaway) Double post | 3d | 2027-03-10 | 2027-03-14 | A57450 |  |  |  | 171d | 0d | ICKMO1-cost unite [20102.5 $]; boom truck [200 h]; labor [400 h]; Physical Units [173211 h] | 20,102.45 |  | ZNA | CON |  |
| A57470 |  | Retroreflective raised pavement markers (Type A) | 1d | 2027-03-14 | 2027-03-15 | A57460 |  |  |  | 190d | 0d | ICKMO1-cost unite [20102.5 $]; boom truck [200 h]; labor [400 h]; Physical Units [173211 h] | 20,102.45 |  | ZNA | CON |  |
| A57480 |  | Ceramic raised pavement markers | 1d | 2027-03-15 | 2027-03-16 | A57470 |  |  |  | 190d | 0d | ICKMO1-cost unite [20102.5 $]; boom truck [200 h]; labor [400 h]; Physical Units [173211 h] | 20,102.45 |  | ZNA | CON |  |
| A57490 |  | Solar powered lighting cateyes pavement markers | 1d | 2027-03-16 | 2027-03-17 | A57480 |  |  |  | 210d |  | ICKMO1-cost unite [20102.5 $]; boom truck [200 h]; labor [400 h]; Physical Units [173211 h] | 20,102.45 |  | ZNA | CON |  |
|  | 8 | **Road 8** |  | 2026-08-15 | 2027-03-18 |  |  |  |  |  |  |  |  |  |  |  |  |
|  | AGG | **Aggregate Base Course** |  | 2026-08-15 | 2026-09-20 |  |  |  |  |  |  |  |  |  |  |  |  |
| A57500 |  | Aggregate base course | 6d | 2026-08-15 A | 2026-09-20 A | A59460, A57360 | 100% | 2026-06-10 | 2026-06-16 |  |  | ICKMO1-cost unite [241229 $]; Aggregate base course [3223.11]; Physical Units [2078532 h] | 241,229.38 | 241,229.38 | ZNA | CON | ABC |
|  | BIT | **Bituminous Construction** |  | 2026-08-15 | 2026-09-20 |  |  |  |  |  |  |  |  |  |  |  |  |
| A57510 |  | Bituminous base course (Grading I - Class A) | 5d | 2026-08-15 A | 2026-09-20 A | A57500, A57550 | 100% | 2026-06-21 | 2026-06-25 |  |  | ICKMO1-cost unite [301537 $]; Bituminous base course [1425.56]; Physical Units [2598165 h] | 301,536.74 | 301,536.74 | ZNA | CON | BBC |
|  | ASP | **Asphalt Wearing Course** |  | 2027-03-06 | 2027-03-07 |  |  |  |  |  |  |  |  |  |  |  |  |
| A57520 |  | Bituminous concrete wearing course | 1d | 2027-03-06 | 2027-03-07 | A57510, A57380 |  |  |  | 4d | 0d | ICKMO1-cost unite [361844 $]; Bituminous concrete wearing course [761.44]; Physical Units [3117798 h] | 361,844.08 |  | ZNA | CON | BBC |
|  | CON | **Precast Concrete Curb** |  | 2026-11-17 | 2026-11-21 |  |  |  |  |  |  |  |  |  |  |  |  |
| A57530 |  | Concrete curb, Type (K1A) | 1d | 2026-11-17 | 2026-11-18 | A57500 |  |  |  | -42.78d | 0d | ICKMO1-cost unite [20504.5 $]; Physical Units [176675 h] | 20,504.5 |  | ZNA | CON |  |
| A57540 |  | Concrete curb, Type (K1B) | 1d | 2026-11-18 | 2026-11-19 | A57530 |  |  |  | -42.78d | 0d | ICKMO1-cost unite [19901.4 $]; Physical Units [171479 h] | 19,901.42 |  | ZNA | CON |  |
| A57550 |  | Concrete curb, Type (K2) | 1d | 2026-11-19 | 2026-11-21 | A57540 |  |  |  | -42.78d | 0d | ICKMO1-cost unite [19901.4 $]; Physical Units [171479 h] | 19,901.42 |  | ZNA | CON |  |

| ID | WBS | Activity | Duration | Start | Finish | Predecessors | Complete | Remaining | Planned start | Planned finish | Total float | Free float | Resources | Cost | Actual cost | ALKHARJ INDUSTERIAL AREA - PROJECT ZONES | ALKHARJ INDUSTERIAL AREA - DECEPLINS | ALKHARJ INDUSTERIAL AREA - ASPHALT WORKS |
| --- | --- | --- | --- | --- | --- | --- | --- | --- | --- | --- | --- | --- | --- | --- | --- | --- | --- | --- |
|  | PAV | **Pavement Markings** |  | 2027-03-07 | 2027-03-09 |  |  |  |  |  |  |  |  |  |  |  |  |  |
| A57560 |  | Retroreflective Thermoplastic White Traffic lines | 1d | 2027-03-07 | 2027-03-08 | A57550, A57520 |  |  |  |  | 170d | 0d | ICKMO1-cost unite [60307.3 $]; Physical Units [519633 h] | 60,307.35 |  | ZNA | CON |  |
| A57570 |  | Retroreflective Thermoplastic Yellow Traffic lines | 1d | 2027-03-08 | 2027-03-09 | A57560 |  |  |  |  | 170d | 0d | ICKMO1-cost unite [60307.3 $]; Physical Units [519633 h] | 60,307.35 |  | ZNA | CON |  |
|  | TRS | **Traffic Signage** |  | 2027-03-09 | 2027-03-18 |  |  |  |  |  |  |  |  |  |  |  |  |  |
| A57580 |  | Traffic signs, ground mounted, 1 Sheet Alumenium, (breakaway) Single post | 1d | 2027-03-09 | 2027-03-10 | A57570 |  |  |  |  | 170d | 0d | ICKMO1-cost unite [20102.5 $]; Physical Units [173211 h] | 20,102.45 |  | ZNA | CON |  |
| A57590 |  | Traffic signs, ground mounted, 2 Sheet Alumenium, (breakaway) Single post | 1d | 2027-03-10 | 2027-03-11 | A57580 |  |  |  |  | 170d | 0d | ICKMO1-cost unite [20102.5 $]; Physical Units [173211 h] | 20,102.45 |  | ZNA | CON |  |
| A57600 |  | Traffic signs, ground mounted, Sheet Alumenium, (breakaway) Double post | 3d | 2027-03-11 | 2027-03-15 | A57590 |  |  |  |  | 170d | 0d | ICKMO1-cost unite [20102.5 $]; Physical Units [173211 h] | 20,102.45 |  | ZNA | CON |  |
| A57610 |  | Retroreflective raised pavement markers (Type A) | 1d | 2027-03-15 | 2027-03-16 | A57600 |  |  |  |  | 189d | 0d | ICKMO1-cost unite [20102.5 $]; Physical Units [173211 h] | 20,102.45 |  | ZNA | CON |  |
| A57620 |  | Ceramic raised pavement markers | 1d | 2027-03-16 | 2027-03-17 | A57610 |  |  |  |  | 189d | 0d | ICKMO1-cost unite [20102.5 $]; Physical Units [173211 h] | 20,102.45 |  | ZNA | CON |  |
| A57630 |  | Solar powered lighting cateyes pavement markers | 1d | 2027-03-17 | 2027-03-18 | A57620 |  |  |  |  | 209d |  | ICKMO1-cost unite [20102.5 $]; Grader [200 h]; Physical Units [173211 h] | 20,102.45 |  | ZNA | CON |  |
|  | 9 | **Road 9** |  | 2026-08-15 | 2027-03-20 |  |  |  |  |  |  |  |  |  |  |  |  |  |
|  | AGG | **Aggregate Base Course** |  | 2026-08-15 | 2026-09-20 |  |  |  |  |  |  |  |  |  |  |  |  |  |
| A57640 |  | Aggregate base course | 6d | 2026-08-15 A | 2026-09-20 A | A59490, A57500 | 100% |  | 2026-06-17 | 2026-06-23 |  |  | ICKMO1-cost unite [241229 $]; Rubber compactor [200 h]; Roller compactor [200 h]; Trailers Truck [400 h]; Aggregate base course [3223.11]; Physical Units [2078532 h] | 241,229.38 | 241,229.38 | ZNA | CON | ABC |
|  | BIT | **Bituminous Construction** |  | 2026-08-29 | 2026-11-21 |  |  |  |  |  |  |  |  |  |  |  |  |  |
| A57650 |  | Bituminous base course (Grading I - Class A) | 5d | 2026-08-29 A | 2026-11-21 | A57640, A57690 | 98% | 0.1d | 2026-06-28 | 2026-07-02 | -42.88d | 15.98d | ICKMO1-cost unite [301537 $]; labor [600 h]; MC Truck [200 h]; Bituminous base course [1425.56]; Physical Units [2598165 h] | 301,536.74 | 295,506 | ZNA | CON | BBC |
|  | ASP | **Asphalt Wearing Course** |  | 2027-03-07 | 2027-03-08 |  |  |  |  |  |  |  |  |  |  |  |  |  |
| A57660 |  | Bituminous concrete wearing course | 1d | 2027-03-07 | 2027-03-08 | A57650, A57520 |  |  |  |  | 4d | 0d | ICKMO1-cost unite [361844 $]; Rubber compactor [200 h]; Roller compactor [200 h]; Trailers Truck [400 h]; Asphalt Paver [200 h]; Bituminous concrete wearing course [761.44]; Physical Units [3117798 h] | 361,844.08 |  | ZNA | CON | BBC |
|  | CON | **Precast Concrete Curb** |  | 2026-11-17 | 2026-11-21 |  |  |  |  |  |  |  |  |  |  |  |  |  |
| A57670 |  | Concrete curb, Type (K1A) | 1d | 2026-11-17 | 2026-11-18 | A57640 |  |  |  |  | -42.88d | 0d | ICKMO1-cost unite [20504.5 $]; Physical Units [176675 h] | 20,504.5 |  | ZNA | CON |  |
| A57680 |  | Concrete curb, Type (K1B) | 1d | 2026-11-18 | 2026-11-19 | A57670 |  |  |  |  | -42.88d | 0d | ICKMO1-cost unite [19901.4 $]; labor [800 h]; Physical Units [171479 h] | 19,901.42 |  | ZNA | CON |  |
| A57690 |  | Concrete curb, Type (K2) | 1d | 2026-11-19 | 2026-11-21 | A57680 |  |  |  |  | -42.88d | 0d | ICKMO1-cost unite [19901.4 $]; labor [800 h]; Physical Units [171479 h] | 19,901.42 |  | ZNA | CON |  |
|  | PAV | **Pavement Markings** |  | 2027-03-08 | 2027-03-10 |  |  |  |  |  |  |  |  |  |  |  |  |  |
| A57700 |  | Retroreflective Thermoplastic White Traffic lines | 1d | 2027-03-08 | 2027-03-09 | A57690, A57660 |  |  |  |  | 169d | 0d | ICKMO1-cost unite [60307.3 $]; labor [400 h]; Marking Machines [200 h]; Physical Units [519633 h] | 60,307.35 |  | ZNA | CON |  |
| A57710 |  | Retroreflective Thermoplastic Yellow Traffic lines | 1d | 2027-03-09 | 2027-03-10 | A57700 |  |  |  |  | 169d | 0d | ICKMO1-cost unite [60307.3 $]; labor [400 h]; Marking Machines [200 h]; Physical Units [519633 h] | 60,307.35 |  | ZNA | CON |  |

| ID | WBS | Activity | Duration | Start | Finish | Predecessors | Complete | Remaining | Planned start | Planned finish | Total float | Free float | Resources | Cost | Actual cost | ALKHARJ INDUSTERIAL AREA - PROJECT ZONES | ALKHARJ INDUSTERIAL AREA - DECEPLINS | ALKHARJ INDUSTERIAL AREA - ASPHALT WORKS |
| --- | --- | --- | --- | --- | --- | --- | --- | --- | --- | --- | --- | --- | --- | --- | --- | --- | --- | --- |
|  | TRS | **Traffic Signage** |  | 2027-03-10 | 2027-03-20 |  |  |  |  |  |  |  |  |  |  |  |  |  |
| A57720 |  | Traffic signs, ground mounted, 1 Sheet Alumenium, (breakaway) Single post | 1d | 2027-03-10 | 2027-03-11 | A57710 |  |  |  |  | 169d | 0d | ICKMO1-cost unite [20102.5 $]; boom truck [200 h]; labor [400 h]; Physical Units [173211 h] | 20,102.45 |  | ZNA | CON |  |
| A57730 |  | Traffic signs, ground mounted, 2 Sheet Alumenium, (breakaway) Single post | 1d | 2027-03-11 | 2027-03-13 | A57720 |  |  |  |  | 169d | 0d | ICKMO1-cost unite [20102.5 $]; boom truck [200 h]; labor [400 h]; Physical Units [173211 h] | 20,102.45 |  | ZNA | CON |  |
| A57740 |  | Traffic signs, ground mounted, Sheet Alumenium, (breakaway) Double post | 3d | 2027-03-13 | 2027-03-16 | A57730 |  |  |  |  | 169d | 0d | ICKMO1-cost unite [20102.5 $]; boom truck [200 h]; labor [400 h]; Physical Units [173211 h] | 20,102.45 |  | ZNA | CON |  |
| A57750 |  | Retroreflective raised pavement markers (Type A) | 1d | 2027-03-16 | 2027-03-17 | A57740 |  |  |  |  | 188d | 0d | ICKMO1-cost unite [20102.5 $]; boom truck [200 h]; labor [400 h]; Physical Units [173211 h] | 20,102.45 |  | ZNA | CON |  |
| A57760 |  | Ceramic raised pavement markers | 1d | 2027-03-17 | 2027-03-18 | A57750 |  |  |  |  | 188d | 0d | ICKMO1-cost unite [20102.5 $]; boom truck [200 h]; labor [400 h]; Physical Units [173211 h] | 20,102.45 |  | ZNA | CON |  |
| A57770 |  | Solar powered lighting cateyes pavement markers | 1d | 2027-03-18 | 2027-03-20 | A57760 |  |  |  |  | 208d |  | ICKMO1-cost unite [20102.5 $]; Grader [200 h]; boom truck [200 h]; labor [400 h]; Physical Units [173211 h] | 20,102.45 |  | ZNA | CON |  |
|  | 10 | **Road 10** |  | 2026-08-29 | 2027-03-21 |  |  |  |  |  |  |  |  |  |  |  |  |  |
|  | AGG | **Aggregate Base Course** |  | 2026-08-29 | 2026-11-17 |  |  |  |  |  |  |  |  |  |  |  |  |  |
| A57780 |  | Aggregate base course | 6d | 2026-08-29 A | 2026-11-17 | A59520, A57640 | 98% | 0.12d | 2026-06-24 | 2026-06-30 | -82.75d | 0d | ICKMO1-cost unite [241229 $]; Rubber compactor [200 h]; Roller compactor [200 h]; Trailers Truck [400 h]; Aggregate base course [3223.11]; Physical Units [2078532 h] | 241,229.38 | 236,404.8 | ZNA | CON | ABC |
|  | BIT | **Bituminous Construction** |  | 2026-08-29 | 2026-11-22 |  |  |  |  |  |  |  |  |  |  |  |  |  |
| A57790 |  | Bituminous base course (Grading I - Class A) | 5d | 2026-08-29 A | 2026-11-22 | A57780, A57830 | 85% | 0.75d | 2026-07-05 | 2026-07-09 | -43.65d | 15.21d | ICKMO1-cost unite [301537 $]; labor [600 h]; MC Truck [200 h]; Bituminous base course [1425.56]; Physical Units [2598165 h] | 301,536.74 | 256,306.23 | ZNA | CON | BBC |
|  | ASP | **Asphalt Wearing Course** |  | 2027-03-08 | 2027-03-09 |  |  |  |  |  |  |  |  |  |  |  |  |  |
| A57800 |  | Bituminous concrete wearing course | 1d | 2027-03-08 | 2027-03-09 | A57790, A57660 |  |  |  |  | 4d | 0d | ICKMO1-cost unite [361844 $]; Rubber compactor [200 h]; Roller compactor [200 h]; Trailers Truck [400 h]; Asphalt Paver [200 h]; Bituminous concrete wearing course [761.44]; Physical Units [3117798 h] | 361,844.08 |  | ZNA | CON | BBC |
|  | CON | **Precast Concrete Curb** |  | 2026-11-17 | 2026-11-21 |  |  |  |  |  |  |  |  |  |  |  |  |  |
| A57810 |  | Concrete curb, Type (K1A) | 1d | 2026-11-17 | 2026-11-18 | A57780 |  |  |  |  | -43.65d | 0d | ICKMO1-cost unite [20504.5 $]; Physical Units [176675 h] | 20,504.5 |  | ZNA | CON |  |
| A57820 |  | Concrete curb, Type (K1B) | 1d | 2026-11-18 | 2026-11-19 | A57810 |  |  |  |  | -43.65d | 0d | ICKMO1-cost unite [19901.4 $]; labor [800 h]; Physical Units [171479 h] | 19,901.42 |  | ZNA | CON |  |
| A57830 |  | Concrete curb, Type (K2) | 1d | 2026-11-19 | 2026-11-21 | A57820 |  |  |  |  | -43.65d | 0d | ICKMO1-cost unite [19901.4 $]; labor [800 h]; Physical Units [171479 h] | 19,901.42 |  | ZNA | CON |  |
|  | PAV | **Pavement Markings** |  | 2027-03-09 | 2027-03-11 |  |  |  |  |  |  |  |  |  |  |  |  |  |
| A57840 |  | Retroreflective Thermoplastic White Traffic lines | 1d | 2027-03-09 | 2027-03-10 | A57830, A57800 |  |  |  |  | 168d | 0d | ICKMO1-cost unite [60307.3 $]; labor [400 h]; Marking Machines [200 h]; Physical Units [519633 h] | 60,307.35 |  | ZNA | CON |  |
| A57850 |  | Retroreflective Thermoplastic Yellow Traffic lines | 1d | 2027-03-10 | 2027-03-11 | A57840 |  |  |  |  | 168d | 0d | ICKMO1-cost unite [60307.3 $]; labor [400 h]; Marking Machines [200 h]; Physical Units [519633 h] | 60,307.35 |  | ZNA | CON |  |
|  | TRS | **Traffic Signage** |  | 2027-03-11 | 2027-03-21 |  |  |  |  |  |  |  |  |  |  |  |  |  |
| A57860 |  | Traffic signs, ground mounted, 1 Sheet Alumenium, (breakaway) Single post | 1d | 2027-03-11 | 2027-03-13 | A57850 |  |  |  |  | 168d | 0d | ICKMO1-cost unite [20102.5 $]; boom truck [200 h]; labor [400 h]; Physical Units [173211 h] | 20,102.45 |  | ZNA | CON |  |
| A57870 |  | Traffic signs, ground mounted, 2 Sheet Alumenium, (breakaway) Single post | 1d | 2027-03-13 | 2027-03-14 | A57860 |  |  |  |  | 168d | 0d | ICKMO1-cost unite [20102.5 $]; boom truck [200 h]; labor [400 h]; Physical Units [173211 h] | 20,102.45 |  | ZNA | CON |  |
| A57880 |  | Traffic signs, ground mounted, Sheet Alumenium, (breakaway) Double post | 3d | 2027-03-14 | 2027-03-17 | A57870 |  |  |  |  | 168d | 0d | ICKMO1-cost unite [20102.5 $]; boom truck [200 h]; labor [400 h]; Physical Units [173211 h] | 20,102.45 |  | ZNA | CON |  |
| A57890 |  | Retroreflective raised pavement markers (Type A) | 1d | 2027-03-17 | 2027-03-18 | A57880 |  |  |  |  | 187d | 0d | ICKMO1-cost unite [20102.5 $]; boom truck [200 h]; labor [400 h]; Physical Units [173211 h] | 20,102.45 |  | ZNA | CON |  |
| A57900 |  | Ceramic raised pavement markers | 1d | 2027-03-18 | 2027-03-20 | A57890 |  |  |  |  | 187d | 0d | ICKMO1-cost unite [20102.5 $]; boom truck [200 h]; labor [400 h]; Physical Units [173211 h] | 20,102.45 |  | ZNA | CON |  |
| A57910 |  | Solar powered lighting cateyes pavement markers | 1d | 2027-03-20 | 2027-03-21 | A57900 |  |  |  |  | 207d |  | ICKMO1-cost unite [20102.5 $]; Grader [200 h]; boom truck [200 h]; labor [400 h]; Physical Units [173211 h] | 20,102.45 |  | ZNA | CON |  |

| ID | WBS | Activity | Duration | Start | Finish | Predecessors | Complete | Remaining | Planned start | Planned finish | Total float | Free float | Resources | Cost | Actual cost | ALKHARJ INDUSTERIAL AREA - PROJECT ZONES | ALKHARJ INDUSTERIAL AREA - DECEPLINS | ALKHARJ INDUSTERIAL AREA - ASPHALT WORKS |
| --- | --- | --- | --- | --- | --- | --- | --- | --- | --- | --- | --- | --- | --- | --- | --- | --- | --- | --- |
|  | 11 | **Road 11** |  | 2026-08-29 | 2027-03-22 |  |  |  |  |  |  |  |  |  |  |  |  |  |
|  | AGG | **Aggregate Base Course** |  | 2026-08-29 | 2026-11-17 |  |  |  |  |  |  |  |  |  |  |  |  |  |
| A57920 |  | Aggregate base course | 6d | 2026-08-29 A | 2026-11-17 | A59550, A57780 | 99% | 0.06d | 2026-07-01 | 2026-07-07 | -58.72d | 0d | ICKMO1-cost unite [241229 $]; Rubber compactor [200 h]; Roller compactor [200 h]; Trailers Truck [400 h]; Aggregate base course [3223.11]; Physical Units [2078532 h] | 241,229.38 | 238,817.09 | ZNA | CON | ABC |
|  | BIT | **Bituminous Construction** |  | 2026-08-29 | 2026-11-22 |  |  |  |  |  |  |  |  |  |  |  |  |  |
| A57930 |  | Bituminous base course (Grading I - Class A) | 5d | 2026-08-29 A | 2026-11-22 | A57920, A57970 | 99% | 0.05d | 2026-07-12 | 2026-07-16 | -43.01d | 15.85d | ICKMO1-cost unite [301537 $]; labor [600 h]; MC Truck [200 h]; Bituminous base course [1425.56]; Physical Units [2598165 h] | 301,536.74 | 298,521.37 | ZNA | CON | BBC |
|  | ASP | **Asphalt Wearing Course** |  | 2027-03-09 | 2027-03-10 |  |  |  |  |  |  |  |  |  |  |  |  |  |
| A57940 |  | Bituminous concrete wearing course | 1d | 2027-03-09 | 2027-03-10 | A57930, A57800 |  |  |  |  | 4d | 0d | ICKMO1-cost unite [361844 $]; Rubber compactor [200 h]; Roller compactor [200 h]; Trailers Truck [400 h]; Asphalt Paver [200 h]; Bituminous concrete wearing course [761.44]; Physical Units [3117798 h] | 361,844.08 |  | ZNA | CON | BBC |
|  | CON | **Precast Concrete Curb** |  | 2026-11-17 | 2026-11-21 |  |  |  |  |  |  |  |  |  |  |  |  |  |
| A57950 |  | Concrete curb, Type (K1A) | 1d | 2026-11-17 | 2026-11-18 | A57920 |  |  |  |  | -43.01d | 0d | ICKMO1-cost unite [20504.5 $]; Physical Units [176675 h] | 20,504.5 |  | ZNA | CON |  |
| A57960 |  | Concrete curb, Type (K1B) | 1d | 2026-11-18 | 2026-11-19 | A57950 |  |  |  |  | -43.01d | 0d | ICKMO1-cost unite [19901.4 $]; labor [800 h]; Physical Units [171479 h] | 19,901.42 |  | ZNA | CON |  |
| A57970 |  | Concrete curb, Type (K2) | 1d | 2026-11-19 | 2026-11-21 | A57960 |  |  |  |  | -43.01d | 0d | ICKMO1-cost unite [19901.4 $]; labor [800 h]; Physical Units [171479 h] | 19,901.42 |  | ZNA | CON |  |
|  | PAV | **Pavement Markings** |  | 2027-03-10 | 2027-03-13 |  |  |  |  |  |  |  |  |  |  |  |  |  |
| A57980 |  | Retroreflective Thermoplastic White Traffic lines | 1d | 2027-03-10 | 2027-03-11 | A57970, A57940 |  |  |  |  | 167d | 0d | ICKMO1-cost unite [60307.3 $]; labor [400 h]; Marking Machines [200 h]; Physical Units [519633 h] | 60,307.35 |  | ZNA | CON |  |
| A57990 |  | Retroreflective Thermoplastic Yellow Traffic lines | 1d | 2027-03-11 | 2027-03-13 | A57980 |  |  |  |  | 167d | 0d | ICKMO1-cost unite [60307.3 $]; labor [400 h]; Marking Machines [200 h]; Physical Units [519633 h] | 60,307.35 |  | ZNA | CON |  |
|  | TRS | **Traffic Signage** |  | 2027-03-13 | 2027-03-22 |  |  |  |  |  |  |  |  |  |  |  |  |  |
| A58000 |  | Traffic signs, ground mounted, 1 Sheet Alumenium, (breakaway) Single post | 1d | 2027-03-13 | 2027-03-14 | A57990 |  |  |  |  | 167d | 0d | ICKMO1-cost unite [20102.5 $]; boom truck [200 h]; labor [400 h]; Physical Units [173211 h] | 20,102.45 |  | ZNA | CON |  |
| A58010 |  | Traffic signs, ground mounted, 2 Sheet Alumenium, (breakaway) Single post | 1d | 2027-03-14 | 2027-03-15 | A58000 |  |  |  |  | 167d | 0d | ICKMO1-cost unite [20102.5 $]; boom truck [200 h]; labor [400 h]; Physical Units [173211 h] | 20,102.45 |  | ZNA | CON |  |
| A58020 |  | Traffic signs, ground mounted, Sheet Alumenium, (breakaway) Double post | 3d | 2027-03-15 | 2027-03-18 | A58010 |  |  |  |  | 167d | 0d | ICKMO1-cost unite [20102.5 $]; boom truck [200 h]; labor [400 h]; Physical Units [173211 h] | 20,102.45 |  | ZNA | CON |  |
| A58030 |  | Retroreflective raised pavement markers (Type A) | 1d | 2027-03-18 | 2027-03-20 | A58020 |  |  |  |  | 186d | 0d | ICKMO1-cost unite [20102.5 $]; boom truck [200 h]; labor [400 h]; Physical Units [173211 h] | 20,102.45 |  | ZNA | CON |  |
| A58040 |  | Ceramic raised pavement markers | 1d | 2027-03-20 | 2027-03-21 | A58030 |  |  |  |  | 186d | 0d | ICKMO1-cost unite [20102.5 $]; boom truck [200 h]; labor [400 h]; Physical Units [173211 h] | 20,102.45 |  | ZNA | CON |  |
| A58050 |  | Solar powered lighting cateyes pavement markers | 1d | 2027-03-21 | 2027-03-22 | A58040 |  |  |  |  | 206d |  | ICKMO1-cost unite [20102.5 $]; Grader [200 h]; boom truck [200 h]; labor [400 h]; Physical Units [173211 h] | 20,102.45 |  | ZNA | CON |  |
|  | 12 | **Road 12** |  | 2026-08-29 | 2027-03-23 |  |  |  |  |  |  |  |  |  |  |  |  |  |
|  | AGG | **Aggregate Base Course** |  | 2026-08-29 | 2026-11-18 |  |  |  |  |  |  |  |  |  |  |  |  |  |
| A58060 |  | Aggregate base course | 6d | 2026-08-29 A | 2026-11-18 | A59580, A57920 SS, A57920 FF | 98% | 0.12d | 2026-07-01 | 2026-07-07 | -58.72d | 0d | ICKMO1-cost unite [241229 $]; Rubber compactor [200 h]; Roller compactor [200 h]; Trailers Truck [400 h]; Aggregate base course [3223.11]; Physical Units [2078532 h] | 241,229.38 | 236,404.8 | ZNA | CON | ABC |

| ID | WBS | Activity | Duration | Start | Finish | Predecessors | Complete | Remaining | Planned start | Planned finish | Total float | Free float | Resources | Cost | Actual cost | ALKHARJ INDUSTERIAL AREA - PROJECT ZONES | ALKHARJ INDUSTERIAL AREA - DECEPLINS | ALKHARJ INDUSTERIAL AREA - ASPHALT WORKS |
| --- | --- | --- | --- | --- | --- | --- | --- | --- | --- | --- | --- | --- | --- | --- | --- | --- | --- | --- |
|  | BIT | **Bituminous Construction** |  | 2026-08-29 | 2026-11-22 |  |  |  |  |  |  |  |  |  |  |  |  |  |
| A58070 |  | Bituminous base course (Grading I - Class A) | 5d | 2026-08-29 A | 2026-11-22 | A58060, A58110 | 89% | 0.55d | 2026-07-12 | 2026-07-16 | -43.57d | 15.29d | ICKMO1-cost unite [301537 $]; labor [600 h]; MC Truck [200 h]; Bituminous base course [1425.56]; Physical Units [2598165 h] | 301,536.74 | 268,367.69 | ZNA | CON | BBC |
|  | ASP | **Asphalt Wearing Course** |  | 2027-03-10 | 2027-03-11 |  |  |  |  |  |  |  |  |  |  |  |  |  |
| A58080 |  | Bituminous concrete wearing course | 1d | 2027-03-10 | 2027-03-11 | A58070, A57940 |  |  |  |  | 4d | 0d | ICKMO1-cost unite [361844 $]; Rubber compactor [200 h]; Roller compactor [200 h]; Trailers Truck [400 h]; Asphalt Paver [200 h]; Bituminous concrete wearing course [761.44]; Physical Units [3117798 h] | 361,844.08 |  | ZNA | CON | BBC |
|  | CON | **Precast Concrete Curb** |  | 2026-11-18 | 2026-11-22 |  |  |  |  |  |  |  |  |  |  |  |  |  |
| A58090 |  | Concrete curb, Type (K1A) | 1d | 2026-11-18 | 2026-11-19 | A58060 |  |  |  |  | -43.57d | 0d | ICKMO1-cost unite [20504.5 $]; Physical Units [176675 h] | 20,504.5 |  | ZNA | CON |  |
| A58100 |  | Concrete curb, Type (K1B) | 1d | 2026-11-19 | 2026-11-21 | A58090 |  |  |  |  | -43.57d | 0d | ICKMO1-cost unite [19901.4 $]; labor [800 h]; Physical Units [171479 h] | 19,901.42 |  | ZNA | CON |  |
| A58110 |  | Concrete curb, Type (K2) | 1d | 2026-11-21 | 2026-11-22 | A58100 |  |  |  |  | -43.57d | 0d | ICKMO1-cost unite [19901.4 $]; labor [800 h]; Physical Units [171479 h] | 19,901.42 |  | ZNA | CON |  |
|  | PAV | **Pavement Markings** |  | 2027-03-11 | 2027-03-14 |  |  |  |  |  |  |  |  |  |  |  |  |  |
| A58120 |  | Retroreflective Thermoplastic White Traffic lines | 1d | 2027-03-11 | 2027-03-13 | A58110, A58080 |  |  |  |  | 166d | 0d | ICKMO1-cost unite [60307.3 $]; labor [400 h]; Marking Machines [200 h]; Physical Units [519633 h] | 60,307.35 |  | ZNA | CON |  |
| A58130 |  | Retroreflective Thermoplastic Yellow Traffic lines | 1d | 2027-03-13 | 2027-03-14 | A58120 |  |  |  |  | 166d | 0d | ICKMO1-cost unite [60307.3 $]; labor [400 h]; Marking Machines [200 h]; Physical Units [519633 h] | 60,307.35 |  | ZNA | CON |  |
|  | TRS | **Traffic Signage** |  | 2027-03-14 | 2027-03-23 |  |  |  |  |  |  |  |  |  |  |  |  |  |
| A58140 |  | Traffic signs, ground mounted, 1 Sheet Alumenium, (breakaway) Single post | 1d | 2027-03-14 | 2027-03-15 | A58130 |  |  |  |  | 166d | 0d | ICKMO1-cost unite [20102.5 $]; boom truck [200 h]; labor [400 h]; Physical Units [173211 h] | 20,102.45 |  | ZNA | CON |  |
| A58150 |  | Traffic signs, ground mounted, 2 Sheet Alumenium, (breakaway) Single post | 1d | 2027-03-15 | 2027-03-16 | A58140 |  |  |  |  | 166d | 0d | ICKMO1-cost unite [20102.5 $]; boom truck [200 h]; labor [400 h]; Physical Units [173211 h] | 20,102.45 |  | ZNA | CON |  |
| A58160 |  | Traffic signs, ground mounted, Sheet Alumenium, (breakaway) Double post | 3d | 2027-03-16 | 2027-03-20 | A58150 |  |  |  |  | 166d | 0d | ICKMO1-cost unite [20102.5 $]; boom truck [200 h]; labor [400 h]; Physical Units [173211 h] | 20,102.45 |  | ZNA | CON |  |
| A58170 |  | Retroreflective raised pavement markers (Type A) | 1d | 2027-03-20 | 2027-03-21 | A58160 |  |  |  |  | 185d | 0d | ICKMO1-cost unite [20102.5 $]; boom truck [200 h]; labor [400 h]; Physical Units [173211 h] | 20,102.45 |  | ZNA | CON |  |
| A58180 |  | Ceramic raised pavement markers | 1d | 2027-03-21 | 2027-03-22 | A58170 |  |  |  |  | 185d | 0d | ICKMO1-cost unite [20102.5 $]; boom truck [200 h]; labor [400 h]; Physical Units [173211 h] | 20,102.45 |  | ZNA | CON |  |
| A58190 |  | Solar powered lighting cateyes pavement markers | 1d | 2027-03-22 | 2027-03-23 | A58180 |  |  |  |  | 205d |  | ICKMO1-cost unite [20102.5 $]; Grader [200 h]; boom truck [200 h]; labor [400 h]; Physical Units [173211 h] | 20,102.45 |  | ZNA | CON |  |
|  | 13 | **Road 13** |  | 2026-08-15 | 2027-03-24 |  |  |  |  |  |  |  |  |  |  |  |  |  |
|  | AGG | **Aggregate Base Course** |  | 2026-08-15 | 2026-09-20 |  |  |  |  |  |  |  |  |  |  |  |  |  |
| A58200 |  | Aggregate base course | 6d | 2026-08-15 A | 2026-09-20 A | A59610, A58060 | 100% |  | 2026-07-08 | 2026-07-14 |  |  | ICKMO1-cost unite [241229 $]; Rubber compactor [200 h]; Roller compactor [200 h]; Trailers Truck [400 h]; Aggregate base course [3223.11]; Physical Units [2078532 h] | 241,229.38 | 241,229.38 | ZNA | CON | ABC |
|  | BIT | **Bituminous Construction** |  | 2026-08-15 | 2026-09-20 |  |  |  |  |  |  |  |  |  |  |  |  |  |
| A58210 |  | Bituminous base course (Grading I - Class A) | 5d | 2026-08-15 A | 2026-09-20 A | A58200, A58250 | 100% |  | 2026-07-19 | 2026-07-23 |  |  | ICKMO1-cost unite [301537 $]; labor [600 h]; MC Truck [200 h]; Bituminous base course [1425.56]; Physical Units [2598165 h] | 301,536.74 | 301,536.74 | ZNA | CON | BBC |
|  | ASP | **Asphalt Wearing Course** |  | 2027-03-11 | 2027-03-13 |  |  |  |  |  |  |  |  |  |  |  |  |  |
| A58220 |  | Bituminous concrete wearing course | 1d | 2027-03-11 | 2027-03-13 | A58210, A58080 |  |  |  |  | 4d | 0d | ICKMO1-cost unite [361844 $]; Rubber compactor [200 h]; Roller compactor [200 h]; Trailers Truck [400 h]; Asphalt Paver [200 h]; Bituminous concrete wearing course [761.44]; Physical Units [3117798 h] | 361,844.08 |  | ZNA | CON | BBC |

| ID | WBS | Activity | Duration | Start | Finish | Predecessors | Complete | Planned start | Planned finish | Total float | Free float | Resources | Cost | Actual cost | ALKHARJ INDUSTERIAL AREA - PROJECT ZONES | ALKHARJ INDUSTERIAL AREA - DECEPLINS | ALKHARJ INDUSTERIAL AREA - ASPHALT WORKS |
| --- | --- | --- | --- | --- | --- | --- | --- | --- | --- | --- | --- | --- | --- | --- | --- | --- | --- |
|  | CON | **Precast Concrete Curb** |  | 2026-11-18 | 2026-11-22 |  |  |  |  |  |  |  |  |  |  |  |  |
| A58230 |  | Concrete curb, Type (K1A) | 1d | 2026-11-18 | 2026-11-19 | A58200 |  |  |  | -43.02d | 0d | ICKMO1-cost unite [20504.5 $]; Physical Units [176675 h] | 20,504.5 |  | ZNA | CON |  |
| A58240 |  | Concrete curb, Type (K1B) | 1d | 2026-11-19 | 2026-11-21 | A58230 |  |  |  | -43.02d | 0d | ICKMO1-cost unite [19901.4 $]; labor [800 h]; Physical Units [171479 h] | 19,901.42 |  | ZNA | CON |  |
| A58250 |  | Concrete curb, Type (K2) | 1d | 2026-11-21 | 2026-11-22 | A58240 |  |  |  | -43.02d | 0d | ICKMO1-cost unite [19901.4 $]; labor [800 h]; Physical Units [171479 h] | 19,901.42 |  | ZNA | CON |  |
|  | PAV | **Pavement Markings** |  | 2027-03-13 | 2027-03-15 |  |  |  |  |  |  |  |  |  |  |  |  |
| A58260 |  | Retroreflective Thermoplastic White Traffic lines | 1d | 2027-03-13 | 2027-03-14 | A58250, A58220 |  |  |  | 165d | 0d | ICKMO1-cost unite [60307.3 $]; labor [400 h]; Marking Machines [200 h]; Physical Units [519633 h] | 60,307.35 |  | ZNA | CON |  |
| A58270 |  | Retroreflective Thermoplastic Yellow Traffic lines | 1d | 2027-03-14 | 2027-03-15 | A58260 |  |  |  | 165d | 0d | ICKMO1-cost unite [60307.3 $]; labor [400 h]; Marking Machines [200 h]; Physical Units [519633 h] | 60,307.35 |  | ZNA | CON |  |
|  | TRS | **Traffic Signage** |  | 2027-03-15 | 2027-03-24 |  |  |  |  |  |  |  |  |  |  |  |  |
| A58280 |  | Traffic signs, ground mounted, 1 Sheet Alumenium, (breakaway) Single post | 1d | 2027-03-15 | 2027-03-16 | A58270 |  |  |  | 165d | 0d | ICKMO1-cost unite [20102.5 $]; boom truck [200 h]; labor [400 h]; Physical Units [173211 h] | 20,102.45 |  | ZNA | CON |  |
| A58290 |  | Traffic signs, ground mounted, 2 Sheet Alumenium, (breakaway) Single post | 1d | 2027-03-16 | 2027-03-17 | A58280 |  |  |  | 165d | 0d | ICKMO1-cost unite [20102.5 $]; boom truck [200 h]; labor [400 h]; Physical Units [173211 h] | 20,102.45 |  | ZNA | CON |  |
| A58300 |  | Traffic signs, ground mounted, Sheet Alumenium, (breakaway) Double post | 3d | 2027-03-17 | 2027-03-21 | A58290 |  |  |  | 165d | 0d | ICKMO1-cost unite [20102.5 $]; boom truck [200 h]; labor [400 h]; Physical Units [173211 h] | 20,102.45 |  | ZNA | CON |  |
| A58310 |  | Retroreflective raised pavement markers (Type A) | 1d | 2027-03-21 | 2027-03-22 | A58300 |  |  |  | 184d | 0d | ICKMO1-cost unite [20102.5 $]; boom truck [200 h]; labor [400 h]; Physical Units [173211 h] | 20,102.45 |  | ZNA | CON |  |
| A58320 |  | Ceramic raised pavement markers | 1d | 2027-03-22 | 2027-03-23 | A58310 |  |  |  | 184d | 0d | ICKMO1-cost unite [20102.5 $]; boom truck [200 h]; labor [400 h]; Physical Units [173211 h] | 20,102.45 |  | ZNA | CON |  |
| A58330 |  | Solar powered lighting cateyes pavement markers | 1d | 2027-03-23 | 2027-03-24 | A58320 |  |  |  | 204d |  | ICKMO1-cost unite [20102.5 $]; Grader [200 h]; boom truck [200 h]; labor [400 h]; Physical Units [173211 h] | 20,102.45 |  | ZNA | CON |  |
|  | 14 | **Road 14** |  | 2026-08-15 | 2027-03-25 |  |  |  |  |  |  |  |  |  |  |  |  |
|  | AGG | **Aggregate Base Course** |  | 2026-08-15 | 2026-09-20 |  |  |  |  |  |  |  |  |  |  |  |  |
| A58340 |  | Aggregate base course | 6d | 2026-08-15 A | 2026-09-20 A | A59640, A58200 | 100% | 2026-07-15 | 2026-07-21 |  |  | ICKMO1-cost unite [241229 $]; Rubber compactor [200 h]; Roller compactor [200 h]; Trailers Truck [400 h]; Aggregate base course [3223.11]; Physical Units [2078532 h] | 241,229.38 | 241,229.38 | ZNA | CON | ABC |
|  | BIT | **Bituminous Construction** |  | 2026-08-15 | 2026-09-20 |  |  |  |  |  |  |  |  |  |  |  |  |
| A58350 |  | Bituminous base course (Grading I - Class A) | 5d | 2026-08-15 A | 2026-09-20 A | A58340, A58390 | 100% | 2026-07-26 | 2026-07-30 |  |  | ICKMO1-cost unite [301537 $]; labor [600 h]; MC Truck [200 h]; Bituminous base course [1425.56]; Physical Units [2598165 h] | 301,536.74 | 301,536.74 | ZNA | CON | BBC |
|  | ASP | **Asphalt Wearing Course** |  | 2027-03-13 | 2027-03-14 |  |  |  |  |  |  |  |  |  |  |  |  |
| A58360 |  | Bituminous concrete wearing course | 1d | 2027-03-13 | 2027-03-14 | A58350, A58220 |  |  |  | 4d | 0d | ICKMO1-cost unite [361844 $]; Rubber compactor [200 h]; Roller compactor [200 h]; Trailers Truck [400 h]; Asphalt Paver [200 h]; Bituminous concrete wearing course [761.44]; Physical Units [3117798 h] | 361,844.08 |  | ZNA | CON | BBC |
|  | CON | **Precast Concrete Curb** |  | 2026-11-18 | 2026-11-22 |  |  |  |  |  |  |  |  |  |  |  |  |
| A58370 |  | Concrete curb, Type (K1A) | 1d | 2026-11-18 | 2026-11-19 | A58340 |  |  |  | -43.02d | 0d | ICKMO1-cost unite [20504.5 $]; Physical Units [176675 h] | 20,504.5 |  | ZNA | CON |  |
| A58380 |  | Concrete curb, Type (K1B) | 1d | 2026-11-19 | 2026-11-21 | A58370 |  |  |  | -43.02d | 0d | ICKMO1-cost unite [19901.4 $]; labor [800 h]; Physical Units [171479 h] | 19,901.42 |  | ZNA | CON |  |
| A58390 |  | Concrete curb, Type (K2) | 1d | 2026-11-21 | 2026-11-22 | A58380 |  |  |  | -43.02d | 0d | ICKMO1-cost unite [19901.4 $]; labor [800 h]; Physical Units [171479 h] | 19,901.42 |  | ZNA | CON |  |

| ID | WBS | Activity | Duration | Start | Finish | Predecessors | Complete | Remaining | Planned start | Planned finish | Total float | Free float | Resources | Cost | Actual cost | ALKHARJ INDUSTERIAL AREA - PROJECT ZONES | ALKHARJ INDUSTERIAL AREA - DECEPLINS | ALKHARJ INDUSTERIAL AREA - ASPHALT WORKS |
| --- | --- | --- | --- | --- | --- | --- | --- | --- | --- | --- | --- | --- | --- | --- | --- | --- | --- | --- |
|  | PAV | **Pavement Markings** |  | 2027-03-14 | 2027-03-16 |  |  |  |  |  |  |  |  |  |  |  |  |  |
| A58400 |  | Retroreflective Thermoplastic White Traffic lines | 1d | 2027-03-14 | 2027-03-15 | A58390, A58360 |  |  |  |  | 164d | 0d | ICKMO1-cost unite [60307.3 $]; labor [400 h]; Marking Machines [200 h]; Physical Units [519633 h] | 60,307.35 |  | ZNA | CON |  |
| A58410 |  | Retroreflective Thermoplastic Yellow Traffic lines | 1d | 2027-03-15 | 2027-03-16 | A58400 |  |  |  |  | 164d | 0d | ICKMO1-cost unite [60307.3 $]; labor [400 h]; Marking Machines [200 h]; Physical Units [519633 h] | 60,307.35 |  | ZNA | CON |  |
|  | TRS | **Traffic Signage** |  | 2027-03-16 | 2027-03-25 |  |  |  |  |  |  |  |  |  |  |  |  |  |
| A58420 |  | Traffic signs, ground mounted, 1 Sheet Alumenium, (breakaway) Single post | 1d | 2027-03-16 | 2027-03-17 | A58410 |  |  |  |  | 164d | 0d | ICKMO1-cost unite [20102.5 $]; boom truck [200 h]; labor [400 h]; Physical Units [173211 h] | 20,102.45 |  | ZNA | CON |  |
| A58430 |  | Traffic signs, ground mounted, 2 Sheet Alumenium, (breakaway) Single post | 1d | 2027-03-17 | 2027-03-18 | A58420 |  |  |  |  | 164d | 0d | ICKMO1-cost unite [20102.5 $]; boom truck [200 h]; labor [400 h]; Physical Units [173211 h] | 20,102.45 |  | ZNA | CON |  |
| A58440 |  | Traffic signs, ground mounted, Sheet Alumenium, (breakaway) Double post | 3d | 2027-03-18 | 2027-03-22 | A58430 |  |  |  |  | 164d | 0d | ICKMO1-cost unite [20102.5 $]; boom truck [200 h]; labor [400 h]; Physical Units [173211 h] | 20,102.45 |  | ZNA | CON |  |
| A58450 |  | Retroreflective raised pavement markers (Type A) | 1d | 2027-03-22 | 2027-03-23 | A58440 |  |  |  |  | 183d | 0d | ICKMO1-cost unite [20102.5 $]; boom truck [200 h]; labor [400 h]; Physical Units [173211 h] | 20,102.45 |  | ZNA | CON |  |
| A58460 |  | Ceramic raised pavement markers | 1d | 2027-03-23 | 2027-03-24 | A58450 |  |  |  |  | 183d | 0d | ICKMO1-cost unite [20102.5 $]; boom truck [200 h]; labor [400 h]; Physical Units [173211 h] | 20,102.45 |  | ZNA | CON |  |
| A58470 |  | Solar powered lighting cateyes pavement markers | 1d | 2027-03-24 | 2027-03-25 | A58460 |  |  |  |  | 203d |  | ICKMO1-cost unite [20102.5 $]; Grader [200 h]; boom truck [200 h]; labor [400 h]; Physical Units [173211 h] | 20,102.45 |  | ZNA | CON |  |
|  | 15 | **Road 15** |  | 2026-08-15 | 2027-03-27 |  |  |  |  |  |  |  |  |  |  |  |  |  |
|  | AGG | **Aggregate Base Course** |  | 2026-08-15 | 2026-09-20 |  |  |  |  |  |  |  |  |  |  |  |  |  |
| A58480 |  | Aggregate base course | 6d | 2026-08-15 A | 2026-09-20 A | A59670, A58340 | 100% |  | 2026-07-22 | 2026-07-28 |  |  | ICKMO1-cost unite [241229 $]; Rubber compactor [200 h]; Roller compactor [200 h]; Trailers Truck [400 h]; Aggregate base course [3223.11]; Physical Units [2078532 h] | 241,229.38 | 241,229.38 | ZNA | CON | ABC |
|  | BIT | **Bituminous Construction** |  | 2026-08-15 | 2026-09-20 |  |  |  |  |  |  |  |  |  |  |  |  |  |
| A58490 |  | Bituminous base course (Grading I - Class A) | 1d | 2026-08-15 A | 2026-09-20 A | A58480, A58530 | 100% |  | 2026-08-02 | 2026-08-02 |  |  | ICKMO1-cost unite [301537 $]; labor [600 h]; MC Truck [200 h]; Bituminous base course [1425.56]; Physical Units [2598165 h] | 301,536.74 | 301,536.74 | ZNA | CON | BBC |
|  | ASP | **Asphalt Wearing Course** |  | 2027-03-14 | 2027-03-15 |  |  |  |  |  |  |  |  |  |  |  |  |  |
| A58500 |  | Bituminous concrete wearing course | 1d | 2027-03-14 | 2027-03-15 | A58490, A58360 |  |  |  |  | 4d | 0d | ICKMO1-cost unite [361844 $]; Rubber compactor [200 h]; Roller compactor [200 h]; Trailers Truck [400 h]; Asphalt Paver [200 h]; Bituminous concrete wearing course [761.44]; Physical Units [3117798 h] | 361,844.08 |  | ZNA | CON | BBC |
|  | CON | **Precast Concrete Curb** |  | 2026-08-29 | 2026-11-21 |  |  |  |  |  |  |  |  |  |  |  |  |  |
| A58510 |  | Concrete curb, Type (K1A) | 1d | 2026-08-29 A | 2026-11-18 | A58480 | 13% | 0.87d | 2027-04-20 | 2027-04-21 | -42.63d | 0d | ICKMO1-cost unite [20504.5 $]; Physical Units [176675 h] | 20,504.5 | 2,665.58 | ZNA | CON |  |
| A58520 |  | Concrete curb, Type (K1B) | 1d | 2026-08-29 A | 2026-11-19 | A58510 | 13% | 0.87d | 2027-04-21 | 2027-04-22 | -42.63d | 0d | ICKMO1-cost unite [6971.53 $]; labor [800 h]; Physical Units [60069.6 h] | 6,971.53 | 906.3 | ZNA | CON |  |
| A58530 |  | Concrete curb, Type (K2) | 1d | 2026-08-29 A | 2026-11-21 | A58520 | 13% | 0.87d | 2027-04-22 | 2027-04-24 | -42.63d | 0d | ICKMO1-cost unite [2370.32 $]; labor [800 h]; Physical Units [20423.7 h] | 2,370.32 | 308.14 | ZNA | CON |  |
|  | PAV | **Pavement Markings** |  | 2027-03-15 | 2027-03-17 |  |  |  |  |  |  |  |  |  |  |  |  |  |
| A58540 |  | Retroreflective Thermoplastic White Traffic lines | 1d | 2027-03-15 | 2027-03-16 | A58530, A58500 |  |  |  |  | 163d | 0d | ICKMO1-cost unite [60307.3 $]; labor [400 h]; Marking Machines [200 h]; Physical Units [519633 h] | 60,307.35 |  | ZNA | CON |  |
| A58550 |  | Retroreflective Thermoplastic Yellow Traffic lines | 1d | 2027-03-16 | 2027-03-17 | A58540 |  |  |  |  | 163d | 0d | ICKMO1-cost unite [60307.3 $]; labor [400 h]; Marking Machines [200 h]; Physical Units [519633 h] | 60,307.35 |  | ZNA | CON |  |

| ID | WBS | Activity | Duration | Start | Finish | Predecessors | Complete | Remaining | Planned start | Planned finish | Total float | Free float | Resources | Cost | Actual cost | ALKHARJ INDUSTERIAL AREA - PROJECT ZONES | ALKHARJ INDUSTERIAL AREA - DECEPLINS | ALKHARJ INDUSTERIAL AREA - ASPHALT WORKS |
| --- | --- | --- | --- | --- | --- | --- | --- | --- | --- | --- | --- | --- | --- | --- | --- | --- | --- | --- |
|  | TRS | **Traffic Signage** |  | 2027-03-17 | 2027-03-27 |  |  |  |  |  |  |  |  |  |  |  |  |  |
| A58560 |  | Traffic signs, ground mounted, 1 Sheet Alumenium, (breakaway) Single post | 1d | 2027-03-17 | 2027-03-18 | A58550 |  |  |  |  | 163d | 0d | ICKMO1-cost unite [20102.5 $]; boom truck [200 h]; labor [400 h]; Physical Units [173211 h] | 20,102.45 |  | ZNA | CON |  |
| A58570 |  | Traffic signs, ground mounted, 2 Sheet Alumenium, (breakaway) Single post | 1d | 2027-03-18 | 2027-03-20 | A58560 |  |  |  |  | 163d | 0d | ICKMO1-cost unite [20102.5 $]; boom truck [200 h]; labor [400 h]; Physical Units [173211 h] | 20,102.45 |  | ZNA | CON |  |
| A58580 |  | Traffic signs, ground mounted, Sheet Alumenium, (breakaway) Double post | 3d | 2027-03-20 | 2027-03-23 | A58570 |  |  |  |  | 163d | 0d | ICKMO1-cost unite [20102.5 $]; boom truck [200 h]; labor [400 h]; Physical Units [173211 h] | 20,102.45 |  | ZNA | CON |  |
| A58590 |  | Retroreflective raised pavement markers (Type A) | 1d | 2027-03-23 | 2027-03-24 | A58580 |  |  |  |  | 182d | 0d | ICKMO1-cost unite [20102.5 $]; boom truck [200 h]; labor [400 h]; Physical Units [173211 h] | 20,102.45 |  | ZNA | CON |  |
| A58600 |  | Ceramic raised pavement markers | 1d | 2027-03-24 | 2027-03-25 | A58590 |  |  |  |  | 182d | 0d | ICKMO1-cost unite [20102.5 $]; boom truck [200 h]; labor [400 h]; Physical Units [173211 h] | 20,102.45 |  | ZNA | CON |  |
| A58610 |  | Solar powered lighting cateyes pavement markers | 1d | 2027-03-25 | 2027-03-27 | A58600 |  |  |  |  | 202d |  | ICKMO1-cost unite [20102.5 $]; Grader [200 h]; boom truck [200 h]; labor [400 h]; Physical Units [173211 h] | 20,102.45 |  | ZNA | CON |  |
|  | 16 | **Road 16** |  | 2026-08-29 | 2027-03-28 |  |  |  |  |  |  |  |  |  |  |  |  |  |
|  | AGG | **Aggregate Base Course** |  | 2026-08-29 | 2026-11-23 |  |  |  |  |  |  |  |  |  |  |  |  |  |
| A58620 |  | Aggregate base course | 6d | 2026-08-29 A | 2026-11-23 | A59700, A58480 | 25% | 4.5d | 2026-07-29 | 2026-08-04 | -58.72d | 0d | ICKMO1-cost unite [241229 $]; Rubber compactor [200 h]; Roller compactor [200 h]; Trailers Truck [400 h]; Aggregate base course [3223.11]; Physical Units [2078532 h] | 241,229.38 | 60,307.35 | ZNA | CON | ABC |
|  | BIT | **Bituminous Construction** |  | 2026-11-26 | 2026-12-02 |  |  |  |  |  |  |  |  |  |  |  |  |  |
| A58630 |  | Bituminous base course (Grading I - Class A) | 5d | 2026-11-26 | 2026-12-02 | A58620, A58670 |  |  |  |  | -52.52d | 6.34d | ICKMO1-cost unite [301537 $]; labor [600 h]; MC Truck [200 h]; Bituminous base course [1425.56]; Physical Units [2598165 h] | 301,536.74 |  | ZNA | CON | BBC |
|  | ASP | **Asphalt Wearing Course** |  | 2027-03-15 | 2027-03-16 |  |  |  |  |  |  |  |  |  |  |  |  |  |
| A58640 |  | Bituminous concrete wearing course | 1d | 2027-03-15 | 2027-03-16 | A58630, A58500 |  |  |  |  | 4d | 0d | ICKMO1-cost unite [361844 $]; Rubber compactor [200 h]; Roller compactor [200 h]; Trailers Truck [400 h]; Asphalt Paver [200 h]; Bituminous concrete wearing course [761.44]; Physical Units [3117798 h] | 361,844.08 |  | ZNA | CON | BBC |
|  | CON | **Precast Concrete Curb** |  | 2026-11-23 | 2026-11-26 |  |  |  |  |  |  |  |  |  |  |  |  |  |
| A58650 |  | Concrete curb, Type (K1A) | 1d | 2026-11-23 | 2026-11-24 | A58620 |  |  |  |  | -52.52d | 0d | ICKMO1-cost unite [20504.5 $]; Physical Units [176675 h] | 20,504.5 |  | ZNA | CON |  |
| A58660 |  | Concrete curb, Type (K1B) | 1d | 2026-11-24 | 2026-11-25 | A58650 |  |  |  |  | -52.52d | 0d | ICKMO1-cost unite [19901.4 $]; labor [800 h]; Physical Units [171479 h] | 19,901.42 |  | ZNA | CON |  |
| A58670 |  | Concrete curb, Type (K2) | 1d | 2026-11-25 | 2026-11-26 | A58660 |  |  |  |  | -52.52d | 0d | ICKMO1-cost unite [19901.4 $]; labor [800 h]; Physical Units [171479 h] | 19,901.42 |  | ZNA | CON |  |
|  | PAV | **Pavement Markings** |  | 2027-03-16 | 2027-03-18 |  |  |  |  |  |  |  |  |  |  |  |  |  |
| A58680 |  | Retroreflective Thermoplastic White Traffic lines | 1d | 2027-03-16 | 2027-03-17 | A58670, A58640 |  |  |  |  | 162d | 0d | ICKMO1-cost unite [60307.3 $]; labor [400 h]; Marking Machines [200 h]; Physical Units [519633 h] | 60,307.35 |  | ZNA | CON |  |
| A58690 |  | Retroreflective Thermoplastic Yellow Traffic lines | 1d | 2027-03-17 | 2027-03-18 | A58680 |  |  |  |  | 162d | 0d | ICKMO1-cost unite [60307.3 $]; labor [400 h]; Marking Machines [200 h]; Physical Units [519633 h] | 60,307.35 |  | ZNA | CON |  |
|  | TRS | **Traffic Signage** |  | 2027-03-18 | 2027-03-28 |  |  |  |  |  |  |  |  |  |  |  |  |  |
| A58700 |  | Traffic signs, ground mounted, 1 Sheet Alumenium, (breakaway) Single post | 1d | 2027-03-18 | 2027-03-20 | A58690 |  |  |  |  | 162d | 0d | ICKMO1-cost unite [20102.5 $]; boom truck [200 h]; labor [400 h]; Physical Units [173211 h] | 20,102.45 |  | ZNA | CON |  |
| A58710 |  | Traffic signs, ground mounted, 2 Sheet Alumenium, (breakaway) Single post | 1d | 2027-03-20 | 2027-03-21 | A58700 |  |  |  |  | 162d | 0d | ICKMO1-cost unite [20102.5 $]; boom truck [200 h]; labor [400 h]; Physical Units [173211 h] | 20,102.45 |  | ZNA | CON |  |
| A58720 |  | Traffic signs, ground mounted, Sheet Alumenium, (breakaway) Double post | 3d | 2027-03-21 | 2027-03-24 | A58710 |  |  |  |  | 162d | 0d | ICKMO1-cost unite [20102.5 $]; boom truck [200 h]; labor [400 h]; Physical Units [173211 h] | 20,102.45 |  | ZNA | CON |  |
| A58730 |  | Retroreflective raised pavement markers (Type A) | 1d | 2027-03-24 | 2027-03-25 | A58720 |  |  |  |  | 181d | 0d | ICKMO1-cost unite [20102.5 $]; boom truck [200 h]; labor [400 h]; Physical Units [173211 h] | 20,102.45 |  | ZNA | CON |  |
| A58740 |  | Ceramic raised pavement markers | 1d | 2027-03-25 | 2027-03-27 | A58730 |  |  |  |  | 181d | 0d | ICKMO1-cost unite [20102.5 $]; boom truck [200 h]; labor [400 h]; Physical Units [173211 h] | 20,102.45 |  | ZNA | CON |  |
| A58750 |  | Solar powered lighting cateyes pavement markers | 1d | 2027-03-27 | 2027-03-28 | A58740 |  |  |  |  | 201d |  | ICKMO1-cost unite [20102.5 $]; Grader [200 h]; boom truck [200 h]; labor [400 h]; Physical Units [173211 h] | 20,102.45 |  | ZNA | CON |  |

| ID | WBS | Activity | Duration | Start | Finish | Predecessors | Complete | Remaining | Planned start | Planned finish | Total float | Free float | Resources | Cost | Actual cost | ALKHARJ INDUSTERIAL AREA - PROJECT ZONES | ALKHARJ INDUSTERIAL AREA - DECEPLINS | ALKHARJ INDUSTERIAL AREA - ASPHALT WORKS |
| --- | --- | --- | --- | --- | --- | --- | --- | --- | --- | --- | --- | --- | --- | --- | --- | --- | --- | --- |
|  | 17 | **Road 17** |  | 2026-08-29 | 2027-04-03 |  |  |  |  |  |  |  |  |  |  |  |  |  |
|  | AGG | **Aggregate Base Course** |  | 2026-08-29 | 2026-11-28 |  |  |  |  |  |  |  |  |  |  |  |  |  |
| A58760 |  | Aggregate base course | 6d | 2026-08-29 A | 2026-11-28 | A59760, A58620 | 30% | 4.2d | 2026-08-05 | 2026-08-11 | -58.72d | 0d | ICKMO1-cost unite [241229 $]; Rubber compactor [200 h]; Roller compactor [200 h]; Trailers Truck [400 h]; Aggregate base course [3223.11]; Physical Units [2078532 h] | 241,229.38 | 72,368.82 | ZNA | CON | ABC |
|  | BIT | **Bituminous Construction** |  | 2026-12-01 | 2026-12-07 |  |  |  |  |  |  |  |  |  |  |  |  |  |
| A58770 |  | Bituminous base course (Grading I - Class A) | 5d | 2026-12-01 | 2026-12-07 | A58760, A58810 |  |  |  |  | -56.72d | 2d | ICKMO1-cost unite [301537 $]; labor [600 h]; MC Truck [200 h]; Bituminous base course [1425.56]; Physical Units [2598165 h] | 301,536.74 |  | ZNA | CON | BBC |
|  | ASP | **Asphalt Wearing Course** |  | 2027-03-16 | 2027-03-22 |  |  |  |  |  |  |  |  |  |  |  |  |  |
| A58780 |  | Bituminous concrete wearing course | 5d | 2027-03-16 | 2027-03-22 | A58770, A58640 |  |  |  |  | 4d | 0d | ICKMO1-cost unite [361844 $]; Rubber compactor [200 h]; Roller compactor [200 h]; Trailers Truck [400 h]; Asphalt Paver [200 h]; Bituminous concrete wearing course [761.44]; Physical Units [3117798 h] | 361,844.08 |  | ZNA | CON | BBC |
|  | CON | **Precast Concrete Curb** |  | 2026-11-28 | 2026-12-01 |  |  |  |  |  |  |  |  |  |  |  |  |  |
| A58790 |  | Concrete curb, Type (K1A) | 1d | 2026-11-28 | 2026-11-29 | A58760 |  |  |  |  | -56.72d | 0d | ICKMO1-cost unite [20504.5 $]; Physical Units [176675 h] | 20,504.5 |  | ZNA | CON |  |
| A58800 |  | Concrete curb, Type (K1B) | 1d | 2026-11-29 | 2026-11-30 | A58790 |  |  |  |  | -56.72d | 0d | ICKMO1-cost unite [19901.4 $]; labor [800 h]; Physical Units [171479 h] | 19,901.42 |  | ZNA | CON |  |
| A58810 |  | Concrete curb, Type (K2) | 1d | 2026-11-30 | 2026-12-01 | A58800 |  |  |  |  | -56.72d | 0d | ICKMO1-cost unite [19901.4 $]; labor [800 h]; Physical Units [171479 h] | 19,901.42 |  | ZNA | CON |  |
|  | PAV | **Pavement Markings** |  | 2027-03-22 | 2027-03-24 |  |  |  |  |  |  |  |  |  |  |  |  |  |
| A58820 |  | Retroreflective Thermoplastic White Traffic lines | 1d | 2027-03-22 | 2027-03-23 | A58810, A58780 |  |  |  |  | 155d | 0d | ICKMO1-cost unite [60307.3 $]; labor [400 h]; Marking Machines [200 h]; Physical Units [519633 h] | 60,307.35 |  | ZNA | CON |  |
| A58830 |  | Retroreflective Thermoplastic Yellow Traffic lines | 1d | 2027-03-23 | 2027-03-24 | A58820 |  |  |  |  | 155d | 0d | ICKMO1-cost unite [60307.3 $]; labor [400 h]; Marking Machines [200 h]; Physical Units [519633 h] | 60,307.35 |  | ZNA | CON |  |
|  | TRS | **Traffic Signage** |  | 2027-03-24 | 2027-04-03 |  |  |  |  |  |  |  |  |  |  |  |  |  |
| A58840 |  | Traffic signs, ground mounted, 1 Sheet Alumenium, (breakaway) Single post | 1d | 2027-03-24 | 2027-03-25 | A58830 |  |  |  |  | 155d | 0d | ICKMO1-cost unite [20102.5 $]; boom truck [200 h]; labor [400 h]; Physical Units [173211 h] | 20,102.45 |  | ZNA | CON |  |
| A58850 |  | Traffic signs, ground mounted, 2 Sheet Alumenium, (breakaway) Single post | 1d | 2027-03-25 | 2027-03-27 | A58840 |  |  |  |  | 155d | 0d | ICKMO1-cost unite [20102.5 $]; boom truck [200 h]; labor [400 h]; Physical Units [173211 h] | 20,102.45 |  | ZNA | CON |  |
| A58860 |  | Traffic signs, ground mounted, Sheet Alumenium, (breakaway) Double post | 3d | 2027-03-27 | 2027-03-30 | A58850 |  |  |  |  | 155d | 0d | ICKMO1-cost unite [20102.5 $]; boom truck [200 h]; labor [400 h]; Physical Units [173211 h] | 20,102.45 |  | ZNA | CON |  |
| A58870 |  | Retroreflective raised pavement markers (Type A) | 1d | 2027-03-30 | 2027-03-31 | A58860 |  |  |  |  | 155d | 0d | ICKMO1-cost unite [20102.5 $]; boom truck [200 h]; labor [400 h]; Physical Units [173211 h] | 20,102.45 |  | ZNA | CON |  |
| A58880 |  | Ceramic raised pavement markers | 1d | 2027-03-31 | 2027-04-01 | A58870 |  |  |  |  | 155d | 0d | ICKMO1-cost unite [20102.5 $]; boom truck [200 h]; labor [400 h]; Physical Units [173211 h] | 20,102.45 |  | ZNA | CON |  |
| A58890 |  | Solar powered lighting cateyes pavement markers | 1d | 2027-04-01 | 2027-04-03 | A58880 |  |  |  |  | 196d |  | ICKMO1-cost unite [20102.5 $]; Grader [200 h]; boom truck [200 h]; labor [400 h]; Physical Units [173211 h] | 20,102.45 |  | ZNA | CON |  |
|  | 18 | **Collector 1** |  | 2026-08-15 | 2027-04-12 |  |  |  |  |  |  |  |  |  |  |  |  |  |
|  | AGG | **Aggregate Base Course** |  | 2026-08-15 | 2026-09-20 |  |  |  |  |  |  |  |  |  |  |  |  |  |
| A58900 |  | Aggregate base course | 12d | 2026-08-15 A | 2026-09-20 A | A59820, A58760 | 100% |  | 2026-08-12 | 2026-08-25 |  |  | ICKMO1-cost unite [482459 $]; Rubber compactor [200 h]; Roller compactor [200 h]; Trailers Truck [400 h]; Aggregate base course [3223.11]; Physical Units [4157064 h] | 482,458.77 | 482,458.77 | ZNA | CON | ABC |

| ID | WBS | Activity | Duration | Start | Finish | Predecessors | Complete | Planned start | Planned finish | Total float | Free float | Resources | Cost | Actual cost | ALKHARJ INDUSTERIAL AREA - PROJECT ZONES | ALKHARJ INDUSTERIAL AREA - DECEPLINS | ALKHARJ INDUSTERIAL AREA - ASPHALT WORKS |
| --- | --- | --- | --- | --- | --- | --- | --- | --- | --- | --- | --- | --- | --- | --- | --- | --- | --- |
|  | BIT | **Bituminous Construction** |  | 2026-08-15 | 2026-09-20 |  |  |  |  |  |  |  |  |  |  |  |  |
| A58910 |  | Bituminous base course (Grading I - Class A) | 14d | 2026-08-15 A | 2026-09-20 A | A58900, A58950 | 100% | 2026-09-07 | 2026-09-22 |  |  | ICKMO1-cost unite [603073 $]; labor [600 h]; MC Truck [200 h]; Bituminous base course [1425.56]; Physical Units [5196331 h] | 603,073.46 | 603,073.46 | ZNA | CON | BBC |
|  | ASP | **Asphalt Wearing Course** |  | 2027-03-22 | 2027-03-25 |  |  |  |  |  |  |  |  |  |  |  |  |
| A58920 |  | Bituminous concrete wearing course | 3d | 2027-03-22 | 2027-03-25 | A58910, A58780 |  |  |  | 4d | 0d | ICKMO1-cost unite [723688 $]; Rubber compactor [200 h]; Roller compactor [200 h]; Trailers Truck [400 h]; Asphalt Paver [200 h]; Bituminous concrete wearing course [761.44]; Physical Units [6235597 h] | 723,688.15 |  | ZNA | CON | BBC |
|  | CON | **Precast Concrete Curb** |  | 2026-11-28 | 2026-12-09 |  |  |  |  |  |  |  |  |  |  |  |  |
| A58930 |  | Concrete curb, Type (K1A) | 3d | 2026-11-28 | 2026-12-01 | A58900 |  |  |  | -58.72d | 0d | ICKMO1-cost unite [41009 $]; Physical Units [353350 h] | 41,008.99 |  | ZNA | CON |  |
| A58940 |  | Concrete curb, Type (K1B) | 3d | 2026-12-01 | 2026-12-05 | A58930 |  |  |  | -58.72d | 0d | ICKMO1-cost unite [39802.8 $]; labor [800 h]; Physical Units [342958 h] | 39,802.84 |  | ZNA | CON |  |
| A58950 |  | Concrete curb, Type (K2) | 4d | 2026-12-05 | 2026-12-09 | A58940 |  |  |  | -58.72d | 0d | ICKMO1-cost unite [39802.8 $]; labor [800 h]; Physical Units [342958 h] | 39,802.84 |  | ZNA | CON |  |
|  | PAV | **Pavement Markings** |  | 2027-03-25 | 2027-03-30 |  |  |  |  |  |  |  |  |  |  |  |  |
| A58960 |  | Retroreflective Thermoplastic White Traffic lines | 2d | 2027-03-25 | 2027-03-28 | A58950, A58920 |  |  |  | 9d | 0d | ICKMO1-cost unite [120615 $]; labor [400 h]; Marking Machines [200 h]; Physical Units [1039266 h] | 120,614.69 |  | ZNA | CON |  |
| A58970 |  | Retroreflective Thermoplastic Yellow Traffic lines | 2d | 2027-03-28 | 2027-03-30 | A58960 |  |  |  | 9d | 0d | ICKMO1-cost unite [120615 $]; labor [400 h]; Marking Machines [200 h]; Physical Units [1039266 h] | 120,614.69 |  | ZNA | CON |  |
|  | TRS | **Traffic Signage** |  | 2027-03-30 | 2027-04-12 |  |  |  |  |  |  |  |  |  |  |  |  |
| A58980 |  | Traffic signs, ground mounted, 1 Sheet Alumenium, (breakaway) Single post | 2d | 2027-03-30 | 2027-04-01 | A58970 |  |  |  | 9d | 0d | ICKMO1-cost unite [40204.9 $]; boom truck [200 h]; labor [400 h]; Physical Units [346422 h] | 40,204.9 |  | ZNA | CON |  |
| A58990 |  | Traffic signs, ground mounted, 2 Sheet Alumenium, (breakaway) Single post | 1d | 2027-04-01 | 2027-04-03 | A58980 |  |  |  | 9d | 0d | ICKMO1-cost unite [40204.9 $]; boom truck [200 h]; labor [400 h]; Physical Units [346422 h] | 40,204.9 |  | ZNA | CON |  |
| A59000 |  | Traffic signs, ground mounted, Sheet Alumenium, (breakaway) Double post | 3d | 2027-04-03 | 2027-04-06 | A58990 |  |  |  | 9d | 0d | ICKMO1-cost unite [40204.9 $]; boom truck [200 h]; labor [400 h]; Physical Units [346422 h] | 40,204.9 |  | ZNA | CON |  |
| A59010 |  | Retroreflective raised pavement markers (Type A) | 2d | 2027-04-06 | 2027-04-08 | A59000 |  |  |  | 9d | 0d | ICKMO1-cost unite [40204.9 $]; boom truck [200 h]; labor [400 h]; Physical Units [346422 h] | 40,204.9 |  | ZNA | CON |  |
| A59020 |  | Ceramic raised pavement markers | 2d | 2027-04-08 | 2027-04-11 | A59010 |  |  |  | 9d | 0d | ICKMO1-cost unite [40204.9 $]; boom truck [200 h]; labor [400 h]; Physical Units [346422 h] | 40,204.9 |  | ZNA | CON |  |
| A59030 |  | Solar powered lighting cateyes pavement markers | 1d | 2027-04-11 | 2027-04-12 | A59020 |  |  |  | 9d | 0d | ICKMO1-cost unite [40204.9 $]; boom truck [200 h]; labor [400 h]; Physical Units [346422 h] | 40,204.9 |  | ZNA | CON |  |
|  | LW | **LANDSCAPE WORK** |  | 2027-03-04 | 2027-05-25 |  |  |  |  |  |  |  |  |  |  |  |  |
|  | 1 | **Road 1** |  | 2027-03-04 | 2027-04-22 |  |  |  |  |  |  |  |  |  |  |  |  |
|  | 2 | **Trees/ Palms** |  | 2027-03-04 | 2027-03-29 |  |  |  |  |  |  |  |  |  |  |  |  |
| A59040 |  | Roadside tree - Cordia sebestena | 21d | 2027-03-04 | 2027-03-29 | A56760, A1760, A1770, A1780, A1790, A1800, A10300, A10310 SS+5d, A10320, A88420, A10310 FF+5d |  |  |  | 200d | 158d | ICKMO1-cost unite [85129.4 $]; boom truck [200 h]; labor [800 h]; Physical Units [733510 h] | 85,129.37 |  | ZNA | CON |  |
| A59050 |  | Roadside tree - Parkinsonia aculeata | 21d | 2027-03-04 | 2027-03-29 | A56760, A88420 |  |  |  | 200d | 158d | ICKMO1-cost unite [85129.4 $]; boom truck [200 h]; labor [800 h]; Physical Units [733510 h] | 85,129.37 |  | ZNA | CON |  |
| A59060 |  | Roadside tree - Dalbergia sissoo | 21d | 2027-03-04 | 2027-03-29 | A56760, A88420 |  |  |  | 200d | 158d | ICKMO1-cost unite [85129.4 $]; boom truck [200 h]; labor [800 h]; Physical Units [733510 h] | 85,129.37 |  | ZNA | CON |  |
| A59070 |  | Roadside tree - Acacia stenophylla | 21d | 2027-03-04 | 2027-03-29 | A56760, A88420 |  |  |  | 200d | 158d | ICKMO1-cost unite [85129.4 $]; boom truck [200 h]; labor [800 h]; Physical Units [733510 h] | 85,129.37 |  | ZNA | CON |  |
| A59080 |  | Roadside tree - Hibiscus tiliaceus | 21d | 2027-03-04 | 2027-03-29 | A56760, A88420 |  |  |  | 200d | 158d | ICKMO1-cost unite [85129.4 $]; boom truck [200 h]; labor [800 h]; Physical Units [733510 h] | 85,129.37 |  | ZNA | CON |  |
| A59090 |  | Roadside tree - Azadirachla indica | 21d | 2027-03-04 | 2027-03-29 | A56760, A88420 |  |  |  | 179d | 0d | ICKMO1-cost unite [85129.4 $]; boom truck [200 h]; labor [800 h]; Physical Units [733510 h] | 85,129.37 |  | ZNA | CON |  |

| ID | WBS | Activity | Duration | Start | Finish | Predecessors | Total float | Free float | Resources | Cost | ALKHARJ INDUSTERIAL AREA - PROJECT ZONES | ALKHARJ INDUSTERIAL AREA - DECEPLINS |
| --- | --- | --- | --- | --- | --- | --- | --- | --- | --- | --- | --- | --- |
|  | 3 | **Miscellaneous Landscaping Items** |  | 2027-03-11 | 2027-04-05 |  |  |  |  |  |  |  |
| A59100 |  | Install Precast concrete block paving for sidewalk, mixed grey colour | 21d | 2027-03-11 | 2027-04-05 | A56780, A88420 | 194d | 152d | ICKMO1-cost unite [85129.4 $]; labor [1200 h]; Physical Units [733510 h] | 85,129.37 | ZNA | CON |
| A59110 |  | Install Precast concrete block paving for main intrsection, colour light grey | 21d | 2027-03-11 | 2027-04-05 | A56780, A88420 | 194d | 152d | ICKMO1-cost unite [85129.4 $]; labor [1200 h]; Physical Units [733510 h] | 85,129.37 | ZNA | CON |
| A59120 |  | install Precast concrete block paving for main intrsection, colour mid grey | 21d | 2027-03-11 | 2027-04-05 | A56780, A88420 | 194d | 152d | ICKMO1-cost unite [85129.4 $]; labor [1200 h]; Physical Units [733510 h] | 85,129.37 | ZNA | CON |
| A59130 |  | install Precast concrete block paving for main intrsection, colour dark grey | 21d | 2027-03-11 | 2027-04-05 | A56780, A88420 | 194d | 152d | ICKMO1-cost unite [85129.4 $]; labor [1200 h]; Physical Units [733510 h] | 85,129.37 | ZNA | CON |
| A59140 |  | Gravel, mixed dark beige + medium beige + light beige | 21d | 2027-03-11 | 2027-04-05 | A56780, A88420 | 194d | 152d | ICKMO1-cost unite [85129.4 $]; labor [1200 h]; Physical Units [733510 h] | 85,129.37 | ZNA | CON |
| A59150 |  | Concrete heel kerb | 21d | 2027-03-11 | 2027-04-05 | A56780, A88420 | 194d | 152d | ICKMO1-cost unite [85129.4 $]; labor [1200 h]; Physical Units [733510 h] | 85,129.37 | ZNA | CON |
|  | 1 | **Ground Cover And Shrubs** |  | 2027-03-29 | 2027-04-22 |  |  |  |  |  |  |  |
| A59160 |  | Lantana montevidensis | 21d | 2027-03-29 | 2027-04-22 | A59090 | 179d | 137d | ICKMO1-cost unite [127694 $]; labor [1200 h]; Physical Units [1100265 h] | 127,694.07 | ZNA | CON |
| A59170 |  | Portulaca grandiflora | 21d | 2027-03-29 | 2027-04-22 | A59090 | 179d | 137d | ICKMO1-cost unite [127694 $]; labor [1200 h]; Physical Units [1100265 h] | 127,694.07 | ZNA | CON |
| A59180 |  | Dodonaea viscosa | 21d | 2027-03-29 | 2027-04-22 | A59090 | 179d | 137d | ICKMO1-cost unite [127694 $]; labor [1200 h]; Physical Units [1100265 h] | 127,694.07 | ZNA | CON |
| A59190 |  | Atriplex halimus | 21d | 2027-03-29 | 2027-04-22 | A59090 | 179d | 137d | ICKMO1-cost unite [127694 $]; labor [1200 h]; Physical Units [1100265 h] | 127,694.07 | ZNA | CON |
|  | 2 | **Road 2** |  | 2027-03-10 | 2027-04-28 |  |  |  |  |  |  |  |
|  | 2 | **Trees/ Palms** |  | 2027-03-10 | 2027-04-04 |  |  |  |  |  |  |  |
| A59900 |  | Roadside tree - Cordia sebestena | 21d | 2027-03-10 | 2027-04-04 | A62680, A88420 | 195d | 153d | ICKMO1-cost unite [87205.7 $]; boom truck [200 h]; labor [800 h]; Physical Units [751400 h] | 87,205.71 | ZNA | CON |
| A59910 |  | Roadside tree - Parkinsonia aculeata | 21d | 2027-03-10 | 2027-04-04 | A62680, A88420 | 195d | 153d | ICKMO1-cost unite [87205.7 $]; boom truck [200 h]; labor [800 h]; Physical Units [751400 h] | 87,205.71 | ZNA | CON |
| A59920 |  | Roadside tree - Dalbergia sissoo | 21d | 2027-03-10 | 2027-04-04 | A62680, A88420 | 195d | 153d | ICKMO1-cost unite [87205.7 $]; boom truck [200 h]; labor [800 h]; Physical Units [751400 h] | 87,205.71 | ZNA | CON |
| A59930 |  | Roadside tree - Acacia stenophylla | 21d | 2027-03-10 | 2027-04-04 | A62680, A88420 | 195d | 153d | ICKMO1-cost unite [87205.7 $]; boom truck [200 h]; labor [800 h]; Physical Units [751400 h] | 87,205.71 | ZNA | CON |
| A59940 |  | Roadside tree - Hibiscus tiliaceus | 21d | 2027-03-10 | 2027-04-04 | A62680, A88420 | 195d | 153d | ICKMO1-cost unite [87205.7 $]; boom truck [200 h]; labor [800 h]; Physical Units [751400 h] | 87,205.71 | ZNA | CON |
| A59950 |  | Roadside tree - Azadirachla indica | 21d | 2027-03-10 | 2027-04-04 | A62680, A88420 | 174d | 0d | ICKMO1-cost unite [87205.7 $]; boom truck [200 h]; labor [800 h]; Physical Units [751400 h] | 87,205.71 | ZNA | CON |
|  | 3 | **Miscellaneous Landscaping Items** |  | 2027-03-17 | 2027-04-11 |  |  |  |  |  |  |  |
| A59960 |  | Install Precast concrete block paving for sidewalk, mixed grey colour | 21d | 2027-03-17 | 2027-04-11 | A62700, A88420 | 189d | 147d | ICKMO1-cost unite [87205.7 $]; labor [1200 h]; Physical Units [751400 h] | 87,205.71 | ZNA | CON |
| A59970 |  | Install Precast concrete block paving for main intrsection, colour light grey | 21d | 2027-03-17 | 2027-04-11 | A62700, A88420 | 189d | 147d | ICKMO1-cost unite [87205.7 $]; labor [1200 h]; Physical Units [751400 h] | 87,205.71 | ZNA | CON |
| A59980 |  | install Precast concrete block paving for main intrsection, colour mid grey | 21d | 2027-03-17 | 2027-04-11 | A62700, A88420 | 189d | 147d | ICKMO1-cost unite [87205.7 $]; labor [1200 h]; Physical Units [751400 h] | 87,205.71 | ZNA | CON |
| A59990 |  | install Precast concrete block paving for main intrsection, colour dark grey | 21d | 2027-03-17 | 2027-04-11 | A62700, A88420 | 189d | 147d | ICKMO1-cost unite [87205.7 $]; labor [1200 h]; Physical Units [751400 h] | 87,205.71 | ZNA | CON |
| A60000 |  | Gravel, mixed dark beige + medium beige + light beige | 21d | 2027-03-17 | 2027-04-11 | A62700, A88420 | 189d | 147d | ICKMO1-cost unite [87205.7 $]; labor [1200 h]; Physical Units [751400 h] | 87,205.71 | ZNA | CON |
| A60010 |  | Concrete heel kerb | 21d | 2027-03-17 | 2027-04-11 | A62700, A88420 | 189d | 147d | ICKMO1-cost unite [87205.7 $]; labor [1200 h]; Physical Units [751400 h] | 87,205.71 | ZNA | CON |

| ID | WBS | Activity | Duration | Start | Finish | Predecessors | Total float | Free float | Resources | Cost | ALKHARJ INDUSTERIAL AREA - PROJECT ZONES | ALKHARJ INDUSTERIAL AREA - DECEPLINS |
| --- | --- | --- | --- | --- | --- | --- | --- | --- | --- | --- | --- | --- |
|  | 1 | **Ground Cover And Shrubs** |  | 2027-04-04 | 2027-04-28 |  |  |  |  |  |  |  |
| A59860 |  | Lantana montevidensis | 21d | 2027-04-04 | 2027-04-28 | A59950 | 174d | 132d | ICKMO1-cost unite [130809 $]; labor [1200 h]; Physical Units [1127101 h] | 130,808.57 | ZNA | CON |
| A59870 |  | Portulaca grandiflora | 21d | 2027-04-04 | 2027-04-28 | A59950 | 174d | 132d | ICKMO1-cost unite [130809 $]; labor [1200 h]; Physical Units [1127101 h] | 130,808.57 | ZNA | CON |
| A59880 |  | Dodonaea viscosa | 21d | 2027-04-04 | 2027-04-28 | A59950 | 174d | 132d | ICKMO1-cost unite [130809 $]; labor [1200 h]; Physical Units [1127101 h] | 130,808.57 | ZNA | CON |
| A59890 |  | Atriplex halimus | 21d | 2027-04-04 | 2027-04-28 | A59950 | 174d | 132d | ICKMO1-cost unite [130809 $]; labor [1200 h]; Physical Units [1127101 h] | 130,808.57 | ZNA | CON |
|  | 3 | **Road 3** |  | 2027-03-24 | 2027-05-12 |  |  |  |  |  |  |  |
|  | 2 | **Trees/ Palms** |  | 2027-03-24 | 2027-04-18 |  |  |  |  |  |  |  |
| A60060 |  | Roadside tree - Cordia sebestena | 21d | 2027-03-24 | 2027-04-18 | A56900, A88420 | 183d | 141d | ICKMO1-cost unite [124580 $]; boom truck [200 h]; labor [800 h]; Physical Units [1073429 h] | 124,579.57 | ZNA | CON |
| A60070 |  | Roadside tree - Parkinsonia aculeata | 21d | 2027-03-24 | 2027-04-18 | A56900, A88420 | 183d | 141d | ICKMO1-cost unite [124580 $]; boom truck [200 h]; labor [800 h]; Physical Units [1073429 h] | 124,579.57 | ZNA | CON |
| A60080 |  | Roadside tree - Dalbergia sissoo | 21d | 2027-03-24 | 2027-04-18 | A56900, A88420 | 183d | 141d | ICKMO1-cost unite [124580 $]; boom truck [200 h]; labor [800 h]; Physical Units [1073429 h] | 124,579.57 | ZNA | CON |
| A60090 |  | Roadside tree - Acacia stenophylla | 21d | 2027-03-24 | 2027-04-18 | A56900, A88420 | 183d | 141d | ICKMO1-cost unite [124580 $]; boom truck [200 h]; labor [800 h]; Physical Units [1073429 h] | 124,579.57 | ZNA | CON |
| A60100 |  | Roadside tree - Hibiscus tiliaceus | 21d | 2027-03-24 | 2027-04-18 | A56900, A88420 | 183d | 141d | ICKMO1-cost unite [124580 $]; boom truck [200 h]; labor [800 h]; Physical Units [1073429 h] | 124,579.57 | ZNA | CON |
| A60110 |  | Roadside tree - Azadirachla indica | 21d | 2027-03-24 | 2027-04-18 | A56900, A88420 | 162d | 0d | ICKMO1-cost unite [124580 $]; boom truck [200 h]; labor [800 h]; Physical Units [1073429 h] | 124,579.57 | ZNA | CON |
|  | 3 | **Miscellaneous Landscaping Items** |  | 2027-04-03 | 2027-04-27 |  |  |  |  |  |  |  |
| A60120 |  | Install Precast concrete block paving for sidewalk, mixed grey colour | 21d | 2027-04-03 | 2027-04-27 | A56920, A88420 | 175d | 133d | ICKMO1-cost unite [124580 $]; labor [1200 h]; Physical Units [1073429 h] | 124,579.57 | ZNA | CON |
| A60130 |  | Install Precast concrete block paving for main intrsection, colour light grey | 21d | 2027-04-03 | 2027-04-27 | A56920, A88420 | 175d | 133d | ICKMO1-cost unite [124580 $]; labor [1200 h]; Physical Units [1073429 h] | 124,579.57 | ZNA | CON |
| A60140 |  | install Precast concrete block paving for main intrsection, colour mid grey | 21d | 2027-04-03 | 2027-04-27 | A56920, A88420 | 175d | 133d | ICKMO1-cost unite [124580 $]; labor [1200 h]; Physical Units [1073429 h] | 124,579.57 | ZNA | CON |
| A60150 |  | install Precast concrete block paving for main intrsection, colour dark grey | 21d | 2027-04-03 | 2027-04-27 | A56920, A88420 | 175d | 133d | ICKMO1-cost unite [124580 $]; labor [1200 h]; Physical Units [1073429 h] | 124,579.57 | ZNA | CON |
| A60160 |  | Gravel, mixed dark beige + medium beige + light beige | 21d | 2027-04-03 | 2027-04-27 | A56920, A88420 | 175d | 133d | ICKMO1-cost unite [124580 $]; labor [1200 h]; Physical Units [1073429 h] | 124,579.57 | ZNA | CON |
| A60170 |  | Concrete heel kerb | 21d | 2027-04-03 | 2027-04-27 | A56920, A88420 | 175d | 133d | ICKMO1-cost unite [124580 $]; labor [1200 h]; Physical Units [1073429 h] | 124,579.57 | ZNA | CON |
|  | 1 | **Ground Cover And Shrubs** |  | 2027-04-18 | 2027-05-12 |  |  |  |  |  |  |  |
| A60020 |  | Lantana montevidensis | 21d | 2027-04-18 | 2027-05-12 | A60110, A88420 | 162d | 120d | ICKMO1-cost unite [186869 $]; labor [1200 h]; Physical Units [1610144 h] | 186,869.38 | ZNA | CON |
| A60030 |  | Portulaca grandiflora | 21d | 2027-04-18 | 2027-05-12 | A60110, A88420 | 162d | 120d | ICKMO1-cost unite [186869 $]; labor [1200 h]; Physical Units [1610144 h] | 186,869.38 | ZNA | CON |
| A60040 |  | Dodonaea viscosa | 21d | 2027-04-18 | 2027-05-12 | A60110, A88420 | 162d | 120d | ICKMO1-cost unite [186869 $]; labor [1200 h]; Physical Units [1610144 h] | 186,869.38 | ZNA | CON |
| A60050 |  | Atriplex halimus | 21d | 2027-04-18 | 2027-05-12 | A60110, A88420 | 162d | 120d | ICKMO1-cost unite [186869 $]; labor [1200 h]; Physical Units [1610144 h] | 186,869.38 | ZNA | CON |

| ID | WBS | Activity | Duration | Start | Finish | Predecessors | Total float | Free float | Resources | Cost | ALKHARJ INDUSTERIAL AREA - PROJECT ZONES | ALKHARJ INDUSTERIAL AREA - DECEPLINS |
| --- | --- | --- | --- | --- | --- | --- | --- | --- | --- | --- | --- | --- |
|  | 4 | **Road 4** |  | 2027-03-10 | 2027-04-07 |  |  |  |  |  |  |  |
|  | 2 | **Trees/ Palms** |  | 2027-03-10 | 2027-03-14 |  |  |  |  |  |  |  |
| A60220 |  | Roadside tree - Cordia sebestena | 3d | 2027-03-10 | 2027-03-14 | A57040, A88420 | 213d | 171d | ICKMO1-cost unite [33221.2 $]; boom truck [200 h]; labor [800 h]; Physical Units [286248 h] | 33,221.22 | ZNA | CON |
| A60230 |  | Roadside tree - Parkinsonia aculeata | 3d | 2027-03-10 | 2027-03-14 | A57040, A88420 | 213d | 171d | ICKMO1-cost unite [33221.2 $]; boom truck [200 h]; labor [800 h]; Physical Units [286248 h] | 33,221.22 | ZNA | CON |
| A60240 |  | Roadside tree - Dalbergia sissoo | 3d | 2027-03-10 | 2027-03-14 | A57040, A88420 | 213d | 171d | ICKMO1-cost unite [33221.2 $]; boom truck [200 h]; labor [800 h]; Physical Units [286248 h] | 33,221.22 | ZNA | CON |
| A60250 |  | Roadside tree - Acacia stenophylla | 3d | 2027-03-10 | 2027-03-14 | A57040, A88420 | 213d | 171d | ICKMO1-cost unite [33221.2 $]; boom truck [200 h]; labor [800 h]; Physical Units [286248 h] | 33,221.22 | ZNA | CON |
| A60260 |  | Roadside tree - Hibiscus tiliaceus | 3d | 2027-03-10 | 2027-03-14 | A57040, A88420 | 213d | 171d | ICKMO1-cost unite [33221.2 $]; boom truck [200 h]; labor [800 h]; Physical Units [286248 h] | 33,221.22 | ZNA | CON |
| A60270 |  | Roadside tree - Azadirachla indica | 3d | 2027-03-10 | 2027-03-14 | A57040, A88420 | 192d | 0d | ICKMO1-cost unite [33221.2 $]; boom truck [200 h]; labor [800 h]; Physical Units [286248 h] | 33,221.22 | ZNA | CON |
|  | 3 | **Miscellaneous Landscaping Items** |  | 2027-03-13 | 2027-04-06 |  |  |  |  |  |  |  |
| A60280 |  | Install Precast concrete block paving for sidewalk, mixed grey colour | 21d | 2027-03-13 | 2027-04-06 | A57060, A88420 | 193d | 151d | ICKMO1-cost unite [33221.2 $]; labor [1200 h]; Physical Units [286248 h] | 33,221.22 | ZNA | CON |
| A60290 |  | Install Precast concrete block paving for main intrsection, colour light grey | 21d | 2027-03-13 | 2027-04-06 | A57060, A88420 | 193d | 151d | ICKMO1-cost unite [33221.2 $]; labor [1200 h]; Physical Units [286248 h] | 33,221.22 | ZNA | CON |
| A60300 |  | install Precast concrete block paving for main intrsection, colour mid grey | 21d | 2027-03-13 | 2027-04-06 | A57060, A88420 | 193d | 151d | ICKMO1-cost unite [33221.2 $]; labor [1200 h]; Physical Units [286248 h] | 33,221.22 | ZNA | CON |
| A60310 |  | install Precast concrete block paving for main intrsection, colour dark grey | 21d | 2027-03-13 | 2027-04-06 | A57060, A88420 | 193d | 151d | ICKMO1-cost unite [33221.2 $]; labor [1200 h]; Physical Units [286248 h] | 33,221.22 | ZNA | CON |
| A60320 |  | Gravel, mixed dark beige + medium beige + light beige | 21d | 2027-03-13 | 2027-04-06 | A57060, A88420 | 193d | 151d | ICKMO1-cost unite [33221.2 $]; labor [1200 h]; Physical Units [286248 h] | 33,221.22 | ZNA | CON |
| A60330 |  | Concrete heel kerb | 21d | 2027-03-13 | 2027-04-06 | A57060, A88420 | 193d | 151d | ICKMO1-cost unite [33221.2 $]; labor [1200 h]; Physical Units [286248 h] | 33,221.22 | ZNA | CON |
|  | 1 | **Ground Cover And Shrubs** |  | 2027-03-14 | 2027-04-07 |  |  |  |  |  |  |  |
| A60180 |  | Lantana montevidensis | 21d | 2027-03-14 | 2027-04-07 | A60270, A88420 | 192d | 150d | ICKMO1-cost unite [49831.8 $]; labor [1200 h]; Physical Units [429372 h] | 49,831.84 | ZNA | CON |
| A60190 |  | Portulaca grandiflora | 21d | 2027-03-14 | 2027-04-07 | A60270, A88420 | 192d | 150d | ICKMO1-cost unite [49831.8 $]; labor [1200 h]; Physical Units [429372 h] | 49,831.84 | ZNA | CON |
| A60200 |  | Dodonaea viscosa | 21d | 2027-03-14 | 2027-04-07 | A60270, A88420 | 192d | 150d | ICKMO1-cost unite [49831.8 $]; labor [1200 h]; Physical Units [429372 h] | 49,831.84 | ZNA | CON |
| A60210 |  | Atriplex halimus | 21d | 2027-03-14 | 2027-04-07 | A60270, A88420 | 192d | 150d | ICKMO1-cost unite [49831.8 $]; labor [1200 h]; Physical Units [429372 h] | 49,831.84 | ZNA | CON |
|  | 5 | **Road 5** |  | 2027-03-11 | 2027-04-29 |  |  |  |  |  |  |  |
|  | 2 | **Trees/ Palms** |  | 2027-03-11 | 2027-04-05 |  |  |  |  |  |  |  |
| A60380 |  | Roadside tree - Cordia sebestena | 21d | 2027-03-11 | 2027-04-05 | A57180, A88420 | 194d | 152d | ICKMO1-cost unite [33221.2 $]; boom truck [200 h]; labor [800 h]; Physical Units [286248 h] | 33,221.22 | ZNA | CON |
| A60390 |  | Roadside tree - Parkinsonia aculeata | 21d | 2027-03-11 | 2027-04-05 | A57180, A88420 | 194d | 152d | ICKMO1-cost unite [33221.2 $]; boom truck [200 h]; labor [800 h]; Physical Units [286248 h] | 33,221.22 | ZNA | CON |
| A60400 |  | Roadside tree - Dalbergia sissoo | 21d | 2027-03-11 | 2027-04-05 | A57180, A88420 | 194d | 152d | ICKMO1-cost unite [33221.2 $]; boom truck [200 h]; labor [800 h]; Physical Units [286248 h] | 33,221.22 | ZNA | CON |
| A60410 |  | Roadside tree - Acacia stenophylla | 21d | 2027-03-11 | 2027-04-05 | A57180, A88420 | 194d | 152d | ICKMO1-cost unite [33221.2 $]; boom truck [200 h]; labor [800 h]; Physical Units [286248 h] | 33,221.22 | ZNA | CON |
| A60420 |  | Roadside tree - Hibiscus tiliaceus | 21d | 2027-03-11 | 2027-04-05 | A57180, A88420 | 194d | 152d | ICKMO1-cost unite [33221.2 $]; boom truck [200 h]; labor [800 h]; Physical Units [286248 h] | 33,221.22 | ZNA | CON |
| A60430 |  | Roadside tree - Azadirachla indica | 21d | 2027-03-11 | 2027-04-05 | A57180, A88420 | 173d | 0d | ICKMO1-cost unite [33221.2 $]; boom truck [200 h]; labor [800 h]; Physical Units [286248 h] | 33,221.22 | ZNA | CON |

| ID | WBS | Activity | Duration | Start | Finish | Predecessors | Total float | Free float | Resources | Cost | ALKHARJ INDUSTERIAL AREA - PROJECT ZONES | ALKHARJ INDUSTERIAL AREA - DECEPLINS |
| --- | --- | --- | --- | --- | --- | --- | --- | --- | --- | --- | --- | --- |
|  | 3 | **Miscellaneous Landscaping Items** |  | 2027-03-14 | 2027-04-07 |  |  |  |  |  |  |  |
| A60440 |  | Install Precast concrete block paving for sidewalk, mixed grey colour | 21d | 2027-03-14 | 2027-04-07 | A57200, A88420 | 192d | 150d | ICKMO1-cost unite [33221.2 $]; labor [1200 h]; Physical Units [286248 h] | 33,221.22 | ZNA | CON |
| A60450 |  | Install Precast concrete block paving for main intrsection, colour light grey | 21d | 2027-03-14 | 2027-04-07 | A57200, A88420 | 192d | 150d | ICKMO1-cost unite [33221.2 $]; labor [1200 h]; Physical Units [286248 h] | 33,221.22 | ZNA | CON |
| A60460 |  | install Precast concrete block paving for main intrsection, colour mid grey | 21d | 2027-03-14 | 2027-04-07 | A57200, A88420 | 192d | 150d | ICKMO1-cost unite [33221.2 $]; labor [1200 h]; Physical Units [286248 h] | 33,221.22 | ZNA | CON |
| A60470 |  | install Precast concrete block paving for main intrsection, colour dark grey | 21d | 2027-03-14 | 2027-04-07 | A57200, A88420 | 192d | 150d | ICKMO1-cost unite [33221.2 $]; labor [1200 h]; Physical Units [286248 h] | 33,221.22 | ZNA | CON |
| A60480 |  | Gravel, mixed dark beige + medium beige + light beige | 21d | 2027-03-14 | 2027-04-07 | A57200, A88420 | 192d | 150d | ICKMO1-cost unite [33221.2 $]; labor [1200 h]; Physical Units [286248 h] | 33,221.22 | ZNA | CON |
| A60490 |  | Concrete heel kerb | 21d | 2027-03-14 | 2027-04-07 | A57200, A88420 | 192d | 150d | ICKMO1-cost unite [33221.2 $]; labor [1200 h]; Physical Units [286248 h] | 33,221.22 | ZNA | CON |
|  | 1 | **Ground Cover And Shrubs** |  | 2027-04-05 | 2027-04-29 |  |  |  |  |  |  |  |
| A60340 |  | Lantana montevidensis | 21d | 2027-04-05 | 2027-04-29 | A60430, A88420 | 173d | 131d | ICKMO1-cost unite [49831.8 $]; labor [1200 h]; Physical Units [429372 h] | 49,831.84 | ZNA | CON |
| A60350 |  | Portulaca grandiflora | 21d | 2027-04-05 | 2027-04-29 | A60430, A88420 | 173d | 131d | ICKMO1-cost unite [49831.8 $]; labor [1200 h]; Physical Units [429372 h] | 49,831.84 | ZNA | CON |
| A60360 |  | Dodonaea viscosa | 21d | 2027-04-05 | 2027-04-29 | A60430, A88420 | 173d | 131d | ICKMO1-cost unite [49831.8 $]; labor [1200 h]; Physical Units [429372 h] | 49,831.84 | ZNA | CON |
| A60370 |  | Atriplex halimus | 21d | 2027-04-05 | 2027-04-29 | A60430, A88420 | 173d | 131d | ICKMO1-cost unite [49831.8 $]; labor [1200 h]; Physical Units [429372 h] | 49,831.84 | ZNA | CON |
|  | 6 | **Road 6** |  | 2027-03-13 | 2027-05-01 |  |  |  |  |  |  |  |
|  | 2 | **Trees/ Palms** |  | 2027-03-13 | 2027-04-06 |  |  |  |  |  |  |  |
| A60540 |  | Roadside tree - Cordia sebestena | 21d | 2027-03-13 | 2027-04-06 | A57320, A88420 | 193d | 151d | ICKMO1-cost unite [33221.2 $]; boom truck [200 h]; labor [800 h]; Physical Units [286248 h] | 33,221.22 | ZNA | CON |
| A60550 |  | Roadside tree - Parkinsonia aculeata | 21d | 2027-03-13 | 2027-04-06 | A57320, A88420 | 193d | 151d | ICKMO1-cost unite [33221.2 $]; boom truck [200 h]; labor [800 h]; Physical Units [286248 h] | 33,221.22 | ZNA | CON |
| A60560 |  | Roadside tree - Dalbergia sissoo | 21d | 2027-03-13 | 2027-04-06 | A57320, A88420 | 193d | 151d | ICKMO1-cost unite [33221.2 $]; boom truck [200 h]; labor [800 h]; Physical Units [286248 h] | 33,221.22 | ZNA | CON |
| A60570 |  | Roadside tree - Acacia stenophylla | 21d | 2027-03-13 | 2027-04-06 | A57320, A88420 | 193d | 151d | ICKMO1-cost unite [33221.2 $]; boom truck [200 h]; labor [800 h]; Physical Units [286248 h] | 33,221.22 | ZNA | CON |
| A60580 |  | Roadside tree - Hibiscus tiliaceus | 21d | 2027-03-13 | 2027-04-06 | A57320, A88420 | 193d | 151d | ICKMO1-cost unite [33221.2 $]; boom truck [200 h]; labor [800 h]; Physical Units [286248 h] | 33,221.22 | ZNA | CON |
| A60590 |  | Roadside tree - Azadirachla indica | 21d | 2027-03-13 | 2027-04-06 | A57320, A88420 | 172d | 0d | ICKMO1-cost unite [33221.2 $]; boom truck [200 h]; labor [800 h]; Physical Units [286248 h] | 33,221.22 | ZNA | CON |
|  | 3 | **Miscellaneous Landscaping Items** |  | 2027-03-15 | 2027-04-08 |  |  |  |  |  |  |  |
| A60600 |  | Install Precast concrete block paving for sidewalk, mixed grey colour | 21d | 2027-03-15 | 2027-04-08 | A57340, A88420 | 191d | 149d | ICKMO1-cost unite [33221.2 $]; labor [1200 h]; Physical Units [286248 h] | 33,221.22 | ZNA | CON |
| A60610 |  | Install Precast concrete block paving for main intrsection, colour light grey | 21d | 2027-03-15 | 2027-04-08 | A57340, A88420 | 191d | 149d | ICKMO1-cost unite [33221.2 $]; labor [1200 h]; Physical Units [286248 h] | 33,221.22 | ZNA | CON |
| A60620 |  | install Precast concrete block paving for main intrsection, colour mid grey | 21d | 2027-03-15 | 2027-04-08 | A57340, A88420 | 191d | 149d | ICKMO1-cost unite [33221.2 $]; labor [1200 h]; Physical Units [286248 h] | 33,221.22 | ZNA | CON |
| A60630 |  | install Precast concrete block paving for main intrsection, colour dark grey | 21d | 2027-03-15 | 2027-04-08 | A57340, A88420 | 191d | 149d | ICKMO1-cost unite [33221.2 $]; labor [1200 h]; Physical Units [286248 h] | 33,221.22 | ZNA | CON |
| A60640 |  | Gravel, mixed dark beige + medium beige + light beige | 21d | 2027-03-15 | 2027-04-08 | A57340, A88420 | 191d | 149d | ICKMO1-cost unite [33221.2 $]; labor [1200 h]; Physical Units [286248 h] | 33,221.22 | ZNA | CON |
| A60650 |  | Concrete heel kerb | 21d | 2027-03-15 | 2027-04-08 | A57340, A88420 | 191d | 149d | ICKMO1-cost unite [33221.2 $]; labor [1200 h]; Physical Units [286248 h] | 33,221.22 | ZNA | CON |

| ID | WBS | Activity | Duration | Start | Finish | Predecessors | Total float | Free float | Resources | Cost | ALKHARJ INDUSTERIAL AREA - PROJECT ZONES | ALKHARJ INDUSTERIAL AREA - DECEPLINS |
| --- | --- | --- | --- | --- | --- | --- | --- | --- | --- | --- | --- | --- |
|  | 1 | **Ground Cover And Shrubs** |  | 2027-04-06 | 2027-05-01 |  |  |  |  |  |  |  |
| A60500 |  | Lantana montevidensis | 21d | 2027-04-06 | 2027-05-01 | A60590, A88420 | 172d | 130d | ICKMO1-cost unite [49831.8 $]; labor [1200 h]; Physical Units [429372 h] | 49,831.84 | ZNA | CON |
| A60510 |  | Portulaca grandiflora | 21d | 2027-04-06 | 2027-05-01 | A60590, A88420 | 172d | 130d | ICKMO1-cost unite [49831.8 $]; labor [1200 h]; Physical Units [429372 h] | 49,831.84 | ZNA | CON |
| A60520 |  | Dodonaea viscosa | 21d | 2027-04-06 | 2027-05-01 | A60590, A88420 | 172d | 130d | ICKMO1-cost unite [49831.8 $]; labor [1200 h]; Physical Units [429372 h] | 49,831.84 | ZNA | CON |
| A60530 |  | Atriplex halimus | 21d | 2027-04-06 | 2027-05-01 | A60590, A88420 | 172d | 130d | ICKMO1-cost unite [49831.8 $]; labor [1200 h]; Physical Units [429372 h] | 49,831.84 | ZNA | CON |
|  | 7 | **Road 7** |  | 2027-03-14 | 2027-05-02 |  |  |  |  |  |  |  |
|  | 2 | **Trees/ Palms** |  | 2027-03-14 | 2027-04-07 |  |  |  |  |  |  |  |
| A60700 |  | Roadside tree - Cordia sebestena | 21d | 2027-03-14 | 2027-04-07 | A57460, A88420 | 192d | 150d | ICKMO1-cost unite [33221.2 $]; boom truck [200 h]; labor [800 h]; Physical Units [286248 h] | 33,221.22 | ZNA | CON |
| A60710 |  | Roadside tree - Parkinsonia aculeata | 21d | 2027-03-14 | 2027-04-07 | A57460, A88420 | 192d | 150d | ICKMO1-cost unite [33221.2 $]; boom truck [200 h]; labor [800 h]; Physical Units [286248 h] | 33,221.22 | ZNA | CON |
| A60720 |  | Roadside tree - Dalbergia sissoo | 21d | 2027-03-14 | 2027-04-07 | A57460, A88420 | 192d | 150d | ICKMO1-cost unite [33221.2 $]; boom truck [200 h]; labor [800 h]; Physical Units [286248 h] | 33,221.22 | ZNA | CON |
| A60730 |  | Roadside tree - Acacia stenophylla | 21d | 2027-03-14 | 2027-04-07 | A57460, A88420 | 192d | 150d | ICKMO1-cost unite [33221.2 $]; boom truck [200 h]; labor [800 h]; Physical Units [286248 h] | 33,221.22 | ZNA | CON |
| A60740 |  | Roadside tree - Hibiscus tiliaceus | 21d | 2027-03-14 | 2027-04-07 | A57460, A88420 | 192d | 150d | ICKMO1-cost unite [33221.2 $]; boom truck [200 h]; labor [800 h]; Physical Units [286248 h] | 33,221.22 | ZNA | CON |
| A60750 |  | Roadside tree - Azadirachla indica | 21d | 2027-03-14 | 2027-04-07 | A57460, A88420 | 171d | 0d | ICKMO1-cost unite [33221.2 $]; boom truck [200 h]; labor [800 h]; Physical Units [286248 h] | 33,221.22 | ZNA | CON |
|  | 3 | **Miscellaneous Landscaping Items** |  | 2027-03-16 | 2027-04-10 |  |  |  |  |  |  |  |
| A60760 |  | Install Precast concrete block paving for sidewalk, mixed grey colour | 21d | 2027-03-16 | 2027-04-10 | A57480, A88420 | 190d | 148d | ICKMO1-cost unite [33221.2 $]; labor [1200 h]; Physical Units [286248 h] | 33,221.22 | ZNA | CON |
| A60770 |  | Install Precast concrete block paving for main intrsection, colour light grey | 21d | 2027-03-16 | 2027-04-10 | A57480, A88420 | 190d | 148d | ICKMO1-cost unite [33221.2 $]; labor [1200 h]; Physical Units [286248 h] | 33,221.22 | ZNA | CON |
| A60780 |  | install Precast concrete block paving for main intrsection, colour mid grey | 21d | 2027-03-16 | 2027-04-10 | A57480, A88420 | 190d | 148d | ICKMO1-cost unite [33221.2 $]; labor [1200 h]; Physical Units [286248 h] | 33,221.22 | ZNA | CON |
| A60790 |  | install Precast concrete block paving for main intrsection, colour dark grey | 21d | 2027-03-16 | 2027-04-10 | A57480, A88420 | 190d | 148d | ICKMO1-cost unite [33221.2 $]; labor [1200 h]; Physical Units [286248 h] | 33,221.22 | ZNA | CON |
| A60800 |  | Gravel, mixed dark beige + medium beige + light beige | 21d | 2027-03-16 | 2027-04-10 | A57480, A88420 | 190d | 148d | ICKMO1-cost unite [33221.2 $]; labor [1200 h]; Physical Units [286248 h] | 33,221.22 | ZNA | CON |
| A60810 |  | Concrete heel kerb | 21d | 2027-03-16 | 2027-04-10 | A57480, A88420 | 190d | 148d | ICKMO1-cost unite [33221.2 $]; labor [1200 h]; Physical Units [286248 h] | 33,221.22 | ZNA | CON |
|  | 1 | **Ground Cover And Shrubs** |  | 2027-04-07 | 2027-05-02 |  |  |  |  |  |  |  |
| A60660 |  | Lantana montevidensis | 21d | 2027-04-07 | 2027-05-02 | A60750, A88420 | 171d | 129d | ICKMO1-cost unite [49831.8 $]; labor [1200 h]; Physical Units [429372 h] | 49,831.84 | ZNA | CON |
| A60670 |  | Portulaca grandiflora | 21d | 2027-04-07 | 2027-05-02 | A60750, A88420 | 171d | 129d | ICKMO1-cost unite [49831.8 $]; labor [1200 h]; Physical Units [429372 h] | 49,831.84 | ZNA | CON |
| A60680 |  | Dodonaea viscosa | 21d | 2027-04-07 | 2027-05-02 | A60750, A88420 | 171d | 129d | ICKMO1-cost unite [49831.8 $]; labor [1200 h]; Physical Units [429372 h] | 49,831.84 | ZNA | CON |
| A60690 |  | Atriplex halimus | 21d | 2027-04-07 | 2027-05-02 | A60750, A88420 | 171d | 129d | ICKMO1-cost unite [49831.8 $]; labor [1200 h]; Physical Units [429372 h] | 49,831.84 | ZNA | CON |

| ID | WBS | Activity | Duration | Start | Finish | Predecessors | Total float | Free float | Resources | Cost | ALKHARJ INDUSTERIAL AREA - PROJECT ZONES | ALKHARJ INDUSTERIAL AREA - DECEPLINS |
| --- | --- | --- | --- | --- | --- | --- | --- | --- | --- | --- | --- | --- |
|  | 8 | **Road 8** |  | 2027-03-15 | 2027-05-03 |  |  |  |  |  |  |  |
|  | 2 | **Trees/ Palms** |  | 2027-03-15 | 2027-04-08 |  |  |  |  |  |  |  |
| A60860 |  | Roadside tree - Cordia sebestena | 21d | 2027-03-15 | 2027-04-08 | A57600, A88420 | 191d | 149d | ICKMO1-cost unite [33221.2 $]; boom truck [200 h]; labor [800 h]; Physical Units [286248 h] | 33,221.22 | ZNA | CON |
| A60870 |  | Roadside tree - Parkinsonia aculeata | 21d | 2027-03-15 | 2027-04-08 | A57600, A88420 | 191d | 149d | ICKMO1-cost unite [33221.2 $]; boom truck [200 h]; labor [800 h]; Physical Units [286248 h] | 33,221.22 | ZNA | CON |
| A60880 |  | Roadside tree - Dalbergia sissoo | 21d | 2027-03-15 | 2027-04-08 | A57600, A88420 | 191d | 149d | ICKMO1-cost unite [33221.2 $]; boom truck [200 h]; labor [800 h]; Physical Units [286248 h] | 33,221.22 | ZNA | CON |
| A60890 |  | Roadside tree - Acacia stenophylla | 21d | 2027-03-15 | 2027-04-08 | A57600, A88420 | 191d | 149d | ICKMO1-cost unite [33221.2 $]; boom truck [200 h]; labor [800 h]; Physical Units [286248 h] | 33,221.22 | ZNA | CON |
| A60900 |  | Roadside tree - Hibiscus tiliaceus | 21d | 2027-03-15 | 2027-04-08 | A57600, A88420 | 191d | 149d | ICKMO1-cost unite [33221.2 $]; boom truck [200 h]; labor [800 h]; Physical Units [286248 h] | 33,221.22 | ZNA | CON |
| A60910 |  | Roadside tree - Azadirachla indica | 21d | 2027-03-15 | 2027-04-08 | A57600, A88420 | 170d | 0d | ICKMO1-cost unite [33221.2 $]; boom truck [200 h]; labor [800 h]; Physical Units [286248 h] | 33,221.22 | ZNA | CON |
|  | 3 | **Miscellaneous Landscaping Items** |  | 2027-03-17 | 2027-04-11 |  |  |  |  |  |  |  |
| A60920 |  | Install Precast concrete block paving for sidewalk, mixed grey colour | 21d | 2027-03-17 | 2027-04-11 | A57620, A88420 | 189d | 147d | ICKMO1-cost unite [33221.2 $]; labor [1200 h]; Physical Units [286248 h] | 33,221.22 | ZNA | CON |
| A60930 |  | Install Precast concrete block paving for main intrsection, colour light grey | 21d | 2027-03-17 | 2027-04-11 | A57620, A88420 | 189d | 147d | ICKMO1-cost unite [33221.2 $]; labor [1200 h]; Physical Units [286248 h] | 33,221.22 | ZNA | CON |
| A60940 |  | install Precast concrete block paving for main intrsection, colour mid grey | 21d | 2027-03-17 | 2027-04-11 | A57620, A88420 | 189d | 147d | ICKMO1-cost unite [33221.2 $]; labor [1200 h]; Physical Units [286248 h] | 33,221.22 | ZNA | CON |
| A60950 |  | install Precast concrete block paving for main intrsection, colour dark grey | 21d | 2027-03-17 | 2027-04-11 | A57620, A88420 | 189d | 147d | ICKMO1-cost unite [33221.2 $]; labor [1200 h]; Physical Units [286248 h] | 33,221.22 | ZNA | CON |
| A60960 |  | Gravel, mixed dark beige + medium beige + light beige | 21d | 2027-03-17 | 2027-04-11 | A57620, A88420 | 189d | 147d | ICKMO1-cost unite [33221.2 $]; labor [1200 h]; Physical Units [286248 h] | 33,221.22 | ZNA | CON |
| A60970 |  | Concrete heel kerb | 21d | 2027-03-17 | 2027-04-11 | A57620, A88420 | 189d | 147d | ICKMO1-cost unite [33221.2 $]; labor [1200 h]; Physical Units [286248 h] | 33,221.22 | ZNA | CON |
|  | 1 | **Ground Cover And Shrubs** |  | 2027-04-08 | 2027-05-03 |  |  |  |  |  |  |  |
| A60820 |  | Lantana montevidensis | 21d | 2027-04-08 | 2027-05-03 | A60910, A88420 | 170d | 128d | ICKMO1-cost unite [49831.8 $]; labor [1200 h]; Physical Units [429372 h] | 49,831.84 | ZNA | CON |
| A60830 |  | Portulaca grandiflora | 21d | 2027-04-08 | 2027-05-03 | A60910, A88420 | 170d | 128d | ICKMO1-cost unite [49831.8 $]; labor [1200 h]; Physical Units [429372 h] | 49,831.84 | ZNA | CON |
| A60840 |  | Dodonaea viscosa | 21d | 2027-04-08 | 2027-05-03 | A60910, A88420 | 170d | 128d | ICKMO1-cost unite [49831.8 $]; labor [1200 h]; Physical Units [429372 h] | 49,831.84 | ZNA | CON |
| A60850 |  | Atriplex halimus | 21d | 2027-04-08 | 2027-05-03 | A60910, A88420 | 170d | 128d | ICKMO1-cost unite [49831.8 $]; labor [1200 h]; Physical Units [429372 h] | 49,831.84 | ZNA | CON |
|  | 9 | **Road 9** |  | 2027-03-16 | 2027-05-04 |  |  |  |  |  |  |  |
|  | 2 | **Trees/ Palms** |  | 2027-03-16 | 2027-04-10 |  |  |  |  |  |  |  |
| A61020 |  | Roadside tree - Cordia sebestena | 21d | 2027-03-16 | 2027-04-10 | A57740, A88420 | 190d | 148d | ICKMO1-cost unite [33221.2 $]; boom truck [200 h]; labor [800 h]; Physical Units [286248 h] | 33,221.22 | ZNA | CON |
| A61030 |  | Roadside tree - Parkinsonia aculeata | 21d | 2027-03-16 | 2027-04-10 | A57740, A88420 | 190d | 148d | ICKMO1-cost unite [33221.2 $]; boom truck [200 h]; labor [800 h]; Physical Units [286248 h] | 33,221.22 | ZNA | CON |
| A61040 |  | Roadside tree - Dalbergia sissoo | 21d | 2027-03-16 | 2027-04-10 | A57740, A88420 | 190d | 148d | ICKMO1-cost unite [33221.2 $]; boom truck [200 h]; labor [800 h]; Physical Units [286248 h] | 33,221.22 | ZNA | CON |
| A61050 |  | Roadside tree - Acacia stenophylla | 21d | 2027-03-16 | 2027-04-10 | A57740, A88420 | 190d | 148d | ICKMO1-cost unite [33221.2 $]; boom truck [200 h]; labor [800 h]; Physical Units [286248 h] | 33,221.22 | ZNA | CON |
| A61060 |  | Roadside tree - Hibiscus tiliaceus | 21d | 2027-03-16 | 2027-04-10 | A57740, A88420 | 190d | 148d | ICKMO1-cost unite [33221.2 $]; boom truck [200 h]; labor [800 h]; Physical Units [286248 h] | 33,221.22 | ZNA | CON |
| A61070 |  | Roadside tree - Azadirachla indica | 21d | 2027-03-16 | 2027-04-10 | A57740, A88420 | 169d | 0d | ICKMO1-cost unite [33221.2 $]; boom truck [200 h]; labor [800 h]; Physical Units [286248 h] | 33,221.22 | ZNA | CON |

| ID | WBS | Activity | Duration | Start | Finish | Predecessors | Total float | Free float | Resources | Cost | ALKHARJ INDUSTERIAL AREA - PROJECT ZONES | ALKHARJ INDUSTERIAL AREA - DECEPLINS |
| --- | --- | --- | --- | --- | --- | --- | --- | --- | --- | --- | --- | --- |
|  | 3 | **Miscellaneous Landscaping Items** |  | 2027-03-18 | 2027-04-12 |  |  |  |  |  |  |  |
| A61080 |  | Install Precast concrete block paving for sidewalk, mixed grey colour | 21d | 2027-03-18 | 2027-04-12 | A57760, A88420 | 188d | 146d | ICKMO1-cost unite [33221.2 $]; labor [1200 h]; Physical Units [286248 h] | 33,221.22 | ZNA | CON |
| A61090 |  | Install Precast concrete block paving for main intrsection, colour light grey | 21d | 2027-03-18 | 2027-04-12 | A57760, A88420 | 188d | 146d | ICKMO1-cost unite [33221.2 $]; labor [1200 h]; Physical Units [286248 h] | 33,221.22 | ZNA | CON |
| A61100 |  | install Precast concrete block paving for main intrsection, colour mid grey | 21d | 2027-03-18 | 2027-04-12 | A57760, A88420 | 188d | 146d | ICKMO1-cost unite [33221.2 $]; labor [1200 h]; Physical Units [286248 h] | 33,221.22 | ZNA | CON |
| A61110 |  | install Precast concrete block paving for main intrsection, colour dark grey | 21d | 2027-03-18 | 2027-04-12 | A57760, A88420 | 188d | 146d | ICKMO1-cost unite [33221.2 $]; labor [1200 h]; Physical Units [286248 h] | 33,221.22 | ZNA | CON |
| A61120 |  | Gravel, mixed dark beige + medium beige + light beige | 21d | 2027-03-18 | 2027-04-12 | A57760, A88420 | 188d | 146d | ICKMO1-cost unite [33221.2 $]; labor [1200 h]; Physical Units [286248 h] | 33,221.22 | ZNA | CON |
| A61130 |  | Concrete heel kerb | 21d | 2027-03-18 | 2027-04-12 | A57760, A88420 | 188d | 146d | ICKMO1-cost unite [33221.2 $]; labor [1200 h]; Physical Units [286248 h] | 33,221.22 | ZNA | CON |
|  | 1 | **Ground Cover And Shrubs** |  | 2027-04-10 | 2027-05-04 |  |  |  |  |  |  |  |
| A60980 |  | Lantana montevidensis | 21d | 2027-04-10 | 2027-05-04 | A61070, A88420 | 169d | 127d | ICKMO1-cost unite [49831.8 $]; labor [1200 h]; Physical Units [429372 h] | 49,831.84 | ZNA | CON |
| A60990 |  | Portulaca grandiflora | 21d | 2027-04-10 | 2027-05-04 | A61070, A88420 | 169d | 127d | ICKMO1-cost unite [49831.8 $]; labor [1200 h]; Physical Units [429372 h] | 49,831.84 | ZNA | CON |
| A61000 |  | Dodonaea viscosa | 21d | 2027-04-10 | 2027-05-04 | A61070, A88420 | 169d | 127d | ICKMO1-cost unite [49831.8 $]; labor [1200 h]; Physical Units [429372 h] | 49,831.84 | ZNA | CON |
| A61010 |  | Atriplex halimus | 21d | 2027-04-10 | 2027-05-04 | A61070, A88420 | 169d | 127d | ICKMO1-cost unite [49831.8 $]; labor [1200 h]; Physical Units [429372 h] | 49,831.84 | ZNA | CON |
|  | 10 | **Road 10** |  | 2027-03-17 | 2027-05-05 |  |  |  |  |  |  |  |
|  | 2 | **Trees/ Palms** |  | 2027-03-17 | 2027-04-11 |  |  |  |  |  |  |  |
| A61180 |  | Roadside tree - Cordia sebestena | 21d | 2027-03-17 | 2027-04-11 | A57880, A88420 | 189d | 147d | ICKMO1-cost unite [33221.2 $]; boom truck [200 h]; labor [800 h]; Physical Units [286248 h] | 33,221.22 | ZNA | CON |
| A61190 |  | Roadside tree - Parkinsonia aculeata | 21d | 2027-03-17 | 2027-04-11 | A57880, A88420 | 189d | 147d | ICKMO1-cost unite [33221.2 $]; boom truck [200 h]; labor [800 h]; Physical Units [286248 h] | 33,221.22 | ZNA | CON |
| A61200 |  | Roadside tree - Dalbergia sissoo | 21d | 2027-03-17 | 2027-04-11 | A57880, A88420 | 189d | 147d | ICKMO1-cost unite [33221.2 $]; boom truck [200 h]; labor [800 h]; Physical Units [286248 h] | 33,221.22 | ZNA | CON |
| A61210 |  | Roadside tree - Acacia stenophylla | 21d | 2027-03-17 | 2027-04-11 | A57880, A88420 | 189d | 147d | ICKMO1-cost unite [33221.2 $]; boom truck [200 h]; labor [800 h]; Physical Units [286248 h] | 33,221.22 | ZNA | CON |
| A61220 |  | Roadside tree - Hibiscus tiliaceus | 21d | 2027-03-17 | 2027-04-11 | A57880, A88420 | 189d | 147d | ICKMO1-cost unite [33221.2 $]; boom truck [200 h]; labor [800 h]; Physical Units [286248 h] | 33,221.22 | ZNA | CON |
| A61230 |  | Roadside tree - Azadirachla indica | 21d | 2027-03-17 | 2027-04-11 | A57880, A88420 | 168d | 0d | ICKMO1-cost unite [33221.2 $]; boom truck [200 h]; labor [800 h]; Physical Units [286248 h] | 33,221.22 | ZNA | CON |
|  | 3 | **Miscellaneous Landscaping Items** |  | 2027-03-20 | 2027-04-13 |  |  |  |  |  |  |  |
| A61240 |  | Install Precast concrete block paving for sidewalk, mixed grey colour | 21d | 2027-03-20 | 2027-04-13 | A57900, A88420 | 187d | 145d | ICKMO1-cost unite [33221.2 $]; labor [1200 h]; Physical Units [286248 h] | 33,221.22 | ZNA | CON |
| A61250 |  | Install Precast concrete block paving for main intrsection, colour light grey | 21d | 2027-03-20 | 2027-04-13 | A57900, A88420 | 187d | 145d | ICKMO1-cost unite [33221.2 $]; labor [1200 h]; Physical Units [286248 h] | 33,221.22 | ZNA | CON |
| A61260 |  | install Precast concrete block paving for main intrsection, colour mid grey | 21d | 2027-03-20 | 2027-04-13 | A57900, A88420 | 187d | 145d | ICKMO1-cost unite [33221.2 $]; labor [1200 h]; Physical Units [286248 h] | 33,221.22 | ZNA | CON |
| A61270 |  | install Precast concrete block paving for main intrsection, colour dark grey | 21d | 2027-03-20 | 2027-04-13 | A57900, A88420 | 187d | 145d | ICKMO1-cost unite [33221.2 $]; labor [1200 h]; Physical Units [286248 h] | 33,221.22 | ZNA | CON |
| A61280 |  | Gravel, mixed dark beige + medium beige + light beige | 21d | 2027-03-20 | 2027-04-13 | A57900, A88420 | 187d | 145d | ICKMO1-cost unite [33221.2 $]; labor [1200 h]; Physical Units [286248 h] | 33,221.22 | ZNA | CON |
| A61290 |  | Concrete heel kerb | 21d | 2027-03-20 | 2027-04-13 | A57900, A88420 | 187d | 145d | ICKMO1-cost unite [33221.2 $]; labor [1200 h]; Physical Units [286248 h] | 33,221.22 | ZNA | CON |

| ID | WBS | Activity | Duration | Start | Finish | Predecessors | Total float | Free float | Resources | Cost | ALKHARJ INDUSTERIAL AREA - PROJECT ZONES | ALKHARJ INDUSTERIAL AREA - DECEPLINS |
| --- | --- | --- | --- | --- | --- | --- | --- | --- | --- | --- | --- | --- |
|  | 1 | **Ground Cover And Shrubs** |  | 2027-04-11 | 2027-05-05 |  |  |  |  |  |  |  |
| A61140 |  | Lantana montevidensis | 21d | 2027-04-11 | 2027-05-05 | A61230, A88420 | 168d | 126d | ICKMO1-cost unite [49831.8 $]; labor [1200 h]; Physical Units [429372 h] | 49,831.84 | ZNA | CON |
| A61150 |  | Portulaca grandiflora | 21d | 2027-04-11 | 2027-05-05 | A61230, A88420 | 168d | 126d | ICKMO1-cost unite [49831.8 $]; labor [1200 h]; Physical Units [429372 h] | 49,831.84 | ZNA | CON |
| A61160 |  | Dodonaea viscosa | 21d | 2027-04-11 | 2027-05-05 | A61230, A88420 | 168d | 126d | ICKMO1-cost unite [49831.8 $]; labor [1200 h]; Physical Units [429372 h] | 49,831.84 | ZNA | CON |
| A61170 |  | Atriplex halimus | 21d | 2027-04-11 | 2027-05-05 | A61230, A88420 | 168d | 126d | ICKMO1-cost unite [49831.8 $]; labor [1200 h]; Physical Units [429372 h] | 49,831.84 | ZNA | CON |
|  | 11 | **Road 11** |  | 2027-03-18 | 2027-05-06 |  |  |  |  |  |  |  |
|  | 2 | **Trees/ Palms** |  | 2027-03-18 | 2027-04-12 |  |  |  |  |  |  |  |
| A61340 |  | Roadside tree - Cordia sebestena | 21d | 2027-03-18 | 2027-04-12 | A58020, A88420 | 188d | 146d | ICKMO1-cost unite [33221.2 $]; boom truck [200 h]; labor [800 h]; Physical Units [286248 h] | 33,221.22 | ZNA | CON |
| A61350 |  | Roadside tree - Parkinsonia aculeata | 21d | 2027-03-18 | 2027-04-12 | A58020, A88420 | 188d | 146d | ICKMO1-cost unite [33221.2 $]; boom truck [200 h]; labor [800 h]; Physical Units [286248 h] | 33,221.22 | ZNA | CON |
| A61360 |  | Roadside tree - Dalbergia sissoo | 21d | 2027-03-18 | 2027-04-12 | A58020, A88420 | 188d | 146d | ICKMO1-cost unite [33221.2 $]; boom truck [200 h]; labor [800 h]; Physical Units [286248 h] | 33,221.22 | ZNA | CON |
| A61370 |  | Roadside tree - Acacia stenophylla | 21d | 2027-03-18 | 2027-04-12 | A58020, A88420 | 188d | 146d | ICKMO1-cost unite [33221.2 $]; boom truck [200 h]; labor [800 h]; Physical Units [286248 h] | 33,221.22 | ZNA | CON |
| A61380 |  | Roadside tree - Hibiscus tiliaceus | 21d | 2027-03-18 | 2027-04-12 | A58020, A88420 | 188d | 146d | ICKMO1-cost unite [33221.2 $]; boom truck [200 h]; labor [800 h]; Physical Units [286248 h] | 33,221.22 | ZNA | CON |
| A61390 |  | Roadside tree - Azadirachla indica | 21d | 2027-03-18 | 2027-04-12 | A58020, A88420 | 167d | 0d | ICKMO1-cost unite [33221.2 $]; boom truck [200 h]; labor [800 h]; Physical Units [286248 h] | 33,221.22 | ZNA | CON |
|  | 3 | **Miscellaneous Landscaping Items** |  | 2027-03-21 | 2027-04-14 |  |  |  |  |  |  |  |
| A61400 |  | Install Precast concrete block paving for sidewalk, mixed grey colour | 21d | 2027-03-21 | 2027-04-14 | A58040, A88420 | 186d | 144d | ICKMO1-cost unite [33221.2 $]; labor [1200 h]; Physical Units [286248 h] | 33,221.22 | ZNA | CON |
| A61410 |  | Install Precast concrete block paving for main intrsection, colour light grey | 21d | 2027-03-21 | 2027-04-14 | A58040, A88420 | 186d | 144d | ICKMO1-cost unite [33221.2 $]; labor [1200 h]; Physical Units [286248 h] | 33,221.22 | ZNA | CON |
| A61420 |  | install Precast concrete block paving for main intrsection, colour mid grey | 21d | 2027-03-21 | 2027-04-14 | A58040, A88420 | 186d | 144d | ICKMO1-cost unite [33221.2 $]; labor [1200 h]; Physical Units [286248 h] | 33,221.22 | ZNA | CON |
| A61430 |  | install Precast concrete block paving for main intrsection, colour dark grey | 21d | 2027-03-21 | 2027-04-14 | A58040, A88420 | 186d | 144d | ICKMO1-cost unite [33221.2 $]; labor [1200 h]; Physical Units [286248 h] | 33,221.22 | ZNA | CON |
| A61440 |  | Gravel, mixed dark beige + medium beige + light beige | 21d | 2027-03-21 | 2027-04-14 | A58040, A88420 | 186d | 144d | ICKMO1-cost unite [33221.2 $]; labor [1200 h]; Physical Units [286248 h] | 33,221.22 | ZNA | CON |
| A61450 |  | Concrete heel kerb | 21d | 2027-03-21 | 2027-04-14 | A58040, A88420 | 186d | 144d | ICKMO1-cost unite [33221.2 $]; labor [1200 h]; Physical Units [286248 h] | 33,221.22 | ZNA | CON |
|  | 1 | **Ground Cover And Shrubs** |  | 2027-04-12 | 2027-05-06 |  |  |  |  |  |  |  |
| A61300 |  | Lantana montevidensis | 21d | 2027-04-12 | 2027-05-06 | A61390, A88420 | 167d | 125d | ICKMO1-cost unite [49831.8 $]; labor [1200 h]; Physical Units [429372 h] | 49,831.84 | ZNA | CON |
| A61310 |  | Portulaca grandiflora | 21d | 2027-04-12 | 2027-05-06 | A61390, A88420 | 167d | 125d | ICKMO1-cost unite [49831.8 $]; labor [1200 h]; Physical Units [429372 h] | 49,831.84 | ZNA | CON |
| A61320 |  | Dodonaea viscosa | 21d | 2027-04-12 | 2027-05-06 | A61390, A88420 | 167d | 125d | ICKMO1-cost unite [49831.8 $]; labor [1200 h]; Physical Units [429372 h] | 49,831.84 | ZNA | CON |
| A61330 |  | Atriplex halimus | 21d | 2027-04-12 | 2027-05-06 | A61390, A88420 | 167d | 125d | ICKMO1-cost unite [49831.8 $]; labor [1200 h]; Physical Units [429372 h] | 49,831.84 | ZNA | CON |

| ID | WBS | Activity | Duration | Start | Finish | Predecessors | Total float | Free float | Resources | Cost | ALKHARJ INDUSTERIAL AREA - PROJECT ZONES | ALKHARJ INDUSTERIAL AREA - DECEPLINS |
| --- | --- | --- | --- | --- | --- | --- | --- | --- | --- | --- | --- | --- |
|  | 12 | **Road 12** |  | 2027-03-20 | 2027-05-08 |  |  |  |  |  |  |  |
|  | 2 | **Trees/ Palms** |  | 2027-03-20 | 2027-04-13 |  |  |  |  |  |  |  |
| A61500 |  | Roadside tree - Cordia sebestena | 21d | 2027-03-20 | 2027-04-13 | A58160, A88420 | 187d | 145d | ICKMO1-cost unite [33221.2 $]; boom truck [200 h]; labor [800 h]; Physical Units [286248 h] | 33,221.22 | ZNA | CON |
| A61510 |  | Roadside tree - Parkinsonia aculeata | 21d | 2027-03-20 | 2027-04-13 | A58160, A88420 | 187d | 145d | ICKMO1-cost unite [33221.2 $]; boom truck [200 h]; labor [800 h]; Physical Units [286248 h] | 33,221.22 | ZNA | CON |
| A61520 |  | Roadside tree - Dalbergia sissoo | 21d | 2027-03-20 | 2027-04-13 | A58160, A88420 | 187d | 145d | ICKMO1-cost unite [33221.2 $]; boom truck [200 h]; labor [800 h]; Physical Units [286248 h] | 33,221.22 | ZNA | CON |
| A61530 |  | Roadside tree - Acacia stenophylla | 21d | 2027-03-20 | 2027-04-13 | A58160, A88420 | 187d | 145d | ICKMO1-cost unite [33221.2 $]; boom truck [200 h]; labor [800 h]; Physical Units [286248 h] | 33,221.22 | ZNA | CON |
| A61540 |  | Roadside tree - Hibiscus tiliaceus | 21d | 2027-03-20 | 2027-04-13 | A58160, A88420 | 187d | 145d | ICKMO1-cost unite [33221.2 $]; boom truck [200 h]; labor [800 h]; Physical Units [286248 h] | 33,221.22 | ZNA | CON |
| A61550 |  | Roadside tree - Azadirachla indica | 21d | 2027-03-20 | 2027-04-13 | A58160, A88420 | 166d | 0d | ICKMO1-cost unite [33221.2 $]; boom truck [200 h]; labor [800 h]; Physical Units [286248 h] | 33,221.22 | ZNA | CON |
|  | 3 | **Miscellaneous Landscaping Items** |  | 2027-03-22 | 2027-04-15 |  |  |  |  |  |  |  |
| A61560 |  | Install Precast concrete block paving for sidewalk, mixed grey colour | 21d | 2027-03-22 | 2027-04-15 | A58180, A88420 | 185d | 143d | ICKMO1-cost unite [33221.2 $]; labor [1200 h]; Physical Units [286248 h] | 33,221.22 | ZNA | CON |
| A61570 |  | Install Precast concrete block paving for main intrsection, colour light grey | 21d | 2027-03-22 | 2027-04-15 | A58180, A88420 | 185d | 143d | ICKMO1-cost unite [33221.2 $]; labor [1200 h]; Physical Units [286248 h] | 33,221.22 | ZNA | CON |
| A61580 |  | install Precast concrete block paving for main intrsection, colour mid grey | 21d | 2027-03-22 | 2027-04-15 | A58180, A88420 | 185d | 143d | ICKMO1-cost unite [33221.2 $]; labor [1200 h]; Physical Units [286248 h] | 33,221.22 | ZNA | CON |
| A61590 |  | install Precast concrete block paving for main intrsection, colour dark grey | 21d | 2027-03-22 | 2027-04-15 | A58180, A88420 | 185d | 143d | ICKMO1-cost unite [33221.2 $]; labor [1200 h]; Physical Units [286248 h] | 33,221.22 | ZNA | CON |
| A61600 |  | Gravel, mixed dark beige + medium beige + light beige | 21d | 2027-03-22 | 2027-04-15 | A58180, A88420 | 185d | 143d | ICKMO1-cost unite [33221.2 $]; labor [1200 h]; Physical Units [286248 h] | 33,221.22 | ZNA | CON |
| A61610 |  | Concrete heel kerb | 21d | 2027-03-22 | 2027-04-15 | A58180, A88420 | 185d | 143d | ICKMO1-cost unite [33221.2 $]; labor [1200 h]; Physical Units [286248 h] | 33,221.22 | ZNA | CON |
|  | 1 | **Ground Cover And Shrubs** |  | 2027-04-13 | 2027-05-08 |  |  |  |  |  |  |  |
| A61460 |  | Lantana montevidensis | 21d | 2027-04-13 | 2027-05-08 | A61550, A88420 | 166d | 124d | ICKMO1-cost unite [49831.8 $]; labor [1200 h]; Physical Units [429372 h] | 49,831.84 | ZNA | CON |
| A61470 |  | Portulaca grandiflora | 21d | 2027-04-13 | 2027-05-08 | A61550, A88420 | 166d | 124d | ICKMO1-cost unite [49831.8 $]; labor [1200 h]; Physical Units [429372 h] | 49,831.84 | ZNA | CON |
| A61480 |  | Dodonaea viscosa | 21d | 2027-04-13 | 2027-05-08 | A61550, A88420 | 166d | 124d | ICKMO1-cost unite [49831.8 $]; labor [1200 h]; Physical Units [429372 h] | 49,831.84 | ZNA | CON |
| A61490 |  | Atriplex halimus | 21d | 2027-04-13 | 2027-05-08 | A61550, A88420 | 166d | 124d | ICKMO1-cost unite [49831.8 $]; labor [1200 h]; Physical Units [429372 h] | 49,831.84 | ZNA | CON |
|  | 13 | **Road 13** |  | 2027-03-21 | 2027-05-09 |  |  |  |  |  |  |  |
|  | 2 | **Trees/ Palms** |  | 2027-03-21 | 2027-04-14 |  |  |  |  |  |  |  |
| A61660 |  | Roadside tree - Cordia sebestena | 21d | 2027-03-21 | 2027-04-14 | A58300, A88420 | 186d | 144d | ICKMO1-cost unite [33221.2 $]; boom truck [200 h]; labor [800 h]; Physical Units [286248 h] | 33,221.22 | ZNA | CON |
| A61670 |  | Roadside tree - Parkinsonia aculeata | 21d | 2027-03-21 | 2027-04-14 | A58300, A88420 | 186d | 144d | ICKMO1-cost unite [33221.2 $]; boom truck [200 h]; labor [800 h]; Physical Units [286248 h] | 33,221.22 | ZNA | CON |
| A61680 |  | Roadside tree - Dalbergia sissoo | 21d | 2027-03-21 | 2027-04-14 | A58300, A88420 | 186d | 144d | ICKMO1-cost unite [33221.2 $]; boom truck [200 h]; labor [800 h]; Physical Units [286248 h] | 33,221.22 | ZNA | CON |
| A61690 |  | Roadside tree - Acacia stenophylla | 21d | 2027-03-21 | 2027-04-14 | A58300, A88420 | 186d | 144d | ICKMO1-cost unite [33221.2 $]; boom truck [200 h]; labor [800 h]; Physical Units [286248 h] | 33,221.22 | ZNA | CON |
| A61700 |  | Roadside tree - Hibiscus tiliaceus | 21d | 2027-03-21 | 2027-04-14 | A58300, A88420 | 186d | 144d | ICKMO1-cost unite [33221.2 $]; boom truck [200 h]; labor [800 h]; Physical Units [286248 h] | 33,221.22 | ZNA | CON |
| A61710 |  | Roadside tree - Azadirachla indica | 21d | 2027-03-21 | 2027-04-14 | A58300, A88420 | 165d | 0d | ICKMO1-cost unite [33221.2 $]; boom truck [200 h]; labor [800 h]; Physical Units [286248 h] | 33,221.22 | ZNA | CON |

| ID | WBS | Activity | Duration | Start | Finish | Predecessors | Total float | Free float | Resources | Cost | ALKHARJ INDUSTERIAL AREA - PROJECT ZONES | ALKHARJ INDUSTERIAL AREA - DECEPLINS |
| --- | --- | --- | --- | --- | --- | --- | --- | --- | --- | --- | --- | --- |
|  | 3 | **Miscellaneous Landscaping Items** |  | 2027-03-23 | 2027-04-17 |  |  |  |  |  |  |  |
| A61720 |  | Install Precast concrete block paving for sidewalk, mixed grey colour | 21d | 2027-03-23 | 2027-04-17 | A58320, A88420 | 184d | 142d | ICKMO1-cost unite [33221.2 $]; labor [1200 h]; Physical Units [286248 h] | 33,221.22 | ZNA | CON |
| A61730 |  | Install Precast concrete block paving for main intrsection, colour light grey | 21d | 2027-03-23 | 2027-04-17 | A58320, A88420 | 184d | 142d | ICKMO1-cost unite [33221.2 $]; labor [1200 h]; Physical Units [286248 h] | 33,221.22 | ZNA | CON |
| A61740 |  | install Precast concrete block paving for main intrsection, colour mid grey | 21d | 2027-03-23 | 2027-04-17 | A58320, A88420 | 184d | 142d | ICKMO1-cost unite [33221.2 $]; labor [1200 h]; Physical Units [286248 h] | 33,221.22 | ZNA | CON |
| A61750 |  | install Precast concrete block paving for main intrsection, colour dark grey | 21d | 2027-03-23 | 2027-04-17 | A58320, A88420 | 184d | 142d | ICKMO1-cost unite [33221.2 $]; labor [1200 h]; Physical Units [286248 h] | 33,221.22 | ZNA | CON |
| A61760 |  | Gravel, mixed dark beige + medium beige + light beige | 21d | 2027-03-23 | 2027-04-17 | A58320, A88420 | 184d | 142d | ICKMO1-cost unite [33221.2 $]; labor [1200 h]; Physical Units [286248 h] | 33,221.22 | ZNA | CON |
| A61770 |  | Concrete heel kerb | 21d | 2027-03-23 | 2027-04-17 | A58320, A88420 | 184d | 142d | ICKMO1-cost unite [33221.2 $]; labor [1200 h]; Physical Units [286248 h] | 33,221.22 | ZNA | CON |
|  | 1 | **Ground Cover And Shrubs** |  | 2027-04-14 | 2027-05-09 |  |  |  |  |  |  |  |
| A61620 |  | Lantana montevidensis | 21d | 2027-04-14 | 2027-05-09 | A61710, A88420 | 165d | 123d | ICKMO1-cost unite [49831.8 $]; labor [1200 h]; Physical Units [429372 h] | 49,831.84 | ZNA | CON |
| A61630 |  | Portulaca grandiflora | 21d | 2027-04-14 | 2027-05-09 | A61710, A88420 | 165d | 123d | ICKMO1-cost unite [49831.8 $]; labor [1200 h]; Physical Units [429372 h] | 49,831.84 | ZNA | CON |
| A61640 |  | Dodonaea viscosa | 21d | 2027-04-14 | 2027-05-09 | A61710, A88420 | 165d | 123d | ICKMO1-cost unite [49831.8 $]; labor [1200 h]; Physical Units [429372 h] | 49,831.84 | ZNA | CON |
| A61650 |  | Atriplex halimus | 21d | 2027-04-14 | 2027-05-09 | A61710, A88420 | 165d | 123d | ICKMO1-cost unite [49831.8 $]; labor [1200 h]; Physical Units [429372 h] | 49,831.84 | ZNA | CON |
|  | 14 | **Road 14** |  | 2027-03-22 | 2027-05-10 |  |  |  |  |  |  |  |
|  | 2 | **Trees/ Palms** |  | 2027-03-22 | 2027-04-15 |  |  |  |  |  |  |  |
| A61820 |  | Roadside tree - Cordia sebestena | 21d | 2027-03-22 | 2027-04-15 | A58440, A88420 | 185d | 143d | ICKMO1-cost unite [33221.2 $]; boom truck [200 h]; labor [800 h]; Physical Units [286248 h] | 33,221.22 | ZNA | CON |
| A61830 |  | Roadside tree - Parkinsonia aculeata | 21d | 2027-03-22 | 2027-04-15 | A58440, A88420 | 185d | 143d | ICKMO1-cost unite [33221.2 $]; boom truck [200 h]; labor [800 h]; Physical Units [286248 h] | 33,221.22 | ZNA | CON |
| A61840 |  | Roadside tree - Dalbergia sissoo | 21d | 2027-03-22 | 2027-04-15 | A58440, A88420 | 185d | 143d | ICKMO1-cost unite [33221.2 $]; boom truck [200 h]; labor [800 h]; Physical Units [286248 h] | 33,221.22 | ZNA | CON |
| A61850 |  | Roadside tree - Acacia stenophylla | 21d | 2027-03-22 | 2027-04-15 | A58440, A88420 | 185d | 143d | ICKMO1-cost unite [33221.2 $]; boom truck [200 h]; labor [800 h]; Physical Units [286248 h] | 33,221.22 | ZNA | CON |
| A61860 |  | Roadside tree - Hibiscus tiliaceus | 21d | 2027-03-22 | 2027-04-15 | A58440, A88420 | 185d | 143d | ICKMO1-cost unite [33221.2 $]; boom truck [200 h]; labor [800 h]; Physical Units [286248 h] | 33,221.22 | ZNA | CON |
| A61870 |  | Roadside tree - Azadirachla indica | 21d | 2027-03-22 | 2027-04-15 | A58440, A88420 | 164d | 0d | ICKMO1-cost unite [33221.2 $]; boom truck [200 h]; labor [800 h]; Physical Units [286248 h] | 33,221.22 | ZNA | CON |
|  | 3 | **Miscellaneous Landscaping Items** |  | 2027-03-24 | 2027-04-18 |  |  |  |  |  |  |  |
| A61880 |  | Install Precast concrete block paving for sidewalk, mixed grey colour | 21d | 2027-03-24 | 2027-04-18 | A58460, A88420 | 183d | 141d | ICKMO1-cost unite [33221.2 $]; labor [1200 h]; Physical Units [286248 h] | 33,221.22 | ZNA | CON |
| A61890 |  | Install Precast concrete block paving for main intrsection, colour light grey | 21d | 2027-03-24 | 2027-04-18 | A58460, A88420 | 183d | 141d | ICKMO1-cost unite [33221.2 $]; labor [1200 h]; Physical Units [286248 h] | 33,221.22 | ZNA | CON |
| A61900 |  | install Precast concrete block paving for main intrsection, colour mid grey | 21d | 2027-03-24 | 2027-04-18 | A58460, A88420 | 183d | 141d | ICKMO1-cost unite [33221.2 $]; labor [1200 h]; Physical Units [286248 h] | 33,221.22 | ZNA | CON |
| A61910 |  | install Precast concrete block paving for main intrsection, colour dark grey | 21d | 2027-03-24 | 2027-04-18 | A58460, A88420 | 183d | 141d | ICKMO1-cost unite [33221.2 $]; labor [1200 h]; Physical Units [286248 h] | 33,221.22 | ZNA | CON |
| A61920 |  | Gravel, mixed dark beige + medium beige + light beige | 21d | 2027-03-24 | 2027-04-18 | A58460, A88420 | 183d | 141d | ICKMO1-cost unite [33221.2 $]; labor [1200 h]; Physical Units [286248 h] | 33,221.22 | ZNA | CON |
| A61930 |  | Concrete heel kerb | 21d | 2027-03-24 | 2027-04-18 | A58460, A88420 | 183d | 141d | ICKMO1-cost unite [33221.2 $]; labor [1200 h]; Physical Units [286248 h] | 33,221.22 | ZNA | CON |

| ID | WBS | Activity | Duration | Start | Finish | Predecessors | Total float | Free float | Resources | Cost | ALKHARJ INDUSTERIAL AREA - PROJECT ZONES | ALKHARJ INDUSTERIAL AREA - DECEPLINS |
| --- | --- | --- | --- | --- | --- | --- | --- | --- | --- | --- | --- | --- |
|  | 1 | **Ground Cover And Shrubs** |  | 2027-04-15 | 2027-05-10 |  |  |  |  |  |  |  |
| A61780 |  | Lantana montevidensis | 21d | 2027-04-15 | 2027-05-10 | A61870, A88420 | 164d | 122d | ICKMO1-cost unite [49831.8 $]; labor [1200 h]; Physical Units [429372 h] | 49,831.84 | ZNA | CON |
| A61790 |  | Portulaca grandiflora | 21d | 2027-04-15 | 2027-05-10 | A61870, A88420 | 164d | 122d | ICKMO1-cost unite [49831.8 $]; labor [1200 h]; Physical Units [429372 h] | 49,831.84 | ZNA | CON |
| A61800 |  | Dodonaea viscosa | 21d | 2027-04-15 | 2027-05-10 | A61870, A88420 | 164d | 122d | ICKMO1-cost unite [49831.8 $]; labor [1200 h]; Physical Units [429372 h] | 49,831.84 | ZNA | CON |
| A61810 |  | Atriplex halimus | 21d | 2027-04-15 | 2027-05-10 | A61870, A88420 | 164d | 122d | ICKMO1-cost unite [49831.8 $]; labor [1200 h]; Physical Units [429372 h] | 49,831.84 | ZNA | CON |
|  | 15 | **Road 15** |  | 2027-03-23 | 2027-05-11 |  |  |  |  |  |  |  |
|  | 2 | **Trees/ Palms** |  | 2027-03-23 | 2027-04-17 |  |  |  |  |  |  |  |
| A61980 |  | Roadside tree - Cordia sebestena | 21d | 2027-03-23 | 2027-04-17 | A58580, A88420 | 184d | 142d | ICKMO1-cost unite [33221.2 $]; boom truck [200 h]; labor [800 h]; Physical Units [286248 h] | 33,221.22 | ZNA | CON |
| A61990 |  | Roadside tree - Parkinsonia aculeata | 21d | 2027-03-23 | 2027-04-17 | A58580, A88420 | 184d | 142d | ICKMO1-cost unite [33221.2 $]; boom truck [200 h]; labor [800 h]; Physical Units [286248 h] | 33,221.22 | ZNA | CON |
| A62000 |  | Roadside tree - Dalbergia sissoo | 21d | 2027-03-23 | 2027-04-17 | A58580, A88420 | 184d | 142d | ICKMO1-cost unite [33221.2 $]; boom truck [200 h]; labor [800 h]; Physical Units [286248 h] | 33,221.22 | ZNA | CON |
| A62010 |  | Roadside tree - Acacia stenophylla | 21d | 2027-03-23 | 2027-04-17 | A58580, A88420 | 184d | 142d | ICKMO1-cost unite [33221.2 $]; boom truck [200 h]; labor [800 h]; Physical Units [286248 h] | 33,221.22 | ZNA | CON |
| A62020 |  | Roadside tree - Hibiscus tiliaceus | 21d | 2027-03-23 | 2027-04-17 | A58580, A88420 | 184d | 142d | ICKMO1-cost unite [33221.2 $]; boom truck [200 h]; labor [800 h]; Physical Units [286248 h] | 33,221.22 | ZNA | CON |
| A62030 |  | Roadside tree - Azadirachla indica | 21d | 2027-03-23 | 2027-04-17 | A58580, A88420 | 163d | 0d | ICKMO1-cost unite [33221.2 $]; boom truck [200 h]; labor [800 h]; Physical Units [286248 h] | 33,221.22 | ZNA | CON |
|  | 3 | **Miscellaneous Landscaping Items** |  | 2027-03-25 | 2027-04-19 |  |  |  |  |  |  |  |
| A62040 |  | Install Precast concrete block paving for sidewalk, mixed grey colour | 21d | 2027-03-25 | 2027-04-19 | A58600, A88420 | 182d | 140d | ICKMO1-cost unite [33221.2 $]; labor [1200 h]; Physical Units [286248 h] | 33,221.22 | ZNA | CON |
| A62050 |  | Install Precast concrete block paving for main intrsection, colour light grey | 21d | 2027-03-25 | 2027-04-19 | A58600, A88420 | 182d | 140d | ICKMO1-cost unite [33221.2 $]; labor [1200 h]; Physical Units [286248 h] | 33,221.22 | ZNA | CON |
| A62060 |  | install Precast concrete block paving for main intrsection, colour mid grey | 21d | 2027-03-25 | 2027-04-19 | A58600, A88420 | 182d | 140d | ICKMO1-cost unite [33221.2 $]; labor [1200 h]; Physical Units [286248 h] | 33,221.22 | ZNA | CON |
| A62070 |  | install Precast concrete block paving for main intrsection, colour dark grey | 21d | 2027-03-25 | 2027-04-19 | A58600, A88420 | 182d | 140d | ICKMO1-cost unite [33221.2 $]; labor [1200 h]; Physical Units [286248 h] | 33,221.22 | ZNA | CON |
| A62080 |  | Gravel, mixed dark beige + medium beige + light beige | 21d | 2027-03-25 | 2027-04-19 | A58600, A88420 | 182d | 140d | ICKMO1-cost unite [33221.2 $]; labor [1200 h]; Physical Units [286248 h] | 33,221.22 | ZNA | CON |
| A62090 |  | Concrete heel kerb | 21d | 2027-03-25 | 2027-04-19 | A58600, A88420 | 182d | 140d | ICKMO1-cost unite [33221.2 $]; labor [1200 h]; Physical Units [286248 h] | 33,221.22 | ZNA | CON |
|  | 1 | **Ground Cover And Shrubs** |  | 2027-04-17 | 2027-05-11 |  |  |  |  |  |  |  |
| A61940 |  | Lantana montevidensis | 21d | 2027-04-17 | 2027-05-11 | A62030, A88420 | 163d | 121d | ICKMO1-cost unite [49831.8 $]; labor [1200 h]; Physical Units [429372 h] | 49,831.84 | ZNA | CON |
| A61950 |  | Portulaca grandiflora | 21d | 2027-04-17 | 2027-05-11 | A62030, A88420 | 163d | 121d | ICKMO1-cost unite [49831.8 $]; labor [1200 h]; Physical Units [429372 h] | 49,831.84 | ZNA | CON |
| A61960 |  | Dodonaea viscosa | 21d | 2027-04-17 | 2027-05-11 | A62030, A88420 | 163d | 121d | ICKMO1-cost unite [49831.8 $]; labor [1200 h]; Physical Units [429372 h] | 49,831.84 | ZNA | CON |
| A61970 |  | Atriplex halimus | 21d | 2027-04-17 | 2027-05-11 | A62030, A88420 | 163d | 121d | ICKMO1-cost unite [49831.8 $]; labor [1200 h]; Physical Units [429372 h] | 49,831.84 | ZNA | CON |

| ID | WBS | Activity | Duration | Start | Finish | Predecessors | Total float | Free float | Resources | Cost | ALKHARJ INDUSTERIAL AREA - PROJECT ZONES | ALKHARJ INDUSTERIAL AREA - DECEPLINS |
| --- | --- | --- | --- | --- | --- | --- | --- | --- | --- | --- | --- | --- |
|  | 16 | **Road 16** |  | 2027-03-24 | 2027-05-12 |  |  |  |  |  |  |  |
|  | 2 | **Trees/ Palms** |  | 2027-03-24 | 2027-04-18 |  |  |  |  |  |  |  |
| A62140 |  | Roadside tree - Cordia sebestena | 21d | 2027-03-24 | 2027-04-18 | A58720, A88420 | 183d | 141d | ICKMO1-cost unite [33221.2 $]; boom truck [200 h]; labor [800 h]; Physical Units [286248 h] | 33,221.22 | ZNA | CON |
| A62150 |  | Roadside tree - Parkinsonia aculeata | 21d | 2027-03-24 | 2027-04-18 | A58720, A88420 | 183d | 141d | ICKMO1-cost unite [33221.2 $]; boom truck [200 h]; labor [800 h]; Physical Units [286248 h] | 33,221.22 | ZNA | CON |
| A62160 |  | Roadside tree - Dalbergia sissoo | 21d | 2027-03-24 | 2027-04-18 | A58720, A88420 | 183d | 141d | ICKMO1-cost unite [33221.2 $]; boom truck [200 h]; labor [800 h]; Physical Units [286248 h] | 33,221.22 | ZNA | CON |
| A62170 |  | Roadside tree - Acacia stenophylla | 21d | 2027-03-24 | 2027-04-18 | A58720, A88420 | 183d | 141d | ICKMO1-cost unite [33221.2 $]; boom truck [200 h]; labor [800 h]; Physical Units [286248 h] | 33,221.22 | ZNA | CON |
| A62180 |  | Roadside tree - Hibiscus tiliaceus | 21d | 2027-03-24 | 2027-04-18 | A58720, A88420 | 183d | 141d | ICKMO1-cost unite [33221.2 $]; boom truck [200 h]; labor [800 h]; Physical Units [286248 h] | 33,221.22 | ZNA | CON |
| A62190 |  | Roadside tree - Azadirachla indica | 21d | 2027-03-24 | 2027-04-18 | A58720, A88420 | 162d | 0d | ICKMO1-cost unite [33221.2 $]; boom truck [200 h]; labor [800 h]; Physical Units [286248 h] | 33,221.22 | ZNA | CON |
|  | 3 | **Miscellaneous Landscaping Items** |  | 2027-03-27 | 2027-04-20 |  |  |  |  |  |  |  |
| A62200 |  | Install Precast concrete block paving for sidewalk, mixed grey colour | 21d | 2027-03-27 | 2027-04-20 | A58740, A88420 | 181d | 139d | ICKMO1-cost unite [33221.2 $]; labor [1200 h]; Physical Units [286248 h] | 33,221.22 | ZNA | CON |
| A62210 |  | Install Precast concrete block paving for main intrsection, colour light grey | 21d | 2027-03-27 | 2027-04-20 | A58740, A88420 | 181d | 139d | ICKMO1-cost unite [33221.2 $]; labor [1200 h]; Physical Units [286248 h] | 33,221.22 | ZNA | CON |
| A62220 |  | install Precast concrete block paving for main intrsection, colour mid grey | 21d | 2027-03-27 | 2027-04-20 | A58740, A88420 | 181d | 139d | ICKMO1-cost unite [33221.2 $]; labor [1200 h]; Physical Units [286248 h] | 33,221.22 | ZNA | CON |
| A62230 |  | install Precast concrete block paving for main intrsection, colour dark grey | 21d | 2027-03-27 | 2027-04-20 | A58740, A88420 | 181d | 139d | ICKMO1-cost unite [33221.2 $]; labor [1200 h]; Physical Units [286248 h] | 33,221.22 | ZNA | CON |
| A62240 |  | Gravel, mixed dark beige + medium beige + light beige | 21d | 2027-03-27 | 2027-04-20 | A58740, A88420 | 181d | 139d | ICKMO1-cost unite [33221.2 $]; labor [1200 h]; Physical Units [286248 h] | 33,221.22 | ZNA | CON |
| A62250 |  | Concrete heel kerb | 21d | 2027-03-27 | 2027-04-20 | A58740, A88420 | 181d | 139d | ICKMO1-cost unite [33221.2 $]; labor [1200 h]; Physical Units [286248 h] | 33,221.22 | ZNA | CON |
|  | 1 | **Ground Cover And Shrubs** |  | 2027-04-18 | 2027-05-12 |  |  |  |  |  |  |  |
| A62100 |  | Lantana montevidensis | 21d | 2027-04-18 | 2027-05-12 | A62190, A88420 | 162d | 120d | ICKMO1-cost unite [49831.8 $]; labor [1200 h]; Physical Units [429372 h] | 49,831.84 | ZNA | CON |
| A62110 |  | Portulaca grandiflora | 21d | 2027-04-18 | 2027-05-12 | A62190, A88420 | 162d | 120d | ICKMO1-cost unite [49831.8 $]; labor [1200 h]; Physical Units [429372 h] | 49,831.84 | ZNA | CON |
| A62120 |  | Dodonaea viscosa | 21d | 2027-04-18 | 2027-05-12 | A62190, A88420 | 162d | 120d | ICKMO1-cost unite [49831.8 $]; labor [1200 h]; Physical Units [429372 h] | 49,831.84 | ZNA | CON |
| A62130 |  | Atriplex halimus | 21d | 2027-04-18 | 2027-05-12 | A62190, A88420 | 162d | 120d | ICKMO1-cost unite [49831.8 $]; labor [1200 h]; Physical Units [429372 h] | 49,831.84 | ZNA | CON |
|  | 17 | **Road 17** |  | 2027-03-30 | 2027-05-20 |  |  |  |  |  |  |  |
|  | 2 | **Trees/ Palms** |  | 2027-03-30 | 2027-04-26 |  |  |  |  |  |  |  |
| A62300 |  | Roadside tree - Cordia sebestena | 21d | 2027-03-30 | 2027-04-24 | A58860, A88420 | 178d | 136d | ICKMO1-cost unite [33221.2 $]; boom truck [200 h]; labor [800 h]; Physical Units [286248 h] | 33,221.22 | ZNA | CON |
| A62310 |  | Roadside tree - Parkinsonia aculeata | 21d | 2027-03-30 | 2027-04-24 | A58860, A88420 | 178d | 136d | ICKMO1-cost unite [33221.2 $]; boom truck [200 h]; labor [800 h]; Physical Units [286248 h] | 33,221.22 | ZNA | CON |
| A62320 |  | Roadside tree - Dalbergia sissoo | 21d | 2027-03-30 | 2027-04-24 | A58860, A88420 | 178d | 136d | ICKMO1-cost unite [33221.2 $]; boom truck [200 h]; labor [800 h]; Physical Units [286248 h] | 33,221.22 | ZNA | CON |
| A62330 |  | Roadside tree - Acacia stenophylla | 21d | 2027-03-30 | 2027-04-24 | A58860, A88420 | 178d | 136d | ICKMO1-cost unite [33221.2 $]; boom truck [200 h]; labor [800 h]; Physical Units [286248 h] | 33,221.22 | ZNA | CON |
| A62340 |  | Roadside tree - Hibiscus tiliaceus | 21d | 2027-03-30 | 2027-04-24 | A58860, A88420 | 178d | 136d | ICKMO1-cost unite [33221.2 $]; boom truck [200 h]; labor [800 h]; Physical Units [286248 h] | 33,221.22 | ZNA | CON |
| A62350 |  | Roadside tree - Azadirachla indica | 21d | 2027-04-01 | 2027-04-26 | A58860, A58880, A88420 | 155d | 0d | ICKMO1-cost unite [33221.2 $]; boom truck [200 h]; labor [800 h]; Physical Units [286248 h] | 33,221.22 | ZNA | CON |

| ID | WBS | Activity | Duration | Start | Finish | Predecessors | Total float | Free float | Resources | Cost | ALKHARJ INDUSTERIAL AREA - PROJECT ZONES | ALKHARJ INDUSTERIAL AREA - DECEPLINS |
| --- | --- | --- | --- | --- | --- | --- | --- | --- | --- | --- | --- | --- |
|  | 3 | **Miscellaneous Landscaping Items** |  | 2027-04-01 | 2027-04-26 |  |  |  |  |  |  |  |
| A62360 |  | Install Precast concrete block paving for sidewalk, mixed grey colour | 21d | 2027-04-01 | 2027-04-26 | A58880, A88420 | 176d | 134d | ICKMO1-cost unite [33221.2 $]; labor [1200 h]; Physical Units [286248 h] | 33,221.22 | ZNA | CON |
| A62370 |  | Install Precast concrete block paving for main intrsection, colour light grey | 21d | 2027-04-01 | 2027-04-26 | A58880, A88420 | 176d | 134d | ICKMO1-cost unite [33221.2 $]; labor [1200 h]; Physical Units [286248 h] | 33,221.22 | ZNA | CON |
| A62380 |  | install Precast concrete block paving for main intrsection, colour mid grey | 21d | 2027-04-01 | 2027-04-26 | A58880, A88420 | 176d | 134d | ICKMO1-cost unite [33221.2 $]; labor [1200 h]; Physical Units [286248 h] | 33,221.22 | ZNA | CON |
| A62390 |  | install Precast concrete block paving for main intrsection, colour dark grey | 21d | 2027-04-01 | 2027-04-26 | A58880, A88420 | 176d | 134d | ICKMO1-cost unite [33221.2 $]; labor [1200 h]; Physical Units [286248 h] | 33,221.22 | ZNA | CON |
| A62400 |  | Gravel, mixed dark beige + medium beige + light beige | 21d | 2027-04-01 | 2027-04-26 | A58880, A88420 | 176d | 134d | ICKMO1-cost unite [33221.2 $]; labor [1200 h]; Physical Units [286248 h] | 33,221.22 | ZNA | CON |
| A62410 |  | Concrete heel kerb | 21d | 2027-04-01 | 2027-04-26 | A58880, A88420 | 176d | 134d | ICKMO1-cost unite [33221.2 $]; labor [1200 h]; Physical Units [286248 h] | 33,221.22 | ZNA | CON |
|  | 1 | **Ground Cover And Shrubs** |  | 2027-04-26 | 2027-05-20 |  |  |  |  |  |  |  |
| A62260 |  | Lantana montevidensis | 21d | 2027-04-26 | 2027-05-20 | A62350, A88420 | 155d | 113d | ICKMO1-cost unite [49831.8 $]; labor [1200 h]; Physical Units [429372 h] | 49,831.84 | ZNA | CON |
| A62270 |  | Portulaca grandiflora | 21d | 2027-04-26 | 2027-05-20 | A62350, A88420 | 155d | 113d | ICKMO1-cost unite [49831.8 $]; labor [1200 h]; Physical Units [429372 h] | 49,831.84 | ZNA | CON |
| A62280 |  | Dodonaea viscosa | 21d | 2027-04-26 | 2027-05-20 | A62350, A88420 | 155d | 113d | ICKMO1-cost unite [49831.8 $]; labor [1200 h]; Physical Units [429372 h] | 49,831.84 | ZNA | CON |
| A62290 |  | Atriplex halimus | 21d | 2027-04-26 | 2027-05-20 | A62350, A88420 | 155d | 113d | ICKMO1-cost unite [49831.8 $]; labor [1200 h]; Physical Units [429372 h] | 49,831.84 | ZNA | CON |
|  | CO1 | **Collector 1** |  | 2027-04-06 | 2027-05-25 |  |  |  |  |  |  |  |
|  | 2 | **Trees/ Palms** |  | 2027-04-06 | 2027-05-01 |  |  |  |  |  |  |  |
| A62460 |  | Roadside tree - Cordia sebestena | 21d | 2027-04-06 | 2027-05-01 | A59000, A88420 | 172d | 130d | ICKMO1-cost unite [33221.2 $]; boom truck [200 h]; labor [800 h]; Physical Units [286248 h] | 33,221.22 | ZNA | CON |
| A62470 |  | Roadside tree - Parkinsonia aculeata | 21d | 2027-04-06 | 2027-05-01 | A59000, A88420 | 172d | 130d | ICKMO1-cost unite [33221.2 $]; boom truck [200 h]; labor [800 h]; Physical Units [286248 h] | 33,221.22 | ZNA | CON |
| A62480 |  | Roadside tree - Dalbergia sissoo | 21d | 2027-04-06 | 2027-05-01 | A59000, A88420 | 172d | 130d | ICKMO1-cost unite [33221.2 $]; boom truck [200 h]; labor [800 h]; Physical Units [286248 h] | 33,221.22 | ZNA | CON |
| A62490 |  | Roadside tree - Acacia stenophylla | 21d | 2027-04-06 | 2027-05-01 | A59000, A88420 | 172d | 130d | ICKMO1-cost unite [33221.2 $]; boom truck [200 h]; labor [800 h]; Physical Units [286248 h] | 33,221.22 | ZNA | CON |
| A62500 |  | Roadside tree - Hibiscus tiliaceus | 21d | 2027-04-06 | 2027-05-01 | A59000, A88420 | 172d | 130d | ICKMO1-cost unite [33221.2 $]; boom truck [200 h]; labor [800 h]; Physical Units [286248 h] | 33,221.22 | ZNA | CON |
| A62510 |  | Roadside tree - Azadirachla indica | 21d | 2027-04-06 | 2027-05-01 | A59000, A88420 | 151d | 0d | ICKMO1-cost unite [33221.2 $]; boom truck [200 h]; labor [800 h]; Physical Units [286248 h] | 33,221.22 | ZNA | CON |
|  | 3 | **Miscellaneous Landscaping Items** |  | 2027-04-11 | 2027-05-05 |  |  |  |  |  |  |  |
| A62520 |  | Install Precast concrete block paving for sidewalk, mixed grey colour | 21d | 2027-04-11 | 2027-05-05 | A59020, A88420 | 168d | 126d | ICKMO1-cost unite [33221.2 $]; labor [1200 h]; Physical Units [286248 h] | 33,221.22 | ZNA | CON |
| A62530 |  | Install Precast concrete block paving for main intrsection, colour light grey | 21d | 2027-04-11 | 2027-05-05 | A59020, A88420 | 168d | 126d | ICKMO1-cost unite [33221.2 $]; labor [1200 h]; Physical Units [286248 h] | 33,221.22 | ZNA | CON |
| A62540 |  | install Precast concrete block paving for main intrsection, colour mid grey | 21d | 2027-04-11 | 2027-05-05 | A59020, A88420 | 168d | 126d | ICKMO1-cost unite [33221.2 $]; labor [1200 h]; Physical Units [286248 h] | 33,221.22 | ZNA | CON |
| A62550 |  | install Precast concrete block paving for main intrsection, colour dark grey | 21d | 2027-04-11 | 2027-05-05 | A59020, A88420 | 168d | 126d | ICKMO1-cost unite [33221.2 $]; labor [1200 h]; Physical Units [286248 h] | 33,221.22 | ZNA | CON |
| A62560 |  | Gravel, mixed dark beige + medium beige + light beige | 21d | 2027-04-11 | 2027-05-05 | A59020, A88420 | 168d | 126d | ICKMO1-cost unite [33221.2 $]; labor [1200 h]; Physical Units [286248 h] | 33,221.22 | ZNA | CON |
| A62570 |  | Concrete heel kerb | 21d | 2027-04-11 | 2027-05-05 | A59020, A88420 | 168d | 126d | ICKMO1-cost unite [33221.2 $]; labor [1200 h]; Physical Units [286248 h] | 33,221.22 | ZNA | CON |

| ID | WBS | Activity | Duration | Start | Finish | Predecessors | Complete | Remaining | Planned start | Planned finish | Total float | Free float | Resources | Cost | Actual cost | ALKHARJ INDUSTERIAL AREA - PROJECT ZONES | ALKHARJ INDUSTERIAL AREA - DECEPLINS |
| --- | --- | --- | --- | --- | --- | --- | --- | --- | --- | --- | --- | --- | --- | --- | --- | --- | --- |
|  | 1 | **Ground Cover And Shrubs** |  | 2027-05-01 | 2027-05-25 |  |  |  |  |  |  |  |  |  |  |  |  |
| A62420 |  | Lantana montevidensis | 21d | 2027-05-01 | 2027-05-25 | A62510, A88420 |  |  |  |  | 151d | 109d | ICKMO1-cost unite [49831.8 $]; labor [1200 h]; Physical Units [429372 h] | 49,831.84 |  | ZNA | CON |
| A62430 |  | Portulaca grandiflora | 21d | 2027-05-01 | 2027-05-25 | A62510, A88420 |  |  |  |  | 151d | 109d | ICKMO1-cost unite [49831.8 $]; labor [1200 h]; Physical Units [429372 h] | 49,831.84 |  | ZNA | CON |
| A62440 |  | Dodonaea viscosa | 21d | 2027-05-01 | 2027-05-25 | A62510, A88420 |  |  |  |  | 151d | 109d | ICKMO1-cost unite [49831.8 $]; labor [1200 h]; Physical Units [429372 h] | 49,831.84 |  | ZNA | CON |
| A62450 |  | Atriplex halimus | 21d | 2027-05-01 | 2027-05-25 | A62510, A88420 |  |  |  |  | 151d | 109d | ICKMO1-cost unite [49831.8 $]; labor [1200 h]; Physical Units [429372 h] | 49,831.84 |  | ZNA | CON |
|  | Zone B | **Zone B** |  | 2026-01-03 | 2027-09-29 |  |  |  |  |  |  |  |  |  |  |  |  |
|  | PREP | **EARTH WORK** |  | 2026-01-03 | 2026-10-20 |  |  |  |  |  |  |  |  |  |  |  |  |
|  | R18 | **Road 18** |  | 2026-01-03 | 2026-09-20 |  |  |  |  |  |  |  |  |  |  |  |  |
|  | EW | **Earth Work** |  | 2026-01-03 | 2026-09-20 |  |  |  |  |  |  |  |  |  |  |  |  |
| A62720 |  | Earthworks - Cut Excavation | 4d | 2026-01-03 A | 2026-09-20 A | A1010 | 100% |  | 2026-01-03 | 2026-01-06 |  |  | ICKMO1-cost unite [131689 $]; Excavator [800 h]; Grader [200 h]; Bulldozer [200 h]; Excavation works [6215.33]; Physical Units [1134684 h] | 131,688.61 | 131,688.61 | ZNB | CON |
| A62730 |  | Earthworks - Fill & Compaction | 14d | 2026-08-15 A | 2026-09-20 A | A62720 | 100% |  | 2026-01-07 | 2026-01-22 |  |  | ICKMO1-cost unite [98766.5 $]; Roller compactor [200 h]; Bulldozer [200 h]; Physical Units [851013 h] | 98,766.46 | 98,766.46 | ZNB | CON |
| A62740 |  | Subgrade | 5d | 2026-08-15 A | 2026-09-20 A | A62730, A2930, A2940, A2950, A2960, A2970, A2980, A2990 | 100% |  | 2026-01-24 | 2026-01-28 |  |  | ICKMO1-cost unite [98766.5 $]; Excavator [800 h]; Bulldozer [200 h]; Physical Units [851013 h] | 98,766.46 | 98,766.46 | ZNB | CON |
|  | R19 | **Road 19** |  | 2026-01-07 | 2026-09-20 |  |  |  |  |  |  |  |  |  |  |  |  |
|  | EW | **Earth Work** |  | 2026-01-07 | 2026-09-20 |  |  |  |  |  |  |  |  |  |  |  |  |
| A64350 |  | Earthworks - Cut Excavation | 4d | 2026-01-07 A | 2026-09-20 A | A62720 | 100% |  | 2026-01-07 | 2026-01-11 |  |  | ICKMO1-cost unite [131689 $]; Excavator [800 h]; Grader [200 h]; Bulldozer [200 h]; Excavation works [6215.33]; Physical Units [1134684 h] | 131,688.61 | 131,688.61 | ZNB | CON |
| A64360 |  | Earthworks - Fill & Compaction | 10d | 2026-08-15 A | 2026-09-20 A | A64350 | 100% |  | 2026-01-12 | 2026-01-22 |  |  | ICKMO1-cost unite [98766.5 $]; Roller compactor [200 h]; Bulldozer [200 h]; Physical Units [851013 h] | 98,766.46 | 98,766.46 | ZNB | CON |
| A64370 |  | Subgrade | 5d | 2026-08-15 A | 2026-09-20 A | A64360 | 100% |  | 2026-01-24 | 2026-01-28 |  |  | ICKMO1-cost unite [98766.5 $]; Excavator [800 h]; Bulldozer [200 h]; Physical Units [851013 h] | 98,766.46 | 98,766.46 | ZNB | CON |
|  | R20 | **Road 20** |  | 2026-01-12 | 2026-09-20 |  |  |  |  |  |  |  |  |  |  |  |  |
|  | EW | **Earth Work** |  | 2026-01-12 | 2026-09-20 |  |  |  |  |  |  |  |  |  |  |  |  |
| A64380 |  | Earthworks - Cut Excavation | 4d | 2026-01-12 A | 2026-09-20 A | A64350 | 100% |  | 2026-01-12 | 2026-01-15 |  |  | ICKMO1-cost unite [219481 $]; Excavator [800 h]; Grader [200 h]; Bulldozer [200 h]; Excavation works [6215.33]; Physical Units [1891139 h] | 219,481.02 | 219,481.02 | ZNB | CON |
| A64390 |  | Earthworks - Fill & Compaction | 5d | 2026-08-15 A | 2026-09-20 A | A64380 | 100% |  | 2026-01-17 | 2026-01-21 |  |  | ICKMO1-cost unite [164611 $]; Roller compactor [200 h]; Bulldozer [200 h]; Physical Units [1418355 h] | 164,610.77 | 164,610.77 | ZNB | CON |
| A64400 |  | Subgrade | 5d | 2026-08-15 A | 2026-09-20 A | A64390 | 100% |  | 2026-01-22 | 2026-01-27 |  |  | ICKMO1-cost unite [164611 $]; Excavator [800 h]; Bulldozer [200 h]; Physical Units [1418355 h] | 164,610.77 | 164,610.77 | ZNB | CON |
|  | R21 | **Road 21** |  | 2026-01-17 | 2026-10-10 |  |  |  |  |  |  |  |  |  |  |  |  |
|  | EW | **Earth Work** |  | 2026-01-17 | 2026-10-10 |  |  |  |  |  |  |  |  |  |  |  |  |
| A64410 |  | Earthworks - Cut Excavation | 4d | 2026-01-17 A | 2026-09-20 A | A64380 | 100% |  | 2026-01-17 | 2026-01-20 |  |  | ICKMO1-cost unite [219481 $]; Excavator [800 h]; Grader [200 h]; Bulldozer [200 h]; Excavation works [6215.33]; Physical Units [1891139 h] | 219,481.02 | 219,481.02 | ZNB | CON |
| A64420 |  | Earthworks - Fill & Compaction | 5d | 2026-08-15 A | 2026-09-20 A | A64410 | 100% |  | 2026-01-21 | 2026-01-26 |  |  | ICKMO1-cost unite [164611 $]; Roller compactor [200 h]; Bulldozer [200 h]; Physical Units [1418355 h] | 164,610.77 | 164,610.77 | ZNB | CON |
| A64430 |  | Subgrade | 5d | 2026-08-29 A | 2026-10-10 | A64420 | 98% | 0.1d | 2026-01-27 | 2026-02-01 | -17.01d | 41.85d | ICKMO1-cost unite [164611 $]; Excavator [800 h]; Bulldozer [200 h]; Physical Units [1418355 h] | 164,610.77 | 161,318.55 | ZNB | CON |

| ID | WBS | Activity | Duration | Start | Finish | Predecessors | Complete | Remaining | Planned start | Planned finish | Total float | Free float | Resources | Cost | Actual cost | ALKHARJ INDUSTERIAL AREA - PROJECT ZONES | ALKHARJ INDUSTERIAL AREA - DECEPLINS |
| --- | --- | --- | --- | --- | --- | --- | --- | --- | --- | --- | --- | --- | --- | --- | --- | --- | --- |
|  | R22 | **Road 22** |  | 2026-01-21 | 2026-10-10 |  |  |  |  |  |  |  |  |  |  |  |  |
|  | EW | **Earth Work** |  | 2026-01-21 | 2026-10-10 |  |  |  |  |  |  |  |  |  |  |  |  |
| A64440 |  | Earthworks - Cut Excavation | 4d | 2026-01-21 A | 2026-09-20 A | A64410 | 100% |  | 2026-01-21 | 2026-01-25 |  |  | ICKMO1-cost unite [131689 $]; Excavator [800 h]; Grader [200 h]; Bulldozer [200 h]; Excavation works [6215.33]; Physical Units [1134684 h] | 131,688.61 | 131,688.61 | ZNB | CON |
| A64450 |  | Earthworks - Fill & Compaction | 5d | 2026-08-15 A | 2026-09-20 A | A64440 | 100% |  | 2026-01-26 | 2026-01-31 |  |  | ICKMO1-cost unite [98766.5 $]; Roller compactor [200 h]; Bulldozer [200 h]; Physical Units [851013 h] | 98,766.46 | 98,766.46 | ZNB | CON |
| A64460 |  | Subgrade | 5d | 2026-08-29 A | 2026-10-10 | A64450 | 95% | 0.25d | 2026-02-01 | 2026-02-05 | -17.1d | 41.76d | ICKMO1-cost unite [98766.5 $]; Excavator [800 h]; Bulldozer [200 h]; Physical Units [851013 h] | 98,766.46 | 93,828.14 | ZNB | CON |
|  | R23 | **Road 23** |  | 2026-01-26 | 2026-10-10 |  |  |  |  |  |  |  |  |  |  |  |  |
|  | EW | **Earth Work** |  | 2026-01-26 | 2026-10-10 |  |  |  |  |  |  |  |  |  |  |  |  |
| A64470 |  | Earthworks - Cut Excavation | 4d | 2026-01-26 A | 2026-09-20 A | A64440 | 100% |  | 2026-01-26 | 2026-01-29 |  |  | ICKMO1-cost unite [131689 $]; Excavator [800 h]; Grader [200 h]; Bulldozer [200 h]; Excavation works [6215.33]; Physical Units [1134684 h] | 131,688.61 | 131,688.61 | ZNB | CON |
| A64480 |  | Earthworks - Fill & Compaction | 5d | 2026-08-15 A | 2026-09-20 A | A64470 | 100% |  | 2026-01-31 | 2026-02-04 |  |  | ICKMO1-cost unite [98766.5 $]; Roller compactor [200 h]; Bulldozer [200 h]; Physical Units [851013 h] | 98,766.46 | 98,766.46 | ZNB | CON |
| A64490 |  | Subgrade | 5d | 2026-08-29 A | 2026-10-10 | A64480 | 95% | 0.25d | 2026-02-05 | 2026-02-10 | -17.04d | 41.82d | ICKMO1-cost unite [98766.5 $]; Excavator [800 h]; Bulldozer [200 h]; Physical Units [851013 h] | 98,766.46 | 93,828.14 | ZNB | CON |
|  | R24 | **Road 24** |  | 2026-01-31 | 2026-10-10 |  |  |  |  |  |  |  |  |  |  |  |  |
|  | EW | **Earth Work** |  | 2026-01-31 | 2026-10-10 |  |  |  |  |  |  |  |  |  |  |  |  |
| A64500 |  | Earthworks - Cut Excavation | 4d | 2026-01-31 A | 2026-09-20 A | A64470 | 100% |  | 2026-01-31 | 2026-02-03 |  |  | ICKMO1-cost unite [131689 $]; Excavator [800 h]; Grader [200 h]; Bulldozer [200 h]; Excavation works [6215.33]; Physical Units [1134684 h] | 131,688.61 | 131,688.61 | ZNB | CON |
| A64510 |  | Earthworks - Fill & Compaction | 5d | 2026-08-15 A | 2026-09-20 A | A64500 | 100% |  | 2026-02-04 | 2026-02-09 |  |  | ICKMO1-cost unite [98766.5 $]; Roller compactor [200 h]; Bulldozer [200 h]; Physical Units [851013 h] | 98,766.46 | 98,766.46 | ZNB | CON |
| A64520 |  | Subgrade | 5d | 2026-08-29 A | 2026-10-10 | A64510 | 95% | 0.25d | 2026-02-10 | 2026-02-15 | -16.98d | 41.88d | ICKMO1-cost unite [98766.5 $]; Excavator [800 h]; Bulldozer [200 h]; Physical Units [851013 h] | 98,766.46 | 93,828.14 | ZNB | CON |
|  | R25 | **Road 25** |  | 2026-02-04 | 2026-09-20 |  |  |  |  |  |  |  |  |  |  |  |  |
|  | EW | **Earth Work** |  | 2026-02-04 | 2026-09-20 |  |  |  |  |  |  |  |  |  |  |  |  |
| A64530 |  | Earthworks - Cut Excavation | 4d | 2026-02-04 A | 2026-09-20 A | A64500 | 100% |  | 2026-02-04 | 2026-02-08 |  |  | ICKMO1-cost unite [219481 $]; Excavator [800 h]; Grader [200 h]; Bulldozer [200 h]; Excavation works [6215.33]; Physical Units [1891139 h] | 219,481.02 | 219,481.02 | ZNB | CON |
| A64540 |  | Earthworks - Fill & Compaction | 5d | 2026-08-15 A | 2026-09-20 A | A64530 | 100% |  | 2026-02-09 | 2026-02-14 |  |  | ICKMO1-cost unite [164611 $]; Roller compactor [200 h]; Bulldozer [200 h]; Physical Units [1418355 h] | 164,610.77 | 164,610.77 | ZNB | CON |
| A64550 |  | Subgrade | 5d | 2026-08-15 A | 2026-09-20 A | A64540 | 100% |  | 2026-02-15 | 2026-02-19 |  |  | ICKMO1-cost unite [164611 $]; Excavator [800 h]; Bulldozer [200 h]; Physical Units [1418355 h] | 164,610.77 | 164,610.77 | ZNB | CON |
|  | R26 | **Road 26** |  | 2026-02-09 | 2026-10-10 |  |  |  |  |  |  |  |  |  |  |  |  |
|  | EW | **Earth Work** |  | 2026-02-09 | 2026-10-10 |  |  |  |  |  |  |  |  |  |  |  |  |
| A66630 |  | Earthworks - Cut Excavation | 4d | 2026-02-09 A | 2026-09-28 A | A64530 | 100% |  | 2026-02-09 | 2026-02-12 |  |  | ICKMO1-cost unite [482858 $]; Excavator [800 h]; Grader [200 h]; Bulldozer [200 h]; Excavation works [6215.33]; Physical Units [4160506 h] | 482,858.24 | 482,858.24 | ZNB | CON |
| A66640 |  | Earthworks - Fill & Compaction | 5d | 2026-09-05 A | 2026-10-10 | A66630 | 98% | 0.1d | 2026-02-14 | 2026-02-18 | -16.84d | 0d | ICKMO1-cost unite [362144 $]; Roller compactor [200 h]; Bulldozer [200 h]; Physical Units [3120380 h] | 362,143.68 | 354,900.81 | ZNB | CON |
| A66650 |  | Subgrade | 5d | 2026-09-05 A | 2026-10-10 | A66640 | 98% | 0.1d | 2026-02-19 | 2026-02-24 | -16.84d | 42.02d | ICKMO1-cost unite [362144 $]; Excavator [800 h]; Bulldozer [200 h]; Physical Units [3120380 h] | 362,143.68 | 354,900.81 | ZNB | CON |

| ID | WBS | Activity | Duration | Start | Finish | Predecessors | Complete | Remaining | Planned start | Planned finish | Total float | Free float | Resources | Cost | Actual cost | ALKHARJ INDUSTERIAL AREA - PROJECT ZONES | ALKHARJ INDUSTERIAL AREA - DECEPLINS |
| --- | --- | --- | --- | --- | --- | --- | --- | --- | --- | --- | --- | --- | --- | --- | --- | --- | --- |
|  | R27 | **Road 27** |  | 2026-02-14 | 2026-10-10 |  |  |  |  |  |  |  |  |  |  |  |  |
|  | EW | **Earth Work** |  | 2026-02-14 | 2026-10-10 |  |  |  |  |  |  |  |  |  |  |  |  |
| A66660 |  | Earthworks - Cut Excavation | 4d | 2026-02-14 A | 2026-09-28 A | A66630 | 100% |  | 2026-02-14 | 2026-02-17 |  |  | ICKMO1-cost unite [219481 $]; Excavator [800 h]; Grader [200 h]; Bulldozer [200 h]; Excavation works [6215.33]; Physical Units [1891139 h] | 219,481.02 | 219,481.02 | ZNB | CON |
| A66670 |  | Earthworks - Fill & Compaction | 4d | 2026-09-05 A | 2026-10-10 | A66660 | 95% | 0.2d | 2026-02-18 | 2026-02-22 | -74.2d | 0d | ICKMO1-cost unite [164611 $]; Roller compactor [200 h]; Bulldozer [200 h]; Physical Units [1418355 h] | 164,610.77 | 156,380.23 | ZNB | CON |
| A66680 |  | Subgrade | 5d | 2026-09-05 A | 2026-10-10 | A66670 | 95% | 0.25d | 2026-02-23 | 2026-02-28 | -16.76d | 42.1d | ICKMO1-cost unite [164611 $]; Excavator [800 h]; Bulldozer [200 h]; Physical Units [1418355 h] | 164,610.77 | 156,380.23 | ZNB | CON |
|  | CO2 | **Collector 2** |  | 2026-02-18 | 2026-10-10 |  |  |  |  |  |  |  |  |  |  |  |  |
|  | EW | **Earth Work** |  | 2026-02-18 | 2026-10-10 |  |  |  |  |  |  |  |  |  |  |  |  |
| A64560 |  | Earthworks - Cut Excavation | 8d | 2026-02-18 A | 2026-09-20 A | A66660 | 100% |  | 2026-02-18 | 2026-02-26 |  |  | ICKMO1-cost unite [965716 $]; Excavator [800 h]; Grader [200 h]; Bulldozer [200 h]; Excavation works [6215.33]; Physical Units [8321013 h] | 965,716.48 | 965,716.48 | ZNB | CON |
| A64570 |  | Earthworks - Fill & Compaction | 8d | 2026-08-29 A | 2026-10-10 | A64560 | 95% | 0.4d | 2026-02-28 | 2026-03-08 | -16.86d | 0d | ICKMO1-cost unite [724287 $]; Roller compactor [200 h]; Bulldozer [200 h]; Physical Units [6240760 h] | 724,287.36 | 688,072.99 | ZNB | CON |
| A64580 |  | Subgrade | 6d | 2026-08-29 A | 2026-10-10 | A64570 | 95% | 0.3d | 2026-03-09 | 2026-03-15 | -16.86d | 42d | ICKMO1-cost unite [724287 $]; Excavator [800 h]; Bulldozer [200 h]; Physical Units [6240760 h] | 724,287.36 | 688,072.99 | ZNB | CON |
|  | AR1 | **Areterial 1** |  | 2026-02-28 | 2026-09-20 |  |  |  |  |  |  |  |  |  |  |  |  |
|  | EW | **Earth Work** |  | 2026-02-28 | 2026-09-20 |  |  |  |  |  |  |  |  |  |  |  |  |
| A64590 |  | Earthworks - Cut Excavation | 5d | 2026-02-28 A | 2026-09-20 A | A64560 | 100% |  | 2026-02-28 | 2026-03-04 |  |  | ICKMO1-cost unite [614547 $]; Excavator [800 h]; Grader [200 h]; Bulldozer [200 h]; Excavation works [6215.33]; Physical Units [5295190 h] | 614,546.85 | 614,546.85 | ZNB | CON |
| A64600 |  | Earthworks - Fill & Compaction | 5d | 2026-08-15 A | 2026-09-20 A | A64590 | 100% |  | 2026-03-05 | 2026-03-10 |  |  | ICKMO1-cost unite [460910 $]; Roller compactor [200 h]; Bulldozer [200 h]; Physical Units [3971392 h] | 460,910.13 | 460,910.13 | ZNB | CON |
| A64610 |  | Subgrade | 5d | 2026-08-15 A | 2026-09-20 A | A64600 | 100% |  | 2026-03-11 | 2026-03-16 |  |  | ICKMO1-cost unite [460910 $]; Excavator [800 h]; Bulldozer [200 h]; Physical Units [3971392 h] | 460,910.13 | 460,910.13 | ZNB | CON |
|  | AR2 | **Areterial 2** |  | 2026-03-05 | 2026-09-20 |  |  |  |  |  |  |  |  |  |  |  |  |
|  | EW | **Earth Work** |  | 2026-03-05 | 2026-09-20 |  |  |  |  |  |  |  |  |  |  |  |  |
| A64620 |  | Earthworks - Cut Excavation | 5d | 2026-03-05 A | 2026-09-20 A | A64590 | 100% |  | 2026-03-05 | 2026-03-10 |  |  | ICKMO1-cost unite [131689 $]; Excavator [800 h]; Grader [200 h]; Bulldozer [200 h]; Excavation works [6215.33]; Physical Units [1134684 h] | 131,688.61 | 131,688.61 | ZNB | CON |
| A64630 |  | Earthworks - Fill & Compaction | 5d | 2026-08-15 A | 2026-09-20 A | A64620 | 100% |  | 2026-03-11 | 2026-03-16 |  |  | ICKMO1-cost unite [98766.5 $]; Roller compactor [200 h]; Bulldozer [200 h]; Physical Units [851013 h] | 98,766.46 | 98,766.46 | ZNB | CON |
| A64640 |  | Subgrade | 5d | 2026-08-15 A | 2026-09-20 A | A64630 | 100% |  | 2026-03-17 | 2026-03-22 |  |  | ICKMO1-cost unite [98766.5 $]; Excavator [800 h]; Bulldozer [200 h]; Physical Units [851013 h] | 98,766.46 | 98,766.46 | ZNB | CON |
|  | AR21 | **ROUND ABOUT 1** |  | 2026-03-15 | 2026-10-14 |  |  |  |  |  |  |  |  |  |  |  |  |
|  | EW | **Earth Work** |  | 2026-03-15 | 2026-10-14 |  |  |  |  |  |  |  |  |  |  |  |  |
| A66690 |  | Earthworks - Cut Excavation | 5d | 2026-03-15 A | 2026-09-28 A | A64620 | 100% |  | 2026-03-11 | 2026-03-16 |  |  | ICKMO1-cost unite [131689 $]; Excavator [800 h]; Grader [200 h]; Bulldozer [200 h]; Excavation works [6215.33]; Physical Units [1134684 h] | 131,688.61 | 131,688.61 | ZNB | CON |
| A66700 |  | Earthworks - Fill & Compaction | 5d | 2026-09-10 A | 2026-10-08 A | A66690 | 100% |  | 2026-10-10 | 2026-10-14 |  |  | ICKMO1-cost unite [98766.5 $]; Roller compactor [200 h]; Bulldozer [200 h]; Physical Units [851013 h] | 98,766.46 | 98,766.46 | ZNB | CON |
| A66710 |  | Subgrade | 5d | 2026-10-10 | 2026-10-14 | A66700 |  |  |  |  | -16d | 0d | ICKMO1-cost unite [98766.5 $]; Excavator [800 h]; Bulldozer [200 h]; Physical Units [851013 h] | 98,766.46 |  | ZNB | CON |

| ID | WBS | Activity | Duration | Start | Finish | Predecessors | Complete | Planned start | Planned finish | Total float | Free float | Resources | Cost | Actual cost | ALKHARJ INDUSTERIAL AREA - PROJECT ZONES | ALKHARJ INDUSTERIAL AREA - DECEPLINS | ALKHARJ INDUSTERIAL AREA - Wet networks |
| --- | --- | --- | --- | --- | --- | --- | --- | --- | --- | --- | --- | --- | --- | --- | --- | --- | --- |
|  | AR211 | **ROUND ABOUT 2** |  | 2026-03-15 | 2026-10-20 |  |  |  |  |  |  |  |  |  |  |  |  |
|  | EW | **Earth Work** |  | 2026-03-15 | 2026-10-20 |  |  |  |  |  |  |  |  |  |  |  |  |
| A66720 |  | Earthworks - Cut Excavation | 5d | 2026-03-15 A | 2026-09-28 A | A66690 | 100% | 2026-03-17 | 2026-03-22 |  |  | ICKMO1-cost unite [131689 $]; Excavator [800 h]; Grader [200 h]; Bulldozer [200 h]; Excavation works [6215.33]; Physical Units [1134684 h] | 131,688.61 | 131,688.61 | ZNB | CON |  |
| A66730 |  | Earthworks - Fill & Compaction | 5d | 2026-10-10 | 2026-10-14 | A66720 |  |  |  | -16d | 0d | ICKMO1-cost unite [98766.5 $]; Roller compactor [200 h]; Bulldozer [200 h]; Physical Units [851013 h] | 98,766.46 |  | ZNB | CON |  |
| A66740 |  | Subgrade | 5d | 2026-10-15 | 2026-10-20 | A66730, A66710 |  |  |  | -16d | 42.86d | ICKMO1-cost unite [98766.5 $]; Excavator [800 h]; Grader [200 h]; Bulldozer [200 h]; Physical Units [851013 h] | 98,766.46 |  | ZNB | CON |  |
|  | 2 | **STORM NETWORK** |  | 2026-08-20 | 2027-04-26 |  |  |  |  |  |  |  |  |  |  |  |  |
|  | EX LR 01 | **EX LR 01** |  | 2026-08-20 | 2026-09-28 |  |  |  |  |  |  |  |  |  |  |  |  |
|  | MH-A31 /MH-A32 | **MH-A31 /MH-A32** |  | 2026-08-20 | 2026-09-28 |  |  |  |  |  |  |  |  |  |  |  |  |
| A79580 |  | Excavation | 4d | 2026-08-20 A | 2026-09-28 A | A78680 | 100% | 2026-09-26 | 2026-09-30 |  |  | ICKMO1-cost unite [29203.8 $]; Excavator [200 h]; Physical Units [251632 h] | 29,203.77 | 29,203.77 | ZNB | CON |  |
| A79590 |  | Pipe Laying | 21d | 2026-08-20 A | 2026-09-28 A | A79580, A58200 | 100% | 2027-01-21 | 2027-02-15 |  |  | ICKMO1-cost unite [19469.2 $]; boom truck [200 h]; labor [1200 h]; Storm Network Circular pipes (GRP) [80.79]; Physical Units [167755 h] | 19,469.18 | 19,469.18 | ZNB | CON | LAY |
| A79600 |  | Install Manhole | 4d | 2026-08-20 A | 2026-09-28 A | A79580 | 100% | 2026-09-30 | 2026-10-05 |  |  | ICKMO1-cost unite [87611.3 $]; boom truck [200 h]; labor [1200 h]; Physical Units [754895 h] | 87,611.3 | 87,611.3 | ZNB | CON | MH |
| A79610 |  | Testing & Inspection | 2d | 2026-08-20 A | 2026-09-28 A | A79590 | 100% | 2027-02-15 | 2027-02-17 |  |  | ICKMO1-cost unite [19469.2 $]; labor [1200 h]; Physical Units [167755 h] | 19,469.18 | 19,469.18 | ZNB | CON |  |
| A79620 |  | Backfilling & Compaction | 10d | 2026-08-20 A | 2026-09-28 A | A79610, A79600 | 100% | 2027-02-17 | 2027-03-01 |  |  | ICKMO1-cost unite [38938.3 $]; Roller compactor [200 h]; Physical Units [335509 h] | 38,938.35 | 38,938.35 | ZNB | CON |  |
|  | MH-A32 /MH-A33 | **MH-A32 /MH-A33** |  | 2026-08-20 | 2026-09-28 |  |  |  |  |  |  |  |  |  |  |  |  |
| A81680 |  | Excavation | 4d | 2026-08-20 A | 2026-09-28 A | A79620 | 100% | 2027-03-01 | 2027-03-06 |  |  | ICKMO1-cost unite [29203.8 $]; Excavator [200 h]; Physical Units [251632 h] | 29,203.77 | 29,203.77 | ZNB | CON |  |
| A81690 |  | Pipe Laying | 21d | 2026-08-20 A | 2026-09-28 A | A81680 | 100% | 2027-03-06 | 2027-03-30 |  |  | ICKMO1-cost unite [19469.2 $]; boom truck [200 h]; labor [1200 h]; Storm Network Circular pipes (GRP) [80.79]; Physical Units [167755 h] | 19,469.18 | 19,469.18 | ZNB | CON | LAY |
| A81700 |  | Install Manhole | 4d | 2026-08-20 A | 2026-09-28 A | A81680 | 100% | 2027-03-06 | 2027-03-10 |  |  | ICKMO1-cost unite [87611.3 $]; boom truck [200 h]; labor [1200 h]; Physical Units [754895 h] | 87,611.3 | 87,611.3 | ZNB | CON | MH |
| A81710 |  | Testing & Inspection | 2d | 2026-08-20 A | 2026-09-28 A | A81690 | 100% | 2027-03-30 | 2027-04-01 |  |  | ICKMO1-cost unite [19469.2 $]; labor [1200 h]; Physical Units [167755 h] | 19,469.18 | 19,469.18 | ZNB | CON |  |
| A81720 |  | Backfilling & Compaction | 10d | 2026-08-20 A | 2026-09-28 A | A81710, A81700, A79620 | 100% | 2027-04-01 | 2027-04-13 |  |  | ICKMO1-cost unite [38938.3 $]; Roller compactor [200 h]; Physical Units [335509 h] | 38,938.35 | 38,938.35 | ZNB | CON |  |
|  | MH-A33 /MH-A34 | **MH-A33 /MH-A34** |  | 2026-08-20 | 2026-09-28 |  |  |  |  |  |  |  |  |  |  |  |  |
| A81630 |  | Excavation | 4d | 2026-08-20 A | 2026-09-28 A | A81720 | 100% | 2027-04-13 | 2027-04-18 |  |  | ICKMO1-cost unite [29203.8 $]; Excavator [200 h]; Physical Units [251632 h] | 29,203.77 | 29,203.77 | ZNB | CON |  |
| A81640 |  | Pipe Laying | 21d | 2026-08-20 A | 2026-09-28 A | A81630 | 100% | 2027-04-18 | 2027-05-12 |  |  | ICKMO1-cost unite [19469.2 $]; boom truck [200 h]; labor [1200 h]; Storm Network Circular pipes (GRP) [80.79]; Physical Units [167755 h] | 19,469.18 | 19,469.18 | ZNB | CON | LAY |
| A81650 |  | Install Manhole | 4d | 2026-08-20 A | 2026-09-28 A | A81630 | 100% | 2027-04-18 | 2027-04-22 |  |  | ICKMO1-cost unite [87611.3 $]; boom truck [200 h]; labor [1200 h]; Physical Units [754895 h] | 87,611.3 | 87,611.3 | ZNB | CON | MH |
| A81660 |  | Testing & Inspection | 2d | 2026-08-20 A | 2026-09-28 A | A81640 | 100% | 2027-05-12 | 2027-05-15 |  |  | ICKMO1-cost unite [19469.2 $]; labor [1200 h]; Physical Units [167755 h] | 19,469.18 | 19,469.18 | ZNB | CON |  |
| A81670 |  | Backfilling & Compaction | 10d | 2026-08-20 A | 2026-09-28 A | A81660, A81650, A81720 | 100% | 2027-05-15 | 2027-05-26 |  |  | ICKMO1-cost unite [38938.3 $]; Roller compactor [200 h]; Physical Units [335509 h] | 38,938.35 | 38,938.35 | ZNB | CON |  |

| ID | WBS | Activity | Duration | Start | Finish | Predecessors | Complete | Planned start | Planned finish | Total float | Free float | Resources | Cost | Actual cost | ALKHARJ INDUSTERIAL AREA - PROJECT ZONES | ALKHARJ INDUSTERIAL AREA - DECEPLINS | ALKHARJ INDUSTERIAL AREA - Wet networks |
| --- | --- | --- | --- | --- | --- | --- | --- | --- | --- | --- | --- | --- | --- | --- | --- | --- | --- |
|  | MH-A34 /MH-A35 | **MH-A34 /MH-A35** |  | 2026-08-20 | 2026-09-28 |  |  |  |  |  |  |  |  |  |  |  |  |
| A81580 |  | Excavation | 4d | 2026-08-20 A | 2026-09-28 A | A81630 | 100% | 2027-04-18 | 2027-04-22 |  |  | ICKMO1-cost unite [29203.8 $]; Excavator [200 h]; Physical Units [251632 h] | 29,203.77 | 29,203.77 | ZNB | CON |  |
| A81590 |  | Pipe Laying | 21d | 2026-08-20 A | 2026-09-28 A | A81580 | 100% | 2027-04-22 | 2027-05-17 |  |  | ICKMO1-cost unite [19469.2 $]; boom truck [200 h]; labor [1200 h]; Storm Network Circular pipes (GRP) [80.79]; Physical Units [167755 h] | 19,469.18 | 19,469.18 | ZNB | CON | LAY |
| A81600 |  | Install Manhole | 4d | 2026-08-20 A | 2026-09-28 A | A81580 | 100% | 2027-04-22 | 2027-04-27 |  |  | ICKMO1-cost unite [87611.3 $]; boom truck [200 h]; labor [1200 h]; Physical Units [754895 h] | 87,611.3 | 87,611.3 | ZNB | CON | MH |
| A81610 |  | Testing & Inspection | 2d | 2026-08-20 A | 2026-09-28 A | A81590 | 100% | 2027-05-17 | 2027-05-19 |  |  | ICKMO1-cost unite [19469.2 $]; labor [1200 h]; Physical Units [167755 h] | 19,469.18 | 19,469.18 | ZNB | CON |  |
| A81620 |  | Backfilling & Compaction | 4d | 2026-08-20 A | 2026-09-28 A | A81610, A81600, A81670 | 100% | 2027-05-26 | 2027-05-31 |  |  | ICKMO1-cost unite [38938.3 $]; Roller compactor [200 h]; Physical Units [335509 h] | 38,938.35 | 38,938.35 | ZNB | CON |  |
|  | A R R-1 | **A R R-1** |  | 2026-08-20 | 2026-12-31 |  |  |  |  |  |  |  |  |  |  |  |  |
|  | MH-0-Q /MH-11-Q | **MH-0-Q /MH-11-Q** |  | 2026-10-10 | 2026-11-01 |  |  |  |  |  |  |  |  |  |  |  |  |
| A68030 |  | Excavation | 4d | 2026-10-10 | 2026-10-13 | A64590, A64600, A1890 |  |  |  | -12.9d | 0d | ICKMO1-cost unite [14551.5 $]; Excavator [200 h]; Physical Units [125382 h] | 14,551.52 |  | ZNB | CON |  |
| A68040 |  | Pipe Laying | 4d | 2026-10-14 | 2026-10-18 | A68030 |  |  |  | -12.9d | 0d | ICKMO1-cost unite [9701.01 $]; boom truck [200 h]; labor [1200 h]; Storm Network Circular pipes (GRP) [80.79]; Physical Units [83587.9 h] | 9,701.01 |  | ZNB | CON | LAY |
| A68050 |  | Install Manhole | 4d | 2026-10-14 | 2026-10-18 | A68030 |  |  |  | -10.9d | 2d | ICKMO1-cost unite [43654.6 $]; boom truck [200 h]; labor [1200 h]; Physical Units [376146 h] | 43,654.56 |  | ZNB | CON | MH |
| A68060 |  | Testing & Inspection | 2d | 2026-10-19 | 2026-10-20 | A68040 |  |  |  | -12.9d | 0d | ICKMO1-cost unite [9701.01 $]; labor [1200 h]; Physical Units [83587.9 h] | 9,701.01 |  | ZNB | CON |  |
| A68070 |  | Backfilling & Compaction | 10d | 2026-10-21 | 2026-11-01 | A68060, A68050 |  |  |  | -12.9d | 0d | ICKMO1-cost unite [19402 $]; Roller compactor [200 h]; Physical Units [167176 h] | 19,402.03 |  | ZNB | CON |  |
|  | MH-11-Q /MH-11-Q-1 | **MH-11-Q /MH-11-Q-1** |  | 2026-11-18 | 2026-12-31 |  |  |  |  |  |  |  |  |  |  |  |  |
| A67980 |  | Excavation | 4d | 2026-11-18 | 2026-11-23 | A68030, A1890, A81680 |  |  |  | 24.98d | 0d | ICKMO1-cost unite [14551.5 $]; Excavator [200 h]; Physical Units [125382 h] | 14,551.52 |  | ZNB | CON |  |
| A67990 |  | Pipe Laying | 21d | 2026-11-23 | 2026-12-17 | A67980 |  |  |  | 24.98d | 0d | ICKMO1-cost unite [9701.01 $]; boom truck [200 h]; labor [1200 h]; Storm Network Circular pipes (GRP) [80.79]; Physical Units [83587.9 h] | 9,701.01 |  | ZNB | CON | LAY |
| A68000 |  | Install Manhole | 4d | 2026-11-23 | 2026-11-28 | A67980 |  |  |  | 43.98d | 19d | ICKMO1-cost unite [43654.6 $]; boom truck [200 h]; labor [1200 h]; Physical Units [376146 h] | 43,654.56 |  | ZNB | CON | MH |
| A68010 |  | Testing & Inspection | 2d | 2026-12-17 | 2026-12-20 | A67990 |  |  |  | 24.98d | 0d | ICKMO1-cost unite [9701.01 $]; labor [1200 h]; Physical Units [83587.9 h] | 9,701.01 |  | ZNB | CON |  |
| A68020 |  | Backfilling & Compaction | 10d | 2026-12-20 | 2026-12-31 | A68010, A68000, A68070 |  |  |  | 24.98d | 0d | ICKMO1-cost unite [19402 $]; Roller compactor [200 h]; Physical Units [167176 h] | 19,402.03 |  | ZNB | CON |  |
|  | MH-11-Q-1 /MH-11-Q-2 | **MH-11-Q-1 /MH-11-Q-2** |  | 2026-08-20 | 2026-09-28 |  |  |  |  |  |  |  |  |  |  |  |  |
| A67930 |  | Excavation | 4d | 2026-08-20 A | 2026-09-28 A | A67980, A1890 | 100% | 2026-09-01 | 2026-09-05 |  |  | ICKMO1-cost unite [14551.5 $]; Excavator [200 h]; Physical Units [125382 h] | 14,551.52 | 14,551.52 | ZNB | CON |  |
| A67940 |  | Pipe Laying | 21d | 2026-08-20 A | 2026-09-28 A | A67930 | 100% | 2026-09-06 | 2026-09-29 |  |  | ICKMO1-cost unite [9701.01 $]; boom truck [200 h]; labor [1200 h]; Storm Network Circular pipes (GRP) [80.79]; Physical Units [83587.9 h] | 9,701.01 | 9,701.01 | ZNB | CON | LAY |
| A67950 |  | Install Manhole | 4d | 2026-08-20 A | 2026-09-28 A | A67930 | 100% | 2026-09-06 | 2026-09-09 |  |  | ICKMO1-cost unite [43654.6 $]; boom truck [200 h]; labor [1200 h]; Physical Units [376146 h] | 43,654.56 | 43,654.56 | ZNB | CON | MH |
| A67960 |  | Testing & Inspection | 2d | 2026-08-20 A | 2026-09-28 A | A67940 | 100% | 2027-06-07 | 2027-06-09 |  |  | ICKMO1-cost unite [9701.01 $]; labor [1200 h]; Physical Units [83587.9 h] | 9,701.01 | 9,701.01 | ZNB | CON |  |
| A67970 |  | Backfilling & Compaction | 10d | 2026-08-20 A | 2026-09-28 A | A67960, A67950, A68020 | 100% | 2027-07-15 | 2027-07-27 |  |  | ICKMO1-cost unite [19402 $]; Roller compactor [200 h]; Physical Units [167176 h] | 19,402.03 | 19,402.03 | ZNB | CON |  |

| ID | WBS | Activity | Duration | Start | Finish | Predecessors | Complete | Planned start | Planned finish | Resources | Cost | Actual cost | ALKHARJ INDUSTERIAL AREA - PROJECT ZONES | ALKHARJ INDUSTERIAL AREA - DECEPLINS | ALKHARJ INDUSTERIAL AREA - Wet networks |
| --- | --- | --- | --- | --- | --- | --- | --- | --- | --- | --- | --- | --- | --- | --- | --- |
|  | MH-11-Q-2 /MH-11-Q-3 | **MH-11-Q-2 /MH-11-Q-3** |  | 2026-08-20 | 2026-09-28 |  |  |  |  |  |  |  |  |  |  |
| A67880 |  | Excavation | 4d | 2026-08-20 A | 2026-09-28 A | A67930, A1890 | 100% | 2026-09-06 | 2026-09-09 | ICKMO1-cost unite [14551.5 $]; Excavator [200 h]; Physical Units [125382 h] | 14,551.52 | 14,551.52 | ZNB | CON |  |
| A67890 |  | Pipe Laying | 21d | 2026-08-20 A | 2026-09-28 A | A67880 | 100% | 2026-09-10 | 2026-10-04 | ICKMO1-cost unite [9701.01 $]; boom truck [200 h]; labor [1200 h]; Storm Network Circular pipes (GRP) [80.79]; Physical Units [83587.9 h] | 9,701.01 | 9,701.01 | ZNB | CON | LAY |
| A67900 |  | Install Manhole | 4d | 2026-08-20 A | 2026-09-28 A | A67880 | 100% | 2026-09-10 | 2026-09-14 | ICKMO1-cost unite [43654.6 $]; boom truck [200 h]; labor [1200 h]; Physical Units [376146 h] | 43,654.56 | 43,654.56 | ZNB | CON | MH |
| A67910 |  | Testing & Inspection | 2d | 2026-08-20 A | 2026-09-28 A | A67890 | 100% | 2027-06-07 | 2027-06-09 | ICKMO1-cost unite [9701.01 $]; labor [1200 h]; Physical Units [83587.9 h] | 9,701.01 | 9,701.01 | ZNB | CON |  |
| A67920 |  | Backfilling & Compaction | 10d | 2026-08-20 A | 2026-09-28 A | A67910, A67900, A67970 | 100% | 2027-07-27 | 2027-08-08 | ICKMO1-cost unite [19402 $]; Roller compactor [200 h]; Physical Units [167176 h] | 19,402.03 | 19,402.03 | ZNB | CON |  |
|  | MH-11-Q-3 /MH-11-Q-4 | **MH-11-Q-3 /MH-11-Q-4** |  | 2026-08-20 | 2026-09-28 |  |  |  |  |  |  |  |  |  |  |
| A67830 |  | Excavation | 4d | 2026-08-20 A | 2026-09-28 A | A67880, A1890 | 100% | 2026-09-10 | 2026-09-14 | ICKMO1-cost unite [14551.5 $]; Excavator [200 h]; Physical Units [125382 h] | 14,551.52 | 14,551.52 | ZNB | CON |  |
| A67840 |  | Pipe Laying | 21d | 2026-08-20 A | 2026-09-28 A | A67830 | 100% | 2026-09-15 | 2026-10-08 | ICKMO1-cost unite [9701.01 $]; boom truck [200 h]; labor [1200 h]; Storm Network Circular pipes (GRP) [80.79]; Physical Units [83587.9 h] | 9,701.01 | 9,701.01 | ZNB | CON | LAY |
| A67850 |  | Install Manhole | 4d | 2026-08-20 A | 2026-09-28 A | A67830 | 100% | 2026-09-15 | 2026-09-19 | ICKMO1-cost unite [43654.6 $]; boom truck [200 h]; labor [1200 h]; Physical Units [376146 h] | 43,654.56 | 43,654.56 | ZNB | CON | MH |
| A67860 |  | Testing & Inspection | 2d | 2026-08-20 A | 2026-09-28 A | A67840 | 100% | 2027-06-07 | 2027-06-09 | ICKMO1-cost unite [9701.01 $]; labor [1200 h]; Physical Units [83587.9 h] | 9,701.01 | 9,701.01 | ZNB | CON |  |
| A67870 |  | Backfilling & Compaction | 10d | 2026-08-20 A | 2026-09-28 A | A67860, A67850, A67920 | 100% | 2027-08-08 | 2027-08-19 | ICKMO1-cost unite [19402 $]; Roller compactor [200 h]; Physical Units [167176 h] | 19,402.03 | 19,402.03 | ZNB | CON |  |
|  | MH-11-Q-4 /MH-11-Q-5 | **MH-11-Q-4 /MH-11-Q-5** |  | 2026-08-20 | 2026-09-28 |  |  |  |  |  |  |  |  |  |  |
| A67780 |  | Excavation | 4d | 2026-08-20 A | 2026-09-28 A | A67830, A1890 | 100% | 2026-09-15 | 2026-09-19 | ICKMO1-cost unite [14551.5 $]; Excavator [200 h]; Physical Units [125382 h] | 14,551.52 | 14,551.52 | ZNB | CON |  |
| A67790 |  | Pipe Laying | 21d | 2026-08-20 A | 2026-09-28 A | A67780 | 100% | 2026-09-20 | 2026-10-13 | ICKMO1-cost unite [9701.01 $]; boom truck [200 h]; labor [1200 h]; Storm Network Circular pipes (GRP) [80.79]; Physical Units [83587.9 h] | 9,701.01 | 9,701.01 | ZNB | CON | LAY |
| A67800 |  | Install Manhole | 4d | 2026-08-20 A | 2026-09-28 A | A67780 | 100% | 2026-09-20 | 2026-09-23 | ICKMO1-cost unite [43654.6 $]; boom truck [200 h]; labor [1200 h]; Physical Units [376146 h] | 43,654.56 | 43,654.56 | ZNB | CON | MH |
| A67810 |  | Testing & Inspection | 2d | 2026-08-20 A | 2026-09-28 A | A67790 | 100% | 2027-06-07 | 2027-06-09 | ICKMO1-cost unite [9701.01 $]; labor [1200 h]; Physical Units [83587.9 h] | 9,701.01 | 9,701.01 | ZNB | CON |  |
| A67820 |  | Backfilling & Compaction | 10d | 2026-08-20 A | 2026-09-28 A | A67810, A67800, A67870 | 100% | 2027-08-19 | 2027-08-31 | ICKMO1-cost unite [19402 $]; Roller compactor [200 h]; Physical Units [167176 h] | 19,402.03 | 19,402.03 | ZNB | CON |  |
|  | MH-11-Q-5 /MH-11-Q-6 | **MH-11-Q-5 /MH-11-Q-6** |  | 2026-08-20 | 2026-09-28 |  |  |  |  |  |  |  |  |  |  |
| A67730 |  | Excavation | 4d | 2026-08-20 A | 2026-09-28 A | A67780, A1890 | 100% | 2026-09-20 | 2026-09-23 | ICKMO1-cost unite [14551.5 $]; Excavator [200 h]; Physical Units [125382 h] | 14,551.52 | 14,551.52 | ZNB | CON |  |
| A67740 |  | Pipe Laying | 21d | 2026-08-20 A | 2026-09-28 A | A67730 | 100% | 2026-09-24 | 2026-10-18 | ICKMO1-cost unite [9701.01 $]; boom truck [200 h]; labor [1200 h]; Storm Network Circular pipes (GRP) [80.79]; Physical Units [83587.9 h] | 9,701.01 | 9,701.01 | ZNB | CON | LAY |
| A67750 |  | Install Manhole | 4d | 2026-08-20 A | 2026-09-28 A | A67730 | 100% | 2026-09-24 | 2026-09-28 | ICKMO1-cost unite [43654.6 $]; boom truck [200 h]; labor [1200 h]; Physical Units [376146 h] | 43,654.56 | 43,654.56 | ZNB | CON | MH |
| A67760 |  | Testing & Inspection | 2d | 2026-08-20 A | 2026-09-28 A | A67740 | 100% | 2027-06-07 | 2027-06-09 | ICKMO1-cost unite [9701.01 $]; labor [1200 h]; Physical Units [83587.9 h] | 9,701.01 | 9,701.01 | ZNB | CON |  |
| A67770 |  | Backfilling & Compaction | 10d | 2026-08-20 A | 2026-09-28 A | A67760, A67750, A67820 | 100% | 2027-08-31 | 2027-09-12 | ICKMO1-cost unite [19402 $]; Roller compactor [200 h]; Physical Units [167176 h] | 19,402.03 | 19,402.03 | ZNB | CON |  |

| ID | WBS | Activity | Duration | Start | Finish | Predecessors | Complete | Planned start | Planned finish | Total float | Free float | Resources | Cost | Actual cost | ALKHARJ INDUSTERIAL AREA - PROJECT ZONES | ALKHARJ INDUSTERIAL AREA - DECEPLINS | ALKHARJ INDUSTERIAL AREA - Wet networks |
| --- | --- | --- | --- | --- | --- | --- | --- | --- | --- | --- | --- | --- | --- | --- | --- | --- | --- |
|  | MH-11-Q-6 /MH-11-Q-7 | **MH-11-Q-6 /MH-11-Q-7** |  | 2026-08-20 | 2026-09-28 |  |  |  |  |  |  |  |  |  |  |  |  |
| A67680 |  | Excavation | 4d | 2026-08-20 A | 2026-09-28 A | A67730, A1890 | 100% | 2026-09-24 | 2026-09-28 |  |  | ICKMO1-cost unite [14551.5 $]; Excavator [200 h]; Physical Units [125382 h] | 14,551.52 | 14,551.52 | ZNB | CON |  |
| A67690 |  | Pipe Laying | 21d | 2026-08-20 A | 2026-09-28 A | A67680 | 100% | 2026-09-29 | 2026-10-22 |  |  | ICKMO1-cost unite [9701.01 $]; boom truck [200 h]; labor [1200 h]; Storm Network Circular pipes (GRP) [80.79]; Physical Units [83587.9 h] | 9,701.01 | 9,701.01 | ZNB | CON | LAY |
| A67700 |  | Install Manhole | 4d | 2026-08-20 A | 2026-09-28 A | A67680 | 100% | 2026-09-29 | 2026-10-03 |  |  | ICKMO1-cost unite [43654.6 $]; boom truck [200 h]; labor [1200 h]; Physical Units [376146 h] | 43,654.56 | 43,654.56 | ZNB | CON | MH |
| A67710 |  | Testing & Inspection | 2d | 2026-08-20 A | 2026-09-28 A | A67690 | 100% | 2027-06-07 | 2027-06-09 |  |  | ICKMO1-cost unite [9701.01 $]; labor [1200 h]; Physical Units [83587.9 h] | 9,701.01 | 9,701.01 | ZNB | CON |  |
| A67720 |  | Backfilling & Compaction | 10d | 2026-08-20 A | 2026-09-28 A | A67710, A67700, A67770 | 100% | 2027-09-12 | 2027-09-23 |  |  | ICKMO1-cost unite [19402 $]; Roller compactor [200 h]; Physical Units [167176 h] | 19,402.03 | 19,402.03 | ZNB | CON |  |
|  | MH-11-Q-7 /MH-11-Q-8 | **MH-11-Q-7 /MH-11-Q-8** |  | 2026-08-20 | 2026-09-28 |  |  |  |  |  |  |  |  |  |  |  |  |
| A67630 |  | Excavation | 4d | 2026-08-20 A | 2026-09-28 A | A67680, A1890 | 100% | 2026-09-29 | 2026-10-03 |  |  | ICKMO1-cost unite [14551.5 $]; Excavator [200 h]; Physical Units [125382 h] | 14,551.52 | 14,551.52 | ZNB | CON |  |
| A67640 |  | Pipe Laying | 21d | 2026-08-20 A | 2026-09-28 A | A67630 | 100% | 2026-10-04 | 2026-10-27 |  |  | ICKMO1-cost unite [9701.01 $]; boom truck [200 h]; labor [1200 h]; Storm Network Circular pipes (GRP) [80.79]; Physical Units [83587.9 h] | 9,701.01 | 9,701.01 | ZNB | CON | LAY |
| A67650 |  | Install Manhole | 4d | 2026-08-20 A | 2026-09-28 A | A67630 | 100% | 2026-10-04 | 2026-10-07 |  |  | ICKMO1-cost unite [43654.6 $]; boom truck [200 h]; labor [1200 h]; Physical Units [376146 h] | 43,654.56 | 43,654.56 | ZNB | CON | MH |
| A67660 |  | Testing & Inspection | 2d | 2026-08-20 A | 2026-09-28 A | A67640 | 100% | 2027-06-07 | 2027-06-09 |  |  | ICKMO1-cost unite [9701.01 $]; labor [1200 h]; Physical Units [83587.9 h] | 9,701.01 | 9,701.01 | ZNB | CON |  |
| A67670 |  | Backfilling & Compaction | 10d | 2026-08-20 A | 2026-09-28 A | A67660, A67650, A67720 | 100% | 2027-09-23 | 2027-10-05 |  |  | ICKMO1-cost unite [19402 $]; Roller compactor [200 h]; Physical Units [167176 h] | 19,402.03 | 19,402.03 | ZNB | CON |  |
|  | MH-11-Q-8 /MH-11-Q-9 | **MH-11-Q-8 /MH-11-Q-9** |  | 2026-08-20 | 2026-09-28 |  |  |  |  |  |  |  |  |  |  |  |  |
| A67580 |  | Excavation | 4d | 2026-08-20 A | 2026-09-28 A | A67630, A1890 | 100% | 2026-10-04 | 2026-10-07 |  |  | ICKMO1-cost unite [14551.5 $]; Excavator [200 h]; Physical Units [125382 h] | 14,551.52 | 14,551.52 | ZNB | CON |  |
| A67590 |  | Pipe Laying | 21d | 2026-08-20 A | 2026-09-28 A | A67580 | 100% | 2026-10-08 | 2026-11-01 |  |  | ICKMO1-cost unite [9701.01 $]; boom truck [200 h]; labor [1200 h]; Storm Network Circular pipes (GRP) [80.79]; Physical Units [83587.9 h] | 9,701.01 | 9,701.01 | ZNB | CON | LAY |
| A67600 |  | Install Manhole | 4d | 2026-08-20 A | 2026-09-28 A | A67580 | 100% | 2026-10-08 | 2026-10-12 |  |  | ICKMO1-cost unite [43654.6 $]; boom truck [200 h]; labor [1200 h]; Physical Units [376146 h] | 43,654.56 | 43,654.56 | ZNB | CON | MH |
| A67610 |  | Testing & Inspection | 2d | 2026-08-20 A | 2026-09-28 A | A67590 | 100% | 2027-06-07 | 2027-06-09 |  |  | ICKMO1-cost unite [9701.01 $]; labor [1200 h]; Physical Units [83587.9 h] | 9,701.01 | 9,701.01 | ZNB | CON |  |
| A67620 |  | Backfilling & Compaction | 10d | 2026-08-20 A | 2026-09-28 A | A67610, A67600, A67670 | 100% | 2027-10-05 | 2027-10-17 |  |  | ICKMO1-cost unite [19402 $]; Roller compactor [200 h]; Physical Units [167176 h] | 19,402.03 | 19,402.03 | ZNB | CON |  |
|  | EX LR 02 | **EX LR 02** |  | 2026-08-20 | 2027-04-26 |  |  |  |  |  |  |  |  |  |  |  |  |
|  | O-A /MH-1A | **O-A /MH-1A** |  | 2026-08-20 | 2026-10-12 |  |  |  |  |  |  |  |  |  |  |  |  |
| A81430 |  | Excavation | 4d | 2026-08-20 A | 2026-09-28 A | A81380 | 100% | 2026-10-05 | 2026-10-10 |  |  | ICKMO1-cost unite [3650.47 $]; Excavator [200 h]; Physical Units [31454 h] | 3,650.47 | 3,650.47 | ZNB | CON |  |
| A81440 |  | Pipe Laying | 14d | 2026-08-20 A | 2026-09-28 A | A81430 | 100% | 2026-10-10 | 2026-10-26 |  |  | ICKMO1-cost unite [2433.65 $]; boom truck [200 h]; labor [1200 h]; Storm Network Circular pipes (GRP) [80.79]; Physical Units [20969.3 h] | 2,433.65 | 2,433.65 | ZNB | CON | LAY |
| A81450 |  | Install Manhole | 4d | 2026-08-20 A | 2026-09-28 A | A81430 | 100% | 2026-10-10 | 2026-10-14 |  |  | ICKMO1-cost unite [10951.4 $]; boom truck [200 h]; labor [1200 h]; Physical Units [94361.9 h] | 10,951.41 | 10,951.41 | ZNB | CON | MH |
| A81470 |  | Backfilling & Compaction | 7d | 2026-09-06 A | 2026-09-28 A | A81460, A81450, A81420 | 100% | 2026-10-06 | 2026-10-14 |  |  | ICKMO1-cost unite [4867.29 $]; Roller compactor [200 h]; Physical Units [41938.6 h] | 4,867.29 | 4,867.29 | ZNB | CON |  |
| A81460 |  | Testing & Inspection | 2d | 2026-10-10 | 2026-10-12 | A81440 |  |  |  | -74.2d | 0d | ICKMO1-cost unite [2433.65 $]; labor [1200 h]; Physical Units [20969.3 h] | 2,433.65 |  | ZNB | CON |  |

| ID | WBS | Activity | Duration | Start | Finish | Predecessors | Complete | Planned start | Planned finish | Total float | Free float | Resources | Cost | Actual cost | ALKHARJ INDUSTERIAL AREA - PROJECT ZONES | ALKHARJ INDUSTERIAL AREA - DECEPLINS | ALKHARJ INDUSTERIAL AREA - Wet networks |
| --- | --- | --- | --- | --- | --- | --- | --- | --- | --- | --- | --- | --- | --- | --- | --- | --- | --- |
|  | MH-1A /MH-2A | **MH-1A /MH-2A** |  | 2026-08-20 | 2026-10-12 |  |  |  |  |  |  |  |  |  |  |  |  |
| A81480 |  | Excavation | 4d | 2026-08-20 A | 2026-09-28 A | A81430 | 100% | 2026-10-10 | 2026-10-14 |  |  | ICKMO1-cost unite [3650.47 $]; Excavator [200 h]; Physical Units [31454 h] | 3,650.47 | 3,650.47 | ZNB | CON |  |
| A81490 |  | Pipe Laying | 14d | 2026-08-20 A | 2026-09-28 A | A81480 | 100% | 2026-10-14 | 2026-10-31 |  |  | ICKMO1-cost unite [2433.65 $]; boom truck [200 h]; labor [1200 h]; Storm Network Circular pipes (GRP) [80.79]; Physical Units [20969.3 h] | 2,433.65 | 2,433.65 | ZNB | CON | LAY |
| A81500 |  | Install Manhole | 4d | 2026-08-20 A | 2026-09-28 A | A81480 | 100% | 2026-10-14 | 2026-10-19 |  |  | ICKMO1-cost unite [10951.4 $]; boom truck [200 h]; labor [1200 h]; Physical Units [94361.9 h] | 10,951.41 | 10,951.41 | ZNB | CON | MH |
| A81520 |  | Backfilling & Compaction | 7d | 2026-09-26 A | 2026-10-01 A | A81510, A81500, A81470 | 100% | 2026-10-05 | 2026-10-13 |  |  | ICKMO1-cost unite [4867.29 $]; Roller compactor [200 h]; Physical Units [41938.6 h] | 4,867.29 | 4,867.29 | ZNB | CON |  |
| A81510 |  | Testing & Inspection | 2d | 2026-10-10 | 2026-10-12 | A81490 |  |  |  | -74.2d | 0d | ICKMO1-cost unite [2433.65 $]; labor [1200 h]; Physical Units [20969.3 h] | 2,433.65 |  | ZNB | CON |  |
|  | MH-2A /MH-3 A | **MH-2A /MH-3 A** |  | 2026-08-20 | 2026-10-12 |  |  |  |  |  |  |  |  |  |  |  |  |
| A81530 |  | Excavation | 4d | 2026-08-20 A | 2026-09-28 A | A81480 | 100% | 2026-10-14 | 2026-10-19 |  |  | ICKMO1-cost unite [3650.47 $]; Excavator [200 h]; Physical Units [31454 h] | 3,650.47 | 3,650.47 | ZNB | CON |  |
| A81540 |  | Pipe Laying | 14d | 2026-08-20 A | 2026-09-28 A | A81530 | 100% | 2026-10-19 | 2026-11-04 |  |  | ICKMO1-cost unite [2433.65 $]; boom truck [200 h]; labor [1200 h]; Storm Network Circular pipes (GRP) [80.79]; Physical Units [20969.3 h] | 2,433.65 | 2,433.65 | ZNB | CON | LAY |
| A81550 |  | Install Manhole | 4d | 2026-08-20 A | 2026-09-28 A | A81530 | 100% | 2026-10-19 | 2026-10-24 |  |  | ICKMO1-cost unite [10951.4 $]; boom truck [200 h]; labor [1200 h]; Physical Units [94361.9 h] | 10,951.41 | 10,951.41 | ZNB | CON | MH |
| A81570 |  | Backfilling & Compaction | 7d | 2026-09-26 A | 2026-10-01 A | A81560, A81550, A81520 | 100% | 2026-10-13 | 2026-10-21 |  |  | ICKMO1-cost unite [4867.29 $]; Roller compactor [200 h]; Physical Units [41938.6 h] | 4,867.29 | 4,867.29 | ZNB | CON |  |
| A81560 |  | Testing & Inspection | 2d | 2026-10-10 | 2026-10-12 | A81540 |  |  |  | -74.2d | 0d | ICKMO1-cost unite [2433.65 $]; labor [1200 h]; Physical Units [20969.3 h] | 2,433.65 |  | ZNB | CON |  |
|  | MH-3 A /MH-4 | **MH-3 A /MH-4** |  | 2026-08-20 | 2026-10-12 |  |  |  |  |  |  |  |  |  |  |  |  |
| A81330 |  | Excavation | 4d | 2026-08-20 A | 2026-09-28 A | A81530 | 100% | 2026-10-19 | 2026-10-24 |  |  | ICKMO1-cost unite [3650.47 $]; Excavator [200 h]; Physical Units [31454 h] | 3,650.47 | 3,650.47 | ZNB | CON |  |
| A81340 |  | Pipe Laying | 14d | 2026-08-20 A | 2026-09-28 A | A81330 | 100% | 2026-10-24 | 2026-11-09 |  |  | ICKMO1-cost unite [2433.65 $]; boom truck [200 h]; labor [1200 h]; Storm Network Circular pipes (GRP) [80.79]; Physical Units [20969.3 h] | 2,433.65 | 2,433.65 | ZNB | CON | LAY |
| A81350 |  | Install Manhole | 4d | 2026-08-20 A | 2026-09-28 A | A81330 | 100% | 2026-10-24 | 2026-10-28 |  |  | ICKMO1-cost unite [10951.4 $]; boom truck [200 h]; labor [1200 h]; Physical Units [94361.9 h] | 10,951.41 | 10,951.41 | ZNB | CON | MH |
| A81370 |  | Backfilling & Compaction | 7d | 2026-09-26 A | 2026-10-01 A | A81360, A81350, A81570 | 100% | 2026-10-21 | 2026-10-29 |  |  | ICKMO1-cost unite [4867.29 $]; Roller compactor [200 h]; Physical Units [41938.6 h] | 4,867.29 | 4,867.29 | ZNB | CON |  |
| A81360 |  | Testing & Inspection | 2d | 2026-10-10 | 2026-10-12 | A81340 |  |  |  | -74.2d | 0d | ICKMO1-cost unite [2433.65 $]; labor [1200 h]; Physical Units [20969.3 h] | 2,433.65 |  | ZNB | CON |  |
|  | MH-A10 /MH-A11 | **MH-A10 /MH-A11** |  | 2026-08-20 | 2026-11-14 |  |  |  |  |  |  |  |  |  |  |  |  |
| A80980 |  | Excavation | 4d | 2026-08-20 A | 2026-09-28 A | A81030 | 100% | 2026-11-21 | 2026-11-25 |  |  | ICKMO1-cost unite [3650.47 $]; Excavator [200 h]; Physical Units [31454 h] | 3,650.47 | 3,650.47 | ZNB | CON |  |
| A80990 |  | Pipe Laying | 14d | 2026-08-20 A | 2026-09-28 A | A80980 | 100% | 2026-11-25 | 2026-12-12 |  |  | ICKMO1-cost unite [2433.65 $]; boom truck [200 h]; labor [1200 h]; Storm Network Circular pipes (GRP) [80.79]; Physical Units [20969.3 h] | 2,433.65 | 2,433.65 | ZNB | CON | LAY |
| A81000 |  | Install Manhole | 4d | 2026-08-20 A | 2026-09-28 A | A80980 | 100% | 2026-11-25 | 2026-11-30 |  |  | ICKMO1-cost unite [10951.4 $]; boom truck [200 h]; labor [1200 h]; Physical Units [94361.9 h] | 10,951.41 | 10,951.41 | ZNB | CON | MH |
| A81010 |  | Testing & Inspection | 2d | 2026-10-10 | 2026-10-12 | A80990 |  |  |  | -53.2d | 21d | ICKMO1-cost unite [2433.65 $]; labor [1200 h]; Physical Units [20969.3 h] | 2,433.65 |  | ZNB | CON |  |
| A81020 |  | Backfilling & Compaction | 7d | 2026-11-05 | 2026-11-14 | A81010, A81000, A81070 |  |  |  | -74.2d | 0d | ICKMO1-cost unite [4867.29 $]; Roller compactor [200 h]; Physical Units [41938.6 h] | 4,867.29 |  | ZNB | CON |  |

| ID | WBS | Activity | Duration | Start | Finish | Predecessors | Complete | Planned start | Planned finish | Total float | Free float | Resources | Cost | Actual cost | ALKHARJ INDUSTERIAL AREA - PROJECT ZONES | ALKHARJ INDUSTERIAL AREA - DECEPLINS | ALKHARJ INDUSTERIAL AREA - Wet networks |
| --- | --- | --- | --- | --- | --- | --- | --- | --- | --- | --- | --- | --- | --- | --- | --- | --- | --- |
|  | MH-A11 /MH-A12 | **MH-A11 /MH-A12** |  | 2026-08-20 | 2026-11-22 |  |  |  |  |  |  |  |  |  |  |  |  |
| A80930 |  | Excavation | 4d | 2026-08-20 A | 2026-09-28 A | A80980 | 100% | 2026-11-25 | 2026-11-30 |  |  | ICKMO1-cost unite [3650.47 $]; Excavator [200 h]; Physical Units [31454 h] | 3,650.47 | 3,650.47 | ZNB | CON |  |
| A80940 |  | Pipe Laying | 14d | 2026-08-20 A | 2026-09-28 A | A80930 | 100% | 2026-11-30 | 2026-12-16 |  |  | ICKMO1-cost unite [2433.65 $]; boom truck [200 h]; labor [1200 h]; Storm Network Circular pipes (GRP) [80.79]; Physical Units [20969.3 h] | 2,433.65 | 2,433.65 | ZNB | CON | LAY |
| A80950 |  | Install Manhole | 4d | 2026-08-20 A | 2026-09-28 A | A80930 | 100% | 2026-11-30 | 2026-12-05 |  |  | ICKMO1-cost unite [10951.4 $]; boom truck [200 h]; labor [1200 h]; Physical Units [94361.9 h] | 10,951.41 | 10,951.41 | ZNB | CON | MH |
| A80960 |  | Testing & Inspection | 2d | 2026-10-10 | 2026-10-12 | A80940 |  |  |  | -46.2d | 28d | ICKMO1-cost unite [2433.65 $]; labor [1200 h]; Physical Units [20969.3 h] | 2,433.65 |  | ZNB | CON |  |
| A80970 |  | Backfilling & Compaction | 7d | 2026-11-14 | 2026-11-22 | A80960, A80950, A81020 |  |  |  | -74.2d | 0d | ICKMO1-cost unite [4867.29 $]; Roller compactor [200 h]; Physical Units [41938.6 h] | 4,867.29 |  | ZNB | CON |  |
|  | MH-A12 /MH-A13 | **MH-A12 /MH-A13** |  | 2026-08-20 | 2026-11-30 |  |  |  |  |  |  |  |  |  |  |  |  |
| A80880 |  | Excavation | 4d | 2026-08-20 A | 2026-09-28 A | A80930 | 100% | 2026-11-30 | 2026-12-05 |  |  | ICKMO1-cost unite [3650.47 $]; Excavator [200 h]; Physical Units [31454 h] | 3,650.47 | 3,650.47 | ZNB | CON |  |
| A80890 |  | Pipe Laying | 14d | 2026-08-20 A | 2026-09-28 A | A80880 | 100% | 2026-12-05 | 2026-12-21 |  |  | ICKMO1-cost unite [2433.65 $]; boom truck [200 h]; labor [1200 h]; Storm Network Circular pipes (GRP) [80.79]; Physical Units [20969.3 h] | 2,433.65 | 2,433.65 | ZNB | CON | LAY |
| A80900 |  | Install Manhole | 4d | 2026-08-20 A | 2026-09-28 A | A80880 | 100% | 2026-12-05 | 2026-12-09 |  |  | ICKMO1-cost unite [10951.4 $]; boom truck [200 h]; labor [1200 h]; Physical Units [94361.9 h] | 10,951.41 | 10,951.41 | ZNB | CON | MH |
| A80910 |  | Testing & Inspection | 2d | 2026-10-10 | 2026-10-12 | A80890 |  |  |  | -39.2d | 35d | ICKMO1-cost unite [2433.65 $]; labor [1200 h]; Physical Units [20969.3 h] | 2,433.65 |  | ZNB | CON |  |
| A80920 |  | Backfilling & Compaction | 7d | 2026-11-22 | 2026-11-30 | A80910, A80900, A80970 |  |  |  | -74.2d | 0d | ICKMO1-cost unite [4867.29 $]; Roller compactor [200 h]; Physical Units [41938.6 h] | 4,867.29 |  | ZNB | CON |  |
|  | MH-A13 /MH-A14 | **MH-A13 /MH-A14** |  | 2026-08-20 | 2026-12-08 |  |  |  |  |  |  |  |  |  |  |  |  |
| A80830 |  | Excavation | 4d | 2026-08-20 A | 2026-09-28 A | A80880 | 100% | 2026-12-05 | 2026-12-09 |  |  | ICKMO1-cost unite [3650.47 $]; Excavator [200 h]; Physical Units [31454 h] | 3,650.47 | 3,650.47 | ZNB | CON |  |
| A80840 |  | Pipe Laying | 14d | 2026-08-20 A | 2026-09-28 A | A80830 | 100% | 2026-12-09 | 2026-12-26 |  |  | ICKMO1-cost unite [2433.65 $]; boom truck [200 h]; labor [1200 h]; Storm Network Circular pipes (GRP) [80.79]; Physical Units [20969.3 h] | 2,433.65 | 2,433.65 | ZNB | CON | LAY |
| A80850 |  | Install Manhole | 4d | 2026-08-20 A | 2026-09-28 A | A80830 | 100% | 2026-12-09 | 2026-12-14 |  |  | ICKMO1-cost unite [10951.4 $]; boom truck [200 h]; labor [1200 h]; Physical Units [94361.9 h] | 10,951.41 | 10,951.41 | ZNB | CON | MH |
| A80860 |  | Testing & Inspection | 2d | 2026-10-10 | 2026-10-12 | A80840 |  |  |  | -32.2d | 42d | ICKMO1-cost unite [2433.65 $]; labor [1200 h]; Physical Units [20969.3 h] | 2,433.65 |  | ZNB | CON |  |
| A80870 |  | Backfilling & Compaction | 7d | 2026-11-30 | 2026-12-08 | A80860, A80850, A80920 |  |  |  | -74.2d | 0d | ICKMO1-cost unite [4867.29 $]; Roller compactor [200 h]; Physical Units [41938.6 h] | 4,867.29 |  | ZNB | CON |  |
|  | MH-A14 /MH-A15 | **MH-A14 /MH-A15** |  | 2026-08-20 | 2026-12-16 |  |  |  |  |  |  |  |  |  |  |  |  |
| A80780 |  | Excavation | 4d | 2026-08-20 A | 2026-09-28 A | A80830 | 100% | 2026-12-09 | 2026-12-14 |  |  | ICKMO1-cost unite [3650.47 $]; Excavator [200 h]; Physical Units [31454 h] | 3,650.47 | 3,650.47 | ZNB | CON |  |
| A80790 |  | Pipe Laying | 14d | 2026-08-20 A | 2026-09-28 A | A80780 | 100% | 2026-12-14 | 2026-12-30 |  |  | ICKMO1-cost unite [2433.65 $]; boom truck [200 h]; labor [1200 h]; Storm Network Circular pipes (GRP) [80.79]; Physical Units [20969.3 h] | 2,433.65 | 2,433.65 | ZNB | CON | LAY |
| A80800 |  | Install Manhole | 4d | 2026-08-20 A | 2026-09-28 A | A80780 | 100% | 2026-12-14 | 2026-12-19 |  |  | ICKMO1-cost unite [10951.4 $]; boom truck [200 h]; labor [1200 h]; Physical Units [94361.9 h] | 10,951.41 | 10,951.41 | ZNB | CON | MH |
| A80810 |  | Testing & Inspection | 2d | 2026-10-10 | 2026-10-12 | A80790 |  |  |  | -25.2d | 49d | ICKMO1-cost unite [2433.65 $]; labor [1200 h]; Physical Units [20969.3 h] | 2,433.65 |  | ZNB | CON |  |
| A80820 |  | Backfilling & Compaction | 7d | 2026-12-08 | 2026-12-16 | A80810, A80800, A80870 |  |  |  | -74.2d | 0d | ICKMO1-cost unite [4867.29 $]; Roller compactor [200 h]; Physical Units [41938.6 h] | 4,867.29 |  | ZNB | CON |  |

| ID | WBS | Activity | Duration | Start | Finish | Predecessors | Complete | Planned start | Planned finish | Total float | Free float | Resources | Cost | Actual cost | ALKHARJ INDUSTERIAL AREA - PROJECT ZONES | ALKHARJ INDUSTERIAL AREA - DECEPLINS | ALKHARJ INDUSTERIAL AREA - Wet networks |
| --- | --- | --- | --- | --- | --- | --- | --- | --- | --- | --- | --- | --- | --- | --- | --- | --- | --- |
|  | MH-A15 /MH-A16 | **MH-A15 /MH-A16** |  | 2026-08-20 | 2026-12-24 |  |  |  |  |  |  |  |  |  |  |  |  |
| A80730 |  | Excavation | 4d | 2026-08-20 A | 2026-09-28 A | A80780 | 100% | 2026-12-14 | 2026-12-19 |  |  | ICKMO1-cost unite [3650.47 $]; Excavator [200 h]; Physical Units [31454 h] | 3,650.47 | 3,650.47 | ZNB | CON |  |
| A80740 |  | Pipe Laying | 14d | 2026-08-20 A | 2026-09-28 A | A80730 | 100% | 2026-12-19 | 2027-01-04 |  |  | ICKMO1-cost unite [2433.65 $]; boom truck [200 h]; labor [1200 h]; Storm Network Circular pipes (GRP) [80.79]; Physical Units [20969.3 h] | 2,433.65 | 2,433.65 | ZNB | CON | LAY |
| A80750 |  | Install Manhole | 4d | 2026-08-20 A | 2026-09-28 A | A80730 | 100% | 2026-12-19 | 2026-12-23 |  |  | ICKMO1-cost unite [10951.4 $]; boom truck [200 h]; labor [1200 h]; Physical Units [94361.9 h] | 10,951.41 | 10,951.41 | ZNB | CON | MH |
| A80760 |  | Testing & Inspection | 2d | 2026-10-10 | 2026-10-12 | A80740 |  |  |  | -18.2d | 56d | ICKMO1-cost unite [2433.65 $]; labor [1200 h]; Physical Units [20969.3 h] | 2,433.65 |  | ZNB | CON |  |
| A80770 |  | Backfilling & Compaction | 7d | 2026-12-16 | 2026-12-24 | A80760, A80750, A80820 |  |  |  | -74.2d | 0d | ICKMO1-cost unite [4867.29 $]; Roller compactor [200 h]; Physical Units [41938.6 h] | 4,867.29 |  | ZNB | CON |  |
|  | MH-A16 /MH-A17 | **MH-A16 /MH-A17** |  | 2026-08-20 | 2027-01-02 |  |  |  |  |  |  |  |  |  |  |  |  |
| A80680 |  | Excavation | 4d | 2026-08-20 A | 2026-09-28 A | A80730 | 100% | 2026-12-19 | 2026-12-23 |  |  | ICKMO1-cost unite [3650.47 $]; Excavator [200 h]; Physical Units [31454 h] | 3,650.47 | 3,650.47 | ZNB | CON |  |
| A80690 |  | Pipe Laying | 14d | 2026-08-20 A | 2026-09-28 A | A80680 | 100% | 2026-12-23 | 2027-01-09 |  |  | ICKMO1-cost unite [2433.65 $]; boom truck [200 h]; labor [1200 h]; Storm Network Circular pipes (GRP) [80.79]; Physical Units [20969.3 h] | 2,433.65 | 2,433.65 | ZNB | CON | LAY |
| A80700 |  | Install Manhole | 4d | 2026-08-20 A | 2026-09-28 A | A80680 | 100% | 2026-12-23 | 2026-12-28 |  |  | ICKMO1-cost unite [10951.4 $]; boom truck [200 h]; labor [1200 h]; Physical Units [94361.9 h] | 10,951.41 | 10,951.41 | ZNB | CON | MH |
| A80710 |  | Testing & Inspection | 2d | 2026-10-10 | 2026-10-12 | A80690 |  |  |  | -11.2d | 63d | ICKMO1-cost unite [2433.65 $]; labor [1200 h]; Physical Units [20969.3 h] | 2,433.65 |  | ZNB | CON |  |
| A80720 |  | Backfilling & Compaction | 7d | 2026-12-24 | 2027-01-02 | A80710, A80700, A80770 |  |  |  | -74.2d | 0d | ICKMO1-cost unite [4867.29 $]; Roller compactor [200 h]; Physical Units [41938.6 h] | 4,867.29 |  | ZNB | CON |  |
|  | MH-A17 /MH-A18 | **MH-A17 /MH-A18** |  | 2026-08-20 | 2027-01-10 |  |  |  |  |  |  |  |  |  |  |  |  |
| A80630 |  | Excavation | 4d | 2026-08-20 A | 2026-09-28 A | A80680 | 100% | 2026-12-23 | 2026-12-28 |  |  | ICKMO1-cost unite [3650.47 $]; Excavator [200 h]; Physical Units [31454 h] | 3,650.47 | 3,650.47 | ZNB | CON |  |
| A80640 |  | Pipe Laying | 14d | 2026-08-20 A | 2026-09-28 A | A80630 | 100% | 2026-12-28 | 2027-01-13 |  |  | ICKMO1-cost unite [2433.65 $]; boom truck [200 h]; labor [1200 h]; Storm Network Circular pipes (GRP) [80.79]; Physical Units [20969.3 h] | 2,433.65 | 2,433.65 | ZNB | CON | LAY |
| A80650 |  | Install Manhole | 4d | 2026-08-20 A | 2026-09-28 A | A80630 | 100% | 2026-12-28 | 2027-01-02 |  |  | ICKMO1-cost unite [10951.4 $]; boom truck [200 h]; labor [1200 h]; Physical Units [94361.9 h] | 10,951.41 | 10,951.41 | ZNB | CON | MH |
| A80660 |  | Testing & Inspection | 2d | 2026-10-10 | 2026-10-12 | A80640 |  |  |  | -4.2d | 70d | ICKMO1-cost unite [2433.65 $]; labor [1200 h]; Physical Units [20969.3 h] | 2,433.65 |  | ZNB | CON |  |
| A80670 |  | Backfilling & Compaction | 7d | 2027-01-02 | 2027-01-10 | A80660, A80650, A80720 |  |  |  | -74.2d | 0d | ICKMO1-cost unite [4867.29 $]; Roller compactor [200 h]; Physical Units [41938.6 h] | 4,867.29 |  | ZNB | CON |  |
|  | MH-A18 /MH-A19 | **MH-A18 /MH-A19** |  | 2026-08-20 | 2027-01-18 |  |  |  |  |  |  |  |  |  |  |  |  |
| A80580 |  | Excavation | 4d | 2026-08-20 A | 2026-09-28 A | A80630 | 100% | 2026-12-28 | 2027-01-02 |  |  | ICKMO1-cost unite [3650.47 $]; Excavator [200 h]; Physical Units [31454 h] | 3,650.47 | 3,650.47 | ZNB | CON |  |
| A80590 |  | Pipe Laying | 14d | 2026-08-20 A | 2026-09-28 A | A80580 | 100% | 2027-01-02 | 2027-01-18 |  |  | ICKMO1-cost unite [2433.65 $]; boom truck [200 h]; labor [1200 h]; Storm Network Circular pipes (GRP) [80.79]; Physical Units [20969.3 h] | 2,433.65 | 2,433.65 | ZNB | CON | LAY |
| A80600 |  | Install Manhole | 4d | 2026-08-20 A | 2026-09-28 A | A80580 | 100% | 2027-01-02 | 2027-01-06 |  |  | ICKMO1-cost unite [10951.4 $]; boom truck [200 h]; labor [1200 h]; Physical Units [94361.9 h] | 10,951.41 | 10,951.41 | ZNB | CON | MH |
| A80610 |  | Testing & Inspection | 2d | 2026-10-10 | 2026-10-12 | A80590 |  |  |  | 2.8d | 77d | ICKMO1-cost unite [2433.65 $]; labor [1200 h]; Physical Units [20969.3 h] | 2,433.65 |  | ZNB | CON |  |
| A80620 |  | Backfilling & Compaction | 7d | 2027-01-10 | 2027-01-18 | A80610, A80600, A80670 |  |  |  | -74.2d | 0d | ICKMO1-cost unite [4867.29 $]; Roller compactor [200 h]; Physical Units [41938.6 h] | 4,867.29 |  | ZNB | CON |  |

| ID | WBS | Activity | Duration | Start | Finish | Predecessors | Complete | Planned start | Planned finish | Total float | Free float | Resources | Cost | Actual cost | ALKHARJ INDUSTERIAL AREA - PROJECT ZONES | ALKHARJ INDUSTERIAL AREA - DECEPLINS | ALKHARJ INDUSTERIAL AREA - Wet networks |
| --- | --- | --- | --- | --- | --- | --- | --- | --- | --- | --- | --- | --- | --- | --- | --- | --- | --- |
|  | MH-A19 /MH-A20 | **MH-A19 /MH-A20** |  | 2026-08-20 | 2027-01-26 |  |  |  |  |  |  |  |  |  |  |  |  |
| A80530 |  | Excavation | 4d | 2026-08-20 A | 2026-09-28 A | A80580 | 100% | 2027-01-02 | 2027-01-06 |  |  | ICKMO1-cost unite [3650.47 $]; Excavator [200 h]; Physical Units [31454 h] | 3,650.47 | 3,650.47 | ZNB | CON |  |
| A80540 |  | Pipe Laying | 14d | 2026-08-20 A | 2026-09-28 A | A80530 | 100% | 2027-01-06 | 2027-01-23 |  |  | ICKMO1-cost unite [2433.65 $]; boom truck [200 h]; labor [1200 h]; Storm Network Circular pipes (GRP) [80.79]; Physical Units [20969.3 h] | 2,433.65 | 2,433.65 | ZNB | CON | LAY |
| A80550 |  | Install Manhole | 4d | 2026-08-20 A | 2026-09-28 A | A80530 | 100% | 2027-01-06 | 2027-01-11 |  |  | ICKMO1-cost unite [10951.4 $]; boom truck [200 h]; labor [1200 h]; Physical Units [94361.9 h] | 10,951.41 | 10,951.41 | ZNB | CON | MH |
| A80560 |  | Testing & Inspection | 2d | 2026-10-10 | 2026-10-12 | A80540 |  |  |  | 9.8d | 84d | ICKMO1-cost unite [2433.65 $]; labor [1200 h]; Physical Units [20969.3 h] | 2,433.65 |  | ZNB | CON |  |
| A80570 |  | Backfilling & Compaction | 7d | 2027-01-18 | 2027-01-26 | A80560, A80550, A80620 |  |  |  | -74.2d | 0d | ICKMO1-cost unite [4867.29 $]; Roller compactor [200 h]; Physical Units [41938.6 h] | 4,867.29 |  | ZNB | CON |  |
|  | MH-A20 /MH-A21 | **MH-A20 /MH-A21** |  | 2026-08-20 | 2027-02-03 |  |  |  |  |  |  |  |  |  |  |  |  |
| A80480 |  | Excavation | 4d | 2026-08-20 A | 2026-09-28 A | A80530 | 100% | 2027-01-06 | 2027-01-11 |  |  | ICKMO1-cost unite [3650.47 $]; Excavator [200 h]; Physical Units [31454 h] | 3,650.47 | 3,650.47 | ZNB | CON |  |
| A80490 |  | Pipe Laying | 14d | 2026-08-20 A | 2026-09-28 A | A80480 | 100% | 2027-01-11 | 2027-01-27 |  |  | ICKMO1-cost unite [2433.65 $]; boom truck [200 h]; labor [1200 h]; Storm Network Circular pipes (GRP) [80.79]; Physical Units [20969.3 h] | 2,433.65 | 2,433.65 | ZNB | CON | LAY |
| A80500 |  | Install Manhole | 4d | 2026-08-20 A | 2026-09-28 A | A80480 | 100% | 2027-01-11 | 2027-01-16 |  |  | ICKMO1-cost unite [10951.4 $]; boom truck [200 h]; labor [1200 h]; Physical Units [94361.9 h] | 10,951.41 | 10,951.41 | ZNB | CON | MH |
| A80510 |  | Testing & Inspection | 2d | 2026-10-10 | 2026-10-12 | A80490 |  |  |  | 16.8d | 91d | ICKMO1-cost unite [2433.65 $]; labor [1200 h]; Physical Units [20969.3 h] | 2,433.65 |  | ZNB | CON |  |
| A80520 |  | Backfilling & Compaction | 7d | 2027-01-26 | 2027-02-03 | A80510, A80500, A80570 |  |  |  | -74.2d | 0d | ICKMO1-cost unite [4867.29 $]; Roller compactor [200 h]; Physical Units [41938.6 h] | 4,867.29 |  | ZNB | CON |  |
|  | MH-A21 /MH-A22 | **MH-A21 /MH-A22** |  | 2026-10-10 | 2027-02-11 |  |  |  |  |  |  |  |  |  |  |  |  |
| A80430 |  | Excavation | 4d | 2026-10-10 | 2026-10-14 | A80480 |  |  |  | 5.8d | 0d | ICKMO1-cost unite [3650.47 $]; Excavator [200 h]; Physical Units [31454 h] | 3,650.47 |  | ZNB | CON |  |
| A80440 |  | Pipe Laying | 14d | 2026-10-14 | 2026-10-31 | A80430 |  |  |  | 5.8d | 0d | ICKMO1-cost unite [2433.65 $]; boom truck [200 h]; labor [1200 h]; Storm Network Circular pipes (GRP) [80.79]; Physical Units [20969.3 h] | 2,433.65 |  | ZNB | CON | LAY |
| A80450 |  | Install Manhole | 4d | 2026-10-14 | 2026-10-19 | A80430 |  |  |  | 17.8d | 92d | ICKMO1-cost unite [10951.4 $]; boom truck [200 h]; labor [1200 h]; Physical Units [94361.9 h] | 10,951.41 |  | ZNB | CON | MH |
| A80460 |  | Testing & Inspection | 2d | 2026-10-31 | 2026-11-02 | A80440 |  |  |  | 5.8d | 80d | ICKMO1-cost unite [2433.65 $]; labor [1200 h]; Physical Units [20969.3 h] | 2,433.65 |  | ZNB | CON |  |
| A80470 |  | Backfilling & Compaction | 7d | 2027-02-03 | 2027-02-11 | A80460, A80450, A80520 |  |  |  | -74.2d | 0d | ICKMO1-cost unite [4867.29 $]; Roller compactor [200 h]; Physical Units [41938.6 h] | 4,867.29 |  | ZNB | CON |  |
|  | MH-A22 /MH-A23 | **MH-A22 /MH-A23** |  | 2026-10-14 | 2027-02-20 |  |  |  |  |  |  |  |  |  |  |  |  |
| A80380 |  | Excavation | 4d | 2026-10-14 | 2026-10-19 | A80430 |  |  |  | 8.8d | 0d | ICKMO1-cost unite [3650.47 $]; Excavator [200 h]; Physical Units [31454 h] | 3,650.47 |  | ZNB | CON |  |
| A80390 |  | Pipe Laying | 14d | 2026-10-19 | 2026-11-04 | A80380 |  |  |  | 8.8d | 0d | ICKMO1-cost unite [2433.65 $]; boom truck [200 h]; labor [1200 h]; Storm Network Circular pipes (GRP) [80.79]; Physical Units [20969.3 h] | 2,433.65 |  | ZNB | CON | LAY |
| A80400 |  | Install Manhole | 4d | 2026-10-19 | 2026-10-24 | A80380 |  |  |  | 20.8d | 95d | ICKMO1-cost unite [10951.4 $]; boom truck [200 h]; labor [1200 h]; Physical Units [94361.9 h] | 10,951.41 |  | ZNB | CON | MH |
| A80410 |  | Testing & Inspection | 2d | 2026-11-04 | 2026-11-07 | A80390 |  |  |  | 8.8d | 83d | ICKMO1-cost unite [2433.65 $]; labor [1200 h]; Physical Units [20969.3 h] | 2,433.65 |  | ZNB | CON |  |
| A80420 |  | Backfilling & Compaction | 7d | 2027-02-11 | 2027-02-20 | A80410, A80400, A80470 |  |  |  | -74.2d | 0d | ICKMO1-cost unite [4867.29 $]; Roller compactor [200 h]; Physical Units [41938.6 h] | 4,867.29 |  | ZNB | CON |  |

| ID | WBS | Activity | Duration | Start | Finish | Predecessors | Total float | Free float | Resources | Cost | ALKHARJ INDUSTERIAL AREA - PROJECT ZONES | ALKHARJ INDUSTERIAL AREA - DECEPLINS | ALKHARJ INDUSTERIAL AREA - Wet networks |
| --- | --- | --- | --- | --- | --- | --- | --- | --- | --- | --- | --- | --- | --- |
|  | MH-A23 /MH-A24 | **MH-A23 /MH-A24** |  | 2026-10-19 | 2027-02-28 |  |  |  |  |  |  |  |  |
| A80330 |  | Excavation | 4d | 2026-10-19 | 2026-10-24 | A80380 | 11.8d | 0d | ICKMO1-cost unite [3650.47 $]; Excavator [200 h]; Physical Units [31454 h] | 3,650.47 | ZNB | CON |  |
| A80340 |  | Pipe Laying | 14d | 2026-10-24 | 2026-11-09 | A80330 | 11.8d | 0d | ICKMO1-cost unite [2433.65 $]; boom truck [200 h]; labor [1200 h]; Storm Network Circular pipes (GRP) [80.79]; Physical Units [20969.3 h] | 2,433.65 | ZNB | CON | LAY |
| A80350 |  | Install Manhole | 4d | 2026-10-24 | 2026-10-28 | A80330 | 23.8d | 98d | ICKMO1-cost unite [10951.4 $]; boom truck [200 h]; labor [1200 h]; Physical Units [94361.9 h] | 10,951.41 | ZNB | CON | MH |
| A80360 |  | Testing & Inspection | 2d | 2026-11-09 | 2026-11-11 | A80340 | 11.8d | 86d | ICKMO1-cost unite [2433.65 $]; labor [1200 h]; Physical Units [20969.3 h] | 2,433.65 | ZNB | CON |  |
| A80370 |  | Backfilling & Compaction | 7d | 2027-02-20 | 2027-02-28 | A80360, A80350, A80420 | -74.2d | 0d | ICKMO1-cost unite [4867.29 $]; Roller compactor [200 h]; Physical Units [41938.6 h] | 4,867.29 | ZNB | CON |  |
|  | MH-A24 /MH-A25 | **MH-A24 /MH-A25** |  | 2026-10-24 | 2027-03-08 |  |  |  |  |  |  |  |  |
| A80280 |  | Excavation | 4d | 2026-10-24 | 2026-10-28 | A80330 | 14.8d | 0d | ICKMO1-cost unite [3650.47 $]; Excavator [200 h]; Physical Units [31454 h] | 3,650.47 | ZNB | CON |  |
| A80290 |  | Pipe Laying | 14d | 2026-10-28 | 2026-11-14 | A80280 | 14.8d | 0d | ICKMO1-cost unite [2433.65 $]; boom truck [200 h]; labor [1200 h]; Storm Network Circular pipes (GRP) [80.79]; Physical Units [20969.3 h] | 2,433.65 | ZNB | CON | LAY |
| A80300 |  | Install Manhole | 4d | 2026-10-28 | 2026-11-02 | A80280 | 26.8d | 101d | ICKMO1-cost unite [10951.4 $]; boom truck [200 h]; labor [1200 h]; Physical Units [94361.9 h] | 10,951.41 | ZNB | CON | MH |
| A80310 |  | Testing & Inspection | 2d | 2026-11-14 | 2026-11-16 | A80290 | 14.8d | 89d | ICKMO1-cost unite [2433.65 $]; labor [1200 h]; Physical Units [20969.3 h] | 2,433.65 | ZNB | CON |  |
| A80320 |  | Backfilling & Compaction | 7d | 2027-02-28 | 2027-03-08 | A80310, A80300, A80370 | -74.2d | 0d | ICKMO1-cost unite [4867.29 $]; Roller compactor [200 h]; Physical Units [41938.6 h] | 4,867.29 | ZNB | CON |  |
|  | MH-A25 /MH-A26 | **MH-A25 /MH-A26** |  | 2026-10-28 | 2027-03-16 |  |  |  |  |  |  |  |  |
| A80230 |  | Excavation | 4d | 2026-10-28 | 2026-11-02 | A80280 | 17.8d | 0d | ICKMO1-cost unite [3650.47 $]; Excavator [200 h]; Physical Units [31454 h] | 3,650.47 | ZNB | CON |  |
| A80240 |  | Pipe Laying | 14d | 2026-11-02 | 2026-11-18 | A80230 | 17.8d | 0d | ICKMO1-cost unite [2433.65 $]; boom truck [200 h]; labor [1200 h]; Storm Network Circular pipes (GRP) [80.79]; Physical Units [20969.3 h] | 2,433.65 | ZNB | CON | LAY |
| A80250 |  | Install Manhole | 4d | 2026-11-02 | 2026-11-07 | A80230 | 29.8d | 104d | ICKMO1-cost unite [10951.4 $]; boom truck [200 h]; labor [1200 h]; Physical Units [94361.9 h] | 10,951.41 | ZNB | CON | MH |
| A80260 |  | Testing & Inspection | 2d | 2026-11-18 | 2026-11-21 | A80240 | 17.8d | 92d | ICKMO1-cost unite [2433.65 $]; labor [1200 h]; Physical Units [20969.3 h] | 2,433.65 | ZNB | CON |  |
| A80270 |  | Backfilling & Compaction | 7d | 2027-03-08 | 2027-03-16 | A80260, A80250, A80320 | -74.2d | 0d | ICKMO1-cost unite [4867.29 $]; Roller compactor [200 h]; Physical Units [41938.6 h] | 4,867.29 | ZNB | CON |  |
|  | MH-A26 /MH-A27 | **MH-A26 /MH-A27** |  | 2026-11-02 | 2027-03-24 |  |  |  |  |  |  |  |  |
| A80180 |  | Excavation | 4d | 2026-11-02 | 2026-11-07 | A80230 | 20.8d | 0d | ICKMO1-cost unite [3650.47 $]; Excavator [200 h]; Physical Units [31454 h] | 3,650.47 | ZNB | CON |  |
| A80190 |  | Pipe Laying | 14d | 2026-11-07 | 2026-11-23 | A80180 | 20.8d | 0d | ICKMO1-cost unite [2433.65 $]; boom truck [200 h]; labor [1200 h]; Storm Network Circular pipes (GRP) [80.79]; Physical Units [20969.3 h] | 2,433.65 | ZNB | CON | LAY |
| A80200 |  | Install Manhole | 4d | 2026-11-07 | 2026-11-11 | A80180 | 32.8d | 107d | ICKMO1-cost unite [10951.4 $]; boom truck [200 h]; labor [1200 h]; Physical Units [94361.9 h] | 10,951.41 | ZNB | CON | MH |
| A80210 |  | Testing & Inspection | 2d | 2026-11-23 | 2026-11-25 | A80190 | 20.8d | 95d | ICKMO1-cost unite [2433.65 $]; labor [1200 h]; Physical Units [20969.3 h] | 2,433.65 | ZNB | CON |  |
| A80220 |  | Backfilling & Compaction | 7d | 2027-03-16 | 2027-03-24 | A80210, A80200, A80270 | -74.2d | 0d | ICKMO1-cost unite [4867.29 $]; Roller compactor [200 h]; Physical Units [41938.6 h] | 4,867.29 | ZNB | CON |  |

| ID | WBS | Activity | Duration | Start | Finish | Predecessors | Total float | Free float | Resources | Cost | ALKHARJ INDUSTERIAL AREA - PROJECT ZONES | ALKHARJ INDUSTERIAL AREA - DECEPLINS | ALKHARJ INDUSTERIAL AREA - Wet networks |
| --- | --- | --- | --- | --- | --- | --- | --- | --- | --- | --- | --- | --- | --- |
|  | MH-A27 /MH-A28 | **MH-A27 /MH-A28** |  | 2026-11-07 | 2027-04-01 |  |  |  |  |  |  |  |  |
| A80130 |  | Excavation | 4d | 2026-11-07 | 2026-11-11 | A80180 | 23.8d | 0d | ICKMO1-cost unite [3650.47 $]; Excavator [200 h]; Physical Units [31454 h] | 3,650.47 | ZNB | CON |  |
| A80140 |  | Pipe Laying | 14d | 2026-11-11 | 2026-11-28 | A80130 | 23.8d | 0d | ICKMO1-cost unite [2433.65 $]; boom truck [200 h]; labor [1200 h]; Storm Network Circular pipes (GRP) [80.79]; Physical Units [20969.3 h] | 2,433.65 | ZNB | CON | LAY |
| A80150 |  | Install Manhole | 4d | 2026-11-11 | 2026-11-16 | A80130 | 35.8d | 110d | ICKMO1-cost unite [10951.4 $]; boom truck [200 h]; labor [1200 h]; Physical Units [94361.9 h] | 10,951.41 | ZNB | CON | MH |
| A80160 |  | Testing & Inspection | 2d | 2026-11-28 | 2026-11-30 | A80140 | 23.8d | 98d | ICKMO1-cost unite [2433.65 $]; labor [1200 h]; Physical Units [20969.3 h] | 2,433.65 | ZNB | CON |  |
| A80170 |  | Backfilling & Compaction | 7d | 2027-03-24 | 2027-04-01 | A80160, A80150, A80220 | -74.2d | 0d | ICKMO1-cost unite [4867.29 $]; Roller compactor [200 h]; Physical Units [41938.6 h] | 4,867.29 | ZNB | CON |  |
|  | MH-A28 /MH-A29 | **MH-A28 /MH-A29** |  | 2026-11-11 | 2027-04-10 |  |  |  |  |  |  |  |  |
| A80080 |  | Excavation | 4d | 2026-11-11 | 2026-11-16 | A80130 | 26.8d | 0d | ICKMO1-cost unite [3650.47 $]; Excavator [200 h]; Physical Units [31454 h] | 3,650.47 | ZNB | CON |  |
| A80090 |  | Pipe Laying | 14d | 2026-11-16 | 2026-12-02 | A80080 | 26.8d | 0d | ICKMO1-cost unite [2433.65 $]; boom truck [200 h]; labor [1200 h]; Storm Network Circular pipes (GRP) [80.79]; Physical Units [20969.3 h] | 2,433.65 | ZNB | CON | LAY |
| A80100 |  | Install Manhole | 4d | 2026-11-16 | 2026-11-21 | A80080 | 38.8d | 113d | ICKMO1-cost unite [10951.4 $]; boom truck [200 h]; labor [1200 h]; Physical Units [94361.9 h] | 10,951.41 | ZNB | CON | MH |
| A80110 |  | Testing & Inspection | 2d | 2026-12-02 | 2026-12-05 | A80090 | 26.8d | 101d | ICKMO1-cost unite [2433.65 $]; labor [1200 h]; Physical Units [20969.3 h] | 2,433.65 | ZNB | CON |  |
| A80120 |  | Backfilling & Compaction | 7d | 2027-04-01 | 2027-04-10 | A80110, A80100, A80170 | -74.2d | 0d | ICKMO1-cost unite [4867.29 $]; Roller compactor [200 h]; Physical Units [41938.6 h] | 4,867.29 | ZNB | CON |  |
|  | MH-A29 /MH-A30 | **MH-A29 /MH-A30** |  | 2026-11-16 | 2027-04-18 |  |  |  |  |  |  |  |  |
| A80030 |  | Excavation | 4d | 2026-11-16 | 2026-11-21 | A80080 | 29.8d | 0d | ICKMO1-cost unite [3650.47 $]; Excavator [200 h]; Physical Units [31454 h] | 3,650.47 | ZNB | CON |  |
| A80040 |  | Pipe Laying | 14d | 2026-11-21 | 2026-12-07 | A80030 | 29.8d | 0d | ICKMO1-cost unite [2433.65 $]; boom truck [200 h]; labor [1200 h]; Storm Network Circular pipes (GRP) [80.79]; Physical Units [20969.3 h] | 2,433.65 | ZNB | CON | LAY |
| A80050 |  | Install Manhole | 4d | 2026-11-21 | 2026-11-25 | A80030 | 41.8d | 116d | ICKMO1-cost unite [10951.4 $]; boom truck [200 h]; labor [1200 h]; Physical Units [94361.9 h] | 10,951.41 | ZNB | CON | MH |
| A80060 |  | Testing & Inspection | 2d | 2026-12-07 | 2026-12-09 | A80040 | 29.8d | 104d | ICKMO1-cost unite [2433.65 $]; labor [1200 h]; Physical Units [20969.3 h] | 2,433.65 | ZNB | CON |  |
| A80070 |  | Backfilling & Compaction | 7d | 2027-04-10 | 2027-04-18 | A80060, A80050, A80120 | -74.2d | 0d | ICKMO1-cost unite [4867.29 $]; Roller compactor [200 h]; Physical Units [41938.6 h] | 4,867.29 | ZNB | CON |  |
|  | MH-A30 /MH-A31 | **MH-A30 /MH-A31** |  | 2026-11-21 | 2027-04-26 |  |  |  |  |  |  |  |  |
| A79980 |  | Excavation | 4d | 2026-11-21 | 2026-11-25 | A80030 | 32.8d | 0d | ICKMO1-cost unite [3650.47 $]; Excavator [200 h]; Physical Units [31454 h] | 3,650.47 | ZNB | CON |  |
| A79990 |  | Pipe Laying | 14d | 2026-11-25 | 2026-12-12 | A79980 | 32.8d | 0d | ICKMO1-cost unite [2433.65 $]; boom truck [200 h]; labor [1200 h]; Storm Network Circular pipes (GRP) [80.79]; Physical Units [20969.3 h] | 2,433.65 | ZNB | CON | LAY |
| A80000 |  | Install Manhole | 4d | 2026-11-25 | 2026-11-30 | A79980 | 44.8d | 119d | ICKMO1-cost unite [10951.4 $]; boom truck [200 h]; labor [1200 h]; Physical Units [94361.9 h] | 10,951.41 | ZNB | CON | MH |
| A80010 |  | Testing & Inspection | 2d | 2026-12-12 | 2026-12-14 | A79990 | 32.8d | 107d | ICKMO1-cost unite [2433.65 $]; labor [1200 h]; Physical Units [20969.3 h] | 2,433.65 | ZNB | CON |  |
| A80020 |  | Backfilling & Compaction | 7d | 2027-04-18 | 2027-04-26 | A80010, A80000, A80070 | -74.2d | 0d | ICKMO1-cost unite [4867.29 $]; Roller compactor [200 h]; Physical Units [41938.6 h] | 4,867.29 | ZNB | CON |  |

| ID | WBS | Activity | Duration | Start | Finish | Predecessors | Complete | Planned start | Planned finish | Total float | Free float | Resources | Cost | Actual cost | ALKHARJ INDUSTERIAL AREA - PROJECT ZONES | ALKHARJ INDUSTERIAL AREA - DECEPLINS | ALKHARJ INDUSTERIAL AREA - Wet networks |
| --- | --- | --- | --- | --- | --- | --- | --- | --- | --- | --- | --- | --- | --- | --- | --- | --- | --- |
|  | MH-A4 /MH-A5 | **MH-A4 /MH-A5** |  | 2026-08-20 | 2026-10-12 |  |  |  |  |  |  |  |  |  |  |  |  |
| A81280 |  | Excavation | 4d | 2026-08-20 A | 2026-09-28 A | A81330 | 100% | 2026-10-24 | 2026-10-28 |  |  | ICKMO1-cost unite [3650.47 $]; Excavator [200 h]; Physical Units [31454 h] | 3,650.47 | 3,650.47 | ZNB | CON |  |
| A81290 |  | Pipe Laying | 14d | 2026-08-20 A | 2026-09-28 A | A81280 | 100% | 2026-10-28 | 2026-11-14 |  |  | ICKMO1-cost unite [2433.65 $]; boom truck [200 h]; labor [1200 h]; Storm Network Circular pipes (GRP) [80.79]; Physical Units [20969.3 h] | 2,433.65 | 2,433.65 | ZNB | CON | LAY |
| A81300 |  | Install Manhole | 4d | 2026-08-20 A | 2026-09-28 A | A81280 | 100% | 2026-10-28 | 2026-11-02 |  |  | ICKMO1-cost unite [10951.4 $]; boom truck [200 h]; labor [1200 h]; Physical Units [94361.9 h] | 10,951.41 | 10,951.41 | ZNB | CON | MH |
| A81320 |  | Backfilling & Compaction | 7d | 2026-09-21 A | 2026-10-01 A | A81310, A81300, A81370 | 100% | 2026-10-29 | 2026-11-07 |  |  | ICKMO1-cost unite [4867.29 $]; Roller compactor [200 h]; Physical Units [41938.6 h] | 4,867.29 | 4,867.29 | ZNB | CON |  |
| A81310 |  | Testing & Inspection | 2d | 2026-10-10 | 2026-10-12 | A81290 |  |  |  | -74.2d | 0d | ICKMO1-cost unite [2433.65 $]; labor [1200 h]; Physical Units [20969.3 h] | 2,433.65 |  | ZNB | CON |  |
|  | MH-A5 /MH-A6 | **MH-A5 /MH-A6** |  | 2026-08-20 | 2026-10-12 |  |  |  |  |  |  |  |  |  |  |  |  |
| A81230 |  | Excavation | 4d | 2026-08-20 A | 2026-09-28 A | A81280 | 100% | 2026-10-28 | 2026-11-02 |  |  | ICKMO1-cost unite [3650.47 $]; Excavator [200 h]; Physical Units [31454 h] | 3,650.47 | 3,650.47 | ZNB | CON |  |
| A81240 |  | Pipe Laying | 14d | 2026-08-20 A | 2026-09-28 A | A81230 | 100% | 2026-11-02 | 2026-11-18 |  |  | ICKMO1-cost unite [2433.65 $]; boom truck [200 h]; labor [1200 h]; Storm Network Circular pipes (GRP) [80.79]; Physical Units [20969.3 h] | 2,433.65 | 2,433.65 | ZNB | CON | LAY |
| A81250 |  | Install Manhole | 4d | 2026-08-20 A | 2026-09-28 A | A81230 | 100% | 2026-11-02 | 2026-11-07 |  |  | ICKMO1-cost unite [10951.4 $]; boom truck [200 h]; labor [1200 h]; Physical Units [94361.9 h] | 10,951.41 | 10,951.41 | ZNB | CON | MH |
| A81270 |  | Backfilling & Compaction | 7d | 2026-08-20 A | 2026-09-28 A | A81260, A81250, A81320 | 100% | 2026-10-12 | 2026-10-20 |  |  | ICKMO1-cost unite [4867.29 $]; Roller compactor [200 h]; Physical Units [41938.6 h] | 4,867.29 | 4,867.29 | ZNB | CON |  |
| A81260 |  | Testing & Inspection | 2d | 2026-10-10 | 2026-10-12 | A81240 |  |  |  | -74.2d | 0d | ICKMO1-cost unite [2433.65 $]; labor [1200 h]; Physical Units [20969.3 h] | 2,433.65 |  | ZNB | CON |  |
|  | MH-A6 /MH-A7 | **MH-A6 /MH-A7** |  | 2026-08-20 | 2026-10-12 |  |  |  |  |  |  |  |  |  |  |  |  |
| A81180 |  | Excavation | 4d | 2026-08-20 A | 2026-09-28 A | A81230 | 100% | 2026-11-02 | 2026-11-07 |  |  | ICKMO1-cost unite [3650.47 $]; Excavator [200 h]; Physical Units [31454 h] | 3,650.47 | 3,650.47 | ZNB | CON |  |
| A81190 |  | Pipe Laying | 14d | 2026-08-20 A | 2026-09-28 A | A81180 | 100% | 2026-11-07 | 2026-11-23 |  |  | ICKMO1-cost unite [2433.65 $]; boom truck [200 h]; labor [1200 h]; Storm Network Circular pipes (GRP) [80.79]; Physical Units [20969.3 h] | 2,433.65 | 2,433.65 | ZNB | CON | LAY |
| A81200 |  | Install Manhole | 4d | 2026-08-20 A | 2026-09-28 A | A81180 | 100% | 2026-11-07 | 2026-11-11 |  |  | ICKMO1-cost unite [10951.4 $]; boom truck [200 h]; labor [1200 h]; Physical Units [94361.9 h] | 10,951.41 | 10,951.41 | ZNB | CON | MH |
| A81220 |  | Backfilling & Compaction | 4d | 2026-08-20 A | 2026-09-28 A | A81210, A81200, A81270 | 100% | 2026-10-20 | 2026-10-25 |  |  | ICKMO1-cost unite [4867.29 $]; Roller compactor [200 h]; Physical Units [41938.6 h] | 4,867.29 | 4,867.29 | ZNB | CON |  |
| A81210 |  | Testing & Inspection | 2d | 2026-10-10 | 2026-10-12 | A81190 |  |  |  | -74.2d | 0d | ICKMO1-cost unite [2433.65 $]; labor [1200 h]; Physical Units [20969.3 h] | 2,433.65 |  | ZNB | CON |  |
|  | MH-A7 /MH-A8 | **MH-A7 /MH-A8** |  | 2026-08-20 | 2026-10-20 |  |  |  |  |  |  |  |  |  |  |  |  |
| A81130 |  | Excavation | 4d | 2026-08-20 A | 2026-09-28 A | A81180 | 100% | 2026-11-07 | 2026-11-11 |  |  | ICKMO1-cost unite [3650.47 $]; Excavator [200 h]; Physical Units [31454 h] | 3,650.47 | 3,650.47 | ZNB | CON |  |
| A81140 |  | Pipe Laying | 14d | 2026-08-20 A | 2026-09-28 A | A81130 | 100% | 2026-11-11 | 2026-11-28 |  |  | ICKMO1-cost unite [2433.65 $]; boom truck [200 h]; labor [1200 h]; Storm Network Circular pipes (GRP) [80.79]; Physical Units [20969.3 h] | 2,433.65 | 2,433.65 | ZNB | CON | LAY |
| A81150 |  | Install Manhole | 4d | 2026-08-20 A | 2026-09-28 A | A81130 | 100% | 2026-11-11 | 2026-11-16 |  |  | ICKMO1-cost unite [10951.4 $]; boom truck [200 h]; labor [1200 h]; Physical Units [94361.9 h] | 10,951.41 | 10,951.41 | ZNB | CON | MH |
| A81160 |  | Testing & Inspection | 2d | 2026-10-10 | 2026-10-12 | A81140 |  |  |  | -74.2d | 0d | ICKMO1-cost unite [2433.65 $]; labor [1200 h]; Physical Units [20969.3 h] | 2,433.65 |  | ZNB | CON |  |
| A81170 |  | Backfilling & Compaction | 7d | 2026-10-12 | 2026-10-20 | A81160, A81150, A81220 |  |  |  | -74.2d | 0d | ICKMO1-cost unite [4867.29 $]; Roller compactor [200 h]; Physical Units [41938.6 h] | 4,867.29 |  | ZNB | CON |  |

| ID | WBS | Activity | Duration | Start | Finish | Predecessors | Complete | Planned start | Planned finish | Total float | Free float | Resources | Cost | Actual cost | ALKHARJ INDUSTERIAL AREA - PROJECT ZONES | ALKHARJ INDUSTERIAL AREA - DECEPLINS | ALKHARJ INDUSTERIAL AREA - Wet networks |
| --- | --- | --- | --- | --- | --- | --- | --- | --- | --- | --- | --- | --- | --- | --- | --- | --- | --- |
|  | MH-A8 /MH-A9 | **MH-A8 /MH-A9** |  | 2026-08-20 | 2026-10-28 |  |  |  |  |  |  |  |  |  |  |  |  |
| A81080 |  | Excavation | 4d | 2026-08-20 A | 2026-09-28 A | A81130 | 100% | 2026-11-11 | 2026-11-16 |  |  | ICKMO1-cost unite [3650.47 $]; Excavator [200 h]; Physical Units [31454 h] | 3,650.47 | 3,650.47 | ZNB | CON |  |
| A81090 |  | Pipe Laying | 4d | 2026-08-20 A | 2026-09-28 A | A81080 | 100% | 2026-11-16 | 2026-11-21 |  |  | ICKMO1-cost unite [2433.65 $]; boom truck [200 h]; labor [1200 h]; Storm Network Circular pipes (GRP) [80.79]; Physical Units [20969.3 h] | 2,433.65 | 2,433.65 | ZNB | CON | LAY |
| A81100 |  | Install Manhole | 4d | 2026-08-20 A | 2026-09-28 A | A81080 | 100% | 2026-11-16 | 2026-11-21 |  |  | ICKMO1-cost unite [10951.4 $]; boom truck [200 h]; labor [1200 h]; Physical Units [94361.9 h] | 10,951.41 | 10,951.41 | ZNB | CON | MH |
| A81110 |  | Testing & Inspection | 2d | 2026-10-10 | 2026-10-12 | A81090 |  |  |  | -67.2d | 7d | ICKMO1-cost unite [2433.65 $]; labor [1200 h]; Physical Units [20969.3 h] | 2,433.65 |  | ZNB | CON |  |
| A81120 |  | Backfilling & Compaction | 7d | 2026-10-20 | 2026-10-28 | A81110, A81100, A81170 |  |  |  | -74.2d | 0d | ICKMO1-cost unite [4867.29 $]; Roller compactor [200 h]; Physical Units [41938.6 h] | 4,867.29 |  | ZNB | CON |  |
|  | MH-A9 /MH-A10 | **MH-A9 /MH-A10** |  | 2026-08-20 | 2026-11-05 |  |  |  |  |  |  |  |  |  |  |  |  |
| A81030 |  | Excavation | 4d | 2026-08-20 A | 2026-09-28 A | A81080 | 100% | 2026-11-16 | 2026-11-21 |  |  | ICKMO1-cost unite [3650.47 $]; Excavator [200 h]; Physical Units [31454 h] | 3,650.47 | 3,650.47 | ZNB | CON |  |
| A81040 |  | Pipe Laying | 14d | 2026-08-20 A | 2026-09-28 A | A81030 | 100% | 2026-11-21 | 2026-12-07 |  |  | ICKMO1-cost unite [2433.65 $]; boom truck [200 h]; labor [1200 h]; Storm Network Circular pipes (GRP) [80.79]; Physical Units [20969.3 h] | 2,433.65 | 2,433.65 | ZNB | CON | LAY |
| A81050 |  | Install Manhole | 4d | 2026-08-20 A | 2026-09-28 A | A81030 | 100% | 2026-11-21 | 2026-11-25 |  |  | ICKMO1-cost unite [10951.4 $]; boom truck [200 h]; labor [1200 h]; Physical Units [94361.9 h] | 10,951.41 | 10,951.41 | ZNB | CON | MH |
| A81060 |  | Testing & Inspection | 2d | 2026-10-10 | 2026-10-12 | A81040 |  |  |  | -60.2d | 14d | ICKMO1-cost unite [2433.65 $]; labor [1200 h]; Physical Units [20969.3 h] | 2,433.65 |  | ZNB | CON |  |
| A81070 |  | Backfilling & Compaction | 7d | 2026-10-28 | 2026-11-05 | A81060, A81050, A81120 |  |  |  | -74.2d | 0d | ICKMO1-cost unite [4867.29 $]; Roller compactor [200 h]; Physical Units [41938.6 h] | 4,867.29 |  | ZNB | CON |  |
|  | TIN IN TOMH 1.1 | **TIN IN TOMH 1.1** |  | 2026-08-20 | 2026-10-12 |  |  |  |  |  |  |  |  |  |  |  |  |
| A81380 |  | Excavation | 4d | 2026-08-20 A | 2026-09-28 A | A79580 | 100% | 2026-09-30 | 2026-10-05 |  |  | ICKMO1-cost unite [3650.47 $]; Excavator [200 h]; Physical Units [31454 h] | 3,650.47 | 3,650.47 | ZNB | CON |  |
| A81390 |  | Pipe Laying | 14d | 2026-08-20 A | 2026-09-28 A | A81380 | 100% | 2026-10-05 | 2026-10-21 |  |  | ICKMO1-cost unite [2433.65 $]; boom truck [200 h]; labor [1200 h]; Storm Network Circular pipes (GRP) [80.79]; Physical Units [20969.3 h] | 2,433.65 | 2,433.65 | ZNB | CON | LAY |
| A81400 |  | Install Manhole | 4d | 2026-08-20 A | 2026-09-28 A | A81380 | 100% | 2026-10-05 | 2026-10-10 |  |  | ICKMO1-cost unite [10951.4 $]; boom truck [200 h]; labor [1200 h]; Physical Units [94361.9 h] | 10,951.41 | 10,951.41 | ZNB | CON | MH |
| A81420 |  | Backfilling & Compaction | 7d | 2026-08-28 A | 2026-09-28 A | A81410, A81400 | 100% | 2026-09-28 | 2026-10-06 |  |  | ICKMO1-cost unite [4867.29 $]; Roller compactor [200 h]; Physical Units [41938.6 h] | 4,867.29 | 4,867.29 | ZNB | CON |  |
| A81410 |  | Testing & Inspection | 2d | 2026-10-10 | 2026-10-12 | A81390 |  |  |  | -74.2d | 0d | ICKMO1-cost unite [2433.65 $]; labor [1200 h]; Physical Units [20969.3 h] | 2,433.65 |  | ZNB | CON |  |
|  | COLLECTOR ROAD | **COLLECTOR ROAD** |  | 2026-08-20 | 2026-11-01 |  |  |  |  |  |  |  |  |  |  |  |  |
|  | CU-01 | **CU-01** |  | 2026-08-20 | 2026-09-28 |  |  |  |  |  |  |  |  |  |  |  |  |
| A92760 |  | Excavation - Box Culverts | 4d | 2026-08-20 A | 2026-09-28 A | A78230, A63920, A63500 | 100% | 2026-09-23 | 2026-09-27 |  |  | ICKMO1-cost unite [4694.04 $]; Excavator [800 h]; Physical Units [40445.8 h] | 4,694.04 | 4,694.04 | ZNB | CON |  |
| A92770 |  | Foundation works | 10d | 2026-08-20 A | 2026-09-28 A | A92760 | 100% | 2027-06-01 | 2027-06-13 |  |  | ICKMO1-cost unite [3129.36 $]; labor [1200 h]; Physical Units [26963.9 h] | 3,129.36 | 3,129.36 | ZNB | CON |  |
| A92780 |  | Walls & Slabs works | 14d | 2026-08-20 A | 2026-09-28 A | A92770 | 100% | 2027-06-13 | 2027-06-29 |  |  | ICKMO1-cost unite [14082.1 $]; labor [1200 h]; Physical Units [121337 h] | 14,082.12 | 14,082.12 | ZNB | CON |  |
| A92790 |  | Wing walls and approach slab works | 12d | 2026-08-20 A | 2026-09-28 A | A92780 | 100% | 2027-06-29 | 2027-07-13 |  |  | ICKMO1-cost unite [3129.36 $]; labor [1200 h]; Physical Units [26963.9 h] | 3,129.36 | 3,129.36 | ZNB | CON |  |
| A92800 |  | Waterproofing for Culverts | 4d | 2026-08-20 A | 2026-09-28 A | A92780 | 100% | 2027-06-29 | 2027-07-04 |  |  | ICKMO1-cost unite [3129.36 $]; labor [1200 h]; Physical Units [26963.9 h] | 3,129.36 | 3,129.36 | ZNB | CON |  |
| A92810 |  | Riprap for culvert inlet and outlet slope protection | 10d | 2026-08-20 A | 2026-09-28 A | A92790, A92800 | 100% | 2027-07-13 | 2027-07-25 |  |  | ICKMO1-cost unite [3129.36 $]; labor [1200 h]; Physical Units [26963.9 h] | 3,129.36 | 3,129.36 | ZNB | CON |  |

| ID | WBS | Activity | Duration | Start | Finish | Predecessors | Complete | Planned start | Planned finish | Resources | Cost | Actual cost | ALKHARJ INDUSTERIAL AREA - PROJECT ZONES | ALKHARJ INDUSTERIAL AREA - DECEPLINS |
| --- | --- | --- | --- | --- | --- | --- | --- | --- | --- | --- | --- | --- | --- | --- |
|  | CU-02 | **CU-02** |  | 2026-08-20 | 2026-09-28 |  |  |  |  |  |  |  |  |  |
| A93120 |  | Excavation - Box Culverts | 4d | 2026-08-20 A | 2026-09-28 A | A78230, A63500 | 100% | 2026-09-23 | 2026-09-27 | ICKMO1-cost unite [4694.04 $]; Excavator [800 h]; Physical Units [40445.8 h] | 4,694.04 | 4,694.04 | ZNB | CON |
| A93130 |  | Foundation works | 10d | 2026-08-20 A | 2026-09-28 A | A93120 | 100% | 2027-06-01 | 2027-06-13 | ICKMO1-cost unite [3129.36 $]; labor [1200 h]; Physical Units [26963.9 h] | 3,129.36 | 3,129.36 | ZNB | CON |
| A93140 |  | Walls & Slabs works | 14d | 2026-08-20 A | 2026-09-28 A | A93130 | 100% | 2027-06-13 | 2027-06-29 | ICKMO1-cost unite [14082.1 $]; labor [1200 h]; Physical Units [121337 h] | 14,082.12 | 14,082.12 | ZNB | CON |
| A93150 |  | Waterproofing for Culverts | 4d | 2026-08-20 A | 2026-09-28 A | A93140 | 100% | 2027-06-29 | 2027-07-04 | ICKMO1-cost unite [3129.36 $]; labor [1200 h]; Physical Units [26963.9 h] | 3,129.36 | 3,129.36 | ZNB | CON |
| A93160 |  | Wing walls and approach slab works | 12d | 2026-08-20 A | 2026-09-28 A | A93140 | 100% | 2027-06-29 | 2027-07-13 | ICKMO1-cost unite [3129.36 $]; labor [1200 h]; Physical Units [26963.9 h] | 3,129.36 | 3,129.36 | ZNB | CON |
| A93170 |  | Riprap for culvert inlet and outlet slope protection | 10d | 2026-08-20 A | 2026-09-28 A | A93160, A93150 | 100% | 2027-07-13 | 2027-07-25 | ICKMO1-cost unite [3129.36 $]; labor [1200 h]; Physical Units [26963.9 h] | 3,129.36 | 3,129.36 | ZNB | CON |
|  | CU-03 | **CU-03** |  | 2026-08-20 | 2026-09-28 |  |  |  |  |  |  |  |  |  |
| A93060 |  | Excavation - Box Culverts | 4d | 2026-08-20 A | 2026-09-28 A | A78230, A63500 | 100% | 2026-09-23 | 2026-09-27 | ICKMO1-cost unite [4694.04 $]; Excavator [800 h]; Physical Units [40445.8 h] | 4,694.04 | 4,694.04 | ZNB | CON |
| A93070 |  | Foundation works | 10d | 2026-08-20 A | 2026-09-28 A | A93060 | 100% | 2027-06-01 | 2027-06-13 | ICKMO1-cost unite [3129.36 $]; labor [1200 h]; Physical Units [26963.9 h] | 3,129.36 | 3,129.36 | ZNB | CON |
| A93080 |  | Walls & Slabs works | 14d | 2026-08-20 A | 2026-09-28 A | A93070 | 100% | 2027-06-13 | 2027-06-29 | ICKMO1-cost unite [14082.1 $]; labor [1200 h]; Physical Units [121337 h] | 14,082.12 | 14,082.12 | ZNB | CON |
| A93090 |  | Waterproofing for Culverts | 4d | 2026-08-20 A | 2026-09-28 A | A93080 | 100% | 2027-06-29 | 2027-07-04 | ICKMO1-cost unite [3129.36 $]; labor [1200 h]; Physical Units [26963.9 h] | 3,129.36 | 3,129.36 | ZNB | CON |
| A93100 |  | Wing walls and approach slab works | 12d | 2026-08-20 A | 2026-09-28 A | A93080 | 100% | 2027-06-29 | 2027-07-13 | ICKMO1-cost unite [3129.36 $]; labor [1200 h]; Physical Units [26963.9 h] | 3,129.36 | 3,129.36 | ZNB | CON |
| A93110 |  | Riprap for culvert inlet and outlet slope protection | 10d | 2026-08-20 A | 2026-09-28 A | A93100, A93090 | 100% | 2027-07-13 | 2027-07-25 | ICKMO1-cost unite [3129.36 $]; labor [1200 h]; Physical Units [26963.9 h] | 3,129.36 | 3,129.36 | ZNB | CON |
|  | CU-04 | **CU-04** |  | 2026-08-20 | 2026-09-28 |  |  |  |  |  |  |  |  |  |
| A93000 |  | Excavation - Box Culverts | 4d | 2026-08-20 A | 2026-09-28 A | A78230, A63500 | 100% | 2026-09-23 | 2026-09-27 | ICKMO1-cost unite [4694.04 $]; Excavator [800 h]; Physical Units [40445.8 h] | 4,694.04 | 4,694.04 | ZNB | CON |
| A93010 |  | Foundation works | 10d | 2026-08-20 A | 2026-09-28 A | A93000 | 100% | 2027-06-01 | 2027-06-13 | ICKMO1-cost unite [3129.36 $]; labor [1200 h]; Physical Units [26963.9 h] | 3,129.36 | 3,129.36 | ZNB | CON |
| A93020 |  | Walls & Slabs works | 14d | 2026-08-20 A | 2026-09-28 A | A93010 | 100% | 2027-06-13 | 2027-06-29 | ICKMO1-cost unite [14082.1 $]; labor [1200 h]; Physical Units [121337 h] | 14,082.12 | 14,082.12 | ZNB | CON |
| A93030 |  | Waterproofing for Culverts | 4d | 2026-08-20 A | 2026-09-28 A | A93020 | 100% | 2027-06-29 | 2027-07-04 | ICKMO1-cost unite [3129.36 $]; labor [1200 h]; Physical Units [26963.9 h] | 3,129.36 | 3,129.36 | ZNB | CON |
| A93040 |  | Wing walls and approach slab works | 12d | 2026-08-20 A | 2026-09-28 A | A93020 | 100% | 2027-06-29 | 2027-07-13 | ICKMO1-cost unite [3129.36 $]; labor [1200 h]; Physical Units [26963.9 h] | 3,129.36 | 3,129.36 | ZNB | CON |
| A93050 |  | Riprap for culvert inlet and outlet slope protection | 10d | 2026-08-20 A | 2026-09-28 A | A93040, A93030 | 100% | 2027-07-13 | 2027-07-25 | ICKMO1-cost unite [3129.36 $]; labor [1200 h]; Physical Units [26963.9 h] | 3,129.36 | 3,129.36 | ZNB | CON |
|  | CU-05 | **CU-05** |  | 2026-08-20 | 2026-09-28 |  |  |  |  |  |  |  |  |  |
| A92940 |  | Excavation - Box Culverts | 4d | 2026-08-20 A | 2026-09-28 A | A78230, A63500 | 100% | 2026-09-23 | 2026-09-27 | ICKMO1-cost unite [4694.04 $]; Excavator [800 h]; Physical Units [40445.8 h] | 4,694.04 | 4,694.04 | ZNB | CON |
| A92950 |  | Foundation works | 10d | 2026-08-20 A | 2026-09-28 A | A92940 | 100% | 2027-06-01 | 2027-06-13 | ICKMO1-cost unite [3129.36 $]; labor [1200 h]; Physical Units [26963.9 h] | 3,129.36 | 3,129.36 | ZNB | CON |
| A92960 |  | Walls & Slabs works | 14d | 2026-08-20 A | 2026-09-28 A | A92950 | 100% | 2027-06-13 | 2027-06-29 | ICKMO1-cost unite [14082.1 $]; labor [1200 h]; Physical Units [121337 h] | 14,082.12 | 14,082.12 | ZNB | CON |
| A92970 |  | Waterproofing for Culverts | 4d | 2026-08-20 A | 2026-09-28 A | A92960 | 100% | 2027-06-29 | 2027-07-04 | ICKMO1-cost unite [3129.36 $]; labor [1200 h]; Physical Units [26963.9 h] | 3,129.36 | 3,129.36 | ZNB | CON |
| A92980 |  | Wing walls and approach slab works | 12d | 2026-08-20 A | 2026-09-28 A | A92960 | 100% | 2027-06-29 | 2027-07-13 | ICKMO1-cost unite [3129.36 $]; labor [1200 h]; Physical Units [26963.9 h] | 3,129.36 | 3,129.36 | ZNB | CON |
| A92990 |  | Riprap for culvert inlet and outlet slope protection | 10d | 2026-08-20 A | 2026-09-28 A | A92980, A92970 | 100% | 2027-07-13 | 2027-07-25 | ICKMO1-cost unite [3129.36 $]; labor [1200 h]; Physical Units [26963.9 h] | 3,129.36 | 3,129.36 | ZNB | CON |

| ID | WBS | Activity | Duration | Start | Finish | Predecessors | Complete | Planned start | Planned finish | Total float | Free float | Resources | Cost | Actual cost | ALKHARJ INDUSTERIAL AREA - PROJECT ZONES | ALKHARJ INDUSTERIAL AREA - DECEPLINS | ALKHARJ INDUSTERIAL AREA - Wet networks |
| --- | --- | --- | --- | --- | --- | --- | --- | --- | --- | --- | --- | --- | --- | --- | --- | --- | --- |
|  | CU-06 | **CU-06** |  | 2026-08-20 | 2026-09-28 |  |  |  |  |  |  |  |  |  |  |  |  |
| A92880 |  | Excavation - Box Culverts | 4d | 2026-08-20 A | 2026-09-28 A | A78230, A63500 | 100% | 2026-09-23 | 2026-09-27 |  |  | ICKMO1-cost unite [4694.04 $]; Excavator [800 h]; Physical Units [40445.8 h] | 4,694.04 | 4,694.04 | ZNB | CON |  |
| A92890 |  | Foundation works | 10d | 2026-08-20 A | 2026-09-28 A | A92880 | 100% | 2027-06-01 | 2027-06-13 |  |  | ICKMO1-cost unite [3129.36 $]; labor [1200 h]; Physical Units [26963.9 h] | 3,129.36 | 3,129.36 | ZNB | CON |  |
| A92900 |  | Walls & Slabs works | 14d | 2026-08-20 A | 2026-09-28 A | A92890 | 100% | 2027-06-13 | 2027-06-29 |  |  | ICKMO1-cost unite [14082.1 $]; labor [1200 h]; Physical Units [121337 h] | 14,082.12 | 14,082.12 | ZNB | CON |  |
| A92910 |  | Waterproofing for Culverts | 4d | 2026-08-20 A | 2026-09-28 A | A92900 | 100% | 2027-06-29 | 2027-07-04 |  |  | ICKMO1-cost unite [3129.36 $]; labor [1200 h]; Physical Units [26963.9 h] | 3,129.36 | 3,129.36 | ZNB | CON |  |
| A92920 |  | Wing walls and approach slab works | 12d | 2026-08-20 A | 2026-09-28 A | A92900 | 100% | 2027-06-29 | 2027-07-13 |  |  | ICKMO1-cost unite [3129.36 $]; labor [1200 h]; Physical Units [26963.9 h] | 3,129.36 | 3,129.36 | ZNB | CON |  |
| A92930 |  | Riprap for culvert inlet and outlet slope protection | 10d | 2026-08-20 A | 2026-09-28 A | A92920, A92910 | 100% | 2027-07-13 | 2027-07-25 |  |  | ICKMO1-cost unite [3129.36 $]; labor [1200 h]; Physical Units [26963.9 h] | 3,129.36 | 3,129.36 | ZNB | CON |  |
|  | CU-07 | **CU-07** |  | 2026-08-20 | 2026-09-28 |  |  |  |  |  |  |  |  |  |  |  |  |
| A92820 |  | Excavation - Box Culverts | 4d | 2026-08-20 A | 2026-09-28 A | A78230, A63500 | 100% | 2026-09-23 | 2026-09-27 |  |  | ICKMO1-cost unite [4694.04 $]; Excavator [800 h]; Physical Units [40445.8 h] | 4,694.04 | 4,694.04 | ZNB | CON |  |
| A92830 |  | Foundation works | 10d | 2026-08-20 A | 2026-09-28 A | A92820 | 100% | 2027-06-01 | 2027-06-13 |  |  | ICKMO1-cost unite [3129.36 $]; labor [1200 h]; Physical Units [26963.9 h] | 3,129.36 | 3,129.36 | ZNB | CON |  |
| A92840 |  | Walls & Slabs works | 14d | 2026-08-20 A | 2026-09-28 A | A92830 | 100% | 2027-06-13 | 2027-06-29 |  |  | ICKMO1-cost unite [14082.1 $]; labor [1200 h]; Physical Units [121337 h] | 14,082.12 | 14,082.12 | ZNB | CON |  |
| A92850 |  | Waterproofing for Culverts | 4d | 2026-08-20 A | 2026-09-28 A | A92840 | 100% | 2027-06-29 | 2027-07-04 |  |  | ICKMO1-cost unite [3129.36 $]; labor [1200 h]; Physical Units [26963.9 h] | 3,129.36 | 3,129.36 | ZNB | CON |  |
| A92860 |  | Wing walls and approach slab works | 12d | 2026-08-20 A | 2026-09-28 A | A92840 | 100% | 2027-06-29 | 2027-07-13 |  |  | ICKMO1-cost unite [3129.36 $]; labor [1200 h]; Physical Units [26963.9 h] | 3,129.36 | 3,129.36 | ZNB | CON |  |
| A92870 |  | Riprap for culvert inlet and outlet slope protection | 10d | 2026-08-20 A | 2026-09-28 A | A92860, A92850 | 100% | 2027-07-13 | 2027-07-25 |  |  | ICKMO1-cost unite [3129.36 $]; labor [1200 h]; Physical Units [26963.9 h] | 3,129.36 | 3,129.36 | ZNB | CON |  |
|  | MH-1-C /MH-2-C | **MH-1-C /MH-2-C** |  | 2026-08-20 | 2026-10-12 |  |  |  |  |  |  |  |  |  |  |  |  |
| A68080 |  | Excavation | 4d | 2026-08-20 A | 2026-09-28 A | A64560, A64570, A1890 | 100% | 2026-03-09 | 2026-03-12 |  |  | ICKMO1-cost unite [4694.04 $]; Excavator [200 h]; Physical Units [40445.8 h] | 4,694.04 | 4,694.04 | ZNB | CON |  |
| A68090 |  | Pipe Laying | 4d | 2026-08-20 A | 2026-09-28 A | A68080 | 100% | 2026-03-14 | 2026-03-17 |  |  | ICKMO1-cost unite [3129.36 $]; boom truck [200 h]; labor [1200 h]; Storm Network Circular pipes (GRP) [80.79]; Physical Units [26963.9 h] | 3,129.36 | 3,129.36 | ZNB | CON | LAY |
| A68100 |  | Install Manhole | 4d | 2026-08-20 A | 2026-09-28 A | A68080 | 100% | 2026-03-14 | 2026-03-17 |  |  | ICKMO1-cost unite [14082.1 $]; boom truck [200 h]; labor [1200 h]; Physical Units [121337 h] | 14,082.12 | 14,082.12 | ZNB | CON | MH |
| A68120 |  | Backfilling & Compaction | 5d | 2026-08-20 A | 2026-09-28 A | A68110, A68100 | 100% | 2026-11-01 | 2026-11-07 |  |  | ICKMO1-cost unite [6258.72 $]; Roller compactor [200 h]; Physical Units [53927.7 h] | 6,258.72 | 6,258.72 | ZNB | CON |  |
| A68110 |  | Testing & Inspection | 2d | 2026-10-10 | 2026-10-12 | A68090 |  |  |  | 6.36d | 0d | ICKMO1-cost unite [3129.36 $]; labor [1200 h]; Physical Units [26963.9 h] | 3,129.36 |  | ZNB | CON |  |
|  | MH-1-E /MH-2-E | **MH-1-E /MH-2-E** |  | 2026-08-20 | 2026-10-12 |  |  |  |  |  |  |  |  |  |  |  |  |
| A77230 |  | Excavation | 4d | 2026-08-20 A | 2026-09-28 A | A75080, A1890 | 100% | 2026-03-23 | 2026-03-26 |  |  | ICKMO1-cost unite [4694.04 $]; Excavator [200 h]; Physical Units [40445.8 h] | 4,694.04 | 4,694.04 | ZNB | CON |  |
| A77240 |  | Pipe Laying | 8d | 2026-08-20 A | 2026-09-28 A | A77230 | 100% | 2026-03-28 | 2026-04-05 |  |  | ICKMO1-cost unite [3129.36 $]; boom truck [200 h]; labor [1200 h]; Storm Network Circular pipes (GRP) [80.79]; Physical Units [26963.9 h] | 3,129.36 | 3,129.36 | ZNB | CON | LAY |
| A77250 |  | Install Manhole | 4d | 2026-08-20 A | 2026-09-28 A | A77230 | 100% | 2026-03-28 | 2026-03-31 |  |  | ICKMO1-cost unite [14082.1 $]; boom truck [200 h]; labor [1200 h]; Physical Units [121337 h] | 14,082.12 | 14,082.12 | ZNB | CON | MH |
| A77270 |  | Backfilling & Compaction | 5d | 2026-08-20 A | 2026-09-28 A | A77260, A77250, A75120 | 100% | 2026-11-18 | 2026-11-24 |  |  | ICKMO1-cost unite [6258.72 $]; Roller compactor [200 h]; Physical Units [53927.7 h] | 6,258.72 | 6,258.72 | ZNB | CON |  |
| A77260 |  | Testing & Inspection | 2d | 2026-10-10 | 2026-10-12 | A77240 |  |  |  | 6.36d | 0d | ICKMO1-cost unite [3129.36 $]; labor [1200 h]; Physical Units [26963.9 h] | 3,129.36 |  | ZNB | CON |  |

| ID | WBS | Activity | Duration | Start | Finish | Predecessors | Complete | Planned start | Planned finish | Total float | Free float | Resources | Cost | Actual cost | ALKHARJ INDUSTERIAL AREA - PROJECT ZONES | ALKHARJ INDUSTERIAL AREA - DECEPLINS | ALKHARJ INDUSTERIAL AREA - Wet networks |
| --- | --- | --- | --- | --- | --- | --- | --- | --- | --- | --- | --- | --- | --- | --- | --- | --- | --- |
|  | MH-1-G /MH-2-G | **MH-1-G /MH-2-G** |  | 2026-08-20 | 2026-10-17 |  |  |  |  |  |  |  |  |  |  |  |  |
| A77380 |  | Excavation | 4d | 2026-08-20 A | 2026-09-28 A | A77330, A1890 | 100% | 2026-04-06 | 2026-04-09 |  |  | ICKMO1-cost unite [4694.04 $]; Excavator [200 h]; Physical Units [40445.8 h] | 4,694.04 | 4,694.04 | ZNB | CON |  |
| A77390 |  | Pipe Laying | 8d | 2026-08-20 A | 2026-09-28 A | A77380 | 100% | 2026-04-11 | 2026-04-19 |  |  | ICKMO1-cost unite [3129.36 $]; boom truck [200 h]; labor [1200 h]; Storm Network Circular pipes (GRP) [80.79]; Physical Units [26963.9 h] | 3,129.36 | 3,129.36 | ZNB | CON | LAY |
| A77400 |  | Install Manhole | 4d | 2026-08-20 A | 2026-09-28 A | A77380 | 100% | 2026-04-11 | 2026-04-14 |  |  | ICKMO1-cost unite [14082.1 $]; boom truck [200 h]; labor [1200 h]; Physical Units [121337 h] | 14,082.12 | 14,082.12 | ZNB | CON | MH |
| A77420 |  | Backfilling & Compaction | 5d | 2026-08-20 A | 2026-09-28 A | A77410, A77400, A77370 | 100% | 2026-12-06 | 2026-12-12 |  |  | ICKMO1-cost unite [6258.72 $]; Roller compactor [200 h]; Physical Units [53927.7 h] | 6,258.72 | 6,258.72 | ZNB | CON |  |
| A77410 |  | Testing & Inspection | 2d | 2026-10-14 | 2026-10-17 | A77390 |  |  |  | 7.36d | 13d | ICKMO1-cost unite [3129.36 $]; labor [1200 h]; Physical Units [26963.9 h] | 3,129.36 |  | ZNB | CON |  |
|  | MH-1-L /MH-2-L | **MH-1-L /MH-2-L** |  | 2026-08-20 | 2026-09-28 |  |  |  |  |  |  |  |  |  |  |  |  |
| A77730 |  | Excavation | 4d | 2026-08-20 A | 2026-09-28 A | A77680, A1890 | 100% | 2026-05-09 | 2026-05-12 |  |  | ICKMO1-cost unite [4694.04 $]; Excavator [200 h]; Physical Units [40445.8 h] | 4,694.04 | 4,694.04 | ZNB | CON |  |
| A77740 |  | Pipe Laying | 8d | 2026-08-20 A | 2026-09-28 A | A77730 | 100% | 2026-09-30 | 2026-10-10 |  |  | ICKMO1-cost unite [3129.36 $]; boom truck [200 h]; labor [1200 h]; Storm Network Circular pipes (GRP) [80.79]; Physical Units [26963.9 h] | 3,129.36 | 3,129.36 | ZNB | CON | LAY |
| A77750 |  | Install Manhole | 4d | 2026-08-20 A | 2026-09-28 A | A77730 | 100% | 2026-09-30 | 2026-10-05 |  |  | ICKMO1-cost unite [14082.1 $]; boom truck [200 h]; labor [1200 h]; Physical Units [121337 h] | 14,082.12 | 14,082.12 | ZNB | CON | MH |
| A77760 |  | Testing & Inspection | 2d | 2026-08-20 A | 2026-09-28 A | A77740 | 100% | 2026-10-10 | 2026-10-12 |  |  | ICKMO1-cost unite [3129.36 $]; labor [1200 h]; Physical Units [26963.9 h] | 3,129.36 | 3,129.36 | ZNB | CON |  |
| A77770 |  | Backfilling & Compaction | 5d | 2026-08-20 A | 2026-09-28 A | A77760, A77750, A77720 | 100% | 2026-11-15 | 2026-11-21 |  |  | ICKMO1-cost unite [6258.72 $]; Roller compactor [200 h]; Physical Units [53927.7 h] | 6,258.72 | 6,258.72 | ZNB | CON |  |
|  | MH-1-N /MH-2-N | **MH-1-N /MH-2-N** |  | 2026-08-20 | 2026-09-28 |  |  |  |  |  |  |  |  |  |  |  |  |
| A77980 |  | Excavation | 4d | 2026-08-20 A | 2026-09-28 A | A77930, A1890 | 100% | 2026-10-14 | 2026-10-19 |  |  | ICKMO1-cost unite [4694.04 $]; Excavator [200 h]; Physical Units [40445.8 h] | 4,694.04 | 4,694.04 | ZNB | CON |  |
| A77990 |  | Pipe Laying | 8d | 2026-08-20 A | 2026-09-28 A | A77980 | 100% | 2026-10-19 | 2026-10-28 |  |  | ICKMO1-cost unite [3129.36 $]; boom truck [200 h]; labor [1200 h]; Storm Network Circular pipes (GRP) [80.79]; Physical Units [26963.9 h] | 3,129.36 | 3,129.36 | ZNB | CON | LAY |
| A78000 |  | Install Manhole | 4d | 2026-08-20 A | 2026-09-28 A | A77980 | 100% | 2026-10-19 | 2026-10-24 |  |  | ICKMO1-cost unite [14082.1 $]; boom truck [200 h]; labor [1200 h]; Physical Units [121337 h] | 14,082.12 | 14,082.12 | ZNB | CON | MH |
| A78010 |  | Testing & Inspection | 2d | 2026-08-20 A | 2026-09-28 A | A77990 | 100% | 2026-10-28 | 2026-10-31 |  |  | ICKMO1-cost unite [3129.36 $]; labor [1200 h]; Physical Units [26963.9 h] | 3,129.36 | 3,129.36 | ZNB | CON |  |
| A78020 |  | Backfilling & Compaction | 5d | 2026-08-20 A | 2026-09-28 A | A78010, A78000, A77970 | 100% | 2026-12-14 | 2026-12-20 |  |  | ICKMO1-cost unite [6258.72 $]; Roller compactor [200 h]; Physical Units [53927.7 h] | 6,258.72 | 6,258.72 | ZNB | CON |  |
|  | MH-1-P /MH-2-P | **MH-1-P /MH-2-P** |  | 2026-08-20 | 2026-09-28 |  |  |  |  |  |  |  |  |  |  |  |  |
| A78080 |  | Excavation | 4d | 2026-08-20 A | 2026-09-28 A | A78030, A1890 | 100% | 2026-10-24 | 2026-10-28 |  |  | ICKMO1-cost unite [4694.04 $]; Excavator [200 h]; Physical Units [40445.8 h] | 4,694.04 | 4,694.04 | ZNB | CON |  |
| A78090 |  | Pipe Laying | 8d | 2026-08-20 A | 2026-09-28 A | A78080 | 100% | 2026-10-28 | 2026-11-07 |  |  | ICKMO1-cost unite [3129.36 $]; boom truck [200 h]; labor [1200 h]; Storm Network Circular pipes (GRP) [80.79]; Physical Units [26963.9 h] | 3,129.36 | 3,129.36 | ZNB | CON | LAY |
| A78100 |  | Install Manhole | 4d | 2026-08-20 A | 2026-09-28 A | A78080 | 100% | 2026-10-28 | 2026-11-02 |  |  | ICKMO1-cost unite [14082.1 $]; boom truck [200 h]; labor [1200 h]; Physical Units [121337 h] | 14,082.12 | 14,082.12 | ZNB | CON | MH |
| A78110 |  | Testing & Inspection | 2d | 2026-08-20 A | 2026-09-28 A | A78090 | 100% | 2026-11-07 | 2026-11-09 |  |  | ICKMO1-cost unite [3129.36 $]; labor [1200 h]; Physical Units [26963.9 h] | 3,129.36 | 3,129.36 | ZNB | CON |  |
| A78120 |  | Backfilling & Compaction | 5d | 2026-08-20 A | 2026-09-28 A | A78110, A78100, A78070 | 100% | 2026-12-26 | 2026-12-31 |  |  | ICKMO1-cost unite [6258.72 $]; Roller compactor [200 h]; Physical Units [53927.7 h] | 6,258.72 | 6,258.72 | ZNB | CON |  |

| ID | WBS | Activity | Duration | Start | Finish | Predecessors | Complete | Planned start | Planned finish | Total float | Free float | Resources | Cost | Actual cost | ALKHARJ INDUSTERIAL AREA - PROJECT ZONES | ALKHARJ INDUSTERIAL AREA - DECEPLINS | ALKHARJ INDUSTERIAL AREA - Wet networks |
| --- | --- | --- | --- | --- | --- | --- | --- | --- | --- | --- | --- | --- | --- | --- | --- | --- | --- |
|  | MH-2-C /MH-3-C | **MH-2-C /MH-3-C** |  | 2026-08-20 | 2026-10-12 |  |  |  |  |  |  |  |  |  |  |  |  |
| A68130 |  | Excavation | 4d | 2026-08-20 A | 2026-09-28 A | A68080, A1890 | 100% | 2026-03-14 | 2026-03-17 |  |  | ICKMO1-cost unite [4694.04 $]; Excavator [200 h]; Physical Units [40445.8 h] | 4,694.04 | 4,694.04 | ZNB | CON |  |
| A68140 |  | Pipe Laying | 8d | 2026-08-20 A | 2026-09-28 A | A68130 | 100% | 2026-03-18 | 2026-03-26 |  |  | ICKMO1-cost unite [3129.36 $]; boom truck [200 h]; labor [1200 h]; Storm Network Circular pipes (GRP) [80.79]; Physical Units [26963.9 h] | 3,129.36 | 3,129.36 | ZNB | CON | LAY |
| A68150 |  | Install Manhole | 4d | 2026-08-20 A | 2026-09-28 A | A68130 | 100% | 2026-03-18 | 2026-03-22 |  |  | ICKMO1-cost unite [14082.1 $]; boom truck [200 h]; labor [1200 h]; Physical Units [121337 h] | 14,082.12 | 14,082.12 | ZNB | CON | MH |
| A68170 |  | Backfilling & Compaction | 5d | 2026-08-20 A | 2026-09-28 A | A68160, A68150, A68120 | 100% | 2026-11-07 | 2026-11-12 |  |  | ICKMO1-cost unite [6258.72 $]; Roller compactor [200 h]; Physical Units [53927.7 h] | 6,258.72 | 6,258.72 | ZNB | CON |  |
| A68160 |  | Testing & Inspection | 2d | 2026-10-10 | 2026-10-12 | A68140 |  |  |  | 6.36d | 0d | ICKMO1-cost unite [3129.36 $]; labor [1200 h]; Physical Units [26963.9 h] | 3,129.36 |  | ZNB | CON |  |
|  | MH-2-E /MH-3-E | **MH-2-E /MH-3-E** |  | 2026-08-20 | 2026-10-12 |  |  |  |  |  |  |  |  |  |  |  |  |
| A77280 |  | Excavation | 4d | 2026-08-20 A | 2026-09-28 A | A77230, A1890 | 100% | 2026-03-28 | 2026-03-31 |  |  | ICKMO1-cost unite [4694.04 $]; Excavator [200 h]; Physical Units [40445.8 h] | 4,694.04 | 4,694.04 | ZNB | CON |  |
| A77290 |  | Pipe Laying | 8d | 2026-08-20 A | 2026-09-28 A | A77280 | 100% | 2026-04-01 | 2026-04-09 |  |  | ICKMO1-cost unite [3129.36 $]; boom truck [200 h]; labor [1200 h]; Storm Network Circular pipes (GRP) [80.79]; Physical Units [26963.9 h] | 3,129.36 | 3,129.36 | ZNB | CON | LAY |
| A77300 |  | Install Manhole | 4d | 2026-08-20 A | 2026-09-28 A | A77280 | 100% | 2026-04-01 | 2026-04-05 |  |  | ICKMO1-cost unite [14082.1 $]; boom truck [200 h]; labor [1200 h]; Physical Units [121337 h] | 14,082.12 | 14,082.12 | ZNB | CON | MH |
| A77320 |  | Backfilling & Compaction | 5d | 2026-08-20 A | 2026-09-28 A | A77310, A77300, A77270 | 100% | 2026-11-24 | 2026-11-30 |  |  | ICKMO1-cost unite [6258.72 $]; Roller compactor [200 h]; Physical Units [53927.7 h] | 6,258.72 | 6,258.72 | ZNB | CON |  |
| A77310 |  | Testing & Inspection | 2d | 2026-10-10 | 2026-10-12 | A77290 |  |  |  | 6.36d | 0d | ICKMO1-cost unite [3129.36 $]; labor [1200 h]; Physical Units [26963.9 h] | 3,129.36 |  | ZNB | CON |  |
|  | MH-2-G /MH-3-G | **MH-2-G /MH-3-G** |  | 2026-08-20 | 2026-09-28 |  |  |  |  |  |  |  |  |  |  |  |  |
| A77430 |  | Excavation | 4d | 2026-08-20 A | 2026-09-28 A | A77380, A1890 | 100% | 2026-04-11 | 2026-04-14 |  |  | ICKMO1-cost unite [4694.04 $]; Excavator [200 h]; Physical Units [40445.8 h] | 4,694.04 | 4,694.04 | ZNB | CON |  |
| A77440 |  | Pipe Laying | 8d | 2026-08-20 A | 2026-09-28 A | A77430 | 100% | 2026-04-15 | 2026-04-23 |  |  | ICKMO1-cost unite [3129.36 $]; boom truck [200 h]; labor [1200 h]; Storm Network Circular pipes (GRP) [80.79]; Physical Units [26963.9 h] | 3,129.36 | 3,129.36 | ZNB | CON | LAY |
| A77450 |  | Install Manhole | 4d | 2026-08-20 A | 2026-09-28 A | A77430 | 100% | 2026-04-15 | 2026-04-19 |  |  | ICKMO1-cost unite [14082.1 $]; boom truck [200 h]; labor [1200 h]; Physical Units [121337 h] | 14,082.12 | 14,082.12 | ZNB | CON | MH |
| A77460 |  | Testing & Inspection | 2d | 2026-08-20 A | 2026-09-28 A | A77440 | 100% | 2026-11-03 | 2026-11-05 |  |  | ICKMO1-cost unite [3129.36 $]; labor [1200 h]; Physical Units [26963.9 h] | 3,129.36 | 3,129.36 | ZNB | CON |  |
| A77470 |  | Backfilling & Compaction | 5d | 2026-08-20 A | 2026-09-28 A | A77460, A77450, A77420 | 100% | 2026-12-12 | 2026-12-17 |  |  | ICKMO1-cost unite [6258.72 $]; Roller compactor [200 h]; Physical Units [53927.7 h] | 6,258.72 | 6,258.72 | ZNB | CON |  |
|  | MH-2-L /MH-3-L | **MH-2-L /MH-3-L** |  | 2026-08-20 | 2026-09-28 |  |  |  |  |  |  |  |  |  |  |  |  |
| A77780 |  | Excavation | 4d | 2026-08-20 A | 2026-09-28 A | A77730, A1890 | 100% | 2026-05-13 | 2026-05-17 |  |  | ICKMO1-cost unite [4694.04 $]; Excavator [200 h]; Physical Units [40445.8 h] | 4,694.04 | 4,694.04 | ZNB | CON |  |
| A77790 |  | Pipe Laying | 4d | 2026-08-20 A | 2026-09-28 A | A77780 | 100% | 2026-09-30 | 2026-10-05 |  |  | ICKMO1-cost unite [3129.36 $]; boom truck [200 h]; labor [1200 h]; Storm Network Circular pipes (GRP) [80.79]; Physical Units [26963.9 h] | 3,129.36 | 3,129.36 | ZNB | CON | LAY |
| A77800 |  | Install Manhole | 4d | 2026-08-20 A | 2026-09-28 A | A77780 | 100% | 2026-09-30 | 2026-10-05 |  |  | ICKMO1-cost unite [14082.1 $]; boom truck [200 h]; labor [1200 h]; Physical Units [121337 h] | 14,082.12 | 14,082.12 | ZNB | CON | MH |
| A77810 |  | Testing & Inspection | 2d | 2026-08-20 A | 2026-09-28 A | A77790 | 100% | 2026-10-05 | 2026-10-07 |  |  | ICKMO1-cost unite [3129.36 $]; labor [1200 h]; Physical Units [26963.9 h] | 3,129.36 | 3,129.36 | ZNB | CON |  |
| A77820 |  | Backfilling & Compaction | 5d | 2026-08-20 A | 2026-09-28 A | A77810, A77800, A77770 | 100% | 2026-11-21 | 2026-11-26 |  |  | ICKMO1-cost unite [6258.72 $]; Roller compactor [200 h]; Physical Units [53927.7 h] | 6,258.72 | 6,258.72 | ZNB | CON |  |

| ID | WBS | Activity | Duration | Start | Finish | Predecessors | Complete | Planned start | Planned finish | Total float | Free float | Resources | Cost | Actual cost | ALKHARJ INDUSTERIAL AREA - PROJECT ZONES | ALKHARJ INDUSTERIAL AREA - DECEPLINS | ALKHARJ INDUSTERIAL AREA - Wet networks |
| --- | --- | --- | --- | --- | --- | --- | --- | --- | --- | --- | --- | --- | --- | --- | --- | --- | --- |
|  | MH-2-N / 0-N | **MH-2-N / 0-N** |  | 2026-08-20 | 2026-09-28 |  |  |  |  |  |  |  |  |  |  |  |  |
| A78030 |  | Excavation | 4d | 2026-08-20 A | 2026-09-28 A | A77980, A1890 | 100% | 2026-10-19 | 2026-10-24 |  |  | ICKMO1-cost unite [4694.04 $]; Excavator [200 h]; Physical Units [40445.8 h] | 4,694.04 | 4,694.04 | ZNB | CON |  |
| A78040 |  | Pipe Laying | 8d | 2026-08-20 A | 2026-09-28 A | A78030 | 100% | 2026-10-24 | 2026-11-02 |  |  | ICKMO1-cost unite [3129.36 $]; boom truck [200 h]; labor [1200 h]; Storm Network Circular pipes (GRP) [80.79]; Physical Units [26963.9 h] | 3,129.36 | 3,129.36 | ZNB | CON | LAY |
| A78050 |  | Install Manhole | 4d | 2026-08-20 A | 2026-09-28 A | A78030 | 100% | 2026-10-24 | 2026-10-28 |  |  | ICKMO1-cost unite [14082.1 $]; boom truck [200 h]; labor [1200 h]; Physical Units [121337 h] | 14,082.12 | 14,082.12 | ZNB | CON | MH |
| A78060 |  | Testing & Inspection | 2d | 2026-08-20 A | 2026-09-28 A | A78040 | 100% | 2026-11-02 | 2026-11-04 |  |  | ICKMO1-cost unite [3129.36 $]; labor [1200 h]; Physical Units [26963.9 h] | 3,129.36 | 3,129.36 | ZNB | CON |  |
| A78070 |  | Backfilling & Compaction | 5d | 2026-08-20 A | 2026-09-28 A | A78060, A78050, A78020 | 100% | 2026-12-20 | 2026-12-26 |  |  | ICKMO1-cost unite [6258.72 $]; Roller compactor [200 h]; Physical Units [53927.7 h] | 6,258.72 | 6,258.72 | ZNB | CON |  |
|  | MH-2-P /MH-3-P | **MH-2-P /MH-3-P** |  | 2026-08-20 | 2026-09-28 |  |  |  |  |  |  |  |  |  |  |  |  |
| A78130 |  | Excavation | 4d | 2026-08-20 A | 2026-09-28 A | A78080, A1890 | 100% | 2026-10-28 | 2026-11-02 |  |  | ICKMO1-cost unite [4694.04 $]; Excavator [200 h]; Physical Units [40445.8 h] | 4,694.04 | 4,694.04 | ZNB | CON |  |
| A78140 |  | Pipe Laying | 8d | 2026-08-20 A | 2026-09-28 A | A78130 | 100% | 2026-11-02 | 2026-11-11 |  |  | ICKMO1-cost unite [3129.36 $]; boom truck [200 h]; labor [1200 h]; Storm Network Circular pipes (GRP) [80.79]; Physical Units [26963.9 h] | 3,129.36 | 3,129.36 | ZNB | CON | LAY |
| A78150 |  | Install Manhole | 4d | 2026-08-20 A | 2026-09-28 A | A78130 | 100% | 2026-11-02 | 2026-11-07 |  |  | ICKMO1-cost unite [14082.1 $]; boom truck [200 h]; labor [1200 h]; Physical Units [121337 h] | 14,082.12 | 14,082.12 | ZNB | CON | MH |
| A78160 |  | Testing & Inspection | 2d | 2026-08-20 A | 2026-09-28 A | A78140 | 100% | 2026-11-11 | 2026-11-14 |  |  | ICKMO1-cost unite [3129.36 $]; labor [1200 h]; Physical Units [26963.9 h] | 3,129.36 | 3,129.36 | ZNB | CON |  |
| A78170 |  | Backfilling & Compaction | 5d | 2026-08-20 A | 2026-09-28 A | A78160, A78150, A78120 | 100% | 2026-12-31 | 2027-01-06 |  |  | ICKMO1-cost unite [6258.72 $]; Roller compactor [200 h]; Physical Units [53927.7 h] | 6,258.72 | 6,258.72 | ZNB | CON |  |
|  | MH-3-C / 0-C | **MH-3-C / 0-C** |  | 2026-08-20 | 2026-10-12 |  |  |  |  |  |  |  |  |  |  |  |  |
| A75080 |  | Excavation | 4d | 2026-08-20 A | 2026-09-28 A | A68130, A1890 | 100% | 2026-03-18 | 2026-03-22 |  |  | ICKMO1-cost unite [4694.04 $]; Excavator [200 h]; Physical Units [40445.8 h] | 4,694.04 | 4,694.04 | ZNB | CON |  |
| A75090 |  | Pipe Laying | 8d | 2026-08-20 A | 2026-09-28 A | A75080 | 100% | 2026-03-23 | 2026-03-31 |  |  | ICKMO1-cost unite [3129.36 $]; boom truck [200 h]; labor [1200 h]; Storm Network Circular pipes (GRP) [80.79]; Physical Units [26963.9 h] | 3,129.36 | 3,129.36 | ZNB | CON | LAY |
| A75100 |  | Install Manhole | 4d | 2026-08-20 A | 2026-09-28 A | A75080 | 100% | 2026-03-23 | 2026-03-26 |  |  | ICKMO1-cost unite [14082.1 $]; boom truck [200 h]; labor [1200 h]; Physical Units [121337 h] | 14,082.12 | 14,082.12 | ZNB | CON | MH |
| A75120 |  | Backfilling & Compaction | 5d | 2026-08-20 A | 2026-09-28 A | A75110, A75100, A68170 | 100% | 2026-11-12 | 2026-11-18 |  |  | ICKMO1-cost unite [6258.72 $]; Roller compactor [200 h]; Physical Units [53927.7 h] | 6,258.72 | 6,258.72 | ZNB | CON |  |
| A75110 |  | Testing & Inspection | 2d | 2026-10-10 | 2026-10-12 | A75090 |  |  |  | 6.36d | 0d | ICKMO1-cost unite [3129.36 $]; labor [1200 h]; Physical Units [26963.9 h] | 3,129.36 |  | ZNB | CON |  |
|  | MH-3-E / 0-E | **MH-3-E / 0-E** |  | 2026-10-10 | 2026-11-01 |  |  |  |  |  |  |  |  |  |  |  |  |
| A77330 |  | Excavation | 4d | 2026-10-10 | 2026-10-14 | A77280, A1890 |  |  |  | -5.64d | 0d | ICKMO1-cost unite [4694.04 $]; Excavator [200 h]; Physical Units [40445.8 h] | 4,694.04 |  | ZNB | CON |  |
| A77340 |  | Pipe Laying | 8d | 2026-10-14 | 2026-10-24 | A77330 |  |  |  | -5.64d | 0d | ICKMO1-cost unite [3129.36 $]; boom truck [200 h]; labor [1200 h]; Storm Network Circular pipes (GRP) [80.79]; Physical Units [26963.9 h] | 3,129.36 |  | ZNB | CON | LAY |
| A77350 |  | Install Manhole | 4d | 2026-10-14 | 2026-10-19 | A77330 |  |  |  | 0.36d | 6d | ICKMO1-cost unite [14082.1 $]; boom truck [200 h]; labor [1200 h]; Physical Units [121337 h] | 14,082.12 |  | ZNB | CON | MH |
| A77360 |  | Testing & Inspection | 2d | 2026-10-24 | 2026-10-26 | A77340 |  |  |  | -5.64d | 0d | ICKMO1-cost unite [3129.36 $]; labor [1200 h]; Physical Units [26963.9 h] | 3,129.36 |  | ZNB | CON |  |
| A77370 |  | Backfilling & Compaction | 5d | 2026-10-26 | 2026-11-01 | A77360, A77350, A77320 |  |  |  | -5.64d | 0d | ICKMO1-cost unite [6258.72 $]; Roller compactor [200 h]; Physical Units [53927.7 h] | 6,258.72 |  | ZNB | CON |  |

| ID | WBS | Activity | Duration | Start | Finish | Predecessors | Complete | Planned start | Planned finish | Resources | Cost | Actual cost | ALKHARJ INDUSTERIAL AREA - PROJECT ZONES | ALKHARJ INDUSTERIAL AREA - DECEPLINS | ALKHARJ INDUSTERIAL AREA - Wet networks |
| --- | --- | --- | --- | --- | --- | --- | --- | --- | --- | --- | --- | --- | --- | --- | --- |
|  | MH-3-G /MH-4-G | **MH-3-G /MH-4-G** |  | 2026-08-20 | 2026-09-28 |  |  |  |  |  |  |  |  |  |  |
| A77480 |  | Excavation | 4d | 2026-08-20 A | 2026-09-28 A | A77430, A1890 | 100% | 2026-04-15 | 2026-04-19 | ICKMO1-cost unite [4694.04 $]; Excavator [200 h]; Physical Units [40445.8 h] | 4,694.04 | 4,694.04 | ZNB | CON |  |
| A77490 |  | Pipe Laying | 8d | 2026-08-20 A | 2026-09-28 A | A77480 | 100% | 2026-09-30 | 2026-10-10 | ICKMO1-cost unite [3129.36 $]; boom truck [200 h]; labor [1200 h]; Storm Network Circular pipes (GRP) [80.79]; Physical Units [26963.9 h] | 3,129.36 | 3,129.36 | ZNB | CON | LAY |
| A77500 |  | Install Manhole | 4d | 2026-08-20 A | 2026-09-28 A | A77480 | 100% | 2026-09-30 | 2026-10-05 | ICKMO1-cost unite [14082.1 $]; boom truck [200 h]; labor [1200 h]; Physical Units [121337 h] | 14,082.12 | 14,082.12 | ZNB | CON | MH |
| A77510 |  | Testing & Inspection | 2d | 2026-08-20 A | 2026-09-28 A | A77490 | 100% | 2026-10-10 | 2026-10-12 | ICKMO1-cost unite [3129.36 $]; labor [1200 h]; Physical Units [26963.9 h] | 3,129.36 | 3,129.36 | ZNB | CON |  |
| A77520 |  | Backfilling & Compaction | 5d | 2026-08-20 A | 2026-09-28 A | A77510, A77500, A77470 | 100% | 2026-10-18 | 2026-10-24 | ICKMO1-cost unite [6258.72 $]; Roller compactor [200 h]; Physical Units [53927.7 h] | 6,258.72 | 6,258.72 | ZNB | CON |  |
|  | MH-3-L /MH-4-L | **MH-3-L /MH-4-L** |  | 2026-08-20 | 2026-09-28 |  |  |  |  |  |  |  |  |  |  |
| A77830 |  | Excavation | 4d | 2026-08-20 A | 2026-09-28 A | A77780, A1890 | 100% | 2026-09-30 | 2026-10-05 | ICKMO1-cost unite [4694.04 $]; Excavator [200 h]; Physical Units [40445.8 h] | 4,694.04 | 4,694.04 | ZNB | CON |  |
| A77840 |  | Pipe Laying | 8d | 2026-08-20 A | 2026-09-28 A | A77830 | 100% | 2026-10-05 | 2026-10-14 | ICKMO1-cost unite [3129.36 $]; boom truck [200 h]; labor [1200 h]; Storm Network Circular pipes (GRP) [80.79]; Physical Units [26963.9 h] | 3,129.36 | 3,129.36 | ZNB | CON | LAY |
| A77850 |  | Install Manhole | 4d | 2026-08-20 A | 2026-09-28 A | A77830 | 100% | 2026-10-05 | 2026-10-10 | ICKMO1-cost unite [14082.1 $]; boom truck [200 h]; labor [1200 h]; Physical Units [121337 h] | 14,082.12 | 14,082.12 | ZNB | CON | MH |
| A77860 |  | Testing & Inspection | 2d | 2026-08-20 A | 2026-09-28 A | A77840 | 100% | 2026-10-14 | 2026-10-17 | ICKMO1-cost unite [3129.36 $]; labor [1200 h]; Physical Units [26963.9 h] | 3,129.36 | 3,129.36 | ZNB | CON |  |
| A77870 |  | Backfilling & Compaction | 5d | 2026-08-20 A | 2026-09-28 A | A77860, A77850, A77820 | 100% | 2026-11-26 | 2026-12-02 | ICKMO1-cost unite [6258.72 $]; Roller compactor [200 h]; Physical Units [53927.7 h] | 6,258.72 | 6,258.72 | ZNB | CON |  |
|  | MH-3-P /MH-4-P | **MH-3-P /MH-4-P** |  | 2026-08-20 | 2026-09-28 |  |  |  |  |  |  |  |  |  |  |
| A78180 |  | Excavation | 4d | 2026-08-20 A | 2026-09-28 A | A78130, A1890 | 100% | 2026-11-02 | 2026-11-07 | ICKMO1-cost unite [4694.04 $]; Excavator [200 h]; Physical Units [40445.8 h] | 4,694.04 | 4,694.04 | ZNB | CON |  |
| A78190 |  | Pipe Laying | 8d | 2026-08-20 A | 2026-09-28 A | A78180 | 100% | 2026-11-07 | 2026-11-16 | ICKMO1-cost unite [3129.36 $]; boom truck [200 h]; labor [1200 h]; Storm Network Circular pipes (GRP) [80.79]; Physical Units [26963.9 h] | 3,129.36 | 3,129.36 | ZNB | CON | LAY |
| A78200 |  | Install Manhole | 4d | 2026-08-20 A | 2026-09-28 A | A78180 | 100% | 2026-11-07 | 2026-11-11 | ICKMO1-cost unite [14082.1 $]; boom truck [200 h]; labor [1200 h]; Physical Units [121337 h] | 14,082.12 | 14,082.12 | ZNB | CON | MH |
| A78210 |  | Testing & Inspection | 2d | 2026-08-20 A | 2026-09-28 A | A78190 | 100% | 2026-11-16 | 2026-11-18 | ICKMO1-cost unite [3129.36 $]; labor [1200 h]; Physical Units [26963.9 h] | 3,129.36 | 3,129.36 | ZNB | CON |  |
| A78220 |  | Backfilling & Compaction | 5d | 2026-08-20 A | 2026-09-28 A | A78210, A78200, A78170 | 100% | 2027-01-06 | 2027-01-12 | ICKMO1-cost unite [6258.72 $]; Roller compactor [200 h]; Physical Units [53927.7 h] | 6,258.72 | 6,258.72 | ZNB | CON |  |
|  | MH-4-G /MH-5-G | **MH-4-G /MH-5-G** |  | 2026-08-20 | 2026-09-28 |  |  |  |  |  |  |  |  |  |  |
| A77530 |  | Excavation | 4d | 2026-08-20 A | 2026-09-28 A | A77480, A1890 | 100% | 2026-04-20 | 2026-04-23 | ICKMO1-cost unite [4694.04 $]; Excavator [200 h]; Physical Units [40445.8 h] | 4,694.04 | 4,694.04 | ZNB | CON |  |
| A77540 |  | Pipe Laying | 8d | 2026-08-20 A | 2026-09-28 A | A77530 | 100% | 2026-09-30 | 2026-10-10 | ICKMO1-cost unite [3129.36 $]; boom truck [200 h]; labor [1200 h]; Storm Network Circular pipes (GRP) [80.79]; Physical Units [26963.9 h] | 3,129.36 | 3,129.36 | ZNB | CON | LAY |
| A77550 |  | Install Manhole | 4d | 2026-08-20 A | 2026-09-28 A | A77530 | 100% | 2026-09-30 | 2026-10-05 | ICKMO1-cost unite [14082.1 $]; boom truck [200 h]; labor [1200 h]; Physical Units [121337 h] | 14,082.12 | 14,082.12 | ZNB | CON | MH |
| A77560 |  | Testing & Inspection | 2d | 2026-08-20 A | 2026-09-28 A | A77540 | 100% | 2026-10-10 | 2026-10-12 | ICKMO1-cost unite [3129.36 $]; labor [1200 h]; Physical Units [26963.9 h] | 3,129.36 | 3,129.36 | ZNB | CON |  |
| A77570 |  | Backfilling & Compaction | 5d | 2026-08-20 A | 2026-09-28 A | A77560, A77550, A77520 | 100% | 2026-10-24 | 2026-10-29 | ICKMO1-cost unite [6258.72 $]; Roller compactor [200 h]; Physical Units [53927.7 h] | 6,258.72 | 6,258.72 | ZNB | CON |  |

| ID | WBS | Activity | Duration | Start | Finish | Predecessors | Complete | Planned start | Planned finish | Resources | Cost | Actual cost | ALKHARJ INDUSTERIAL AREA - PROJECT ZONES | ALKHARJ INDUSTERIAL AREA - DECEPLINS | ALKHARJ INDUSTERIAL AREA - Wet networks |
| --- | --- | --- | --- | --- | --- | --- | --- | --- | --- | --- | --- | --- | --- | --- | --- |
|  | MH-4-L /MH-5-L | **MH-4-L /MH-5-L** |  | 2026-08-20 | 2026-09-28 |  |  |  |  |  |  |  |  |  |  |
| A77880 |  | Excavation | 4d | 2026-08-20 A | 2026-09-28 A | A77830, A1890 | 100% | 2026-10-05 | 2026-10-10 | ICKMO1-cost unite [4694.04 $]; Excavator [200 h]; Physical Units [40445.8 h] | 4,694.04 | 4,694.04 | ZNB | CON |  |
| A77890 |  | Pipe Laying | 8d | 2026-08-20 A | 2026-09-28 A | A77880 | 100% | 2026-10-10 | 2026-10-19 | ICKMO1-cost unite [3129.36 $]; boom truck [200 h]; labor [1200 h]; Storm Network Circular pipes (GRP) [80.79]; Physical Units [26963.9 h] | 3,129.36 | 3,129.36 | ZNB | CON | LAY |
| A77900 |  | Install Manhole | 4d | 2026-08-20 A | 2026-09-28 A | A77880 | 100% | 2026-10-10 | 2026-10-14 | ICKMO1-cost unite [14082.1 $]; boom truck [200 h]; labor [1200 h]; Physical Units [121337 h] | 14,082.12 | 14,082.12 | ZNB | CON | MH |
| A77910 |  | Testing & Inspection | 2d | 2026-08-20 A | 2026-09-28 A | A77890 | 100% | 2026-10-19 | 2026-10-21 | ICKMO1-cost unite [3129.36 $]; labor [1200 h]; Physical Units [26963.9 h] | 3,129.36 | 3,129.36 | ZNB | CON |  |
| A77920 |  | Backfilling & Compaction | 5d | 2026-08-20 A | 2026-09-28 A | A77910, A77900, A77870 | 100% | 2026-12-02 | 2026-12-08 | ICKMO1-cost unite [6258.72 $]; Roller compactor [200 h]; Physical Units [53927.7 h] | 6,258.72 | 6,258.72 | ZNB | CON |  |
|  | MH-4-P / 0-P | **MH-4-P / 0-P** |  | 2026-08-20 | 2026-09-28 |  |  |  |  |  |  |  |  |  |  |
| A78230 |  | Excavation | 4d | 2026-08-20 A | 2026-09-28 A | A78180, A1890 | 100% | 2026-11-07 | 2026-11-11 | ICKMO1-cost unite [4694.04 $]; Excavator [200 h]; Physical Units [40445.8 h] | 4,694.04 | 4,694.04 | ZNB | CON |  |
| A78240 |  | Pipe Laying | 8d | 2026-08-20 A | 2026-09-28 A | A78230 | 100% | 2026-11-11 | 2026-11-21 | ICKMO1-cost unite [3129.36 $]; boom truck [200 h]; labor [1200 h]; Storm Network Circular pipes (GRP) [80.79]; Physical Units [26963.9 h] | 3,129.36 | 3,129.36 | ZNB | CON | LAY |
| A78250 |  | Install Manhole | 4d | 2026-08-20 A | 2026-09-28 A | A78230 | 100% | 2026-11-11 | 2026-11-16 | ICKMO1-cost unite [14082.1 $]; boom truck [200 h]; labor [1200 h]; Physical Units [121337 h] | 14,082.12 | 14,082.12 | ZNB | CON | MH |
| A78260 |  | Testing & Inspection | 2d | 2026-08-20 A | 2026-09-28 A | A78240 | 100% | 2026-11-21 | 2026-11-23 | ICKMO1-cost unite [3129.36 $]; labor [1200 h]; Physical Units [26963.9 h] | 3,129.36 | 3,129.36 | ZNB | CON |  |
| A78270 |  | Backfilling & Compaction | 5d | 2026-08-20 A | 2026-09-28 A | A78260, A78250, A78220 | 100% | 2027-01-12 | 2027-01-18 | ICKMO1-cost unite [6258.72 $]; Roller compactor [200 h]; Physical Units [53927.7 h] | 6,258.72 | 6,258.72 | ZNB | CON |  |
|  | MH-5-G / 0-G | **MH-5-G / 0-G** |  | 2026-08-20 | 2026-09-28 |  |  |  |  |  |  |  |  |  |  |
| A77580 |  | Excavation | 4d | 2026-08-20 A | 2026-09-28 A | A77530, A1890 | 100% | 2026-04-25 | 2026-04-28 | ICKMO1-cost unite [4694.04 $]; Excavator [200 h]; Physical Units [40445.8 h] | 4,694.04 | 4,694.04 | ZNB | CON |  |
| A77590 |  | Pipe Laying | 8d | 2026-08-20 A | 2026-09-28 A | A77580 | 100% | 2026-09-30 | 2026-10-10 | ICKMO1-cost unite [3129.36 $]; boom truck [200 h]; labor [1200 h]; Storm Network Circular pipes (GRP) [80.79]; Physical Units [26963.9 h] | 3,129.36 | 3,129.36 | ZNB | CON | LAY |
| A77600 |  | Install Manhole | 4d | 2026-08-20 A | 2026-09-28 A | A77580 | 100% | 2026-09-30 | 2026-10-05 | ICKMO1-cost unite [14082.1 $]; boom truck [200 h]; labor [1200 h]; Physical Units [121337 h] | 14,082.12 | 14,082.12 | ZNB | CON | MH |
| A77610 |  | Testing & Inspection | 2d | 2026-08-20 A | 2026-09-28 A | A77590 | 100% | 2026-10-10 | 2026-10-12 | ICKMO1-cost unite [3129.36 $]; labor [1200 h]; Physical Units [26963.9 h] | 3,129.36 | 3,129.36 | ZNB | CON |  |
| A77620 |  | Backfilling & Compaction | 5d | 2026-08-20 A | 2026-09-28 A | A77610, A77600, A77570 | 100% | 2026-10-29 | 2026-11-04 | ICKMO1-cost unite [6258.72 $]; Roller compactor [200 h]; Physical Units [53927.7 h] | 6,258.72 | 6,258.72 | ZNB | CON |  |
|  | MH-5-G-1 /MH-5-G | **MH-5-G-1 /MH-5-G** |  | 2026-08-20 | 2026-09-28 |  |  |  |  |  |  |  |  |  |  |
| A77630 |  | Excavation | 4d | 2026-08-20 A | 2026-09-28 A | A77580, A1890 | 100% | 2026-04-29 | 2026-05-03 | ICKMO1-cost unite [4694.04 $]; Excavator [200 h]; Physical Units [40445.8 h] | 4,694.04 | 4,694.04 | ZNB | CON |  |
| A77640 |  | Pipe Laying | 8d | 2026-08-20 A | 2026-09-28 A | A77630 | 100% | 2026-09-30 | 2026-10-10 | ICKMO1-cost unite [3129.36 $]; boom truck [200 h]; labor [1200 h]; Storm Network Circular pipes (GRP) [80.79]; Physical Units [26963.9 h] | 3,129.36 | 3,129.36 | ZNB | CON | LAY |
| A77650 |  | Install Manhole | 4d | 2026-08-20 A | 2026-09-28 A | A77630 | 100% | 2026-09-30 | 2026-10-05 | ICKMO1-cost unite [14082.1 $]; boom truck [200 h]; labor [1200 h]; Physical Units [121337 h] | 14,082.12 | 14,082.12 | ZNB | CON | MH |
| A77660 |  | Testing & Inspection | 2d | 2026-08-20 A | 2026-09-28 A | A77640 | 100% | 2026-10-10 | 2026-10-12 | ICKMO1-cost unite [3129.36 $]; labor [1200 h]; Physical Units [26963.9 h] | 3,129.36 | 3,129.36 | ZNB | CON |  |
| A77670 |  | Backfilling & Compaction | 5d | 2026-08-20 A | 2026-09-28 A | A77660, A77650, A77620 | 100% | 2026-11-04 | 2026-11-10 | ICKMO1-cost unite [6258.72 $]; Roller compactor [200 h]; Physical Units [53927.7 h] | 6,258.72 | 6,258.72 | ZNB | CON |  |

| ID | WBS | Activity | Duration | Start | Finish | Predecessors | Complete | Planned start | Planned finish | Resources | Cost | Actual cost | ALKHARJ INDUSTERIAL AREA - PROJECT ZONES | ALKHARJ INDUSTERIAL AREA - DECEPLINS | ALKHARJ INDUSTERIAL AREA - Wet networks |
| --- | --- | --- | --- | --- | --- | --- | --- | --- | --- | --- | --- | --- | --- | --- | --- |
|  | MH-5-G-2 /MH-5-G-1 | **MH-5-G-2 /MH-5-G-1** |  | 2026-08-20 | 2026-09-28 |  |  |  |  |  |  |  |  |  |  |
| A77680 |  | Excavation | 4d | 2026-08-20 A | 2026-09-28 A | A77630, A1890 | 100% | 2026-05-04 | 2026-05-07 | ICKMO1-cost unite [4694.04 $]; Excavator [200 h]; Physical Units [40445.8 h] | 4,694.04 | 4,694.04 | ZNB | CON |  |
| A77690 |  | Pipe Laying | 8d | 2026-08-20 A | 2026-09-28 A | A77680 | 100% | 2026-09-30 | 2026-10-10 | ICKMO1-cost unite [3129.36 $]; boom truck [200 h]; labor [1200 h]; Storm Network Circular pipes (GRP) [80.79]; Physical Units [26963.9 h] | 3,129.36 | 3,129.36 | ZNB | CON | LAY |
| A77700 |  | Install Manhole | 4d | 2026-08-20 A | 2026-09-28 A | A77680 | 100% | 2026-09-30 | 2026-10-05 | ICKMO1-cost unite [14082.1 $]; boom truck [200 h]; labor [1200 h]; Physical Units [121337 h] | 14,082.12 | 14,082.12 | ZNB | CON | MH |
| A77710 |  | Testing & Inspection | 2d | 2026-08-20 A | 2026-09-28 A | A77690 | 100% | 2026-10-10 | 2026-10-12 | ICKMO1-cost unite [3129.36 $]; labor [1200 h]; Physical Units [26963.9 h] | 3,129.36 | 3,129.36 | ZNB | CON |  |
| A77720 |  | Backfilling & Compaction | 4d | 2026-08-20 A | 2026-09-28 A | A77710, A77700, A77670 | 100% | 2026-11-10 | 2026-11-15 | ICKMO1-cost unite [6258.72 $]; Roller compactor [200 h]; Physical Units [53927.7 h] | 6,258.72 | 6,258.72 | ZNB | CON |  |
|  | MH-5-L / 0-L | **MH-5-L / 0-L** |  | 2026-08-20 | 2026-09-28 |  |  |  |  |  |  |  |  |  |  |
| A77930 |  | Excavation | 4d | 2026-08-20 A | 2026-09-28 A | A77880, A1890 | 100% | 2026-10-10 | 2026-10-14 | ICKMO1-cost unite [4694.04 $]; Excavator [200 h]; Physical Units [40445.8 h] | 4,694.04 | 4,694.04 | ZNB | CON |  |
| A77940 |  | Pipe Laying | 8d | 2026-08-20 A | 2026-09-28 A | A77930 | 100% | 2026-10-14 | 2026-10-24 | ICKMO1-cost unite [3129.36 $]; boom truck [200 h]; labor [1200 h]; Storm Network Circular pipes (GRP) [80.79]; Physical Units [26963.9 h] | 3,129.36 | 3,129.36 | ZNB | CON | LAY |
| A77950 |  | Install Manhole | 4d | 2026-08-20 A | 2026-09-28 A | A77930 | 100% | 2026-10-14 | 2026-10-19 | ICKMO1-cost unite [14082.1 $]; boom truck [200 h]; labor [1200 h]; Physical Units [121337 h] | 14,082.12 | 14,082.12 | ZNB | CON | MH |
| A77960 |  | Testing & Inspection | 2d | 2026-08-20 A | 2026-09-28 A | A77940 | 100% | 2026-10-24 | 2026-10-26 | ICKMO1-cost unite [3129.36 $]; labor [1200 h]; Physical Units [26963.9 h] | 3,129.36 | 3,129.36 | ZNB | CON |  |
| A77970 |  | Backfilling & Compaction | 5d | 2026-08-20 A | 2026-09-28 A | A77960, A77950, A77920 | 100% | 2026-12-08 | 2026-12-14 | ICKMO1-cost unite [6258.72 $]; Roller compactor [200 h]; Physical Units [53927.7 h] | 6,258.72 | 6,258.72 | ZNB | CON |  |
|  | EX LR 03 | **EX LR 03** |  | 2026-08-20 | 2026-09-28 |  |  |  |  |  |  |  |  |  |  |
|  | MH-A35 /MH-A36 | **MH-A35 /MH-A36** |  | 2026-08-20 | 2026-09-28 |  |  |  |  |  |  |  |  |  |  |
| A79930 |  | Excavation | 4d | 2026-08-20 A | 2026-09-28 A | A78230 | 100% | 2026-11-11 | 2026-11-16 | ICKMO1-cost unite [16687.9 $]; Excavator [200 h]; Physical Units [143790 h] | 16,687.87 | 16,687.87 | ZNB | CON |  |
| A79940 |  | Pipe Laying | 8d | 2026-08-20 A | 2026-09-28 A | A79930 | 100% | 2026-11-16 | 2026-11-25 | ICKMO1-cost unite [11125.2 $]; boom truck [200 h]; labor [1200 h]; Storm Network Circular pipes (GRP) [80.79]; Physical Units [95859.7 h] | 11,125.24 | 11,125.24 | ZNB | CON | LAY |
| A79950 |  | Install Manhole | 4d | 2026-08-20 A | 2026-09-28 A | A79930 | 100% | 2026-11-16 | 2026-11-21 | ICKMO1-cost unite [50063.6 $]; boom truck [200 h]; labor [1200 h]; Physical Units [431369 h] | 50,063.6 | 50,063.6 | ZNB | CON | MH |
| A79960 |  | Testing & Inspection | 2d | 2026-08-20 A | 2026-09-28 A | A79940 | 100% | 2026-11-25 | 2026-11-28 | ICKMO1-cost unite [11125.2 $]; labor [1200 h]; Physical Units [95859.7 h] | 11,125.24 | 11,125.24 | ZNB | CON |  |
| A79970 |  | Backfilling & Compaction | 8d | 2026-08-20 A | 2026-09-28 A | A79960, A79950 | 100% | 2026-11-28 | 2026-12-07 | ICKMO1-cost unite [22250.5 $]; Roller compactor [200 h]; Physical Units [191719 h] | 22,250.49 | 22,250.49 | ZNB | CON |  |
|  | MH-A36 /MH-A37 | **MH-A36 /MH-A37** |  | 2026-08-20 | 2026-09-28 |  |  |  |  |  |  |  |  |  |  |
| A79880 |  | Excavation | 4d | 2026-08-20 A | 2026-09-28 A | A79930 | 100% | 2026-11-16 | 2026-11-21 | ICKMO1-cost unite [16687.9 $]; Excavator [200 h]; Physical Units [143790 h] | 16,687.87 | 16,687.87 | ZNB | CON |  |
| A79890 |  | Pipe Laying | 8d | 2026-08-20 A | 2026-09-28 A | A79880 | 100% | 2026-11-21 | 2026-11-30 | ICKMO1-cost unite [11125.2 $]; boom truck [200 h]; labor [1200 h]; Storm Network Circular pipes (GRP) [80.79]; Physical Units [95859.7 h] | 11,125.24 | 11,125.24 | ZNB | CON | LAY |
| A79900 |  | Install Manhole | 4d | 2026-08-20 A | 2026-09-28 A | A79880 | 100% | 2026-11-21 | 2026-11-25 | ICKMO1-cost unite [50063.6 $]; boom truck [200 h]; labor [1200 h]; Physical Units [431369 h] | 50,063.6 | 50,063.6 | ZNB | CON | MH |
| A79910 |  | Testing & Inspection | 2d | 2026-08-20 A | 2026-09-28 A | A79890 | 100% | 2026-11-30 | 2026-12-02 | ICKMO1-cost unite [11125.2 $]; labor [1200 h]; Physical Units [95859.7 h] | 11,125.24 | 11,125.24 | ZNB | CON |  |
| A79920 |  | Backfilling & Compaction | 8d | 2026-08-20 A | 2026-09-28 A | A79910, A79900, A79970 | 100% | 2026-12-07 | 2026-12-16 | ICKMO1-cost unite [22250.5 $]; Roller compactor [200 h]; Physical Units [191719 h] | 22,250.49 | 22,250.49 | ZNB | CON |  |

| ID | WBS | Activity | Duration | Start | Finish | Predecessors | Complete | Planned start | Planned finish | Resources | Cost | Actual cost | ALKHARJ INDUSTERIAL AREA - PROJECT ZONES | ALKHARJ INDUSTERIAL AREA - DECEPLINS | ALKHARJ INDUSTERIAL AREA - Wet networks |
| --- | --- | --- | --- | --- | --- | --- | --- | --- | --- | --- | --- | --- | --- | --- | --- |
|  | MH-A37 /MH-A38 | **MH-A37 /MH-A38** |  | 2026-08-20 | 2026-09-28 |  |  |  |  |  |  |  |  |  |  |
| A79830 |  | Excavation | 4d | 2026-08-20 A | 2026-09-28 A | A79880 | 100% | 2026-11-21 | 2026-11-25 | ICKMO1-cost unite [16687.9 $]; Excavator [200 h]; Physical Units [143790 h] | 16,687.87 | 16,687.87 | ZNB | CON |  |
| A79840 |  | Pipe Laying | 8d | 2026-08-20 A | 2026-09-28 A | A79830 | 100% | 2026-11-25 | 2026-12-05 | ICKMO1-cost unite [11125.2 $]; boom truck [200 h]; labor [1200 h]; Storm Network Circular pipes (GRP) [80.79]; Physical Units [95859.7 h] | 11,125.24 | 11,125.24 | ZNB | CON | LAY |
| A79850 |  | Install Manhole | 4d | 2026-08-20 A | 2026-09-28 A | A79830 | 100% | 2026-11-25 | 2026-11-30 | ICKMO1-cost unite [50063.6 $]; boom truck [200 h]; labor [1200 h]; Physical Units [431369 h] | 50,063.6 | 50,063.6 | ZNB | CON | MH |
| A79860 |  | Testing & Inspection | 2d | 2026-08-20 A | 2026-09-28 A | A79840 | 100% | 2026-12-05 | 2026-12-07 | ICKMO1-cost unite [11125.2 $]; labor [1200 h]; Physical Units [95859.7 h] | 11,125.24 | 11,125.24 | ZNB | CON |  |
| A79870 |  | Backfilling & Compaction | 8d | 2026-08-20 A | 2026-09-28 A | A79860, A79850, A79920 | 100% | 2026-12-16 | 2026-12-26 | ICKMO1-cost unite [22250.5 $]; Roller compactor [200 h]; Physical Units [191719 h] | 22,250.49 | 22,250.49 | ZNB | CON |  |
|  | MH-A38 /MH-A39 | **MH-A38 /MH-A39** |  | 2026-08-20 | 2026-09-28 |  |  |  |  |  |  |  |  |  |  |
| A79780 |  | Excavation | 4d | 2026-08-20 A | 2026-09-28 A | A79830 | 100% | 2026-11-25 | 2026-11-30 | ICKMO1-cost unite [16687.9 $]; Excavator [200 h]; Physical Units [143790 h] | 16,687.87 | 16,687.87 | ZNB | CON |  |
| A79790 |  | Pipe Laying | 8d | 2026-08-20 A | 2026-09-28 A | A79780 | 100% | 2026-11-30 | 2026-12-09 | ICKMO1-cost unite [11125.2 $]; boom truck [200 h]; labor [1200 h]; Storm Network Circular pipes (GRP) [80.79]; Physical Units [95859.7 h] | 11,125.24 | 11,125.24 | ZNB | CON | LAY |
| A79800 |  | Install Manhole | 4d | 2026-08-20 A | 2026-09-28 A | A79780 | 100% | 2026-11-30 | 2026-12-05 | ICKMO1-cost unite [50063.6 $]; boom truck [200 h]; labor [1200 h]; Physical Units [431369 h] | 50,063.6 | 50,063.6 | ZNB | CON | MH |
| A79810 |  | Testing & Inspection | 2d | 2026-08-20 A | 2026-09-28 A | A79790 | 100% | 2026-12-09 | 2026-12-12 | ICKMO1-cost unite [11125.2 $]; labor [1200 h]; Physical Units [95859.7 h] | 11,125.24 | 11,125.24 | ZNB | CON |  |
| A79820 |  | Backfilling & Compaction | 8d | 2026-08-20 A | 2026-09-28 A | A79810, A79800, A79870 | 100% | 2026-12-26 | 2027-01-04 | ICKMO1-cost unite [22250.5 $]; Roller compactor [200 h]; Physical Units [191719 h] | 22,250.49 | 22,250.49 | ZNB | CON |  |
|  | MH-A39 /MH-A40 | **MH-A39 /MH-A40** |  | 2026-08-20 | 2026-09-28 |  |  |  |  |  |  |  |  |  |  |
| A79730 |  | Excavation | 4d | 2026-08-20 A | 2026-09-28 A | A79780 | 100% | 2026-11-30 | 2026-12-05 | ICKMO1-cost unite [16687.9 $]; Excavator [200 h]; Physical Units [143790 h] | 16,687.87 | 16,687.87 | ZNB | CON |  |
| A79740 |  | Pipe Laying | 8d | 2026-08-20 A | 2026-09-28 A | A79730 | 100% | 2026-12-05 | 2026-12-14 | ICKMO1-cost unite [11125.2 $]; boom truck [200 h]; labor [1200 h]; Storm Network Circular pipes (GRP) [80.79]; Physical Units [95859.7 h] | 11,125.24 | 11,125.24 | ZNB | CON | LAY |
| A79750 |  | Install Manhole | 4d | 2026-08-20 A | 2026-09-28 A | A79730 | 100% | 2026-12-05 | 2026-12-09 | ICKMO1-cost unite [50063.6 $]; boom truck [200 h]; labor [1200 h]; Physical Units [431369 h] | 50,063.6 | 50,063.6 | ZNB | CON | MH |
| A79760 |  | Testing & Inspection | 2d | 2026-08-20 A | 2026-09-28 A | A79740 | 100% | 2026-12-14 | 2026-12-16 | ICKMO1-cost unite [11125.2 $]; labor [1200 h]; Physical Units [95859.7 h] | 11,125.24 | 11,125.24 | ZNB | CON |  |
| A79770 |  | Backfilling & Compaction | 8d | 2026-08-20 A | 2026-09-28 A | A79760, A79750, A79820 | 100% | 2027-01-04 | 2027-01-13 | ICKMO1-cost unite [22250.5 $]; Roller compactor [200 h]; Physical Units [191719 h] | 22,250.49 | 22,250.49 | ZNB | CON |  |
|  | MH-A40 /MH-A41 | **MH-A40 /MH-A41** |  | 2026-08-20 | 2026-09-28 |  |  |  |  |  |  |  |  |  |  |
| A79680 |  | Excavation | 4d | 2026-08-20 A | 2026-09-28 A | A79730 | 100% | 2026-12-05 | 2026-12-09 | ICKMO1-cost unite [16687.9 $]; Excavator [200 h]; Physical Units [143790 h] | 16,687.87 | 16,687.87 | ZNB | CON |  |
| A79690 |  | Pipe Laying | 8d | 2026-08-20 A | 2026-09-28 A | A79680 | 100% | 2026-12-09 | 2026-12-19 | ICKMO1-cost unite [11125.2 $]; boom truck [200 h]; labor [1200 h]; Storm Network Circular pipes (GRP) [80.79]; Physical Units [95859.7 h] | 11,125.24 | 11,125.24 | ZNB | CON | LAY |
| A79700 |  | Install Manhole | 4d | 2026-08-20 A | 2026-09-28 A | A79680 | 100% | 2026-12-09 | 2026-12-14 | ICKMO1-cost unite [50063.6 $]; boom truck [200 h]; labor [1200 h]; Physical Units [431369 h] | 50,063.6 | 50,063.6 | ZNB | CON | MH |
| A79710 |  | Testing & Inspection | 2d | 2026-08-20 A | 2026-09-28 A | A79690 | 100% | 2026-12-19 | 2026-12-21 | ICKMO1-cost unite [11125.2 $]; labor [1200 h]; Physical Units [95859.7 h] | 11,125.24 | 11,125.24 | ZNB | CON |  |
| A79720 |  | Backfilling & Compaction | 8d | 2026-08-20 A | 2026-09-28 A | A79710, A79700, A79770 | 100% | 2027-01-13 | 2027-01-23 | ICKMO1-cost unite [22250.5 $]; Roller compactor [200 h]; Physical Units [191719 h] | 22,250.49 | 22,250.49 | ZNB | CON |  |

| ID | WBS | Activity | Duration | Start | Finish | Predecessors | Complete | Planned start | Planned finish | Total float | Free float | Resources | Cost | Actual cost | ALKHARJ INDUSTERIAL AREA - PROJECT ZONES | ALKHARJ INDUSTERIAL AREA - DECEPLINS | ALKHARJ INDUSTERIAL AREA - Wet networks |
| --- | --- | --- | --- | --- | --- | --- | --- | --- | --- | --- | --- | --- | --- | --- | --- | --- | --- |
|  | MH-A41 /MH-A42 | **MH-A41 /MH-A42** |  | 2026-08-20 | 2026-09-28 |  |  |  |  |  |  |  |  |  |  |  |  |
| A79630 |  | Excavation | 4d | 2026-08-20 A | 2026-09-28 A | A79680 | 100% | 2026-12-09 | 2026-12-14 |  |  | ICKMO1-cost unite [16687.9 $]; Excavator [200 h]; Physical Units [143790 h] | 16,687.87 | 16,687.87 | ZNB | CON |  |
| A79640 |  | Pipe Laying | 8d | 2026-08-20 A | 2026-09-28 A | A79630 | 100% | 2026-12-14 | 2026-12-23 |  |  | ICKMO1-cost unite [11125.2 $]; boom truck [200 h]; labor [1200 h]; Storm Network Circular pipes (GRP) [80.79]; Physical Units [95859.7 h] | 11,125.24 | 11,125.24 | ZNB | CON | LAY |
| A79650 |  | Install Manhole | 4d | 2026-08-20 A | 2026-09-28 A | A79630 | 100% | 2026-12-14 | 2026-12-19 |  |  | ICKMO1-cost unite [50063.6 $]; boom truck [200 h]; labor [1200 h]; Physical Units [431369 h] | 50,063.6 | 50,063.6 | ZNB | CON | MH |
| A79660 |  | Testing & Inspection | 2d | 2026-08-20 A | 2026-09-28 A | A79640 | 100% | 2026-12-23 | 2026-12-26 |  |  | ICKMO1-cost unite [11125.2 $]; labor [1200 h]; Physical Units [95859.7 h] | 11,125.24 | 11,125.24 | ZNB | CON |  |
| A79670 |  | Backfilling & Compaction | 8d | 2026-08-20 A | 2026-09-28 A | A79660, A79650, A79720 | 100% | 2027-01-23 | 2027-02-01 |  |  | ICKMO1-cost unite [22250.5 $]; Roller compactor [200 h]; Physical Units [191719 h] | 22,250.49 | 22,250.49 | ZNB | CON |  |
|  | A R L-1 | **A R L-1** |  | 2026-08-20 | 2026-11-24 |  |  |  |  |  |  |  |  |  |  |  |  |
|  | MH-1-Q /MH-2-Q | **MH-1-Q /MH-2-Q** |  | 2026-08-20 | 2026-11-01 |  |  |  |  |  |  |  |  |  |  |  |  |
| A67080 |  | Excavation | 4d | 2026-08-20 A | 2026-09-28 A | A62730, A64620, A64630, A1880, A1890, A1900, A1910, A1920, A1890 FF | 100% | 2026-03-17 | 2026-03-21 |  |  | ICKMO1-cost unite [14551.5 $]; Excavator [200 h]; Physical Units [125382 h] | 14,551.52 | 14,551.52 | ZNB | CON |  |
| A67090 |  | Pipe Laying | 8d | 2026-10-10 | 2026-10-18 | A67080 |  |  |  | -12.9d | 0d | ICKMO1-cost unite [9701.01 $]; boom truck [200 h]; labor [1200 h]; Storm Network Circular pipes (GRP) [80.79]; Physical Units [83587.9 h] | 9,701.01 |  | ZNB | CON | LAY |
| A67100 |  | Install Manhole | 4d | 2026-10-10 | 2026-10-13 | A67080 |  |  |  | -6.9d | 6d | ICKMO1-cost unite [43654.6 $]; boom truck [200 h]; labor [1200 h]; Physical Units [376146 h] | 43,654.56 |  | ZNB | CON | MH |
| A67110 |  | Testing & Inspection | 2d | 2026-10-19 | 2026-10-20 | A67090 |  |  |  | -12.9d | 0d | ICKMO1-cost unite [9701.01 $]; labor [1200 h]; Physical Units [83587.9 h] | 9,701.01 |  | ZNB | CON |  |
| A67120 |  | Backfilling & Compaction | 10d | 2026-10-21 | 2026-11-01 | A67110, A67100 |  |  |  | -12.9d | 0d | ICKMO1-cost unite [19402 $]; Roller compactor [200 h]; Physical Units [167176 h] | 19,402.03 |  | ZNB | CON |  |
|  | MH-10-Q /MH-11-Q | **MH-10-Q /MH-11-Q** |  | 2026-10-14 | 2026-11-24 |  |  |  |  |  |  |  |  |  |  |  |  |
| A67330 |  | Excavation | 4d | 2026-10-14 | 2026-10-18 | A67380, A1890 |  |  |  | 62d | 0d | ICKMO1-cost unite [14551.5 $]; Excavator [200 h]; Physical Units [125382 h] | 14,551.52 |  | ZNB | CON |  |
| A67340 |  | Pipe Laying | 14d | 2026-10-19 | 2026-11-03 | A67330 |  |  |  | 62d | 0d | ICKMO1-cost unite [9701.01 $]; boom truck [200 h]; labor [1200 h]; Storm Network Circular pipes (GRP) [80.79]; Physical Units [83587.9 h] | 9,701.01 |  | ZNB | CON | LAY |
| A67350 |  | Install Manhole | 4d | 2026-10-19 | 2026-10-22 | A67330 |  |  |  | 74d | 18d | ICKMO1-cost unite [43654.6 $]; boom truck [200 h]; labor [1200 h]; Physical Units [376146 h] | 43,654.56 |  | ZNB | CON | MH |
| A67360 |  | Testing & Inspection | 2d | 2026-11-04 | 2026-11-05 | A67340 |  |  |  | 62d | 6d | ICKMO1-cost unite [9701.01 $]; labor [1200 h]; Physical Units [83587.9 h] | 9,701.01 |  | ZNB | CON |  |
| A67370 |  | Backfilling & Compaction | 10d | 2026-11-14 | 2026-11-24 | A67360, A67350, A67420 |  |  |  | 56d | 130.2d | ICKMO1-cost unite [19402 $]; Roller compactor [200 h]; Physical Units [167176 h] | 19,402.03 |  | ZNB | CON |  |
|  | MH-2-Q /MH-3-Q | **MH-2-Q /MH-3-Q** |  | 2026-08-20 | 2026-10-11 |  |  |  |  |  |  |  |  |  |  |  |  |
| A67130 |  | Excavation | 4d | 2026-08-20 A | 2026-09-28 A | A67080, A1890 | 100% | 2026-03-22 | 2026-03-25 |  |  | ICKMO1-cost unite [14551.5 $]; Excavator [200 h]; Physical Units [125382 h] | 14,551.52 | 14,551.52 | ZNB | CON |  |
| A67140 |  | Pipe Laying | 14d | 2026-08-20 A | 2026-09-28 A | A67130 | 100% | 2026-03-26 | 2026-04-11 |  |  | ICKMO1-cost unite [9701.01 $]; boom truck [200 h]; labor [1200 h]; Storm Network Circular pipes (GRP) [80.79]; Physical Units [83587.9 h] | 9,701.01 | 9,701.01 | ZNB | CON | LAY |
| A67150 |  | Install Manhole | 4d | 2026-08-20 A | 2026-09-28 A | A67130 | 100% | 2026-03-26 | 2026-03-30 |  |  | ICKMO1-cost unite [43654.6 $]; boom truck [200 h]; labor [1200 h]; Physical Units [376146 h] | 43,654.56 | 43,654.56 | ZNB | CON | MH |
| A67170 |  | Backfilling & Compaction | 10d | 2026-08-20 A | 2026-09-28 A | A67160, A67150, A67120 | 100% | 2026-11-26 | 2026-12-08 |  |  | ICKMO1-cost unite [19402 $]; Roller compactor [200 h]; Physical Units [167176 h] | 19,402.03 | 19,402.03 | ZNB | CON |  |
| A67160 |  | Testing & Inspection | 2d | 2026-10-10 | 2026-10-11 | A67140 |  |  |  | 74d | 18d | ICKMO1-cost unite [9701.01 $]; labor [1200 h]; Physical Units [83587.9 h] | 9,701.01 |  | ZNB | CON |  |

| ID | WBS | Activity | Duration | Start | Finish | Predecessors | Complete | Planned start | Planned finish | Total float | Free float | Resources | Cost | Actual cost | ALKHARJ INDUSTERIAL AREA - PROJECT ZONES | ALKHARJ INDUSTERIAL AREA - DECEPLINS | ALKHARJ INDUSTERIAL AREA - Wet networks |
| --- | --- | --- | --- | --- | --- | --- | --- | --- | --- | --- | --- | --- | --- | --- | --- | --- | --- |
|  | MH-3-Q /MH-4-Q | **MH-3-Q /MH-4-Q** |  | 2026-08-20 | 2026-10-11 |  |  |  |  |  |  |  |  |  |  |  |  |
| A67180 |  | Excavation | 4d | 2026-08-20 A | 2026-09-28 A | A67130, A1890 | 100% | 2026-03-26 | 2026-03-30 |  |  | ICKMO1-cost unite [14551.5 $]; Excavator [200 h]; Physical Units [125382 h] | 14,551.52 | 14,551.52 | ZNB | CON |  |
| A67190 |  | Pipe Laying | 14d | 2026-08-20 A | 2026-09-28 A | A67180 | 100% | 2026-03-31 | 2026-04-15 |  |  | ICKMO1-cost unite [9701.01 $]; boom truck [200 h]; labor [1200 h]; Storm Network Circular pipes (GRP) [80.79]; Physical Units [83587.9 h] | 9,701.01 | 9,701.01 | ZNB | CON | LAY |
| A67200 |  | Install Manhole | 4d | 2026-08-20 A | 2026-09-28 A | A67180 | 100% | 2026-03-31 | 2026-04-04 |  |  | ICKMO1-cost unite [43654.6 $]; boom truck [200 h]; labor [1200 h]; Physical Units [376146 h] | 43,654.56 | 43,654.56 | ZNB | CON | MH |
| A67220 |  | Backfilling & Compaction | 10d | 2026-08-20 A | 2026-09-28 A | A67210, A67200, A67170 | 100% | 2026-12-08 | 2026-12-20 |  |  | ICKMO1-cost unite [19402 $]; Roller compactor [200 h]; Physical Units [167176 h] | 19,402.03 | 19,402.03 | ZNB | CON |  |
| A67210 |  | Testing & Inspection | 2d | 2026-10-10 | 2026-10-11 | A67190 |  |  |  | 74d | 18d | ICKMO1-cost unite [9701.01 $]; labor [1200 h]; Physical Units [83587.9 h] | 9,701.01 |  | ZNB | CON |  |
|  | MH-4-Q /MH-5-Q | **MH-4-Q /MH-5-Q** |  | 2026-08-20 | 2026-10-11 |  |  |  |  |  |  |  |  |  |  |  |  |
| A67230 |  | Excavation | 4d | 2026-08-20 A | 2026-09-28 A | A67180, A1890 | 100% | 2026-03-31 | 2026-04-04 |  |  | ICKMO1-cost unite [14551.5 $]; Excavator [200 h]; Physical Units [125382 h] | 14,551.52 | 14,551.52 | ZNB | CON |  |
| A67240 |  | Pipe Laying | 14d | 2026-08-20 A | 2026-09-28 A | A67230 | 100% | 2026-04-05 | 2026-04-20 |  |  | ICKMO1-cost unite [9701.01 $]; boom truck [200 h]; labor [1200 h]; Storm Network Circular pipes (GRP) [80.79]; Physical Units [83587.9 h] | 9,701.01 | 9,701.01 | ZNB | CON | LAY |
| A67250 |  | Install Manhole | 4d | 2026-08-20 A | 2026-09-28 A | A67230 | 100% | 2026-04-05 | 2026-04-08 |  |  | ICKMO1-cost unite [43654.6 $]; boom truck [200 h]; labor [1200 h]; Physical Units [376146 h] | 43,654.56 | 43,654.56 | ZNB | CON | MH |
| A67270 |  | Backfilling & Compaction | 10d | 2026-08-20 A | 2026-09-28 A | A67260, A67250, A67220 | 100% | 2026-12-20 | 2026-12-31 |  |  | ICKMO1-cost unite [19402 $]; Roller compactor [200 h]; Physical Units [167176 h] | 19,402.03 | 19,402.03 | ZNB | CON |  |
| A67260 |  | Testing & Inspection | 2d | 2026-10-10 | 2026-10-11 | A67240 |  |  |  | 74d | 18d | ICKMO1-cost unite [9701.01 $]; labor [1200 h]; Physical Units [83587.9 h] | 9,701.01 |  | ZNB | CON |  |
|  | MH-5-Q /MH-6-Q | **MH-5-Q /MH-6-Q** |  | 2026-08-20 | 2026-10-11 |  |  |  |  |  |  |  |  |  |  |  |  |
| A67280 |  | Excavation | 4d | 2026-08-20 A | 2026-09-28 A | A67230, A1890 | 100% | 2026-04-05 | 2026-04-08 |  |  | ICKMO1-cost unite [14551.5 $]; Excavator [200 h]; Physical Units [125382 h] | 14,551.52 | 14,551.52 | ZNB | CON |  |
| A67290 |  | Pipe Laying | 14d | 2026-08-20 A | 2026-09-28 A | A67280 | 100% | 2026-04-09 | 2026-04-25 |  |  | ICKMO1-cost unite [9701.01 $]; boom truck [200 h]; labor [1200 h]; Storm Network Circular pipes (GRP) [80.79]; Physical Units [83587.9 h] | 9,701.01 | 9,701.01 | ZNB | CON | LAY |
| A67300 |  | Install Manhole | 4d | 2026-08-20 A | 2026-09-28 A | A67280 | 100% | 2026-04-09 | 2026-04-13 |  |  | ICKMO1-cost unite [43654.6 $]; boom truck [200 h]; labor [1200 h]; Physical Units [376146 h] | 43,654.56 | 43,654.56 | ZNB | CON | MH |
| A67320 |  | Backfilling & Compaction | 10d | 2026-08-20 A | 2026-09-28 A | A67310, A67300, A67270 | 100% | 2026-12-31 | 2027-01-12 |  |  | ICKMO1-cost unite [19402 $]; Roller compactor [200 h]; Physical Units [167176 h] | 19,402.03 | 19,402.03 | ZNB | CON |  |
| A67310 |  | Testing & Inspection | 2d | 2026-10-10 | 2026-10-11 | A67290 |  |  |  | 74d | 18d | ICKMO1-cost unite [9701.01 $]; labor [1200 h]; Physical Units [83587.9 h] | 9,701.01 |  | ZNB | CON |  |
|  | MH-6-Q /MH-7-Q | **MH-6-Q /MH-7-Q** |  | 2026-08-20 | 2026-10-11 |  |  |  |  |  |  |  |  |  |  |  |  |
| A67430 |  | Excavation | 4d | 2026-08-20 A | 2026-09-28 A | A67280, A1890 | 100% | 2026-04-09 | 2026-04-13 |  |  | ICKMO1-cost unite [14551.5 $]; Excavator [200 h]; Physical Units [125382 h] | 14,551.52 | 14,551.52 | ZNB | CON |  |
| A67440 |  | Pipe Laying | 14d | 2026-08-20 A | 2026-09-28 A | A67430 | 100% | 2026-04-14 | 2026-04-29 |  |  | ICKMO1-cost unite [9701.01 $]; boom truck [200 h]; labor [1200 h]; Storm Network Circular pipes (GRP) [80.79]; Physical Units [83587.9 h] | 9,701.01 | 9,701.01 | ZNB | CON | LAY |
| A67450 |  | Install Manhole | 4d | 2026-08-20 A | 2026-09-28 A | A67430 | 100% | 2026-04-14 | 2026-04-18 |  |  | ICKMO1-cost unite [43654.6 $]; boom truck [200 h]; labor [1200 h]; Physical Units [376146 h] | 43,654.56 | 43,654.56 | ZNB | CON | MH |
| A67470 |  | Backfilling & Compaction | 10d | 2026-08-20 A | 2026-09-28 A | A67460, A67450, A67320 | 100% | 2027-01-12 | 2027-01-24 |  |  | ICKMO1-cost unite [19402 $]; Roller compactor [200 h]; Physical Units [167176 h] | 19,402.03 | 19,402.03 | ZNB | CON |  |
| A67460 |  | Testing & Inspection | 2d | 2026-10-10 | 2026-10-11 | A67440 |  |  |  | 74d | 18d | ICKMO1-cost unite [9701.01 $]; labor [1200 h]; Physical Units [83587.9 h] | 9,701.01 |  | ZNB | CON |  |

| ID | WBS | Activity | Duration | Start | Finish | Predecessors | Complete | Planned start | Planned finish | Total float | Free float | Resources | Cost | Actual cost | ALKHARJ INDUSTERIAL AREA - PROJECT ZONES | ALKHARJ INDUSTERIAL AREA - DECEPLINS | ALKHARJ INDUSTERIAL AREA - Wet networks |
| --- | --- | --- | --- | --- | --- | --- | --- | --- | --- | --- | --- | --- | --- | --- | --- | --- | --- |
|  | MH-7-Q /MH-8-Q | **MH-7-Q /MH-8-Q** |  | 2026-08-20 | 2026-10-11 |  |  |  |  |  |  |  |  |  |  |  |  |
| A67480 |  | Excavation | 4d | 2026-08-20 A | 2026-09-28 A | A67430, A1890 | 100% | 2026-04-14 | 2026-04-18 |  |  | ICKMO1-cost unite [14551.5 $]; Excavator [200 h]; Physical Units [125382 h] | 14,551.52 | 14,551.52 | ZNB | CON |  |
| A67490 |  | Pipe Laying | 14d | 2026-08-20 A | 2026-09-28 A | A67480 | 100% | 2026-04-19 | 2026-05-04 |  |  | ICKMO1-cost unite [9701.01 $]; boom truck [200 h]; labor [1200 h]; Storm Network Circular pipes (GRP) [80.79]; Physical Units [83587.9 h] | 9,701.01 | 9,701.01 | ZNB | CON | LAY |
| A67500 |  | Install Manhole | 4d | 2026-08-20 A | 2026-09-28 A | A67480 | 100% | 2026-04-19 | 2026-04-22 |  |  | ICKMO1-cost unite [43654.6 $]; boom truck [200 h]; labor [1200 h]; Physical Units [376146 h] | 43,654.56 | 43,654.56 | ZNB | CON | MH |
| A67520 |  | Backfilling & Compaction | 10d | 2026-08-20 A | 2026-09-28 A | A67510, A67500, A67470 | 100% | 2027-01-24 | 2027-02-04 |  |  | ICKMO1-cost unite [19402 $]; Roller compactor [200 h]; Physical Units [167176 h] | 19,402.03 | 19,402.03 | ZNB | CON |  |
| A67510 |  | Testing & Inspection | 2d | 2026-10-10 | 2026-10-11 | A67490 |  |  |  | 74d | 18d | ICKMO1-cost unite [9701.01 $]; labor [1200 h]; Physical Units [83587.9 h] | 9,701.01 |  | ZNB | CON |  |
|  | MH-8-Q /MH-9-Q | **MH-8-Q /MH-9-Q** |  | 2026-08-20 | 2026-10-11 |  |  |  |  |  |  |  |  |  |  |  |  |
| A67530 |  | Excavation | 4d | 2026-08-20 A | 2026-09-28 A | A67480, A1890 | 100% | 2026-04-19 | 2026-04-22 |  |  | ICKMO1-cost unite [14551.5 $]; Excavator [200 h]; Physical Units [125382 h] | 14,551.52 | 14,551.52 | ZNB | CON |  |
| A67540 |  | Pipe Laying | 14d | 2026-08-20 A | 2026-09-28 A | A67530 | 100% | 2026-04-23 | 2026-05-09 |  |  | ICKMO1-cost unite [9701.01 $]; boom truck [200 h]; labor [1200 h]; Storm Network Circular pipes (GRP) [80.79]; Physical Units [83587.9 h] | 9,701.01 | 9,701.01 | ZNB | CON | LAY |
| A67550 |  | Install Manhole | 4d | 2026-08-20 A | 2026-09-28 A | A67530 | 100% | 2026-04-23 | 2026-04-27 |  |  | ICKMO1-cost unite [43654.6 $]; boom truck [200 h]; labor [1200 h]; Physical Units [376146 h] | 43,654.56 | 43,654.56 | ZNB | CON | MH |
| A67570 |  | Backfilling & Compaction | 10d | 2026-08-20 A | 2026-09-28 A | A67560, A67550, A67520 | 100% | 2027-02-04 | 2027-02-16 |  |  | ICKMO1-cost unite [19402 $]; Roller compactor [200 h]; Physical Units [167176 h] | 19,402.03 | 19,402.03 | ZNB | CON |  |
| A67560 |  | Testing & Inspection | 2d | 2026-10-10 | 2026-10-11 | A67540 |  |  |  | 74d | 18d | ICKMO1-cost unite [9701.01 $]; labor [1200 h]; Physical Units [83587.9 h] | 9,701.01 |  | ZNB | CON |  |
|  | MH-9-Q /MH-10-Q | **MH-9-Q /MH-10-Q** |  | 2026-10-10 | 2026-11-12 |  |  |  |  |  |  |  |  |  |  |  |  |
| A67380 |  | Excavation | 4d | 2026-10-10 | 2026-10-13 | A67530, A1890 |  |  |  | 56d | 0d | ICKMO1-cost unite [14551.5 $]; Excavator [200 h]; Physical Units [125382 h] | 14,551.52 |  | ZNB | CON |  |
| A67390 |  | Pipe Laying | 14d | 2026-10-14 | 2026-10-29 | A67380 |  |  |  | 56d | 0d | ICKMO1-cost unite [9701.01 $]; boom truck [200 h]; labor [1200 h]; Storm Network Circular pipes (GRP) [80.79]; Physical Units [83587.9 h] | 9,701.01 |  | ZNB | CON | LAY |
| A67400 |  | Install Manhole | 4d | 2026-10-14 | 2026-10-18 | A67380 |  |  |  | 68d | 12d | ICKMO1-cost unite [43654.6 $]; boom truck [200 h]; labor [1200 h]; Physical Units [376146 h] | 43,654.56 |  | ZNB | CON | MH |
| A67410 |  | Testing & Inspection | 2d | 2026-10-31 | 2026-11-01 | A67390 |  |  |  | 56d | 0d | ICKMO1-cost unite [9701.01 $]; labor [1200 h]; Physical Units [83587.9 h] | 9,701.01 |  | ZNB | CON |  |
| A67420 |  | Backfilling & Compaction | 10d | 2026-11-02 | 2026-11-12 | A67410, A67400, A67570 |  |  |  | 56d | 0d | ICKMO1-cost unite [19402 $]; Roller compactor [200 h]; Physical Units [167176 h] | 19,402.03 |  | ZNB | CON |  |
|  | EX LR 26 | **EX LR 26** |  | 2026-08-20 | 2026-10-12 |  |  |  |  |  |  |  |  |  |  |  |  |
|  | MH-12-O /MH-13-O | **MH-12-O /MH-13-O** |  | 2026-08-20 | 2026-10-12 |  |  |  |  |  |  |  |  |  |  |  |  |
| A78630 |  | Excavation | 4d | 2026-08-20 A | 2026-09-28 A | A1890, A75130 | 100% | 2026-03-18 | 2026-03-22 |  |  | ICKMO1-cost unite [72757.6 $]; Excavator [200 h]; Physical Units [626910 h] | 72,757.59 | 72,757.59 | ZNB | CON |  |
| A78640 |  | Pipe Laying | 14d | 2026-08-20 A | 2026-09-28 A | A78630 | 100% | 2026-03-23 | 2026-04-07 |  |  | ICKMO1-cost unite [48505.1 $]; boom truck [200 h]; labor [1200 h]; Storm Network Circular pipes (GRP) [80.79]; Physical Units [417940 h] | 48,505.07 | 48,505.07 | ZNB | CON | LAY |
| A78650 |  | Install Manhole | 4d | 2026-08-20 A | 2026-09-28 A | A78630 | 100% | 2026-03-23 | 2026-03-26 |  |  | ICKMO1-cost unite [218273 $]; boom truck [200 h]; labor [1200 h]; Physical Units [1880729 h] | 218,272.79 | 218,272.79 | ZNB | CON | MH |
| A78670 |  | Backfilling & Compaction | 10d | 2026-08-20 A | 2026-09-28 A | A78660, A78650 | 100% | 2026-10-31 | 2026-11-11 |  |  | ICKMO1-cost unite [97010.1 $]; Roller compactor [200 h]; Physical Units [835879 h] | 97,010.13 | 97,010.13 | ZNB | CON |  |
| A78660 |  | Testing & Inspection | 2d | 2026-10-10 | 2026-10-12 | A78640 |  |  |  | 93.8d | 0d | ICKMO1-cost unite [48505.1 $]; labor [1200 h]; Physical Units [417940 h] | 48,505.07 |  | ZNB | CON |  |

| ID | WBS | Activity | Duration | Start | Finish | Predecessors | Complete | Planned start | Planned finish | Total float | Free float | Resources | Cost | Actual cost | ALKHARJ INDUSTERIAL AREA - PROJECT ZONES | ALKHARJ INDUSTERIAL AREA - DECEPLINS | ALKHARJ INDUSTERIAL AREA - Wet networks |
| --- | --- | --- | --- | --- | --- | --- | --- | --- | --- | --- | --- | --- | --- | --- | --- | --- | --- |
|  | MH-13-O /MH-O-0 | **MH-13-O /MH-O-0** |  | 2026-08-20 | 2026-09-28 |  |  |  |  |  |  |  |  |  |  |  |  |
| A78680 |  | Excavation | 4d | 2026-08-20 A | 2026-09-28 A | A78630, A1890 | 100% | 2026-03-23 | 2026-03-26 |  |  | ICKMO1-cost unite [72757.6 $]; Excavator [200 h]; Physical Units [626910 h] | 72,757.59 | 72,757.59 | ZNB | CON |  |
| A78690 |  | Pipe Laying | 14d | 2026-08-20 A | 2026-09-28 A | A78680 | 100% | 2026-09-26 | 2026-10-12 |  |  | ICKMO1-cost unite [48505.1 $]; boom truck [200 h]; labor [1200 h]; Storm Network Circular pipes (GRP) [80.79]; Physical Units [417940 h] | 48,505.07 | 48,505.07 | ZNB | CON | LAY |
| A78700 |  | Install Manhole | 4d | 2026-08-20 A | 2026-09-28 A | A78680 | 100% | 2026-09-26 | 2026-09-30 |  |  | ICKMO1-cost unite [218273 $]; boom truck [200 h]; labor [1200 h]; Physical Units [1880729 h] | 218,272.79 | 218,272.79 | ZNB | CON | MH |
| A78710 |  | Testing & Inspection | 2d | 2026-08-20 A | 2026-09-28 A | A78690 | 100% | 2026-10-12 | 2026-10-14 |  |  | ICKMO1-cost unite [48505.1 $]; labor [1200 h]; Physical Units [417940 h] | 48,505.07 | 48,505.07 | ZNB | CON |  |
| A78720 |  | Backfilling & Compaction | 10d | 2026-08-20 A | 2026-09-28 A | A78710, A78700, A78670 | 100% | 2026-10-14 | 2026-10-26 |  |  | ICKMO1-cost unite [97010.1 $]; Roller compactor [200 h]; Physical Units [835879 h] | 97,010.13 | 97,010.13 | ZNB | CON |  |
|  | LR 18 | **LR 18** |  | 2026-08-20 | 2026-10-11 |  |  |  |  |  |  |  |  |  |  |  |  |
|  | MH-1-B /MH-2-B | **MH-1-B /MH-2-B** |  | 2026-08-20 | 2026-10-11 |  |  |  |  |  |  |  |  |  |  |  |  |
| A78730 |  | Excavation | 4d | 2026-08-20 A | 2026-09-28 A | A62720, A62730, A1890 | 100% | 2026-01-24 | 2026-01-27 |  |  | ICKMO1-cost unite [48505.1 $]; Excavator [200 h]; Physical Units [417940 h] | 48,505.07 | 48,505.07 | ZNB | CON |  |
| A78740 |  | Pipe Laying | 14d | 2026-08-20 A | 2026-09-28 A | A78730, A10960 SS+24d | 100% | 2026-02-14 | 2026-03-01 |  |  | ICKMO1-cost unite [32336.7 $]; boom truck [200 h]; labor [1200 h]; Storm Network Circular pipes (GRP) [80.79]; Physical Units [278626 h] | 32,336.71 | 32,336.71 | ZNB | CON | LAY |
| A78750 |  | Install Manhole | 4d | 2026-08-20 A | 2026-09-28 A | A78730 | 100% | 2026-01-28 | 2026-02-01 |  |  | ICKMO1-cost unite [145515 $]; boom truck [200 h]; labor [1200 h]; Physical Units [1253819 h] | 145,515.18 | 145,515.18 | ZNB | CON | MH |
| A78770 |  | Backfilling & Compaction | 4d | 2026-08-20 A | 2026-09-28 A | A78760, A78750 | 100% | 2026-12-09 | 2026-12-13 |  |  | ICKMO1-cost unite [64673.4 $]; Roller compactor [200 h]; Physical Units [557253 h] | 64,673.42 | 64,673.42 | ZNB | CON |  |
| A78760 |  | Testing & Inspection | 2d | 2026-10-10 | 2026-10-11 | A78740 |  |  |  | 58.44d | 0d | ICKMO1-cost unite [32336.7 $]; labor [1200 h]; Physical Units [278626 h] | 32,336.71 |  | ZNB | CON |  |
|  | MH-2-B /MH-3-B | **MH-2-B /MH-3-B** |  | 2026-08-20 | 2026-10-11 |  |  |  |  |  |  |  |  |  |  |  |  |
| A78780 |  | Excavation | 4d | 2026-08-20 A | 2026-09-28 A | A78730, A1890 | 100% | 2026-01-28 | 2026-02-01 |  |  | ICKMO1-cost unite [48505.1 $]; Excavator [200 h]; Physical Units [417940 h] | 48,505.07 | 48,505.07 | ZNB | CON |  |
| A78790 |  | Pipe Laying | 14d | 2026-08-20 A | 2026-09-28 A | A78780, A10960 SS+14d | 100% | 2026-02-02 | 2026-02-17 |  |  | ICKMO1-cost unite [32336.7 $]; boom truck [200 h]; labor [1200 h]; Storm Network Circular pipes (GRP) [80.79]; Physical Units [278626 h] | 32,336.71 | 32,336.71 | ZNB | CON | LAY |
| A78800 |  | Install Manhole | 4d | 2026-08-20 A | 2026-09-28 A | A78780 | 100% | 2026-02-02 | 2026-02-05 |  |  | ICKMO1-cost unite [145515 $]; boom truck [200 h]; labor [1200 h]; Physical Units [1253819 h] | 145,515.18 | 145,515.18 | ZNB | CON | MH |
| A78820 |  | Backfilling & Compaction | 10d | 2026-08-20 A | 2026-09-28 A | A78810, A78800, A78770 | 100% | 2026-12-14 | 2026-12-24 |  |  | ICKMO1-cost unite [64673.4 $]; Roller compactor [200 h]; Physical Units [557253 h] | 64,673.42 | 64,673.42 | ZNB | CON |  |
| A78810 |  | Testing & Inspection | 2d | 2026-10-10 | 2026-10-11 | A78790 |  |  |  | 58.44d | 0d | ICKMO1-cost unite [32336.7 $]; labor [1200 h]; Physical Units [278626 h] | 32,336.71 |  | ZNB | CON |  |
|  | MH-3-B /MH-4-B | **MH-3-B /MH-4-B** |  | 2026-08-20 | 2026-10-11 |  |  |  |  |  |  |  |  |  |  |  |  |
| A78830 |  | Excavation | 4d | 2026-08-20 A | 2026-09-28 A | A78780, A1890 | 100% | 2026-02-02 | 2026-02-05 |  |  | ICKMO1-cost unite [48505.1 $]; Excavator [200 h]; Physical Units [417940 h] | 48,505.07 | 48,505.07 | ZNB | CON |  |
| A78840 |  | Pipe Laying | 14d | 2026-08-20 A | 2026-09-28 A | A78830, A10960 SS+14d | 100% | 2026-02-07 | 2026-02-22 |  |  | ICKMO1-cost unite [32336.7 $]; boom truck [200 h]; labor [1200 h]; Storm Network Circular pipes (GRP) [80.79]; Physical Units [278626 h] | 32,336.71 | 32,336.71 | ZNB | CON | LAY |
| A78850 |  | Install Manhole | 4d | 2026-08-20 A | 2026-09-28 A | A78830 | 100% | 2026-02-07 | 2026-02-10 |  |  | ICKMO1-cost unite [145515 $]; boom truck [200 h]; labor [1200 h]; Physical Units [1253819 h] | 145,515.18 | 145,515.18 | ZNB | CON | MH |
| A78870 |  | Backfilling & Compaction | 10d | 2026-08-20 A | 2026-09-28 A | A78860, A78850, A78820 | 100% | 2026-12-26 | 2027-01-05 |  |  | ICKMO1-cost unite [64673.4 $]; Roller compactor [200 h]; Physical Units [557253 h] | 64,673.42 | 64,673.42 | ZNB | CON |  |
| A78860 |  | Testing & Inspection | 2d | 2026-10-10 | 2026-10-11 | A78840 |  |  |  | 58.44d | 0d | ICKMO1-cost unite [32336.7 $]; labor [1200 h]; Physical Units [278626 h] | 32,336.71 |  | ZNB | CON |  |

| ID | WBS | Activity | Duration | Start | Finish | Predecessors | Complete | Planned start | Planned finish | Resources | Cost | Actual cost | ALKHARJ INDUSTERIAL AREA - PROJECT ZONES | ALKHARJ INDUSTERIAL AREA - DECEPLINS | ALKHARJ INDUSTERIAL AREA - Wet networks |
| --- | --- | --- | --- | --- | --- | --- | --- | --- | --- | --- | --- | --- | --- | --- | --- |
|  | LR 19 | **LR 19** |  | 2026-08-20 | 2026-09-28 |  |  |  |  |  |  |  |  |  |  |
|  | MH-4-B /MH-5-B | **MH-4-B /MH-5-B** |  | 2026-08-20 | 2026-09-28 |  |  |  |  |  |  |  |  |  |  |
| A78930 |  | Excavation | 4d | 2026-08-20 A | 2026-09-28 A | A78880, A1890 | 100% | 2026-01-28 | 2026-02-01 | ICKMO1-cost unite [36378.8 $]; Excavator [200 h]; Physical Units [313455 h] | 36,378.8 | 36,378.8 | ZNB | CON |  |
| A78940 |  | Pipe Laying | 14d | 2026-08-20 A | 2026-09-28 A | A78930, A10960 SS+14d | 100% | 2026-02-02 | 2026-02-17 | ICKMO1-cost unite [24252.5 $]; boom truck [200 h]; labor [1200 h]; Storm Network Circular pipes (GRP) [80.79]; Physical Units [208970 h] | 24,252.53 | 24,252.53 | ZNB | CON | LAY |
| A78950 |  | Install Manhole | 4d | 2026-08-20 A | 2026-09-28 A | A78930 | 100% | 2026-02-02 | 2026-02-05 | ICKMO1-cost unite [109136 $]; boom truck [200 h]; labor [1200 h]; Physical Units [940364 h] | 109,136.39 | 109,136.39 | ZNB | CON | MH |
| A78960 |  | Testing & Inspection | 2d | 2026-08-20 A | 2026-09-28 A | A78940 | 100% | 2026-11-25 | 2026-11-26 | ICKMO1-cost unite [24252.5 $]; labor [1200 h]; Physical Units [208970 h] | 24,252.53 | 24,252.53 | ZNB | CON |  |
| A78970 |  | Backfilling & Compaction | 10d | 2026-08-20 A | 2026-09-28 A | A78960, A78950, A78920 | 100% | 2026-12-09 | 2026-12-20 | ICKMO1-cost unite [48505.1 $]; Roller compactor [200 h]; Physical Units [417940 h] | 48,505.07 | 48,505.07 | ZNB | CON |  |
|  | MH-4-B-1 /MH-4-B | **MH-4-B-1 /MH-4-B** |  | 2026-08-20 | 2026-09-28 |  |  |  |  |  |  |  |  |  |  |
| A78880 |  | Excavation | 4d | 2026-08-20 A | 2026-09-28 A | A64350, A64360, A1890 | 100% | 2026-01-24 | 2026-01-27 | ICKMO1-cost unite [36378.8 $]; Excavator [200 h]; Physical Units [313455 h] | 36,378.8 | 36,378.8 | ZNB | CON |  |
| A78890 |  | Pipe Laying | 14d | 2026-08-20 A | 2026-09-28 A | A78880, A10960 SS+14d | 100% | 2026-02-02 | 2026-02-17 | ICKMO1-cost unite [24252.5 $]; boom truck [200 h]; labor [1200 h]; Storm Network Circular pipes (GRP) [80.79]; Physical Units [208970 h] | 24,252.53 | 24,252.53 | ZNB | CON | LAY |
| A78900 |  | Install Manhole | 4d | 2026-08-20 A | 2026-09-28 A | A78880 | 100% | 2026-01-28 | 2026-02-01 | ICKMO1-cost unite [109136 $]; boom truck [200 h]; labor [1200 h]; Physical Units [940364 h] | 109,136.39 | 109,136.39 | ZNB | CON | MH |
| A78910 |  | Testing & Inspection | 2d | 2026-08-20 A | 2026-09-28 A | A78890 | 100% | 2026-11-25 | 2026-11-26 | ICKMO1-cost unite [24252.5 $]; labor [1200 h]; Physical Units [208970 h] | 24,252.53 | 24,252.53 | ZNB | CON |  |
| A78920 |  | Backfilling & Compaction | 10d | 2026-08-20 A | 2026-09-28 A | A78910, A78900 | 100% | 2026-11-28 | 2026-12-08 | ICKMO1-cost unite [48505.1 $]; Roller compactor [200 h]; Physical Units [417940 h] | 48,505.07 | 48,505.07 | ZNB | CON |  |
|  | MH-5-B /MH-6-B | **MH-5-B /MH-6-B** |  | 2026-08-20 | 2026-09-28 |  |  |  |  |  |  |  |  |  |  |
| A78980 |  | Excavation | 4d | 2026-08-20 A | 2026-09-28 A | A78930, A1890 | 100% | 2026-02-02 | 2026-02-05 | ICKMO1-cost unite [36378.8 $]; Excavator [200 h]; Physical Units [313455 h] | 36,378.8 | 36,378.8 | ZNB | CON |  |
| A78990 |  | Pipe Laying | 14d | 2026-08-20 A | 2026-09-28 A | A78980 | 100% | 2026-02-07 | 2026-02-22 | ICKMO1-cost unite [24252.5 $]; boom truck [200 h]; labor [1200 h]; Storm Network Circular pipes (GRP) [80.79]; Physical Units [208970 h] | 24,252.53 | 24,252.53 | ZNB | CON | LAY |
| A79000 |  | Install Manhole | 4d | 2026-08-20 A | 2026-09-28 A | A78980 | 100% | 2026-02-07 | 2026-02-10 | ICKMO1-cost unite [109136 $]; boom truck [200 h]; labor [1200 h]; Physical Units [940364 h] | 109,136.39 | 109,136.39 | ZNB | CON | MH |
| A79010 |  | Testing & Inspection | 2d | 2026-08-20 A | 2026-09-28 A | A78990 | 100% | 2026-10-29 | 2026-11-01 | ICKMO1-cost unite [24252.5 $]; labor [1200 h]; Physical Units [208970 h] | 24,252.53 | 24,252.53 | ZNB | CON |  |
| A79020 |  | Backfilling & Compaction | 4d | 2026-08-20 A | 2026-09-28 A | A79010, A79000, A78970 | 100% | 2026-12-21 | 2026-12-24 | ICKMO1-cost unite [48505.1 $]; Roller compactor [200 h]; Physical Units [417940 h] | 48,505.07 | 48,505.07 | ZNB | CON |  |
|  | MH-6-B / 0-B | **MH-6-B / 0-B** |  | 2026-08-20 | 2026-09-28 |  |  |  |  |  |  |  |  |  |  |
| A79030 |  | Excavation | 4d | 2026-08-20 A | 2026-09-28 A | A78980, A1890 | 100% | 2026-02-07 | 2026-02-10 | ICKMO1-cost unite [36378.8 $]; Excavator [200 h]; Physical Units [313455 h] | 36,378.8 | 36,378.8 | ZNB | CON |  |
| A79040 |  | Pipe Laying | 14d | 2026-08-20 A | 2026-09-28 A | A79030 | 100% | 2026-02-11 | 2026-02-26 | ICKMO1-cost unite [24252.5 $]; boom truck [200 h]; labor [1200 h]; Storm Network Circular pipes (GRP) [80.79]; Physical Units [208970 h] | 24,252.53 | 24,252.53 | ZNB | CON | LAY |
| A79050 |  | Install Manhole | 4d | 2026-08-20 A | 2026-09-28 A | A79030 | 100% | 2026-02-11 | 2026-02-15 | ICKMO1-cost unite [109136 $]; boom truck [200 h]; labor [1200 h]; Physical Units [940364 h] | 109,136.39 | 109,136.39 | ZNB | CON | MH |
| A79060 |  | Testing & Inspection | 2d | 2026-08-20 A | 2026-09-28 A | A79040 | 100% | 2026-10-29 | 2026-11-01 | ICKMO1-cost unite [24252.5 $]; labor [1200 h]; Physical Units [208970 h] | 24,252.53 | 24,252.53 | ZNB | CON |  |
| A79070 |  | Backfilling & Compaction | 10d | 2026-08-20 A | 2026-09-28 A | A79060, A79050, A79020 | 100% | 2026-12-26 | 2027-01-05 | ICKMO1-cost unite [48505.1 $]; Roller compactor [200 h]; Physical Units [417940 h] | 48,505.07 | 48,505.07 | ZNB | CON |  |

| ID | WBS | Activity | Duration | Start | Finish | Predecessors | Complete | Planned start | Planned finish | Total float | Free float | Resources | Cost | Actual cost | ALKHARJ INDUSTERIAL AREA - PROJECT ZONES | ALKHARJ INDUSTERIAL AREA - DECEPLINS | ALKHARJ INDUSTERIAL AREA - Wet networks |
| --- | --- | --- | --- | --- | --- | --- | --- | --- | --- | --- | --- | --- | --- | --- | --- | --- | --- |
|  | LR 20 | **LR 20** |  | 2026-08-20 | 2026-10-11 |  |  |  |  |  |  |  |  |  |  |  |  |
|  | MH-1-D /MH-2-D | **MH-1-D /MH-2-D** |  | 2026-08-20 | 2026-09-28 |  |  |  |  |  |  |  |  |  |  |  |  |
| A79080 |  | Excavation | 4d | 2026-08-20 A | 2026-09-28 A | A64380, A64390, A1890 | 100% | 2026-01-22 | 2026-01-26 |  |  | ICKMO1-cost unite [29103 $]; Excavator [200 h]; Physical Units [250764 h] | 29,103.04 | 29,103.04 | ZNB | CON |  |
| A79090 |  | Pipe Laying | 14d | 2026-08-20 A | 2026-09-28 A | A79080, A10960 SS+14d | 100% | 2026-02-02 | 2026-02-17 |  |  | ICKMO1-cost unite [19402 $]; boom truck [200 h]; labor [1200 h]; Storm Network Circular pipes (GRP) [80.79]; Physical Units [167176 h] | 19,402.03 | 19,402.03 | ZNB | CON | LAY |
| A79100 |  | Install Manhole | 4d | 2026-08-20 A | 2026-09-28 A | A79080 | 100% | 2026-01-27 | 2026-01-31 |  |  | ICKMO1-cost unite [87309.1 $]; boom truck [200 h]; labor [1200 h]; Physical Units [752291 h] | 87,309.11 | 87,309.11 | ZNB | CON | MH |
| A79110 |  | Testing & Inspection | 2d | 2026-08-20 A | 2026-09-28 A | A79090 | 100% | 2026-11-25 | 2026-11-26 |  |  | ICKMO1-cost unite [19402 $]; labor [1200 h]; Physical Units [167176 h] | 19,402.03 | 19,402.03 | ZNB | CON |  |
| A79120 |  | Backfilling & Compaction | 10d | 2026-08-20 A | 2026-09-28 A | A79110, A79100 | 100% | 2026-11-28 | 2026-12-08 |  |  | ICKMO1-cost unite [38804 $]; Roller compactor [200 h]; Physical Units [334352 h] | 38,804.04 | 38,804.04 | ZNB | CON |  |
|  | MH-2-D /MH-3-D | **MH-2-D /MH-3-D** |  | 2026-08-20 | 2026-09-28 |  |  |  |  |  |  |  |  |  |  |  |  |
| A79130 |  | Excavation | 4d | 2026-08-20 A | 2026-09-28 A | A79080, A1890 | 100% | 2026-01-27 | 2026-01-31 |  |  | ICKMO1-cost unite [29103 $]; Excavator [200 h]; Physical Units [250764 h] | 29,103.04 | 29,103.04 | ZNB | CON |  |
| A79140 |  | Pipe Laying | 14d | 2026-08-20 A | 2026-09-28 A | A79130, A10960 SS+14d | 100% | 2026-02-02 | 2026-02-17 |  |  | ICKMO1-cost unite [19402 $]; boom truck [200 h]; labor [1200 h]; Storm Network Circular pipes (GRP) [80.79]; Physical Units [167176 h] | 19,402.03 | 19,402.03 | ZNB | CON | LAY |
| A79150 |  | Install Manhole | 4d | 2026-08-20 A | 2026-09-28 A | A79130 | 100% | 2026-02-01 | 2026-02-04 |  |  | ICKMO1-cost unite [87309.1 $]; boom truck [200 h]; labor [1200 h]; Physical Units [752291 h] | 87,309.11 | 87,309.11 | ZNB | CON | MH |
| A79160 |  | Testing & Inspection | 2d | 2026-08-20 A | 2026-09-28 A | A79140 | 100% | 2026-11-25 | 2026-11-26 |  |  | ICKMO1-cost unite [19402 $]; labor [1200 h]; Physical Units [167176 h] | 19,402.03 | 19,402.03 | ZNB | CON |  |
| A79170 |  | Backfilling & Compaction | 10d | 2026-08-20 A | 2026-09-28 A | A79160, A79150, A79120 | 100% | 2026-12-09 | 2026-12-20 |  |  | ICKMO1-cost unite [38804 $]; Roller compactor [200 h]; Physical Units [334352 h] | 38,804.04 | 38,804.04 | ZNB | CON |  |
|  | MH-3-D /MH-4-D | **MH-3-D /MH-4-D** |  | 2026-08-20 | 2026-10-11 |  |  |  |  |  |  |  |  |  |  |  |  |
| A79180 |  | Excavation | 4d | 2026-08-20 A | 2026-09-28 A | A79130, A1890 | 100% | 2026-02-01 | 2026-02-04 |  |  | ICKMO1-cost unite [29103 $]; Excavator [200 h]; Physical Units [250764 h] | 29,103.04 | 29,103.04 | ZNB | CON |  |
| A79190 |  | Pipe Laying | 14d | 2026-08-20 A | 2026-09-28 A | A79180, A10960 SS+14d | 100% | 2026-02-05 | 2026-02-21 |  |  | ICKMO1-cost unite [19402 $]; boom truck [200 h]; labor [1200 h]; Storm Network Circular pipes (GRP) [80.79]; Physical Units [167176 h] | 19,402.03 | 19,402.03 | ZNB | CON | LAY |
| A79200 |  | Install Manhole | 4d | 2026-08-20 A | 2026-09-28 A | A79180 | 100% | 2026-02-05 | 2026-02-09 |  |  | ICKMO1-cost unite [87309.1 $]; boom truck [200 h]; labor [1200 h]; Physical Units [752291 h] | 87,309.11 | 87,309.11 | ZNB | CON | MH |
| A79220 |  | Backfilling & Compaction | 4d | 2026-08-20 A | 2026-09-28 A | A79210, A79200, A79170 | 100% | 2026-12-21 | 2026-12-24 |  |  | ICKMO1-cost unite [38804 $]; Roller compactor [200 h]; Physical Units [334352 h] | 38,804.04 | 38,804.04 | ZNB | CON |  |
| A79210 |  | Testing & Inspection | 2d | 2026-10-10 | 2026-10-11 | A79190 |  |  |  | 59.28d | 0d | ICKMO1-cost unite [19402 $]; labor [1200 h]; Physical Units [167176 h] | 19,402.03 |  | ZNB | CON |  |
|  | MH-4-D /MH-5-D | **MH-4-D /MH-5-D** |  | 2026-08-20 | 2026-10-11 |  |  |  |  |  |  |  |  |  |  |  |  |
| A79230 |  | Excavation | 4d | 2026-08-20 A | 2026-09-28 A | A79180, A1890 | 100% | 2026-02-05 | 2026-02-09 |  |  | ICKMO1-cost unite [29103 $]; Excavator [200 h]; Physical Units [250764 h] | 29,103.04 | 29,103.04 | ZNB | CON |  |
| A79240 |  | Pipe Laying | 14d | 2026-08-20 A | 2026-09-28 A | A79230 | 100% | 2026-02-10 | 2026-02-25 |  |  | ICKMO1-cost unite [19402 $]; boom truck [200 h]; labor [1200 h]; Storm Network Circular pipes (GRP) [80.79]; Physical Units [167176 h] | 19,402.03 | 19,402.03 | ZNB | CON | LAY |
| A79250 |  | Install Manhole | 4d | 2026-08-20 A | 2026-09-28 A | A79230 | 100% | 2026-02-10 | 2026-02-14 |  |  | ICKMO1-cost unite [87309.1 $]; boom truck [200 h]; labor [1200 h]; Physical Units [752291 h] | 87,309.11 | 87,309.11 | ZNB | CON | MH |
| A79270 |  | Backfilling & Compaction | 10d | 2026-08-20 A | 2026-09-28 A | A79260, A79250, A79220 | 100% | 2026-12-26 | 2027-01-05 |  |  | ICKMO1-cost unite [38804 $]; Roller compactor [200 h]; Physical Units [334352 h] | 38,804.04 | 38,804.04 | ZNB | CON |  |
| A79260 |  | Testing & Inspection | 2d | 2026-10-10 | 2026-10-11 | A79240 |  |  |  | 59.28d | 0d | ICKMO1-cost unite [19402 $]; labor [1200 h]; Physical Units [167176 h] | 19,402.03 |  | ZNB | CON |  |

| ID | WBS | Activity | Duration | Start | Finish | Predecessors | Complete | Planned start | Planned finish | Total float | Free float | Resources | Cost | Actual cost | ALKHARJ INDUSTERIAL AREA - PROJECT ZONES | ALKHARJ INDUSTERIAL AREA - DECEPLINS | ALKHARJ INDUSTERIAL AREA - Wet networks |
| --- | --- | --- | --- | --- | --- | --- | --- | --- | --- | --- | --- | --- | --- | --- | --- | --- | --- |
|  | MH-5-D /MH-6-D | **MH-5-D /MH-6-D** |  | 2026-08-20 | 2026-10-11 |  |  |  |  |  |  |  |  |  |  |  |  |
| A79280 |  | Excavation | 4d | 2026-08-20 A | 2026-09-28 A | A79230, A1890 | 100% | 2026-02-10 | 2026-02-14 |  |  | ICKMO1-cost unite [29103 $]; Excavator [200 h]; Physical Units [250764 h] | 29,103.04 | 29,103.04 | ZNB | CON |  |
| A79290 |  | Pipe Laying | 14d | 2026-08-20 A | 2026-09-28 A | A79280 | 100% | 2026-02-15 | 2026-03-02 |  |  | ICKMO1-cost unite [19402 $]; boom truck [200 h]; labor [1200 h]; Storm Network Circular pipes (GRP) [80.79]; Physical Units [167176 h] | 19,402.03 | 19,402.03 | ZNB | CON | LAY |
| A79300 |  | Install Manhole | 4d | 2026-08-20 A | 2026-09-28 A | A79280 | 100% | 2026-02-15 | 2026-02-18 |  |  | ICKMO1-cost unite [87309.1 $]; boom truck [200 h]; labor [1200 h]; Physical Units [752291 h] | 87,309.11 | 87,309.11 | ZNB | CON | MH |
| A79320 |  | Backfilling & Compaction | 10d | 2026-08-20 A | 2026-09-28 A | A79310, A79300, A79270 | 100% | 2027-01-06 | 2027-01-17 |  |  | ICKMO1-cost unite [38804 $]; Roller compactor [200 h]; Physical Units [334352 h] | 38,804.04 | 38,804.04 | ZNB | CON |  |
| A79310 |  | Testing & Inspection | 2d | 2026-10-10 | 2026-10-11 | A79290 |  |  |  | 59.28d | 0d | ICKMO1-cost unite [19402 $]; labor [1200 h]; Physical Units [167176 h] | 19,402.03 |  | ZNB | CON |  |
|  | LR 21 | **LR 21** |  | 2026-08-20 | 2026-11-08 |  |  |  |  |  |  |  |  |  |  |  |  |
|  | MH-2-F /MH-3-F | **MH-2-F /MH-3-F** |  | 2026-08-20 | 2026-09-28 |  |  |  |  |  |  |  |  |  |  |  |  |
| A79380 |  | Excavation | 4d | 2026-08-20 A | 2026-09-28 A | A79330, A1890 | 100% | 2026-02-01 | 2026-02-04 |  |  | ICKMO1-cost unite [29103 $]; Excavator [200 h]; Physical Units [250764 h] | 29,103.04 | 29,103.04 | ZNB | CON |  |
| A79390 |  | Pipe Laying | 14d | 2026-08-20 A | 2026-09-28 A | A79380, A10960 SS+14d | 100% | 2026-02-05 | 2026-02-21 |  |  | ICKMO1-cost unite [19402 $]; boom truck [200 h]; labor [1200 h]; Storm Network Circular pipes (GRP) [80.79]; Physical Units [167176 h] | 19,402.03 | 19,402.03 | ZNB | CON | LAY |
| A79400 |  | Install Manhole | 4d | 2026-08-20 A | 2026-09-28 A | A79380 | 100% | 2026-02-05 | 2026-02-09 |  |  | ICKMO1-cost unite [87309.1 $]; boom truck [200 h]; labor [1200 h]; Physical Units [752291 h] | 87,309.11 | 87,309.11 | ZNB | CON | MH |
| A79410 |  | Testing & Inspection | 2d | 2026-08-20 A | 2026-09-28 A | A79390 | 100% | 2026-11-25 | 2026-11-26 |  |  | ICKMO1-cost unite [19402 $]; labor [1200 h]; Physical Units [167176 h] | 19,402.03 | 19,402.03 | ZNB | CON |  |
| A79420 |  | Backfilling & Compaction | 10d | 2026-08-20 A | 2026-09-28 A | A79410, A79400, A79370 | 100% | 2026-12-26 | 2027-01-05 |  |  | ICKMO1-cost unite [38804 $]; Roller compactor [200 h]; Physical Units [334352 h] | 38,804.04 | 38,804.04 | ZNB | CON |  |
|  | MH-3-F /MH-4-F | **MH-3-F /MH-4-F** |  | 2026-08-20 | 2026-09-28 |  |  |  |  |  |  |  |  |  |  |  |  |
| A79430 |  | Excavation | 4d | 2026-08-20 A | 2026-09-28 A | A79380, A1890 | 100% | 2026-02-05 | 2026-02-09 |  |  | ICKMO1-cost unite [29103 $]; Excavator [200 h]; Physical Units [250764 h] | 29,103.04 | 29,103.04 | ZNB | CON |  |
| A79440 |  | Pipe Laying | 14d | 2026-08-20 A | 2026-09-28 A | A79430, A10960 SS+14d | 100% | 2026-02-10 | 2026-02-25 |  |  | ICKMO1-cost unite [19402 $]; boom truck [200 h]; labor [1200 h]; Storm Network Circular pipes (GRP) [80.79]; Physical Units [167176 h] | 19,402.03 | 19,402.03 | ZNB | CON | LAY |
| A79450 |  | Install Manhole | 4d | 2026-08-20 A | 2026-09-28 A | A79430 | 100% | 2026-02-10 | 2026-02-14 |  |  | ICKMO1-cost unite [87309.1 $]; boom truck [200 h]; labor [1200 h]; Physical Units [752291 h] | 87,309.11 | 87,309.11 | ZNB | CON | MH |
| A79460 |  | Testing & Inspection | 2d | 2026-08-20 A | 2026-09-28 A | A79440 | 100% | 2026-11-25 | 2026-11-26 |  |  | ICKMO1-cost unite [19402 $]; labor [1200 h]; Physical Units [167176 h] | 19,402.03 | 19,402.03 | ZNB | CON |  |
| A79470 |  | Backfilling & Compaction | 4d | 2026-08-20 A | 2026-09-28 A | A79460, A79450, A79420 | 100% | 2027-01-06 | 2027-01-10 |  |  | ICKMO1-cost unite [38804 $]; Roller compactor [200 h]; Physical Units [334352 h] | 38,804.04 | 38,804.04 | ZNB | CON |  |
|  | MH-4-F /MH-5-F | **MH-4-F /MH-5-F** |  | 2026-08-20 | 2026-09-28 |  |  |  |  |  |  |  |  |  |  |  |  |
| A79480 |  | Excavation | 4d | 2026-08-20 A | 2026-09-28 A | A79430, A1890 | 100% | 2026-02-10 | 2026-02-14 |  |  | ICKMO1-cost unite [29103 $]; Excavator [200 h]; Physical Units [250764 h] | 29,103.04 | 29,103.04 | ZNB | CON |  |
| A79490 |  | Pipe Laying | 14d | 2026-08-20 A | 2026-09-28 A | A79480 | 100% | 2026-02-15 | 2026-03-02 |  |  | ICKMO1-cost unite [19402 $]; boom truck [200 h]; labor [1200 h]; Storm Network Circular pipes (GRP) [80.79]; Physical Units [167176 h] | 19,402.03 | 19,402.03 | ZNB | CON | LAY |
| A79500 |  | Install Manhole | 4d | 2026-08-20 A | 2026-09-28 A | A79480 | 100% | 2026-02-15 | 2026-02-18 |  |  | ICKMO1-cost unite [87309.1 $]; boom truck [200 h]; labor [1200 h]; Physical Units [752291 h] | 87,309.11 | 87,309.11 | ZNB | CON | MH |
| A79510 |  | Testing & Inspection | 2d | 2026-08-20 A | 2026-09-28 A | A79490 | 100% | 2026-10-29 | 2026-11-01 |  |  | ICKMO1-cost unite [19402 $]; labor [1200 h]; Physical Units [167176 h] | 19,402.03 | 19,402.03 | ZNB | CON |  |
| A79520 |  | Backfilling & Compaction | 10d | 2026-08-20 A | 2026-09-28 A | A79510, A79500, A79470 | 100% | 2027-01-11 | 2027-01-21 |  |  | ICKMO1-cost unite [38804 $]; Roller compactor [200 h]; Physical Units [334352 h] | 38,804.04 | 38,804.04 | ZNB | CON |  |

| ID | WBS | Activity | Duration | Start | Finish | Predecessors | Complete | Planned start | Planned finish | Total float | Free float | Resources | Cost | Actual cost | ALKHARJ INDUSTERIAL AREA - PROJECT ZONES | ALKHARJ INDUSTERIAL AREA - DECEPLINS | ALKHARJ INDUSTERIAL AREA - Wet networks |
| --- | --- | --- | --- | --- | --- | --- | --- | --- | --- | --- | --- | --- | --- | --- | --- | --- | --- |
|  | MH-5-F / 0-F | **MH-5-F / 0-F** |  | 2026-08-20 | 2026-09-28 |  |  |  |  |  |  |  |  |  |  |  |  |
| A79530 |  | Excavation | 4d | 2026-08-20 A | 2026-09-28 A | A79480, A1890 | 100% | 2026-02-15 | 2026-02-18 |  |  | ICKMO1-cost unite [29103 $]; Excavator [200 h]; Physical Units [250764 h] | 29,103.04 | 29,103.04 | ZNB | CON |  |
| A79540 |  | Pipe Laying | 4d | 2026-08-20 A | 2026-09-28 A | A79530 | 100% | 2026-02-19 | 2026-02-23 |  |  | ICKMO1-cost unite [19402 $]; boom truck [200 h]; labor [1200 h]; Storm Network Circular pipes (GRP) [80.79]; Physical Units [167176 h] | 19,402.03 | 19,402.03 | ZNB | CON | LAY |
| A79550 |  | Install Manhole | 4d | 2026-08-20 A | 2026-09-28 A | A79530 | 100% | 2026-02-19 | 2026-02-23 |  |  | ICKMO1-cost unite [87309.1 $]; boom truck [200 h]; labor [1200 h]; Physical Units [752291 h] | 87,309.11 | 87,309.11 | ZNB | CON | MH |
| A79560 |  | Testing & Inspection | 2d | 2026-08-20 A | 2026-09-28 A | A79540 | 100% | 2026-10-29 | 2026-11-01 |  |  | ICKMO1-cost unite [19402 $]; labor [1200 h]; Physical Units [167176 h] | 19,402.03 | 19,402.03 | ZNB | CON |  |
| A79570 |  | Backfilling & Compaction | 10d | 2026-08-20 A | 2026-09-28 A | A79560, A79550, A79520 | 100% | 2027-01-23 | 2027-02-02 |  |  | ICKMO1-cost unite [38804 $]; Roller compactor [200 h]; Physical Units [334352 h] | 38,804.04 | 38,804.04 | ZNB | CON |  |
|  | MH-8-O-1 /MH-2-F | **MH-8-O-1 /MH-2-F** |  | 2026-08-20 | 2026-11-08 |  |  |  |  |  |  |  |  |  |  |  |  |
| A79330 |  | Excavation | 4d | 2026-08-20 A | 2026-09-28 A | A64410, A64420, A1890 | 100% | 2026-01-27 | 2026-01-31 |  |  | ICKMO1-cost unite [29103 $]; Excavator [200 h]; Physical Units [250764 h] | 29,103.04 | 29,103.04 | ZNB | CON |  |
| A79340 |  | Pipe Laying | 14d | 2026-10-10 | 2026-10-25 | A79330, A10960 SS+14d |  |  |  | 13d | 0d | ICKMO1-cost unite [19402 $]; boom truck [200 h]; labor [1200 h]; Storm Network Circular pipes (GRP) [80.79]; Physical Units [167176 h] | 19,402.03 |  | ZNB | CON | LAY |
| A79350 |  | Install Manhole | 4d | 2026-10-10 | 2026-10-13 | A79330 |  |  |  | 25d | 12d | ICKMO1-cost unite [87309.1 $]; boom truck [200 h]; labor [1200 h]; Physical Units [752291 h] | 87,309.11 |  | ZNB | CON | MH |
| A79360 |  | Testing & Inspection | 2d | 2026-10-26 | 2026-10-27 | A79340 |  |  |  | 13d | 0d | ICKMO1-cost unite [19402 $]; labor [1200 h]; Physical Units [167176 h] | 19,402.03 |  | ZNB | CON |  |
| A79370 |  | Backfilling & Compaction | 10d | 2026-10-28 | 2026-11-08 | A79360, A79350 |  |  |  | 13d | 0d | ICKMO1-cost unite [38804 $]; Roller compactor [200 h]; Physical Units [334352 h] | 38,804.04 |  | ZNB | CON |  |
|  | LR 22 | **LR 22** |  | 2026-08-20 | 2026-10-11 |  |  |  |  |  |  |  |  |  |  |  |  |
|  | MH-1-H /MH-2-H | **MH-1-H /MH-2-H** |  | 2026-08-20 | 2026-10-11 |  |  |  |  |  |  |  |  |  |  |  |  |
| A77080 |  | Excavation | 4d | 2026-08-20 A | 2026-09-28 A | A64440, A64450, A1890 | 100% | 2026-02-01 | 2026-02-04 |  |  | ICKMO1-cost unite [48505.1 $]; Excavator [200 h]; Physical Units [417940 h] | 48,505.07 | 48,505.07 | ZNB | CON |  |
| A77090 |  | Pipe Laying | 14d | 2026-08-20 A | 2026-09-28 A | A77080, A10960 SS+24d | 100% | 2026-02-14 | 2026-03-01 |  |  | ICKMO1-cost unite [32336.7 $]; boom truck [200 h]; labor [1200 h]; Storm Network Circular pipes (GRP) [80.79]; Physical Units [278626 h] | 32,336.71 | 32,336.71 | ZNB | CON | LAY |
| A77100 |  | Install Manhole | 4d | 2026-08-20 A | 2026-09-28 A | A77080 | 100% | 2026-02-05 | 2026-02-09 |  |  | ICKMO1-cost unite [145515 $]; boom truck [200 h]; labor [1200 h]; Physical Units [1253819 h] | 145,515.18 | 145,515.18 | ZNB | CON | MH |
| A77120 |  | Backfilling & Compaction | 4d | 2026-08-20 A | 2026-09-28 A | A77110, A77100 | 100% | 2026-12-09 | 2026-12-13 |  |  | ICKMO1-cost unite [64673.4 $]; Roller compactor [200 h]; Physical Units [557253 h] | 64,673.42 | 64,673.42 | ZNB | CON |  |
| A77110 |  | Testing & Inspection | 2d | 2026-10-10 | 2026-10-11 | A77090 |  |  |  | 27.8d | 0d | ICKMO1-cost unite [32336.7 $]; labor [1200 h]; Physical Units [278626 h] | 32,336.71 |  | ZNB | CON |  |
|  | MH-2-H /MH-3-H | **MH-2-H /MH-3-H** |  | 2026-08-20 | 2026-10-11 |  |  |  |  |  |  |  |  |  |  |  |  |
| A77130 |  | Excavation | 4d | 2026-08-20 A | 2026-09-28 A | A77080, A1890 | 100% | 2026-02-05 | 2026-02-09 |  |  | ICKMO1-cost unite [48505.1 $]; Excavator [200 h]; Physical Units [417940 h] | 48,505.07 | 48,505.07 | ZNB | CON |  |
| A77140 |  | Pipe Laying | 14d | 2026-08-20 A | 2026-09-28 A | A77130 | 100% | 2026-02-10 | 2026-02-25 |  |  | ICKMO1-cost unite [32336.7 $]; boom truck [200 h]; labor [1200 h]; Storm Network Circular pipes (GRP) [80.79]; Physical Units [278626 h] | 32,336.71 | 32,336.71 | ZNB | CON | LAY |
| A77150 |  | Install Manhole | 4d | 2026-08-20 A | 2026-09-28 A | A77130 | 100% | 2026-02-10 | 2026-02-14 |  |  | ICKMO1-cost unite [145515 $]; boom truck [200 h]; labor [1200 h]; Physical Units [1253819 h] | 145,515.18 | 145,515.18 | ZNB | CON | MH |
| A77170 |  | Backfilling & Compaction | 10d | 2026-08-20 A | 2026-09-28 A | A77160, A77150, A77120 | 100% | 2026-12-14 | 2026-12-24 |  |  | ICKMO1-cost unite [64673.4 $]; Roller compactor [200 h]; Physical Units [557253 h] | 64,673.42 | 64,673.42 | ZNB | CON |  |
| A77160 |  | Testing & Inspection | 2d | 2026-10-10 | 2026-10-11 | A77140 |  |  |  | 29.8d | 0d | ICKMO1-cost unite [32336.7 $]; labor [1200 h]; Physical Units [278626 h] | 32,336.71 |  | ZNB | CON |  |

| ID | WBS | Activity | Duration | Start | Finish | Predecessors | Complete | Planned start | Planned finish | Total float | Free float | Resources | Cost | Actual cost | ALKHARJ INDUSTERIAL AREA - PROJECT ZONES | ALKHARJ INDUSTERIAL AREA - DECEPLINS | ALKHARJ INDUSTERIAL AREA - Wet networks |
| --- | --- | --- | --- | --- | --- | --- | --- | --- | --- | --- | --- | --- | --- | --- | --- | --- | --- |
|  | MH-3-H /MH-4-H | **MH-3-H /MH-4-H** |  | 2026-08-20 | 2026-10-11 |  |  |  |  |  |  |  |  |  |  |  |  |
| A77180 |  | Excavation | 4d | 2026-08-20 A | 2026-09-28 A | A77130, A1890 | 100% | 2026-02-10 | 2026-02-14 |  |  | ICKMO1-cost unite [48505.1 $]; Excavator [200 h]; Physical Units [417940 h] | 48,505.07 | 48,505.07 | ZNB | CON |  |
| A77190 |  | Pipe Laying | 14d | 2026-08-20 A | 2026-09-28 A | A77180 | 100% | 2026-02-15 | 2026-03-02 |  |  | ICKMO1-cost unite [32336.7 $]; boom truck [200 h]; labor [1200 h]; Storm Network Circular pipes (GRP) [80.79]; Physical Units [278626 h] | 32,336.71 | 32,336.71 | ZNB | CON | LAY |
| A77200 |  | Install Manhole | 4d | 2026-08-20 A | 2026-09-28 A | A77180 | 100% | 2026-02-15 | 2026-02-18 |  |  | ICKMO1-cost unite [145515 $]; boom truck [200 h]; labor [1200 h]; Physical Units [1253819 h] | 145,515.18 | 145,515.18 | ZNB | CON | MH |
| A77220 |  | Backfilling & Compaction | 10d | 2026-08-20 A | 2026-09-28 A | A77210, A77200, A77170 | 100% | 2026-12-26 | 2027-01-05 |  |  | ICKMO1-cost unite [64673.4 $]; Roller compactor [200 h]; Physical Units [557253 h] | 64,673.42 | 64,673.42 | ZNB | CON |  |
| A77210 |  | Testing & Inspection | 2d | 2026-10-10 | 2026-10-11 | A77190 |  |  |  | 29.8d | 0d | ICKMO1-cost unite [32336.7 $]; labor [1200 h]; Physical Units [278626 h] | 32,336.71 |  | ZNB | CON |  |
|  | LR 23 | **LR 23** |  | 2026-08-20 | 2026-10-11 |  |  |  |  |  |  |  |  |  |  |  |  |
|  | MH-1-K /MH-2-K | **MH-1-K /MH-2-K** |  | 2026-08-20 | 2026-10-11 |  |  |  |  |  |  |  |  |  |  |  |  |
| A76980 |  | Excavation | 4d | 2026-08-20 A | 2026-09-28 A | A64480, A1890 | 100% | 2026-02-05 | 2026-02-09 |  |  | ICKMO1-cost unite [72757.6 $]; Excavator [200 h]; Physical Units [626910 h] | 72,757.59 | 72,757.59 | ZNB | CON |  |
| A76990 |  | Pipe Laying | 14d | 2026-08-20 A | 2026-09-28 A | A76980, A10960 SS+24d | 100% | 2026-02-14 | 2026-03-01 |  |  | ICKMO1-cost unite [48505.1 $]; boom truck [200 h]; labor [1200 h]; Storm Network Circular pipes (GRP) [80.79]; Physical Units [417940 h] | 48,505.07 | 48,505.07 | ZNB | CON | LAY |
| A77000 |  | Install Manhole | 4d | 2026-08-20 A | 2026-09-28 A | A76980 | 100% | 2026-02-10 | 2026-02-14 |  |  | ICKMO1-cost unite [218273 $]; boom truck [200 h]; labor [1200 h]; Physical Units [1880729 h] | 218,272.79 | 218,272.79 | ZNB | CON | MH |
| A77020 |  | Backfilling & Compaction | 4d | 2026-08-20 A | 2026-09-28 A | A77010, A77000 | 100% | 2026-12-09 | 2026-12-13 |  |  | ICKMO1-cost unite [97010.1 $]; Roller compactor [200 h]; Physical Units [835879 h] | 97,010.13 | 97,010.13 | ZNB | CON |  |
| A77010 |  | Testing & Inspection | 2d | 2026-10-10 | 2026-10-11 | A76990 |  |  |  | 34.8d | 0d | ICKMO1-cost unite [48505.1 $]; labor [1200 h]; Physical Units [417940 h] | 48,505.07 |  | ZNB | CON |  |
|  | MH-2-K / 0-K | **MH-2-K / 0-K** |  | 2026-08-20 | 2026-10-11 |  |  |  |  |  |  |  |  |  |  |  |  |
| A77030 |  | Excavation | 4d | 2026-08-20 A | 2026-09-28 A | A76980, A1890 | 100% | 2026-02-10 | 2026-02-14 |  |  | ICKMO1-cost unite [72757.6 $]; Excavator [200 h]; Physical Units [626910 h] | 72,757.59 | 72,757.59 | ZNB | CON |  |
| A77040 |  | Pipe Laying | 14d | 2026-08-20 A | 2026-09-28 A | A77030, A10960 SS+24d | 100% | 2026-02-15 | 2026-03-02 |  |  | ICKMO1-cost unite [48505.1 $]; boom truck [200 h]; labor [1200 h]; Storm Network Circular pipes (GRP) [80.79]; Physical Units [417940 h] | 48,505.07 | 48,505.07 | ZNB | CON | LAY |
| A77050 |  | Install Manhole | 4d | 2026-08-20 A | 2026-09-28 A | A77030 | 100% | 2026-02-15 | 2026-02-18 |  |  | ICKMO1-cost unite [218273 $]; boom truck [200 h]; labor [1200 h]; Physical Units [1880729 h] | 218,272.79 | 218,272.79 | ZNB | CON | MH |
| A77070 |  | Backfilling & Compaction | 10d | 2026-08-20 A | 2026-09-28 A | A77060, A77050, A77020 | 100% | 2026-12-14 | 2026-12-24 |  |  | ICKMO1-cost unite [97010.1 $]; Roller compactor [200 h]; Physical Units [835879 h] | 97,010.13 | 97,010.13 | ZNB | CON |  |
| A77060 |  | Testing & Inspection | 2d | 2026-10-10 | 2026-10-11 | A77040 |  |  |  | 36.8d | 0d | ICKMO1-cost unite [48505.1 $]; labor [1200 h]; Physical Units [417940 h] | 48,505.07 |  | ZNB | CON |  |
|  | LR 24 | **LR 24** |  | 2026-08-20 | 2026-10-11 |  |  |  |  |  |  |  |  |  |  |  |  |
|  | MH-5-M /MH-6-M | **MH-5-M /MH-6-M** |  | 2026-08-20 | 2026-10-11 |  |  |  |  |  |  |  |  |  |  |  |  |
| A76780 |  | Excavation | 4d | 2026-08-20 A | 2026-09-28 A | A76730, A1890 | 100% | 2026-02-15 | 2026-02-18 |  |  | ICKMO1-cost unite [29103 $]; Excavator [200 h]; Physical Units [250764 h] | 29,103.04 | 29,103.04 | ZNB | CON |  |
| A76790 |  | Pipe Laying | 4d | 2026-08-20 A | 2026-09-28 A | A76780 | 100% | 2026-02-19 | 2026-02-23 |  |  | ICKMO1-cost unite [19402 $]; boom truck [200 h]; labor [1200 h]; Storm Network Circular pipes (GRP) [80.79]; Physical Units [167176 h] | 19,402.03 | 19,402.03 | ZNB | CON | LAY |
| A76800 |  | Install Manhole | 4d | 2026-08-20 A | 2026-09-28 A | A76780 | 100% | 2026-02-19 | 2026-02-23 |  |  | ICKMO1-cost unite [87309.1 $]; boom truck [200 h]; labor [1200 h]; Physical Units [752291 h] | 87,309.11 | 87,309.11 | ZNB | CON | MH |
| A76820 |  | Backfilling & Compaction | 10d | 2026-08-20 A | 2026-09-28 A | A76810, A76800, A76770 | 100% | 2026-12-21 | 2026-12-31 |  |  | ICKMO1-cost unite [38804 $]; Roller compactor [200 h]; Physical Units [334352 h] | 38,804.04 | 38,804.04 | ZNB | CON |  |
| A76810 |  | Testing & Inspection | 2d | 2026-10-10 | 2026-10-11 | A76790 |  |  |  | 25d | 0d | ICKMO1-cost unite [19402 $]; labor [1200 h]; Physical Units [167176 h] | 19,402.03 |  | ZNB | CON |  |

| ID | WBS | Activity | Duration | Start | Finish | Predecessors | Complete | Planned start | Planned finish | Total float | Free float | Resources | Cost | Actual cost | ALKHARJ INDUSTERIAL AREA - PROJECT ZONES | ALKHARJ INDUSTERIAL AREA - DECEPLINS | ALKHARJ INDUSTERIAL AREA - Wet networks |
| --- | --- | --- | --- | --- | --- | --- | --- | --- | --- | --- | --- | --- | --- | --- | --- | --- | --- |
|  | MH-5-M-1 /MH-5-M | **MH-5-M-1 /MH-5-M** |  | 2026-08-20 | 2026-10-11 |  |  |  |  |  |  |  |  |  |  |  |  |
| A76730 |  | Excavation | 4d | 2026-08-20 A | 2026-09-28 A | A64500, A64510, A1890 | 100% | 2026-02-10 | 2026-02-14 |  |  | ICKMO1-cost unite [29103 $]; Excavator [200 h]; Physical Units [250764 h] | 29,103.04 | 29,103.04 | ZNB | CON |  |
| A76740 |  | Pipe Laying | 14d | 2026-08-20 A | 2026-09-28 A | A76730, A10960 SS+24d | 100% | 2026-02-15 | 2026-03-02 |  |  | ICKMO1-cost unite [19402 $]; boom truck [200 h]; labor [1200 h]; Storm Network Circular pipes (GRP) [80.79]; Physical Units [167176 h] | 19,402.03 | 19,402.03 | ZNB | CON | LAY |
| A76750 |  | Install Manhole | 4d | 2026-08-20 A | 2026-09-28 A | A76730 | 100% | 2026-02-15 | 2026-02-18 |  |  | ICKMO1-cost unite [87309.1 $]; boom truck [200 h]; labor [1200 h]; Physical Units [752291 h] | 87,309.11 | 87,309.11 | ZNB | CON | MH |
| A76770 |  | Backfilling & Compaction | 10d | 2026-08-20 A | 2026-09-28 A | A76760, A76750 | 100% | 2026-12-09 | 2026-12-20 |  |  | ICKMO1-cost unite [38804 $]; Roller compactor [200 h]; Physical Units [334352 h] | 38,804.04 | 38,804.04 | ZNB | CON |  |
| A76760 |  | Testing & Inspection | 2d | 2026-10-10 | 2026-10-11 | A76740 |  |  |  | 23d | 0d | ICKMO1-cost unite [19402 $]; labor [1200 h]; Physical Units [167176 h] | 19,402.03 |  | ZNB | CON |  |
|  | MH-6-M /MH-7-M | **MH-6-M /MH-7-M** |  | 2026-08-20 | 2026-10-11 |  |  |  |  |  |  |  |  |  |  |  |  |
| A76830 |  | Excavation | 4d | 2026-08-20 A | 2026-09-28 A | A76780, A1890 | 100% | 2026-02-19 | 2026-02-23 |  |  | ICKMO1-cost unite [29103 $]; Excavator [200 h]; Physical Units [250764 h] | 29,103.04 | 29,103.04 | ZNB | CON |  |
| A76840 |  | Pipe Laying | 14d | 2026-08-20 A | 2026-09-28 A | A76830 | 100% | 2026-02-24 | 2026-03-11 |  |  | ICKMO1-cost unite [19402 $]; boom truck [200 h]; labor [1200 h]; Storm Network Circular pipes (GRP) [80.79]; Physical Units [167176 h] | 19,402.03 | 19,402.03 | ZNB | CON | LAY |
| A76850 |  | Install Manhole | 4d | 2026-08-20 A | 2026-09-28 A | A76830 | 100% | 2026-02-24 | 2026-02-28 |  |  | ICKMO1-cost unite [87309.1 $]; boom truck [200 h]; labor [1200 h]; Physical Units [752291 h] | 87,309.11 | 87,309.11 | ZNB | CON | MH |
| A76870 |  | Backfilling & Compaction | 10d | 2026-08-20 A | 2026-09-28 A | A76860, A76850, A76820 | 100% | 2027-01-02 | 2027-01-12 |  |  | ICKMO1-cost unite [38804 $]; Roller compactor [200 h]; Physical Units [334352 h] | 38,804.04 | 38,804.04 | ZNB | CON |  |
| A76860 |  | Testing & Inspection | 2d | 2026-10-10 | 2026-10-11 | A76840 |  |  |  | 25d | 0d | ICKMO1-cost unite [19402 $]; labor [1200 h]; Physical Units [167176 h] | 19,402.03 |  | ZNB | CON |  |
|  | MH-7-M /MH-8-M | **MH-7-M /MH-8-M** |  | 2026-08-20 | 2026-10-11 |  |  |  |  |  |  |  |  |  |  |  |  |
| A76880 |  | Excavation | 4d | 2026-08-20 A | 2026-09-28 A | A76830, A1890 | 100% | 2026-02-24 | 2026-02-28 |  |  | ICKMO1-cost unite [29103 $]; Excavator [200 h]; Physical Units [250764 h] | 29,103.04 | 29,103.04 | ZNB | CON |  |
| A76890 |  | Pipe Laying | 14d | 2026-08-20 A | 2026-09-28 A | A76880 | 100% | 2026-03-01 | 2026-03-16 |  |  | ICKMO1-cost unite [19402 $]; boom truck [200 h]; labor [1200 h]; Storm Network Circular pipes (GRP) [80.79]; Physical Units [167176 h] | 19,402.03 | 19,402.03 | ZNB | CON | LAY |
| A76900 |  | Install Manhole | 4d | 2026-08-20 A | 2026-09-28 A | A76880 | 100% | 2026-03-01 | 2026-03-04 |  |  | ICKMO1-cost unite [87309.1 $]; boom truck [200 h]; labor [1200 h]; Physical Units [752291 h] | 87,309.11 | 87,309.11 | ZNB | CON | MH |
| A76920 |  | Backfilling & Compaction | 4d | 2026-08-20 A | 2026-09-28 A | A76910, A76900, A76870 | 100% | 2027-01-13 | 2027-01-17 |  |  | ICKMO1-cost unite [38804 $]; Roller compactor [200 h]; Physical Units [334352 h] | 38,804.04 | 38,804.04 | ZNB | CON |  |
| A76910 |  | Testing & Inspection | 2d | 2026-10-10 | 2026-10-11 | A76890 |  |  |  | 25d | 0d | ICKMO1-cost unite [19402 $]; labor [1200 h]; Physical Units [167176 h] | 19,402.03 |  | ZNB | CON |  |
|  | MH-8-M / 0-M | **MH-8-M / 0-M** |  | 2026-08-20 | 2026-10-11 |  |  |  |  |  |  |  |  |  |  |  |  |
| A76930 |  | Excavation | 4d | 2026-08-20 A | 2026-09-28 A | A76880, A1890 | 100% | 2026-03-01 | 2026-03-04 |  |  | ICKMO1-cost unite [29103 $]; Excavator [200 h]; Physical Units [250764 h] | 29,103.04 | 29,103.04 | ZNB | CON |  |
| A76940 |  | Pipe Laying | 14d | 2026-08-20 A | 2026-09-28 A | A76930 | 100% | 2026-03-05 | 2026-03-21 |  |  | ICKMO1-cost unite [19402 $]; boom truck [200 h]; labor [1200 h]; Storm Network Circular pipes (GRP) [80.79]; Physical Units [167176 h] | 19,402.03 | 19,402.03 | ZNB | CON | LAY |
| A76950 |  | Install Manhole | 4d | 2026-08-20 A | 2026-09-28 A | A76930 | 100% | 2026-03-05 | 2026-03-09 |  |  | ICKMO1-cost unite [87309.1 $]; boom truck [200 h]; labor [1200 h]; Physical Units [752291 h] | 87,309.11 | 87,309.11 | ZNB | CON | MH |
| A76970 |  | Backfilling & Compaction | 10d | 2026-08-20 A | 2026-09-28 A | A76960, A76950, A76920 | 100% | 2027-01-18 | 2027-01-28 |  |  | ICKMO1-cost unite [38804 $]; Roller compactor [200 h]; Physical Units [334352 h] | 38,804.04 | 38,804.04 | ZNB | CON |  |
| A76960 |  | Testing & Inspection | 2d | 2026-10-10 | 2026-10-11 | A76940 |  |  |  | 25d | 0d | ICKMO1-cost unite [19402 $]; labor [1200 h]; Physical Units [167176 h] | 19,402.03 |  | ZNB | CON |  |

| ID | WBS | Activity | Duration | Start | Finish | Predecessors | Complete | Planned start | Planned finish | Total float | Free float | Resources | Cost | Actual cost | ALKHARJ INDUSTERIAL AREA - PROJECT ZONES | ALKHARJ INDUSTERIAL AREA - DECEPLINS | ALKHARJ INDUSTERIAL AREA - Wet networks |
| --- | --- | --- | --- | --- | --- | --- | --- | --- | --- | --- | --- | --- | --- | --- | --- | --- | --- |
|  | LR 25 | **LR 25** |  | 2026-08-20 | 2026-10-11 |  |  |  |  |  |  |  |  |  |  |  |  |
|  | MH-1-M /MH-2-M | **MH-1-M /MH-2-M** |  | 2026-08-20 | 2026-10-11 |  |  |  |  |  |  |  |  |  |  |  |  |
| A76530 |  | Excavation | 4d | 2026-08-20 A | 2026-09-28 A | A76480, A1890 | 100% | 2026-02-19 | 2026-02-23 |  |  | ICKMO1-cost unite [29103 $]; Excavator [200 h]; Physical Units [250764 h] | 29,103.04 | 29,103.04 | ZNB | CON |  |
| A76540 |  | Pipe Laying | 14d | 2026-08-20 A | 2026-09-28 A | A76530 | 100% | 2026-02-24 | 2026-03-11 |  |  | ICKMO1-cost unite [19402 $]; boom truck [200 h]; labor [1200 h]; Storm Network Circular pipes (GRP) [80.79]; Physical Units [167176 h] | 19,402.03 | 19,402.03 | ZNB | CON | LAY |
| A76550 |  | Install Manhole | 4d | 2026-08-20 A | 2026-09-28 A | A76530 | 100% | 2026-02-24 | 2026-02-28 |  |  | ICKMO1-cost unite [87309.1 $]; boom truck [200 h]; labor [1200 h]; Physical Units [752291 h] | 87,309.11 | 87,309.11 | ZNB | CON | MH |
| A76570 |  | Backfilling & Compaction | 10d | 2026-08-20 A | 2026-09-28 A | A76560, A76550, A76520 | 100% | 2026-11-12 | 2026-11-23 |  |  | ICKMO1-cost unite [38804 $]; Roller compactor [200 h]; Physical Units [334352 h] | 38,804.04 | 38,804.04 | ZNB | CON |  |
| A76560 |  | Testing & Inspection | 2d | 2026-10-10 | 2026-10-11 | A76540 |  |  |  | 39d | 0d | ICKMO1-cost unite [19402 $]; labor [1200 h]; Physical Units [167176 h] | 19,402.03 |  | ZNB | CON |  |
|  | MH-2-F /MH-2-F-2 | **MH-2-F /MH-2-F-2** |  | 2026-08-20 | 2026-10-11 |  |  |  |  |  |  |  |  |  |  |  |  |
| A76480 |  | Excavation | 4d | 2026-08-20 A | 2026-09-28 A | A64530, A64540, A1890 | 100% | 2026-02-15 | 2026-02-18 |  |  | ICKMO1-cost unite [29103 $]; Excavator [200 h]; Physical Units [250764 h] | 29,103.04 | 29,103.04 | ZNB | CON |  |
| A76490 |  | Pipe Laying | 4d | 2026-08-20 A | 2026-09-28 A | A76480 | 100% | 2026-02-19 | 2026-02-23 |  |  | ICKMO1-cost unite [19402 $]; boom truck [200 h]; labor [1200 h]; Storm Network Circular pipes (GRP) [80.79]; Physical Units [167176 h] | 19,402.03 | 19,402.03 | ZNB | CON | LAY |
| A76500 |  | Install Manhole | 4d | 2026-08-20 A | 2026-09-28 A | A76480 | 100% | 2026-02-19 | 2026-02-23 |  |  | ICKMO1-cost unite [87309.1 $]; boom truck [200 h]; labor [1200 h]; Physical Units [752291 h] | 87,309.11 | 87,309.11 | ZNB | CON | MH |
| A76520 |  | Backfilling & Compaction | 10d | 2026-08-20 A | 2026-09-28 A | A76510, A76500 | 100% | 2026-11-01 | 2026-11-11 |  |  | ICKMO1-cost unite [38804 $]; Roller compactor [200 h]; Physical Units [334352 h] | 38,804.04 | 38,804.04 | ZNB | CON |  |
| A76510 |  | Testing & Inspection | 2d | 2026-10-10 | 2026-10-11 | A76490 |  |  |  | 37d | 0d | ICKMO1-cost unite [19402 $]; labor [1200 h]; Physical Units [167176 h] | 19,402.03 |  | ZNB | CON |  |
|  | MH-2-M /MH-3-M | **MH-2-M /MH-3-M** |  | 2026-08-20 | 2026-10-11 |  |  |  |  |  |  |  |  |  |  |  |  |
| A76580 |  | Excavation | 4d | 2026-08-20 A | 2026-09-28 A | A76530, A1890 | 100% | 2026-02-24 | 2026-02-28 |  |  | ICKMO1-cost unite [29103 $]; Excavator [200 h]; Physical Units [250764 h] | 29,103.04 | 29,103.04 | ZNB | CON |  |
| A76590 |  | Pipe Laying | 14d | 2026-08-20 A | 2026-09-28 A | A76580 | 100% | 2026-03-01 | 2026-03-16 |  |  | ICKMO1-cost unite [19402 $]; boom truck [200 h]; labor [1200 h]; Storm Network Circular pipes (GRP) [80.79]; Physical Units [167176 h] | 19,402.03 | 19,402.03 | ZNB | CON | LAY |
| A76600 |  | Install Manhole | 4d | 2026-08-20 A | 2026-09-28 A | A76580 | 100% | 2026-03-01 | 2026-03-04 |  |  | ICKMO1-cost unite [87309.1 $]; boom truck [200 h]; labor [1200 h]; Physical Units [752291 h] | 87,309.11 | 87,309.11 | ZNB | CON | MH |
| A76620 |  | Backfilling & Compaction | 4d | 2026-08-20 A | 2026-09-28 A | A76610, A76600, A76570 | 100% | 2026-11-24 | 2026-11-28 |  |  | ICKMO1-cost unite [38804 $]; Roller compactor [200 h]; Physical Units [334352 h] | 38,804.04 | 38,804.04 | ZNB | CON |  |
| A76610 |  | Testing & Inspection | 2d | 2026-10-10 | 2026-10-11 | A76590 |  |  |  | 39d | 0d | ICKMO1-cost unite [19402 $]; labor [1200 h]; Physical Units [167176 h] | 19,402.03 |  | ZNB | CON |  |
|  | MH-3-M /MH-4-M | **MH-3-M /MH-4-M** |  | 2026-08-20 | 2026-10-11 |  |  |  |  |  |  |  |  |  |  |  |  |
| A76630 |  | Excavation | 4d | 2026-08-20 A | 2026-09-28 A | A76580, A1890 | 100% | 2026-03-01 | 2026-03-04 |  |  | ICKMO1-cost unite [29103 $]; Excavator [200 h]; Physical Units [250764 h] | 29,103.04 | 29,103.04 | ZNB | CON |  |
| A76640 |  | Pipe Laying | 14d | 2026-08-20 A | 2026-09-28 A | A76630 | 100% | 2026-03-05 | 2026-03-21 |  |  | ICKMO1-cost unite [19402 $]; boom truck [200 h]; labor [1200 h]; Storm Network Circular pipes (GRP) [80.79]; Physical Units [167176 h] | 19,402.03 | 19,402.03 | ZNB | CON | LAY |
| A76650 |  | Install Manhole | 4d | 2026-08-20 A | 2026-09-28 A | A76630 | 100% | 2026-03-05 | 2026-03-09 |  |  | ICKMO1-cost unite [87309.1 $]; boom truck [200 h]; labor [1200 h]; Physical Units [752291 h] | 87,309.11 | 87,309.11 | ZNB | CON | MH |
| A76670 |  | Backfilling & Compaction | 10d | 2026-08-20 A | 2026-09-28 A | A76660, A76650, A76620 | 100% | 2026-11-29 | 2026-12-09 |  |  | ICKMO1-cost unite [38804 $]; Roller compactor [200 h]; Physical Units [334352 h] | 38,804.04 | 38,804.04 | ZNB | CON |  |
| A76660 |  | Testing & Inspection | 2d | 2026-10-10 | 2026-10-11 | A76640 |  |  |  | 39d | 0d | ICKMO1-cost unite [19402 $]; labor [1200 h]; Physical Units [167176 h] | 19,402.03 |  | ZNB | CON |  |

| ID | WBS | Activity | Duration | Start | Finish | Predecessors | Complete | Planned start | Planned finish | Total float | Free float | Resources | Cost | Actual cost | ALKHARJ INDUSTERIAL AREA - PROJECT ZONES | ALKHARJ INDUSTERIAL AREA - DECEPLINS | ALKHARJ INDUSTERIAL AREA - Wet networks |
| --- | --- | --- | --- | --- | --- | --- | --- | --- | --- | --- | --- | --- | --- | --- | --- | --- | --- |
|  | MH-4-M /MH-5-M | **MH-4-M /MH-5-M** |  | 2026-08-20 | 2026-10-11 |  |  |  |  |  |  |  |  |  |  |  |  |
| A76680 |  | Excavation | 4d | 2026-08-20 A | 2026-09-28 A | A76630, A1890 | 100% | 2026-03-05 | 2026-03-09 |  |  | ICKMO1-cost unite [29103 $]; Excavator [200 h]; Physical Units [250764 h] | 29,103.04 | 29,103.04 | ZNB | CON |  |
| A76690 |  | Pipe Laying | 14d | 2026-08-20 A | 2026-09-28 A | A76680 | 100% | 2026-03-10 | 2026-03-25 |  |  | ICKMO1-cost unite [19402 $]; boom truck [200 h]; labor [1200 h]; Storm Network Circular pipes (GRP) [80.79]; Physical Units [167176 h] | 19,402.03 | 19,402.03 | ZNB | CON | LAY |
| A76700 |  | Install Manhole | 4d | 2026-08-20 A | 2026-09-28 A | A76680 | 100% | 2026-03-10 | 2026-03-14 |  |  | ICKMO1-cost unite [87309.1 $]; boom truck [200 h]; labor [1200 h]; Physical Units [752291 h] | 87,309.11 | 87,309.11 | ZNB | CON | MH |
| A76720 |  | Backfilling & Compaction | 10d | 2026-08-20 A | 2026-09-28 A | A76710, A76700, A76670 | 100% | 2026-12-10 | 2026-12-21 |  |  | ICKMO1-cost unite [38804 $]; Roller compactor [200 h]; Physical Units [334352 h] | 38,804.04 | 38,804.04 | ZNB | CON |  |
| A76710 |  | Testing & Inspection | 2d | 2026-10-10 | 2026-10-11 | A76690 |  |  |  | 39d | 0d | ICKMO1-cost unite [19402 $]; labor [1200 h]; Physical Units [167176 h] | 19,402.03 |  | ZNB | CON |  |
|  | LR 26 | **LR 26** |  | 2026-08-20 | 2026-12-23 |  |  |  |  |  |  |  |  |  |  |  |  |
|  | MH-1-O /MH-2-O | **MH-1-O /MH-2-O** |  | 2026-08-20 | 2026-10-12 |  |  |  |  |  |  |  |  |  |  |  |  |
| A75930 |  | Excavation | 4d | 2026-08-20 A | 2026-09-28 A | A75880, A1890 | 100% | 2026-03-01 | 2026-03-04 |  |  | ICKMO1-cost unite [6929.29 $]; Excavator [200 h]; Physical Units [59705.6 h] | 6,929.29 | 6,929.29 | ZNB | CON |  |
| A75940 |  | Pipe Laying | 8d | 2026-08-20 A | 2026-09-28 A | A75930 | 100% | 2026-03-05 | 2026-03-14 |  |  | ICKMO1-cost unite [4619.53 $]; boom truck [200 h]; labor [1200 h]; Storm Network Circular pipes (GRP) [80.79]; Physical Units [39803.8 h] | 4,619.53 | 4,619.53 | ZNB | CON | LAY |
| A75950 |  | Install Manhole | 4d | 2026-08-20 A | 2026-09-28 A | A75930 | 100% | 2026-03-05 | 2026-03-09 |  |  | ICKMO1-cost unite [20787.9 $]; boom truck [200 h]; labor [1200 h]; Physical Units [179117 h] | 20,787.88 | 20,787.88 | ZNB | CON | MH |
| A75970 |  | Backfilling & Compaction | 10d | 2026-08-20 A | 2026-09-28 A | A75960, A75950, A75920 | 100% | 2026-11-18 | 2026-11-30 |  |  | ICKMO1-cost unite [9239.07 $]; Roller compactor [200 h]; Physical Units [79607.6 h] | 9,239.07 | 9,239.07 | ZNB | CON |  |
| A75960 |  | Testing & Inspection | 2d | 2026-10-10 | 2026-10-12 | A75940 |  |  |  | 33.9d | 0d | ICKMO1-cost unite [4619.53 $]; labor [1200 h]; Physical Units [39803.8 h] | 4,619.53 |  | ZNB | CON |  |
|  | MH-10-O /MH-11-O | **MH-10-O /MH-11-O** |  | 2026-10-14 | 2026-11-30 |  |  |  |  |  |  |  |  |  |  |  |  |
| A75780 |  | Excavation | 4d | 2026-10-14 | 2026-10-19 | A76380, A1890 |  |  |  | 47.9d | 0d | ICKMO1-cost unite [6929.29 $]; Excavator [200 h]; Physical Units [59705.6 h] | 6,929.29 |  | ZNB | CON |  |
| A75790 |  | Pipe Laying | 8d | 2026-10-19 | 2026-10-28 | A75780 |  |  |  | 47.9d | 0d | ICKMO1-cost unite [4619.53 $]; boom truck [200 h]; labor [1200 h]; Storm Network Circular pipes (GRP) [80.79]; Physical Units [39803.8 h] | 4,619.53 |  | ZNB | CON | LAY |
| A75800 |  | Install Manhole | 4d | 2026-10-19 | 2026-10-24 | A75780 |  |  |  | 53.9d | 22d | ICKMO1-cost unite [20787.9 $]; boom truck [200 h]; labor [1200 h]; Physical Units [179117 h] | 20,787.88 |  | ZNB | CON | MH |
| A75810 |  | Testing & Inspection | 2d | 2026-10-28 | 2026-10-31 | A75790 |  |  |  | 47.9d | 16d | ICKMO1-cost unite [4619.53 $]; labor [1200 h]; Physical Units [39803.8 h] | 4,619.53 |  | ZNB | CON |  |
| A75820 |  | Backfilling & Compaction | 10d | 2026-11-18 | 2026-11-30 | A75810, A75800, A76420 |  |  |  | 31.9d | 0d | ICKMO1-cost unite [9239.07 $]; Roller compactor [200 h]; Physical Units [79607.6 h] | 9,239.07 |  | ZNB | CON |  |
|  | MH-11-O /MH-12-O | **MH-11-O /MH-12-O** |  | 2026-10-19 | 2026-12-12 |  |  |  |  |  |  |  |  |  |  |  |  |
| A75680 |  | Excavation | 4d | 2026-10-19 | 2026-10-24 | A75780, A1890 |  |  |  | 53.9d | 0d | ICKMO1-cost unite [6929.29 $]; Excavator [200 h]; Physical Units [59705.6 h] | 6,929.29 |  | ZNB | CON |  |
| A75690 |  | Pipe Laying | 8d | 2026-10-24 | 2026-11-02 | A75680 |  |  |  | 53.9d | 0d | ICKMO1-cost unite [4619.53 $]; boom truck [200 h]; labor [1200 h]; Storm Network Circular pipes (GRP) [80.79]; Physical Units [39803.8 h] | 4,619.53 |  | ZNB | CON | LAY |
| A75700 |  | Install Manhole | 4d | 2026-10-24 | 2026-10-28 | A75680 |  |  |  | 59.9d | 28d | ICKMO1-cost unite [20787.9 $]; boom truck [200 h]; labor [1200 h]; Physical Units [179117 h] | 20,787.88 |  | ZNB | CON | MH |
| A75710 |  | Testing & Inspection | 2d | 2026-11-02 | 2026-11-04 | A75690 |  |  |  | 53.9d | 22d | ICKMO1-cost unite [4619.53 $]; labor [1200 h]; Physical Units [39803.8 h] | 4,619.53 |  | ZNB | CON |  |
| A75720 |  | Backfilling & Compaction | 10d | 2026-11-30 | 2026-12-12 | A75710, A75700, A75820 |  |  |  | 31.9d | 0d | ICKMO1-cost unite [9239.07 $]; Roller compactor [200 h]; Physical Units [79607.6 h] | 9,239.07 |  | ZNB | CON |  |

| ID | WBS | Activity | Duration | Start | Finish | Predecessors | Complete | Planned start | Planned finish | Total float | Free float | Resources | Cost | Actual cost | ALKHARJ INDUSTERIAL AREA - PROJECT ZONES | ALKHARJ INDUSTERIAL AREA - DECEPLINS | ALKHARJ INDUSTERIAL AREA - Wet networks |
| --- | --- | --- | --- | --- | --- | --- | --- | --- | --- | --- | --- | --- | --- | --- | --- | --- | --- |
|  | MH-13-O-1 /MH-13-O-0 | **MH-13-O-1 /MH-13-O-0** |  | 2026-08-20 | 2026-10-26 |  |  |  |  |  |  |  |  |  |  |  |  |
| A75380 |  | Excavation | 4d | 2026-08-20 A | 2026-09-28 A | A75430, A1890 | 100% | 2026-05-24 | 2026-05-27 |  |  | ICKMO1-cost unite [6929.29 $]; Excavator [200 h]; Physical Units [59705.6 h] | 6,929.29 | 6,929.29 | ZNB | CON |  |
| A75390 |  | Pipe Laying | 8d | 2026-08-20 A | 2026-09-28 A | A75380 | 100% | 2026-05-28 | 2026-06-06 |  |  | ICKMO1-cost unite [4619.53 $]; boom truck [200 h]; labor [1200 h]; Storm Network Circular pipes (GRP) [80.79]; Physical Units [39803.8 h] | 4,619.53 | 4,619.53 | ZNB | CON | LAY |
| A75400 |  | Install Manhole | 4d | 2026-08-20 A | 2026-09-28 A | A75380 | 100% | 2026-05-28 | 2026-06-01 |  |  | ICKMO1-cost unite [20787.9 $]; boom truck [200 h]; labor [1200 h]; Physical Units [179117 h] | 20,787.88 | 20,787.88 | ZNB | CON | MH |
| A75420 |  | Backfilling & Compaction | 10d | 2026-08-20 A | 2026-09-28 A | A75410, A75400, A75470 | 100% | 2027-06-09 | 2027-06-21 |  |  | ICKMO1-cost unite [9239.07 $]; Roller compactor [200 h]; Physical Units [79607.6 h] | 9,239.07 | 9,239.07 | ZNB | CON |  |
| A75410 |  | Testing & Inspection | 2d | 2026-10-24 | 2026-10-26 | A75390 |  |  |  | 81.9d | 50d | ICKMO1-cost unite [4619.53 $]; labor [1200 h]; Physical Units [39803.8 h] | 4,619.53 |  | ZNB | CON |  |
|  | MH-13-O-2 /MH-13-O-1 | **MH-13-O-2 /MH-13-O-1** |  | 2026-08-20 | 2026-10-26 |  |  |  |  |  |  |  |  |  |  |  |  |
| A75430 |  | Excavation | 4d | 2026-08-20 A | 2026-09-28 A | A75480, A1890 | 100% | 2026-05-19 | 2026-05-23 |  |  | ICKMO1-cost unite [6929.29 $]; Excavator [200 h]; Physical Units [59705.6 h] | 6,929.29 | 6,929.29 | ZNB | CON |  |
| A75440 |  | Pipe Laying | 8d | 2026-08-20 A | 2026-09-28 A | A75430 | 100% | 2026-05-24 | 2026-06-01 |  |  | ICKMO1-cost unite [4619.53 $]; boom truck [200 h]; labor [1200 h]; Storm Network Circular pipes (GRP) [80.79]; Physical Units [39803.8 h] | 4,619.53 | 4,619.53 | ZNB | CON | LAY |
| A75450 |  | Install Manhole | 4d | 2026-08-20 A | 2026-09-28 A | A75430 | 100% | 2026-05-24 | 2026-05-27 |  |  | ICKMO1-cost unite [20787.9 $]; boom truck [200 h]; labor [1200 h]; Physical Units [179117 h] | 20,787.88 | 20,787.88 | ZNB | CON | MH |
| A75470 |  | Backfilling & Compaction | 10d | 2026-08-20 A | 2026-09-28 A | A75460, A75450, A75520 | 100% | 2027-05-29 | 2027-06-09 |  |  | ICKMO1-cost unite [9239.07 $]; Roller compactor [200 h]; Physical Units [79607.6 h] | 9,239.07 | 9,239.07 | ZNB | CON |  |
| A75460 |  | Testing & Inspection | 2d | 2026-10-24 | 2026-10-26 | A75440 |  |  |  | 81.9d | 50d | ICKMO1-cost unite [4619.53 $]; labor [1200 h]; Physical Units [39803.8 h] | 4,619.53 |  | ZNB | CON |  |
|  | MH-13-O-3 /MH-13-O-2 | **MH-13-O-3 /MH-13-O-2** |  | 2026-08-20 | 2026-10-26 |  |  |  |  |  |  |  |  |  |  |  |  |
| A75480 |  | Excavation | 4d | 2026-08-20 A | 2026-09-28 A | A75530, A1890 | 100% | 2026-05-14 | 2026-05-18 |  |  | ICKMO1-cost unite [6929.29 $]; Excavator [200 h]; Physical Units [59705.6 h] | 6,929.29 | 6,929.29 | ZNB | CON |  |
| A75490 |  | Pipe Laying | 8d | 2026-08-20 A | 2026-09-28 A | A75480 | 100% | 2026-05-19 | 2026-05-27 |  |  | ICKMO1-cost unite [4619.53 $]; boom truck [200 h]; labor [1200 h]; Storm Network Circular pipes (GRP) [80.79]; Physical Units [39803.8 h] | 4,619.53 | 4,619.53 | ZNB | CON | LAY |
| A75500 |  | Install Manhole | 4d | 2026-08-20 A | 2026-09-28 A | A75480 | 100% | 2026-05-19 | 2026-05-23 |  |  | ICKMO1-cost unite [20787.9 $]; boom truck [200 h]; labor [1200 h]; Physical Units [179117 h] | 20,787.88 | 20,787.88 | ZNB | CON | MH |
| A75520 |  | Backfilling & Compaction | 10d | 2026-08-20 A | 2026-09-28 A | A75510, A75500, A75570 | 100% | 2027-05-17 | 2027-05-29 |  |  | ICKMO1-cost unite [9239.07 $]; Roller compactor [200 h]; Physical Units [79607.6 h] | 9,239.07 | 9,239.07 | ZNB | CON |  |
| A75510 |  | Testing & Inspection | 2d | 2026-10-24 | 2026-10-26 | A75490 |  |  |  | 81.9d | 50d | ICKMO1-cost unite [4619.53 $]; labor [1200 h]; Physical Units [39803.8 h] | 4,619.53 |  | ZNB | CON |  |
|  | MH-13-O-4 /MH-13-O-3 | **MH-13-O-4 /MH-13-O-3** |  | 2026-08-20 | 2026-10-26 |  |  |  |  |  |  |  |  |  |  |  |  |
| A75530 |  | Excavation | 4d | 2026-08-20 A | 2026-09-28 A | A75580, A1890 | 100% | 2026-05-10 | 2026-05-13 |  |  | ICKMO1-cost unite [6929.29 $]; Excavator [200 h]; Physical Units [59705.6 h] | 6,929.29 | 6,929.29 | ZNB | CON |  |
| A75540 |  | Pipe Laying | 8d | 2026-08-20 A | 2026-09-28 A | A75530 | 100% | 2026-05-14 | 2026-05-23 |  |  | ICKMO1-cost unite [4619.53 $]; boom truck [200 h]; labor [1200 h]; Storm Network Circular pipes (GRP) [80.79]; Physical Units [39803.8 h] | 4,619.53 | 4,619.53 | ZNB | CON | LAY |
| A75550 |  | Install Manhole | 4d | 2026-08-20 A | 2026-09-28 A | A75530 | 100% | 2026-05-14 | 2026-05-18 |  |  | ICKMO1-cost unite [20787.9 $]; boom truck [200 h]; labor [1200 h]; Physical Units [179117 h] | 20,787.88 | 20,787.88 | ZNB | CON | MH |
| A75570 |  | Backfilling & Compaction | 10d | 2026-08-20 A | 2026-09-28 A | A75560, A75550, A75620 | 100% | 2027-05-05 | 2027-05-17 |  |  | ICKMO1-cost unite [9239.07 $]; Roller compactor [200 h]; Physical Units [79607.6 h] | 9,239.07 | 9,239.07 | ZNB | CON |  |
| A75560 |  | Testing & Inspection | 2d | 2026-10-24 | 2026-10-26 | A75540 |  |  |  | 81.9d | 50d | ICKMO1-cost unite [4619.53 $]; labor [1200 h]; Physical Units [39803.8 h] | 4,619.53 |  | ZNB | CON |  |

| ID | WBS | Activity | Duration | Start | Finish | Predecessors | Complete | Planned start | Planned finish | Total float | Free float | Resources | Cost | Actual cost | ALKHARJ INDUSTERIAL AREA - PROJECT ZONES | ALKHARJ INDUSTERIAL AREA - DECEPLINS | ALKHARJ INDUSTERIAL AREA - Wet networks |
| --- | --- | --- | --- | --- | --- | --- | --- | --- | --- | --- | --- | --- | --- | --- | --- | --- | --- |
|  | MH-13-O-5 /MH-13-O-4 | **MH-13-O-5 /MH-13-O-4** |  | 2026-08-20 | 2026-10-26 |  |  |  |  |  |  |  |  |  |  |  |  |
| A75580 |  | Excavation | 4d | 2026-08-20 A | 2026-09-28 A | A75630, A1890 | 100% | 2026-05-05 | 2026-05-09 |  |  | ICKMO1-cost unite [6929.29 $]; Excavator [200 h]; Physical Units [59705.6 h] | 6,929.29 | 6,929.29 | ZNB | CON |  |
| A75590 |  | Pipe Laying | 8d | 2026-08-20 A | 2026-09-28 A | A75580 | 100% | 2026-05-10 | 2026-05-18 |  |  | ICKMO1-cost unite [4619.53 $]; boom truck [200 h]; labor [1200 h]; Storm Network Circular pipes (GRP) [80.79]; Physical Units [39803.8 h] | 4,619.53 | 4,619.53 | ZNB | CON | LAY |
| A75600 |  | Install Manhole | 4d | 2026-08-20 A | 2026-09-28 A | A75580 | 100% | 2026-05-10 | 2026-05-13 |  |  | ICKMO1-cost unite [20787.9 $]; boom truck [200 h]; labor [1200 h]; Physical Units [179117 h] | 20,787.88 | 20,787.88 | ZNB | CON | MH |
| A75620 |  | Backfilling & Compaction | 4d | 2026-08-20 A | 2026-09-28 A | A75610, A75600, A75670 | 100% | 2027-05-01 | 2027-05-05 |  |  | ICKMO1-cost unite [9239.07 $]; Roller compactor [200 h]; Physical Units [79607.6 h] | 9,239.07 | 9,239.07 | ZNB | CON |  |
| A75610 |  | Testing & Inspection | 2d | 2026-10-24 | 2026-10-26 | A75590 |  |  |  | 81.9d | 50d | ICKMO1-cost unite [4619.53 $]; labor [1200 h]; Physical Units [39803.8 h] | 4,619.53 |  | ZNB | CON |  |
|  | MH-13-O-6 /MH-13-O-5 | **MH-13-O-6 /MH-13-O-5** |  | 2026-08-20 | 2026-10-26 |  |  |  |  |  |  |  |  |  |  |  |  |
| A75630 |  | Excavation | 4d | 2026-08-20 A | 2026-09-28 A | A75730, A1890 | 100% | 2026-04-30 | 2026-05-04 |  |  | ICKMO1-cost unite [6929.29 $]; Excavator [200 h]; Physical Units [59705.6 h] | 6,929.29 | 6,929.29 | ZNB | CON |  |
| A75640 |  | Pipe Laying | 8d | 2026-08-20 A | 2026-09-28 A | A75630 | 100% | 2026-05-05 | 2026-05-13 |  |  | ICKMO1-cost unite [4619.53 $]; boom truck [200 h]; labor [1200 h]; Storm Network Circular pipes (GRP) [80.79]; Physical Units [39803.8 h] | 4,619.53 | 4,619.53 | ZNB | CON | LAY |
| A75650 |  | Install Manhole | 4d | 2026-08-20 A | 2026-09-28 A | A75630 | 100% | 2026-05-05 | 2026-05-09 |  |  | ICKMO1-cost unite [20787.9 $]; boom truck [200 h]; labor [1200 h]; Physical Units [179117 h] | 20,787.88 | 20,787.88 | ZNB | CON | MH |
| A75670 |  | Backfilling & Compaction | 10d | 2026-08-20 A | 2026-09-28 A | A75660, A75650, A75770 | 100% | 2027-04-19 | 2027-05-01 |  |  | ICKMO1-cost unite [9239.07 $]; Roller compactor [200 h]; Physical Units [79607.6 h] | 9,239.07 | 9,239.07 | ZNB | CON |  |
| A75660 |  | Testing & Inspection | 2d | 2026-10-24 | 2026-10-26 | A75640 |  |  |  | 81.9d | 50d | ICKMO1-cost unite [4619.53 $]; labor [1200 h]; Physical Units [39803.8 h] | 4,619.53 |  | ZNB | CON |  |
|  | MH-13-O-7 /MH-13-O-6 | **MH-13-O-7 /MH-13-O-6** |  | 2026-08-20 | 2026-12-23 |  |  |  |  |  |  |  |  |  |  |  |  |
| A75730 |  | Excavation | 4d | 2026-08-20 A | 2026-09-28 A | A75680, A1890 | 100% | 2026-04-26 | 2026-04-29 |  |  | ICKMO1-cost unite [6929.29 $]; Excavator [200 h]; Physical Units [59705.6 h] | 6,929.29 | 6,929.29 | ZNB | CON |  |
| A75740 |  | Pipe Laying | 8d | 2026-10-03 A | 2026-10-08 A | A75730 | 100% | 2026-10-24 | 2026-11-02 |  |  | ICKMO1-cost unite [4619.53 $]; boom truck [200 h]; labor [1200 h]; Storm Network Circular pipes (GRP) [80.79]; Physical Units [39803.8 h] | 4,619.53 | 4,619.53 | ZNB | CON | LAY |
| A75750 |  | Install Manhole | 4d | 2026-10-24 | 2026-10-28 | A75730 |  |  |  | 69.9d | 38d | ICKMO1-cost unite [20787.9 $]; boom truck [200 h]; labor [1200 h]; Physical Units [179117 h] | 20,787.88 |  | ZNB | CON | MH |
| A75760 |  | Testing & Inspection | 2d | 2026-10-24 | 2026-10-26 | A75740 |  |  |  | 71.9d | 40d | ICKMO1-cost unite [4619.53 $]; labor [1200 h]; Physical Units [39803.8 h] | 4,619.53 |  | ZNB | CON |  |
| A75770 |  | Backfilling & Compaction | 10d | 2026-12-12 | 2026-12-23 | A75760, A75750, A75720 |  |  |  | 31.9d | 0d | ICKMO1-cost unite [9239.07 $]; Roller compactor [200 h]; Physical Units [79607.6 h] | 9,239.07 |  | ZNB | CON |  |
|  | MH-2-O /MH-3-O | **MH-2-O /MH-3-O** |  | 2026-08-20 | 2026-10-12 |  |  |  |  |  |  |  |  |  |  |  |  |
| A75980 |  | Excavation | 4d | 2026-08-20 A | 2026-09-28 A | A75930, A1890 | 100% | 2026-03-05 | 2026-03-09 |  |  | ICKMO1-cost unite [6929.29 $]; Excavator [200 h]; Physical Units [59705.6 h] | 6,929.29 | 6,929.29 | ZNB | CON |  |
| A75990 |  | Pipe Laying | 8d | 2026-08-20 A | 2026-09-28 A | A75980 | 100% | 2026-03-10 | 2026-03-18 |  |  | ICKMO1-cost unite [4619.53 $]; boom truck [200 h]; labor [1200 h]; Storm Network Circular pipes (GRP) [80.79]; Physical Units [39803.8 h] | 4,619.53 | 4,619.53 | ZNB | CON | LAY |
| A76000 |  | Install Manhole | 4d | 2026-08-20 A | 2026-09-28 A | A75980 | 100% | 2026-03-10 | 2026-03-14 |  |  | ICKMO1-cost unite [20787.9 $]; boom truck [200 h]; labor [1200 h]; Physical Units [179117 h] | 20,787.88 | 20,787.88 | ZNB | CON | MH |
| A76020 |  | Backfilling & Compaction | 10d | 2026-08-20 A | 2026-09-28 A | A76010, A76000, A75970 | 100% | 2026-11-30 | 2026-12-12 |  |  | ICKMO1-cost unite [9239.07 $]; Roller compactor [200 h]; Physical Units [79607.6 h] | 9,239.07 | 9,239.07 | ZNB | CON |  |
| A76010 |  | Testing & Inspection | 2d | 2026-10-10 | 2026-10-12 | A75990 |  |  |  | 33.9d | 0d | ICKMO1-cost unite [4619.53 $]; labor [1200 h]; Physical Units [39803.8 h] | 4,619.53 |  | ZNB | CON |  |

| ID | WBS | Activity | Duration | Start | Finish | Predecessors | Complete | Planned start | Planned finish | Total float | Free float | Resources | Cost | Actual cost | ALKHARJ INDUSTERIAL AREA - PROJECT ZONES | ALKHARJ INDUSTERIAL AREA - DECEPLINS | ALKHARJ INDUSTERIAL AREA - Wet networks |
| --- | --- | --- | --- | --- | --- | --- | --- | --- | --- | --- | --- | --- | --- | --- | --- | --- | --- |
|  | MH-3-O /MH-4-O | **MH-3-O /MH-4-O** |  | 2026-08-20 | 2026-10-12 |  |  |  |  |  |  |  |  |  |  |  |  |
| A76030 |  | Excavation | 4d | 2026-08-20 A | 2026-09-28 A | A75980, A1890 | 100% | 2026-03-10 | 2026-03-14 |  |  | ICKMO1-cost unite [6929.29 $]; Excavator [200 h]; Physical Units [59705.6 h] | 6,929.29 | 6,929.29 | ZNB | CON |  |
| A76040 |  | Pipe Laying | 4d | 2026-08-20 A | 2026-09-28 A | A76030 | 100% | 2026-03-15 | 2026-03-18 |  |  | ICKMO1-cost unite [4619.53 $]; boom truck [200 h]; labor [1200 h]; Storm Network Circular pipes (GRP) [80.79]; Physical Units [39803.8 h] | 4,619.53 | 4,619.53 | ZNB | CON | LAY |
| A76050 |  | Install Manhole | 4d | 2026-08-20 A | 2026-09-28 A | A76030 | 100% | 2026-03-15 | 2026-03-18 |  |  | ICKMO1-cost unite [20787.9 $]; boom truck [200 h]; labor [1200 h]; Physical Units [179117 h] | 20,787.88 | 20,787.88 | ZNB | CON | MH |
| A76070 |  | Backfilling & Compaction | 10d | 2026-08-20 A | 2026-09-28 A | A76060, A76050, A76020 | 100% | 2026-12-12 | 2026-12-23 |  |  | ICKMO1-cost unite [9239.07 $]; Roller compactor [200 h]; Physical Units [79607.6 h] | 9,239.07 | 9,239.07 | ZNB | CON |  |
| A76060 |  | Testing & Inspection | 2d | 2026-10-10 | 2026-10-12 | A76040 |  |  |  | 33.9d | 0d | ICKMO1-cost unite [4619.53 $]; labor [1200 h]; Physical Units [39803.8 h] | 4,619.53 |  | ZNB | CON |  |
|  | MH-4-O /MH-5-O | **MH-4-O /MH-5-O** |  | 2026-08-20 | 2026-10-12 |  |  |  |  |  |  |  |  |  |  |  |  |
| A76080 |  | Excavation | 4d | 2026-08-20 A | 2026-09-28 A | A76030, A1890 | 100% | 2026-03-15 | 2026-03-18 |  |  | ICKMO1-cost unite [6929.29 $]; Excavator [200 h]; Physical Units [59705.6 h] | 6,929.29 | 6,929.29 | ZNB | CON |  |
| A76090 |  | Pipe Laying | 8d | 2026-08-20 A | 2026-09-28 A | A76080 | 100% | 2026-03-19 | 2026-03-28 |  |  | ICKMO1-cost unite [4619.53 $]; boom truck [200 h]; labor [1200 h]; Storm Network Circular pipes (GRP) [80.79]; Physical Units [39803.8 h] | 4,619.53 | 4,619.53 | ZNB | CON | LAY |
| A76100 |  | Install Manhole | 4d | 2026-08-20 A | 2026-09-28 A | A76080 | 100% | 2026-03-19 | 2026-03-23 |  |  | ICKMO1-cost unite [20787.9 $]; boom truck [200 h]; labor [1200 h]; Physical Units [179117 h] | 20,787.88 | 20,787.88 | ZNB | CON | MH |
| A76120 |  | Backfilling & Compaction | 10d | 2026-08-20 A | 2026-09-28 A | A76110, A76100, A76070 | 100% | 2026-12-23 | 2027-01-04 |  |  | ICKMO1-cost unite [9239.07 $]; Roller compactor [200 h]; Physical Units [79607.6 h] | 9,239.07 | 9,239.07 | ZNB | CON |  |
| A76110 |  | Testing & Inspection | 2d | 2026-10-10 | 2026-10-12 | A76090 |  |  |  | 33.9d | 0d | ICKMO1-cost unite [4619.53 $]; labor [1200 h]; Physical Units [39803.8 h] | 4,619.53 |  | ZNB | CON |  |
|  | MH-5-M-2 /MH-5-M-1 | **MH-5-M-2 /MH-5-M-1** |  | 2026-08-20 | 2026-10-12 |  |  |  |  |  |  |  |  |  |  |  |  |
| A75880 |  | Excavation | 4d | 2026-08-20 A | 2026-09-28 A | A75830, A1890 | 100% | 2026-02-24 | 2026-02-28 |  |  | ICKMO1-cost unite [6929.29 $]; Excavator [200 h]; Physical Units [59705.6 h] | 6,929.29 | 6,929.29 | ZNB | CON |  |
| A75890 |  | Pipe Laying | 8d | 2026-08-20 A | 2026-09-28 A | A75880 | 100% | 2026-03-01 | 2026-03-09 |  |  | ICKMO1-cost unite [4619.53 $]; boom truck [200 h]; labor [1200 h]; Storm Network Circular pipes (GRP) [80.79]; Physical Units [39803.8 h] | 4,619.53 | 4,619.53 | ZNB | CON | LAY |
| A75900 |  | Install Manhole | 4d | 2026-08-20 A | 2026-09-28 A | A75880 | 100% | 2026-03-01 | 2026-03-04 |  |  | ICKMO1-cost unite [20787.9 $]; boom truck [200 h]; labor [1200 h]; Physical Units [179117 h] | 20,787.88 | 20,787.88 | ZNB | CON | MH |
| A75920 |  | Backfilling & Compaction | 4d | 2026-08-20 A | 2026-09-28 A | A75910, A75900, A75870 | 100% | 2026-11-14 | 2026-11-18 |  |  | ICKMO1-cost unite [9239.07 $]; Roller compactor [200 h]; Physical Units [79607.6 h] | 9,239.07 | 9,239.07 | ZNB | CON |  |
| A75910 |  | Testing & Inspection | 2d | 2026-10-10 | 2026-10-12 | A75890 |  |  |  | 33.9d | 0d | ICKMO1-cost unite [4619.53 $]; labor [1200 h]; Physical Units [39803.8 h] | 4,619.53 |  | ZNB | CON |  |
|  | MH-5-M-3 /MH-5-M-2 | **MH-5-M-3 /MH-5-M-2** |  | 2026-08-20 | 2026-10-12 |  |  |  |  |  |  |  |  |  |  |  |  |
| A75830 |  | Excavation | 4d | 2026-08-20 A | 2026-09-28 A | A66630, A66640, A1890 | 100% | 2026-02-19 | 2026-02-23 |  |  | ICKMO1-cost unite [6929.29 $]; Excavator [200 h]; Physical Units [59705.6 h] | 6,929.29 | 6,929.29 | ZNB | CON |  |
| A75840 |  | Pipe Laying | 8d | 2026-08-20 A | 2026-09-28 A | A75830 | 100% | 2026-02-24 | 2026-03-04 |  |  | ICKMO1-cost unite [4619.53 $]; boom truck [200 h]; labor [1200 h]; Storm Network Circular pipes (GRP) [80.79]; Physical Units [39803.8 h] | 4,619.53 | 4,619.53 | ZNB | CON | LAY |
| A75850 |  | Install Manhole | 4d | 2026-08-20 A | 2026-09-28 A | A75830 | 100% | 2026-02-24 | 2026-02-28 |  |  | ICKMO1-cost unite [20787.9 $]; boom truck [200 h]; labor [1200 h]; Physical Units [179117 h] | 20,787.88 | 20,787.88 | ZNB | CON | MH |
| A75870 |  | Backfilling & Compaction | 10d | 2026-08-20 A | 2026-09-28 A | A75860, A75850 | 100% | 2026-11-02 | 2026-11-14 |  |  | ICKMO1-cost unite [9239.07 $]; Roller compactor [200 h]; Physical Units [79607.6 h] | 9,239.07 | 9,239.07 | ZNB | CON |  |
| A75860 |  | Testing & Inspection | 2d | 2026-10-10 | 2026-10-12 | A75840 |  |  |  | 5d | 0d | ICKMO1-cost unite [4619.53 $]; labor [1200 h]; Physical Units [39803.8 h] | 4,619.53 |  | ZNB | CON |  |

| ID | WBS | Activity | Duration | Start | Finish | Predecessors | Complete | Planned start | Planned finish | Total float | Free float | Resources | Cost | Actual cost | ALKHARJ INDUSTERIAL AREA - PROJECT ZONES | ALKHARJ INDUSTERIAL AREA - DECEPLINS | ALKHARJ INDUSTERIAL AREA - Wet networks |
| --- | --- | --- | --- | --- | --- | --- | --- | --- | --- | --- | --- | --- | --- | --- | --- | --- | --- |
|  | MH-5-O /MH-6-O | **MH-5-O /MH-6-O** |  | 2026-08-20 | 2026-10-26 |  |  |  |  |  |  |  |  |  |  |  |  |
| A76130 |  | Excavation | 4d | 2026-08-20 A | 2026-09-28 A | A76080, A1890 | 100% | 2026-03-19 | 2026-03-23 |  |  | ICKMO1-cost unite [6929.29 $]; Excavator [200 h]; Physical Units [59705.6 h] | 6,929.29 | 6,929.29 | ZNB | CON |  |
| A76140 |  | Pipe Laying | 8d | 2026-10-03 A | 2026-10-08 A | A76130 | 100% | 2026-10-10 | 2026-10-19 |  |  | ICKMO1-cost unite [4619.53 $]; boom truck [200 h]; labor [1200 h]; Storm Network Circular pipes (GRP) [80.79]; Physical Units [39803.8 h] | 4,619.53 | 4,619.53 | ZNB | CON | LAY |
| A76150 |  | Install Manhole | 4d | 2026-10-10 | 2026-10-14 | A76130 |  |  |  | 31.9d | 0d | ICKMO1-cost unite [20787.9 $]; boom truck [200 h]; labor [1200 h]; Physical Units [179117 h] | 20,787.88 |  | ZNB | CON | MH |
| A76160 |  | Testing & Inspection | 2d | 2026-10-10 | 2026-10-12 | A76140 |  |  |  | 33.9d | 2d | ICKMO1-cost unite [4619.53 $]; labor [1200 h]; Physical Units [39803.8 h] | 4,619.53 |  | ZNB | CON |  |
| A76170 |  | Backfilling & Compaction | 10d | 2026-10-14 | 2026-10-26 | A76160, A76150, A76120 |  |  |  | 31.9d | 0d | ICKMO1-cost unite [9239.07 $]; Roller compactor [200 h]; Physical Units [79607.6 h] | 9,239.07 |  | ZNB | CON |  |
|  | MH-6-O /MH-10-O | **MH-6-O /MH-10-O** |  | 2026-10-10 | 2026-11-18 |  |  |  |  |  |  |  |  |  |  |  |  |
| A76380 |  | Excavation | 4d | 2026-10-10 | 2026-10-14 | A76430, A1890 |  |  |  | 41.9d | 0d | ICKMO1-cost unite [6929.29 $]; Excavator [200 h]; Physical Units [59705.6 h] | 6,929.29 |  | ZNB | CON |  |
| A76390 |  | Pipe Laying | 8d | 2026-10-14 | 2026-10-24 | A76380 |  |  |  | 41.9d | 0d | ICKMO1-cost unite [4619.53 $]; boom truck [200 h]; labor [1200 h]; Storm Network Circular pipes (GRP) [80.79]; Physical Units [39803.8 h] | 4,619.53 |  | ZNB | CON | LAY |
| A76400 |  | Install Manhole | 4d | 2026-10-14 | 2026-10-19 | A76380 |  |  |  | 47.9d | 16d | ICKMO1-cost unite [20787.9 $]; boom truck [200 h]; labor [1200 h]; Physical Units [179117 h] | 20,787.88 |  | ZNB | CON | MH |
| A76410 |  | Testing & Inspection | 2d | 2026-10-24 | 2026-10-26 | A76390 |  |  |  | 41.9d | 10d | ICKMO1-cost unite [4619.53 $]; labor [1200 h]; Physical Units [39803.8 h] | 4,619.53 |  | ZNB | CON |  |
| A76420 |  | Backfilling & Compaction | 10d | 2026-11-07 | 2026-11-18 | A76410, A76400, A76470 |  |  |  | 31.9d | 0d | ICKMO1-cost unite [9239.07 $]; Roller compactor [200 h]; Physical Units [79607.6 h] | 9,239.07 |  | ZNB | CON |  |
|  | MH-6-O /MH-7-O | **MH-6-O /MH-7-O** |  | 2026-08-20 | 2026-10-12 |  |  |  |  |  |  |  |  |  |  |  |  |
| A76180 |  | Excavation | 4d | 2026-08-20 A | 2026-09-28 A | A76130, A1890 | 100% | 2026-03-24 | 2026-03-28 |  |  | ICKMO1-cost unite [6929.29 $]; Excavator [200 h]; Physical Units [59705.6 h] | 6,929.29 | 6,929.29 | ZNB | CON |  |
| A76190 |  | Pipe Laying | 8d | 2026-08-20 A | 2026-09-28 A | A76180 | 100% | 2026-03-29 | 2026-04-06 |  |  | ICKMO1-cost unite [4619.53 $]; boom truck [200 h]; labor [1200 h]; Storm Network Circular pipes (GRP) [80.79]; Physical Units [39803.8 h] | 4,619.53 | 4,619.53 | ZNB | CON | LAY |
| A76200 |  | Install Manhole | 4d | 2026-08-20 A | 2026-09-28 A | A76180 | 100% | 2026-03-29 | 2026-04-01 |  |  | ICKMO1-cost unite [20787.9 $]; boom truck [200 h]; labor [1200 h]; Physical Units [179117 h] | 20,787.88 | 20,787.88 | ZNB | CON | MH |
| A76220 |  | Backfilling & Compaction | 10d | 2026-08-20 A | 2026-09-28 A | A76210, A76200, A76170 | 100% | 2027-01-16 | 2027-01-27 |  |  | ICKMO1-cost unite [9239.07 $]; Roller compactor [200 h]; Physical Units [79607.6 h] | 9,239.07 | 9,239.07 | ZNB | CON |  |
| A76210 |  | Testing & Inspection | 2d | 2026-10-10 | 2026-10-12 | A76190 |  |  |  | 43.9d | 12d | ICKMO1-cost unite [4619.53 $]; labor [1200 h]; Physical Units [39803.8 h] | 4,619.53 |  | ZNB | CON |  |
|  | MH-7-O /MH-8-O | **MH-7-O /MH-8-O** |  | 2026-08-20 | 2026-10-12 |  |  |  |  |  |  |  |  |  |  |  |  |
| A76230 |  | Excavation | 4d | 2026-08-20 A | 2026-09-28 A | A76180, A1890 | 100% | 2026-03-29 | 2026-04-01 |  |  | ICKMO1-cost unite [6929.29 $]; Excavator [200 h]; Physical Units [59705.6 h] | 6,929.29 | 6,929.29 | ZNB | CON |  |
| A76240 |  | Pipe Laying | 8d | 2026-08-20 A | 2026-09-28 A | A76230 | 100% | 2026-04-02 | 2026-04-11 |  |  | ICKMO1-cost unite [4619.53 $]; boom truck [200 h]; labor [1200 h]; Storm Network Circular pipes (GRP) [80.79]; Physical Units [39803.8 h] | 4,619.53 | 4,619.53 | ZNB | CON | LAY |
| A76250 |  | Install Manhole | 4d | 2026-08-20 A | 2026-09-28 A | A76230 | 100% | 2026-04-02 | 2026-04-06 |  |  | ICKMO1-cost unite [20787.9 $]; boom truck [200 h]; labor [1200 h]; Physical Units [179117 h] | 20,787.88 | 20,787.88 | ZNB | CON | MH |
| A76270 |  | Backfilling & Compaction | 10d | 2026-08-20 A | 2026-09-28 A | A76260, A76250, A76220 | 100% | 2027-01-27 | 2027-02-08 |  |  | ICKMO1-cost unite [9239.07 $]; Roller compactor [200 h]; Physical Units [79607.6 h] | 9,239.07 | 9,239.07 | ZNB | CON |  |
| A76260 |  | Testing & Inspection | 2d | 2026-10-10 | 2026-10-12 | A76240 |  |  |  | 43.9d | 12d | ICKMO1-cost unite [4619.53 $]; labor [1200 h]; Physical Units [39803.8 h] | 4,619.53 |  | ZNB | CON |  |

| ID | WBS | Activity | Duration | Start | Finish | Predecessors | Complete | Planned start | Planned finish | Total float | Free float | Resources | Cost | Actual cost | ALKHARJ INDUSTERIAL AREA - PROJECT ZONES | ALKHARJ INDUSTERIAL AREA - DECEPLINS | ALKHARJ INDUSTERIAL AREA - Wet networks |
| --- | --- | --- | --- | --- | --- | --- | --- | --- | --- | --- | --- | --- | --- | --- | --- | --- | --- |
|  | MH-8-O /MH-9-O | **MH-8-O /MH-9-O** |  | 2026-08-20 | 2026-11-07 |  |  |  |  |  |  |  |  |  |  |  |  |
| A76280 |  | Excavation | 4d | 2026-08-20 A | 2026-09-28 A | A76230, A1890 | 100% | 2026-04-02 | 2026-04-06 |  |  | ICKMO1-cost unite [6929.29 $]; Excavator [200 h]; Physical Units [59705.6 h] | 6,929.29 | 6,929.29 | ZNB | CON |  |
| A76290 |  | Pipe Laying | 8d | 2026-10-03 A | 2026-10-08 A | A76280 | 100% | 2026-10-10 | 2026-10-19 |  |  | ICKMO1-cost unite [4619.53 $]; boom truck [200 h]; labor [1200 h]; Storm Network Circular pipes (GRP) [80.79]; Physical Units [39803.8 h] | 4,619.53 | 4,619.53 | ZNB | CON | LAY |
| A76300 |  | Install Manhole | 4d | 2026-10-10 | 2026-10-14 | A76280 |  |  |  | 41.9d | 10d | ICKMO1-cost unite [20787.9 $]; boom truck [200 h]; labor [1200 h]; Physical Units [179117 h] | 20,787.88 |  | ZNB | CON | MH |
| A76310 |  | Testing & Inspection | 2d | 2026-10-10 | 2026-10-12 | A76290 |  |  |  | 43.9d | 12d | ICKMO1-cost unite [4619.53 $]; labor [1200 h]; Physical Units [39803.8 h] | 4,619.53 |  | ZNB | CON |  |
| A76320 |  | Backfilling & Compaction | 10d | 2026-10-26 | 2026-11-07 | A76310, A76300, A76270 |  |  |  | 31.9d | 0d | ICKMO1-cost unite [9239.07 $]; Roller compactor [200 h]; Physical Units [79607.6 h] | 9,239.07 |  | ZNB | CON |  |
|  | MH-9-O /MH-6-O | **MH-9-O /MH-6-O** |  | 2026-08-20 | 2026-10-12 |  |  |  |  |  |  |  |  |  |  |  |  |
| A76430 |  | Excavation | 4d | 2026-08-20 A | 2026-09-28 A | A1890, A76280 | 100% | 2026-04-07 | 2026-04-11 |  |  | ICKMO1-cost unite [6929.29 $]; Excavator [200 h]; Physical Units [59705.6 h] | 6,929.29 | 6,929.29 | ZNB | CON |  |
| A76440 |  | Pipe Laying | 8d | 2026-08-20 A | 2026-09-28 A | A76430 | 100% | 2026-04-12 | 2026-04-20 |  |  | ICKMO1-cost unite [4619.53 $]; boom truck [200 h]; labor [1200 h]; Storm Network Circular pipes (GRP) [80.79]; Physical Units [39803.8 h] | 4,619.53 | 4,619.53 | ZNB | CON | LAY |
| A76450 |  | Install Manhole | 4d | 2026-08-20 A | 2026-09-28 A | A76430 | 100% | 2026-04-12 | 2026-04-15 |  |  | ICKMO1-cost unite [20787.9 $]; boom truck [200 h]; labor [1200 h]; Physical Units [179117 h] | 20,787.88 | 20,787.88 | ZNB | CON | MH |
| A76470 |  | Backfilling & Compaction | 10d | 2026-08-20 A | 2026-09-28 A | A76460, A76450, A76320, A76280, A1890 | 100% | 2027-02-20 | 2027-03-03 |  |  | ICKMO1-cost unite [9239.07 $]; Roller compactor [200 h]; Physical Units [79607.6 h] | 9,239.07 | 9,239.07 | ZNB | CON |  |
| A76460 |  | Testing & Inspection | 2d | 2026-10-10 | 2026-10-12 | A76440 |  |  |  | 53.9d | 22d | ICKMO1-cost unite [4619.53 $]; labor [1200 h]; Physical Units [39803.8 h] | 4,619.53 |  | ZNB | CON |  |
|  | LR 27 | **LR 27** |  | 2026-08-20 | 2026-10-12 |  |  |  |  |  |  |  |  |  |  |  |  |
|  | MH-7-M-1 /MH-7-M | **MH-7-M-1 /MH-7-M** |  | 2026-08-20 | 2026-10-12 |  |  |  |  |  |  |  |  |  |  |  |  |
| A75330 |  | Excavation | 4d | 2026-08-20 A | 2026-09-28 A | A66660, A66670, A1890 | 100% | 2026-02-23 | 2026-02-26 |  |  | ICKMO1-cost unite [29103 $]; Excavator [200 h]; Physical Units [250764 h] | 29,103.04 | 29,103.04 | ZNB | CON |  |
| A75340 |  | Pipe Laying | 8d | 2026-08-20 A | 2026-09-28 A | A75330 | 100% | 2026-02-28 | 2026-03-08 |  |  | ICKMO1-cost unite [19402 $]; boom truck [200 h]; labor [1200 h]; Storm Network Circular pipes (GRP) [80.79]; Physical Units [167176 h] | 19,402.03 | 19,402.03 | ZNB | CON | LAY |
| A75350 |  | Install Manhole | 4d | 2026-08-20 A | 2026-09-28 A | A75330 | 100% | 2026-02-28 | 2026-03-03 |  |  | ICKMO1-cost unite [87309.1 $]; boom truck [200 h]; labor [1200 h]; Physical Units [752291 h] | 87,309.11 | 87,309.11 | ZNB | CON | MH |
| A75370 |  | Backfilling & Compaction | 4d | 2026-08-20 A | 2026-09-28 A | A75360, A75350 | 100% | 2026-10-31 | 2026-11-04 |  |  | ICKMO1-cost unite [38804 $]; Roller compactor [200 h]; Physical Units [334352 h] | 38,804.04 | 38,804.04 | ZNB | CON |  |
| A75360 |  | Testing & Inspection | 2d | 2026-10-10 | 2026-10-12 | A75340 |  |  |  | 4.9d | 0d | ICKMO1-cost unite [19402 $]; labor [1200 h]; Physical Units [167176 h] | 19,402.03 |  | ZNB | CON |  |
|  | MH-8-O-2 /MH-8-O-0 | **MH-8-O-2 /MH-8-O-0** |  | 2026-08-20 | 2026-09-28 |  |  |  |  |  |  |  |  |  |  |  |  |
| A75130 |  | Excavation | 4d | 2026-08-20 A | 2026-09-28 A | A75180, A1890 | 100% | 2026-03-14 | 2026-03-17 |  |  | ICKMO1-cost unite [29103 $]; Excavator [200 h]; Physical Units [250764 h] | 29,103.04 | 29,103.04 | ZNB | CON |  |
| A75140 |  | Pipe Laying | 8d | 2026-08-20 A | 2026-09-28 A | A75130 | 100% | 2026-09-26 | 2026-10-05 |  |  | ICKMO1-cost unite [19402 $]; boom truck [200 h]; labor [1200 h]; Storm Network Circular pipes (GRP) [80.79]; Physical Units [167176 h] | 19,402.03 | 19,402.03 | ZNB | CON | LAY |
| A75150 |  | Install Manhole | 4d | 2026-08-20 A | 2026-09-28 A | A75130 | 100% | 2026-09-26 | 2026-09-30 |  |  | ICKMO1-cost unite [87309.1 $]; boom truck [200 h]; labor [1200 h]; Physical Units [752291 h] | 87,309.11 | 87,309.11 | ZNB | CON | MH |
| A75160 |  | Testing & Inspection | 2d | 2026-08-20 A | 2026-09-28 A | A75140 | 100% | 2026-10-05 | 2026-10-07 |  |  | ICKMO1-cost unite [19402 $]; labor [1200 h]; Physical Units [167176 h] | 19,402.03 | 19,402.03 | ZNB | CON |  |
| A75170 |  | Backfilling & Compaction | 4d | 2026-08-20 A | 2026-09-28 A | A75160, A75150, A75220 | 100% | 2026-10-07 | 2026-10-12 |  |  | ICKMO1-cost unite [38804 $]; Roller compactor [200 h]; Physical Units [334352 h] | 38,804.04 | 38,804.04 | ZNB | CON |  |

| ID | WBS | Activity | Duration | Start | Finish | Predecessors | Complete | Remaining | Planned start | Planned finish | Total float | Free float | Resources | Cost | Actual cost | ALKHARJ INDUSTERIAL AREA - PROJECT ZONES | ALKHARJ INDUSTERIAL AREA - DECEPLINS | ALKHARJ INDUSTERIAL AREA - Wet networks |
| --- | --- | --- | --- | --- | --- | --- | --- | --- | --- | --- | --- | --- | --- | --- | --- | --- | --- | --- |
|  | MH-8-O-3 /MH-8-O-1 | **MH-8-O-3 /MH-8-O-1** |  | 2026-08-20 | 2026-09-28 |  |  |  |  |  |  |  |  |  |  |  |  |  |
| A75180 |  | Excavation | 4d | 2026-08-20 A | 2026-09-28 A | A75230, A1890 | 100% |  | 2026-03-09 | 2026-03-12 |  |  | ICKMO1-cost unite [29103 $]; Excavator [200 h]; Physical Units [250764 h] | 29,103.04 | 29,103.04 | ZNB | CON |  |
| A75190 |  | Pipe Laying | 4d | 2026-08-20 A | 2026-09-28 A | A75180 | 100% |  | 2026-09-26 | 2026-09-30 |  |  | ICKMO1-cost unite [19402 $]; boom truck [200 h]; labor [1200 h]; Storm Network Circular pipes (GRP) [80.79]; Physical Units [167176 h] | 19,402.03 | 19,402.03 | ZNB | CON | LAY |
| A75200 |  | Install Manhole | 4d | 2026-08-20 A | 2026-09-28 A | A75180 | 100% |  | 2026-09-26 | 2026-09-30 |  |  | ICKMO1-cost unite [87309.1 $]; boom truck [200 h]; labor [1200 h]; Physical Units [752291 h] | 87,309.11 | 87,309.11 | ZNB | CON | MH |
| A75210 |  | Testing & Inspection | 2d | 2026-08-20 A | 2026-09-28 A | A75190 | 100% |  | 2026-09-30 | 2026-10-03 |  |  | ICKMO1-cost unite [19402 $]; labor [1200 h]; Physical Units [167176 h] | 19,402.03 | 19,402.03 | ZNB | CON |  |
| A75220 |  | Backfilling & Compaction | 4d | 2026-08-20 A | 2026-09-28 A | A75210, A75200, A75270 | 100% |  | 2026-10-03 | 2026-10-07 |  |  | ICKMO1-cost unite [38804 $]; Roller compactor [200 h]; Physical Units [334352 h] | 38,804.04 | 38,804.04 | ZNB | CON |  |
|  | MH-8-O-4 /MH-8-O-2 | **MH-8-O-4 /MH-8-O-2** |  | 2026-08-20 | 2026-10-12 |  |  |  |  |  |  |  |  |  |  |  |  |  |
| A75230 |  | Excavation | 4d | 2026-08-20 A | 2026-09-28 A | A75280, A1890 | 100% |  | 2026-03-04 | 2026-03-08 |  |  | ICKMO1-cost unite [29103 $]; Excavator [200 h]; Physical Units [250764 h] | 29,103.04 | 29,103.04 | ZNB | CON |  |
| A75240 |  | Pipe Laying | 4d | 2026-08-20 A | 2026-09-28 A | A75230 | 100% |  | 2026-03-09 | 2026-03-12 |  |  | ICKMO1-cost unite [19402 $]; boom truck [200 h]; labor [1200 h]; Storm Network Circular pipes (GRP) [80.79]; Physical Units [167176 h] | 19,402.03 | 19,402.03 | ZNB | CON | LAY |
| A75250 |  | Install Manhole | 4d | 2026-08-20 A | 2026-09-28 A | A75230 | 100% |  | 2026-03-09 | 2026-03-12 |  |  | ICKMO1-cost unite [87309.1 $]; boom truck [200 h]; labor [1200 h]; Physical Units [752291 h] | 87,309.11 | 87,309.11 | ZNB | CON | MH |
| A75270 |  | Backfilling & Compaction | 4d | 2026-08-20 A | 2026-09-28 A | A75260, A75250, A75320 | 100% |  | 2026-11-09 | 2026-11-14 |  |  | ICKMO1-cost unite [38804 $]; Roller compactor [200 h]; Physical Units [334352 h] | 38,804.04 | 38,804.04 | ZNB | CON |  |
| A75260 |  | Testing & Inspection | 2d | 2026-10-10 | 2026-10-12 | A75240 |  |  |  |  | 11.56d | 0d | ICKMO1-cost unite [19402 $]; labor [1200 h]; Physical Units [167176 h] | 19,402.03 |  | ZNB | CON |  |
|  | MH-8-O-4 /MH-8-O-3 | **MH-8-O-4 /MH-8-O-3** |  | 2026-08-20 | 2026-10-12 |  |  |  |  |  |  |  |  |  |  |  |  |  |
| A75280 |  | Excavation | 4d | 2026-08-20 A | 2026-09-28 A | A75330, A1890 | 100% |  | 2026-02-28 | 2026-03-03 |  |  | ICKMO1-cost unite [29103 $]; Excavator [200 h]; Physical Units [250764 h] | 29,103.04 | 29,103.04 | ZNB | CON |  |
| A75290 |  | Pipe Laying | 8d | 2026-08-20 A | 2026-09-28 A | A75280 | 100% |  | 2026-03-04 | 2026-03-12 |  |  | ICKMO1-cost unite [19402 $]; boom truck [200 h]; labor [1200 h]; Storm Network Circular pipes (GRP) [80.79]; Physical Units [167176 h] | 19,402.03 | 19,402.03 | ZNB | CON | LAY |
| A75300 |  | Install Manhole | 4d | 2026-08-20 A | 2026-09-28 A | A75280 | 100% |  | 2026-03-04 | 2026-03-08 |  |  | ICKMO1-cost unite [87309.1 $]; boom truck [200 h]; labor [1200 h]; Physical Units [752291 h] | 87,309.11 | 87,309.11 | ZNB | CON | MH |
| A75320 |  | Backfilling & Compaction | 4d | 2026-08-20 A | 2026-09-28 A | A75310, A75300, A75370 | 100% |  | 2026-11-04 | 2026-11-09 |  |  | ICKMO1-cost unite [38804 $]; Roller compactor [200 h]; Physical Units [334352 h] | 38,804.04 | 38,804.04 | ZNB | CON |  |
| A75310 |  | Testing & Inspection | 2d | 2026-10-10 | 2026-10-12 | A75290 |  |  |  |  | 11.56d | 0d | ICKMO1-cost unite [19402 $]; labor [1200 h]; Physical Units [167176 h] | 19,402.03 |  | ZNB | CON |  |
|  | MVN | **MV NETWORK** |  | 2026-09-05 | 2026-12-30 |  |  |  |  |  |  |  |  |  |  |  |  |  |
|  | 1 | **PSS 8714 - loop 01 Zone B** |  | 2026-09-05 | 2026-12-26 |  |  |  |  |  |  |  |  |  |  |  |  |  |
| A86130 |  | Trenching & excavation | 8d | 2026-09-05 A | 2026-11-21 | A56660, A57780 | 65% | 2.8d | 2026-07-01 | 2026-07-09 | -82.75d | 0d | ICKMO1-cost unite [285603 $]; Roller compactor [200 h]; JCB [200 h]; Physical Units [2460872 h] | 285,602.83 | 185,641.84 | ZNB | CON |  |
| A86140 |  | Bedding preparation (sand) | 14d | 2026-09-05 A | 2026-11-24 | A86130 SS+4d | 60% | 5.6d | 2026-07-06 | 2026-07-21 | -78.5d | 0d | ICKMO1-cost unite [190402 $]; Physical Units [1640582 h] | 190,401.89 | 114,241.13 | ZNB | CON |  |
| A86150 |  | Duct installation / concrete encasement | 18d | 2026-09-05 A | 2026-11-29 | A86140 SS+4d, A86140 FF+4d | 60% | 7.2d | 2026-07-11 | 2026-07-30 | -78.5d | 0d | ICKMO1-cost unite [380804 $]; labor [800 h]; Physical Units [3281163 h] | 380,803.78 | 228,482.27 | ZNB | CON |  |
| A86160 |  | Backfilling & compaction | 21d | 2026-09-05 A | 2026-12-08 | A86170 SS+4d, A86170 FF+4d | 60% | 8.4d | 2027-05-02 | 2027-05-26 | -78.5d | 0d | ICKMO1-cost unite [571206 $]; labor [800 h]; Physical Units [4921745 h] | 571,205.67 | 342,723.4 | ZNB | CON |  |
| A86170 |  | Cable Laying | 21d | 2026-09-05 A | 2026-12-03 | A86150 SS+4d, A86150 FF+4d | 60% | 8.4d | 2026-07-15 | 2026-08-08 | -78.5d | 0d | ICKMO1-cost unite [190402 $]; Roller compactor [200 h]; JCB [200 h]; Budget Resources [10068.5]; Physical Units [1640582 h] | 190,401.89 | 114,241.13 | ZNB | CON |  |
| A86190 |  | RMU / transformer installation | 10d | 2026-12-08 | 2026-12-20 | A86160 |  |  |  |  | -78.5d | 0d | ICKMO1-cost unite [190402 $]; labor [800 h]; Physical Units [1640582 h] | 190,401.89 |  | ZNB | CON |  |
| A86180 |  | Testing | 5d | 2026-12-20 | 2026-12-26 | A86190 |  |  |  |  | -78.5d | 4.25d | ICKMO1-cost unite [95200.9 $]; labor [800 h]; Physical Units [820291 h] | 95,200.94 |  | ZNB | CON |  |

| ID | WBS | Activity | Duration | Start | Finish | Predecessors | Complete | Remaining | Planned start | Planned finish | Total float | Free float | Resources | Cost | Actual cost | ALKHARJ INDUSTERIAL AREA - PROJECT ZONES | ALKHARJ INDUSTERIAL AREA - DECEPLINS |
| --- | --- | --- | --- | --- | --- | --- | --- | --- | --- | --- | --- | --- | --- | --- | --- | --- | --- |
|  | 4 | **PSS 8714 - loop 02 Zone B** |  | 2026-09-05 | 2026-12-29 |  |  |  |  |  |  |  |  |  |  |  |  |
| A86200 |  | Trenching & excavation | 7d | 2026-09-05 A | 2026-11-24 | A86130 | 65% | 2.45d | 2026-07-11 | 2026-07-18 | -82.75d | 0d | ICKMO1-cost unite [285603 $]; Roller compactor [200 h]; JCB [200 h]; Physical Units [2460872 h] | 285,602.83 | 185,641.84 | ZNB | CON |
| A86210 |  | Bedding preparation (sand) | 14d | 2026-09-05 A | 2026-11-28 | A86200 SS+4d | 60% | 5.6d | 2026-07-15 | 2026-07-30 | -81.3d | 0d | ICKMO1-cost unite [190402 $]; Physical Units [1640582 h] | 190,401.89 | 114,241.13 | ZNB | CON |
| A86220 |  | Duct installation / concrete encasement | 18d | 2026-09-05 A | 2026-12-02 | A86210 SS+4d, A86210 FF+4d | 60% | 7.2d | 2026-07-20 | 2026-08-09 | -81.3d | 0d | ICKMO1-cost unite [380804 $]; labor [800 h]; Physical Units [3281163 h] | 380,803.78 | 228,482.27 | ZNB | CON |
| A86230 |  | Backfilling & compaction | 21d | 2026-09-05 A | 2026-12-12 | A86240 SS+4d, A86240 FF+4d | 60% | 8.4d | 2027-05-06 | 2027-05-31 | -81.3d | 0d | ICKMO1-cost unite [571206 $]; labor [800 h]; Physical Units [4921745 h] | 571,205.67 | 342,723.4 | ZNB | CON |
| A86240 |  | Cable Laying | 21d | 2026-09-05 A | 2026-12-07 | A86220 SS+4d, A86220 FF+4d | 60% | 8.4d | 2026-07-25 | 2026-08-17 | -81.3d | 0d | ICKMO1-cost unite [190402 $]; Roller compactor [200 h]; JCB [200 h]; Budget Resources [10068.5]; Physical Units [1640582 h] | 190,401.89 | 114,241.13 | ZNB | CON |
| A86260 |  | RMU / transformer installation | 10d | 2026-12-12 | 2026-12-23 | A86230 |  |  |  |  | -81.3d | 0d | ICKMO1-cost unite [190402 $]; labor [800 h]; Physical Units [1640582 h] | 190,401.89 |  | ZNB | CON |
| A86250 |  | Testing | 5d | 2026-12-23 | 2026-12-29 | A86260 |  |  |  |  | -81.3d | 1.45d | ICKMO1-cost unite [95200.9 $]; labor [800 h]; Physical Units [820291 h] | 95,200.94 |  | ZNB | CON |
|  | 5 | **PSS 8714 - loop 03 Zone B** |  | 2026-09-05 | 2026-12-30 |  |  |  |  |  |  |  |  |  |  |  |  |
| A86270 |  | Trenching & excavation | 4d | 2026-09-05 A | 2026-11-25 | A86200 | 65% | 1.4d | 2026-07-19 | 2026-07-22 | -82.75d | 0d | ICKMO1-cost unite [285603 $]; Roller compactor [200 h]; JCB [200 h]; Physical Units [2460872 h] | 285,602.83 | 185,641.84 | ZNB | CON |
| A86280 |  | Bedding preparation (sand) | 14d | 2026-09-05 A | 2026-11-30 | A86270 SS+4d | 60% | 5.6d | 2026-07-23 | 2026-08-08 | -82.75d | 0d | ICKMO1-cost unite [190402 $]; Physical Units [1640582 h] | 190,401.89 | 114,241.13 | ZNB | CON |
| A86290 |  | Duct installation / concrete encasement | 18d | 2026-09-05 A | 2026-12-05 | A86280 SS+4d, A86280 FF+4d | 60% | 7.2d | 2026-07-28 | 2026-08-17 | -82.75d | 0d | ICKMO1-cost unite [380804 $]; labor [800 h]; Physical Units [3281163 h] | 380,803.78 | 228,482.27 | ZNB | CON |
| A86300 |  | Backfilling & compaction | 21d | 2026-09-05 A | 2026-12-14 | A86310 SS+4d, A86310 FF+4d | 60% | 8.4d | 2027-05-11 | 2027-06-05 | -82.75d | 0d | ICKMO1-cost unite [571206 $]; labor [800 h]; Physical Units [4921745 h] | 571,205.67 | 342,723.4 | ZNB | CON |
| A86310 |  | Cable Laying | 21d | 2026-09-05 A | 2026-12-09 | A86290 SS+4d, A86290 FF+4d | 60% | 8.4d | 2026-08-02 | 2026-08-25 | -82.75d | 0d | ICKMO1-cost unite [190402 $]; Roller compactor [200 h]; JCB [200 h]; Budget Resources [10068.5]; Physical Units [1640582 h] | 190,401.89 | 114,241.13 | ZNB | CON |
| A86330 |  | RMU / transformer installation | 10d | 2026-12-14 | 2026-12-26 | A86300 |  |  |  |  | -82.75d | 0d | ICKMO1-cost unite [190402 $]; labor [800 h]; Physical Units [1640582 h] | 190,401.89 |  | ZNB | CON |
| A86320 |  | Testing | 4d | 2026-12-26 | 2026-12-30 | A86330 |  |  |  |  | -82.75d | 0d | ICKMO1-cost unite [95200.9 $]; labor [800 h]; Physical Units [820291 h] | 95,200.94 |  | ZNB | CON |
|  | 6 | **PSS 8714 - loop 04 Zone B** |  | 2026-09-05 | 2026-12-26 |  |  |  |  |  |  |  |  |  |  |  |  |
| A86340 |  | Trenching & excavation | 4d | 2026-09-05 A | 2026-11-26 | A86270 | 65% | 1.4d | 2026-07-23 | 2026-07-27 | -78.95d | 0d | ICKMO1-cost unite [285603 $]; Roller compactor [200 h]; JCB [200 h]; Physical Units [2460872 h] | 285,602.83 | 185,641.84 | ZNB | CON |
| A86350 |  | Bedding preparation (sand) | 8d | 2026-09-15 A | 2026-11-29 | A86340 SS+4d | 60% | 3.2d | 2026-07-28 | 2026-08-05 | -78.95d | 0d | ICKMO1-cost unite [190402 $]; Physical Units [1640582 h] | 190,401.89 | 114,241.13 | ZNB | CON |
| A86360 |  | Duct installation / concrete encasement | 8d | 2026-09-15 A | 2026-12-03 | A86350 SS+4d, A86350 FF+4d | 60% | 3.2d | 2026-08-02 | 2026-08-10 | -78.95d | 0d | ICKMO1-cost unite [380804 $]; labor [800 h]; Physical Units [3281163 h] | 380,803.78 | 228,482.27 | ZNB | CON |
| A86370 |  | Backfilling & compaction | 14d | 2026-09-15 A | 2026-12-14 | A86380 SS+4d, A86340, A86380 FF+4d | 60% | 5.6d | 2027-05-13 | 2027-05-30 | -78.95d | 0d | ICKMO1-cost unite [571206 $]; labor [800 h]; Physical Units [4921745 h] | 571,205.67 | 342,723.4 | ZNB | CON |
| A86380 |  | Cable Laying | 21d | 2026-09-15 A | 2026-12-09 | A86360 SS+4d, A86360 FF+4d | 60% | 8.4d | 2026-08-06 | 2026-08-30 | -78.95d | 0d | ICKMO1-cost unite [190402 $]; Roller compactor [200 h]; JCB [200 h]; Budget Resources [10068.5]; Physical Units [1640582 h] | 190,401.89 | 114,241.13 | ZNB | CON |
| A86400 |  | RMU / transformer installation | 5d | 2026-12-14 | 2026-12-20 | A86370 |  |  |  |  | -78.95d | 0d | ICKMO1-cost unite [190402 $]; labor [800 h]; Physical Units [1640582 h] | 190,401.89 |  | ZNB | CON |
| A86390 |  | Testing | 5d | 2026-12-20 | 2026-12-26 | A86400 |  |  |  |  | -78.95d | 3.8d | ICKMO1-cost unite [95200.9 $]; labor [800 h]; Physical Units [820291 h] | 95,200.94 |  | ZNB | CON |

| ID | WBS | Activity | Duration | Start | Finish | Predecessors | Complete | Remaining | Planned start | Planned finish | Total float | Free float | Resources | Cost | Actual cost | ALKHARJ INDUSTERIAL AREA - PROJECT ZONES | ALKHARJ INDUSTERIAL AREA - DECEPLINS | ALKHARJ INDUSTERIAL AREA - Wet networks |
| --- | --- | --- | --- | --- | --- | --- | --- | --- | --- | --- | --- | --- | --- | --- | --- | --- | --- | --- |
|  | ZB | **POTABLE NETWORK** |  | 2026-08-20 | 2027-02-22 |  |  |  |  |  |  |  |  |  |  |  |  |  |
|  | R1 | **Road 18** |  | 2026-08-20 | 2027-01-20 |  |  |  |  |  |  |  |  |  |  |  |  |  |
| A87810 |  | Road Crossing Works | 16d | 2026-08-20 A | 2026-09-28 A | A51140, A58910 | 100% |  | 2027-05-20 | 2027-06-08 |  |  | ICKMO1-cost unite [30627.7 $]; Physical Units [263901 h] | 30,627.67 | 30,627.67 | ZNB | CON |  |
| A87800 |  | Trenching & Bedding | 14d | 2026-09-15 A | 2026-12-09 | A87810 SS, A87810 FF | 98% | 0.28d | 2027-05-23 | 2027-06-08 | 7.72d | 0d | ICKMO1-cost unite [45941.5 $]; Roller compactor [200 h]; JCB [200 h]; Physical Units [395851 h] | 45,941.5 | 45,022.67 | ZNB | CON |  |
| A87820 |  | Pipe Laying | 18d | 2026-09-15 A | 2026-12-10 | A87800 SS+8d, A87810 SS+8d, A87810 FF+8d | 98% | 0.36d | 2027-06-01 | 2027-06-22 | 7.72d | 0d | ICKMO1-cost unite [61255.3 $]; labor [800 h]; Physical Units [527801 h] | 61,255.34 | 60,030.23 | ZNB | CON | LAY |
| A87830 |  | Testing | 4d | 2026-09-15 A | 2026-12-12 | A87820, A87820 FF | 70% | 1.2d | 2027-01-09 | 2027-01-13 | 7.72d | 0d | ICKMO1-cost unite [15313.8 $]; labor [800 h]; Physical Units [131950 h] | 15,313.83 | 10,719.68 | ZNB | CON |  |
| A87840 |  | Backfilling & Compaction | 16d | 2026-09-15 A | 2026-12-12 | A87830, A87830 FF | 98% | 0.32d | 2027-03-04 | 2027-03-23 | 23.4d | 15.68d | ICKMO1-cost unite [91883 $]; Roller compactor [200 h]; JCB [200 h]; Physical Units [791702 h] | 91,883.02 | 90,045.36 | ZNB | CON |  |
| A87850 |  | Chambers Construction works | 16d | 2026-12-12 | 2026-12-30 | A87830 |  |  |  |  | 7.72d | 0d | ICKMO1-cost unite [45941.5 $]; labor [800 h]; Physical Units [395851 h] | 45,941.5 |  | ZNB | CON |  |
| A87860 |  | Valves & Fittings Installation | 18d | 2026-12-30 | 2027-01-20 | A87850, A87840 |  |  |  |  | 7.72d | 28.64d | ICKMO1-cost unite [15313.8 $]; labor [800 h]; Physical Units [131950 h] | 15,313.83 |  | ZNB | CON |  |
|  | R11 | **Road 19** |  | 2026-08-20 | 2027-01-20 |  |  |  |  |  |  |  |  |  |  |  |  |  |
| A87880 |  | Road Crossing Works | 16d | 2026-08-20 A | 2026-09-28 A | A51290, A58910 | 100% |  | 2027-05-20 | 2027-06-08 |  |  | ICKMO1-cost unite [30627.7 $]; Physical Units [263901 h] | 30,627.67 | 30,627.67 | ZNB | CON |  |
| A87870 |  | Trenching & Bedding | 14d | 2026-09-15 A | 2026-12-10 | A87880 SS, A87880 FF | 97% | 0.42d | 2027-05-23 | 2027-06-08 | 7.54d | 0d | ICKMO1-cost unite [45941.5 $]; Roller compactor [200 h]; JCB [200 h]; Physical Units [395851 h] | 45,941.5 | 44,563.26 | ZNB | CON |  |
| A87890 |  | Pipe Laying | 18d | 2026-09-15 A | 2026-12-10 | A87870 SS+8d, A87880 SS+8d, A87880 FF+8d | 97% | 0.54d | 2027-06-01 | 2027-06-22 | 7.54d | 0d | ICKMO1-cost unite [61255.3 $]; labor [800 h]; Physical Units [527801 h] | 61,255.34 | 59,417.68 | ZNB | CON | LAY |
| A87900 |  | Testing | 4d | 2026-09-15 A | 2026-12-12 | A87890, A87890 FF | 70% | 1.2d | 2027-01-09 | 2027-01-13 | 7.54d | 0d | ICKMO1-cost unite [15313.8 $]; labor [800 h]; Physical Units [131950 h] | 15,313.83 | 10,719.68 | ZNB | CON |  |
| A87910 |  | Backfilling & Compaction | 16d | 2026-09-15 A | 2026-12-12 | A87900, A87900 FF | 97% | 0.48d | 2027-06-27 | 2027-07-15 | 23.06d | 15.52d | ICKMO1-cost unite [91883 $]; Roller compactor [200 h]; JCB [200 h]; Physical Units [791702 h] | 91,883.02 | 89,126.53 | ZNB | CON |  |
| A87920 |  | Chambers Construction works | 16d | 2026-12-12 | 2026-12-30 | A87900 |  |  |  |  | 7.54d | 0d | ICKMO1-cost unite [45941.5 $]; labor [800 h]; Physical Units [395851 h] | 45,941.5 |  | ZNB | CON |  |
| A87930 |  | Valves & Fittings Installation | 18d | 2026-12-30 | 2027-01-20 | A87920, A87910 |  |  |  |  | 7.54d | 28.46d | ICKMO1-cost unite [15313.8 $]; labor [800 h]; Physical Units [131950 h] | 15,313.83 |  | ZNB | CON |  |
|  | R12 | **Road 20** |  | 2026-08-20 | 2027-01-19 |  |  |  |  |  |  |  |  |  |  |  |  |  |
| A87950 |  | Road Crossing Works | 16d | 2026-08-20 A | 2026-09-28 A | A51490, A58910 | 100% |  | 2027-05-20 | 2027-06-08 |  |  | ICKMO1-cost unite [30627.7 $]; Physical Units [263901 h] | 30,627.67 | 30,627.67 | ZNB | CON |  |
| A87940 |  | Trenching & Bedding | 14d | 2026-09-15 A | 2026-10-04 A | A87950 SS, A87950 FF | 100% |  | 2027-05-23 | 2027-06-08 |  |  | ICKMO1-cost unite [45941.5 $]; Roller compactor [200 h]; JCB [200 h]; Physical Units [395851 h] | 45,941.5 | 45,941.5 | ZNB | CON |  |
| A87960 |  | Pipe Laying | 18d | 2026-09-15 A | 2026-10-04 A | A87940 SS+8d, A87950 SS+8d, A87950 FF+8d | 100% |  | 2027-06-01 | 2027-06-22 |  |  | ICKMO1-cost unite [61255.3 $]; labor [800 h]; Physical Units [527801 h] | 61,255.34 | 61,255.34 | ZNB | CON | LAY |
| A87970 |  | Testing | 4d | 2026-09-15 A | 2026-12-10 | A87960, A87960 FF | 82% | 0.72d | 2027-01-09 | 2027-01-13 | 8.56d | 0d | ICKMO1-cost unite [15313.8 $]; labor [800 h]; Physical Units [131950 h] | 15,313.83 | 12,557.34 | ZNB | CON |  |
| A87980 |  | Backfilling & Compaction | 16d | 2026-09-15 A | 2026-10-04 A | A87970, A87970 FF | 100% |  | 2027-06-27 | 2027-07-15 |  |  | ICKMO1-cost unite [91883 $]; Roller compactor [200 h]; JCB [200 h]; Physical Units [791702 h] | 91,883.02 | 91,883.02 | ZNB | CON |  |
| A87990 |  | Chambers Construction works | 16d | 2026-12-10 | 2026-12-29 | A87970 |  |  |  |  | 8.56d | 0d | ICKMO1-cost unite [45941.5 $]; labor [800 h]; Physical Units [395851 h] | 45,941.5 |  | ZNB | CON |  |
| A88000 |  | Valves & Fittings Installation | 18d | 2026-12-29 | 2027-01-19 | A87990, A87980 |  |  |  |  | 8.56d | 29.48d | ICKMO1-cost unite [15313.8 $]; labor [800 h]; Physical Units [131950 h] | 15,313.83 |  | ZNB | CON |  |

| ID | WBS | Activity | Duration | Start | Finish | Predecessors | Complete | Remaining | Planned start | Planned finish | Total float | Free float | Resources | Cost | Actual cost | ALKHARJ INDUSTERIAL AREA - PROJECT ZONES | ALKHARJ INDUSTERIAL AREA - DECEPLINS | ALKHARJ INDUSTERIAL AREA - Wet networks |
| --- | --- | --- | --- | --- | --- | --- | --- | --- | --- | --- | --- | --- | --- | --- | --- | --- | --- | --- |
|  | R13 | **Road 21** |  | 2026-08-20 | 2027-01-19 |  |  |  |  |  |  |  |  |  |  |  |  |  |
| A88020 |  | Road Crossing Works | 16d | 2026-08-20 A | 2026-09-28 A | A51690, A58910 | 100% |  | 2027-05-20 | 2027-06-08 |  |  | ICKMO1-cost unite [30627.7 $]; Physical Units [263901 h] | 30,627.67 | 30,627.67 | ZNB | CON |  |
| A88010 |  | Trenching & Bedding | 14d | 2026-09-15 A | 2026-10-06 A | A88020 SS, A88020 FF | 100% |  | 2027-05-23 | 2027-06-08 |  |  | ICKMO1-cost unite [45941.5 $]; Roller compactor [200 h]; JCB [200 h]; Physical Units [395851 h] | 45,941.5 | 45,941.5 | ZNB | CON |  |
| A88030 |  | Pipe Laying | 18d | 2026-09-15 A | 2026-10-06 A | A88010 SS+8d, A88020 SS+8d, A88020 FF+8d | 100% |  | 2027-06-01 | 2027-06-22 |  |  | ICKMO1-cost unite [61255.3 $]; labor [800 h]; Physical Units [527801 h] | 61,255.34 | 61,255.34 | ZNB | CON | LAY |
| A88050 |  | Backfilling & Compaction | 16d | 2026-09-15 A | 2026-10-06 A | A88040, A88040 FF | 100% |  | 2027-06-27 | 2027-07-15 |  |  | ICKMO1-cost unite [91883 $]; Roller compactor [200 h]; JCB [200 h]; Physical Units [791702 h] | 91,883.02 | 91,883.02 | ZNB | CON |  |
| A88040 |  | Testing | 4d | 2026-10-01 A | 2026-12-10 | A88030, A88030 FF | 90% | 0.4d | 2027-01-07 | 2027-01-12 | 8.88d | 0d | ICKMO1-cost unite [15313.8 $]; labor [800 h]; Physical Units [131950 h] | 15,313.83 | 13,782.45 | ZNB | CON |  |
| A88060 |  | Chambers Construction works | 16d | 2026-12-10 | 2026-12-29 | A88040 |  |  |  |  | 8.88d | 0d | ICKMO1-cost unite [45941.5 $]; labor [800 h]; Physical Units [395851 h] | 45,941.5 |  | ZNB | CON |  |
| A88070 |  | Valves & Fittings Installation | 18d | 2026-12-29 | 2027-01-19 | A88060, A88050 |  |  |  |  | 8.88d | 29.8d | ICKMO1-cost unite [15313.8 $]; labor [800 h]; Physical Units [131950 h] | 15,313.83 |  | ZNB | CON |  |
|  | R14 | **Road 22** |  | 2026-08-20 | 2027-02-16 |  |  |  |  |  |  |  |  |  |  |  |  |  |
| A88090 |  | Road Crossing Works | 16d | 2026-08-20 A | 2026-09-28 A | A51990, A58910 | 100% |  | 2027-02-11 | 2027-03-02 |  |  | ICKMO1-cost unite [30627.7 $]; Physical Units [263901 h] | 30,627.67 | 30,627.67 | ZNB | CON |  |
| A88080 |  | Trenching & Bedding | 14d | 2026-10-04 A | 2026-12-17 | A88090 SS, A88090 FF | 50% | 7d | 2027-01-07 | 2027-01-24 | -20.92d | 0d | ICKMO1-cost unite [45941.5 $]; Roller compactor [200 h]; JCB [200 h]; Physical Units [395851 h] | 45,941.5 | 22,970.75 | ZNB | CON |  |
| A88100 |  | Pipe Laying | 18d | 2026-10-04 A | 2027-01-03 | A88080 SS+8d, A88090 SS+8d, A88090 FF+8d |  | 18d | 2027-01-17 | 2027-02-07 | -15.72d | 0d | ICKMO1-cost unite [61255.3 $]; labor [800 h]; Physical Units [527801 h] | 61,255.34 |  | ZNB | CON | LAY |
| A88110 |  | Testing | 4d | 2027-01-03 | 2027-01-07 | A88100, A88100 FF |  |  |  |  | -15.72d | 0d | ICKMO1-cost unite [15313.8 $]; labor [800 h]; Physical Units [131950 h] | 15,313.83 |  | ZNB | CON |  |
| A88120 |  | Backfilling & Compaction | 16d | 2027-01-07 | 2027-01-26 | A88110, A88110 FF |  |  |  |  | -15.72d | 0d | ICKMO1-cost unite [91883 $]; Roller compactor [200 h]; JCB [200 h]; Physical Units [791702 h] | 91,883.02 |  | ZNB | CON |  |
| A88130 |  | Chambers Construction works | 16d | 2027-01-07 | 2027-01-26 | A88110 |  |  |  |  | -15.72d | 0d | ICKMO1-cost unite [45941.5 $]; labor [800 h]; Physical Units [395851 h] | 45,941.5 |  | ZNB | CON |  |
| A88140 |  | Valves & Fittings Installation | 18d | 2027-01-26 | 2027-02-16 | A88130, A88120 |  |  |  |  | -15.72d | 5.2d | ICKMO1-cost unite [15313.8 $]; labor [800 h]; Physical Units [131950 h] | 15,313.83 |  | ZNB | CON |  |
|  | R15 | **Road 23** |  | 2026-08-20 | 2027-02-22 |  |  |  |  |  |  |  |  |  |  |  |  |  |
| A88580 |  | Road Crossing Works | 16d | 2026-08-20 A | 2026-09-28 A | A52290, A58910 | 100% |  | 2027-02-11 | 2027-03-02 |  |  | ICKMO1-cost unite [30627.7 $]; Physical Units [263901 h] | 30,627.67 | 30,627.67 | ZNB | CON |  |
| A88570 |  | Trenching & Bedding | 14d | 2026-10-04 A | 2026-12-29 | A88580 SS, A88080, A88580 FF | 30% | 9.8d | 2027-01-24 | 2027-02-09 | -20.92d | 0d | ICKMO1-cost unite [45941.5 $]; Roller compactor [200 h]; JCB [200 h]; Physical Units [395851 h] | 45,941.5 | 13,782.45 | ZNB | CON |  |
| A88590 |  | Pipe Laying | 18d | 2026-10-04 A | 2027-01-09 | A88570 SS+8d, A88580 SS+8d, A88580 FF+8d | 10% | 16.2d | 2027-02-02 | 2027-02-23 | -20.92d | 0d | ICKMO1-cost unite [61255.3 $]; labor [800 h]; Physical Units [527801 h] | 61,255.34 | 6,125.53 | ZNB | CON | LAY |
| A88600 |  | Testing | 4d | 2027-01-09 | 2027-01-13 | A88590, A88590 FF |  |  |  |  | -20.92d | 0d | ICKMO1-cost unite [15313.8 $]; labor [800 h]; Physical Units [131950 h] | 15,313.83 |  | ZNB | CON |  |
| A88610 |  | Backfilling & Compaction | 16d | 2027-01-13 | 2027-02-01 | A88600, A88600 FF |  |  |  |  | -20.92d | 0d | ICKMO1-cost unite [91883 $]; Roller compactor [200 h]; JCB [200 h]; Physical Units [791702 h] | 91,883.02 |  | ZNB | CON |  |
| A88620 |  | Chambers Construction works | 16d | 2027-01-13 | 2027-02-01 | A88600 |  |  |  |  | -20.92d | 0d | ICKMO1-cost unite [45941.5 $]; labor [800 h]; Physical Units [395851 h] | 45,941.5 |  | ZNB | CON |  |
| A88630 |  | Valves & Fittings Installation | 18d | 2027-02-01 | 2027-02-22 | A88620, A88610 |  |  |  |  | -20.92d | 0d | ICKMO1-cost unite [15313.8 $]; labor [800 h]; Physical Units [131950 h] | 15,313.83 |  | ZNB | CON |  |

| ID | WBS | Activity | Duration | Start | Finish | Predecessors | Complete | Remaining | Planned start | Planned finish | Total float | Free float | Resources | Cost | Actual cost | ALKHARJ INDUSTERIAL AREA - PROJECT ZONES | ALKHARJ INDUSTERIAL AREA - DECEPLINS | ALKHARJ INDUSTERIAL AREA - Wet networks |
| --- | --- | --- | --- | --- | --- | --- | --- | --- | --- | --- | --- | --- | --- | --- | --- | --- | --- | --- |
|  | R16 | **Road 24** |  | 2026-08-20 | 2027-02-22 |  |  |  |  |  |  |  |  |  |  |  |  |  |
| A88510 |  | Road Crossing Works | 16d | 2026-08-20 A | 2026-09-28 A | A52690, A58910 | 100% |  | 2027-02-11 | 2027-03-02 |  |  | ICKMO1-cost unite [30627.7 $]; Physical Units [263901 h] | 30,627.67 | 30,627.67 | ZNB | CON |  |
| A88500 |  | Trenching & Bedding | 14d | 2026-12-09 | 2026-12-26 | A88510 SS, A88510 FF |  |  |  |  | -25.72d | 0d | ICKMO1-cost unite [45941.5 $]; Roller compactor [200 h]; JCB [200 h]; Physical Units [395851 h] | 45,941.5 |  | ZNB | CON |  |
| A88520 |  | Pipe Laying | 18d | 2026-12-19 | 2027-01-09 | A88500 SS+8d, A88510 SS+8d, A88510 FF+8d |  |  |  |  | -20.72d | 0d | ICKMO1-cost unite [61255.3 $]; labor [800 h]; Physical Units [527801 h] | 61,255.34 |  | ZNB | CON | LAY |
| A88530 |  | Testing | 4d | 2027-01-09 | 2027-01-13 | A88520, A88520 FF |  |  |  |  | -20.72d | 0d | ICKMO1-cost unite [15313.8 $]; labor [800 h]; Physical Units [131950 h] | 15,313.83 |  | ZNB | CON |  |
| A88540 |  | Backfilling & Compaction | 16d | 2027-01-13 | 2027-02-01 | A88530, A88530 FF |  |  |  |  | -20.72d | 0d | ICKMO1-cost unite [91883 $]; Roller compactor [200 h]; JCB [200 h]; Physical Units [791702 h] | 91,883.02 |  | ZNB | CON |  |
| A88550 |  | Chambers Construction works | 16d | 2027-01-13 | 2027-02-01 | A88530 |  |  |  |  | -20.72d | 0d | ICKMO1-cost unite [45941.5 $]; labor [800 h]; Physical Units [395851 h] | 45,941.5 |  | ZNB | CON |  |
| A88560 |  | Valves & Fittings Installation | 18d | 2027-02-01 | 2027-02-22 | A88550, A88540 |  |  |  |  | -20.72d | 0.2d | ICKMO1-cost unite [15313.8 $]; labor [800 h]; Physical Units [131950 h] | 15,313.83 |  | ZNB | CON |  |
|  | R17 | **Road 25** |  | 2026-08-20 | 2027-01-23 |  |  |  |  |  |  |  |  |  |  |  |  |  |
| A88440 |  | Road Crossing Works | 16d | 2026-08-20 A | 2026-09-28 A | A53040, A58910 | 100% |  | 2027-05-20 | 2027-06-08 |  |  | ICKMO1-cost unite [30627.7 $]; Physical Units [263901 h] | 30,627.67 | 30,627.67 | ZNB | CON |  |
| A88430 |  | Trenching & Bedding | 14d | 2026-09-15 A | 2026-10-07 A | A88440 SS, A88440 FF | 100% |  | 2027-05-23 | 2027-06-08 |  |  | ICKMO1-cost unite [45941.5 $]; Roller compactor [200 h]; JCB [200 h]; Physical Units [395851 h] | 45,941.5 | 45,941.5 | ZNB | CON |  |
| A88450 |  | Pipe Laying | 18d | 2026-09-15 A | 2026-10-07 A | A88430 SS+8d, A88440 SS+8d, A88440 FF+8d | 100% |  | 2027-06-01 | 2027-06-22 |  |  | ICKMO1-cost unite [61255.3 $]; labor [800 h]; Physical Units [527801 h] | 61,255.34 | 61,255.34 | ZNB | CON | LAY |
| A88470 |  | Backfilling & Compaction | 16d | 2026-09-15 A | 2026-10-07 A | A88460, A88460 FF | 100% |  | 2027-06-27 | 2027-07-15 |  |  | ICKMO1-cost unite [91883 $]; Roller compactor [200 h]; JCB [200 h]; Physical Units [791702 h] | 91,883.02 | 91,883.02 | ZNB | CON |  |
| A88460 |  | Testing | 4d | 2026-12-09 | 2026-12-14 | A88450, A88450 FF |  |  |  |  | 5.28d | 0d | ICKMO1-cost unite [15313.8 $]; labor [800 h]; Physical Units [131950 h] | 15,313.83 |  | ZNB | CON |  |
| A88480 |  | Chambers Construction works | 16d | 2026-12-14 | 2027-01-02 | A88460 |  |  |  |  | 5.28d | 0d | ICKMO1-cost unite [45941.5 $]; labor [800 h]; Physical Units [395851 h] | 45,941.5 |  | ZNB | CON |  |
| A88490 |  | Valves & Fittings Installation | 18d | 2027-01-02 | 2027-01-23 | A88480, A88470 |  |  |  |  | 5.28d | 26.2d | ICKMO1-cost unite [15313.8 $]; labor [800 h]; Physical Units [131950 h] | 15,313.83 |  | ZNB | CON |  |
|  | R18 | **Road 26** |  | 2026-08-20 | 2027-02-13 |  |  |  |  |  |  |  |  |  |  |  |  |  |
| A88370 |  | Road Crossing Works | 16d | 2026-08-20 A | 2026-09-28 A | A55140, A58910 | 100% |  | 2027-06-14 | 2027-07-03 |  |  | ICKMO1-cost unite [30627.7 $]; Physical Units [263901 h] | 30,627.67 | 30,627.67 | ZNB | CON |  |
| A88360 |  | Trenching & Bedding | 14d | 2026-09-15 A | 2026-12-30 | A88370 SS, A88370 FF | 95% | 0.7d | 2027-06-16 | 2027-07-03 | -12.9d | 0d | ICKMO1-cost unite [45941.5 $]; Roller compactor [200 h]; JCB [200 h]; Physical Units [395851 h] | 45,941.5 | 43,644.43 | ZNB | CON |  |
| A88380 |  | Pipe Laying | 18d | 2026-09-15 A | 2026-12-30 | A88360 SS+8d, A88370 SS+8d, A88370 FF+8d | 95% | 0.9d | 2027-06-26 | 2027-07-17 | -12.9d | 0d | ICKMO1-cost unite [61255.3 $]; labor [800 h]; Physical Units [527801 h] | 61,255.34 | 58,192.57 | ZNB | CON | LAY |
| A88400 |  | Backfilling & Compaction | 16d | 2026-09-15 A | 2027-01-05 | A88390, A88390 FF | 95% | 0.8d | 2027-07-21 | 2027-08-09 | 2.3d | 15.2d | ICKMO1-cost unite [91883 $]; Roller compactor [200 h]; JCB [200 h]; Physical Units [791702 h] | 91,883.02 | 87,288.87 | ZNB | CON |  |
| A88390 |  | Testing | 4d | 2026-12-30 | 2027-01-04 | A88380, A88380 FF |  |  |  |  | -12.9d | 0d | ICKMO1-cost unite [15313.8 $]; labor [800 h]; Physical Units [131950 h] | 15,313.83 |  | ZNB | CON |  |
| A88410 |  | Chambers Construction works | 16d | 2027-01-04 | 2027-01-23 | A88390 |  |  |  |  | -12.9d | 0d | ICKMO1-cost unite [45941.5 $]; labor [800 h]; Physical Units [395851 h] | 45,941.5 |  | ZNB | CON |  |
| A88420 |  | Valves & Fittings Installation | 18d | 2027-01-23 | 2027-02-13 | A88410, A88400 |  |  |  |  | -12.9d | 0d | ICKMO1-cost unite [15313.8 $]; labor [800 h]; Physical Units [131950 h] | 15,313.83 |  | ZNB | CON |  |

| ID | WBS | Activity | Duration | Start | Finish | Predecessors | Complete | Remaining | Planned start | Planned finish | Total float | Free float | Resources | Cost | Actual cost | ALKHARJ INDUSTERIAL AREA - PROJECT ZONES | ALKHARJ INDUSTERIAL AREA - DECEPLINS | ALKHARJ INDUSTERIAL AREA - Wet networks |
| --- | --- | --- | --- | --- | --- | --- | --- | --- | --- | --- | --- | --- | --- | --- | --- | --- | --- | --- |
|  | R19 | **Road 27** |  | 2026-08-20 | 2027-01-23 |  |  |  |  |  |  |  |  |  |  |  |  |  |
| A88290 |  | Trenching & Bedding | 6d | 2026-08-20 A | 2026-09-28 A | A88300 SS, A88300 FF | 100% |  | 2027-05-23 | 2027-05-30 |  |  | ICKMO1-cost unite [45941.5 $]; Roller compactor [200 h]; JCB [200 h]; Physical Units [395851 h] | 45,941.5 | 45,941.5 | ZNB | CON |  |
| A88300 |  | Road Crossing Works | 8d | 2026-08-20 A | 2026-09-28 A | A55790, A58910 | 100% |  | 2027-05-20 | 2027-05-30 |  |  | ICKMO1-cost unite [30627.7 $]; Physical Units [263901 h] | 30,627.67 | 30,627.67 | ZNB | CON |  |
| A88310 |  | Pipe Laying | 6d | 2026-08-20 A | 2026-09-28 A | A88290 SS+8d, A88300 SS+8d, A88300 FF+8d | 100% |  | 2027-06-01 | 2027-06-08 |  |  | ICKMO1-cost unite [61255.3 $]; labor [800 h]; Physical Units [527801 h] | 61,255.34 | 61,255.34 | ZNB | CON | LAY |
| A88330 |  | Backfilling & Compaction | 6d | 2026-08-20 A | 2026-09-28 A | A88320, A88320 FF | 100% |  | 2027-06-13 | 2027-06-20 |  |  | ICKMO1-cost unite [91883 $]; Roller compactor [200 h]; JCB [200 h]; Physical Units [791702 h] | 91,883.02 | 91,883.02 | ZNB | CON |  |
| A88320 |  | Testing | 4d | 2026-12-09 | 2026-12-14 | A88310, A88310 FF |  |  |  |  | 5.28d | 0d | ICKMO1-cost unite [15313.8 $]; labor [800 h]; Physical Units [131950 h] | 15,313.83 |  | ZNB | CON |  |
| A88340 |  | Chambers Construction works | 16d | 2026-12-14 | 2027-01-02 | A88320 |  |  |  |  | 5.28d | 0d | ICKMO1-cost unite [45941.5 $]; labor [800 h]; Physical Units [395851 h] | 45,941.5 |  | ZNB | CON |  |
| A88350 |  | Valves & Fittings Installation | 18d | 2027-01-02 | 2027-01-23 | A88340 |  |  |  |  | 5.28d | 26.2d | ICKMO1-cost unite [15313.8 $]; labor [800 h]; Physical Units [131950 h] | 15,313.83 |  | ZNB | CON |  |
|  | R110 | **Collector 2** |  | 2026-08-20 | 2027-01-20 |  |  |  |  |  |  |  |  |  |  |  |  |  |
| A88230 |  | Road Crossing Works | 8d | 2026-08-20 A | 2026-09-28 A | A78270, A88300 | 100% |  | 2027-05-30 | 2027-06-08 |  |  | ICKMO1-cost unite [30627.7 $]; Physical Units [263901 h] | 30,627.67 | 30,627.67 | ZNB | CON |  |
| A88220 |  | Trenching & Bedding | 8d | 2026-09-15 A | 2026-12-10 | A88230 SS, A58910 | 95% | 0.4d | 2027-05-30 | 2027-06-08 | 7.58d | 0d | ICKMO1-cost unite [45941.5 $]; Roller compactor [200 h]; JCB [200 h]; Physical Units [395851 h] | 45,941.5 | 43,644.43 | ZNB | CON |  |
| A88240 |  | Pipe Laying | 18d | 2026-09-15 A | 2026-12-10 | A88220 SS+8d, A88230 SS+8d | 95% | 0.9d | 2027-06-08 | 2027-06-29 | 7.58d | 0d | ICKMO1-cost unite [61255.3 $]; labor [800 h]; Physical Units [527801 h] | 61,255.34 | 58,192.57 | ZNB | CON | LAY |
| A88250 |  | Testing | 4d | 2026-09-15 A | 2026-12-12 | A88240, A88240 FF | 80% | 0.8d | 2027-01-10 | 2027-01-14 | 7.58d | 0d | ICKMO1-cost unite [15313.8 $]; labor [800 h]; Physical Units [131950 h] | 15,313.83 | 12,251.07 | ZNB | CON |  |
| A88260 |  | Backfilling & Compaction | 16d | 2026-09-15 A | 2026-12-13 | A88250, A88250 FF | 95% | 0.8d | 2027-07-04 | 2027-07-22 | 22.78d | 15.2d | ICKMO1-cost unite [91883 $]; Roller compactor [200 h]; JCB [200 h]; Physical Units [791702 h] | 91,883.02 | 87,288.87 | ZNB | CON |  |
| A88270 |  | Chambers Construction works | 16d | 2026-12-12 | 2026-12-30 | A88250 |  |  |  |  | 7.58d | 0d | ICKMO1-cost unite [45941.5 $]; labor [800 h]; Physical Units [395851 h] | 45,941.5 |  | ZNB | CON |  |
| A88280 |  | Valves & Fittings Installation | 18d | 2026-12-30 | 2027-01-20 | A88270, A88260 |  |  |  |  | 7.58d | 28.5d | ICKMO1-cost unite [15313.8 $]; labor [800 h]; Physical Units [131950 h] | 15,313.83 |  | ZNB | CON |  |
|  | R111 | **Arterial 1** |  | 2026-08-20 | 2027-01-23 |  |  |  |  |  |  |  |  |  |  |  |  |  |
| A88160 |  | Road Crossing Works | 8d | 2026-08-20 A | 2026-09-28 A | A88230, A58910 | 100% |  | 2027-06-08 | 2027-06-17 |  |  | ICKMO1-cost unite [30627.7 $]; Physical Units [263901 h] | 30,627.67 | 30,627.67 | ZNB | CON |  |
| A88150 |  | Trenching & Bedding | 8d | 2026-09-15 A | 2026-12-09 | A88160 SS, A88160 FF | 97% | 0.24d | 2027-06-08 | 2027-06-17 | -38.96d | 0d | ICKMO1-cost unite [45941.5 $]; Roller compactor [200 h]; JCB [200 h]; Physical Units [395851 h] | 45,941.5 | 44,563.26 | ZNB | CON |  |
| A88170 |  | Pipe Laying | 18d | 2026-09-15 A | 2026-12-10 | A88150 SS+8d, A88160 SS+8d, A88160 FF+8d | 97% | 0.54d | 2027-06-17 | 2027-07-08 | 5.94d | 0d | ICKMO1-cost unite [61255.3 $]; labor [800 h]; Physical Units [527801 h] | 61,255.34 | 59,417.68 | ZNB | CON | LAY |
| A88180 |  | Testing | 4d | 2026-09-15 A | 2026-12-14 | A88170, A88170 FF | 30% | 2.8d | 2027-01-09 | 2027-01-13 | 5.94d | 0d | ICKMO1-cost unite [15313.8 $]; labor [800 h]; Physical Units [131950 h] | 15,313.83 | 4,594.15 | ZNB | CON |  |
| A88190 |  | Backfilling & Compaction | 16d | 2026-09-15 A | 2026-12-14 | A88180, A88180 FF | 97% | 0.48d | 2027-03-06 | 2027-03-24 | 21.46d | 15.52d | ICKMO1-cost unite [91883 $]; Roller compactor [200 h]; JCB [200 h]; Physical Units [791702 h] | 91,883.02 | 89,126.53 | ZNB | CON |  |
| A88200 |  | Chambers Construction works | 16d | 2026-12-14 | 2027-01-02 | A88180 |  |  |  |  | 5.94d | 0d | ICKMO1-cost unite [45941.5 $]; labor [800 h]; Physical Units [395851 h] | 45,941.5 |  | ZNB | CON |  |
| A88210 |  | Valves & Fittings Installation | 18d | 2027-01-02 | 2027-01-23 | A88200, A88190 |  |  |  |  | 5.94d | 26.86d | ICKMO1-cost unite [15313.8 $]; labor [800 h]; Physical Units [131950 h] | 15,313.83 |  | ZNB | CON |  |

| ID | WBS | Activity | Duration | Start | Finish | Predecessors | Complete | Planned start | Planned finish | Total float | Free float | Resources | Cost | Actual cost | ALKHARJ INDUSTERIAL AREA - PROJECT ZONES | ALKHARJ INDUSTERIAL AREA - DECEPLINS | ALKHARJ INDUSTERIAL AREA - Wet networks |
| --- | --- | --- | --- | --- | --- | --- | --- | --- | --- | --- | --- | --- | --- | --- | --- | --- | --- |
|  | Zone B | **SEWEGE NETWORK** |  | 2026-07-04 | 2026-12-29 |  |  |  |  |  |  |  |  |  |  |  |  |
|  | AR 01 | **AR 01** |  | 2026-07-04 | 2026-11-22 |  |  |  |  |  |  |  |  |  |  |  |  |
|  | MH-3.10 / MH-3.11 | **MH-3.10 / MH-3.11** |  | 2026-11-02 | 2026-11-22 |  |  |  |  |  |  |  |  |  |  |  |  |
| A49900 |  | Excavation | 4d | 2026-11-02 | 2026-11-05 | A67120, A68070, A55750, A1990 |  |  |  | -12.9d | 0d | ICKMO1-cost unite [5514.74 $]; Excavator [200 h]; Physical Units [47517.3 h] | 5,514.74 |  | ZNB | CON |  |
| A49910 |  | Pipe Laying | 8d | 2026-11-07 | 2026-11-15 | A49900 |  |  |  | -12.9d | 0d | ICKMO1-cost unite [6893.43 $]; boom truck [200 h]; labor [1200 h]; Sewage Network Circular pipes (GRP) [63.28]; Physical Units [59396.7 h] | 6,893.43 |  | ZNB | CON | LAY |
| A49920 |  | Install Manhole | 4d | 2026-11-07 | 2026-11-10 | A49900 |  |  |  | -6.9d | 6d | ICKMO1-cost unite [11029.5 $]; boom truck [200 h]; labor [1200 h]; Physical Units [95034.6 h] | 11,029.48 |  | ZNB | CON | MH |
| A49930 |  | Testing & Inspection | 2d | 2026-11-16 | 2026-11-17 | A49910 |  |  |  | -12.9d | 0d | ICKMO1-cost unite [1378.69 $]; labor [1200 h]; Physical Units [11879.4 h] | 1,378.69 |  | ZNB | CON |  |
| A49940 |  | Backfilling & Compaction | 4d | 2026-11-18 | 2026-11-22 | A49930, A49920 |  |  |  | -12.9d | 0d | ICKMO1-cost unite [2757.37 $]; Roller compactor [200 h]; Physical Units [23758.6 h] | 2,757.37 |  | ZNB | CON |  |
|  | MH-3.7 / MH-3.8 | **MH-3.7 / MH-3.8** |  | 2026-07-04 | 2026-08-05 |  |  |  |  |  |  |  |  |  |  |  |  |
| A49950 |  | Excavation | 4d | 2026-07-04 A | 2026-08-05 A | A49900, A1990 | 100% | 2026-12-24 | 2026-12-29 |  |  | ICKMO1-cost unite [5514.74 $]; Excavator [200 h]; Physical Units [47517.3 h] | 5,514.74 | 5,514.74 | ZNB | CON |  |
| A49960 |  | Pipe Laying | 8d | 2026-07-04 A | 2026-08-05 A | A49950 | 100% | 2026-12-29 | 2027-01-07 |  |  | ICKMO1-cost unite [6893.43 $]; boom truck [200 h]; labor [1200 h]; Sewage Network Circular pipes (GRP) [63.28]; Physical Units [59396.7 h] | 6,893.43 | 6,893.43 | ZNB | CON | LAY |
| A49970 |  | Install Manhole | 4d | 2026-07-04 A | 2026-08-05 A | A49950 | 100% | 2026-12-29 | 2027-01-03 |  |  | ICKMO1-cost unite [11029.5 $]; boom truck [200 h]; labor [1200 h]; Physical Units [95034.6 h] | 11,029.48 | 11,029.48 | ZNB | CON | MH |
| A49980 |  | Testing & Inspection | 2d | 2026-07-04 A | 2026-08-05 A | A49960 | 100% | 2027-01-07 | 2027-01-10 |  |  | ICKMO1-cost unite [1378.69 $]; labor [1200 h]; Physical Units [11879.4 h] | 1,378.69 | 1,378.69 | ZNB | CON |  |
| A49990 |  | Backfilling & Compaction | 4d | 2026-07-04 A | 2026-08-05 A | A49980, A49970, A49940 | 100% | 2027-01-10 | 2027-01-14 |  |  | ICKMO1-cost unite [2757.37 $]; Roller compactor [200 h]; Physical Units [23758.6 h] | 2,757.37 | 2,757.37 | ZNB | CON |  |
|  | MH-3.8 / MH-3.9 | **MH-3.8 / MH-3.9** |  | 2026-07-04 | 2026-08-05 |  |  |  |  |  |  |  |  |  |  |  |  |
| A50000 |  | Excavation | 4d | 2026-07-04 A | 2026-08-05 A | A49950, A1990 | 100% | 2026-12-29 | 2027-01-03 |  |  | ICKMO1-cost unite [5514.74 $]; Excavator [200 h]; Physical Units [47517.3 h] | 5,514.74 | 5,514.74 | ZNB | CON |  |
| A50010 |  | Pipe Laying | 8d | 2026-07-04 A | 2026-08-05 A | A50000 | 100% | 2027-01-03 | 2027-01-12 |  |  | ICKMO1-cost unite [6893.43 $]; boom truck [200 h]; labor [1200 h]; Sewage Network Circular pipes (GRP) [63.28]; Physical Units [59396.7 h] | 6,893.43 | 6,893.43 | ZNB | CON | LAY |
| A50020 |  | Install Manhole | 4d | 2026-07-04 A | 2026-08-05 A | A50000 | 100% | 2027-01-03 | 2027-01-07 |  |  | ICKMO1-cost unite [11029.5 $]; boom truck [200 h]; labor [1200 h]; Physical Units [95034.6 h] | 11,029.48 | 11,029.48 | ZNB | CON | MH |
| A50030 |  | Testing & Inspection | 2d | 2026-07-04 A | 2026-08-05 A | A50010 | 100% | 2027-01-12 | 2027-01-14 |  |  | ICKMO1-cost unite [1378.69 $]; labor [1200 h]; Physical Units [11879.4 h] | 1,378.69 | 1,378.69 | ZNB | CON |  |
| A50040 |  | Backfilling & Compaction | 4d | 2026-07-04 A | 2026-08-05 A | A50030, A50020, A49990 | 100% | 2027-01-14 | 2027-01-19 |  |  | ICKMO1-cost unite [2757.37 $]; Roller compactor [200 h]; Physical Units [23758.6 h] | 2,757.37 | 2,757.37 | ZNB | CON |  |
|  | MH-3.9 / MH-3.10 | **MH-3.9 / MH-3.10** |  | 2026-07-04 | 2026-08-05 |  |  |  |  |  |  |  |  |  |  |  |  |
| A50050 |  | Excavation | 4d | 2026-07-04 A | 2026-08-05 A | A50000, A50000 FF, A1990 | 100% | 2027-01-03 | 2027-01-07 |  |  | ICKMO1-cost unite [5514.74 $]; Excavator [200 h]; Physical Units [47517.3 h] | 5,514.74 | 5,514.74 | ZNB | CON |  |
| A50060 |  | Pipe Laying | 8d | 2026-07-04 A | 2026-08-05 A | A50050 | 100% | 2027-01-07 | 2027-01-17 |  |  | ICKMO1-cost unite [6893.43 $]; boom truck [200 h]; labor [1200 h]; Sewage Network Circular pipes (GRP) [63.28]; Physical Units [59396.7 h] | 6,893.43 | 6,893.43 | ZNB | CON | LAY |
| A50070 |  | Install Manhole | 4d | 2026-07-04 A | 2026-08-05 A | A50050 | 100% | 2027-01-07 | 2027-01-12 |  |  | ICKMO1-cost unite [11029.5 $]; boom truck [200 h]; labor [1200 h]; Physical Units [95034.6 h] | 11,029.48 | 11,029.48 | ZNB | CON | MH |
| A50080 |  | Testing & Inspection | 2d | 2026-07-04 A | 2026-08-05 A | A50060 | 100% | 2027-01-17 | 2027-01-19 |  |  | ICKMO1-cost unite [1378.69 $]; labor [1200 h]; Physical Units [11879.4 h] | 1,378.69 | 1,378.69 | ZNB | CON |  |
| A50090 |  | Backfilling & Compaction | 4d | 2026-07-04 A | 2026-08-05 A | A50080, A50070, A50040 | 100% | 2027-01-19 | 2027-01-24 |  |  | ICKMO1-cost unite [2757.37 $]; Roller compactor [200 h]; Physical Units [23758.6 h] | 2,757.37 | 2,757.37 | ZNB | CON |  |

| ID | WBS | Activity | Duration | Start | Finish | Predecessors | Complete | Planned start | Planned finish | Resources | Cost | Actual cost | ALKHARJ INDUSTERIAL AREA - PROJECT ZONES | ALKHARJ INDUSTERIAL AREA - DECEPLINS | ALKHARJ INDUSTERIAL AREA - Wet networks |
| --- | --- | --- | --- | --- | --- | --- | --- | --- | --- | --- | --- | --- | --- | --- | --- |
|  | EX LR 19 | **EX LR 19** |  | 2026-07-04 | 2026-08-05 |  |  |  |  |  |  |  |  |  |  |
|  | MH-3.42 / MH-3.43 | **MH-3.42 / MH-3.43** |  | 2026-07-04 | 2026-08-05 |  |  |  |  |  |  |  |  |  |  |
| A50100 |  | Excavation | 4d | 2026-07-04 A | 2026-08-05 A | A50050, A1990 | 100% | 2027-01-07 | 2027-01-12 | ICKMO1-cost unite [6221.76 $]; Excavator [200 h]; Physical Units [53609.3 h] | 6,221.76 | 6,221.76 | ZNB | CON |  |
| A50110 |  | Pipe Laying | 8d | 2026-07-04 A | 2026-08-05 A | A50100 | 100% | 2027-01-12 | 2027-01-21 | ICKMO1-cost unite [7777.2 $]; boom truck [200 h]; labor [1200 h]; Sewage Network Circular pipes (GRP) [63.28]; Physical Units [67011.6 h] | 7,777.2 | 7,777.2 | ZNB | CON | LAY |
| A50120 |  | Install Manhole | 4d | 2026-07-04 A | 2026-08-05 A | A50100 | 100% | 2027-01-12 | 2027-01-17 | ICKMO1-cost unite [12443.5 $]; boom truck [200 h]; labor [1200 h]; Physical Units [107219 h] | 12,443.52 | 12,443.52 | ZNB | CON | MH |
| A50130 |  | Testing & Inspection | 2d | 2026-07-04 A | 2026-08-05 A | A50110 | 100% | 2027-01-21 | 2027-01-24 | ICKMO1-cost unite [1555.44 $]; labor [1200 h]; Physical Units [13402.3 h] | 1,555.44 | 1,555.44 | ZNB | CON |  |
| A50140 |  | Backfilling & Compaction | 4d | 2026-07-04 A | 2026-08-05 A | A50130, A50120 | 100% | 2027-01-24 | 2027-01-28 | ICKMO1-cost unite [3110.88 $]; Roller compactor [200 h]; Physical Units [26804.6 h] | 3,110.88 | 3,110.88 | ZNB | CON |  |
|  | MH-3.43 / MH-3.44 | **MH-3.43 / MH-3.44** |  | 2026-07-04 | 2026-08-05 |  |  |  |  |  |  |  |  |  |  |
| A50150 |  | Excavation | 4d | 2026-07-04 A | 2026-08-05 A | A50100, A1990 | 100% | 2027-01-12 | 2027-01-17 | ICKMO1-cost unite [6221.76 $]; Excavator [200 h]; Physical Units [53609.3 h] | 6,221.76 | 6,221.76 | ZNB | CON |  |
| A50160 |  | Pipe Laying | 8d | 2026-07-04 A | 2026-08-05 A | A50150 | 100% | 2027-01-17 | 2027-01-26 | ICKMO1-cost unite [7777.2 $]; boom truck [200 h]; labor [1200 h]; Sewage Network Circular pipes (GRP) [63.28]; Physical Units [67011.6 h] | 7,777.2 | 7,777.2 | ZNB | CON | LAY |
| A50170 |  | Install Manhole | 4d | 2026-07-04 A | 2026-08-05 A | A50150 | 100% | 2027-01-17 | 2027-01-21 | ICKMO1-cost unite [12443.5 $]; boom truck [200 h]; labor [1200 h]; Physical Units [107219 h] | 12,443.52 | 12,443.52 | ZNB | CON | MH |
| A50180 |  | Testing & Inspection | 2d | 2026-07-04 A | 2026-08-05 A | A50160 | 100% | 2027-01-26 | 2027-01-28 | ICKMO1-cost unite [1555.44 $]; labor [1200 h]; Physical Units [13402.3 h] | 1,555.44 | 1,555.44 | ZNB | CON |  |
| A50190 |  | Backfilling & Compaction | 4d | 2026-07-04 A | 2026-08-05 A | A50180, A50170, A50140 | 100% | 2027-01-28 | 2027-02-02 | ICKMO1-cost unite [3110.88 $]; Roller compactor [200 h]; Physical Units [26804.6 h] | 3,110.88 | 3,110.88 | ZNB | CON |  |
|  | MH-3.44 / MH-3.45 | **MH-3.44 / MH-3.45** |  | 2026-07-04 | 2026-08-05 |  |  |  |  |  |  |  |  |  |  |
| A50200 |  | Excavation | 4d | 2026-07-04 A | 2026-08-05 A | A50150, A1990 | 100% | 2027-01-17 | 2027-01-21 | ICKMO1-cost unite [6221.76 $]; Excavator [200 h]; Physical Units [53609.3 h] | 6,221.76 | 6,221.76 | ZNB | CON |  |
| A50210 |  | Pipe Laying | 8d | 2026-07-04 A | 2026-08-05 A | A50200 | 100% | 2027-01-21 | 2027-01-31 | ICKMO1-cost unite [7777.2 $]; boom truck [200 h]; labor [1200 h]; Sewage Network Circular pipes (GRP) [63.28]; Physical Units [67011.6 h] | 7,777.2 | 7,777.2 | ZNB | CON | LAY |
| A50220 |  | Install Manhole | 4d | 2026-07-04 A | 2026-08-05 A | A50200 | 100% | 2027-01-21 | 2027-01-26 | ICKMO1-cost unite [12443.5 $]; boom truck [200 h]; labor [1200 h]; Physical Units [107219 h] | 12,443.52 | 12,443.52 | ZNB | CON | MH |
| A50230 |  | Testing & Inspection | 2d | 2026-07-04 A | 2026-08-05 A | A50210 | 100% | 2027-01-31 | 2027-02-02 | ICKMO1-cost unite [1555.44 $]; labor [1200 h]; Physical Units [13402.3 h] | 1,555.44 | 1,555.44 | ZNB | CON |  |
| A50240 |  | Backfilling & Compaction | 4d | 2026-07-04 A | 2026-08-05 A | A50230, A50220, A50190 | 100% | 2027-02-02 | 2027-02-07 | ICKMO1-cost unite [3110.88 $]; Roller compactor [200 h]; Physical Units [26804.6 h] | 3,110.88 | 3,110.88 | ZNB | CON |  |
|  | EX LR 20 | **EX LR 20** |  | 2026-07-04 | 2026-11-26 |  |  |  |  |  |  |  |  |  |  |
|  | MH-3.36 / MH-3.37 | **MH-3.36 / MH-3.37** |  | 2026-07-04 | 2026-08-05 |  |  |  |  |  |  |  |  |  |  |
| A50250 |  | Excavation | 4d | 2026-07-04 A | 2026-08-05 A | A50100, A1990 | 100% | 2027-01-12 | 2027-01-17 | ICKMO1-cost unite [4807.72 $]; Excavator [200 h]; Physical Units [41425.3 h] | 4,807.72 | 4,807.72 | ZNB | CON |  |
| A50260 |  | Pipe Laying | 8d | 2026-07-04 A | 2026-08-05 A | A50250 | 100% | 2027-01-17 | 2027-01-26 | ICKMO1-cost unite [6009.65 $]; boom truck [200 h]; labor [1200 h]; Sewage Network Circular pipes (GRP) [63.28]; Physical Units [51781.6 h] | 6,009.65 | 6,009.65 | ZNB | CON | LAY |
| A50270 |  | Install Manhole | 4d | 2026-07-04 A | 2026-08-05 A | A50250 | 100% | 2027-01-17 | 2027-01-21 | ICKMO1-cost unite [9615.45 $]; boom truck [200 h]; labor [1200 h]; Physical Units [82850.7 h] | 9,615.45 | 9,615.45 | ZNB | CON | MH |
| A50280 |  | Testing & Inspection | 2d | 2026-07-04 A | 2026-08-05 A | A50260 | 100% | 2027-01-26 | 2027-01-28 | ICKMO1-cost unite [1201.93 $]; labor [1200 h]; Physical Units [10356.3 h] | 1,201.93 | 1,201.93 | ZNB | CON |  |
| A50290 |  | Backfilling & Compaction | 4d | 2026-07-04 A | 2026-08-05 A | A50280, A50270 | 100% | 2027-01-28 | 2027-02-02 | ICKMO1-cost unite [2403.86 $]; Roller compactor [200 h]; Physical Units [20712.7 h] | 2,403.86 | 2,403.86 | ZNB | CON |  |

| ID | WBS | Activity | Duration | Start | Finish | Predecessors | Complete | Planned start | Planned finish | Resources | Cost | Actual cost | ALKHARJ INDUSTERIAL AREA - PROJECT ZONES | ALKHARJ INDUSTERIAL AREA - DECEPLINS | ALKHARJ INDUSTERIAL AREA - Wet networks |
| --- | --- | --- | --- | --- | --- | --- | --- | --- | --- | --- | --- | --- | --- | --- | --- |
|  | MH-3.37 / MH-3.38 | **MH-3.37 / MH-3.38** |  | 2026-07-04 | 2026-08-05 |  |  |  |  |  |  |  |  |  |  |
| A50300 |  | Excavation | 4d | 2026-07-04 A | 2026-08-05 A | A50250, A1990 | 100% | 2027-01-17 | 2027-01-21 | ICKMO1-cost unite [4807.72 $]; Excavator [200 h]; Physical Units [41425.3 h] | 4,807.72 | 4,807.72 | ZNB | CON |  |
| A50310 |  | Pipe Laying | 8d | 2026-07-04 A | 2026-08-05 A | A50300 | 100% | 2027-01-21 | 2027-01-31 | ICKMO1-cost unite [6009.65 $]; boom truck [200 h]; labor [1200 h]; Sewage Network Circular pipes (GRP) [63.28]; Physical Units [51781.6 h] | 6,009.65 | 6,009.65 | ZNB | CON | LAY |
| A50320 |  | Install Manhole | 4d | 2026-07-04 A | 2026-08-05 A | A50300 | 100% | 2027-01-21 | 2027-01-26 | ICKMO1-cost unite [9615.45 $]; boom truck [200 h]; labor [1200 h]; Physical Units [82850.7 h] | 9,615.45 | 9,615.45 | ZNB | CON | MH |
| A50330 |  | Testing & Inspection | 2d | 2026-07-04 A | 2026-08-05 A | A50310 | 100% | 2027-01-31 | 2027-02-02 | ICKMO1-cost unite [1201.93 $]; labor [1200 h]; Physical Units [10356.3 h] | 1,201.93 | 1,201.93 | ZNB | CON |  |
| A50340 |  | Backfilling & Compaction | 4d | 2026-07-04 A | 2026-08-05 A | A50330, A50320, A50290, A50240 | 100% | 2027-02-07 | 2027-02-11 | ICKMO1-cost unite [2403.86 $]; Roller compactor [200 h]; Physical Units [20712.7 h] | 2,403.86 | 2,403.86 | ZNB | CON |  |
|  | MH-3.38 / MH-3.39 | **MH-3.38 / MH-3.39** |  | 2026-07-04 | 2026-08-05 |  |  |  |  |  |  |  |  |  |  |
| A50350 |  | Excavation | 4d | 2026-07-04 A | 2026-08-05 A | A50300, A1990 | 100% | 2027-01-21 | 2027-01-26 | ICKMO1-cost unite [4807.72 $]; Excavator [200 h]; Physical Units [41425.3 h] | 4,807.72 | 4,807.72 | ZNB | CON |  |
| A50360 |  | Pipe Laying | 8d | 2026-07-04 A | 2026-08-05 A | A50350 | 100% | 2027-01-26 | 2027-02-04 | ICKMO1-cost unite [6009.65 $]; boom truck [200 h]; labor [1200 h]; Sewage Network Circular pipes (GRP) [63.28]; Physical Units [51781.6 h] | 6,009.65 | 6,009.65 | ZNB | CON | LAY |
| A50370 |  | Install Manhole | 4d | 2026-07-04 A | 2026-08-05 A | A50350 | 100% | 2027-01-26 | 2027-01-31 | ICKMO1-cost unite [9615.45 $]; boom truck [200 h]; labor [1200 h]; Physical Units [82850.7 h] | 9,615.45 | 9,615.45 | ZNB | CON | MH |
| A50380 |  | Testing & Inspection | 2d | 2026-07-04 A | 2026-08-05 A | A50360 | 100% | 2027-02-04 | 2027-02-07 | ICKMO1-cost unite [1201.93 $]; labor [1200 h]; Physical Units [10356.3 h] | 1,201.93 | 1,201.93 | ZNB | CON |  |
| A50390 |  | Backfilling & Compaction | 4d | 2026-07-04 A | 2026-08-05 A | A50380, A50370, A50340 | 100% | 2027-02-11 | 2027-02-16 | ICKMO1-cost unite [2403.86 $]; Roller compactor [200 h]; Physical Units [20712.7 h] | 2,403.86 | 2,403.86 | ZNB | CON |  |
|  | MH-3.39 / MH-3.40 | **MH-3.39 / MH-3.40** |  | 2026-07-04 | 2026-09-05 |  |  |  |  |  |  |  |  |  |  |
| A50400 |  | Excavation | 4d | 2026-07-04 A | 2026-08-05 A | A50350, A1990 | 100% | 2027-01-26 | 2027-01-31 | ICKMO1-cost unite [4807.72 $]; Excavator [200 h]; Physical Units [41425.3 h] | 4,807.72 | 4,807.72 | ZNB | CON |  |
| A50410 |  | Pipe Laying | 8d | 2026-08-04 A | 2026-09-05 A | A50400 | 100% | 2027-01-31 | 2027-02-09 | ICKMO1-cost unite [6009.65 $]; boom truck [200 h]; labor [1200 h]; Sewage Network Circular pipes (GRP) [63.28]; Physical Units [51781.6 h] | 6,009.65 | 6,009.65 | ZNB | CON | LAY |
| A50420 |  | Install Manhole | 4d | 2026-08-04 A | 2026-09-05 A | A50400 | 100% | 2027-01-31 | 2027-02-04 | ICKMO1-cost unite [9615.45 $]; boom truck [200 h]; labor [1200 h]; Physical Units [82850.7 h] | 9,615.45 | 9,615.45 | ZNB | CON | MH |
| A50430 |  | Testing & Inspection | 2d | 2026-08-04 A | 2026-09-05 A | A50410 | 100% | 2027-02-09 | 2027-02-11 | ICKMO1-cost unite [1201.93 $]; labor [1200 h]; Physical Units [10356.3 h] | 1,201.93 | 1,201.93 | ZNB | CON |  |
| A50440 |  | Backfilling & Compaction | 4d | 2026-08-04 A | 2026-09-05 A | A50430, A50420, A50390 | 100% | 2027-02-16 | 2027-02-21 | ICKMO1-cost unite [2403.86 $]; Roller compactor [200 h]; Physical Units [20712.7 h] | 2,403.86 | 2,403.86 | ZNB | CON |  |
|  | MH-3.40 / MH-3.41 | **MH-3.40 / MH-3.41** |  | 2026-07-04 | 2026-08-05 |  |  |  |  |  |  |  |  |  |  |
| A50450 |  | Excavation | 4d | 2026-07-04 A | 2026-08-05 A | A50400, A1990 | 100% | 2027-01-31 | 2027-02-04 | ICKMO1-cost unite [4807.72 $]; Excavator [200 h]; Physical Units [41425.3 h] | 4,807.72 | 4,807.72 | ZNB | CON |  |
| A50460 |  | Pipe Laying | 8d | 2026-07-04 A | 2026-08-05 A | A50450 | 100% | 2027-02-04 | 2027-02-14 | ICKMO1-cost unite [6009.65 $]; boom truck [200 h]; labor [1200 h]; Sewage Network Circular pipes (GRP) [63.28]; Physical Units [51781.6 h] | 6,009.65 | 6,009.65 | ZNB | CON | LAY |
| A50470 |  | Install Manhole | 4d | 2026-07-04 A | 2026-08-05 A | A50450 | 100% | 2027-02-04 | 2027-02-09 | ICKMO1-cost unite [9615.45 $]; boom truck [200 h]; labor [1200 h]; Physical Units [82850.7 h] | 9,615.45 | 9,615.45 | ZNB | CON | MH |
| A50480 |  | Testing & Inspection | 2d | 2026-07-04 A | 2026-08-05 A | A50460 | 100% | 2027-02-14 | 2027-02-16 | ICKMO1-cost unite [1201.93 $]; labor [1200 h]; Physical Units [10356.3 h] | 1,201.93 | 1,201.93 | ZNB | CON |  |
| A50490 |  | Backfilling & Compaction | 4d | 2026-07-04 A | 2026-08-05 A | A50480, A50470, A50440 | 100% | 2027-02-21 | 2027-02-25 | ICKMO1-cost unite [2403.86 $]; Roller compactor [200 h]; Physical Units [20712.7 h] | 2,403.86 | 2,403.86 | ZNB | CON |  |

| ID | WBS | Activity | Duration | Start | Finish | Predecessors | Complete | Planned start | Planned finish | Total float | Free float | Resources | Cost | Actual cost | ALKHARJ INDUSTERIAL AREA - PROJECT ZONES | ALKHARJ INDUSTERIAL AREA - DECEPLINS | ALKHARJ INDUSTERIAL AREA - Wet networks |
| --- | --- | --- | --- | --- | --- | --- | --- | --- | --- | --- | --- | --- | --- | --- | --- | --- | --- |
|  | MH-3.41 / MH-3.42 | **MH-3.41 / MH-3.42** |  | 2026-11-07 | 2026-11-26 |  |  |  |  |  |  |  |  |  |  |  |  |
| A50500 |  | Excavation | 4d | 2026-11-07 | 2026-11-10 | A50450, A1990 |  |  |  | -0.9d | 0d | ICKMO1-cost unite [4807.72 $]; Excavator [200 h]; Physical Units [41425.3 h] | 4,807.72 |  | ZNB | CON |  |
| A50510 |  | Pipe Laying | 8d | 2026-11-11 | 2026-11-19 | A50500 |  |  |  | -0.9d | 0d | ICKMO1-cost unite [6009.65 $]; boom truck [200 h]; labor [1200 h]; Sewage Network Circular pipes (GRP) [63.28]; Physical Units [51781.6 h] | 6,009.65 |  | ZNB | CON | LAY |
| A50520 |  | Install Manhole | 4d | 2026-11-11 | 2026-11-15 | A50500 |  |  |  | 5.1d | 6d | ICKMO1-cost unite [9615.45 $]; boom truck [200 h]; labor [1200 h]; Physical Units [82850.7 h] | 9,615.45 |  | ZNB | CON | MH |
| A50530 |  | Testing & Inspection | 2d | 2026-11-21 | 2026-11-22 | A50510 |  |  |  | -0.9d | 0d | ICKMO1-cost unite [1201.93 $]; labor [1200 h]; Physical Units [10356.3 h] | 1,201.93 |  | ZNB | CON |  |
| A50540 |  | Backfilling & Compaction | 4d | 2026-11-23 | 2026-11-26 | A50530, A50520, A50490 |  |  |  | -0.9d | 8d | ICKMO1-cost unite [2403.86 $]; Roller compactor [200 h]; Physical Units [20712.7 h] | 2,403.86 |  | ZNB | CON |  |
|  | EX LR 26 | **EX LR 26** |  | 2026-08-04 | 2026-09-05 |  |  |  |  |  |  |  |  |  |  |  |  |
|  | MH-3.11 / MH-3.12 | **MH-3.11 / MH-3.12** |  | 2026-08-04 | 2026-09-05 |  |  |  |  |  |  |  |  |  |  |  |  |
| A50550 |  | Excavation | 4d | 2026-08-04 A | 2026-09-05 A | A50250, A1990 | 100% | 2027-01-17 | 2027-01-21 |  |  | ICKMO1-cost unite [11877.9 $]; Excavator [200 h]; Physical Units [102345 h] | 11,877.9 | 11,877.9 | ZNB | CON |  |
| A50560 |  | Pipe Laying | 8d | 2026-08-04 A | 2026-09-05 A | A50550 | 100% | 2027-01-21 | 2027-01-31 |  |  | ICKMO1-cost unite [14847.4 $]; boom truck [200 h]; labor [1200 h]; Sewage Network Circular pipes (GRP) [63.28]; Physical Units [127931 h] | 14,847.38 | 14,847.38 | ZNB | CON | LAY |
| A50570 |  | Install Manhole | 4d | 2026-08-04 A | 2026-09-05 A | A50550 | 100% | 2027-01-21 | 2027-01-26 |  |  | ICKMO1-cost unite [23755.8 $]; boom truck [200 h]; labor [1200 h]; Physical Units [204690 h] | 23,755.81 | 23,755.81 | ZNB | CON | MH |
| A50580 |  | Testing & Inspection | 2d | 2026-08-04 A | 2026-09-05 A | A50560 | 100% | 2027-01-31 | 2027-02-02 |  |  | ICKMO1-cost unite [2969.47 $]; labor [1200 h]; Physical Units [25586.2 h] | 2,969.47 | 2,969.47 | ZNB | CON |  |
| A50590 |  | Backfilling & Compaction | 4d | 2026-08-04 A | 2026-09-05 A | A50580, A50570 | 100% | 2027-02-02 | 2027-02-07 |  |  | ICKMO1-cost unite [5938.95 $]; Roller compactor [200 h]; Physical Units [51172.4 h] | 5,938.95 | 5,938.95 | ZNB | CON |  |
|  | Ex. AR 01 | **Ex. AR 01** |  | 2026-08-04 | 2026-12-06 |  |  |  |  |  |  |  |  |  |  |  |  |
|  | EX. MH Connection / MH-3.1 | **EX. MH Connection / MH-3.1** |  | 2026-11-07 | 2026-11-26 |  |  |  |  |  |  |  |  |  |  |  |  |
| A50600 |  | Excavation | 4d | 2026-11-07 | 2026-11-10 | A50550, A1990 |  |  |  | -8.9d | 0d | ICKMO1-cost unite [4605.72 $]; Excavator [200 h]; Physical Units [39684.8 h] | 4,605.72 |  | ZNB | CON |  |
| A50610 |  | Pipe Laying | 8d | 2026-11-11 | 2026-11-19 | A50600 |  |  |  | -8.9d | 0d | ICKMO1-cost unite [5757.15 $]; boom truck [200 h]; labor [1200 h]; Sewage Network Circular pipes (GRP) [63.28]; Physical Units [49606 h] | 5,757.15 |  | ZNB | CON | LAY |
| A50620 |  | Install Manhole | 4d | 2026-11-11 | 2026-11-15 | A50600 |  |  |  | -2.9d | 6d | ICKMO1-cost unite [9211.43 $]; boom truck [200 h]; labor [1200 h]; Physical Units [79369.5 h] | 9,211.43 |  | ZNB | CON | MH |
| A50630 |  | Testing & Inspection | 2d | 2026-11-21 | 2026-11-22 | A50610 |  |  |  | -8.9d | 0d | ICKMO1-cost unite [1151.43 $]; labor [1200 h]; Physical Units [9921.2 h] | 1,151.43 |  | ZNB | CON |  |
| A50640 |  | Backfilling & Compaction | 4d | 2026-11-23 | 2026-11-26 | A50630, A50620 |  |  |  | -8.9d | 0d | ICKMO1-cost unite [2302.86 $]; Roller compactor [200 h]; Physical Units [19842.4 h] | 2,302.86 |  | ZNB | CON |  |
|  | MH-3.1 / MH-3.2 | **MH-3.1 / MH-3.2** |  | 2026-11-11 | 2026-12-01 |  |  |  |  |  |  |  |  |  |  |  |  |
| A50650 |  | Excavation | 4d | 2026-11-11 | 2026-11-15 | A50600, A1990 |  |  |  | -8.9d | 0d | ICKMO1-cost unite [4605.72 $]; Excavator [200 h]; Physical Units [39684.8 h] | 4,605.72 |  | ZNB | CON |  |
| A50660 |  | Pipe Laying | 8d | 2026-11-16 | 2026-11-24 | A50650 |  |  |  | -8.9d | 0d | ICKMO1-cost unite [5757.15 $]; boom truck [200 h]; labor [1200 h]; Sewage Network Circular pipes (GRP) [63.28]; Physical Units [49606 h] | 5,757.15 |  | ZNB | CON | LAY |
| A50670 |  | Install Manhole | 4d | 2026-11-16 | 2026-11-19 | A50650 |  |  |  | -2.9d | 6d | ICKMO1-cost unite [9211.43 $]; boom truck [200 h]; labor [1200 h]; Physical Units [79369.5 h] | 9,211.43 |  | ZNB | CON | MH |
| A50680 |  | Testing & Inspection | 2d | 2026-11-25 | 2026-11-26 | A50660 |  |  |  | -8.9d | 0d | ICKMO1-cost unite [1151.43 $]; labor [1200 h]; Physical Units [9921.2 h] | 1,151.43 |  | ZNB | CON |  |
| A50690 |  | Backfilling & Compaction | 4d | 2026-11-28 | 2026-12-01 | A50680, A50670, A50640 |  |  |  | -8.9d | 0d | ICKMO1-cost unite [2302.86 $]; Roller compactor [200 h]; Physical Units [19842.4 h] | 2,302.86 |  | ZNB | CON |  |

| ID | WBS | Activity | Duration | Start | Finish | Predecessors | Complete | Planned start | Planned finish | Total float | Free float | Resources | Cost | Actual cost | ALKHARJ INDUSTERIAL AREA - PROJECT ZONES | ALKHARJ INDUSTERIAL AREA - DECEPLINS | ALKHARJ INDUSTERIAL AREA - Wet networks |
| --- | --- | --- | --- | --- | --- | --- | --- | --- | --- | --- | --- | --- | --- | --- | --- | --- | --- |
|  | MH-3.2 / MH-3.3 | **MH-3.2 / MH-3.3** |  | 2026-11-16 | 2026-12-06 |  |  |  |  |  |  |  |  |  |  |  |  |
| A50700 |  | Excavation | 4d | 2026-11-16 | 2026-11-19 | A50650, A1990 |  |  |  | -8.9d | 0d | ICKMO1-cost unite [4605.72 $]; Excavator [200 h]; Physical Units [39684.8 h] | 4,605.72 |  | ZNB | CON |  |
| A50710 |  | Pipe Laying | 8d | 2026-11-21 | 2026-11-29 | A50700 |  |  |  | -8.9d | 0d | ICKMO1-cost unite [5757.15 $]; boom truck [200 h]; labor [1200 h]; Sewage Network Circular pipes (GRP) [63.28]; Physical Units [49606 h] | 5,757.15 |  | ZNB | CON | LAY |
| A50720 |  | Install Manhole | 4d | 2026-11-21 | 2026-11-24 | A50700 |  |  |  | -2.9d | 6d | ICKMO1-cost unite [9211.43 $]; boom truck [200 h]; labor [1200 h]; Physical Units [79369.5 h] | 9,211.43 |  | ZNB | CON | MH |
| A50730 |  | Testing & Inspection | 2d | 2026-11-30 | 2026-12-01 | A50710 |  |  |  | -8.9d | 0d | ICKMO1-cost unite [1151.43 $]; labor [1200 h]; Physical Units [9921.2 h] | 1,151.43 |  | ZNB | CON |  |
| A50740 |  | Backfilling & Compaction | 4d | 2026-12-02 | 2026-12-06 | A50730, A50720, A50690 |  |  |  | -8.9d | 0d | ICKMO1-cost unite [2302.86 $]; Roller compactor [200 h]; Physical Units [19842.4 h] | 2,302.86 |  | ZNB | CON |  |
|  | MH-3.3 / MH-3.4 | **MH-3.3 / MH-3.4** |  | 2026-08-04 | 2026-09-05 |  |  |  |  |  |  |  |  |  |  |  |  |
| A50750 |  | Excavation | 4d | 2026-08-04 A | 2026-09-05 A | A50700, A1990 | 100% | 2027-02-04 | 2027-02-09 |  |  | ICKMO1-cost unite [4605.72 $]; Excavator [200 h]; Physical Units [39684.8 h] | 4,605.72 | 4,605.72 | ZNB | CON |  |
| A50760 |  | Pipe Laying | 8d | 2026-08-04 A | 2026-09-05 A | A50750 | 100% | 2027-02-09 | 2027-02-18 |  |  | ICKMO1-cost unite [5757.15 $]; boom truck [200 h]; labor [1200 h]; Sewage Network Circular pipes (GRP) [63.28]; Physical Units [49606 h] | 5,757.15 | 5,757.15 | ZNB | CON | LAY |
| A50770 |  | Install Manhole | 4d | 2026-08-04 A | 2026-09-05 A | A50750 | 100% | 2027-02-09 | 2027-02-14 |  |  | ICKMO1-cost unite [9211.43 $]; boom truck [200 h]; labor [1200 h]; Physical Units [79369.5 h] | 9,211.43 | 9,211.43 | ZNB | CON | MH |
| A50780 |  | Testing & Inspection | 2d | 2026-08-04 A | 2026-09-05 A | A50760 | 100% | 2027-02-18 | 2027-02-21 |  |  | ICKMO1-cost unite [1151.43 $]; labor [1200 h]; Physical Units [9921.2 h] | 1,151.43 | 1,151.43 | ZNB | CON |  |
| A50790 |  | Backfilling & Compaction | 4d | 2026-08-04 A | 2026-09-05 A | A50780, A50770, A50740, A50540 | 100% | 2027-03-02 | 2027-03-07 |  |  | ICKMO1-cost unite [2302.86 $]; Roller compactor [200 h]; Physical Units [19842.4 h] | 2,302.86 | 2,302.86 | ZNB | CON |  |
|  | MH-3.4 / MH-3.5 | **MH-3.4 / MH-3.5** |  | 2026-08-04 | 2026-09-05 |  |  |  |  |  |  |  |  |  |  |  |  |
| A50800 |  | Excavation | 4d | 2026-08-04 A | 2026-09-05 A | A50750, A1990 | 100% | 2027-02-09 | 2027-02-14 |  |  | ICKMO1-cost unite [4605.72 $]; Excavator [200 h]; Physical Units [39684.8 h] | 4,605.72 | 4,605.72 | ZNB | CON |  |
| A50810 |  | Pipe Laying | 8d | 2026-08-04 A | 2026-09-05 A | A50800 | 100% | 2027-02-14 | 2027-02-23 |  |  | ICKMO1-cost unite [5757.15 $]; boom truck [200 h]; labor [1200 h]; Sewage Network Circular pipes (GRP) [63.28]; Physical Units [49606 h] | 5,757.15 | 5,757.15 | ZNB | CON | LAY |
| A50820 |  | Install Manhole | 4d | 2026-08-04 A | 2026-09-05 A | A50800 | 100% | 2027-02-14 | 2027-02-18 |  |  | ICKMO1-cost unite [9211.43 $]; boom truck [200 h]; labor [1200 h]; Physical Units [79369.5 h] | 9,211.43 | 9,211.43 | ZNB | CON | MH |
| A50830 |  | Testing & Inspection | 2d | 2026-08-04 A | 2026-09-05 A | A50810 | 100% | 2027-02-23 | 2027-02-25 |  |  | ICKMO1-cost unite [1151.43 $]; labor [1200 h]; Physical Units [9921.2 h] | 1,151.43 | 1,151.43 | ZNB | CON |  |
| A50840 |  | Backfilling & Compaction | 4d | 2026-08-04 A | 2026-09-05 A | A50830, A50820, A50790 | 100% | 2027-03-07 | 2027-03-11 |  |  | ICKMO1-cost unite [2302.86 $]; Roller compactor [200 h]; Physical Units [19842.4 h] | 2,302.86 | 2,302.86 | ZNB | CON |  |
|  | MH-3.5 / MH-3.6 | **MH-3.5 / MH-3.6** |  | 2026-08-04 | 2026-09-05 |  |  |  |  |  |  |  |  |  |  |  |  |
| A50850 |  | Excavation | 4d | 2026-08-04 A | 2026-09-05 A | A50800, A1990 | 100% | 2027-02-14 | 2027-02-18 |  |  | ICKMO1-cost unite [4605.72 $]; Excavator [200 h]; Physical Units [39684.8 h] | 4,605.72 | 4,605.72 | ZNB | CON |  |
| A50860 |  | Pipe Laying | 8d | 2026-08-04 A | 2026-09-05 A | A50850 | 100% | 2027-02-18 | 2027-02-28 |  |  | ICKMO1-cost unite [5757.15 $]; boom truck [200 h]; labor [1200 h]; Sewage Network Circular pipes (GRP) [63.28]; Physical Units [49606 h] | 5,757.15 | 5,757.15 | ZNB | CON | LAY |
| A50870 |  | Install Manhole | 4d | 2026-08-04 A | 2026-09-05 A | A50850 | 100% | 2027-02-18 | 2027-02-23 |  |  | ICKMO1-cost unite [9211.43 $]; boom truck [200 h]; labor [1200 h]; Physical Units [79369.5 h] | 9,211.43 | 9,211.43 | ZNB | CON | MH |
| A50880 |  | Testing & Inspection | 2d | 2026-08-04 A | 2026-09-05 A | A50860 | 100% | 2027-02-28 | 2027-03-02 |  |  | ICKMO1-cost unite [1151.43 $]; labor [1200 h]; Physical Units [9921.2 h] | 1,151.43 | 1,151.43 | ZNB | CON |  |
| A50890 |  | Backfilling & Compaction | 4d | 2026-08-04 A | 2026-09-05 A | A50880, A50870, A50840 | 100% | 2027-03-11 | 2027-03-16 |  |  | ICKMO1-cost unite [2302.86 $]; Roller compactor [200 h]; Physical Units [19842.4 h] | 2,302.86 | 2,302.86 | ZNB | CON |  |

| ID | WBS | Activity | Duration | Start | Finish | Predecessors | Complete | Planned start | Planned finish | Resources | Cost | Actual cost | ALKHARJ INDUSTERIAL AREA - PROJECT ZONES | ALKHARJ INDUSTERIAL AREA - DECEPLINS | ALKHARJ INDUSTERIAL AREA - Wet networks |
| --- | --- | --- | --- | --- | --- | --- | --- | --- | --- | --- | --- | --- | --- | --- | --- |
|  | MH-3.6 / MH-3.7 | **MH-3.6 / MH-3.7** |  | 2026-08-04 | 2026-09-05 |  |  |  |  |  |  |  |  |  |  |
| A50900 |  | Excavation | 4d | 2026-08-04 A | 2026-09-05 A | A50850, A1990 | 100% | 2027-02-18 | 2027-02-23 | ICKMO1-cost unite [4605.72 $]; Excavator [200 h]; Physical Units [39684.8 h] | 4,605.72 | 4,605.72 | ZNB | CON |  |
| A50910 |  | Pipe Laying | 8d | 2026-08-04 A | 2026-09-05 A | A50900 | 100% | 2027-02-23 | 2027-03-04 | ICKMO1-cost unite [5757.15 $]; boom truck [200 h]; labor [1200 h]; Sewage Network Circular pipes (GRP) [63.28]; Physical Units [49606 h] | 5,757.15 | 5,757.15 | ZNB | CON | LAY |
| A50920 |  | Install Manhole | 4d | 2026-08-04 A | 2026-09-05 A | A50900 | 100% | 2027-02-23 | 2027-02-28 | ICKMO1-cost unite [9211.43 $]; boom truck [200 h]; labor [1200 h]; Physical Units [79369.5 h] | 9,211.43 | 9,211.43 | ZNB | CON | MH |
| A50930 |  | Testing & Inspection | 2d | 2026-08-04 A | 2026-09-05 A | A50910 | 100% | 2027-03-04 | 2027-03-07 | ICKMO1-cost unite [1151.43 $]; labor [1200 h]; Physical Units [9921.2 h] | 1,151.43 | 1,151.43 | ZNB | CON |  |
| A50940 |  | Backfilling & Compaction | 4d | 2026-08-04 A | 2026-09-05 A | A50930, A50920, A50890 | 100% | 2027-03-16 | 2027-03-21 | ICKMO1-cost unite [2302.86 $]; Roller compactor [200 h]; Physical Units [19842.4 h] | 2,302.86 | 2,302.86 | ZNB | CON |  |
|  | LR 18 | **LR 18** |  | 2026-08-04 | 2026-09-05 |  |  |  |  |  |  |  |  |  |  |
|  | MH-3.48 / MH-3.49 | **MH-3.48 / MH-3.49** |  | 2026-08-04 | 2026-09-05 |  |  |  |  |  |  |  |  |  |  |
| A50950 |  | Excavation | 4d | 2026-08-04 A | 2026-09-05 A | A78770, A1990 | 100% | 2026-12-14 | 2026-12-17 | ICKMO1-cost unite [5514.74 $]; Excavator [200 h]; Physical Units [47517.3 h] | 5,514.74 | 5,514.74 | ZNB | CON |  |
| A50960 |  | Pipe Laying | 8d | 2026-08-04 A | 2026-09-05 A | A50950 | 100% | 2026-12-19 | 2026-12-27 | ICKMO1-cost unite [6893.43 $]; boom truck [200 h]; labor [1200 h]; Sewage Network Circular pipes (GRP) [63.28]; Physical Units [59396.7 h] | 6,893.43 | 6,893.43 | ZNB | CON | LAY |
| A50970 |  | Install Manhole | 4d | 2026-08-04 A | 2026-09-05 A | A50950 | 100% | 2026-12-19 | 2026-12-22 | ICKMO1-cost unite [11029.5 $]; boom truck [200 h]; labor [1200 h]; Physical Units [95034.6 h] | 11,029.48 | 11,029.48 | ZNB | CON | MH |
| A50980 |  | Testing & Inspection | 2d | 2026-08-04 A | 2026-09-05 A | A50960 | 100% | 2026-12-28 | 2026-12-29 | ICKMO1-cost unite [1378.69 $]; labor [1200 h]; Physical Units [11879.4 h] | 1,378.69 | 1,378.69 | ZNB | CON |  |
| A50990 |  | Backfilling & Compaction | 4d | 2026-08-04 A | 2026-09-05 A | A50980, A50970 | 100% | 2026-12-30 | 2027-01-03 | ICKMO1-cost unite [2757.37 $]; Roller compactor [200 h]; Physical Units [23758.6 h] | 2,757.37 | 2,757.37 | ZNB | CON |  |
|  | MH-3.49 / MH-3.50 | **MH-3.49 / MH-3.50** |  | 2026-08-04 | 2026-09-05 |  |  |  |  |  |  |  |  |  |  |
| A51000 |  | Excavation | 4d | 2026-08-04 A | 2026-09-05 A | A50950, A1990 | 100% | 2026-12-19 | 2026-12-22 | ICKMO1-cost unite [5514.74 $]; Excavator [200 h]; Physical Units [47517.3 h] | 5,514.74 | 5,514.74 | ZNB | CON |  |
| A51010 |  | Pipe Laying | 4d | 2026-08-04 A | 2026-09-05 A | A51000 | 100% | 2026-12-23 | 2026-12-27 | ICKMO1-cost unite [6893.43 $]; boom truck [200 h]; labor [1200 h]; Sewage Network Circular pipes (GRP) [63.28]; Physical Units [59396.7 h] | 6,893.43 | 6,893.43 | ZNB | CON | LAY |
| A51020 |  | Install Manhole | 4d | 2026-08-04 A | 2026-09-05 A | A51000 | 100% | 2026-12-23 | 2026-12-27 | ICKMO1-cost unite [11029.5 $]; boom truck [200 h]; labor [1200 h]; Physical Units [95034.6 h] | 11,029.48 | 11,029.48 | ZNB | CON | MH |
| A51030 |  | Testing & Inspection | 2d | 2026-08-04 A | 2026-09-05 A | A51010 | 100% | 2026-12-28 | 2026-12-29 | ICKMO1-cost unite [1378.69 $]; labor [1200 h]; Physical Units [11879.4 h] | 1,378.69 | 1,378.69 | ZNB | CON |  |
| A51040 |  | Backfilling & Compaction | 4d | 2026-08-04 A | 2026-09-05 A | A51030, A51020, A50990 | 100% | 2027-01-04 | 2027-01-07 | ICKMO1-cost unite [2757.37 $]; Roller compactor [200 h]; Physical Units [23758.6 h] | 2,757.37 | 2,757.37 | ZNB | CON |  |
|  | MH-3.49.0 / MH-3.49.1 | **MH-3.49.0 / MH-3.49.1** |  | 2026-08-04 | 2026-09-05 |  |  |  |  |  |  |  |  |  |  |
| A51050 |  | Excavation | 4d | 2026-08-04 A | 2026-09-05 A | A51000, A1990 | 100% | 2026-12-23 | 2026-12-27 | ICKMO1-cost unite [5514.74 $]; Excavator [200 h]; Physical Units [47517.3 h] | 5,514.74 | 5,514.74 | ZNB | CON |  |
| A51060 |  | Pipe Laying | 8d | 2026-08-04 A | 2026-09-05 A | A51050 | 100% | 2026-12-28 | 2027-01-05 | ICKMO1-cost unite [6893.43 $]; boom truck [200 h]; labor [1200 h]; Sewage Network Circular pipes (GRP) [63.28]; Physical Units [59396.7 h] | 6,893.43 | 6,893.43 | ZNB | CON | LAY |
| A51070 |  | Install Manhole | 4d | 2026-08-04 A | 2026-09-05 A | A51050 | 100% | 2026-12-28 | 2026-12-31 | ICKMO1-cost unite [11029.5 $]; boom truck [200 h]; labor [1200 h]; Physical Units [95034.6 h] | 11,029.48 | 11,029.48 | ZNB | CON | MH |
| A51080 |  | Testing & Inspection | 2d | 2026-08-04 A | 2026-09-05 A | A51060 | 100% | 2027-01-06 | 2027-01-07 | ICKMO1-cost unite [1378.69 $]; labor [1200 h]; Physical Units [11879.4 h] | 1,378.69 | 1,378.69 | ZNB | CON |  |
| A51090 |  | Backfilling & Compaction | 10d | 2026-08-04 A | 2026-09-05 A | A51080, A51070, A51040 | 100% | 2027-01-09 | 2027-01-19 | ICKMO1-cost unite [2757.37 $]; Roller compactor [200 h]; Physical Units [23758.6 h] | 2,757.37 | 2,757.37 | ZNB | CON |  |

| ID | WBS | Activity | Duration | Start | Finish | Predecessors | Complete | Planned start | Planned finish | Total float | Free float | Resources | Cost | Actual cost | ALKHARJ INDUSTERIAL AREA - PROJECT ZONES | ALKHARJ INDUSTERIAL AREA - DECEPLINS | ALKHARJ INDUSTERIAL AREA - Wet networks |
| --- | --- | --- | --- | --- | --- | --- | --- | --- | --- | --- | --- | --- | --- | --- | --- | --- | --- |
|  | MH-3.50 / MH-3.51 | **MH-3.50 / MH-3.51** |  | 2026-08-04 | 2026-09-05 |  |  |  |  |  |  |  |  |  |  |  |  |
| A51100 |  | Excavation | 4d | 2026-08-04 A | 2026-09-05 A | A51050, A1990 | 100% | 2026-12-28 | 2026-12-31 |  |  | ICKMO1-cost unite [5514.74 $]; Excavator [200 h]; Physical Units [47517.3 h] | 5,514.74 | 5,514.74 | ZNB | CON |  |
| A51110 |  | Pipe Laying | 4d | 2026-08-04 A | 2026-09-05 A | A51100 | 100% | 2027-01-02 | 2027-01-05 |  |  | ICKMO1-cost unite [6893.43 $]; boom truck [200 h]; labor [1200 h]; Sewage Network Circular pipes (GRP) [63.28]; Physical Units [59396.7 h] | 6,893.43 | 6,893.43 | ZNB | CON | LAY |
| A51120 |  | Install Manhole | 4d | 2026-08-04 A | 2026-09-05 A | A51100 | 100% | 2027-01-02 | 2027-01-05 |  |  | ICKMO1-cost unite [11029.5 $]; boom truck [200 h]; labor [1200 h]; Physical Units [95034.6 h] | 11,029.48 | 11,029.48 | ZNB | CON | MH |
| A51130 |  | Testing & Inspection | 2d | 2026-08-04 A | 2026-09-05 A | A51110 | 100% | 2027-01-06 | 2027-01-07 |  |  | ICKMO1-cost unite [1378.69 $]; labor [1200 h]; Physical Units [11879.4 h] | 1,378.69 | 1,378.69 | ZNB | CON |  |
| A51140 |  | Backfilling & Compaction | 10d | 2026-08-04 A | 2026-09-05 A | A51130, A51120, A51090, A78870 | 100% | 2027-01-20 | 2027-01-31 |  |  | ICKMO1-cost unite [2757.37 $]; Roller compactor [200 h]; Physical Units [23758.6 h] | 2,757.37 | 2,757.37 | ZNB | CON |  |
|  | LR 19 | **LR 19** |  | 2026-08-04 | 2026-10-11 |  |  |  |  |  |  |  |  |  |  |  |  |
|  | MH-3.45 / MH-3.46 | **MH-3.45 / MH-3.46** |  | 2026-08-04 | 2026-10-11 |  |  |  |  |  |  |  |  |  |  |  |  |
| A51150 |  | Excavation | 4d | 2026-08-04 A | 2026-09-05 A | A78920, A1990 | 100% | 2026-12-09 | 2026-12-13 |  |  | ICKMO1-cost unite [6221.76 $]; Excavator [200 h]; Physical Units [53609.3 h] | 6,221.76 | 6,221.76 | ZNB | CON |  |
| A51160 |  | Pipe Laying | 4d | 2026-08-04 A | 2026-09-05 A | A51150 | 100% | 2026-12-14 | 2026-12-17 |  |  | ICKMO1-cost unite [7777.2 $]; boom truck [200 h]; labor [1200 h]; Sewage Network Circular pipes (GRP) [63.28]; Physical Units [67011.6 h] | 7,777.2 | 7,777.2 | ZNB | CON | LAY |
| A51170 |  | Install Manhole | 4d | 2026-08-04 A | 2026-09-05 A | A51150 | 100% | 2026-12-14 | 2026-12-17 |  |  | ICKMO1-cost unite [12443.5 $]; boom truck [200 h]; labor [1200 h]; Physical Units [107219 h] | 12,443.52 | 12,443.52 | ZNB | CON | MH |
| A51190 |  | Backfilling & Compaction | 10d | 2026-08-04 A | 2026-09-05 A | A51180, A51170 | 100% | 2026-12-21 | 2026-12-31 |  |  | ICKMO1-cost unite [3110.88 $]; Roller compactor [200 h]; Physical Units [26804.6 h] | 3,110.88 | 3,110.88 | ZNB | CON |  |
| A51180 |  | Testing & Inspection | 2d | 2026-10-10 | 2026-10-11 | A51160 |  |  |  | 58.26d | 0d | ICKMO1-cost unite [1555.44 $]; labor [1200 h]; Physical Units [13402.3 h] | 1,555.44 |  | ZNB | CON |  |
|  | MH-3.46 / MH-3.47 | **MH-3.46 / MH-3.47** |  | 2026-08-04 | 2026-10-11 |  |  |  |  |  |  |  |  |  |  |  |  |
| A51200 |  | Excavation | 4d | 2026-08-04 A | 2026-09-05 A | A51150, A1990 | 100% | 2026-12-14 | 2026-12-17 |  |  | ICKMO1-cost unite [6221.76 $]; Excavator [200 h]; Physical Units [53609.3 h] | 6,221.76 | 6,221.76 | ZNB | CON |  |
| A51210 |  | Pipe Laying | 8d | 2026-08-04 A | 2026-09-05 A | A51200 | 100% | 2026-12-19 | 2026-12-27 |  |  | ICKMO1-cost unite [7777.2 $]; boom truck [200 h]; labor [1200 h]; Sewage Network Circular pipes (GRP) [63.28]; Physical Units [67011.6 h] | 7,777.2 | 7,777.2 | ZNB | CON | LAY |
| A51220 |  | Install Manhole | 4d | 2026-08-04 A | 2026-09-05 A | A51200 | 100% | 2026-12-19 | 2026-12-22 |  |  | ICKMO1-cost unite [12443.5 $]; boom truck [200 h]; labor [1200 h]; Physical Units [107219 h] | 12,443.52 | 12,443.52 | ZNB | CON | MH |
| A51240 |  | Backfilling & Compaction | 10d | 2026-08-04 A | 2026-09-05 A | A51230, A51220, A51190 | 100% | 2027-01-02 | 2027-01-12 |  |  | ICKMO1-cost unite [3110.88 $]; Roller compactor [200 h]; Physical Units [26804.6 h] | 3,110.88 | 3,110.88 | ZNB | CON |  |
| A51230 |  | Testing & Inspection | 2d | 2026-10-10 | 2026-10-11 | A51210 |  |  |  | 58.26d | 0d | ICKMO1-cost unite [1555.44 $]; labor [1200 h]; Physical Units [13402.3 h] | 1,555.44 |  | ZNB | CON |  |
|  | MH-3.47 / MH-3.48 | **MH-3.47 / MH-3.48** |  | 2026-08-04 | 2026-10-11 |  |  |  |  |  |  |  |  |  |  |  |  |
| A51250 |  | Excavation | 4d | 2026-08-04 A | 2026-09-05 A | A51200, A1990 | 100% | 2026-12-19 | 2026-12-22 |  |  | ICKMO1-cost unite [6221.76 $]; Excavator [200 h]; Physical Units [53609.3 h] | 6,221.76 | 6,221.76 | ZNB | CON |  |
| A51260 |  | Pipe Laying | 8d | 2026-08-04 A | 2026-09-05 A | A51250 | 100% | 2026-12-23 | 2026-12-31 |  |  | ICKMO1-cost unite [7777.2 $]; boom truck [200 h]; labor [1200 h]; Sewage Network Circular pipes (GRP) [63.28]; Physical Units [67011.6 h] | 7,777.2 | 7,777.2 | ZNB | CON | LAY |
| A51270 |  | Install Manhole | 4d | 2026-08-04 A | 2026-09-05 A | A51250 | 100% | 2026-12-23 | 2026-12-27 |  |  | ICKMO1-cost unite [12443.5 $]; boom truck [200 h]; labor [1200 h]; Physical Units [107219 h] | 12,443.52 | 12,443.52 | ZNB | CON | MH |
| A51290 |  | Backfilling & Compaction | 4d | 2026-08-04 A | 2026-09-05 A | A51280, A51270, A51240, A79070 | 100% | 2027-01-13 | 2027-01-17 |  |  | ICKMO1-cost unite [3110.88 $]; Roller compactor [200 h]; Physical Units [26804.6 h] | 3,110.88 | 3,110.88 | ZNB | CON |  |
| A51280 |  | Testing & Inspection | 2d | 2026-10-10 | 2026-10-11 | A51260 |  |  |  | 58.26d | 0d | ICKMO1-cost unite [1555.44 $]; labor [1200 h]; Physical Units [13402.3 h] | 1,555.44 |  | ZNB | CON |  |

| ID | WBS | Activity | Duration | Start | Finish | Predecessors | Complete | Planned start | Planned finish | Total float | Free float | Resources | Cost | Actual cost | ALKHARJ INDUSTERIAL AREA - PROJECT ZONES | ALKHARJ INDUSTERIAL AREA - DECEPLINS | ALKHARJ INDUSTERIAL AREA - Wet networks |
| --- | --- | --- | --- | --- | --- | --- | --- | --- | --- | --- | --- | --- | --- | --- | --- | --- | --- |
|  | LR 20 | **LR 20** |  | 2026-08-04 | 2026-10-11 |  |  |  |  |  |  |  |  |  |  |  |  |
|  | MH-3.42.0 / MH-3.42.1 | **MH-3.42.0 / MH-3.42.1** |  | 2026-08-04 | 2026-10-11 |  |  |  |  |  |  |  |  |  |  |  |  |
| A51300 |  | Excavation | 4d | 2026-08-04 A | 2026-09-05 A | A79120, A1990 | 100% | 2026-12-09 | 2026-12-13 |  |  | ICKMO1-cost unite [5514.74 $]; Excavator [200 h]; Physical Units [47517.3 h] | 5,514.74 | 5,514.74 | ZNB | CON |  |
| A51310 |  | Pipe Laying | 4d | 2026-08-04 A | 2026-09-05 A | A51300 | 100% | 2026-12-14 | 2026-12-17 |  |  | ICKMO1-cost unite [6893.43 $]; boom truck [200 h]; labor [1200 h]; Sewage Network Circular pipes (GRP) [63.28]; Physical Units [59396.7 h] | 6,893.43 | 6,893.43 | ZNB | CON | LAY |
| A51320 |  | Install Manhole | 4d | 2026-08-04 A | 2026-09-05 A | A51300 | 100% | 2026-12-14 | 2026-12-17 |  |  | ICKMO1-cost unite [11029.5 $]; boom truck [200 h]; labor [1200 h]; Physical Units [95034.6 h] | 11,029.48 | 11,029.48 | ZNB | CON | MH |
| A51340 |  | Backfilling & Compaction | 10d | 2026-08-04 A | 2026-09-05 A | A51330, A51320 | 100% | 2026-12-21 | 2026-12-31 |  |  | ICKMO1-cost unite [2757.37 $]; Roller compactor [200 h]; Physical Units [23758.6 h] | 2,757.37 | 2,757.37 | ZNB | CON |  |
| A51330 |  | Testing & Inspection | 2d | 2026-10-10 | 2026-10-11 | A51310 |  |  |  | 59.28d | 0d | ICKMO1-cost unite [1378.69 $]; labor [1200 h]; Physical Units [11879.4 h] | 1,378.69 |  | ZNB | CON |  |
|  | MH-3.42.1 / MH-3.42.2 | **MH-3.42.1 / MH-3.42.2** |  | 2026-08-04 | 2026-10-11 |  |  |  |  |  |  |  |  |  |  |  |  |
| A51350 |  | Excavation | 4d | 2026-08-04 A | 2026-09-05 A | A51300, A1990 | 100% | 2026-12-14 | 2026-12-17 |  |  | ICKMO1-cost unite [5514.74 $]; Excavator [200 h]; Physical Units [47517.3 h] | 5,514.74 | 5,514.74 | ZNB | CON |  |
| A51360 |  | Pipe Laying | 8d | 2026-08-04 A | 2026-09-05 A | A51350 | 100% | 2026-12-19 | 2026-12-27 |  |  | ICKMO1-cost unite [6893.43 $]; boom truck [200 h]; labor [1200 h]; Sewage Network Circular pipes (GRP) [63.28]; Physical Units [59396.7 h] | 6,893.43 | 6,893.43 | ZNB | CON | LAY |
| A51370 |  | Install Manhole | 4d | 2026-08-04 A | 2026-09-05 A | A51350 | 100% | 2026-12-19 | 2026-12-22 |  |  | ICKMO1-cost unite [11029.5 $]; boom truck [200 h]; labor [1200 h]; Physical Units [95034.6 h] | 11,029.48 | 11,029.48 | ZNB | CON | MH |
| A51390 |  | Backfilling & Compaction | 10d | 2026-08-04 A | 2026-09-05 A | A51380, A51370, A51340 | 100% | 2027-01-02 | 2027-01-12 |  |  | ICKMO1-cost unite [2757.37 $]; Roller compactor [200 h]; Physical Units [23758.6 h] | 2,757.37 | 2,757.37 | ZNB | CON |  |
| A51380 |  | Testing & Inspection | 2d | 2026-10-10 | 2026-10-11 | A51360 |  |  |  | 59.28d | 0d | ICKMO1-cost unite [1378.69 $]; labor [1200 h]; Physical Units [11879.4 h] | 1,378.69 |  | ZNB | CON |  |
|  | MH-3.42.2 / MH-3.42.3 | **MH-3.42.2 / MH-3.42.3** |  | 2026-08-04 | 2026-10-11 |  |  |  |  |  |  |  |  |  |  |  |  |
| A51400 |  | Excavation | 4d | 2026-08-04 A | 2026-09-05 A | A51350, A1990 | 100% | 2026-12-19 | 2026-12-22 |  |  | ICKMO1-cost unite [5514.74 $]; Excavator [200 h]; Physical Units [47517.3 h] | 5,514.74 | 5,514.74 | ZNB | CON |  |
| A51410 |  | Pipe Laying | 8d | 2026-08-04 A | 2026-09-05 A | A51400 | 100% | 2026-12-23 | 2026-12-31 |  |  | ICKMO1-cost unite [6893.43 $]; boom truck [200 h]; labor [1200 h]; Sewage Network Circular pipes (GRP) [63.28]; Physical Units [59396.7 h] | 6,893.43 | 6,893.43 | ZNB | CON | LAY |
| A51420 |  | Install Manhole | 4d | 2026-08-04 A | 2026-09-05 A | A51400 | 100% | 2026-12-23 | 2026-12-27 |  |  | ICKMO1-cost unite [11029.5 $]; boom truck [200 h]; labor [1200 h]; Physical Units [95034.6 h] | 11,029.48 | 11,029.48 | ZNB | CON | MH |
| A51440 |  | Backfilling & Compaction | 4d | 2026-08-04 A | 2026-09-05 A | A51430, A51420, A51390 | 100% | 2027-01-13 | 2027-01-17 |  |  | ICKMO1-cost unite [2757.37 $]; Roller compactor [200 h]; Physical Units [23758.6 h] | 2,757.37 | 2,757.37 | ZNB | CON |  |
| A51430 |  | Testing & Inspection | 2d | 2026-10-10 | 2026-10-11 | A51410 |  |  |  | 59.28d | 0d | ICKMO1-cost unite [1378.69 $]; labor [1200 h]; Physical Units [11879.4 h] | 1,378.69 |  | ZNB | CON |  |
|  | MH-3.42.3 / MH-3.42.4 | **MH-3.42.3 / MH-3.42.4** |  | 2026-08-04 | 2026-10-11 |  |  |  |  |  |  |  |  |  |  |  |  |
| A51450 |  | Excavation | 4d | 2026-08-04 A | 2026-09-05 A | A51400, A1990 | 100% | 2026-12-23 | 2026-12-27 |  |  | ICKMO1-cost unite [5514.74 $]; Excavator [200 h]; Physical Units [47517.3 h] | 5,514.74 | 5,514.74 | ZNB | CON |  |
| A51460 |  | Pipe Laying | 8d | 2026-08-04 A | 2026-09-05 A | A51450 | 100% | 2026-12-28 | 2027-01-05 |  |  | ICKMO1-cost unite [6893.43 $]; boom truck [200 h]; labor [1200 h]; Sewage Network Circular pipes (GRP) [63.28]; Physical Units [59396.7 h] | 6,893.43 | 6,893.43 | ZNB | CON | LAY |
| A51470 |  | Install Manhole | 4d | 2026-08-04 A | 2026-09-05 A | A51450 | 100% | 2026-12-28 | 2026-12-31 |  |  | ICKMO1-cost unite [11029.5 $]; boom truck [200 h]; labor [1200 h]; Physical Units [95034.6 h] | 11,029.48 | 11,029.48 | ZNB | CON | MH |
| A51490 |  | Backfilling & Compaction | 10d | 2026-08-04 A | 2026-09-05 A | A51480, A51470, A51440, A79320 | 100% | 2027-01-18 | 2027-01-28 |  |  | ICKMO1-cost unite [2757.37 $]; Roller compactor [200 h]; Physical Units [23758.6 h] | 2,757.37 | 2,757.37 | ZNB | CON |  |
| A51480 |  | Testing & Inspection | 2d | 2026-10-10 | 2026-10-11 | A51460 |  |  |  | 59.28d | 0d | ICKMO1-cost unite [1378.69 $]; labor [1200 h]; Physical Units [11879.4 h] | 1,378.69 |  | ZNB | CON |  |

| ID | WBS | Activity | Duration | Start | Finish | Predecessors | Complete | Planned start | Planned finish | Total float | Free float | Resources | Cost | Actual cost | ALKHARJ INDUSTERIAL AREA - PROJECT ZONES | ALKHARJ INDUSTERIAL AREA - DECEPLINS | ALKHARJ INDUSTERIAL AREA - Wet networks |
| --- | --- | --- | --- | --- | --- | --- | --- | --- | --- | --- | --- | --- | --- | --- | --- | --- | --- |
|  | LR 21 | **LR 21** |  | 2026-08-04 | 2026-11-10 |  |  |  |  |  |  |  |  |  |  |  |  |
|  | MH-3.33 / MH-3.34 | **MH-3.33 / MH-3.34** |  | 2026-08-04 | 2026-11-10 |  |  |  |  |  |  |  |  |  |  |  |  |
| A51500 |  | Excavation | 4d | 2026-08-04 A | 2026-09-05 A | A79370, A1990 | 100% | 2026-12-26 | 2026-12-29 |  |  | ICKMO1-cost unite [5514.74 $]; Excavator [200 h]; Physical Units [47517.3 h] | 5,514.74 | 5,514.74 | ZNB | CON |  |
| A51510 |  | Pipe Laying | 4d | 2026-08-04 A | 2026-09-05 A | A51500, A10960 SS+24d | 100% | 2026-12-30 | 2027-01-03 |  |  | ICKMO1-cost unite [6893.43 $]; boom truck [200 h]; labor [1200 h]; Sewage Network Circular pipes (GRP) [63.28]; Physical Units [59396.7 h] | 6,893.43 | 6,893.43 | ZNB | CON | LAY |
| A51520 |  | Install Manhole | 4d | 2026-08-04 A | 2026-09-05 A | A51500 | 100% | 2026-12-30 | 2027-01-03 |  |  | ICKMO1-cost unite [11029.5 $]; boom truck [200 h]; labor [1200 h]; Physical Units [95034.6 h] | 11,029.48 | 11,029.48 | ZNB | CON | MH |
| A51540 |  | Backfilling & Compaction | 10d | 2026-08-04 A | 2026-09-05 A | A51530, A51520 | 100% | 2027-01-06 | 2027-01-17 |  |  | ICKMO1-cost unite [2757.37 $]; Roller compactor [200 h]; Physical Units [23758.6 h] | 2,757.37 | 2,757.37 | ZNB | CON |  |
| A51530 |  | Testing & Inspection | 2d | 2026-11-09 | 2026-11-10 | A51510 |  |  |  | 13d | 0d | ICKMO1-cost unite [1378.69 $]; labor [1200 h]; Physical Units [11879.4 h] | 1,378.69 |  | ZNB | CON |  |
|  | MH-3.33.0 / MH-3.33.1 | **MH-3.33.0 / MH-3.33.1** |  | 2026-08-04 | 2026-11-10 |  |  |  |  |  |  |  |  |  |  |  |  |
| A51550 |  | Excavation | 4d | 2026-08-04 A | 2026-09-05 A | A51500, A1990 | 100% | 2026-12-30 | 2027-01-03 |  |  | ICKMO1-cost unite [5514.74 $]; Excavator [200 h]; Physical Units [47517.3 h] | 5,514.74 | 5,514.74 | ZNB | CON |  |
| A51560 |  | Pipe Laying | 8d | 2026-08-04 A | 2026-09-05 A | A51550, A10960 SS+24d | 100% | 2027-01-04 | 2027-01-12 |  |  | ICKMO1-cost unite [6893.43 $]; boom truck [200 h]; labor [1200 h]; Sewage Network Circular pipes (GRP) [63.28]; Physical Units [59396.7 h] | 6,893.43 | 6,893.43 | ZNB | CON | LAY |
| A51570 |  | Install Manhole | 4d | 2026-08-04 A | 2026-09-05 A | A51550 | 100% | 2027-01-04 | 2027-01-07 |  |  | ICKMO1-cost unite [11029.5 $]; boom truck [200 h]; labor [1200 h]; Physical Units [95034.6 h] | 11,029.48 | 11,029.48 | ZNB | CON | MH |
| A51590 |  | Backfilling & Compaction | 10d | 2026-08-04 A | 2026-09-05 A | A51580, A51570, A51540 | 100% | 2027-01-18 | 2027-01-28 |  |  | ICKMO1-cost unite [2757.37 $]; Roller compactor [200 h]; Physical Units [23758.6 h] | 2,757.37 | 2,757.37 | ZNB | CON |  |
| A51580 |  | Testing & Inspection | 2d | 2026-11-09 | 2026-11-10 | A51560 |  |  |  | 13d | 0d | ICKMO1-cost unite [1378.69 $]; labor [1200 h]; Physical Units [11879.4 h] | 1,378.69 |  | ZNB | CON |  |
|  | MH-3.34 / MH-3.35 | **MH-3.34 / MH-3.35** |  | 2026-08-04 | 2026-11-10 |  |  |  |  |  |  |  |  |  |  |  |  |
| A51600 |  | Excavation | 4d | 2026-08-04 A | 2026-09-05 A | A51550, A1990 | 100% | 2027-01-04 | 2027-01-07 |  |  | ICKMO1-cost unite [5514.74 $]; Excavator [200 h]; Physical Units [47517.3 h] | 5,514.74 | 5,514.74 | ZNB | CON |  |
| A51610 |  | Pipe Laying | 8d | 2026-08-04 A | 2026-09-05 A | A51600, A10960 SS+24d | 100% | 2027-01-09 | 2027-01-17 |  |  | ICKMO1-cost unite [6893.43 $]; boom truck [200 h]; labor [1200 h]; Sewage Network Circular pipes (GRP) [63.28]; Physical Units [59396.7 h] | 6,893.43 | 6,893.43 | ZNB | CON | LAY |
| A51620 |  | Install Manhole | 4d | 2026-08-04 A | 2026-09-05 A | A51600 | 100% | 2027-01-09 | 2027-01-12 |  |  | ICKMO1-cost unite [11029.5 $]; boom truck [200 h]; labor [1200 h]; Physical Units [95034.6 h] | 11,029.48 | 11,029.48 | ZNB | CON | MH |
| A51640 |  | Backfilling & Compaction | 4d | 2026-08-04 A | 2026-09-05 A | A51630, A51620, A51590 | 100% | 2027-01-30 | 2027-02-02 |  |  | ICKMO1-cost unite [2757.37 $]; Roller compactor [200 h]; Physical Units [23758.6 h] | 2,757.37 | 2,757.37 | ZNB | CON |  |
| A51630 |  | Testing & Inspection | 2d | 2026-11-09 | 2026-11-10 | A51610 |  |  |  | 13d | 0d | ICKMO1-cost unite [1378.69 $]; labor [1200 h]; Physical Units [11879.4 h] | 1,378.69 |  | ZNB | CON |  |
|  | MH-3.35 / MH-3.36 | **MH-3.35 / MH-3.36** |  | 2026-08-04 | 2026-11-10 |  |  |  |  |  |  |  |  |  |  |  |  |
| A51650 |  | Excavation | 4d | 2026-08-04 A | 2026-09-05 A | A51600, A1990 | 100% | 2027-01-09 | 2027-01-12 |  |  | ICKMO1-cost unite [5514.74 $]; Excavator [200 h]; Physical Units [47517.3 h] | 5,514.74 | 5,514.74 | ZNB | CON |  |
| A51660 |  | Pipe Laying | 8d | 2026-08-04 A | 2026-09-05 A | A51650 | 100% | 2027-01-13 | 2027-01-21 |  |  | ICKMO1-cost unite [6893.43 $]; boom truck [200 h]; labor [1200 h]; Sewage Network Circular pipes (GRP) [63.28]; Physical Units [59396.7 h] | 6,893.43 | 6,893.43 | ZNB | CON | LAY |
| A51670 |  | Install Manhole | 4d | 2026-08-04 A | 2026-09-05 A | A51650 | 100% | 2027-01-13 | 2027-01-17 |  |  | ICKMO1-cost unite [11029.5 $]; boom truck [200 h]; labor [1200 h]; Physical Units [95034.6 h] | 11,029.48 | 11,029.48 | ZNB | CON | MH |
| A51690 |  | Backfilling & Compaction | 10d | 2026-08-04 A | 2026-09-05 A | A51680, A51670, A51640, A79570 | 100% | 2027-02-03 | 2027-02-14 |  |  | ICKMO1-cost unite [2757.37 $]; Roller compactor [200 h]; Physical Units [23758.6 h] | 2,757.37 | 2,757.37 | ZNB | CON |  |
| A51680 |  | Testing & Inspection | 2d | 2026-11-09 | 2026-11-10 | A51660 |  |  |  | 13d | 0d | ICKMO1-cost unite [1378.69 $]; labor [1200 h]; Physical Units [11879.4 h] | 1,378.69 |  | ZNB | CON |  |

| ID | WBS | Activity | Duration | Start | Finish | Predecessors | Complete | Planned start | Planned finish | Total float | Free float | Resources | Cost | Actual cost | ALKHARJ INDUSTERIAL AREA - PROJECT ZONES | ALKHARJ INDUSTERIAL AREA - DECEPLINS | ALKHARJ INDUSTERIAL AREA - Wet networks |
| --- | --- | --- | --- | --- | --- | --- | --- | --- | --- | --- | --- | --- | --- | --- | --- | --- | --- |
|  | LR 22 | **LR 22** |  | 2026-08-04 | 2026-10-13 |  |  |  |  |  |  |  |  |  |  |  |  |
|  | MH-3.31.0 / MH-3.31.1 | **MH-3.31.0 / MH-3.31.1** |  | 2026-08-04 | 2026-10-13 |  |  |  |  |  |  |  |  |  |  |  |  |
| A51700 |  | Excavation | 4d | 2026-08-04 A | 2026-09-05 A | A77120, A1990 | 100% | 2026-12-14 | 2026-12-17 |  |  | ICKMO1-cost unite [4807.72 $]; Excavator [200 h]; Physical Units [41425.3 h] | 4,807.72 | 4,807.72 | ZNB | CON |  |
| A51710 |  | Pipe Laying | 8d | 2026-08-04 A | 2026-09-05 A | A51700 | 100% | 2026-12-19 | 2026-12-27 |  |  | ICKMO1-cost unite [6009.65 $]; boom truck [200 h]; labor [1200 h]; Sewage Network Circular pipes (GRP) [63.28]; Physical Units [51781.6 h] | 6,009.65 | 6,009.65 | ZNB | CON | LAY |
| A51720 |  | Install Manhole | 4d | 2026-08-04 A | 2026-09-05 A | A51700 | 100% | 2026-12-19 | 2026-12-22 |  |  | ICKMO1-cost unite [9615.45 $]; boom truck [200 h]; labor [1200 h]; Physical Units [82850.7 h] | 9,615.45 | 9,615.45 | ZNB | CON | MH |
| A51740 |  | Backfilling & Compaction | 4d | 2026-08-04 A | 2026-09-05 A | A51730, A51720 | 100% | 2026-12-30 | 2027-01-03 |  |  | ICKMO1-cost unite [2403.86 $]; Roller compactor [200 h]; Physical Units [20712.7 h] | 2,403.86 | 2,403.86 | ZNB | CON |  |
| A51730 |  | Testing & Inspection | 2d | 2026-10-12 | 2026-10-13 | A51710 |  |  |  | 27.8d | 0d | ICKMO1-cost unite [1201.93 $]; labor [1200 h]; Physical Units [10356.3 h] | 1,201.93 |  | ZNB | CON |  |
|  | MH-3.31.1 / MH-3.31.2 | **MH-3.31.1 / MH-3.31.2** |  | 2026-08-04 | 2026-10-13 |  |  |  |  |  |  |  |  |  |  |  |  |
| A51750 |  | Excavation | 4d | 2026-08-04 A | 2026-09-05 A | A51700, A1990 | 100% | 2026-12-19 | 2026-12-22 |  |  | ICKMO1-cost unite [4807.72 $]; Excavator [200 h]; Physical Units [41425.3 h] | 4,807.72 | 4,807.72 | ZNB | CON |  |
| A51760 |  | Pipe Laying | 4d | 2026-08-04 A | 2026-09-05 A | A51750 | 100% | 2026-12-23 | 2026-12-27 |  |  | ICKMO1-cost unite [6009.65 $]; boom truck [200 h]; labor [1200 h]; Sewage Network Circular pipes (GRP) [63.28]; Physical Units [51781.6 h] | 6,009.65 | 6,009.65 | ZNB | CON | LAY |
| A51770 |  | Install Manhole | 4d | 2026-08-04 A | 2026-09-05 A | A51750 | 100% | 2026-12-23 | 2026-12-27 |  |  | ICKMO1-cost unite [9615.45 $]; boom truck [200 h]; labor [1200 h]; Physical Units [82850.7 h] | 9,615.45 | 9,615.45 | ZNB | CON | MH |
| A51790 |  | Backfilling & Compaction | 4d | 2026-08-04 A | 2026-09-05 A | A51780, A51770, A51740 | 100% | 2027-01-04 | 2027-01-07 |  |  | ICKMO1-cost unite [2403.86 $]; Roller compactor [200 h]; Physical Units [20712.7 h] | 2,403.86 | 2,403.86 | ZNB | CON |  |
| A51780 |  | Testing & Inspection | 2d | 2026-10-12 | 2026-10-13 | A51760 |  |  |  | 27.8d | 0d | ICKMO1-cost unite [1201.93 $]; labor [1200 h]; Physical Units [10356.3 h] | 1,201.93 |  | ZNB | CON |  |
|  | MH-3.31.1.0 / MH-3.31.1.1 | **MH-3.31.1.0 / MH-3.31.1.1** |  | 2026-08-04 | 2026-10-13 |  |  |  |  |  |  |  |  |  |  |  |  |
| A51800 |  | Excavation | 4d | 2026-08-04 A | 2026-09-05 A | A51750, A1990 | 100% | 2026-12-23 | 2026-12-27 |  |  | ICKMO1-cost unite [4807.72 $]; Excavator [200 h]; Physical Units [41425.3 h] | 4,807.72 | 4,807.72 | ZNB | CON |  |
| A51810 |  | Pipe Laying | 8d | 2026-08-04 A | 2026-09-05 A | A51800 | 100% | 2026-12-28 | 2027-01-05 |  |  | ICKMO1-cost unite [6009.65 $]; boom truck [200 h]; labor [1200 h]; Sewage Network Circular pipes (GRP) [63.28]; Physical Units [51781.6 h] | 6,009.65 | 6,009.65 | ZNB | CON | LAY |
| A51820 |  | Install Manhole | 4d | 2026-08-04 A | 2026-09-05 A | A51800 | 100% | 2026-12-28 | 2026-12-31 |  |  | ICKMO1-cost unite [9615.45 $]; boom truck [200 h]; labor [1200 h]; Physical Units [82850.7 h] | 9,615.45 | 9,615.45 | ZNB | CON | MH |
| A51840 |  | Backfilling & Compaction | 10d | 2026-08-04 A | 2026-09-05 A | A51830, A51820, A51790 | 100% | 2027-01-09 | 2027-01-19 |  |  | ICKMO1-cost unite [2403.86 $]; Roller compactor [200 h]; Physical Units [20712.7 h] | 2,403.86 | 2,403.86 | ZNB | CON |  |
| A51830 |  | Testing & Inspection | 2d | 2026-10-12 | 2026-10-13 | A51810 |  |  |  | 27.8d | 0d | ICKMO1-cost unite [1201.93 $]; labor [1200 h]; Physical Units [10356.3 h] | 1,201.93 |  | ZNB | CON |  |
|  | MH-3.31.2 / MH-3.31.3 | **MH-3.31.2 / MH-3.31.3** |  | 2026-08-04 | 2026-10-13 |  |  |  |  |  |  |  |  |  |  |  |  |
| A51850 |  | Excavation | 4d | 2026-08-04 A | 2026-09-05 A | A51800, A1990 | 100% | 2026-12-28 | 2026-12-31 |  |  | ICKMO1-cost unite [4807.72 $]; Excavator [200 h]; Physical Units [41425.3 h] | 4,807.72 | 4,807.72 | ZNB | CON |  |
| A51860 |  | Pipe Laying | 4d | 2026-08-04 A | 2026-09-05 A | A51850 | 100% | 2027-01-02 | 2027-01-05 |  |  | ICKMO1-cost unite [6009.65 $]; boom truck [200 h]; labor [1200 h]; Sewage Network Circular pipes (GRP) [63.28]; Physical Units [51781.6 h] | 6,009.65 | 6,009.65 | ZNB | CON | LAY |
| A51870 |  | Install Manhole | 4d | 2026-08-04 A | 2026-09-05 A | A51850 | 100% | 2027-01-02 | 2027-01-05 |  |  | ICKMO1-cost unite [9615.45 $]; boom truck [200 h]; labor [1200 h]; Physical Units [82850.7 h] | 9,615.45 | 9,615.45 | ZNB | CON | MH |
| A51890 |  | Backfilling & Compaction | 10d | 2026-08-04 A | 2026-09-05 A | A51880, A51870, A51840 | 100% | 2027-01-20 | 2027-01-31 |  |  | ICKMO1-cost unite [2403.86 $]; Roller compactor [200 h]; Physical Units [20712.7 h] | 2,403.86 | 2,403.86 | ZNB | CON |  |
| A51880 |  | Testing & Inspection | 2d | 2026-10-12 | 2026-10-13 | A51860 |  |  |  | 27.8d | 0d | ICKMO1-cost unite [1201.93 $]; labor [1200 h]; Physical Units [10356.3 h] | 1,201.93 |  | ZNB | CON |  |

| ID | WBS | Activity | Duration | Start | Finish | Predecessors | Complete | Planned start | Planned finish | Total float | Free float | Resources | Cost | Actual cost | ALKHARJ INDUSTERIAL AREA - PROJECT ZONES | ALKHARJ INDUSTERIAL AREA - DECEPLINS | ALKHARJ INDUSTERIAL AREA - Wet networks |
| --- | --- | --- | --- | --- | --- | --- | --- | --- | --- | --- | --- | --- | --- | --- | --- | --- | --- |
|  | MH-3.31.2.0 / MH-3.31.2.1 | **MH-3.31.2.0 / MH-3.31.2.1** |  | 2026-08-04 | 2026-10-13 |  |  |  |  |  |  |  |  |  |  |  |  |
| A51900 |  | Excavation | 4d | 2026-08-04 A | 2026-09-05 A | A51850, A1990 | 100% | 2027-01-02 | 2027-01-05 |  |  | ICKMO1-cost unite [4807.72 $]; Excavator [200 h]; Physical Units [41425.3 h] | 4,807.72 | 4,807.72 | ZNB | CON |  |
| A51910 |  | Pipe Laying | 8d | 2026-08-04 A | 2026-09-05 A | A51900 | 100% | 2027-01-06 | 2027-01-14 |  |  | ICKMO1-cost unite [6009.65 $]; boom truck [200 h]; labor [1200 h]; Sewage Network Circular pipes (GRP) [63.28]; Physical Units [51781.6 h] | 6,009.65 | 6,009.65 | ZNB | CON | LAY |
| A51920 |  | Install Manhole | 4d | 2026-08-04 A | 2026-09-05 A | A51900 | 100% | 2027-01-06 | 2027-01-10 |  |  | ICKMO1-cost unite [9615.45 $]; boom truck [200 h]; labor [1200 h]; Physical Units [82850.7 h] | 9,615.45 | 9,615.45 | ZNB | CON | MH |
| A51940 |  | Backfilling & Compaction | 10d | 2026-08-04 A | 2026-09-05 A | A51930, A51920, A51890 | 100% | 2027-02-01 | 2027-02-11 |  |  | ICKMO1-cost unite [2403.86 $]; Roller compactor [200 h]; Physical Units [20712.7 h] | 2,403.86 | 2,403.86 | ZNB | CON |  |
| A51930 |  | Testing & Inspection | 2d | 2026-10-12 | 2026-10-13 | A51910 |  |  |  | 27.8d | 0d | ICKMO1-cost unite [1201.93 $]; labor [1200 h]; Physical Units [10356.3 h] | 1,201.93 |  | ZNB | CON |  |
|  | MH-3.31.3 / MH-3.31.4 | **MH-3.31.3 / MH-3.31.4** |  | 2026-08-04 | 2026-10-13 |  |  |  |  |  |  |  |  |  |  |  |  |
| A51950 |  | Excavation | 4d | 2026-08-04 A | 2026-09-05 A | A51900, A1990 | 100% | 2027-01-06 | 2027-01-10 |  |  | ICKMO1-cost unite [4807.72 $]; Excavator [200 h]; Physical Units [41425.3 h] | 4,807.72 | 4,807.72 | ZNB | CON |  |
| A51960 |  | Pipe Laying | 8d | 2026-08-04 A | 2026-09-05 A | A51950 | 100% | 2027-01-11 | 2027-01-19 |  |  | ICKMO1-cost unite [6009.65 $]; boom truck [200 h]; labor [1200 h]; Sewage Network Circular pipes (GRP) [63.28]; Physical Units [51781.6 h] | 6,009.65 | 6,009.65 | ZNB | CON | LAY |
| A51970 |  | Install Manhole | 4d | 2026-08-04 A | 2026-09-05 A | A51950 | 100% | 2027-01-11 | 2027-01-14 |  |  | ICKMO1-cost unite [9615.45 $]; boom truck [200 h]; labor [1200 h]; Physical Units [82850.7 h] | 9,615.45 | 9,615.45 | ZNB | CON | MH |
| A51990 |  | Backfilling & Compaction | 10d | 2026-08-04 A | 2026-09-05 A | A51980, A51970, A51940, A77220 | 100% | 2027-02-13 | 2027-02-23 |  |  | ICKMO1-cost unite [2403.86 $]; Roller compactor [200 h]; Physical Units [20712.7 h] | 2,403.86 | 2,403.86 | ZNB | CON |  |
| A51980 |  | Testing & Inspection | 2d | 2026-10-12 | 2026-10-13 | A51960 |  |  |  | 27.8d | 0d | ICKMO1-cost unite [1201.93 $]; labor [1200 h]; Physical Units [10356.3 h] | 1,201.93 |  | ZNB | CON |  |
|  | LR 23 | **LR 23** |  | 2026-08-04 | 2026-10-13 |  |  |  |  |  |  |  |  |  |  |  |  |
|  | MH-3.28.0 / MH-3.28.1 | **MH-3.28.0 / MH-3.28.1** |  | 2026-08-04 | 2026-10-13 |  |  |  |  |  |  |  |  |  |  |  |  |
| A52000 |  | Excavation | 4d | 2026-08-04 A | 2026-09-05 A | A77020, A1990 | 100% | 2026-12-14 | 2026-12-17 |  |  | ICKMO1-cost unite [4807.72 $]; Excavator [200 h]; Physical Units [41425.3 h] | 4,807.72 | 4,807.72 | ZNB | CON |  |
| A52010 |  | Pipe Laying | 8d | 2026-08-04 A | 2026-09-05 A | A52000 | 100% | 2026-12-19 | 2026-12-27 |  |  | ICKMO1-cost unite [6009.65 $]; boom truck [200 h]; labor [1200 h]; Sewage Network Circular pipes (GRP) [63.28]; Physical Units [51781.6 h] | 6,009.65 | 6,009.65 | ZNB | CON | LAY |
| A52020 |  | Install Manhole | 4d | 2026-08-04 A | 2026-09-05 A | A52000 | 100% | 2026-12-19 | 2026-12-22 |  |  | ICKMO1-cost unite [9615.45 $]; boom truck [200 h]; labor [1200 h]; Physical Units [82850.7 h] | 9,615.45 | 9,615.45 | ZNB | CON | MH |
| A52040 |  | Backfilling & Compaction | 4d | 2026-08-04 A | 2026-09-05 A | A52030, A52020 | 100% | 2026-12-30 | 2027-01-03 |  |  | ICKMO1-cost unite [2403.86 $]; Roller compactor [200 h]; Physical Units [20712.7 h] | 2,403.86 | 2,403.86 | ZNB | CON |  |
| A52030 |  | Testing & Inspection | 2d | 2026-10-12 | 2026-10-13 | A52010 |  |  |  | 34.8d | 0d | ICKMO1-cost unite [1201.93 $]; labor [1200 h]; Physical Units [10356.3 h] | 1,201.93 |  | ZNB | CON |  |
|  | MH-3.28.1 / MH-3.28.2 | **MH-3.28.1 / MH-3.28.2** |  | 2026-08-04 | 2026-10-13 |  |  |  |  |  |  |  |  |  |  |  |  |
| A52050 |  | Excavation | 4d | 2026-08-04 A | 2026-09-05 A | A52000, A1990 | 100% | 2026-12-19 | 2026-12-22 |  |  | ICKMO1-cost unite [4807.72 $]; Excavator [200 h]; Physical Units [41425.3 h] | 4,807.72 | 4,807.72 | ZNB | CON |  |
| A52060 |  | Pipe Laying | 4d | 2026-08-04 A | 2026-09-05 A | A52050 | 100% | 2026-12-23 | 2026-12-27 |  |  | ICKMO1-cost unite [6009.65 $]; boom truck [200 h]; labor [1200 h]; Sewage Network Circular pipes (GRP) [63.28]; Physical Units [51781.6 h] | 6,009.65 | 6,009.65 | ZNB | CON | LAY |
| A52070 |  | Install Manhole | 4d | 2026-08-04 A | 2026-09-05 A | A52050 | 100% | 2026-12-23 | 2026-12-27 |  |  | ICKMO1-cost unite [9615.45 $]; boom truck [200 h]; labor [1200 h]; Physical Units [82850.7 h] | 9,615.45 | 9,615.45 | ZNB | CON | MH |
| A52090 |  | Backfilling & Compaction | 4d | 2026-08-04 A | 2026-09-05 A | A52080, A52070, A52040 | 100% | 2027-01-04 | 2027-01-07 |  |  | ICKMO1-cost unite [2403.86 $]; Roller compactor [200 h]; Physical Units [20712.7 h] | 2,403.86 | 2,403.86 | ZNB | CON |  |
| A52080 |  | Testing & Inspection | 2d | 2026-10-12 | 2026-10-13 | A52060 |  |  |  | 34.8d | 0d | ICKMO1-cost unite [1201.93 $]; labor [1200 h]; Physical Units [10356.3 h] | 1,201.93 |  | ZNB | CON |  |

| ID | WBS | Activity | Duration | Start | Finish | Predecessors | Complete | Planned start | Planned finish | Total float | Free float | Resources | Cost | Actual cost | ALKHARJ INDUSTERIAL AREA - PROJECT ZONES | ALKHARJ INDUSTERIAL AREA - DECEPLINS | ALKHARJ INDUSTERIAL AREA - Wet networks |
| --- | --- | --- | --- | --- | --- | --- | --- | --- | --- | --- | --- | --- | --- | --- | --- | --- | --- |
|  | MH-3.28.1.0 / MH-3.28.1.1 | **MH-3.28.1.0 / MH-3.28.1.1** |  | 2026-08-04 | 2026-10-13 |  |  |  |  |  |  |  |  |  |  |  |  |
| A52100 |  | Excavation | 4d | 2026-08-04 A | 2026-09-05 A | A52050, A1990 | 100% | 2026-12-23 | 2026-12-27 |  |  | ICKMO1-cost unite [4807.72 $]; Excavator [200 h]; Physical Units [41425.3 h] | 4,807.72 | 4,807.72 | ZNB | CON |  |
| A52110 |  | Pipe Laying | 8d | 2026-08-04 A | 2026-09-05 A | A52100 | 100% | 2026-12-28 | 2027-01-05 |  |  | ICKMO1-cost unite [6009.65 $]; boom truck [200 h]; labor [1200 h]; Sewage Network Circular pipes (GRP) [63.28]; Physical Units [51781.6 h] | 6,009.65 | 6,009.65 | ZNB | CON | LAY |
| A52120 |  | Install Manhole | 4d | 2026-08-04 A | 2026-09-05 A | A52100 | 100% | 2026-12-28 | 2026-12-31 |  |  | ICKMO1-cost unite [9615.45 $]; boom truck [200 h]; labor [1200 h]; Physical Units [82850.7 h] | 9,615.45 | 9,615.45 | ZNB | CON | MH |
| A52140 |  | Backfilling & Compaction | 10d | 2026-08-04 A | 2026-09-05 A | A52130, A52120, A52090 | 100% | 2027-01-09 | 2027-01-19 |  |  | ICKMO1-cost unite [2403.86 $]; Roller compactor [200 h]; Physical Units [20712.7 h] | 2,403.86 | 2,403.86 | ZNB | CON |  |
| A52130 |  | Testing & Inspection | 2d | 2026-10-12 | 2026-10-13 | A52110 |  |  |  | 34.8d | 0d | ICKMO1-cost unite [1201.93 $]; labor [1200 h]; Physical Units [10356.3 h] | 1,201.93 |  | ZNB | CON |  |
|  | MH-3.28.2 / MH-3.28.3 | **MH-3.28.2 / MH-3.28.3** |  | 2026-08-04 | 2026-10-13 |  |  |  |  |  |  |  |  |  |  |  |  |
| A52150 |  | Excavation | 4d | 2026-08-04 A | 2026-09-05 A | A52100, A1990 | 100% | 2026-12-28 | 2026-12-31 |  |  | ICKMO1-cost unite [4807.72 $]; Excavator [200 h]; Physical Units [41425.3 h] | 4,807.72 | 4,807.72 | ZNB | CON |  |
| A52160 |  | Pipe Laying | 4d | 2026-08-04 A | 2026-09-05 A | A52150 | 100% | 2027-01-02 | 2027-01-05 |  |  | ICKMO1-cost unite [6009.65 $]; boom truck [200 h]; labor [1200 h]; Sewage Network Circular pipes (GRP) [63.28]; Physical Units [51781.6 h] | 6,009.65 | 6,009.65 | ZNB | CON | LAY |
| A52170 |  | Install Manhole | 4d | 2026-08-04 A | 2026-09-05 A | A52150 | 100% | 2027-01-02 | 2027-01-05 |  |  | ICKMO1-cost unite [9615.45 $]; boom truck [200 h]; labor [1200 h]; Physical Units [82850.7 h] | 9,615.45 | 9,615.45 | ZNB | CON | MH |
| A52190 |  | Backfilling & Compaction | 10d | 2026-08-04 A | 2026-09-05 A | A52180, A52170, A52140 | 100% | 2027-01-20 | 2027-01-31 |  |  | ICKMO1-cost unite [2403.86 $]; Roller compactor [200 h]; Physical Units [20712.7 h] | 2,403.86 | 2,403.86 | ZNB | CON |  |
| A52180 |  | Testing & Inspection | 2d | 2026-10-12 | 2026-10-13 | A52160 |  |  |  | 34.8d | 0d | ICKMO1-cost unite [1201.93 $]; labor [1200 h]; Physical Units [10356.3 h] | 1,201.93 |  | ZNB | CON |  |
|  | MH-3.28.2.0 / MH-3.28.2.1 | **MH-3.28.2.0 / MH-3.28.2.1** |  | 2026-08-04 | 2026-10-13 |  |  |  |  |  |  |  |  |  |  |  |  |
| A52200 |  | Excavation | 4d | 2026-08-04 A | 2026-09-05 A | A52150, A1990 | 100% | 2027-01-02 | 2027-01-05 |  |  | ICKMO1-cost unite [4807.72 $]; Excavator [200 h]; Physical Units [41425.3 h] | 4,807.72 | 4,807.72 | ZNB | CON |  |
| A52210 |  | Pipe Laying | 8d | 2026-08-04 A | 2026-09-05 A | A52200 | 100% | 2027-01-06 | 2027-01-14 |  |  | ICKMO1-cost unite [6009.65 $]; boom truck [200 h]; labor [1200 h]; Sewage Network Circular pipes (GRP) [63.28]; Physical Units [51781.6 h] | 6,009.65 | 6,009.65 | ZNB | CON | LAY |
| A52220 |  | Install Manhole | 4d | 2026-08-04 A | 2026-09-05 A | A52200 | 100% | 2027-01-06 | 2027-01-10 |  |  | ICKMO1-cost unite [9615.45 $]; boom truck [200 h]; labor [1200 h]; Physical Units [82850.7 h] | 9,615.45 | 9,615.45 | ZNB | CON | MH |
| A52240 |  | Backfilling & Compaction | 10d | 2026-08-04 A | 2026-09-05 A | A52230, A52220, A52190 | 100% | 2027-02-01 | 2027-02-11 |  |  | ICKMO1-cost unite [2403.86 $]; Roller compactor [200 h]; Physical Units [20712.7 h] | 2,403.86 | 2,403.86 | ZNB | CON |  |
| A52230 |  | Testing & Inspection | 2d | 2026-10-12 | 2026-10-13 | A52210 |  |  |  | 34.8d | 0d | ICKMO1-cost unite [1201.93 $]; labor [1200 h]; Physical Units [10356.3 h] | 1,201.93 |  | ZNB | CON |  |
|  | MH-3.28.3 / MH-3.28.4 | **MH-3.28.3 / MH-3.28.4** |  | 2026-08-04 | 2026-10-13 |  |  |  |  |  |  |  |  |  |  |  |  |
| A52250 |  | Excavation | 4d | 2026-08-04 A | 2026-09-05 A | A52200, A1990 | 100% | 2027-01-06 | 2027-01-10 |  |  | ICKMO1-cost unite [4807.72 $]; Excavator [200 h]; Physical Units [41425.3 h] | 4,807.72 | 4,807.72 | ZNB | CON |  |
| A52260 |  | Pipe Laying | 8d | 2026-08-04 A | 2026-09-05 A | A52250 | 100% | 2027-01-11 | 2027-01-19 |  |  | ICKMO1-cost unite [6009.65 $]; boom truck [200 h]; labor [1200 h]; Sewage Network Circular pipes (GRP) [63.28]; Physical Units [51781.6 h] | 6,009.65 | 6,009.65 | ZNB | CON | LAY |
| A52270 |  | Install Manhole | 4d | 2026-08-04 A | 2026-09-05 A | A52250 | 100% | 2027-01-11 | 2027-01-14 |  |  | ICKMO1-cost unite [9615.45 $]; boom truck [200 h]; labor [1200 h]; Physical Units [82850.7 h] | 9,615.45 | 9,615.45 | ZNB | CON | MH |
| A52290 |  | Backfilling & Compaction | 10d | 2026-08-04 A | 2026-09-05 A | A52280, A52270, A52240, A77070 | 100% | 2027-02-13 | 2027-02-23 |  |  | ICKMO1-cost unite [2403.86 $]; Roller compactor [200 h]; Physical Units [20712.7 h] | 2,403.86 | 2,403.86 | ZNB | CON |  |
| A52280 |  | Testing & Inspection | 2d | 2026-10-12 | 2026-10-13 | A52260 |  |  |  | 34.8d | 0d | ICKMO1-cost unite [1201.93 $]; labor [1200 h]; Physical Units [10356.3 h] | 1,201.93 |  | ZNB | CON |  |

| ID | WBS | Activity | Duration | Start | Finish | Predecessors | Complete | Planned start | Planned finish | Total float | Free float | Resources | Cost | Actual cost | ALKHARJ INDUSTERIAL AREA - PROJECT ZONES | ALKHARJ INDUSTERIAL AREA - DECEPLINS | ALKHARJ INDUSTERIAL AREA - Wet networks |
| --- | --- | --- | --- | --- | --- | --- | --- | --- | --- | --- | --- | --- | --- | --- | --- | --- | --- |
|  | LR 24 | **LR 24** |  | 2026-08-04 | 2026-10-13 |  |  |  |  |  |  |  |  |  |  |  |  |
|  | MH-3.13.7 / MH-3.13.8 | **MH-3.13.7 / MH-3.13.8** |  | 2026-08-04 | 2026-10-13 |  |  |  |  |  |  |  |  |  |  |  |  |
| A52300 |  | Excavation | 4d | 2026-08-04 A | 2026-09-05 A | A76770, A1990 | 100% | 2026-12-21 | 2026-12-24 |  |  | ICKMO1-cost unite [4454.21 $]; Excavator [200 h]; Physical Units [38379.3 h] | 4,454.21 | 4,454.21 | ZNB | CON |  |
| A52310 |  | Pipe Laying | 8d | 2026-08-04 A | 2026-09-05 A | A52300 | 100% | 2026-12-26 | 2027-01-03 |  |  | ICKMO1-cost unite [5567.77 $]; boom truck [200 h]; labor [1200 h]; Sewage Network Circular pipes (GRP) [63.28]; Physical Units [47974.2 h] | 5,567.77 | 5,567.77 | ZNB | CON | LAY |
| A52320 |  | Install Manhole | 4d | 2026-08-04 A | 2026-09-05 A | A52300 | 100% | 2026-12-26 | 2026-12-29 |  |  | ICKMO1-cost unite [8908.43 $]; boom truck [200 h]; labor [1200 h]; Physical Units [76758.7 h] | 8,908.43 | 8,908.43 | ZNB | CON | MH |
| A52340 |  | Backfilling & Compaction | 10d | 2026-08-04 A | 2026-09-05 A | A52330, A52320 | 100% | 2027-01-06 | 2027-01-17 |  |  | ICKMO1-cost unite [2227.11 $]; Roller compactor [200 h]; Physical Units [19189.7 h] | 2,227.11 | 2,227.11 | ZNB | CON |  |
| A52330 |  | Testing & Inspection | 2d | 2026-10-12 | 2026-10-13 | A52310 |  |  |  | 23d | 0d | ICKMO1-cost unite [1113.55 $]; labor [1200 h]; Physical Units [9594.81 h] | 1,113.55 |  | ZNB | CON |  |
|  | MH-3.23 / MH-3.24 | **MH-3.23 / MH-3.24** |  | 2026-08-04 | 2026-10-13 |  |  |  |  |  |  |  |  |  |  |  |  |
| A52350 |  | Excavation | 4d | 2026-08-04 A | 2026-09-05 A | A52300, A1990 | 100% | 2026-12-26 | 2026-12-29 |  |  | ICKMO1-cost unite [4454.21 $]; Excavator [200 h]; Physical Units [38379.3 h] | 4,454.21 | 4,454.21 | ZNB | CON |  |
| A52360 |  | Pipe Laying | 4d | 2026-08-04 A | 2026-09-05 A | A52350 | 100% | 2026-12-30 | 2027-01-03 |  |  | ICKMO1-cost unite [5567.77 $]; boom truck [200 h]; labor [1200 h]; Sewage Network Circular pipes (GRP) [63.28]; Physical Units [47974.2 h] | 5,567.77 | 5,567.77 | ZNB | CON | LAY |
| A52370 |  | Install Manhole | 4d | 2026-08-04 A | 2026-09-05 A | A52350 | 100% | 2026-12-30 | 2027-01-03 |  |  | ICKMO1-cost unite [8908.43 $]; boom truck [200 h]; labor [1200 h]; Physical Units [76758.7 h] | 8,908.43 | 8,908.43 | ZNB | CON | MH |
| A52390 |  | Backfilling & Compaction | 4d | 2026-08-04 A | 2026-09-05 A | A52380, A52370, A52340 | 100% | 2027-01-18 | 2027-01-21 |  |  | ICKMO1-cost unite [2227.11 $]; Roller compactor [200 h]; Physical Units [19189.7 h] | 2,227.11 | 2,227.11 | ZNB | CON |  |
| A52380 |  | Testing & Inspection | 2d | 2026-10-12 | 2026-10-13 | A52360 |  |  |  | 23d | 0d | ICKMO1-cost unite [1113.55 $]; labor [1200 h]; Physical Units [9594.81 h] | 1,113.55 |  | ZNB | CON |  |
|  | MH-3.23.0 / MH-3.23.1 | **MH-3.23.0 / MH-3.23.1** |  | 2026-08-15 | 2026-10-13 |  |  |  |  |  |  |  |  |  |  |  |  |
| A52600 |  | Excavation | 4d | 2026-08-15 A | 2026-09-20 A | A52550, A1990 | 100% | 2027-01-18 | 2027-01-21 |  |  | ICKMO1-cost unite [4454.21 $]; Excavator [200 h]; Physical Units [38379.3 h] | 4,454.21 | 4,454.21 | ZNB | CON |  |
| A52610 |  | Pipe Laying | 8d | 2026-08-15 A | 2026-09-20 A | A52600 | 100% | 2027-01-23 | 2027-01-31 |  |  | ICKMO1-cost unite [5567.77 $]; boom truck [200 h]; labor [1200 h]; Sewage Network Circular pipes (GRP) [63.28]; Physical Units [47974.2 h] | 5,567.77 | 5,567.77 | ZNB | CON | LAY |
| A52620 |  | Install Manhole | 4d | 2026-08-15 A | 2026-09-20 A | A52600 | 100% | 2027-01-23 | 2027-01-26 |  |  | ICKMO1-cost unite [8908.43 $]; boom truck [200 h]; labor [1200 h]; Physical Units [76758.7 h] | 8,908.43 | 8,908.43 | ZNB | CON | MH |
| A52640 |  | Backfilling & Compaction | 10d | 2026-08-15 A | 2026-09-20 A | A52630, A52620, A52590 | 100% | 2027-03-10 | 2027-03-21 |  |  | ICKMO1-cost unite [2227.11 $]; Roller compactor [200 h]; Physical Units [19189.7 h] | 2,227.11 | 2,227.11 | ZNB | CON |  |
| A52630 |  | Testing & Inspection | 2d | 2026-10-12 | 2026-10-13 | A52610 |  |  |  | 23d | 0d | ICKMO1-cost unite [1113.55 $]; labor [1200 h]; Physical Units [9594.81 h] | 1,113.55 |  | ZNB | CON |  |
|  | MH-3.23.0 / MH-3.23.1A | **MH-3.23.0 / MH-3.23.1A** |  | 2026-08-04 | 2026-10-13 |  |  |  |  |  |  |  |  |  |  |  |  |
| A52550 |  | Excavation | 4d | 2026-08-04 A | 2026-09-05 A | A52500, A1990 | 100% | 2027-01-13 | 2027-01-17 |  |  | ICKMO1-cost unite [4454.21 $]; Excavator [200 h]; Physical Units [38379.3 h] | 4,454.21 | 4,454.21 | ZNB | CON |  |
| A52560 |  | Pipe Laying | 8d | 2026-08-04 A | 2026-09-05 A | A52550 | 100% | 2027-01-18 | 2027-01-26 |  |  | ICKMO1-cost unite [5567.77 $]; boom truck [200 h]; labor [1200 h]; Sewage Network Circular pipes (GRP) [63.28]; Physical Units [47974.2 h] | 5,567.77 | 5,567.77 | ZNB | CON | LAY |
| A52570 |  | Install Manhole | 4d | 2026-08-04 A | 2026-09-05 A | A52550 | 100% | 2027-01-18 | 2027-01-21 |  |  | ICKMO1-cost unite [8908.43 $]; boom truck [200 h]; labor [1200 h]; Physical Units [76758.7 h] | 8,908.43 | 8,908.43 | ZNB | CON | MH |
| A52590 |  | Backfilling & Compaction | 10d | 2026-08-15 A | 2026-09-20 A | A52580, A52570, A52540 | 100% | 2027-02-27 | 2027-03-09 |  |  | ICKMO1-cost unite [2227.11 $]; Roller compactor [200 h]; Physical Units [19189.7 h] | 2,227.11 | 2,227.11 | ZNB | CON |  |
| A52580 |  | Testing & Inspection | 2d | 2026-10-12 | 2026-10-13 | A52560 |  |  |  | 23d | 0d | ICKMO1-cost unite [1113.55 $]; labor [1200 h]; Physical Units [9594.81 h] | 1,113.55 |  | ZNB | CON |  |

| ID | WBS | Activity | Duration | Start | Finish | Predecessors | Complete | Planned start | Planned finish | Total float | Free float | Resources | Cost | Actual cost | ALKHARJ INDUSTERIAL AREA - PROJECT ZONES | ALKHARJ INDUSTERIAL AREA - DECEPLINS | ALKHARJ INDUSTERIAL AREA - Wet networks |
| --- | --- | --- | --- | --- | --- | --- | --- | --- | --- | --- | --- | --- | --- | --- | --- | --- | --- |
|  | MH-3.23.1 / MH-3.23.2 | **MH-3.23.1 / MH-3.23.2** |  | 2026-08-15 | 2026-10-13 |  |  |  |  |  |  |  |  |  |  |  |  |
| A52650 |  | Excavation | 4d | 2026-08-15 A | 2026-09-20 A | A52600, A1990 | 100% | 2027-01-23 | 2027-01-26 |  |  | ICKMO1-cost unite [4454.21 $]; Excavator [200 h]; Physical Units [38379.3 h] | 4,454.21 | 4,454.21 | ZNB | CON |  |
| A52660 |  | Pipe Laying | 8d | 2026-08-15 A | 2026-09-20 A | A52650 | 100% | 2027-01-27 | 2027-02-04 |  |  | ICKMO1-cost unite [5567.77 $]; boom truck [200 h]; labor [1200 h]; Sewage Network Circular pipes (GRP) [63.28]; Physical Units [47974.2 h] | 5,567.77 | 5,567.77 | ZNB | CON | LAY |
| A52670 |  | Install Manhole | 4d | 2026-08-15 A | 2026-09-20 A | A52650 | 100% | 2027-01-27 | 2027-01-31 |  |  | ICKMO1-cost unite [8908.43 $]; boom truck [200 h]; labor [1200 h]; Physical Units [76758.7 h] | 8,908.43 | 8,908.43 | ZNB | CON | MH |
| A52690 |  | Backfilling & Compaction | 10d | 2026-08-15 A | 2026-09-20 A | A52680, A52670, A52640, A76970 | 100% | 2027-03-22 | 2027-04-01 |  |  | ICKMO1-cost unite [2227.11 $]; Roller compactor [200 h]; Physical Units [19189.7 h] | 2,227.11 | 2,227.11 | ZNB | CON |  |
| A52680 |  | Testing & Inspection | 2d | 2026-10-12 | 2026-10-13 | A52660 |  |  |  | 23d | 0d | ICKMO1-cost unite [1113.55 $]; labor [1200 h]; Physical Units [9594.81 h] | 1,113.55 |  | ZNB | CON |  |
|  | MH-3.24 / MH-3.25 | **MH-3.24 / MH-3.25** |  | 2026-08-04 | 2026-10-13 |  |  |  |  |  |  |  |  |  |  |  |  |
| A52400 |  | Excavation | 4d | 2026-08-04 A | 2026-09-05 A | A52350, A1990 | 100% | 2026-12-30 | 2027-01-03 |  |  | ICKMO1-cost unite [4454.21 $]; Excavator [200 h]; Physical Units [38379.3 h] | 4,454.21 | 4,454.21 | ZNB | CON |  |
| A52410 |  | Pipe Laying | 8d | 2026-08-04 A | 2026-09-05 A | A52400 | 100% | 2027-01-04 | 2027-01-12 |  |  | ICKMO1-cost unite [5567.77 $]; boom truck [200 h]; labor [1200 h]; Sewage Network Circular pipes (GRP) [63.28]; Physical Units [47974.2 h] | 5,567.77 | 5,567.77 | ZNB | CON | LAY |
| A52420 |  | Install Manhole | 4d | 2026-08-04 A | 2026-09-05 A | A52400 | 100% | 2027-01-04 | 2027-01-07 |  |  | ICKMO1-cost unite [8908.43 $]; boom truck [200 h]; labor [1200 h]; Physical Units [76758.7 h] | 8,908.43 | 8,908.43 | ZNB | CON | MH |
| A52440 |  | Backfilling & Compaction | 10d | 2026-08-04 A | 2026-09-05 A | A52430, A52420, A52390 | 100% | 2027-01-23 | 2027-02-02 |  |  | ICKMO1-cost unite [2227.11 $]; Roller compactor [200 h]; Physical Units [19189.7 h] | 2,227.11 | 2,227.11 | ZNB | CON |  |
| A52430 |  | Testing & Inspection | 2d | 2026-10-12 | 2026-10-13 | A52410 |  |  |  | 23d | 0d | ICKMO1-cost unite [1113.55 $]; labor [1200 h]; Physical Units [9594.81 h] | 1,113.55 |  | ZNB | CON |  |
|  | MH-3.24.0 / MH-3.24.1 | **MH-3.24.0 / MH-3.24.1** |  | 2026-08-04 | 2026-10-13 |  |  |  |  |  |  |  |  |  |  |  |  |
| A52450 |  | Excavation | 4d | 2026-08-04 A | 2026-09-05 A | A52400, A1990 | 100% | 2027-01-04 | 2027-01-07 |  |  | ICKMO1-cost unite [4454.21 $]; Excavator [200 h]; Physical Units [38379.3 h] | 4,454.21 | 4,454.21 | ZNB | CON |  |
| A52460 |  | Pipe Laying | 8d | 2026-08-04 A | 2026-09-05 A | A52450 | 100% | 2027-01-09 | 2027-01-17 |  |  | ICKMO1-cost unite [5567.77 $]; boom truck [200 h]; labor [1200 h]; Sewage Network Circular pipes (GRP) [63.28]; Physical Units [47974.2 h] | 5,567.77 | 5,567.77 | ZNB | CON | LAY |
| A52470 |  | Install Manhole | 4d | 2026-08-04 A | 2026-09-05 A | A52450 | 100% | 2027-01-09 | 2027-01-12 |  |  | ICKMO1-cost unite [8908.43 $]; boom truck [200 h]; labor [1200 h]; Physical Units [76758.7 h] | 8,908.43 | 8,908.43 | ZNB | CON | MH |
| A52490 |  | Backfilling & Compaction | 10d | 2026-08-04 A | 2026-09-05 A | A52480, A52470, A52440 | 100% | 2027-02-03 | 2027-02-14 |  |  | ICKMO1-cost unite [2227.11 $]; Roller compactor [200 h]; Physical Units [19189.7 h] | 2,227.11 | 2,227.11 | ZNB | CON |  |
| A52480 |  | Testing & Inspection | 2d | 2026-10-12 | 2026-10-13 | A52460 |  |  |  | 23d | 0d | ICKMO1-cost unite [1113.55 $]; labor [1200 h]; Physical Units [9594.81 h] | 1,113.55 |  | ZNB | CON |  |
|  | MH-3.25 / MH-3.26 | **MH-3.25 / MH-3.26** |  | 2026-08-15 | 2026-10-13 |  |  |  |  |  |  |  |  |  |  |  |  |
| A52500 |  | Excavation | 4d | 2026-08-15 A | 2026-09-20 A | A52450, A1990 | 100% | 2027-01-09 | 2027-01-12 |  |  | ICKMO1-cost unite [4454.21 $]; Excavator [200 h]; Physical Units [38379.3 h] | 4,454.21 | 4,454.21 | ZNB | CON |  |
| A52510 |  | Pipe Laying | 8d | 2026-08-15 A | 2026-09-20 A | A52500 | 100% | 2027-01-13 | 2027-01-21 |  |  | ICKMO1-cost unite [5567.77 $]; boom truck [200 h]; labor [1200 h]; Sewage Network Circular pipes (GRP) [63.28]; Physical Units [47974.2 h] | 5,567.77 | 5,567.77 | ZNB | CON | LAY |
| A52520 |  | Install Manhole | 4d | 2026-08-15 A | 2026-09-20 A | A52500 | 100% | 2027-01-13 | 2027-01-17 |  |  | ICKMO1-cost unite [8908.43 $]; boom truck [200 h]; labor [1200 h]; Physical Units [76758.7 h] | 8,908.43 | 8,908.43 | ZNB | CON | MH |
| A52540 |  | Backfilling & Compaction | 10d | 2026-08-15 A | 2026-09-20 A | A52530, A52520, A52490 | 100% | 2027-02-15 | 2027-02-25 |  |  | ICKMO1-cost unite [2227.11 $]; Roller compactor [200 h]; Physical Units [19189.7 h] | 2,227.11 | 2,227.11 | ZNB | CON |  |
| A52530 |  | Testing & Inspection | 2d | 2026-10-12 | 2026-10-13 | A52510 |  |  |  | 23d | 0d | ICKMO1-cost unite [1113.55 $]; labor [1200 h]; Physical Units [9594.81 h] | 1,113.55 |  | ZNB | CON |  |

| ID | WBS | Activity | Duration | Start | Finish | Predecessors | Complete | Planned start | Planned finish | Total float | Free float | Resources | Cost | Actual cost | ALKHARJ INDUSTERIAL AREA - PROJECT ZONES | ALKHARJ INDUSTERIAL AREA - DECEPLINS | ALKHARJ INDUSTERIAL AREA - Wet networks |
| --- | --- | --- | --- | --- | --- | --- | --- | --- | --- | --- | --- | --- | --- | --- | --- | --- | --- |
|  | LR 25 | **LR 25** |  | 2026-08-15 | 2026-10-13 |  |  |  |  |  |  |  |  |  |  |  |  |
|  | MH-3.26 / MH-3.27 | **MH-3.26 / MH-3.27** |  | 2026-08-15 | 2026-10-13 |  |  |  |  |  |  |  |  |  |  |  |  |
| A52700 |  | Excavation | 4d | 2026-08-15 A | 2026-09-20 A | A76520, A1990 | 100% | 2026-11-12 | 2026-11-16 |  |  | ICKMO1-cost unite [4605.72 $]; Excavator [200 h]; Physical Units [39684.8 h] | 4,605.72 | 4,605.72 | ZNB | CON |  |
| A52710 |  | Pipe Laying | 4d | 2026-08-15 A | 2026-09-20 A | A52700 | 100% | 2026-11-17 | 2026-11-21 |  |  | ICKMO1-cost unite [5757.15 $]; boom truck [200 h]; labor [1200 h]; Sewage Network Circular pipes (GRP) [63.28]; Physical Units [49606 h] | 5,757.15 | 5,757.15 | ZNB | CON | LAY |
| A52720 |  | Install Manhole | 4d | 2026-08-15 A | 2026-09-20 A | A52700 | 100% | 2026-11-17 | 2026-11-21 |  |  | ICKMO1-cost unite [9211.43 $]; boom truck [200 h]; labor [1200 h]; Physical Units [79369.5 h] | 9,211.43 | 9,211.43 | ZNB | CON | MH |
| A52740 |  | Backfilling & Compaction | 4d | 2026-08-15 A | 2026-09-20 A | A52730, A52720 | 100% | 2026-11-24 | 2026-11-28 |  |  | ICKMO1-cost unite [2302.86 $]; Roller compactor [200 h]; Physical Units [19842.4 h] | 2,302.86 | 2,302.86 | ZNB | CON |  |
| A52730 |  | Testing & Inspection | 2d | 2026-10-12 | 2026-10-13 | A52710 |  |  |  | 37d | 0d | ICKMO1-cost unite [1151.43 $]; labor [1200 h]; Physical Units [9921.2 h] | 1,151.43 |  | ZNB | CON |  |
|  | MH-3.27 / MH-3.28 | **MH-3.27 / MH-3.28** |  | 2026-08-15 | 2026-10-13 |  |  |  |  |  |  |  |  |  |  |  |  |
| A52750 |  | Excavation | 4d | 2026-08-15 A | 2026-09-20 A | A52700, A1990 | 100% | 2026-11-17 | 2026-11-21 |  |  | ICKMO1-cost unite [4605.72 $]; Excavator [200 h]; Physical Units [39684.8 h] | 4,605.72 | 4,605.72 | ZNB | CON |  |
| A52760 |  | Pipe Laying | 8d | 2026-08-15 A | 2026-09-20 A | A52750 | 100% | 2026-11-22 | 2026-11-30 |  |  | ICKMO1-cost unite [5757.15 $]; boom truck [200 h]; labor [1200 h]; Sewage Network Circular pipes (GRP) [63.28]; Physical Units [49606 h] | 5,757.15 | 5,757.15 | ZNB | CON | LAY |
| A52770 |  | Install Manhole | 4d | 2026-08-15 A | 2026-09-20 A | A52750 | 100% | 2026-11-22 | 2026-11-25 |  |  | ICKMO1-cost unite [9211.43 $]; boom truck [200 h]; labor [1200 h]; Physical Units [79369.5 h] | 9,211.43 | 9,211.43 | ZNB | CON | MH |
| A52790 |  | Backfilling & Compaction | 10d | 2026-08-15 A | 2026-09-20 A | A52780, A52770, A52740 | 100% | 2026-12-03 | 2026-12-14 |  |  | ICKMO1-cost unite [2302.86 $]; Roller compactor [200 h]; Physical Units [19842.4 h] | 2,302.86 | 2,302.86 | ZNB | CON |  |
| A52780 |  | Testing & Inspection | 2d | 2026-10-12 | 2026-10-13 | A52760 |  |  |  | 37d | 0d | ICKMO1-cost unite [1151.43 $]; labor [1200 h]; Physical Units [9921.2 h] | 1,151.43 |  | ZNB | CON |  |
|  | MH-3.28 / MH-3.29 | **MH-3.28 / MH-3.29** |  | 2026-08-15 | 2026-10-13 |  |  |  |  |  |  |  |  |  |  |  |  |
| A52800 |  | Excavation | 4d | 2026-08-15 A | 2026-09-20 A | A52750, A1990 | 100% | 2026-11-22 | 2026-11-25 |  |  | ICKMO1-cost unite [4605.72 $]; Excavator [200 h]; Physical Units [39684.8 h] | 4,605.72 | 4,605.72 | ZNB | CON |  |
| A52810 |  | Pipe Laying | 8d | 2026-08-15 A | 2026-09-20 A | A52800 | 100% | 2026-11-26 | 2026-12-05 |  |  | ICKMO1-cost unite [5757.15 $]; boom truck [200 h]; labor [1200 h]; Sewage Network Circular pipes (GRP) [63.28]; Physical Units [49606 h] | 5,757.15 | 5,757.15 | ZNB | CON | LAY |
| A52820 |  | Install Manhole | 4d | 2026-08-15 A | 2026-09-20 A | A52800 | 100% | 2026-11-26 | 2026-11-30 |  |  | ICKMO1-cost unite [9211.43 $]; boom truck [200 h]; labor [1200 h]; Physical Units [79369.5 h] | 9,211.43 | 9,211.43 | ZNB | CON | MH |
| A52840 |  | Backfilling & Compaction | 10d | 2026-08-15 A | 2026-09-20 A | A52830, A52820, A52790 | 100% | 2026-12-15 | 2026-12-26 |  |  | ICKMO1-cost unite [2302.86 $]; Roller compactor [200 h]; Physical Units [19842.4 h] | 2,302.86 | 2,302.86 | ZNB | CON |  |
| A52830 |  | Testing & Inspection | 2d | 2026-10-12 | 2026-10-13 | A52810 |  |  |  | 37d | 0d | ICKMO1-cost unite [1151.43 $]; labor [1200 h]; Physical Units [9921.2 h] | 1,151.43 |  | ZNB | CON |  |
|  | MH-3.29 / MH-3.30 | **MH-3.29 / MH-3.30** |  | 2026-08-15 | 2026-10-13 |  |  |  |  |  |  |  |  |  |  |  |  |
| A52850 |  | Excavation | 4d | 2026-08-15 A | 2026-09-20 A | A52800, A1990 | 100% | 2026-11-26 | 2026-11-30 |  |  | ICKMO1-cost unite [4605.72 $]; Excavator [200 h]; Physical Units [39684.8 h] | 4,605.72 | 4,605.72 | ZNB | CON |  |
| A52860 |  | Pipe Laying | 8d | 2026-08-15 A | 2026-09-20 A | A52850 | 100% | 2026-12-01 | 2026-12-09 |  |  | ICKMO1-cost unite [5757.15 $]; boom truck [200 h]; labor [1200 h]; Sewage Network Circular pipes (GRP) [63.28]; Physical Units [49606 h] | 5,757.15 | 5,757.15 | ZNB | CON | LAY |
| A52870 |  | Install Manhole | 4d | 2026-08-15 A | 2026-09-20 A | A52850 | 100% | 2026-12-01 | 2026-12-05 |  |  | ICKMO1-cost unite [9211.43 $]; boom truck [200 h]; labor [1200 h]; Physical Units [79369.5 h] | 9,211.43 | 9,211.43 | ZNB | CON | MH |
| A52890 |  | Backfilling & Compaction | 10d | 2026-08-15 A | 2026-09-20 A | A52880, A52870, A52840 | 100% | 2026-12-27 | 2027-01-06 |  |  | ICKMO1-cost unite [2302.86 $]; Roller compactor [200 h]; Physical Units [19842.4 h] | 2,302.86 | 2,302.86 | ZNB | CON |  |
| A52880 |  | Testing & Inspection | 2d | 2026-10-12 | 2026-10-13 | A52860 |  |  |  | 37d | 0d | ICKMO1-cost unite [1151.43 $]; labor [1200 h]; Physical Units [9921.2 h] | 1,151.43 |  | ZNB | CON |  |

| ID | WBS | Activity | Duration | Start | Finish | Predecessors | Complete | Planned start | Planned finish | Total float | Free float | Resources | Cost | Actual cost | ALKHARJ INDUSTERIAL AREA - PROJECT ZONES | ALKHARJ INDUSTERIAL AREA - DECEPLINS | ALKHARJ INDUSTERIAL AREA - Wet networks |
| --- | --- | --- | --- | --- | --- | --- | --- | --- | --- | --- | --- | --- | --- | --- | --- | --- | --- |
|  | MH-3.30 / MH-3.31 | **MH-3.30 / MH-3.31** |  | 2026-08-15 | 2026-10-13 |  |  |  |  |  |  |  |  |  |  |  |  |
| A52900 |  | Excavation | 4d | 2026-08-15 A | 2026-09-20 A | A52850, A1990 | 100% | 2026-12-01 | 2026-12-05 |  |  | ICKMO1-cost unite [4605.72 $]; Excavator [200 h]; Physical Units [39684.8 h] | 4,605.72 | 4,605.72 | ZNB | CON |  |
| A52910 |  | Pipe Laying | 8d | 2026-08-15 A | 2026-09-20 A | A52900 | 100% | 2026-12-06 | 2026-12-14 |  |  | ICKMO1-cost unite [5757.15 $]; boom truck [200 h]; labor [1200 h]; Sewage Network Circular pipes (GRP) [63.28]; Physical Units [49606 h] | 5,757.15 | 5,757.15 | ZNB | CON | LAY |
| A52920 |  | Install Manhole | 4d | 2026-08-15 A | 2026-09-20 A | A52900 | 100% | 2026-12-06 | 2026-12-09 |  |  | ICKMO1-cost unite [9211.43 $]; boom truck [200 h]; labor [1200 h]; Physical Units [79369.5 h] | 9,211.43 | 9,211.43 | ZNB | CON | MH |
| A52940 |  | Backfilling & Compaction | 10d | 2026-08-15 A | 2026-09-20 A | A52930, A52920, A52890 | 100% | 2027-01-07 | 2027-01-18 |  |  | ICKMO1-cost unite [2302.86 $]; Roller compactor [200 h]; Physical Units [19842.4 h] | 2,302.86 | 2,302.86 | ZNB | CON |  |
| A52930 |  | Testing & Inspection | 2d | 2026-10-12 | 2026-10-13 | A52910 |  |  |  | 37d | 0d | ICKMO1-cost unite [1151.43 $]; labor [1200 h]; Physical Units [9921.2 h] | 1,151.43 |  | ZNB | CON |  |
|  | MH-3.31 / MH-3.32 | **MH-3.31 / MH-3.32** |  | 2026-08-15 | 2026-10-13 |  |  |  |  |  |  |  |  |  |  |  |  |
| A52950 |  | Excavation | 4d | 2026-08-15 A | 2026-09-20 A | A52900, A1990 | 100% | 2026-12-06 | 2026-12-09 |  |  | ICKMO1-cost unite [4605.72 $]; Excavator [200 h]; Physical Units [39684.8 h] | 4,605.72 | 4,605.72 | ZNB | CON |  |
| A52960 |  | Pipe Laying | 8d | 2026-08-15 A | 2026-09-20 A | A52950 | 100% | 2026-12-10 | 2026-12-19 |  |  | ICKMO1-cost unite [5757.15 $]; boom truck [200 h]; labor [1200 h]; Sewage Network Circular pipes (GRP) [63.28]; Physical Units [49606 h] | 5,757.15 | 5,757.15 | ZNB | CON | LAY |
| A52970 |  | Install Manhole | 4d | 2026-08-15 A | 2026-09-20 A | A52950 | 100% | 2026-12-10 | 2026-12-14 |  |  | ICKMO1-cost unite [9211.43 $]; boom truck [200 h]; labor [1200 h]; Physical Units [79369.5 h] | 9,211.43 | 9,211.43 | ZNB | CON | MH |
| A52990 |  | Backfilling & Compaction | 10d | 2026-08-15 A | 2026-09-20 A | A52980, A52970, A52940 | 100% | 2027-01-19 | 2027-01-30 |  |  | ICKMO1-cost unite [2302.86 $]; Roller compactor [200 h]; Physical Units [19842.4 h] | 2,302.86 | 2,302.86 | ZNB | CON |  |
| A52980 |  | Testing & Inspection | 2d | 2026-10-12 | 2026-10-13 | A52960 |  |  |  | 37d | 0d | ICKMO1-cost unite [1151.43 $]; labor [1200 h]; Physical Units [9921.2 h] | 1,151.43 |  | ZNB | CON |  |
|  | MH-3.32 / MH-3.33 | **MH-3.32 / MH-3.33** |  | 2026-08-15 | 2026-10-13 |  |  |  |  |  |  |  |  |  |  |  |  |
| A53000 |  | Excavation | 4d | 2026-08-15 A | 2026-09-20 A | A52950, A1990 | 100% | 2026-12-10 | 2026-12-14 |  |  | ICKMO1-cost unite [4605.72 $]; Excavator [200 h]; Physical Units [39684.8 h] | 4,605.72 | 4,605.72 | ZNB | CON |  |
| A53010 |  | Pipe Laying | 8d | 2026-08-15 A | 2026-09-20 A | A53000 | 100% | 2026-12-15 | 2026-12-23 |  |  | ICKMO1-cost unite [5757.15 $]; boom truck [200 h]; labor [1200 h]; Sewage Network Circular pipes (GRP) [63.28]; Physical Units [49606 h] | 5,757.15 | 5,757.15 | ZNB | CON | LAY |
| A53020 |  | Install Manhole | 4d | 2026-08-15 A | 2026-09-20 A | A53000 | 100% | 2026-12-15 | 2026-12-19 |  |  | ICKMO1-cost unite [9211.43 $]; boom truck [200 h]; labor [1200 h]; Physical Units [79369.5 h] | 9,211.43 | 9,211.43 | ZNB | CON | MH |
| A53040 |  | Backfilling & Compaction | 10d | 2026-08-15 A | 2026-09-20 A | A53030, A53020, A52990, A76720 | 100% | 2027-01-31 | 2027-02-10 |  |  | ICKMO1-cost unite [2302.86 $]; Roller compactor [200 h]; Physical Units [19842.4 h] | 2,302.86 | 2,302.86 | ZNB | CON |  |
| A53030 |  | Testing & Inspection | 2d | 2026-10-12 | 2026-10-13 | A53010 |  |  |  | 37d | 0d | ICKMO1-cost unite [1151.43 $]; labor [1200 h]; Physical Units [9921.2 h] | 1,151.43 |  | ZNB | CON |  |
|  | LR 26 | **LR 26** |  | 2026-08-15 | 2026-12-29 |  |  |  |  |  |  |  |  |  |  |  |  |
|  | MH-3.12 / MH-3.13 | **MH-3.12 / MH-3.13** |  | 2026-08-15 | 2026-10-14 |  |  |  |  |  |  |  |  |  |  |  |  |
| A53050 |  | Excavation | 4d | 2026-08-15 A | 2026-09-20 A | A75870, A1990 | 100% | 2026-11-14 | 2026-11-18 |  |  | ICKMO1-cost unite [3595.69 $]; Excavator [200 h]; Physical Units [30982 h] | 3,595.69 | 3,595.69 | ZNB | CON |  |
| A53060 |  | Pipe Laying | 8d | 2026-08-15 A | 2026-09-20 A | A53050 | 100% | 2026-11-18 | 2026-11-28 |  |  | ICKMO1-cost unite [4494.61 $]; boom truck [200 h]; labor [1200 h]; Sewage Network Circular pipes (GRP) [63.28]; Physical Units [38727.4 h] | 4,494.61 | 4,494.61 | ZNB | CON | LAY |
| A53070 |  | Install Manhole | 4d | 2026-08-15 A | 2026-09-20 A | A53050 | 100% | 2026-11-18 | 2026-11-23 |  |  | ICKMO1-cost unite [7191.38 $]; boom truck [200 h]; labor [1200 h]; Physical Units [61963.9 h] | 7,191.38 | 7,191.38 | ZNB | CON | MH |
| A53090 |  | Backfilling & Compaction | 4d | 2026-08-15 A | 2026-09-20 A | A53080, A53070 | 100% | 2026-11-30 | 2026-12-05 |  |  | ICKMO1-cost unite [1797.85 $]; Roller compactor [200 h]; Physical Units [15491 h] | 1,797.85 | 1,797.85 | ZNB | CON |  |
| A53080 |  | Testing & Inspection | 2d | 2026-10-12 | 2026-10-14 | A53060 |  |  |  | 17d | 0d | ICKMO1-cost unite [898.92 $]; labor [1200 h]; Physical Units [7745.47 h] | 898.92 |  | ZNB | CON |  |

| ID | WBS | Activity | Duration | Start | Finish | Predecessors | Complete | Planned start | Planned finish | Total float | Free float | Resources | Cost | Actual cost | ALKHARJ INDUSTERIAL AREA - PROJECT ZONES | ALKHARJ INDUSTERIAL AREA - DECEPLINS | ALKHARJ INDUSTERIAL AREA - Wet networks |
| --- | --- | --- | --- | --- | --- | --- | --- | --- | --- | --- | --- | --- | --- | --- | --- | --- | --- |
|  | MH-3.13 / MH-3.14 | **MH-3.13 / MH-3.14** |  | 2026-08-15 | 2026-10-14 |  |  |  |  |  |  |  |  |  |  |  |  |
| A53100 |  | Excavation | 4d | 2026-08-15 A | 2026-09-20 A | A53050, A1990 | 100% | 2026-11-18 | 2026-11-23 |  |  | ICKMO1-cost unite [3595.69 $]; Excavator [200 h]; Physical Units [30982 h] | 3,595.69 | 3,595.69 | ZNB | CON |  |
| A53110 |  | Pipe Laying | 8d | 2026-08-15 A | 2026-09-20 A | A53100 | 100% | 2026-11-23 | 2026-12-02 |  |  | ICKMO1-cost unite [4494.61 $]; boom truck [200 h]; labor [1200 h]; Sewage Network Circular pipes (GRP) [63.28]; Physical Units [38727.4 h] | 4,494.61 | 4,494.61 | ZNB | CON | LAY |
| A53120 |  | Install Manhole | 4d | 2026-08-15 A | 2026-09-20 A | A53100 | 100% | 2026-11-23 | 2026-11-28 |  |  | ICKMO1-cost unite [7191.38 $]; boom truck [200 h]; labor [1200 h]; Physical Units [61963.9 h] | 7,191.38 | 7,191.38 | ZNB | CON | MH |
| A53140 |  | Backfilling & Compaction | 4d | 2026-08-15 A | 2026-09-20 A | A53130, A53120, A53090 | 100% | 2026-12-05 | 2026-12-09 |  |  | ICKMO1-cost unite [1797.85 $]; Roller compactor [200 h]; Physical Units [15491 h] | 1,797.85 | 1,797.85 | ZNB | CON |  |
| A53130 |  | Testing & Inspection | 2d | 2026-10-12 | 2026-10-14 | A53110 |  |  |  | 17d | 0d | ICKMO1-cost unite [898.92 $]; labor [1200 h]; Physical Units [7745.47 h] | 898.92 |  | ZNB | CON |  |
|  | MH-3.13.0 / MH-3.13.1 | **MH-3.13.0 / MH-3.13.1** |  | 2026-08-15 | 2026-10-14 |  |  |  |  |  |  |  |  |  |  |  |  |
| A53150 |  | Excavation | 4d | 2026-08-15 A | 2026-09-20 A | A53100, A1990 | 100% | 2026-11-23 | 2026-11-28 |  |  | ICKMO1-cost unite [3595.69 $]; Excavator [200 h]; Physical Units [30982 h] | 3,595.69 | 3,595.69 | ZNB | CON |  |
| A53160 |  | Pipe Laying | 8d | 2026-08-15 A | 2026-09-20 A | A53150 | 100% | 2026-11-28 | 2026-12-07 |  |  | ICKMO1-cost unite [4494.61 $]; boom truck [200 h]; labor [1200 h]; Sewage Network Circular pipes (GRP) [63.28]; Physical Units [38727.4 h] | 4,494.61 | 4,494.61 | ZNB | CON | LAY |
| A53170 |  | Install Manhole | 4d | 2026-08-15 A | 2026-09-20 A | A53150 | 100% | 2026-11-28 | 2026-12-02 |  |  | ICKMO1-cost unite [7191.38 $]; boom truck [200 h]; labor [1200 h]; Physical Units [61963.9 h] | 7,191.38 | 7,191.38 | ZNB | CON | MH |
| A53190 |  | Backfilling & Compaction | 4d | 2026-08-15 A | 2026-09-20 A | A53180, A53170, A53140 | 100% | 2026-12-09 | 2026-12-14 |  |  | ICKMO1-cost unite [1797.85 $]; Roller compactor [200 h]; Physical Units [15491 h] | 1,797.85 | 1,797.85 | ZNB | CON |  |
| A53180 |  | Testing & Inspection | 2d | 2026-10-12 | 2026-10-14 | A53160 |  |  |  | 17d | 0d | ICKMO1-cost unite [898.92 $]; labor [1200 h]; Physical Units [7745.47 h] | 898.92 |  | ZNB | CON |  |
|  | MH-3.13.1 / MH-3.13.1.1 | **MH-3.13.1 / MH-3.13.1.1** |  | 2026-08-15 | 2026-10-14 |  |  |  |  |  |  |  |  |  |  |  |  |
| A53300 |  | Excavation | 4d | 2026-08-15 A | 2026-09-20 A | A53250, A1990 | 100% | 2026-12-07 | 2026-12-12 |  |  | ICKMO1-cost unite [3595.69 $]; Excavator [200 h]; Physical Units [30982 h] | 3,595.69 | 3,595.69 | ZNB | CON |  |
| A53310 |  | Pipe Laying | 8d | 2026-08-15 A | 2026-09-20 A | A53300 | 100% | 2026-12-12 | 2026-12-21 |  |  | ICKMO1-cost unite [4494.61 $]; boom truck [200 h]; labor [1200 h]; Sewage Network Circular pipes (GRP) [63.28]; Physical Units [38727.4 h] | 4,494.61 | 4,494.61 | ZNB | CON | LAY |
| A53320 |  | Install Manhole | 4d | 2026-08-15 A | 2026-09-20 A | A53300 | 100% | 2026-12-12 | 2026-12-16 |  |  | ICKMO1-cost unite [7191.38 $]; boom truck [200 h]; labor [1200 h]; Physical Units [61963.9 h] | 7,191.38 | 7,191.38 | ZNB | CON | MH |
| A53340 |  | Backfilling & Compaction | 4d | 2026-08-15 A | 2026-09-20 A | A53330, A53320, A53290 | 100% | 2026-12-23 | 2026-12-28 |  |  | ICKMO1-cost unite [1797.85 $]; Roller compactor [200 h]; Physical Units [15491 h] | 1,797.85 | 1,797.85 | ZNB | CON |  |
| A53330 |  | Testing & Inspection | 2d | 2026-10-12 | 2026-10-14 | A53310 |  |  |  | 17d | 0d | ICKMO1-cost unite [898.92 $]; labor [1200 h]; Physical Units [7745.47 h] | 898.92 |  | ZNB | CON |  |
|  | MH-3.13.1 / MH-3.13.1A | **MH-3.13.1 / MH-3.13.1A** |  | 2026-08-15 | 2026-10-14 |  |  |  |  |  |  |  |  |  |  |  |  |
| A53200 |  | Excavation | 4d | 2026-08-15 A | 2026-09-20 A | A53150, A1990 | 100% | 2026-11-28 | 2026-12-02 |  |  | ICKMO1-cost unite [3595.69 $]; Excavator [200 h]; Physical Units [30982 h] | 3,595.69 | 3,595.69 | ZNB | CON |  |
| A53210 |  | Pipe Laying | 8d | 2026-08-15 A | 2026-09-20 A | A53200 | 100% | 2026-12-02 | 2026-12-12 |  |  | ICKMO1-cost unite [4494.61 $]; boom truck [200 h]; labor [1200 h]; Sewage Network Circular pipes (GRP) [63.28]; Physical Units [38727.4 h] | 4,494.61 | 4,494.61 | ZNB | CON | LAY |
| A53220 |  | Install Manhole | 4d | 2026-08-15 A | 2026-09-20 A | A53200 | 100% | 2026-12-02 | 2026-12-07 |  |  | ICKMO1-cost unite [7191.38 $]; boom truck [200 h]; labor [1200 h]; Physical Units [61963.9 h] | 7,191.38 | 7,191.38 | ZNB | CON | MH |
| A53240 |  | Backfilling & Compaction | 4d | 2026-08-15 A | 2026-09-20 A | A53230, A53220, A53190 | 100% | 2026-12-14 | 2026-12-19 |  |  | ICKMO1-cost unite [1797.85 $]; Roller compactor [200 h]; Physical Units [15491 h] | 1,797.85 | 1,797.85 | ZNB | CON |  |
| A53230 |  | Testing & Inspection | 2d | 2026-10-12 | 2026-10-14 | A53210 |  |  |  | 17d | 0d | ICKMO1-cost unite [898.92 $]; labor [1200 h]; Physical Units [7745.47 h] | 898.92 |  | ZNB | CON |  |

| ID | WBS | Activity | Duration | Start | Finish | Predecessors | Complete | Planned start | Planned finish | Total float | Free float | Resources | Cost | Actual cost | ALKHARJ INDUSTERIAL AREA - PROJECT ZONES | ALKHARJ INDUSTERIAL AREA - DECEPLINS | ALKHARJ INDUSTERIAL AREA - Wet networks |
| --- | --- | --- | --- | --- | --- | --- | --- | --- | --- | --- | --- | --- | --- | --- | --- | --- | --- |
|  | MH-3.13.1 / MH-3.13.2 | **MH-3.13.1 / MH-3.13.2** |  | 2026-08-15 | 2026-10-14 |  |  |  |  |  |  |  |  |  |  |  |  |
| A53250 |  | Excavation | 4d | 2026-08-15 A | 2026-09-20 A | A53200, A1990 | 100% | 2026-12-02 | 2026-12-07 |  |  | ICKMO1-cost unite [3595.69 $]; Excavator [200 h]; Physical Units [30982 h] | 3,595.69 | 3,595.69 | ZNB | CON |  |
| A53260 |  | Pipe Laying | 8d | 2026-08-15 A | 2026-09-20 A | A53250 | 100% | 2026-12-07 | 2026-12-16 |  |  | ICKMO1-cost unite [4494.61 $]; boom truck [200 h]; labor [1200 h]; Sewage Network Circular pipes (GRP) [63.28]; Physical Units [38727.4 h] | 4,494.61 | 4,494.61 | ZNB | CON | LAY |
| A53270 |  | Install Manhole | 4d | 2026-08-15 A | 2026-09-20 A | A53250 | 100% | 2026-12-07 | 2026-12-12 |  |  | ICKMO1-cost unite [7191.38 $]; boom truck [200 h]; labor [1200 h]; Physical Units [61963.9 h] | 7,191.38 | 7,191.38 | ZNB | CON | MH |
| A53290 |  | Backfilling & Compaction | 4d | 2026-08-15 A | 2026-09-20 A | A53280, A53270, A53240 | 100% | 2026-12-19 | 2026-12-23 |  |  | ICKMO1-cost unite [1797.85 $]; Roller compactor [200 h]; Physical Units [15491 h] | 1,797.85 | 1,797.85 | ZNB | CON |  |
| A53280 |  | Testing & Inspection | 2d | 2026-10-12 | 2026-10-14 | A53260 |  |  |  | 17d | 0d | ICKMO1-cost unite [898.92 $]; labor [1200 h]; Physical Units [7745.47 h] | 898.92 |  | ZNB | CON |  |
|  | MH-3.13.1.0 / MH-3.13.1.1 | **MH-3.13.1.0 / MH-3.13.1.1** |  | 2026-08-15 | 2026-10-14 |  |  |  |  |  |  |  |  |  |  |  |  |
| A53350 |  | Excavation | 4d | 2026-08-15 A | 2026-09-20 A | A53300, A1990 | 100% | 2026-12-12 | 2026-12-16 |  |  | ICKMO1-cost unite [3595.69 $]; Excavator [200 h]; Physical Units [30982 h] | 3,595.69 | 3,595.69 | ZNB | CON |  |
| A53360 |  | Pipe Laying | 8d | 2026-08-15 A | 2026-09-20 A | A53350 | 100% | 2026-12-16 | 2026-12-26 |  |  | ICKMO1-cost unite [4494.61 $]; boom truck [200 h]; labor [1200 h]; Sewage Network Circular pipes (GRP) [63.28]; Physical Units [38727.4 h] | 4,494.61 | 4,494.61 | ZNB | CON | LAY |
| A53370 |  | Install Manhole | 4d | 2026-08-15 A | 2026-09-20 A | A53350 | 100% | 2026-12-16 | 2026-12-21 |  |  | ICKMO1-cost unite [7191.38 $]; boom truck [200 h]; labor [1200 h]; Physical Units [61963.9 h] | 7,191.38 | 7,191.38 | ZNB | CON | MH |
| A53390 |  | Backfilling & Compaction | 4d | 2026-08-15 A | 2026-09-20 A | A53380, A53370, A53340 | 100% | 2026-12-28 | 2027-01-02 |  |  | ICKMO1-cost unite [1797.85 $]; Roller compactor [200 h]; Physical Units [15491 h] | 1,797.85 | 1,797.85 | ZNB | CON |  |
| A53380 |  | Testing & Inspection | 2d | 2026-10-12 | 2026-10-14 | A53360 |  |  |  | 17d | 0d | ICKMO1-cost unite [898.92 $]; labor [1200 h]; Physical Units [7745.47 h] | 898.92 |  | ZNB | CON |  |
|  | MH-3.13.2 / MH-3.13.3 | **MH-3.13.2 / MH-3.13.3** |  | 2026-08-15 | 2026-10-14 |  |  |  |  |  |  |  |  |  |  |  |  |
| A53400 |  | Excavation | 4d | 2026-08-15 A | 2026-09-20 A | A53350, A1990 | 100% | 2026-12-16 | 2026-12-21 |  |  | ICKMO1-cost unite [3595.69 $]; Excavator [200 h]; Physical Units [30982 h] | 3,595.69 | 3,595.69 | ZNB | CON |  |
| A53410 |  | Pipe Laying | 8d | 2026-08-15 A | 2026-09-20 A | A53400 | 100% | 2026-12-21 | 2026-12-30 |  |  | ICKMO1-cost unite [4494.61 $]; boom truck [200 h]; labor [1200 h]; Sewage Network Circular pipes (GRP) [63.28]; Physical Units [38727.4 h] | 4,494.61 | 4,494.61 | ZNB | CON | LAY |
| A53420 |  | Install Manhole | 4d | 2026-08-15 A | 2026-09-20 A | A53400 | 100% | 2026-12-21 | 2026-12-26 |  |  | ICKMO1-cost unite [7191.38 $]; boom truck [200 h]; labor [1200 h]; Physical Units [61963.9 h] | 7,191.38 | 7,191.38 | ZNB | CON | MH |
| A53440 |  | Backfilling & Compaction | 4d | 2026-08-15 A | 2026-09-20 A | A53430, A53420, A53390 | 100% | 2027-01-02 | 2027-01-06 |  |  | ICKMO1-cost unite [1797.85 $]; Roller compactor [200 h]; Physical Units [15491 h] | 1,797.85 | 1,797.85 | ZNB | CON |  |
| A53430 |  | Testing & Inspection | 2d | 2026-10-12 | 2026-10-14 | A53410 |  |  |  | 17d | 0d | ICKMO1-cost unite [898.92 $]; labor [1200 h]; Physical Units [7745.47 h] | 898.92 |  | ZNB | CON |  |
|  | MH-3.13.2.0 / MH-3.13.2.1 | **MH-3.13.2.0 / MH-3.13.2.1** |  | 2026-08-15 | 2026-10-14 |  |  |  |  |  |  |  |  |  |  |  |  |
| A53450 |  | Excavation | 4d | 2026-08-15 A | 2026-09-20 A | A53400, A1990 | 100% | 2026-12-21 | 2026-12-26 |  |  | ICKMO1-cost unite [3595.69 $]; Excavator [200 h]; Physical Units [30982 h] | 3,595.69 | 3,595.69 | ZNB | CON |  |
| A53460 |  | Pipe Laying | 8d | 2026-08-15 A | 2026-09-20 A | A53450 | 100% | 2026-12-26 | 2027-01-04 |  |  | ICKMO1-cost unite [4494.61 $]; boom truck [200 h]; labor [1200 h]; Sewage Network Circular pipes (GRP) [63.28]; Physical Units [38727.4 h] | 4,494.61 | 4,494.61 | ZNB | CON | LAY |
| A53470 |  | Install Manhole | 4d | 2026-08-15 A | 2026-09-20 A | A53450 | 100% | 2026-12-26 | 2026-12-30 |  |  | ICKMO1-cost unite [7191.38 $]; boom truck [200 h]; labor [1200 h]; Physical Units [61963.9 h] | 7,191.38 | 7,191.38 | ZNB | CON | MH |
| A53490 |  | Backfilling & Compaction | 4d | 2026-08-15 A | 2026-09-20 A | A53480, A53470, A53440 | 100% | 2027-01-06 | 2027-01-11 |  |  | ICKMO1-cost unite [1797.85 $]; Roller compactor [200 h]; Physical Units [15491 h] | 1,797.85 | 1,797.85 | ZNB | CON |  |
| A53480 |  | Testing & Inspection | 2d | 2026-10-12 | 2026-10-14 | A53460 |  |  |  | 17d | 0d | ICKMO1-cost unite [898.92 $]; labor [1200 h]; Physical Units [7745.47 h] | 898.92 |  | ZNB | CON |  |

| ID | WBS | Activity | Duration | Start | Finish | Predecessors | Complete | Planned start | Planned finish | Total float | Free float | Resources | Cost | Actual cost | ALKHARJ INDUSTERIAL AREA - PROJECT ZONES | ALKHARJ INDUSTERIAL AREA - DECEPLINS | ALKHARJ INDUSTERIAL AREA - Wet networks |
| --- | --- | --- | --- | --- | --- | --- | --- | --- | --- | --- | --- | --- | --- | --- | --- | --- | --- |
|  | MH-3.13.3 / MH-3.13.4 | **MH-3.13.3 / MH-3.13.4** |  | 2026-08-15 | 2026-10-14 |  |  |  |  |  |  |  |  |  |  |  |  |
| A53500 |  | Excavation | 4d | 2026-08-15 A | 2026-09-20 A | A53450, A1990 | 100% | 2026-12-26 | 2026-12-30 |  |  | ICKMO1-cost unite [3595.69 $]; Excavator [200 h]; Physical Units [30982 h] | 3,595.69 | 3,595.69 | ZNB | CON |  |
| A53510 |  | Pipe Laying | 8d | 2026-08-15 A | 2026-09-20 A | A53500 | 100% | 2026-12-30 | 2027-01-09 |  |  | ICKMO1-cost unite [4494.61 $]; boom truck [200 h]; labor [1200 h]; Sewage Network Circular pipes (GRP) [63.28]; Physical Units [38727.4 h] | 4,494.61 | 4,494.61 | ZNB | CON | LAY |
| A53520 |  | Install Manhole | 4d | 2026-08-15 A | 2026-09-20 A | A53500 | 100% | 2026-12-30 | 2027-01-04 |  |  | ICKMO1-cost unite [7191.38 $]; boom truck [200 h]; labor [1200 h]; Physical Units [61963.9 h] | 7,191.38 | 7,191.38 | ZNB | CON | MH |
| A53540 |  | Backfilling & Compaction | 4d | 2026-08-15 A | 2026-09-20 A | A53530, A53520, A53490 | 100% | 2027-01-11 | 2027-01-16 |  |  | ICKMO1-cost unite [1797.85 $]; Roller compactor [200 h]; Physical Units [15491 h] | 1,797.85 | 1,797.85 | ZNB | CON |  |
| A53530 |  | Testing & Inspection | 2d | 2026-10-12 | 2026-10-14 | A53510 |  |  |  | 17d | 0d | ICKMO1-cost unite [898.92 $]; labor [1200 h]; Physical Units [7745.47 h] | 898.92 |  | ZNB | CON |  |
|  | MH-3.13.3.0 / MH-3.13.3.1 | **MH-3.13.3.0 / MH-3.13.3.1** |  | 2026-08-15 | 2026-10-14 |  |  |  |  |  |  |  |  |  |  |  |  |
| A53550 |  | Excavation | 4d | 2026-08-15 A | 2026-09-20 A | A53500, A1990 | 100% | 2026-12-30 | 2027-01-04 |  |  | ICKMO1-cost unite [3595.69 $]; Excavator [200 h]; Physical Units [30982 h] | 3,595.69 | 3,595.69 | ZNB | CON |  |
| A53560 |  | Pipe Laying | 8d | 2026-08-15 A | 2026-09-20 A | A53550 | 100% | 2027-01-04 | 2027-01-13 |  |  | ICKMO1-cost unite [4494.61 $]; boom truck [200 h]; labor [1200 h]; Sewage Network Circular pipes (GRP) [63.28]; Physical Units [38727.4 h] | 4,494.61 | 4,494.61 | ZNB | CON | LAY |
| A53570 |  | Install Manhole | 4d | 2026-08-15 A | 2026-09-20 A | A53550 | 100% | 2027-01-04 | 2027-01-09 |  |  | ICKMO1-cost unite [7191.38 $]; boom truck [200 h]; labor [1200 h]; Physical Units [61963.9 h] | 7,191.38 | 7,191.38 | ZNB | CON | MH |
| A53590 |  | Backfilling & Compaction | 4d | 2026-08-15 A | 2026-09-20 A | A53580, A53570, A53540 | 100% | 2027-01-16 | 2027-01-20 |  |  | ICKMO1-cost unite [1797.85 $]; Roller compactor [200 h]; Physical Units [15491 h] | 1,797.85 | 1,797.85 | ZNB | CON |  |
| A53580 |  | Testing & Inspection | 2d | 2026-10-12 | 2026-10-14 | A53560 |  |  |  | 17d | 0d | ICKMO1-cost unite [898.92 $]; labor [1200 h]; Physical Units [7745.47 h] | 898.92 |  | ZNB | CON |  |
|  | MH-3.13.4 / MH-3.13.5 | **MH-3.13.4 / MH-3.13.5** |  | 2026-08-15 | 2026-10-14 |  |  |  |  |  |  |  |  |  |  |  |  |
| A53600 |  | Excavation | 4d | 2026-08-15 A | 2026-09-20 A | A53550, A1990 | 100% | 2027-01-04 | 2027-01-09 |  |  | ICKMO1-cost unite [3595.69 $]; Excavator [200 h]; Physical Units [30982 h] | 3,595.69 | 3,595.69 | ZNB | CON |  |
| A53610 |  | Pipe Laying | 8d | 2026-08-15 A | 2026-09-20 A | A53600 | 100% | 2027-01-09 | 2027-01-18 |  |  | ICKMO1-cost unite [4494.61 $]; boom truck [200 h]; labor [1200 h]; Sewage Network Circular pipes (GRP) [63.28]; Physical Units [38727.4 h] | 4,494.61 | 4,494.61 | ZNB | CON | LAY |
| A53620 |  | Install Manhole | 4d | 2026-08-15 A | 2026-09-20 A | A53600 | 100% | 2027-01-09 | 2027-01-13 |  |  | ICKMO1-cost unite [7191.38 $]; boom truck [200 h]; labor [1200 h]; Physical Units [61963.9 h] | 7,191.38 | 7,191.38 | ZNB | CON | MH |
| A53640 |  | Backfilling & Compaction | 4d | 2026-08-15 A | 2026-09-20 A | A53630, A53620, A53590 | 100% | 2027-01-20 | 2027-01-25 |  |  | ICKMO1-cost unite [1797.85 $]; Roller compactor [200 h]; Physical Units [15491 h] | 1,797.85 | 1,797.85 | ZNB | CON |  |
| A53630 |  | Testing & Inspection | 2d | 2026-10-12 | 2026-10-14 | A53610 |  |  |  | 17d | 0d | ICKMO1-cost unite [898.92 $]; labor [1200 h]; Physical Units [7745.47 h] | 898.92 |  | ZNB | CON |  |
|  | MH-3.13.4.0 / MH-3.13.4.1 | **MH-3.13.4.0 / MH-3.13.4.1** |  | 2026-10-12 | 2026-11-02 |  |  |  |  |  |  |  |  |  |  |  |  |
| A53650 |  | Excavation | 4d | 2026-10-12 | 2026-10-17 | A53600, A1990 |  |  |  | 5d | 0d | ICKMO1-cost unite [3595.69 $]; Excavator [200 h]; Physical Units [30982 h] | 3,595.69 |  | ZNB | CON |  |
| A53660 |  | Pipe Laying | 8d | 2026-10-17 | 2026-10-26 | A53650 |  |  |  | 5d | 0d | ICKMO1-cost unite [4494.61 $]; boom truck [200 h]; labor [1200 h]; Sewage Network Circular pipes (GRP) [63.28]; Physical Units [38727.4 h] | 4,494.61 |  | ZNB | CON | LAY |
| A53670 |  | Install Manhole | 4d | 2026-10-17 | 2026-10-21 | A53650 |  |  |  | 11d | 6d | ICKMO1-cost unite [7191.38 $]; boom truck [200 h]; labor [1200 h]; Physical Units [61963.9 h] | 7,191.38 |  | ZNB | CON | MH |
| A53680 |  | Testing & Inspection | 2d | 2026-10-26 | 2026-10-28 | A53660 |  |  |  | 5d | 0d | ICKMO1-cost unite [898.92 $]; labor [1200 h]; Physical Units [7745.47 h] | 898.92 |  | ZNB | CON |  |
| A53690 |  | Backfilling & Compaction | 4d | 2026-10-28 | 2026-11-02 | A53680, A53670, A53640 |  |  |  | 5d | 0d | ICKMO1-cost unite [1797.85 $]; Roller compactor [200 h]; Physical Units [15491 h] | 1,797.85 |  | ZNB | CON |  |

| ID | WBS | Activity | Duration | Start | Finish | Predecessors | Complete | Planned start | Planned finish | Total float | Free float | Resources | Cost | Actual cost | ALKHARJ INDUSTERIAL AREA - PROJECT ZONES | ALKHARJ INDUSTERIAL AREA - DECEPLINS | ALKHARJ INDUSTERIAL AREA - Wet networks |
| --- | --- | --- | --- | --- | --- | --- | --- | --- | --- | --- | --- | --- | --- | --- | --- | --- | --- |
|  | MH-3.13.5 / MH-3.13.6 | **MH-3.13.5 / MH-3.13.6** |  | 2026-08-15 | 2026-10-19 |  |  |  |  |  |  |  |  |  |  |  |  |
| A53700 |  | Excavation | 4d | 2026-08-15 A | 2026-09-20 A | A53650, A1990 | 100% | 2027-01-13 | 2027-01-18 |  |  | ICKMO1-cost unite [3595.69 $]; Excavator [200 h]; Physical Units [30982 h] | 3,595.69 | 3,595.69 | ZNB | CON |  |
| A53710 |  | Pipe Laying | 8d | 2026-08-15 A | 2026-09-20 A | A53700 | 100% | 2027-01-18 | 2027-01-27 |  |  | ICKMO1-cost unite [4494.61 $]; boom truck [200 h]; labor [1200 h]; Sewage Network Circular pipes (GRP) [63.28]; Physical Units [38727.4 h] | 4,494.61 | 4,494.61 | ZNB | CON | LAY |
| A53720 |  | Install Manhole | 4d | 2026-08-15 A | 2026-09-20 A | A53700 | 100% | 2027-01-18 | 2027-01-23 |  |  | ICKMO1-cost unite [7191.38 $]; boom truck [200 h]; labor [1200 h]; Physical Units [61963.9 h] | 7,191.38 | 7,191.38 | ZNB | CON | MH |
| A53740 |  | Backfilling & Compaction | 4d | 2026-08-15 A | 2026-09-20 A | A53730, A53720, A53690 | 100% | 2027-01-30 | 2027-02-03 |  |  | ICKMO1-cost unite [1797.85 $]; Roller compactor [200 h]; Physical Units [15491 h] | 1,797.85 | 1,797.85 | ZNB | CON |  |
| A53730 |  | Testing & Inspection | 2d | 2026-10-17 | 2026-10-19 | A53710 |  |  |  | 17d | 12d | ICKMO1-cost unite [898.92 $]; labor [1200 h]; Physical Units [7745.47 h] | 898.92 |  | ZNB | CON |  |
|  | MH-3.13.5.0 / MH-3.13.5.1 | **MH-3.13.5.0 / MH-3.13.5.1** |  | 2026-10-17 | 2026-11-26 |  |  |  |  |  |  |  |  |  |  |  |  |
| A53750 |  | Excavation | 4d | 2026-10-17 | 2026-10-21 | A53700, A1990 |  |  |  | 5d | 0d | ICKMO1-cost unite [3595.69 $]; Excavator [200 h]; Physical Units [30982 h] | 3,595.69 |  | ZNB | CON |  |
| A53760 |  | Pipe Laying | 4d | 2026-10-21 | 2026-10-26 | A53750 |  |  |  | 9d | 0d | ICKMO1-cost unite [4494.61 $]; boom truck [200 h]; labor [1200 h]; Sewage Network Circular pipes (GRP) [63.28]; Physical Units [38727.4 h] | 4,494.61 |  | ZNB | CON | LAY |
| A53770 |  | Install Manhole | 4d | 2026-10-21 | 2026-10-26 | A53750 |  |  |  | 11d | 23.9d | ICKMO1-cost unite [7191.38 $]; boom truck [200 h]; labor [1200 h]; Physical Units [61963.9 h] | 7,191.38 |  | ZNB | CON | MH |
| A53780 |  | Testing & Inspection | 2d | 2026-10-26 | 2026-10-28 | A53760 |  |  |  | 9d | 21.9d | ICKMO1-cost unite [898.92 $]; labor [1200 h]; Physical Units [7745.47 h] | 898.92 |  | ZNB | CON |  |
| A53790 |  | Backfilling & Compaction | 4d | 2026-11-23 | 2026-11-26 | A53780, A53770, A53740, A50090 |  |  |  | -12.9d | 0d | ICKMO1-cost unite [1797.85 $]; Roller compactor [200 h]; Physical Units [15491 h] | 1,797.85 |  | ZNB | CON |  |
|  | MH-3.13.6 / MH-3.13.7 | **MH-3.13.6 / MH-3.13.7** |  | 2026-08-15 | 2026-10-24 |  |  |  |  |  |  |  |  |  |  |  |  |
| A53800 |  | Excavation | 4d | 2026-08-15 A | 2026-09-20 A | A53750, A1990 | 100% | 2027-01-23 | 2027-01-27 |  |  | ICKMO1-cost unite [3595.69 $]; Excavator [200 h]; Physical Units [30982 h] | 3,595.69 | 3,595.69 | ZNB | CON |  |
| A53810 |  | Pipe Laying | 8d | 2026-08-15 A | 2026-09-20 A | A53800 | 100% | 2027-01-27 | 2027-02-06 |  |  | ICKMO1-cost unite [4494.61 $]; boom truck [200 h]; labor [1200 h]; Sewage Network Circular pipes (GRP) [63.28]; Physical Units [38727.4 h] | 4,494.61 | 4,494.61 | ZNB | CON | LAY |
| A53820 |  | Install Manhole | 4d | 2026-08-15 A | 2026-09-20 A | A53800 | 100% | 2027-01-27 | 2027-02-01 |  |  | ICKMO1-cost unite [7191.38 $]; boom truck [200 h]; labor [1200 h]; Physical Units [61963.9 h] | 7,191.38 | 7,191.38 | ZNB | CON | MH |
| A53840 |  | Backfilling & Compaction | 4d | 2026-08-15 A | 2026-09-20 A | A53830, A53820, A53790 | 100% | 2027-02-08 | 2027-02-13 |  |  | ICKMO1-cost unite [1797.85 $]; Roller compactor [200 h]; Physical Units [15491 h] | 1,797.85 | 1,797.85 | ZNB | CON |  |
| A53830 |  | Testing & Inspection | 2d | 2026-10-21 | 2026-10-24 | A53810 |  |  |  | 17d | 29.9d | ICKMO1-cost unite [898.92 $]; labor [1200 h]; Physical Units [7745.47 h] | 898.92 |  | ZNB | CON |  |
|  | MH-3.13.6.0 / MH-3.13.6.1 | **MH-3.13.6.0 / MH-3.13.6.1** |  | 2026-08-15 | 2026-10-24 |  |  |  |  |  |  |  |  |  |  |  |  |
| A53850 |  | Excavation | 4d | 2026-08-15 A | 2026-09-20 A | A53800, A1990 | 100% | 2027-01-27 | 2027-02-01 |  |  | ICKMO1-cost unite [3595.69 $]; Excavator [200 h]; Physical Units [30982 h] | 3,595.69 | 3,595.69 | ZNB | CON |  |
| A53860 |  | Pipe Laying | 8d | 2026-08-15 A | 2026-09-20 A | A53850 | 100% | 2027-02-01 | 2027-02-10 |  |  | ICKMO1-cost unite [4494.61 $]; boom truck [200 h]; labor [1200 h]; Sewage Network Circular pipes (GRP) [63.28]; Physical Units [38727.4 h] | 4,494.61 | 4,494.61 | ZNB | CON | LAY |
| A53870 |  | Install Manhole | 4d | 2026-08-15 A | 2026-09-20 A | A53850 | 100% | 2027-02-01 | 2027-02-06 |  |  | ICKMO1-cost unite [7191.38 $]; boom truck [200 h]; labor [1200 h]; Physical Units [61963.9 h] | 7,191.38 | 7,191.38 | ZNB | CON | MH |
| A53890 |  | Backfilling & Compaction | 4d | 2026-08-15 A | 2026-09-20 A | A53880, A53870, A53840 | 100% | 2027-02-13 | 2027-02-17 |  |  | ICKMO1-cost unite [1797.85 $]; Roller compactor [200 h]; Physical Units [15491 h] | 1,797.85 | 1,797.85 | ZNB | CON |  |
| A53880 |  | Testing & Inspection | 2d | 2026-10-21 | 2026-10-24 | A53860 |  |  |  | 17d | 29.9d | ICKMO1-cost unite [898.92 $]; labor [1200 h]; Physical Units [7745.47 h] | 898.92 |  | ZNB | CON |  |

| ID | WBS | Activity | Duration | Start | Finish | Predecessors | Complete | Planned start | Planned finish | Total float | Free float | Resources | Cost | Actual cost | ALKHARJ INDUSTERIAL AREA - PROJECT ZONES | ALKHARJ INDUSTERIAL AREA - DECEPLINS | ALKHARJ INDUSTERIAL AREA - Wet networks |
| --- | --- | --- | --- | --- | --- | --- | --- | --- | --- | --- | --- | --- | --- | --- | --- | --- | --- |
|  | MH-3.14 / MH-3.15 | **MH-3.14 / MH-3.15** |  | 2026-08-15 | 2026-10-24 |  |  |  |  |  |  |  |  |  |  |  |  |
| A53900 |  | Excavation | 4d | 2026-08-15 A | 2026-09-20 A | A53850, A1990 | 100% | 2027-02-01 | 2027-02-06 |  |  | ICKMO1-cost unite [3595.69 $]; Excavator [200 h]; Physical Units [30982 h] | 3,595.69 | 3,595.69 | ZNB | CON |  |
| A53910 |  | Pipe Laying | 8d | 2026-08-15 A | 2026-09-20 A | A53900 | 100% | 2027-02-06 | 2027-02-15 |  |  | ICKMO1-cost unite [4494.61 $]; boom truck [200 h]; labor [1200 h]; Sewage Network Circular pipes (GRP) [63.28]; Physical Units [38727.4 h] | 4,494.61 | 4,494.61 | ZNB | CON | LAY |
| A53920 |  | Install Manhole | 4d | 2026-08-15 A | 2026-09-20 A | A53900 | 100% | 2027-02-06 | 2027-02-10 |  |  | ICKMO1-cost unite [7191.38 $]; boom truck [200 h]; labor [1200 h]; Physical Units [61963.9 h] | 7,191.38 | 7,191.38 | ZNB | CON | MH |
| A53940 |  | Backfilling & Compaction | 4d | 2026-08-15 A | 2026-09-20 A | A53930, A53920, A53890, A50590 | 100% | 2027-02-17 | 2027-02-22 |  |  | ICKMO1-cost unite [1797.85 $]; Roller compactor [200 h]; Physical Units [15491 h] | 1,797.85 | 1,797.85 | ZNB | CON |  |
| A53930 |  | Testing & Inspection | 2d | 2026-10-21 | 2026-10-24 | A53910 |  |  |  | 17d | 29.9d | ICKMO1-cost unite [898.92 $]; labor [1200 h]; Physical Units [7745.47 h] | 898.92 |  | ZNB | CON |  |
|  | MH-3.14.0 / MH-3.14.1 | **MH-3.14.0 / MH-3.14.1** |  | 2026-08-15 | 2026-10-24 |  |  |  |  |  |  |  |  |  |  |  |  |
| A53950 |  | Excavation | 4d | 2026-08-15 A | 2026-09-20 A | A53900, A1990 | 100% | 2027-02-06 | 2027-02-10 |  |  | ICKMO1-cost unite [3595.69 $]; Excavator [200 h]; Physical Units [30982 h] | 3,595.69 | 3,595.69 | ZNB | CON |  |
| A53960 |  | Pipe Laying | 8d | 2026-08-15 A | 2026-09-20 A | A53950 | 100% | 2027-02-10 | 2027-02-20 |  |  | ICKMO1-cost unite [4494.61 $]; boom truck [200 h]; labor [1200 h]; Sewage Network Circular pipes (GRP) [63.28]; Physical Units [38727.4 h] | 4,494.61 | 4,494.61 | ZNB | CON | LAY |
| A53970 |  | Install Manhole | 4d | 2026-08-15 A | 2026-09-20 A | A53950 | 100% | 2027-02-10 | 2027-02-15 |  |  | ICKMO1-cost unite [7191.38 $]; boom truck [200 h]; labor [1200 h]; Physical Units [61963.9 h] | 7,191.38 | 7,191.38 | ZNB | CON | MH |
| A53990 |  | Backfilling & Compaction | 4d | 2026-08-15 A | 2026-09-20 A | A53980, A53970, A53940 | 100% | 2027-02-22 | 2027-02-27 |  |  | ICKMO1-cost unite [1797.85 $]; Roller compactor [200 h]; Physical Units [15491 h] | 1,797.85 | 1,797.85 | ZNB | CON |  |
| A53980 |  | Testing & Inspection | 2d | 2026-10-21 | 2026-10-24 | A53960 |  |  |  | 17d | 29.9d | ICKMO1-cost unite [898.92 $]; labor [1200 h]; Physical Units [7745.47 h] | 898.92 |  | ZNB | CON |  |
|  | MH-3.15 / MH-3.16 | **MH-3.15 / MH-3.16** |  | 2026-08-15 | 2026-10-24 |  |  |  |  |  |  |  |  |  |  |  |  |
| A54000 |  | Excavation | 4d | 2026-08-15 A | 2026-09-20 A | A53950, A1990 | 100% | 2027-02-10 | 2027-02-15 |  |  | ICKMO1-cost unite [3595.69 $]; Excavator [200 h]; Physical Units [30982 h] | 3,595.69 | 3,595.69 | ZNB | CON |  |
| A54010 |  | Pipe Laying | 8d | 2026-08-15 A | 2026-09-20 A | A54000 | 100% | 2027-02-15 | 2027-02-24 |  |  | ICKMO1-cost unite [4494.61 $]; boom truck [200 h]; labor [1200 h]; Sewage Network Circular pipes (GRP) [63.28]; Physical Units [38727.4 h] | 4,494.61 | 4,494.61 | ZNB | CON | LAY |
| A54020 |  | Install Manhole | 4d | 2026-08-15 A | 2026-09-20 A | A54000 | 100% | 2027-02-15 | 2027-02-20 |  |  | ICKMO1-cost unite [7191.38 $]; boom truck [200 h]; labor [1200 h]; Physical Units [61963.9 h] | 7,191.38 | 7,191.38 | ZNB | CON | MH |
| A54040 |  | Backfilling & Compaction | 4d | 2026-08-15 A | 2026-09-20 A | A54030, A54020, A53990 | 100% | 2027-02-27 | 2027-03-03 |  |  | ICKMO1-cost unite [1797.85 $]; Roller compactor [200 h]; Physical Units [15491 h] | 1,797.85 | 1,797.85 | ZNB | CON |  |
| A54030 |  | Testing & Inspection | 2d | 2026-10-21 | 2026-10-24 | A54010 |  |  |  | 17d | 29.9d | ICKMO1-cost unite [898.92 $]; labor [1200 h]; Physical Units [7745.47 h] | 898.92 |  | ZNB | CON |  |
|  | MH-3.15.0 / MH-3.15.1 | **MH-3.15.0 / MH-3.15.1** |  | 2026-08-15 | 2026-10-24 |  |  |  |  |  |  |  |  |  |  |  |  |
| A54050 |  | Excavation | 4d | 2026-08-15 A | 2026-09-20 A | A54000, A1990 | 100% | 2027-02-15 | 2027-02-20 |  |  | ICKMO1-cost unite [3595.69 $]; Excavator [200 h]; Physical Units [30982 h] | 3,595.69 | 3,595.69 | ZNB | CON |  |
| A54060 |  | Pipe Laying | 8d | 2026-08-15 A | 2026-09-20 A | A54050 | 100% | 2027-02-20 | 2027-03-01 |  |  | ICKMO1-cost unite [4494.61 $]; boom truck [200 h]; labor [1200 h]; Sewage Network Circular pipes (GRP) [63.28]; Physical Units [38727.4 h] | 4,494.61 | 4,494.61 | ZNB | CON | LAY |
| A54070 |  | Install Manhole | 4d | 2026-08-15 A | 2026-09-20 A | A54050 | 100% | 2027-02-20 | 2027-02-24 |  |  | ICKMO1-cost unite [7191.38 $]; boom truck [200 h]; labor [1200 h]; Physical Units [61963.9 h] | 7,191.38 | 7,191.38 | ZNB | CON | MH |
| A54090 |  | Backfilling & Compaction | 4d | 2026-08-15 A | 2026-09-20 A | A54080, A54070, A54040 | 100% | 2027-03-03 | 2027-03-08 |  |  | ICKMO1-cost unite [1797.85 $]; Roller compactor [200 h]; Physical Units [15491 h] | 1,797.85 | 1,797.85 | ZNB | CON |  |
| A54080 |  | Testing & Inspection | 2d | 2026-10-21 | 2026-10-24 | A54060 |  |  |  | 17d | 29.9d | ICKMO1-cost unite [898.92 $]; labor [1200 h]; Physical Units [7745.47 h] | 898.92 |  | ZNB | CON |  |

| ID | WBS | Activity | Duration | Start | Finish | Predecessors | Total float | Free float | Resources | Cost | ALKHARJ INDUSTERIAL AREA - PROJECT ZONES | ALKHARJ INDUSTERIAL AREA - DECEPLINS | ALKHARJ INDUSTERIAL AREA - Wet networks |
| --- | --- | --- | --- | --- | --- | --- | --- | --- | --- | --- | --- | --- | --- |
|  | MH-3.16.0 / MH-3.16.1 | **MH-3.16.0 / MH-3.16.1** |  | 2026-10-21 | 2026-12-01 |  |  |  |  |  |  |  |  |
| A54100 |  | Excavation | 4d | 2026-10-21 | 2026-10-26 | A54050, A1990 | 5d | 0d | ICKMO1-cost unite [3595.69 $]; Excavator [200 h]; Physical Units [30982 h] | 3,595.69 | ZNB | CON |  |
| A54110 |  | Pipe Laying | 8d | 2026-10-26 | 2026-11-04 | A54100 | 5d | 0d | ICKMO1-cost unite [4494.61 $]; boom truck [200 h]; labor [1200 h]; Sewage Network Circular pipes (GRP) [63.28]; Physical Units [38727.4 h] | 4,494.61 | ZNB | CON | LAY |
| A54120 |  | Install Manhole | 4d | 2026-10-26 | 2026-10-31 | A54100 | 11d | 23.9d | ICKMO1-cost unite [7191.38 $]; boom truck [200 h]; labor [1200 h]; Physical Units [61963.9 h] | 7,191.38 | ZNB | CON | MH |
| A54130 |  | Testing & Inspection | 2d | 2026-11-04 | 2026-11-07 | A54110 | 5d | 17.9d | ICKMO1-cost unite [898.92 $]; labor [1200 h]; Physical Units [7745.47 h] | 898.92 | ZNB | CON |  |
| A54140 |  | Backfilling & Compaction | 4d | 2026-11-28 | 2026-12-01 | A54130, A54120, A54090 | -12.9d | 0d | ICKMO1-cost unite [1797.85 $]; Roller compactor [200 h]; Physical Units [15491 h] | 1,797.85 | ZNB | CON |  |
|  | MH-3.16.0 / MH-3.16.1A | **MH-3.16.0 / MH-3.16.1A** |  | 2026-10-26 | 2026-12-06 |  |  |  |  |  |  |  |  |
| A54150 |  | Excavation | 4d | 2026-10-26 | 2026-10-31 | A54100, A1990 | 5d | 0d | ICKMO1-cost unite [3595.69 $]; Excavator [200 h]; Physical Units [30982 h] | 3,595.69 | ZNB | CON |  |
| A54160 |  | Pipe Laying | 8d | 2026-10-31 | 2026-11-09 | A54150 | 5d | 0d | ICKMO1-cost unite [4494.61 $]; boom truck [200 h]; labor [1200 h]; Sewage Network Circular pipes (GRP) [63.28]; Physical Units [38727.4 h] | 4,494.61 | ZNB | CON | LAY |
| A54170 |  | Install Manhole | 4d | 2026-10-31 | 2026-11-04 | A54150 | 11d | 23.9d | ICKMO1-cost unite [7191.38 $]; boom truck [200 h]; labor [1200 h]; Physical Units [61963.9 h] | 7,191.38 | ZNB | CON | MH |
| A54180 |  | Testing & Inspection | 2d | 2026-11-09 | 2026-11-11 | A54160 | 5d | 17.9d | ICKMO1-cost unite [898.92 $]; labor [1200 h]; Physical Units [7745.47 h] | 898.92 | ZNB | CON |  |
| A54190 |  | Backfilling & Compaction | 4d | 2026-12-02 | 2026-12-06 | A54180, A54170, A54140 | -12.9d | 0d | ICKMO1-cost unite [1797.85 $]; Roller compactor [200 h]; Physical Units [15491 h] | 1,797.85 | ZNB | CON |  |
|  | MH-3.16.1 / MH-3.16.2 | **MH-3.16.1 / MH-3.16.2** |  | 2026-10-31 | 2026-12-10 |  |  |  |  |  |  |  |  |
| A54200 |  | Excavation | 4d | 2026-10-31 | 2026-11-04 | A54150, A1990 | 5d | 0d | ICKMO1-cost unite [3595.69 $]; Excavator [200 h]; Physical Units [30982 h] | 3,595.69 | ZNB | CON |  |
| A54210 |  | Pipe Laying | 8d | 2026-11-04 | 2026-11-14 | A54200 | 5d | 0d | ICKMO1-cost unite [4494.61 $]; boom truck [200 h]; labor [1200 h]; Sewage Network Circular pipes (GRP) [63.28]; Physical Units [38727.4 h] | 4,494.61 | ZNB | CON | LAY |
| A54220 |  | Install Manhole | 4d | 2026-11-04 | 2026-11-09 | A54200 | 11d | 23.9d | ICKMO1-cost unite [7191.38 $]; boom truck [200 h]; labor [1200 h]; Physical Units [61963.9 h] | 7,191.38 | ZNB | CON | MH |
| A54230 |  | Testing & Inspection | 2d | 2026-11-14 | 2026-11-16 | A54210 | 5d | 17.9d | ICKMO1-cost unite [898.92 $]; labor [1200 h]; Physical Units [7745.47 h] | 898.92 | ZNB | CON |  |
| A54240 |  | Backfilling & Compaction | 4d | 2026-12-07 | 2026-12-10 | A54230, A54220, A54190 | -12.9d | 0d | ICKMO1-cost unite [1797.85 $]; Roller compactor [200 h]; Physical Units [15491 h] | 1,797.85 | ZNB | CON |  |
|  | MH-3.16.1.0 / MH-3.16.1.1 | **MH-3.16.1.0 / MH-3.16.1.1** |  | 2026-11-04 | 2026-12-15 |  |  |  |  |  |  |  |  |
| A54250 |  | Excavation | 4d | 2026-11-04 | 2026-11-09 | A54200, A1990 | 5d | 0d | ICKMO1-cost unite [3595.69 $]; Excavator [200 h]; Physical Units [30982 h] | 3,595.69 | ZNB | CON |  |
| A54260 |  | Pipe Laying | 8d | 2026-11-09 | 2026-11-18 | A54250 | 5d | 0d | ICKMO1-cost unite [4494.61 $]; boom truck [200 h]; labor [1200 h]; Sewage Network Circular pipes (GRP) [63.28]; Physical Units [38727.4 h] | 4,494.61 | ZNB | CON | LAY |
| A54270 |  | Install Manhole | 4d | 2026-11-09 | 2026-11-14 | A54250 | 11d | 23.9d | ICKMO1-cost unite [7191.38 $]; boom truck [200 h]; labor [1200 h]; Physical Units [61963.9 h] | 7,191.38 | ZNB | CON | MH |
| A54280 |  | Testing & Inspection | 2d | 2026-11-18 | 2026-11-21 | A54260 | 5d | 17.9d | ICKMO1-cost unite [898.92 $]; labor [1200 h]; Physical Units [7745.47 h] | 898.92 | ZNB | CON |  |
| A54290 |  | Backfilling & Compaction | 4d | 2026-12-12 | 2026-12-15 | A54280, A54270, A54240, A50940 | -12.9d | 0d | ICKMO1-cost unite [1797.85 $]; Roller compactor [200 h]; Physical Units [15491 h] | 1,797.85 | ZNB | CON |  |

| ID | WBS | Activity | Duration | Start | Finish | Predecessors | Complete | Planned start | Planned finish | Total float | Free float | Resources | Cost | Actual cost | ALKHARJ INDUSTERIAL AREA - PROJECT ZONES | ALKHARJ INDUSTERIAL AREA - DECEPLINS | ALKHARJ INDUSTERIAL AREA - Wet networks |
| --- | --- | --- | --- | --- | --- | --- | --- | --- | --- | --- | --- | --- | --- | --- | --- | --- | --- |
|  | MH-3.16.10 / MH-3.16.11 | **MH-3.16.10 / MH-3.16.11** |  | 2026-11-09 | 2026-12-20 |  |  |  |  |  |  |  |  |  |  |  |  |
| A54300 |  | Excavation | 4d | 2026-11-09 | 2026-11-14 | A54250, A1990 |  |  |  | 5d | 0d | ICKMO1-cost unite [3595.69 $]; Excavator [200 h]; Physical Units [30982 h] | 3,595.69 |  | ZNB | CON |  |
| A54310 |  | Pipe Laying | 8d | 2026-11-14 | 2026-11-23 | A54300 |  |  |  | 5d | 0d | ICKMO1-cost unite [4494.61 $]; boom truck [200 h]; labor [1200 h]; Sewage Network Circular pipes (GRP) [63.28]; Physical Units [38727.4 h] | 4,494.61 |  | ZNB | CON | LAY |
| A54320 |  | Install Manhole | 4d | 2026-11-14 | 2026-11-18 | A54300 |  |  |  | 11d | 23.9d | ICKMO1-cost unite [7191.38 $]; boom truck [200 h]; labor [1200 h]; Physical Units [61963.9 h] | 7,191.38 |  | ZNB | CON | MH |
| A54330 |  | Testing & Inspection | 2d | 2026-11-23 | 2026-11-25 | A54310 |  |  |  | 5d | 17.9d | ICKMO1-cost unite [898.92 $]; labor [1200 h]; Physical Units [7745.47 h] | 898.92 |  | ZNB | CON |  |
| A54340 |  | Backfilling & Compaction | 4d | 2026-12-16 | 2026-12-20 | A54330, A54320, A54290 |  |  |  | -12.9d | 0d | ICKMO1-cost unite [1797.85 $]; Roller compactor [200 h]; Physical Units [15491 h] | 1,797.85 |  | ZNB | CON |  |
|  | MH-3.16.2 / MH-3.16.3 | **MH-3.16.2 / MH-3.16.3** |  | 2026-11-14 | 2026-12-24 |  |  |  |  |  |  |  |  |  |  |  |  |
| A54350 |  | Excavation | 4d | 2026-11-14 | 2026-11-18 | A54300, A1990 |  |  |  | 5d | 0d | ICKMO1-cost unite [3595.69 $]; Excavator [200 h]; Physical Units [30982 h] | 3,595.69 |  | ZNB | CON |  |
| A54360 |  | Pipe Laying | 8d | 2026-11-18 | 2026-11-28 | A54350 |  |  |  | 5d | 0d | ICKMO1-cost unite [4494.61 $]; boom truck [200 h]; labor [1200 h]; Sewage Network Circular pipes (GRP) [63.28]; Physical Units [38727.4 h] | 4,494.61 |  | ZNB | CON | LAY |
| A54370 |  | Install Manhole | 4d | 2026-11-18 | 2026-11-23 | A54350 |  |  |  | 11d | 23.9d | ICKMO1-cost unite [7191.38 $]; boom truck [200 h]; labor [1200 h]; Physical Units [61963.9 h] | 7,191.38 |  | ZNB | CON | MH |
| A54380 |  | Testing & Inspection | 2d | 2026-11-28 | 2026-11-30 | A54360 |  |  |  | 5d | 17.9d | ICKMO1-cost unite [898.92 $]; labor [1200 h]; Physical Units [7745.47 h] | 898.92 |  | ZNB | CON |  |
| A54390 |  | Backfilling & Compaction | 4d | 2026-12-21 | 2026-12-24 | A54380, A54370, A54340 |  |  |  | -12.9d | 0d | ICKMO1-cost unite [1797.85 $]; Roller compactor [200 h]; Physical Units [15491 h] | 1,797.85 |  | ZNB | CON |  |
|  | MH-3.16.2.0 / MH-3.16.2.1 | **MH-3.16.2.0 / MH-3.16.2.1** |  | 2026-11-18 | 2026-12-29 |  |  |  |  |  |  |  |  |  |  |  |  |
| A54400 |  | Excavation | 4d | 2026-11-18 | 2026-11-23 | A54350, A1990 |  |  |  | 5d | 0d | ICKMO1-cost unite [3595.69 $]; Excavator [200 h]; Physical Units [30982 h] | 3,595.69 |  | ZNB | CON |  |
| A54410 |  | Pipe Laying | 8d | 2026-11-23 | 2026-12-02 | A54400 |  |  |  | 5d | 0d | ICKMO1-cost unite [4494.61 $]; boom truck [200 h]; labor [1200 h]; Sewage Network Circular pipes (GRP) [63.28]; Physical Units [38727.4 h] | 4,494.61 |  | ZNB | CON | LAY |
| A54420 |  | Install Manhole | 4d | 2026-11-23 | 2026-11-28 | A54400 |  |  |  | 11d | 23.9d | ICKMO1-cost unite [7191.38 $]; boom truck [200 h]; labor [1200 h]; Physical Units [61963.9 h] | 7,191.38 |  | ZNB | CON | MH |
| A54430 |  | Testing & Inspection | 2d | 2026-12-02 | 2026-12-05 | A54410 |  |  |  | 5d | 17.9d | ICKMO1-cost unite [898.92 $]; labor [1200 h]; Physical Units [7745.47 h] | 898.92 |  | ZNB | CON |  |
| A54440 |  | Backfilling & Compaction | 4d | 2026-12-26 | 2026-12-29 | A54430, A54420, A54390 |  |  |  | -12.9d | 0d | ICKMO1-cost unite [1797.85 $]; Roller compactor [200 h]; Physical Units [15491 h] | 1,797.85 |  | ZNB | CON |  |
|  | MH-3.16.3 / MH-3.16.4 | **MH-3.16.3 / MH-3.16.4** |  | 2026-08-15 | 2026-09-20 |  |  |  |  |  |  |  |  |  |  |  |  |
| A54450 |  | Excavation | 4d | 2026-08-15 A | 2026-09-20 A | A54400, A1990 | 100% | 2027-03-24 | 2027-03-29 |  |  | ICKMO1-cost unite [3595.69 $]; Excavator [200 h]; Physical Units [30982 h] | 3,595.69 | 3,595.69 | ZNB | CON |  |
| A54460 |  | Pipe Laying | 8d | 2026-08-15 A | 2026-09-20 A | A54450 | 100% | 2027-03-29 | 2027-04-07 |  |  | ICKMO1-cost unite [4494.61 $]; boom truck [200 h]; labor [1200 h]; Sewage Network Circular pipes (GRP) [63.28]; Physical Units [38727.4 h] | 4,494.61 | 4,494.61 | ZNB | CON | LAY |
| A54470 |  | Install Manhole | 4d | 2026-08-15 A | 2026-09-20 A | A54450 | 100% | 2027-03-29 | 2027-04-03 |  |  | ICKMO1-cost unite [7191.38 $]; boom truck [200 h]; labor [1200 h]; Physical Units [61963.9 h] | 7,191.38 | 7,191.38 | ZNB | CON | MH |
| A54480 |  | Testing & Inspection | 2d | 2026-08-15 A | 2026-09-20 A | A54460 | 100% | 2026-11-10 | 2026-11-12 |  |  | ICKMO1-cost unite [898.92 $]; labor [1200 h]; Physical Units [7745.47 h] | 898.92 | 898.92 | ZNB | CON |  |
| A54490 |  | Backfilling & Compaction | 4d | 2026-08-15 A | 2026-09-20 A | A54480, A54470, A54440 | 100% | 2027-04-10 | 2027-04-14 |  |  | ICKMO1-cost unite [1797.85 $]; Roller compactor [200 h]; Physical Units [15491 h] | 1,797.85 | 1,797.85 | ZNB | CON |  |

| ID | WBS | Activity | Duration | Start | Finish | Predecessors | Complete | Planned start | Planned finish | Resources | Cost | Actual cost | ALKHARJ INDUSTERIAL AREA - PROJECT ZONES | ALKHARJ INDUSTERIAL AREA - DECEPLINS | ALKHARJ INDUSTERIAL AREA - Wet networks |
| --- | --- | --- | --- | --- | --- | --- | --- | --- | --- | --- | --- | --- | --- | --- | --- |
|  | MH-3.16.3.0 / MH-3.16.3.1 | **MH-3.16.3.0 / MH-3.16.3.1** |  | 2026-08-15 | 2026-09-20 |  |  |  |  |  |  |  |  |  |  |
| A54500 |  | Excavation | 4d | 2026-08-15 A | 2026-09-20 A | A54450, A1990 | 100% | 2026-11-10 | 2026-11-15 | ICKMO1-cost unite [3595.69 $]; Excavator [200 h]; Physical Units [30982 h] | 3,595.69 | 3,595.69 | ZNB | CON |  |
| A54510 |  | Pipe Laying | 8d | 2026-08-15 A | 2026-09-20 A | A54500 | 100% | 2026-11-15 | 2026-11-24 | ICKMO1-cost unite [4494.61 $]; boom truck [200 h]; labor [1200 h]; Sewage Network Circular pipes (GRP) [63.28]; Physical Units [38727.4 h] | 4,494.61 | 4,494.61 | ZNB | CON | LAY |
| A54520 |  | Install Manhole | 4d | 2026-08-15 A | 2026-09-20 A | A54500 | 100% | 2026-11-15 | 2026-11-19 | ICKMO1-cost unite [7191.38 $]; boom truck [200 h]; labor [1200 h]; Physical Units [61963.9 h] | 7,191.38 | 7,191.38 | ZNB | CON | MH |
| A54530 |  | Testing & Inspection | 2d | 2026-08-15 A | 2026-09-20 A | A54510 | 100% | 2026-11-24 | 2026-11-26 | ICKMO1-cost unite [898.92 $]; labor [1200 h]; Physical Units [7745.47 h] | 898.92 | 898.92 | ZNB | CON |  |
| A54540 |  | Backfilling & Compaction | 4d | 2026-08-15 A | 2026-09-20 A | A54530, A54520, A54490 | 100% | 2026-12-16 | 2026-12-20 | ICKMO1-cost unite [1797.85 $]; Roller compactor [200 h]; Physical Units [15491 h] | 1,797.85 | 1,797.85 | ZNB | CON |  |
|  | MH-3.16.4 / MH-3.16.5 | **MH-3.16.4 / MH-3.16.5** |  | 2026-08-15 | 2026-09-20 |  |  |  |  |  |  |  |  |  |  |
| A54550 |  | Excavation | 4d | 2026-08-15 A | 2026-09-20 A | A54500, A1990 | 100% | 2027-04-03 | 2027-04-07 | ICKMO1-cost unite [3595.69 $]; Excavator [200 h]; Physical Units [30982 h] | 3,595.69 | 3,595.69 | ZNB | CON |  |
| A54560 |  | Pipe Laying | 8d | 2026-08-15 A | 2026-09-20 A | A54550 | 100% | 2027-04-07 | 2027-04-17 | ICKMO1-cost unite [4494.61 $]; boom truck [200 h]; labor [1200 h]; Sewage Network Circular pipes (GRP) [63.28]; Physical Units [38727.4 h] | 4,494.61 | 4,494.61 | ZNB | CON | LAY |
| A54570 |  | Install Manhole | 4d | 2026-08-15 A | 2026-09-20 A | A54550 | 100% | 2027-04-07 | 2027-04-12 | ICKMO1-cost unite [7191.38 $]; boom truck [200 h]; labor [1200 h]; Physical Units [61963.9 h] | 7,191.38 | 7,191.38 | ZNB | CON | MH |
| A54580 |  | Testing & Inspection | 2d | 2026-08-15 A | 2026-09-20 A | A54560 | 100% | 2026-11-15 | 2026-11-17 | ICKMO1-cost unite [898.92 $]; labor [1200 h]; Physical Units [7745.47 h] | 898.92 | 898.92 | ZNB | CON |  |
| A54590 |  | Backfilling & Compaction | 4d | 2026-08-15 A | 2026-09-20 A | A54580, A54570, A54540 | 100% | 2027-04-19 | 2027-04-24 | ICKMO1-cost unite [1797.85 $]; Roller compactor [200 h]; Physical Units [15491 h] | 1,797.85 | 1,797.85 | ZNB | CON |  |
|  | MH-3.16.4.0 / MH-3.16.4.1 | **MH-3.16.4.0 / MH-3.16.4.1** |  | 2026-08-15 | 2026-09-20 |  |  |  |  |  |  |  |  |  |  |
| A54600 |  | Excavation | 4d | 2026-08-15 A | 2026-09-20 A | A54550, A1990 | 100% | 2026-11-15 | 2026-11-19 | ICKMO1-cost unite [3595.69 $]; Excavator [200 h]; Physical Units [30982 h] | 3,595.69 | 3,595.69 | ZNB | CON |  |
| A54610 |  | Pipe Laying | 8d | 2026-08-15 A | 2026-09-20 A | A54600 | 100% | 2026-11-19 | 2026-11-29 | ICKMO1-cost unite [4494.61 $]; boom truck [200 h]; labor [1200 h]; Sewage Network Circular pipes (GRP) [63.28]; Physical Units [38727.4 h] | 4,494.61 | 4,494.61 | ZNB | CON | LAY |
| A54620 |  | Install Manhole | 4d | 2026-08-15 A | 2026-09-20 A | A54600 | 100% | 2026-11-19 | 2026-11-24 | ICKMO1-cost unite [7191.38 $]; boom truck [200 h]; labor [1200 h]; Physical Units [61963.9 h] | 7,191.38 | 7,191.38 | ZNB | CON | MH |
| A54630 |  | Testing & Inspection | 2d | 2026-08-15 A | 2026-09-20 A | A54610 | 100% | 2026-11-29 | 2026-12-01 | ICKMO1-cost unite [898.92 $]; labor [1200 h]; Physical Units [7745.47 h] | 898.92 | 898.92 | ZNB | CON |  |
| A54640 |  | Backfilling & Compaction | 4d | 2026-08-15 A | 2026-09-20 A | A54630, A54620, A54590 | 100% | 2026-12-21 | 2026-12-24 | ICKMO1-cost unite [1797.85 $]; Roller compactor [200 h]; Physical Units [15491 h] | 1,797.85 | 1,797.85 | ZNB | CON |  |
|  | MH-3.16.5 / MH-3.16.6 | **MH-3.16.5 / MH-3.16.6** |  | 2026-08-15 | 2026-09-20 |  |  |  |  |  |  |  |  |  |  |
| A54650 |  | Excavation | 4d | 2026-08-15 A | 2026-09-20 A | A54600, A1990 | 100% | 2027-04-12 | 2027-04-17 | ICKMO1-cost unite [3595.69 $]; Excavator [200 h]; Physical Units [30982 h] | 3,595.69 | 3,595.69 | ZNB | CON |  |
| A54660 |  | Pipe Laying | 8d | 2026-08-15 A | 2026-09-20 A | A54650 | 100% | 2027-04-17 | 2027-04-26 | ICKMO1-cost unite [4494.61 $]; boom truck [200 h]; labor [1200 h]; Sewage Network Circular pipes (GRP) [63.28]; Physical Units [38727.4 h] | 4,494.61 | 4,494.61 | ZNB | CON | LAY |
| A54670 |  | Install Manhole | 4d | 2026-08-15 A | 2026-09-20 A | A54650 | 100% | 2027-04-17 | 2027-04-21 | ICKMO1-cost unite [7191.38 $]; boom truck [200 h]; labor [1200 h]; Physical Units [61963.9 h] | 7,191.38 | 7,191.38 | ZNB | CON | MH |
| A54680 |  | Testing & Inspection | 2d | 2026-08-15 A | 2026-09-20 A | A54660 | 100% | 2026-11-19 | 2026-11-22 | ICKMO1-cost unite [898.92 $]; labor [1200 h]; Physical Units [7745.47 h] | 898.92 | 898.92 | ZNB | CON |  |
| A54690 |  | Backfilling & Compaction | 4d | 2026-08-15 A | 2026-09-20 A | A54680, A54670, A54640 | 100% | 2027-04-28 | 2027-05-03 | ICKMO1-cost unite [1797.85 $]; Roller compactor [200 h]; Physical Units [15491 h] | 1,797.85 | 1,797.85 | ZNB | CON |  |

| ID | WBS | Activity | Duration | Start | Finish | Predecessors | Complete | Planned start | Planned finish | Resources | Cost | Actual cost | ALKHARJ INDUSTERIAL AREA - PROJECT ZONES | ALKHARJ INDUSTERIAL AREA - DECEPLINS | ALKHARJ INDUSTERIAL AREA - Wet networks |
| --- | --- | --- | --- | --- | --- | --- | --- | --- | --- | --- | --- | --- | --- | --- | --- |
|  | MH-3.16.5.0 / MH-3.16.5.1 | **MH-3.16.5.0 / MH-3.16.5.1** |  | 2026-08-15 | 2026-09-20 |  |  |  |  |  |  |  |  |  |  |
| A54700 |  | Excavation | 4d | 2026-08-15 A | 2026-09-20 A | A54650, A1990 | 100% | 2026-11-19 | 2026-11-24 | ICKMO1-cost unite [3595.69 $]; Excavator [200 h]; Physical Units [30982 h] | 3,595.69 | 3,595.69 | ZNB | CON |  |
| A54710 |  | Pipe Laying | 8d | 2026-08-15 A | 2026-09-20 A | A54700 | 100% | 2026-11-24 | 2026-12-03 | ICKMO1-cost unite [4494.61 $]; boom truck [200 h]; labor [1200 h]; Sewage Network Circular pipes (GRP) [63.28]; Physical Units [38727.4 h] | 4,494.61 | 4,494.61 | ZNB | CON | LAY |
| A54720 |  | Install Manhole | 4d | 2026-08-15 A | 2026-09-20 A | A54700 | 100% | 2026-11-24 | 2026-11-29 | ICKMO1-cost unite [7191.38 $]; boom truck [200 h]; labor [1200 h]; Physical Units [61963.9 h] | 7,191.38 | 7,191.38 | ZNB | CON | MH |
| A54730 |  | Testing & Inspection | 2d | 2026-08-15 A | 2026-09-20 A | A54710 | 100% | 2026-12-03 | 2026-12-06 | ICKMO1-cost unite [898.92 $]; labor [1200 h]; Physical Units [7745.47 h] | 898.92 | 898.92 | ZNB | CON |  |
| A54740 |  | Backfilling & Compaction | 4d | 2026-08-15 A | 2026-09-20 A | A54730, A54720, A54690 | 100% | 2026-12-26 | 2026-12-29 | ICKMO1-cost unite [1797.85 $]; Roller compactor [200 h]; Physical Units [15491 h] | 1,797.85 | 1,797.85 | ZNB | CON |  |
|  | MH-3.16.6 / MH-3.16.7 | **MH-3.16.6 / MH-3.16.7** |  | 2026-08-15 | 2026-09-20 |  |  |  |  |  |  |  |  |  |  |
| A54750 |  | Excavation | 4d | 2026-08-15 A | 2026-09-20 A | A54700, A1990 | 100% | 2027-04-21 | 2027-04-26 | ICKMO1-cost unite [3595.69 $]; Excavator [200 h]; Physical Units [30982 h] | 3,595.69 | 3,595.69 | ZNB | CON |  |
| A54760 |  | Pipe Laying | 8d | 2026-08-15 A | 2026-09-20 A | A54750 | 100% | 2027-04-26 | 2027-05-05 | ICKMO1-cost unite [4494.61 $]; boom truck [200 h]; labor [1200 h]; Sewage Network Circular pipes (GRP) [63.28]; Physical Units [38727.4 h] | 4,494.61 | 4,494.61 | ZNB | CON | LAY |
| A54770 |  | Install Manhole | 4d | 2026-08-15 A | 2026-09-20 A | A54750 | 100% | 2027-04-26 | 2027-05-01 | ICKMO1-cost unite [7191.38 $]; boom truck [200 h]; labor [1200 h]; Physical Units [61963.9 h] | 7,191.38 | 7,191.38 | ZNB | CON | MH |
| A54780 |  | Testing & Inspection | 2d | 2026-08-15 A | 2026-09-20 A | A54760 | 100% | 2026-11-24 | 2026-11-26 | ICKMO1-cost unite [898.92 $]; labor [1200 h]; Physical Units [7745.47 h] | 898.92 | 898.92 | ZNB | CON |  |
| A54790 |  | Backfilling & Compaction | 4d | 2026-08-15 A | 2026-09-20 A | A54780, A54770, A54740 | 100% | 2027-05-08 | 2027-05-12 | ICKMO1-cost unite [1797.85 $]; Roller compactor [200 h]; Physical Units [15491 h] | 1,797.85 | 1,797.85 | ZNB | CON |  |
|  | MH-3.16.6.0 / MH-3.16.6.1 | **MH-3.16.6.0 / MH-3.16.6.1** |  | 2026-08-15 | 2026-09-20 |  |  |  |  |  |  |  |  |  |  |
| A54800 |  | Excavation | 4d | 2026-08-15 A | 2026-09-20 A | A54750, A1990 | 100% | 2026-11-24 | 2026-11-29 | ICKMO1-cost unite [3595.69 $]; Excavator [200 h]; Physical Units [30982 h] | 3,595.69 | 3,595.69 | ZNB | CON |  |
| A54810 |  | Pipe Laying | 8d | 2026-08-15 A | 2026-09-20 A | A54800 | 100% | 2026-11-29 | 2026-12-08 | ICKMO1-cost unite [4494.61 $]; boom truck [200 h]; labor [1200 h]; Sewage Network Circular pipes (GRP) [63.28]; Physical Units [38727.4 h] | 4,494.61 | 4,494.61 | ZNB | CON | LAY |
| A54820 |  | Install Manhole | 4d | 2026-08-15 A | 2026-09-20 A | A54800 | 100% | 2026-11-29 | 2026-12-03 | ICKMO1-cost unite [7191.38 $]; boom truck [200 h]; labor [1200 h]; Physical Units [61963.9 h] | 7,191.38 | 7,191.38 | ZNB | CON | MH |
| A54830 |  | Testing & Inspection | 2d | 2026-08-15 A | 2026-09-20 A | A54810 | 100% | 2026-12-08 | 2026-12-10 | ICKMO1-cost unite [898.92 $]; labor [1200 h]; Physical Units [7745.47 h] | 898.92 | 898.92 | ZNB | CON |  |
| A54840 |  | Backfilling & Compaction | 4d | 2026-08-15 A | 2026-09-20 A | A54830, A54820, A54790 | 100% | 2026-12-30 | 2027-01-03 | ICKMO1-cost unite [1797.85 $]; Roller compactor [200 h]; Physical Units [15491 h] | 1,797.85 | 1,797.85 | ZNB | CON |  |
|  | MH-3.16.7 / MH-3.16.8 | **MH-3.16.7 / MH-3.16.8** |  | 2026-08-15 | 2026-09-20 |  |  |  |  |  |  |  |  |  |  |
| A54850 |  | Excavation | 4d | 2026-08-15 A | 2026-09-20 A | A54800, A1990 | 100% | 2027-05-01 | 2027-05-05 | ICKMO1-cost unite [3595.69 $]; Excavator [200 h]; Physical Units [30982 h] | 3,595.69 | 3,595.69 | ZNB | CON |  |
| A54860 |  | Pipe Laying | 8d | 2026-08-15 A | 2026-09-20 A | A54850 | 100% | 2027-05-05 | 2027-05-15 | ICKMO1-cost unite [4494.61 $]; boom truck [200 h]; labor [1200 h]; Sewage Network Circular pipes (GRP) [63.28]; Physical Units [38727.4 h] | 4,494.61 | 4,494.61 | ZNB | CON | LAY |
| A54870 |  | Install Manhole | 4d | 2026-08-15 A | 2026-09-20 A | A54850 | 100% | 2027-05-05 | 2027-05-10 | ICKMO1-cost unite [7191.38 $]; boom truck [200 h]; labor [1200 h]; Physical Units [61963.9 h] | 7,191.38 | 7,191.38 | ZNB | CON | MH |
| A54880 |  | Testing & Inspection | 2d | 2026-08-15 A | 2026-09-20 A | A54860 | 100% | 2026-11-29 | 2026-12-01 | ICKMO1-cost unite [898.92 $]; labor [1200 h]; Physical Units [7745.47 h] | 898.92 | 898.92 | ZNB | CON |  |
| A54890 |  | Backfilling & Compaction | 4d | 2026-08-15 A | 2026-09-20 A | A54880, A54870, A54840 | 100% | 2027-05-17 | 2027-05-22 | ICKMO1-cost unite [1797.85 $]; Roller compactor [200 h]; Physical Units [15491 h] | 1,797.85 | 1,797.85 | ZNB | CON |  |

| ID | WBS | Activity | Duration | Start | Finish | Predecessors | Complete | Planned start | Planned finish | Resources | Cost | Actual cost | ALKHARJ INDUSTERIAL AREA - PROJECT ZONES | ALKHARJ INDUSTERIAL AREA - DECEPLINS | ALKHARJ INDUSTERIAL AREA - Wet networks |
| --- | --- | --- | --- | --- | --- | --- | --- | --- | --- | --- | --- | --- | --- | --- | --- |
|  | MH-3.16.7.0 / MH-3.16.7.1 | **MH-3.16.7.0 / MH-3.16.7.1** |  | 2026-08-15 | 2026-09-20 |  |  |  |  |  |  |  |  |  |  |
| A54900 |  | Excavation | 4d | 2026-08-15 A | 2026-09-20 A | A54850, A1990 | 100% | 2026-11-29 | 2026-12-03 | ICKMO1-cost unite [3595.69 $]; Excavator [200 h]; Physical Units [30982 h] | 3,595.69 | 3,595.69 | ZNB | CON |  |
| A54910 |  | Pipe Laying | 8d | 2026-08-15 A | 2026-09-20 A | A54900 | 100% | 2026-12-03 | 2026-12-13 | ICKMO1-cost unite [4494.61 $]; boom truck [200 h]; labor [1200 h]; Sewage Network Circular pipes (GRP) [63.28]; Physical Units [38727.4 h] | 4,494.61 | 4,494.61 | ZNB | CON | LAY |
| A54920 |  | Install Manhole | 4d | 2026-08-15 A | 2026-09-20 A | A54900 | 100% | 2026-12-03 | 2026-12-08 | ICKMO1-cost unite [7191.38 $]; boom truck [200 h]; labor [1200 h]; Physical Units [61963.9 h] | 7,191.38 | 7,191.38 | ZNB | CON | MH |
| A54930 |  | Testing & Inspection | 2d | 2026-08-15 A | 2026-09-20 A | A54910 | 100% | 2026-12-13 | 2026-12-15 | ICKMO1-cost unite [898.92 $]; labor [1200 h]; Physical Units [7745.47 h] | 898.92 | 898.92 | ZNB | CON |  |
| A54940 |  | Backfilling & Compaction | 4d | 2026-08-15 A | 2026-09-20 A | A54930, A54920, A54890 | 100% | 2027-01-04 | 2027-01-07 | ICKMO1-cost unite [1797.85 $]; Roller compactor [200 h]; Physical Units [15491 h] | 1,797.85 | 1,797.85 | ZNB | CON |  |
|  | MH-3.16.8 / MH-3.16.9 | **MH-3.16.8 / MH-3.16.9** |  | 2026-08-15 | 2026-09-20 |  |  |  |  |  |  |  |  |  |  |
| A54950 |  | Excavation | 4d | 2026-08-15 A | 2026-09-20 A | A54900, A1990 | 100% | 2027-05-10 | 2027-05-15 | ICKMO1-cost unite [3595.69 $]; Excavator [200 h]; Physical Units [30982 h] | 3,595.69 | 3,595.69 | ZNB | CON |  |
| A54960 |  | Pipe Laying | 8d | 2026-08-15 A | 2026-09-20 A | A54950 | 100% | 2027-05-15 | 2027-05-24 | ICKMO1-cost unite [4494.61 $]; boom truck [200 h]; labor [1200 h]; Sewage Network Circular pipes (GRP) [63.28]; Physical Units [38727.4 h] | 4,494.61 | 4,494.61 | ZNB | CON | LAY |
| A54970 |  | Install Manhole | 4d | 2026-08-15 A | 2026-09-20 A | A54950 | 100% | 2027-05-15 | 2027-05-19 | ICKMO1-cost unite [7191.38 $]; boom truck [200 h]; labor [1200 h]; Physical Units [61963.9 h] | 7,191.38 | 7,191.38 | ZNB | CON | MH |
| A54980 |  | Testing & Inspection | 2d | 2026-08-15 A | 2026-09-20 A | A54960 | 100% | 2026-12-03 | 2026-12-06 | ICKMO1-cost unite [898.92 $]; labor [1200 h]; Physical Units [7745.47 h] | 898.92 | 898.92 | ZNB | CON |  |
| A54990 |  | Backfilling & Compaction | 4d | 2026-08-15 A | 2026-09-20 A | A54980, A54970, A54940 | 100% | 2027-05-26 | 2027-05-31 | ICKMO1-cost unite [1797.85 $]; Roller compactor [200 h]; Physical Units [15491 h] | 1,797.85 | 1,797.85 | ZNB | CON |  |
|  | MH-3.16.8.0 / MH-3.16.8.1 | **MH-3.16.8.0 / MH-3.16.8.1** |  | 2026-08-15 | 2026-09-20 |  |  |  |  |  |  |  |  |  |  |
| A55000 |  | Excavation | 4d | 2026-08-15 A | 2026-09-20 A | A54950, A1990 | 100% | 2026-12-03 | 2026-12-08 | ICKMO1-cost unite [3595.69 $]; Excavator [200 h]; Physical Units [30982 h] | 3,595.69 | 3,595.69 | ZNB | CON |  |
| A55010 |  | Pipe Laying | 4d | 2026-08-15 A | 2026-09-20 A | A55000 | 100% | 2026-12-08 | 2026-12-13 | ICKMO1-cost unite [4494.61 $]; boom truck [200 h]; labor [1200 h]; Sewage Network Circular pipes (GRP) [63.28]; Physical Units [38727.4 h] | 4,494.61 | 4,494.61 | ZNB | CON | LAY |
| A55020 |  | Install Manhole | 4d | 2026-08-15 A | 2026-09-20 A | A55000 | 100% | 2026-12-08 | 2026-12-13 | ICKMO1-cost unite [7191.38 $]; boom truck [200 h]; labor [1200 h]; Physical Units [61963.9 h] | 7,191.38 | 7,191.38 | ZNB | CON | MH |
| A55030 |  | Testing & Inspection | 2d | 2026-08-15 A | 2026-09-20 A | A55010 | 100% | 2026-12-13 | 2026-12-15 | ICKMO1-cost unite [898.92 $]; labor [1200 h]; Physical Units [7745.47 h] | 898.92 | 898.92 | ZNB | CON |  |
| A55040 |  | Backfilling & Compaction | 4d | 2026-08-15 A | 2026-09-20 A | A55030, A55020, A54990 | 100% | 2027-01-09 | 2027-01-12 | ICKMO1-cost unite [1797.85 $]; Roller compactor [200 h]; Physical Units [15491 h] | 1,797.85 | 1,797.85 | ZNB | CON |  |
|  | MH-3.16.9 / MH-3.16.10 | **MH-3.16.9 / MH-3.16.10** |  | 2026-08-15 | 2026-09-20 |  |  |  |  |  |  |  |  |  |  |
| A55050 |  | Excavation | 4d | 2026-08-15 A | 2026-09-20 A | A55000, A1990 | 100% | 2027-05-19 | 2027-05-24 | ICKMO1-cost unite [3595.69 $]; Excavator [200 h]; Physical Units [30982 h] | 3,595.69 | 3,595.69 | ZNB | CON |  |
| A55060 |  | Pipe Laying | 8d | 2026-08-15 A | 2026-09-20 A | A55050 | 100% | 2027-05-24 | 2027-06-02 | ICKMO1-cost unite [4494.61 $]; boom truck [200 h]; labor [1200 h]; Sewage Network Circular pipes (GRP) [63.28]; Physical Units [38727.4 h] | 4,494.61 | 4,494.61 | ZNB | CON | LAY |
| A55070 |  | Install Manhole | 4d | 2026-08-15 A | 2026-09-20 A | A55050 | 100% | 2027-05-24 | 2027-05-29 | ICKMO1-cost unite [7191.38 $]; boom truck [200 h]; labor [1200 h]; Physical Units [61963.9 h] | 7,191.38 | 7,191.38 | ZNB | CON | MH |
| A55080 |  | Testing & Inspection | 2d | 2026-08-15 A | 2026-09-20 A | A55060 | 100% | 2026-12-08 | 2026-12-10 | ICKMO1-cost unite [898.92 $]; labor [1200 h]; Physical Units [7745.47 h] | 898.92 | 898.92 | ZNB | CON |  |
| A55090 |  | Backfilling & Compaction | 4d | 2026-08-15 A | 2026-09-20 A | A55080, A55070, A55040 | 100% | 2027-06-05 | 2027-06-09 | ICKMO1-cost unite [1797.85 $]; Roller compactor [200 h]; Physical Units [15491 h] | 1,797.85 | 1,797.85 | ZNB | CON |  |

| ID | WBS | Activity | Duration | Start | Finish | Predecessors | Complete | Planned start | Planned finish | Total float | Free float | Resources | Cost | Actual cost | ALKHARJ INDUSTERIAL AREA - PROJECT ZONES | ALKHARJ INDUSTERIAL AREA - DECEPLINS | ALKHARJ INDUSTERIAL AREA - Wet networks |
| --- | --- | --- | --- | --- | --- | --- | --- | --- | --- | --- | --- | --- | --- | --- | --- | --- | --- |
|  | MH-3.16.9.0 / MH-3.16.9.1 | **MH-3.16.9.0 / MH-3.16.9.1** |  | 2026-08-15 | 2026-09-20 |  |  |  |  |  |  |  |  |  |  |  |  |
| A55100 |  | Excavation | 4d | 2026-08-15 A | 2026-09-20 A | A55050, A1990 | 100% | 2026-12-08 | 2026-12-13 |  |  | ICKMO1-cost unite [3595.69 $]; Excavator [200 h]; Physical Units [30982 h] | 3,595.69 | 3,595.69 | ZNB | CON |  |
| A55110 |  | Pipe Laying | 8d | 2026-08-15 A | 2026-09-20 A | A55100 | 100% | 2026-12-13 | 2026-12-22 |  |  | ICKMO1-cost unite [4494.61 $]; boom truck [200 h]; labor [1200 h]; Sewage Network Circular pipes (GRP) [63.28]; Physical Units [38727.4 h] | 4,494.61 | 4,494.61 | ZNB | CON | LAY |
| A55120 |  | Install Manhole | 4d | 2026-08-15 A | 2026-09-20 A | A55100 | 100% | 2026-12-13 | 2026-12-17 |  |  | ICKMO1-cost unite [7191.38 $]; boom truck [200 h]; labor [1200 h]; Physical Units [61963.9 h] | 7,191.38 | 7,191.38 | ZNB | CON | MH |
| A55130 |  | Testing & Inspection | 2d | 2026-08-15 A | 2026-09-20 A | A55110 | 100% | 2026-12-22 | 2026-12-24 |  |  | ICKMO1-cost unite [898.92 $]; labor [1200 h]; Physical Units [7745.47 h] | 898.92 | 898.92 | ZNB | CON |  |
| A55140 |  | Backfilling & Compaction | 4d | 2026-08-15 A | 2026-09-20 A | A55130, A55120, A55090 | 100% | 2027-01-13 | 2027-01-17 |  |  | ICKMO1-cost unite [1797.85 $]; Roller compactor [200 h]; Physical Units [15491 h] | 1,797.85 | 1,797.85 | ZNB | CON |  |
|  | LR 27 | **LR 27** |  | 2026-08-15 | 2026-10-14 |  |  |  |  |  |  |  |  |  |  |  |  |
|  | MH-3.16 / MH-3.17 | **MH-3.16 / MH-3.17** |  | 2026-08-15 | 2026-10-14 |  |  |  |  |  |  |  |  |  |  |  |  |
| A55500 |  | Excavation | 3d | 2026-08-15 A | 2026-09-20 A | A55450, A1990 | 100% | 2026-11-29 | 2026-12-02 |  |  | ICKMO1-cost unite [3197.9 $]; Excavator [200 h]; Physical Units [27554.4 h] | 3,197.9 | 3,197.9 | ZNB | CON |  |
| A55510 |  | Pipe Laying | 8d | 2026-08-15 A | 2026-09-20 A | A55500 | 100% | 2026-12-02 | 2026-12-12 |  |  | ICKMO1-cost unite [3997.37 $]; boom truck [200 h]; labor [1200 h]; Sewage Network Circular pipes (GRP) [63.28]; Physical Units [34443 h] | 3,997.37 | 3,997.37 | ZNB | CON | LAY |
| A55520 |  | Install Manhole | 4d | 2026-08-15 A | 2026-09-20 A | A55500 | 100% | 2026-12-02 | 2026-12-07 |  |  | ICKMO1-cost unite [6395.8 $]; boom truck [200 h]; labor [1200 h]; Physical Units [55108.9 h] | 6,395.8 | 6,395.8 | ZNB | CON | MH |
| A55540 |  | Backfilling & Compaction | 4d | 2026-08-15 A | 2026-09-20 A | A55530, A55520, A55490 | 100% | 2026-12-21 | 2026-12-26 |  |  | ICKMO1-cost unite [1598.95 $]; Roller compactor [200 h]; Physical Units [13777.2 h] | 1,598.95 | 1,598.95 | ZNB | CON |  |
| A55530 |  | Testing & Inspection | 2d | 2026-10-12 | 2026-10-14 | A55510 |  |  |  | 9.56d | 0d | ICKMO1-cost unite [799.48 $]; labor [1200 h]; Physical Units [6888.65 h] | 799.48 |  | ZNB | CON |  |
|  | MH-3.17 / MH-3.18 | **MH-3.17 / MH-3.18** |  | 2026-08-15 | 2026-10-14 |  |  |  |  |  |  |  |  |  |  |  |  |
| A55550 |  | Excavation | 3d | 2026-08-15 A | 2026-09-20 A | A55500, A1990 | 100% | 2026-12-02 | 2026-12-06 |  |  | ICKMO1-cost unite [3197.9 $]; Excavator [200 h]; Physical Units [27554.4 h] | 3,197.9 | 3,197.9 | ZNB | CON |  |
| A55560 |  | Pipe Laying | 8d | 2026-08-15 A | 2026-09-20 A | A55550 | 100% | 2026-12-06 | 2026-12-15 |  |  | ICKMO1-cost unite [3997.37 $]; boom truck [200 h]; labor [1200 h]; Sewage Network Circular pipes (GRP) [63.28]; Physical Units [34443 h] | 3,997.37 | 3,997.37 | ZNB | CON | LAY |
| A55570 |  | Install Manhole | 4d | 2026-08-15 A | 2026-09-20 A | A55550 | 100% | 2026-12-06 | 2026-12-10 |  |  | ICKMO1-cost unite [6395.8 $]; boom truck [200 h]; labor [1200 h]; Physical Units [55108.9 h] | 6,395.8 | 6,395.8 | ZNB | CON | MH |
| A55590 |  | Backfilling & Compaction | 4d | 2026-08-15 A | 2026-09-20 A | A55580, A55570, A55540 | 100% | 2026-12-26 | 2026-12-30 |  |  | ICKMO1-cost unite [1598.95 $]; Roller compactor [200 h]; Physical Units [13777.2 h] | 1,598.95 | 1,598.95 | ZNB | CON |  |
| A55580 |  | Testing & Inspection | 2d | 2026-10-12 | 2026-10-14 | A55560 |  |  |  | 9.56d | 0d | ICKMO1-cost unite [799.48 $]; labor [1200 h]; Physical Units [6888.65 h] | 799.48 |  | ZNB | CON |  |
|  | MH-3.17.0 / MH-3.17.1 | **MH-3.17.0 / MH-3.17.1** |  | 2026-08-15 | 2026-10-14 |  |  |  |  |  |  |  |  |  |  |  |  |
| A55150 |  | Excavation | 3d | 2026-08-15 A | 2026-09-20 A | A75370, A1990 | 100% | 2026-11-04 | 2026-11-08 |  |  | ICKMO1-cost unite [3197.9 $]; Excavator [200 h]; Physical Units [27554.4 h] | 3,197.9 | 3,197.9 | ZNB | CON |  |
| A55160 |  | Pipe Laying | 4d | 2026-08-15 A | 2026-09-20 A | A55150 | 100% | 2026-11-08 | 2026-11-12 |  |  | ICKMO1-cost unite [3997.37 $]; boom truck [200 h]; labor [1200 h]; Sewage Network Circular pipes (GRP) [63.28]; Physical Units [34443 h] | 3,997.37 | 3,997.37 | ZNB | CON | LAY |
| A55170 |  | Install Manhole | 4d | 2026-08-15 A | 2026-09-20 A | A55150 | 100% | 2026-11-08 | 2026-11-12 |  |  | ICKMO1-cost unite [6395.8 $]; boom truck [200 h]; labor [1200 h]; Physical Units [55108.9 h] | 6,395.8 | 6,395.8 | ZNB | CON | MH |
| A55190 |  | Backfilling & Compaction | 4d | 2026-08-15 A | 2026-09-20 A | A55180, A55170 | 100% | 2026-11-15 | 2026-11-19 |  |  | ICKMO1-cost unite [1598.95 $]; Roller compactor [200 h]; Physical Units [13777.2 h] | 1,598.95 | 1,598.95 | ZNB | CON |  |
| A55180 |  | Testing & Inspection | 2d | 2026-10-12 | 2026-10-14 | A55160 |  |  |  | 9.56d | 0d | ICKMO1-cost unite [799.48 $]; labor [1200 h]; Physical Units [6888.65 h] | 799.48 |  | ZNB | CON |  |

| ID | WBS | Activity | Duration | Start | Finish | Predecessors | Complete | Planned start | Planned finish | Total float | Free float | Resources | Cost | Actual cost | ALKHARJ INDUSTERIAL AREA - PROJECT ZONES | ALKHARJ INDUSTERIAL AREA - DECEPLINS | ALKHARJ INDUSTERIAL AREA - Wet networks |
| --- | --- | --- | --- | --- | --- | --- | --- | --- | --- | --- | --- | --- | --- | --- | --- | --- | --- |
|  | MH-3.18 / MH-3.19 | **MH-3.18 / MH-3.19** |  | 2026-08-15 | 2026-10-14 |  |  |  |  |  |  |  |  |  |  |  |  |
| A55600 |  | Excavation | 3d | 2026-08-15 A | 2026-09-20 A | A55550, A1990 | 100% | 2026-12-06 | 2026-12-09 |  |  | ICKMO1-cost unite [3197.9 $]; Excavator [200 h]; Physical Units [27554.4 h] | 3,197.9 | 3,197.9 | ZNB | CON |  |
| A55610 |  | Pipe Laying | 8d | 2026-08-15 A | 2026-09-20 A | A55600 | 100% | 2026-12-09 | 2026-12-19 |  |  | ICKMO1-cost unite [3997.37 $]; boom truck [200 h]; labor [1200 h]; Sewage Network Circular pipes (GRP) [63.28]; Physical Units [34443 h] | 3,997.37 | 3,997.37 | ZNB | CON | LAY |
| A55620 |  | Install Manhole | 4d | 2026-08-15 A | 2026-09-20 A | A55600 | 100% | 2026-12-09 | 2026-12-14 |  |  | ICKMO1-cost unite [6395.8 $]; boom truck [200 h]; labor [1200 h]; Physical Units [55108.9 h] | 6,395.8 | 6,395.8 | ZNB | CON | MH |
| A55640 |  | Backfilling & Compaction | 4d | 2026-08-15 A | 2026-09-20 A | A55630, A55620, A55590 | 100% | 2026-12-30 | 2027-01-04 |  |  | ICKMO1-cost unite [1598.95 $]; Roller compactor [200 h]; Physical Units [13777.2 h] | 1,598.95 | 1,598.95 | ZNB | CON |  |
| A55630 |  | Testing & Inspection | 2d | 2026-10-12 | 2026-10-14 | A55610 |  |  |  | 9.56d | 0d | ICKMO1-cost unite [799.48 $]; labor [1200 h]; Physical Units [6888.65 h] | 799.48 |  | ZNB | CON |  |
|  | MH-3.18.0 / MH-3.18.1 | **MH-3.18.0 / MH-3.18.1** |  | 2026-08-15 | 2026-10-14 |  |  |  |  |  |  |  |  |  |  |  |  |
| A55200 |  | Excavation | 3d | 2026-08-15 A | 2026-09-20 A | A55150, A1990 | 100% | 2026-11-08 | 2026-11-11 |  |  | ICKMO1-cost unite [3197.9 $]; Excavator [200 h]; Physical Units [27554.4 h] | 3,197.9 | 3,197.9 | ZNB | CON |  |
| A55210 |  | Pipe Laying | 8d | 2026-08-15 A | 2026-09-20 A | A55200 | 100% | 2026-11-11 | 2026-11-21 |  |  | ICKMO1-cost unite [3997.37 $]; boom truck [200 h]; labor [1200 h]; Sewage Network Circular pipes (GRP) [63.28]; Physical Units [34443 h] | 3,997.37 | 3,997.37 | ZNB | CON | LAY |
| A55220 |  | Install Manhole | 4d | 2026-08-15 A | 2026-09-20 A | A55200 | 100% | 2026-11-11 | 2026-11-16 |  |  | ICKMO1-cost unite [6395.8 $]; boom truck [200 h]; labor [1200 h]; Physical Units [55108.9 h] | 6,395.8 | 6,395.8 | ZNB | CON | MH |
| A55240 |  | Backfilling & Compaction | 4d | 2026-08-15 A | 2026-09-20 A | A55230, A55220, A55190 | 100% | 2026-11-23 | 2026-11-28 |  |  | ICKMO1-cost unite [1598.95 $]; Roller compactor [200 h]; Physical Units [13777.2 h] | 1,598.95 | 1,598.95 | ZNB | CON |  |
| A55230 |  | Testing & Inspection | 2d | 2026-10-12 | 2026-10-14 | A55210 |  |  |  | 9.56d | 0d | ICKMO1-cost unite [799.48 $]; labor [1200 h]; Physical Units [6888.65 h] | 799.48 |  | ZNB | CON |  |
|  | MH-3.19 / MH-3.20 | **MH-3.19 / MH-3.20** |  | 2026-08-15 | 2026-10-14 |  |  |  |  |  |  |  |  |  |  |  |  |
| A55650 |  | Excavation | 3d | 2026-08-15 A | 2026-09-20 A | A55600, A1990 | 100% | 2026-12-09 | 2026-12-13 |  |  | ICKMO1-cost unite [3197.9 $]; Excavator [200 h]; Physical Units [27554.4 h] | 3,197.9 | 3,197.9 | ZNB | CON |  |
| A55660 |  | Pipe Laying | 8d | 2026-08-15 A | 2026-09-20 A | A55650 | 100% | 2026-12-13 | 2026-12-22 |  |  | ICKMO1-cost unite [3997.37 $]; boom truck [200 h]; labor [1200 h]; Sewage Network Circular pipes (GRP) [63.28]; Physical Units [34443 h] | 3,997.37 | 3,997.37 | ZNB | CON | LAY |
| A55670 |  | Install Manhole | 4d | 2026-08-15 A | 2026-09-20 A | A55650 | 100% | 2026-12-13 | 2026-12-17 |  |  | ICKMO1-cost unite [6395.8 $]; boom truck [200 h]; labor [1200 h]; Physical Units [55108.9 h] | 6,395.8 | 6,395.8 | ZNB | CON | MH |
| A55690 |  | Backfilling & Compaction | 4d | 2026-08-15 A | 2026-09-20 A | A55680, A55670, A55640 | 100% | 2027-01-04 | 2027-01-09 |  |  | ICKMO1-cost unite [1598.95 $]; Roller compactor [200 h]; Physical Units [13777.2 h] | 1,598.95 | 1,598.95 | ZNB | CON |  |
| A55680 |  | Testing & Inspection | 2d | 2026-10-12 | 2026-10-14 | A55660 |  |  |  | 9.56d | 0d | ICKMO1-cost unite [799.48 $]; labor [1200 h]; Physical Units [6888.65 h] | 799.48 |  | ZNB | CON |  |
|  | MH-3.19.0 / MH-3.19.1 | **MH-3.19.0 / MH-3.19.1** |  | 2026-08-15 | 2026-10-14 |  |  |  |  |  |  |  |  |  |  |  |  |
| A55250 |  | Excavation | 3d | 2026-08-15 A | 2026-09-20 A | A55200, A1990 | 100% | 2026-11-11 | 2026-11-15 |  |  | ICKMO1-cost unite [3197.9 $]; Excavator [200 h]; Physical Units [27554.4 h] | 3,197.9 | 3,197.9 | ZNB | CON |  |
| A55260 |  | Pipe Laying | 8d | 2026-08-15 A | 2026-09-20 A | A55250 | 100% | 2026-11-15 | 2026-11-24 |  |  | ICKMO1-cost unite [3997.37 $]; boom truck [200 h]; labor [1200 h]; Sewage Network Circular pipes (GRP) [63.28]; Physical Units [34443 h] | 3,997.37 | 3,997.37 | ZNB | CON | LAY |
| A55270 |  | Install Manhole | 4d | 2026-08-15 A | 2026-09-20 A | A55250 | 100% | 2026-11-15 | 2026-11-19 |  |  | ICKMO1-cost unite [6395.8 $]; boom truck [200 h]; labor [1200 h]; Physical Units [55108.9 h] | 6,395.8 | 6,395.8 | ZNB | CON | MH |
| A55290 |  | Backfilling & Compaction | 4d | 2026-08-15 A | 2026-09-20 A | A55280, A55270, A55240 | 100% | 2026-11-28 | 2026-12-02 |  |  | ICKMO1-cost unite [1598.95 $]; Roller compactor [200 h]; Physical Units [13777.2 h] | 1,598.95 | 1,598.95 | ZNB | CON |  |
| A55280 |  | Testing & Inspection | 2d | 2026-10-12 | 2026-10-14 | A55260 |  |  |  | 9.56d | 0d | ICKMO1-cost unite [799.48 $]; labor [1200 h]; Physical Units [6888.65 h] | 799.48 |  | ZNB | CON |  |

| ID | WBS | Activity | Duration | Start | Finish | Predecessors | Complete | Planned start | Planned finish | Total float | Free float | Resources | Cost | Actual cost | ALKHARJ INDUSTERIAL AREA - PROJECT ZONES | ALKHARJ INDUSTERIAL AREA - DECEPLINS | ALKHARJ INDUSTERIAL AREA - Wet networks |
| --- | --- | --- | --- | --- | --- | --- | --- | --- | --- | --- | --- | --- | --- | --- | --- | --- | --- |
|  | MH-3.20 / MH-3.21 | **MH-3.20 / MH-3.21** |  | 2026-08-15 | 2026-10-14 |  |  |  |  |  |  |  |  |  |  |  |  |
| A55700 |  | Excavation | 3d | 2026-08-15 A | 2026-09-20 A | A55650, A1990 | 100% | 2026-12-13 | 2026-12-16 |  |  | ICKMO1-cost unite [3197.9 $]; Excavator [200 h]; Physical Units [27554.4 h] | 3,197.9 | 3,197.9 | ZNB | CON |  |
| A55710 |  | Pipe Laying | 8d | 2026-08-15 A | 2026-09-20 A | A55700 | 100% | 2026-12-16 | 2026-12-26 |  |  | ICKMO1-cost unite [3997.37 $]; boom truck [200 h]; labor [1200 h]; Sewage Network Circular pipes (GRP) [63.28]; Physical Units [34443 h] | 3,997.37 | 3,997.37 | ZNB | CON | LAY |
| A55720 |  | Install Manhole | 4d | 2026-08-15 A | 2026-09-20 A | A55700 | 100% | 2026-12-16 | 2026-12-21 |  |  | ICKMO1-cost unite [6395.8 $]; boom truck [200 h]; labor [1200 h]; Physical Units [55108.9 h] | 6,395.8 | 6,395.8 | ZNB | CON | MH |
| A55740 |  | Backfilling & Compaction | 4d | 2026-08-15 A | 2026-09-20 A | A55730, A55720, A55690 | 100% | 2027-01-09 | 2027-01-13 |  |  | ICKMO1-cost unite [1598.95 $]; Roller compactor [200 h]; Physical Units [13777.2 h] | 1,598.95 | 1,598.95 | ZNB | CON |  |
| A55730 |  | Testing & Inspection | 2d | 2026-10-12 | 2026-10-14 | A55710 |  |  |  | 9.56d | 0d | ICKMO1-cost unite [799.48 $]; labor [1200 h]; Physical Units [6888.65 h] | 799.48 |  | ZNB | CON |  |
|  | MH-3.20.0 / MH-3.20.1 | **MH-3.20.0 / MH-3.20.1** |  | 2026-08-15 | 2026-10-14 |  |  |  |  |  |  |  |  |  |  |  |  |
| A55300 |  | Excavation | 3d | 2026-08-15 A | 2026-09-20 A | A55250, A1990 | 100% | 2026-11-15 | 2026-11-18 |  |  | ICKMO1-cost unite [3197.9 $]; Excavator [200 h]; Physical Units [27554.4 h] | 3,197.9 | 3,197.9 | ZNB | CON |  |
| A55310 |  | Pipe Laying | 8d | 2026-08-15 A | 2026-09-20 A | A55300 | 100% | 2026-11-18 | 2026-11-28 |  |  | ICKMO1-cost unite [3997.37 $]; boom truck [200 h]; labor [1200 h]; Sewage Network Circular pipes (GRP) [63.28]; Physical Units [34443 h] | 3,997.37 | 3,997.37 | ZNB | CON | LAY |
| A55320 |  | Install Manhole | 4d | 2026-08-15 A | 2026-09-20 A | A55300 | 100% | 2026-11-18 | 2026-11-23 |  |  | ICKMO1-cost unite [6395.8 $]; boom truck [200 h]; labor [1200 h]; Physical Units [55108.9 h] | 6,395.8 | 6,395.8 | ZNB | CON | MH |
| A55340 |  | Backfilling & Compaction | 4d | 2026-08-15 A | 2026-09-20 A | A55330, A55320, A55290 | 100% | 2026-12-02 | 2026-12-07 |  |  | ICKMO1-cost unite [1598.95 $]; Roller compactor [200 h]; Physical Units [13777.2 h] | 1,598.95 | 1,598.95 | ZNB | CON |  |
| A55330 |  | Testing & Inspection | 2d | 2026-10-12 | 2026-10-14 | A55310 |  |  |  | 9.56d | 0d | ICKMO1-cost unite [799.48 $]; labor [1200 h]; Physical Units [6888.65 h] | 799.48 |  | ZNB | CON |  |
|  | MH-3.21 / MH-3.22 | **MH-3.21 / MH-3.22** |  | 2026-08-15 | 2026-10-14 |  |  |  |  |  |  |  |  |  |  |  |  |
| A55750 |  | Excavation | 3d | 2026-08-15 A | 2026-09-20 A | A55700, A1990 | 100% | 2026-12-16 | 2026-12-20 |  |  | ICKMO1-cost unite [3197.9 $]; Excavator [200 h]; Physical Units [27554.4 h] | 3,197.9 | 3,197.9 | ZNB | CON |  |
| A55760 |  | Pipe Laying | 8d | 2026-08-15 A | 2026-09-20 A | A55750 | 100% | 2026-12-20 | 2026-12-29 |  |  | ICKMO1-cost unite [3997.37 $]; boom truck [200 h]; labor [1200 h]; Sewage Network Circular pipes (GRP) [63.28]; Physical Units [34443 h] | 3,997.37 | 3,997.37 | ZNB | CON | LAY |
| A55770 |  | Install Manhole | 4d | 2026-08-15 A | 2026-09-20 A | A55750 | 100% | 2026-12-20 | 2026-12-24 |  |  | ICKMO1-cost unite [6395.8 $]; boom truck [200 h]; labor [1200 h]; Physical Units [55108.9 h] | 6,395.8 | 6,395.8 | ZNB | CON | MH |
| A55790 |  | Backfilling & Compaction | 4d | 2026-08-15 A | 2026-09-20 A | A55780, A55770, A55740, A75170 | 100% | 2027-01-13 | 2027-01-18 |  |  | ICKMO1-cost unite [1598.95 $]; Roller compactor [200 h]; Physical Units [13777.2 h] | 1,598.95 | 1,598.95 | ZNB | CON |  |
| A55780 |  | Testing & Inspection | 2d | 2026-10-12 | 2026-10-14 | A55760 |  |  |  | 9.56d | 0d | ICKMO1-cost unite [799.48 $]; labor [1200 h]; Physical Units [6888.65 h] | 799.48 |  | ZNB | CON |  |
|  | MH-3.21.0 / MH-3.21.1 | **MH-3.21.0 / MH-3.21.1** |  | 2026-08-15 | 2026-10-14 |  |  |  |  |  |  |  |  |  |  |  |  |
| A55350 |  | Excavation | 3d | 2026-08-15 A | 2026-09-20 A | A55300, A1990 | 100% | 2026-11-18 | 2026-11-22 |  |  | ICKMO1-cost unite [3197.9 $]; Excavator [200 h]; Physical Units [27554.4 h] | 3,197.9 | 3,197.9 | ZNB | CON |  |
| A55360 |  | Pipe Laying | 8d | 2026-08-15 A | 2026-09-20 A | A55350 | 100% | 2026-11-22 | 2026-12-01 |  |  | ICKMO1-cost unite [3997.37 $]; boom truck [200 h]; labor [1200 h]; Sewage Network Circular pipes (GRP) [63.28]; Physical Units [34443 h] | 3,997.37 | 3,997.37 | ZNB | CON | LAY |
| A55370 |  | Install Manhole | 4d | 2026-08-15 A | 2026-09-20 A | A55350 | 100% | 2026-11-22 | 2026-11-26 |  |  | ICKMO1-cost unite [6395.8 $]; boom truck [200 h]; labor [1200 h]; Physical Units [55108.9 h] | 6,395.8 | 6,395.8 | ZNB | CON | MH |
| A55390 |  | Backfilling & Compaction | 4d | 2026-08-15 A | 2026-09-20 A | A55380, A55370, A55340 | 100% | 2026-12-07 | 2026-12-12 |  |  | ICKMO1-cost unite [1598.95 $]; Roller compactor [200 h]; Physical Units [13777.2 h] | 1,598.95 | 1,598.95 | ZNB | CON |  |
| A55380 |  | Testing & Inspection | 2d | 2026-10-12 | 2026-10-14 | A55360 |  |  |  | 9.56d | 0d | ICKMO1-cost unite [799.48 $]; labor [1200 h]; Physical Units [6888.65 h] | 799.48 |  | ZNB | CON |  |

| ID | WBS | Activity | Duration | Start | Finish | Predecessors | Complete | Remaining | Planned start | Planned finish | Total float | Free float | Resources | Cost | Actual cost | ALKHARJ INDUSTERIAL AREA - PROJECT ZONES | ALKHARJ INDUSTERIAL AREA - DECEPLINS | ALKHARJ INDUSTERIAL AREA - Wet networks |
| --- | --- | --- | --- | --- | --- | --- | --- | --- | --- | --- | --- | --- | --- | --- | --- | --- | --- | --- |
|  | MH-3.22 / MH-3.23 | **MH-3.22 / MH-3.23** |  | 2026-08-15 | 2026-10-14 |  |  |  |  |  |  |  |  |  |  |  |  |  |
| A55400 |  | Excavation | 3d | 2026-08-15 A | 2026-09-20 A | A55350, A1990 | 100% |  | 2026-11-22 | 2026-11-25 |  |  | ICKMO1-cost unite [3197.9 $]; Excavator [200 h]; Physical Units [27554.4 h] | 3,197.9 | 3,197.9 | ZNB | CON |  |
| A55410 |  | Pipe Laying | 8d | 2026-08-15 A | 2026-09-20 A | A55400 | 100% |  | 2026-11-25 | 2026-12-05 |  |  | ICKMO1-cost unite [3997.37 $]; boom truck [200 h]; labor [1200 h]; Sewage Network Circular pipes (GRP) [63.28]; Physical Units [34443 h] | 3,997.37 | 3,997.37 | ZNB | CON | LAY |
| A55420 |  | Install Manhole | 4d | 2026-08-15 A | 2026-09-20 A | A55400 | 100% |  | 2026-11-25 | 2026-11-30 |  |  | ICKMO1-cost unite [6395.8 $]; boom truck [200 h]; labor [1200 h]; Physical Units [55108.9 h] | 6,395.8 | 6,395.8 | ZNB | CON | MH |
| A55440 |  | Backfilling & Compaction | 4d | 2026-08-15 A | 2026-09-20 A | A55430, A55420, A55390 | 100% |  | 2026-12-12 | 2026-12-16 |  |  | ICKMO1-cost unite [1598.95 $]; Roller compactor [200 h]; Physical Units [13777.2 h] | 1,598.95 | 1,598.95 | ZNB | CON |  |
| A55430 |  | Testing & Inspection | 2d | 2026-10-12 | 2026-10-14 | A55410 |  |  |  |  | 9.56d | 0d | ICKMO1-cost unite [799.48 $]; labor [1200 h]; Physical Units [6888.65 h] | 799.48 |  | ZNB | CON |  |
|  | MH-3.22.0 / MH-3.22.1 | **MH-3.22.0 / MH-3.22.1** |  | 2026-08-15 | 2026-10-14 |  |  |  |  |  |  |  |  |  |  |  |  |  |
| A55450 |  | Excavation | 3d | 2026-08-15 A | 2026-09-20 A | A55400, A1990 | 100% |  | 2026-11-25 | 2026-11-29 |  |  | ICKMO1-cost unite [3197.9 $]; Excavator [200 h]; Physical Units [27554.4 h] | 3,197.9 | 3,197.9 | ZNB | CON |  |
| A55460 |  | Pipe Laying | 8d | 2026-08-15 A | 2026-09-20 A | A55450 | 100% |  | 2026-11-29 | 2026-12-08 |  |  | ICKMO1-cost unite [3997.37 $]; boom truck [200 h]; labor [1200 h]; Sewage Network Circular pipes (GRP) [63.28]; Physical Units [34443 h] | 3,997.37 | 3,997.37 | ZNB | CON | LAY |
| A55470 |  | Install Manhole | 4d | 2026-08-15 A | 2026-09-20 A | A55450 | 100% |  | 2026-11-29 | 2026-12-03 |  |  | ICKMO1-cost unite [6395.8 $]; boom truck [200 h]; labor [1200 h]; Physical Units [55108.9 h] | 6,395.8 | 6,395.8 | ZNB | CON | MH |
| A55490 |  | Backfilling & Compaction | 4d | 2026-08-15 A | 2026-09-20 A | A55480, A55470, A55440 | 100% |  | 2026-12-16 | 2026-12-21 |  |  | ICKMO1-cost unite [1598.95 $]; Roller compactor [200 h]; Physical Units [13777.2 h] | 1,598.95 | 1,598.95 | ZNB | CON |  |
| A55480 |  | Testing & Inspection | 2d | 2026-10-12 | 2026-10-14 | A55460 |  |  |  |  | 9.56d | 0d | ICKMO1-cost unite [799.48 $]; labor [1200 h]; Physical Units [6888.65 h] | 799.48 |  | ZNB | CON |  |
|  | IRRN1 | **IRRIGATION NETWORK-1** |  | 2026-08-20 | 2027-03-21 |  |  |  |  |  |  |  |  |  |  |  |  |  |
|  | R1 | **Road 18** |  | 2026-08-20 | 2027-01-14 |  |  |  |  |  |  |  |  |  |  |  |  |  |
| A89970 |  | Road Crossing Works | 10d | 2026-08-20 A | 2026-09-28 A | A89960 | 100% |  | 2027-03-13 | 2027-03-24 |  |  | ICKMO1-cost unite [13458.4 $]; Physical Units [115963 h] | 13,458.42 | 13,458.42 | ZNB | CON |  |
| A89960 |  | Pipe Laying | 10d | 2026-09-15 A | 2026-12-10 | A90020 | 99% | 0.1d | 2027-03-01 | 2027-03-13 | 17.7d | 0d | ICKMO1-cost unite [20187.6 $]; Roller compactor [200 h]; JCB [200 h]; Physical Units [173945 h] | 20,187.63 | 19,985.75 | ZNB | CON | LAY |
| A90010 |  | Backfilling | 10d | 2026-09-15 A | 2027-01-14 | A90000, A89970 | 99% | 0.1d | 2027-04-17 | 2027-04-28 | 17.7d | 97d | ICKMO1-cost unite [20187.6 $]; labor [800 h]; Physical Units [173945 h] | 20,187.63 | 19,985.75 | ZNB | CON |  |
| A90020 |  | Trench Excavation | 10d | 2026-09-15 A | 2026-12-10 | A87800, A58910 | 99% | 0.1d | 2027-02-17 | 2027-03-01 | 17.7d | 0d | ICKMO1-cost unite [6729.21 $]; labor [800 h]; Physical Units [57981.7 h] | 6,729.21 | 6,661.92 | ZNB | CON |  |
| A89980 |  | Valve Chambers Civil Works | 10d | 2026-12-10 | 2026-12-22 | A89960 |  |  |  |  | 17.7d | 0d | ICKMO1-cost unite [26916.8 $]; labor [800 h]; Physical Units [231926 h] | 26,916.82 |  | ZNB | CON |  |
| A89990 |  | Valve Installation | 10d | 2026-12-22 | 2027-01-03 | A89980 |  |  |  |  | 17.7d | 0d | ICKMO1-cost unite [40375.2 $]; labor [800 h]; Physical Units [347890 h] | 40,375.24 |  | ZNB | CON |  |
| A90000 |  | Testing | 10d | 2027-01-03 | 2027-01-14 | A89990 |  |  |  |  | 17.7d | 0d | ICKMO1-cost unite [6729.21 $]; Roller compactor [200 h]; JCB [200 h]; Physical Units [57981.7 h] | 6,729.21 |  | ZNB | CON |  |
|  | R11 | **Road 19** |  | 2026-08-20 | 2027-01-14 |  |  |  |  |  |  |  |  |  |  |  |  |  |
| A90040 |  | Road Crossing Works | 10d | 2026-08-20 A | 2026-09-28 A | A90030 | 100% |  | 2027-07-01 | 2027-07-13 |  |  | ICKMO1-cost unite [13458.4 $]; Physical Units [115963 h] | 13,458.42 | 13,458.42 | ZNB | CON |  |
| A90030 |  | Pipe Laying | 10d | 2026-09-15 A | 2026-12-10 | A90090 | 98% | 0.2d | 2027-06-20 | 2027-07-01 | 17.26d | 0d | ICKMO1-cost unite [20187.6 $]; Roller compactor [200 h]; JCB [200 h]; Physical Units [173945 h] | 20,187.63 | 19,783.87 | ZNB | CON | LAY |
| A90080 |  | Backfilling | 10d | 2026-09-15 A | 2027-01-14 | A90070, A90040 | 98% | 0.2d | 2027-03-29 | 2027-04-10 | 17.26d | 96.56d | ICKMO1-cost unite [20187.6 $]; labor [800 h]; Physical Units [173945 h] | 20,187.63 | 19,783.87 | ZNB | CON |  |
| A90090 |  | Trench Excavation | 10d | 2026-09-15 A | 2026-12-10 | A87870, A58910 | 98% | 0.2d | 2027-06-08 | 2027-06-20 | 17.26d | 0d | ICKMO1-cost unite [6729.21 $]; labor [800 h]; Physical Units [57981.7 h] | 6,729.21 | 6,594.62 | ZNB | CON |  |
| A90050 |  | Valve Chambers Civil Works | 10d | 2026-12-10 | 2026-12-22 | A90030 |  |  |  |  | 17.26d | 0d | ICKMO1-cost unite [26916.8 $]; labor [800 h]; Physical Units [231926 h] | 26,916.82 |  | ZNB | CON |  |
| A90060 |  | Valve Installation | 10d | 2026-12-22 | 2027-01-03 | A90050 |  |  |  |  | 17.26d | 0d | ICKMO1-cost unite [40375.2 $]; labor [800 h]; Physical Units [347890 h] | 40,375.24 |  | ZNB | CON |  |
| A90070 |  | Testing | 10d | 2027-01-03 | 2027-01-14 | A90060 |  |  |  |  | 17.26d | 0d | ICKMO1-cost unite [6729.21 $]; Roller compactor [200 h]; JCB [200 h]; Physical Units [57981.7 h] | 6,729.21 |  | ZNB | CON |  |

| ID | WBS | Activity | Duration | Start | Finish | Predecessors | Complete | Remaining | Planned start | Planned finish | Total float | Free float | Resources | Cost | Actual cost | ALKHARJ INDUSTERIAL AREA - PROJECT ZONES | ALKHARJ INDUSTERIAL AREA - DECEPLINS | ALKHARJ INDUSTERIAL AREA - Wet networks |
| --- | --- | --- | --- | --- | --- | --- | --- | --- | --- | --- | --- | --- | --- | --- | --- | --- | --- | --- |
|  | R1111 | **Road 21** |  | 2026-08-20 | 2027-02-17 |  |  |  |  |  |  |  |  |  |  |  |  |  |
| A90180 |  | Road Crossing Works | 10d | 2026-08-20 A | 2026-09-28 A | A90170 | 100% |  | 2027-03-08 | 2027-03-20 |  |  | ICKMO1-cost unite [13458.4 $]; Physical Units [115963 h] | 13,458.42 | 13,458.42 | ZNB | CON |  |
| A90230 |  | Trench Excavation | 10d | 2026-12-09 | 2026-12-21 | A88010, A58910 |  |  |  |  | -11.72d | 0d | ICKMO1-cost unite [6729.21 $]; labor [800 h]; Physical Units [57981.7 h] | 6,729.21 |  | ZNB | CON |  |
| A90170 |  | Pipe Laying | 10d | 2026-12-21 | 2027-01-02 | A90230 |  |  |  |  | -11.72d | 0d | ICKMO1-cost unite [20187.6 $]; Roller compactor [200 h]; JCB [200 h]; Physical Units [173945 h] | 20,187.63 |  | ZNB | CON | LAY |
| A90190 |  | Valve Chambers Civil Works | 10d | 2027-01-02 | 2027-01-13 | A90170 |  |  |  |  | -11.72d | 0d | ICKMO1-cost unite [26916.8 $]; labor [800 h]; Physical Units [231926 h] | 26,916.82 |  | ZNB | CON |  |
| A90200 |  | Valve Installation | 10d | 2027-01-13 | 2027-01-25 | A90190 |  |  |  |  | -11.72d | 0d | ICKMO1-cost unite [40375.2 $]; labor [800 h]; Physical Units [347890 h] | 40,375.24 |  | ZNB | CON |  |
| A90210 |  | Testing | 10d | 2027-01-25 | 2027-02-06 | A90200 |  |  |  |  | -11.72d | 0d | ICKMO1-cost unite [6729.21 $]; Roller compactor [200 h]; JCB [200 h]; Physical Units [57981.7 h] | 6,729.21 |  | ZNB | CON |  |
| A90220 |  | Backfilling | 10d | 2027-02-06 | 2027-02-17 | A90210, A90180 |  |  |  |  | -11.72d | 67.58d | ICKMO1-cost unite [20187.6 $]; labor [800 h]; Physical Units [173945 h] | 20,187.63 |  | ZNB | CON |  |
|  | R112 | **Road 20** |  | 2026-08-20 | 2027-01-14 |  |  |  |  |  |  |  |  |  |  |  |  |  |
| A90110 |  | Road Crossing Works | 10d | 2026-08-20 A | 2026-09-28 A | A90100 | 100% |  | 2027-07-01 | 2027-07-13 |  |  | ICKMO1-cost unite [13458.4 $]; Physical Units [115963 h] | 13,458.42 | 13,458.42 | ZNB | CON |  |
| A90100 |  | Pipe Laying | 10d | 2026-09-15 A | 2026-12-10 | A90160 | 98% | 0.2d | 2027-06-20 | 2027-07-01 | 17.68d | 0d | ICKMO1-cost unite [20187.6 $]; Roller compactor [200 h]; JCB [200 h]; Physical Units [173945 h] | 20,187.63 | 19,783.87 | ZNB | CON | LAY |
| A90150 |  | Backfilling | 10d | 2026-09-15 A | 2027-01-14 | A90140, A90110 | 98% | 0.2d | 2027-03-27 | 2027-04-07 | 17.68d | 96.98d | ICKMO1-cost unite [20187.6 $]; labor [800 h]; Physical Units [173945 h] | 20,187.63 | 19,783.87 | ZNB | CON |  |
| A90160 |  | Trench Excavation | 10d | 2026-09-15 A | 2026-12-09 | A87940, A58910 | 98% | 0.2d | 2027-06-08 | 2027-06-20 | 17.68d | 0d | ICKMO1-cost unite [6729.21 $]; labor [800 h]; Physical Units [57981.7 h] | 6,729.21 | 6,594.62 | ZNB | CON |  |
| A90120 |  | Valve Chambers Civil Works | 10d | 2026-12-10 | 2026-12-22 | A90100 |  |  |  |  | 17.68d | 0d | ICKMO1-cost unite [26916.8 $]; labor [800 h]; Physical Units [231926 h] | 26,916.82 |  | ZNB | CON |  |
| A90130 |  | Valve Installation | 10d | 2026-12-22 | 2027-01-03 | A90120 |  |  |  |  | 17.68d | 0d | ICKMO1-cost unite [40375.2 $]; labor [800 h]; Physical Units [347890 h] | 40,375.24 |  | ZNB | CON |  |
| A90140 |  | Testing | 10d | 2027-01-03 | 2027-01-14 | A90130 |  |  |  |  | 17.68d | 0d | ICKMO1-cost unite [6729.21 $]; Roller compactor [200 h]; JCB [200 h]; Physical Units [57981.7 h] | 6,729.21 |  | ZNB | CON |  |
|  | R121 | **Road 22** |  | 2026-08-20 | 2027-01-23 |  |  |  |  |  |  |  |  |  |  |  |  |  |
| A90250 |  | Road Crossing Works | 10d | 2026-08-20 A | 2026-09-28 A | A90240 | 100% |  | 2027-07-01 | 2027-07-13 |  |  | ICKMO1-cost unite [13458.4 $]; Physical Units [115963 h] | 13,458.42 | 13,458.42 | ZNB | CON |  |
| A90240 |  | Pipe Laying | 10d | 2026-09-15 A | 2026-12-19 | A90300 | 97% | 0.3d | 2027-06-20 | 2027-07-01 | 10.38d | 0d | ICKMO1-cost unite [20187.6 $]; Roller compactor [200 h]; JCB [200 h]; Physical Units [173945 h] | 20,187.63 | 19,582 | ZNB | CON | LAY |
| A90290 |  | Backfilling | 10d | 2026-09-15 A | 2027-01-23 | A90280, A90250 | 97% | 0.3d | 2027-04-17 | 2027-04-28 | 10.38d | 89.68d | ICKMO1-cost unite [20187.6 $]; labor [800 h]; Physical Units [173945 h] | 20,187.63 | 19,582 | ZNB | CON |  |
| A90300 |  | Trench Excavation | 10d | 2026-09-15 A | 2026-12-19 | A88080, A58910 | 97% | 0.3d | 2027-06-08 | 2027-06-20 | 10.38d | 0d | ICKMO1-cost unite [6729.21 $]; labor [800 h]; Physical Units [57981.7 h] | 6,729.21 | 6,527.33 | ZNB | CON |  |
| A90260 |  | Valve Chambers Civil Works | 10d | 2026-12-19 | 2026-12-30 | A90240 |  |  |  |  | 10.38d | 0d | ICKMO1-cost unite [26916.8 $]; labor [800 h]; Physical Units [231926 h] | 26,916.82 |  | ZNB | CON |  |
| A90270 |  | Valve Installation | 10d | 2026-12-30 | 2027-01-11 | A90260 |  |  |  |  | 10.38d | 0d | ICKMO1-cost unite [40375.2 $]; labor [800 h]; Physical Units [347890 h] | 40,375.24 |  | ZNB | CON |  |
| A90280 |  | Testing | 10d | 2027-01-11 | 2027-01-23 | A90270 |  |  |  |  | 10.38d | 0d | ICKMO1-cost unite [6729.21 $]; Roller compactor [200 h]; JCB [200 h]; Physical Units [57981.7 h] | 6,729.21 |  | ZNB | CON |  |

| ID | WBS | Activity | Duration | Start | Finish | Predecessors | Complete | Remaining | Planned start | Planned finish | Total float | Free float | Resources | Cost | Actual cost | ALKHARJ INDUSTERIAL AREA - PROJECT ZONES | ALKHARJ INDUSTERIAL AREA - DECEPLINS | ALKHARJ INDUSTERIAL AREA - Wet networks |
| --- | --- | --- | --- | --- | --- | --- | --- | --- | --- | --- | --- | --- | --- | --- | --- | --- | --- | --- |
|  | R1121 | **Road 24** |  | 2026-08-20 | 2027-03-06 |  |  |  |  |  |  |  |  |  |  |  |  |  |
| A89900 |  | Road Crossing Works | 10d | 2026-08-20 A | 2026-09-28 A | A89890 | 100% |  | 2027-03-25 | 2027-04-06 |  |  | ICKMO1-cost unite [13458.4 $]; Physical Units [115963 h] | 13,458.42 | 13,458.42 | ZNB | CON |  |
| A89950 |  | Trench Excavation | 10d | 2026-12-26 | 2027-01-06 | A88500, A58910 |  |  |  |  | -25.72d | 0d | ICKMO1-cost unite [6729.21 $]; labor [800 h]; Physical Units [57981.7 h] | 6,729.21 |  | ZNB | CON |  |
| A89890 |  | Pipe Laying | 10d | 2027-01-06 | 2027-01-18 | A89950 |  |  |  |  | -25.72d | 0d | ICKMO1-cost unite [20187.6 $]; Roller compactor [200 h]; JCB [200 h]; Physical Units [173945 h] | 20,187.63 |  | ZNB | CON | LAY |
| A89910 |  | Valve Chambers Civil Works | 10d | 2027-01-18 | 2027-01-30 | A89890 |  |  |  |  | -25.72d | 0d | ICKMO1-cost unite [26916.8 $]; labor [800 h]; Physical Units [231926 h] | 26,916.82 |  | ZNB | CON |  |
| A89920 |  | Valve Installation | 10d | 2027-01-30 | 2027-02-10 | A89910 |  |  |  |  | -25.72d | 0d | ICKMO1-cost unite [40375.2 $]; labor [800 h]; Physical Units [347890 h] | 40,375.24 |  | ZNB | CON |  |
| A89930 |  | Testing | 10d | 2027-02-10 | 2027-02-22 | A89920 |  |  |  |  | -25.72d | 0d | ICKMO1-cost unite [6729.21 $]; Roller compactor [200 h]; JCB [200 h]; Physical Units [57981.7 h] | 6,729.21 |  | ZNB | CON |  |
| A89940 |  | Backfilling | 10d | 2027-02-22 | 2027-03-06 | A89930, A89900 |  |  |  |  | -25.72d | 53.58d | ICKMO1-cost unite [20187.6 $]; labor [800 h]; Physical Units [173945 h] | 20,187.63 |  | ZNB | CON |  |
|  | R113 | **Road 23** |  | 2026-08-20 | 2027-02-02 |  |  |  |  |  |  |  |  |  |  |  |  |  |
| A90320 |  | Road Crossing Works | 10d | 2026-08-20 A | 2026-09-28 A | A90310 | 100% |  | 2027-07-18 | 2027-07-29 |  |  | ICKMO1-cost unite [13458.4 $]; Physical Units [115963 h] | 13,458.42 | 13,458.42 | ZNB | CON |  |
| A90310 |  | Pipe Laying | 10d | 2026-09-15 A | 2026-12-29 | A90370 | 99% | 0.1d | 2027-07-06 | 2027-07-18 | 1.18d | 0d | ICKMO1-cost unite [20187.6 $]; Roller compactor [200 h]; JCB [200 h]; Physical Units [173945 h] | 20,187.63 | 19,985.75 | ZNB | CON | LAY |
| A90360 |  | Backfilling | 10d | 2026-09-15 A | 2027-02-02 | A90350, A90320 | 99% | 0.1d | 2027-05-02 | 2027-05-13 | 1.18d | 80.48d | ICKMO1-cost unite [20187.6 $]; labor [800 h]; Physical Units [173945 h] | 20,187.63 | 19,985.75 | ZNB | CON |  |
| A90370 |  | Trench Excavation | 10d | 2026-09-15 A | 2026-12-29 | A88570, A58910 | 99% | 0.1d | 2027-06-24 | 2027-07-06 | 1.18d | 0d | ICKMO1-cost unite [6729.21 $]; labor [800 h]; Physical Units [57981.7 h] | 6,729.21 | 6,661.92 | ZNB | CON |  |
| A90330 |  | Valve Chambers Civil Works | 10d | 2026-12-29 | 2027-01-10 | A90310 |  |  |  |  | 1.18d | 0d | ICKMO1-cost unite [26916.8 $]; labor [800 h]; Physical Units [231926 h] | 26,916.82 |  | ZNB | CON |  |
| A90340 |  | Valve Installation | 10d | 2027-01-10 | 2027-01-21 | A90330 |  |  |  |  | 1.18d | 0d | ICKMO1-cost unite [40375.2 $]; labor [800 h]; Physical Units [347890 h] | 40,375.24 |  | ZNB | CON |  |
| A90350 |  | Testing | 10d | 2027-01-21 | 2027-02-02 | A90340 |  |  |  |  | 1.18d | 0d | ICKMO1-cost unite [6729.21 $]; Roller compactor [200 h]; JCB [200 h]; Physical Units [57981.7 h] | 6,729.21 |  | ZNB | CON |  |
|  | R11111 | **Road 25** |  | 2026-08-20 | 2027-02-17 |  |  |  |  |  |  |  |  |  |  |  |  |  |
| A90390 |  | Road Crossing Works | 10d | 2026-08-20 A | 2026-09-28 A | A90380 | 100% |  | 2027-03-10 | 2027-03-22 |  |  | ICKMO1-cost unite [13458.4 $]; Physical Units [115963 h] | 13,458.42 | 13,458.42 | ZNB | CON |  |
| A90440 |  | Trench Excavation | 10d | 2026-12-09 | 2026-12-21 | A88430, A58910 |  |  |  |  | -11.72d | 0d | ICKMO1-cost unite [6729.21 $]; labor [800 h]; Physical Units [57981.7 h] | 6,729.21 |  | ZNB | CON |  |
| A90380 |  | Pipe Laying | 10d | 2026-12-21 | 2027-01-02 | A90440 |  |  |  |  | -11.72d | 0d | ICKMO1-cost unite [20187.6 $]; Roller compactor [200 h]; JCB [200 h]; Physical Units [173945 h] | 20,187.63 |  | ZNB | CON | LAY |
| A90400 |  | Valve Chambers Civil Works | 10d | 2027-01-02 | 2027-01-13 | A90380 |  |  |  |  | -11.72d | 0d | ICKMO1-cost unite [26916.8 $]; labor [800 h]; Physical Units [231926 h] | 26,916.82 |  | ZNB | CON |  |
| A90410 |  | Valve Installation | 10d | 2027-01-13 | 2027-01-25 | A90400 |  |  |  |  | -11.72d | 0d | ICKMO1-cost unite [40375.2 $]; labor [800 h]; Physical Units [347890 h] | 40,375.24 |  | ZNB | CON |  |
| A90420 |  | Testing | 10d | 2027-01-25 | 2027-02-06 | A90410 |  |  |  |  | -11.72d | 0d | ICKMO1-cost unite [6729.21 $]; Roller compactor [200 h]; JCB [200 h]; Physical Units [57981.7 h] | 6,729.21 |  | ZNB | CON |  |
| A90430 |  | Backfilling | 10d | 2027-02-06 | 2027-02-17 | A90420, A90390 |  |  |  |  | -11.72d | 67.58d | ICKMO1-cost unite [20187.6 $]; labor [800 h]; Physical Units [173945 h] | 20,187.63 |  | ZNB | CON |  |

| ID | WBS | Activity | Duration | Start | Finish | Predecessors | Complete | Remaining | Planned start | Planned finish | Total float | Free float | Resources | Cost | Actual cost | ALKHARJ INDUSTERIAL AREA - PROJECT ZONES | ALKHARJ INDUSTERIAL AREA - DECEPLINS | ALKHARJ INDUSTERIAL AREA - Wet networks |
| --- | --- | --- | --- | --- | --- | --- | --- | --- | --- | --- | --- | --- | --- | --- | --- | --- | --- | --- |
|  | R13 | **Road 26** |  | 2026-08-20 | 2027-02-06 |  |  |  |  |  |  |  |  |  |  |  |  |  |
| A90460 |  | Road Crossing Works | 10d | 2026-08-20 A | 2026-09-28 A | A90450 | 100% |  | 2027-07-26 | 2027-08-07 |  |  | ICKMO1-cost unite [13458.4 $]; Physical Units [115963 h] | 13,458.42 | 13,458.42 | ZNB | CON |  |
| A90450 |  | Pipe Laying | 10d | 2026-09-15 A | 2026-12-31 | A90510 | 95% | 0.5d | 2027-07-14 | 2027-07-26 | -1.2d | 0d | ICKMO1-cost unite [20187.6 $]; Roller compactor [200 h]; JCB [200 h]; Physical Units [173945 h] | 20,187.63 | 19,178.24 | ZNB | CON | LAY |
| A90500 |  | Backfilling | 10d | 2026-09-15 A | 2027-02-06 | A90490, A90460 | 95% | 0.5d | 2027-04-12 | 2027-04-24 | -1.2d | 78.1d | ICKMO1-cost unite [20187.6 $]; labor [800 h]; Physical Units [173945 h] | 20,187.63 | 19,178.24 | ZNB | CON |  |
| A90510 |  | Trench Excavation | 10d | 2026-09-15 A | 2026-12-31 | A88360, A58910 | 95% | 0.5d | 2027-07-03 | 2027-07-14 | -1.2d | 0d | ICKMO1-cost unite [6729.21 $]; labor [800 h]; Physical Units [57981.7 h] | 6,729.21 | 6,392.75 | ZNB | CON |  |
| A90470 |  | Valve Chambers Civil Works | 10d | 2026-12-31 | 2027-01-12 | A90450 |  |  |  |  | -1.2d | 0d | ICKMO1-cost unite [26916.8 $]; labor [800 h]; Physical Units [231926 h] | 26,916.82 |  | ZNB | CON |  |
| A90480 |  | Valve Installation | 10d | 2027-01-12 | 2027-01-24 | A90470 |  |  |  |  | -1.2d | 0d | ICKMO1-cost unite [40375.2 $]; labor [800 h]; Physical Units [347890 h] | 40,375.24 |  | ZNB | CON |  |
| A90490 |  | Testing | 10d | 2027-01-24 | 2027-02-04 | A90480 |  |  |  |  | -1.2d | 0d | ICKMO1-cost unite [6729.21 $]; Roller compactor [200 h]; JCB [200 h]; Physical Units [57981.7 h] | 6,729.21 |  | ZNB | CON |  |
|  | R12 | **Road 27** |  | 2026-08-20 | 2027-01-14 |  |  |  |  |  |  |  |  |  |  |  |  |  |
| A90530 |  | Road Crossing Works | 10d | 2026-08-20 A | 2026-09-28 A | A90520 | 100% |  | 2027-06-22 | 2027-07-04 |  |  | ICKMO1-cost unite [13458.4 $]; Physical Units [115963 h] | 13,458.42 | 13,458.42 | ZNB | CON |  |
| A90520 |  | Pipe Laying | 10d | 2026-09-15 A | 2026-12-10 | A90580 | 97% | 0.3d | 2027-06-10 | 2027-06-22 | 17.38d | 0d | ICKMO1-cost unite [20187.6 $]; Roller compactor [200 h]; JCB [200 h]; Physical Units [173945 h] | 20,187.63 | 19,582 | ZNB | CON | LAY |
| A90570 |  | Backfilling | 10d | 2026-09-15 A | 2027-01-14 | A90560, A90530 | 97% | 0.3d | 2027-03-29 | 2027-04-10 | 17.38d | 96.68d | ICKMO1-cost unite [20187.6 $]; labor [800 h]; Physical Units [173945 h] | 20,187.63 | 19,582 | ZNB | CON |  |
| A90580 |  | Trench Excavation | 10d | 2026-09-15 A | 2026-12-10 | A88290, A58910 | 97% | 0.3d | 2027-05-30 | 2027-06-10 | 17.38d | 0d | ICKMO1-cost unite [6729.21 $]; labor [800 h]; Physical Units [57981.7 h] | 6,729.21 | 6,527.33 | ZNB | CON |  |
| A90540 |  | Valve Chambers Civil Works | 10d | 2026-12-10 | 2026-12-22 | A90520 |  |  |  |  | 17.38d | 0d | ICKMO1-cost unite [26916.8 $]; labor [800 h]; Physical Units [231926 h] | 26,916.82 |  | ZNB | CON |  |
| A90550 |  | Valve Installation | 10d | 2026-12-22 | 2027-01-03 | A90540 |  |  |  |  | 17.38d | 0d | ICKMO1-cost unite [40375.2 $]; labor [800 h]; Physical Units [347890 h] | 40,375.24 |  | ZNB | CON |  |
| A90560 |  | Testing | 10d | 2027-01-03 | 2027-01-14 | A90550 |  |  |  |  | 17.38d | 0d | ICKMO1-cost unite [6729.21 $]; Roller compactor [200 h]; JCB [200 h]; Physical Units [57981.7 h] | 6,729.21 |  | ZNB | CON |  |
|  | R111 | **Collector 2** |  | 2026-08-20 | 2027-01-16 |  |  |  |  |  |  |  |  |  |  |  |  |  |
| A90810 |  | Road Crossing Works | 10d | 2026-08-20 A | 2026-09-28 A | A90800 | 100% |  | 2027-07-01 | 2027-07-13 |  |  | ICKMO1-cost unite [13458.4 $]; Physical Units [115963 h] | 13,458.42 | 13,458.42 | ZNB | CON |  |
| A90800 |  | Pipe Laying | 10d | 2026-09-15 A | 2026-12-10 | A90860 | 97% | 0.3d | 2027-06-20 | 2027-07-01 | 16.98d | 0d | ICKMO1-cost unite [20187.6 $]; Roller compactor [200 h]; JCB [200 h]; Physical Units [173945 h] | 20,187.63 | 19,582 | ZNB | CON | LAY |
| A90850 |  | Backfilling | 10d | 2026-09-15 A | 2027-01-16 | A90840, A90810 | 97% | 0.3d | 2027-03-28 | 2027-04-08 | 16.98d | 96.28d | ICKMO1-cost unite [20187.6 $]; labor [800 h]; Physical Units [173945 h] | 20,187.63 | 19,582 | ZNB | CON |  |
| A90860 |  | Trench Excavation | 10d | 2026-09-15 A | 2026-12-10 | A88220, A58910 | 97% | 0.3d | 2027-06-08 | 2027-06-20 | 16.98d | 0d | ICKMO1-cost unite [6729.21 $]; labor [800 h]; Physical Units [57981.7 h] | 6,729.21 | 6,527.33 | ZNB | CON |  |
| A90820 |  | Valve Chambers Civil Works | 10d | 2026-12-10 | 2026-12-22 | A90800 |  |  |  |  | 16.98d | 0d | ICKMO1-cost unite [26916.8 $]; labor [800 h]; Physical Units [231926 h] | 26,916.82 |  | ZNB | CON |  |
| A90830 |  | Valve Installation | 10d | 2026-12-22 | 2027-01-03 | A90820 |  |  |  |  | 16.98d | 0d | ICKMO1-cost unite [40375.2 $]; labor [800 h]; Physical Units [347890 h] | 40,375.24 |  | ZNB | CON |  |
| A90840 |  | Testing | 10d | 2027-01-03 | 2027-01-14 | A90830 |  |  |  |  | 16.98d | 0d | ICKMO1-cost unite [6729.21 $]; Roller compactor [200 h]; JCB [200 h]; Physical Units [57981.7 h] | 6,729.21 |  | ZNB | CON |  |

| ID | WBS | Activity | Duration | Start | Finish | Predecessors | Complete | Remaining | Planned start | Planned finish | Total float | Free float | Resources | Cost | Actual cost | ALKHARJ INDUSTERIAL AREA - PROJECT ZONES | ALKHARJ INDUSTERIAL AREA - DECEPLINS | ALKHARJ INDUSTERIAL AREA - Wet networks |
| --- | --- | --- | --- | --- | --- | --- | --- | --- | --- | --- | --- | --- | --- | --- | --- | --- | --- | --- |
|  | R1112 | **Arterial 1** |  | 2026-08-20 | 2027-02-01 |  |  |  |  |  |  |  |  |  |  |  |  |  |
| A90880 |  | Road Crossing Works | 10d | 2026-08-20 A | 2026-09-28 A | A90870 | 100% |  | 2027-03-09 | 2027-03-21 |  |  | ICKMO1-cost unite [13458.4 $]; Physical Units [115963 h] | 13,458.42 | 13,458.42 | ZNB | CON |  |
| A90870 |  | Pipe Laying | 10d | 2026-09-15 A | 2026-12-26 | A90930 | 30% | 7d | 2027-02-25 | 2027-03-09 | 2.04d | 0d | ICKMO1-cost unite [20187.6 $]; Roller compactor [200 h]; JCB [200 h]; Physical Units [173945 h] | 20,187.63 | 6,056.29 | ZNB | CON | LAY |
| A90930 |  | Trench Excavation | 10d | 2026-09-15 A | 2026-12-17 | A88150, A58910 | 30% | 7d | 2027-02-14 | 2027-02-25 | -38.96d | 0d | ICKMO1-cost unite [6729.21 $]; labor [800 h]; Physical Units [57981.7 h] | 6,729.21 | 2,018.76 | ZNB | CON |  |
| A90890 |  | Valve Chambers Civil Works | 10d | 2026-12-26 | 2027-01-06 | A90870 |  |  |  |  | 2.04d | 0d | ICKMO1-cost unite [26916.8 $]; labor [800 h]; Physical Units [231926 h] | 26,916.82 |  | ZNB | CON |  |
| A90900 |  | Valve Installation | 10d | 2027-01-06 | 2027-01-18 | A90890 |  |  |  |  | 2.04d | 0d | ICKMO1-cost unite [40375.2 $]; labor [800 h]; Physical Units [347890 h] | 40,375.24 |  | ZNB | CON |  |
| A90910 |  | Testing | 2d | 2027-01-18 | 2027-01-20 | A90900 |  |  |  |  | 2.04d | 0d | ICKMO1-cost unite [6729.21 $]; Roller compactor [200 h]; JCB [200 h]; Physical Units [57981.7 h] | 6,729.21 |  | ZNB | CON |  |
| A90920 |  | Backfilling | 10d | 2027-01-20 | 2027-02-01 | A90910, A90880 |  |  |  |  | 2.04d | 81.34d | ICKMO1-cost unite [20187.6 $]; labor [800 h]; Physical Units [173945 h] | 20,187.63 |  | ZNB | CON |  |
|  | R122 | **Arterial 2** |  | 2026-08-20 | 2027-02-25 |  |  |  |  |  |  |  |  |  |  |  |  |  |
| A90740 |  | Road Crossing Works | 10d | 2026-08-20 A | 2026-09-28 A | A90730 | 100% |  | 2027-03-21 | 2027-04-01 |  |  | ICKMO1-cost unite [13458.4 $]; Physical Units [115963 h] | 13,458.42 | 13,458.42 | ZNB | CON |  |
| A90790 |  | Trench Excavation | 10d | 2026-12-17 | 2026-12-29 | A90930, A58910 |  |  |  |  | -38.96d | 0d | ICKMO1-cost unite [6729.21 $]; labor [800 h]; Physical Units [57981.7 h] | 6,729.21 |  | ZNB | CON |  |
| A90730 |  | Pipe Laying | 10d | 2026-12-29 | 2027-01-10 | A90790 |  |  |  |  | -18.96d | 0d | ICKMO1-cost unite [20187.6 $]; Roller compactor [200 h]; JCB [200 h]; Physical Units [173945 h] | 20,187.63 |  | ZNB | CON | LAY |
| A90750 |  | Valve Chambers Civil Works | 10d | 2027-01-10 | 2027-01-21 | A90730 |  |  |  |  | -18.96d | 0d | ICKMO1-cost unite [26916.8 $]; labor [800 h]; Physical Units [231926 h] | 26,916.82 |  | ZNB | CON |  |
| A90760 |  | Valve Installation | 10d | 2027-01-21 | 2027-02-02 | A90750 |  |  |  |  | -18.96d | 0d | ICKMO1-cost unite [40375.2 $]; labor [800 h]; Physical Units [347890 h] | 40,375.24 |  | ZNB | CON |  |
| A90770 |  | Testing | 10d | 2027-02-02 | 2027-02-14 | A90760 |  |  |  |  | -18.96d | 0d | ICKMO1-cost unite [6729.21 $]; Roller compactor [200 h]; JCB [200 h]; Physical Units [57981.7 h] | 6,729.21 |  | ZNB | CON |  |
| A90780 |  | Backfilling | 10d | 2027-02-14 | 2027-02-25 | A90770, A90740 |  |  |  |  | -18.96d | 60.34d | ICKMO1-cost unite [20187.6 $]; labor [800 h]; Physical Units [173945 h] | 20,187.63 |  | ZNB | CON |  |
|  | R111111 | **ROUND ABOUT 1** |  | 2026-08-20 | 2027-03-09 |  |  |  |  |  |  |  |  |  |  |  |  |  |
| A90600 |  | Road Crossing Works | 10d | 2026-08-20 A | 2026-09-28 A | A90590 | 100% |  | 2027-04-01 | 2027-04-13 |  |  | ICKMO1-cost unite [13458.4 $]; Physical Units [115963 h] | 13,458.42 | 13,458.42 | ZNB | CON |  |
| A90650 |  | Trench Excavation | 10d | 2026-12-29 | 2027-01-10 | A90790, A58910 |  |  |  |  | -38.96d | 0d | ICKMO1-cost unite [6729.21 $]; labor [800 h]; Physical Units [57981.7 h] | 6,729.21 |  | ZNB | CON |  |
| A90590 |  | Pipe Laying | 10d | 2027-01-10 | 2027-01-21 | A90650 |  |  |  |  | -28.96d | 0d | ICKMO1-cost unite [20187.6 $]; Roller compactor [200 h]; JCB [200 h]; Physical Units [173945 h] | 20,187.63 |  | ZNB | CON | LAY |
| A90610 |  | Valve Chambers Civil Works | 10d | 2027-01-21 | 2027-02-02 | A90590 |  |  |  |  | -28.96d | 0d | ICKMO1-cost unite [26916.8 $]; labor [800 h]; Physical Units [231926 h] | 26,916.82 |  | ZNB | CON |  |
| A90620 |  | Valve Installation | 10d | 2027-02-02 | 2027-02-14 | A90610 |  |  |  |  | -28.96d | 0d | ICKMO1-cost unite [40375.2 $]; labor [800 h]; Physical Units [347890 h] | 40,375.24 |  | ZNB | CON |  |
| A90630 |  | Testing | 10d | 2027-02-14 | 2027-02-25 | A90620 |  |  |  |  | -28.96d | 0d | ICKMO1-cost unite [6729.21 $]; Roller compactor [200 h]; JCB [200 h]; Physical Units [57981.7 h] | 6,729.21 |  | ZNB | CON |  |
| A90640 |  | Backfilling | 10d | 2027-02-25 | 2027-03-09 | A90630, A90600 |  |  |  |  | -28.96d | 50.34d | ICKMO1-cost unite [20187.6 $]; labor [800 h]; Physical Units [173945 h] | 20,187.63 |  | ZNB | CON |  |

| ID | WBS | Activity | Duration | Start | Finish | Predecessors | Complete | Remaining | Planned start | Planned finish | Total float | Free float | Resources | Cost | Actual cost | ALKHARJ INDUSTERIAL AREA - PROJECT ZONES | ALKHARJ INDUSTERIAL AREA - DECEPLINS | ALKHARJ INDUSTERIAL AREA - Wet networks |
| --- | --- | --- | --- | --- | --- | --- | --- | --- | --- | --- | --- | --- | --- | --- | --- | --- | --- | --- |
|  | R131 | **ROUND ABOUT 2** |  | 2026-08-20 | 2027-03-21 |  |  |  |  |  |  |  |  |  |  |  |  |  |
| A90670 |  | Road Crossing Works | 10d | 2026-08-20 A | 2026-09-28 A | A90660 | 100% |  | 2027-04-13 | 2027-04-25 |  |  | ICKMO1-cost unite [13458.4 $]; Physical Units [115963 h] | 13,458.42 | 13,458.42 | ZNB | CON |  |
| A90720 |  | Trench Excavation | 10d | 2027-01-10 | 2027-01-21 | A90650, A58910 |  |  |  |  | -38.96d | 0d | ICKMO1-cost unite [6729.21 $]; labor [800 h]; Physical Units [57981.7 h] | 6,729.21 |  | ZNB | CON |  |
| A90660 |  | Pipe Laying | 10d | 2027-01-21 | 2027-02-02 | A90720 |  |  |  |  | -38.96d | 0d | ICKMO1-cost unite [20187.6 $]; Roller compactor [200 h]; JCB [200 h]; Physical Units [173945 h] | 20,187.63 |  | ZNB | CON | LAY |
| A90680 |  | Valve Chambers Civil Works | 10d | 2027-02-02 | 2027-02-14 | A90660 |  |  |  |  | -38.96d | 0d | ICKMO1-cost unite [26916.8 $]; labor [800 h]; Physical Units [231926 h] | 26,916.82 |  | ZNB | CON |  |
| A90690 |  | Valve Installation | 10d | 2027-02-14 | 2027-02-25 | A90680 |  |  |  |  | -38.96d | 0d | ICKMO1-cost unite [40375.2 $]; labor [800 h]; Physical Units [347890 h] | 40,375.24 |  | ZNB | CON |  |
| A90700 |  | Testing | 10d | 2027-02-25 | 2027-03-09 | A90690 |  |  |  |  | -38.96d | 0d | ICKMO1-cost unite [6729.21 $]; Roller compactor [200 h]; JCB [200 h]; Physical Units [57981.7 h] | 6,729.21 |  | ZNB | CON |  |
| A90710 |  | Backfilling | 10d | 2027-03-09 | 2027-03-21 | A90700, A90670 |  |  |  |  | -38.96d | 40.34d | ICKMO1-cost unite [20187.6 $]; labor [800 h]; Physical Units [173945 h] | 20,187.63 |  | ZNB | CON |  |
|  | ROL | **ROAD LIGHING** |  | 2026-09-15 | 2027-07-03 |  |  |  |  |  |  |  |  |  |  |  |  |  |
|  | 1 | **PSS 8714 - loop 01 Zone B** |  | 2026-09-15 | 2027-05-19 |  |  |  |  |  |  |  |  |  |  |  |  |  |
| A86410 |  | Trenching for lighting network | 10d | 2026-09-15 A | 2027-05-01 | A86160, A63620 | 95% | 0.5d | 2027-11-14 | 2027-11-25 | 53.5d | 0d | ICKMO1-cost unite [230618 $]; labor [800 h]; Physical Units [1987096 h] | 230,617.51 | 219,086.63 | ZNB | CON |  |
| A86420 |  | Installation of lighting poles & luminaires | 14d | 2026-09-15 A | 2027-05-11 | A86430 SS+6d, A86430 FF+6d | 75% | 3.5d | 2027-12-05 | 2027-12-21 | 163.5d | 121.5d | ICKMO1-cost unite [345926 $]; labor [800 h]; Physical Units [2980644 h] | 345,926.26 | 259,444.7 | ZNB | CON |  |
| A86430 |  | Installation of lighting poles foundations | 14d | 2026-09-15 A | 2027-05-04 | A86440 SS+6d | 75% | 3.5d | 2027-11-28 | 2027-12-14 | 163.5d | 0d | ICKMO1-cost unite [172963 $]; labor [800 h]; Physical Units [1490322 h] | 172,963.15 | 129,722.36 | ZNB | CON |  |
| A86440 |  | LV cable laying & termination / Backfilling | 12d | 2026-09-15 A | 2027-05-01 | A86410 SS+6d | 95% | 0.6d | 2027-11-21 | 2027-12-05 | 91.4d | 0d | ICKMO1-cost unite [288272 $]; labor [800 h]; Physical Units [2483870 h] | 288,271.9 | 273,858.3 | ZNB | CON |  |
| A86450 |  | Street lighting sub-station construction & installation | 16d | 2027-05-01 | 2027-05-19 | A86440 |  |  |  |  | 91.4d | 87.4d | ICKMO1-cost unite [115309 $]; labor [800 h]; Physical Units [993548 h] | 115,308.75 |  | ZNB | CON |  |
|  | 4 | **PSS 8714 - loop 02 Zone B** |  | 2027-05-01 | 2027-06-09 |  |  |  |  |  |  |  |  |  |  |  |  |  |
| A86460 |  | Trenching for lighting network | 10d | 2027-05-01 | 2027-05-12 | A86230, A86410 |  |  |  |  | 53.5d | 0d | ICKMO1-cost unite [230618 $]; labor [800 h]; Physical Units [1987096 h] | 230,617.51 |  | ZNB | CON |  |
| A86490 |  | LV cable laying & termination / Backfilling | 12d | 2027-05-08 | 2027-05-22 | A86460 SS+6d |  |  |  |  | 73.5d | 0d | ICKMO1-cost unite [288272 $]; labor [800 h]; Physical Units [2483870 h] | 288,271.9 |  | ZNB | CON |  |
| A86480 |  | Installation of lighting poles foundations | 14d | 2027-05-15 | 2027-05-31 | A86490 SS+6d |  |  |  |  | 140.5d | 0d | ICKMO1-cost unite [172963 $]; labor [800 h]; Physical Units [1490322 h] | 172,963.15 |  | ZNB | CON |  |
| A86470 |  | Installation of lighting poles & luminaires | 14d | 2027-05-22 | 2027-06-07 | A86480 SS+6d, A86480 FF+6d |  |  |  |  | 140.5d | 98.5d | ICKMO1-cost unite [345926 $]; labor [800 h]; Physical Units [2980644 h] | 345,926.26 |  | ZNB | CON |  |
| A86500 |  | Street lighting sub-station construction & installation | 16d | 2027-05-22 | 2027-06-09 | A86490 |  |  |  |  | 73.5d | 69.5d | ICKMO1-cost unite [115309 $]; labor [800 h]; Physical Units [993548 h] | 115,308.75 |  | ZNB | CON |  |
|  | 5 | **PSS 8714 - loop 03 Zone B** |  | 2027-05-12 | 2027-06-21 |  |  |  |  |  |  |  |  |  |  |  |  |  |
| A86510 |  | Trenching for lighting network | 10d | 2027-05-12 | 2027-05-24 | A86300, A86460 |  |  |  |  | 53.5d | 0d | ICKMO1-cost unite [230618 $]; labor [800 h]; Physical Units [1987096 h] | 230,617.51 |  | ZNB | CON |  |
| A86540 |  | LV cable laying & termination / Backfilling | 12d | 2027-05-19 | 2027-06-02 | A86510 SS+6d |  |  |  |  | 63.5d | 0d | ICKMO1-cost unite [288272 $]; labor [800 h]; Physical Units [2483870 h] | 288,271.9 |  | ZNB | CON |  |
| A86530 |  | Installation of lighting poles foundations | 14d | 2027-05-26 | 2027-06-12 | A86540 SS+6d |  |  |  |  | 130.5d | 0d | ICKMO1-cost unite [172963 $]; labor [800 h]; Physical Units [1490322 h] | 172,963.15 |  | ZNB | CON |  |
| A86520 |  | Installation of lighting poles & luminaires | 14d | 2027-06-02 | 2027-06-19 | A86530 SS+6d, A86530 FF+6d |  |  |  |  | 130.5d | 88.5d | ICKMO1-cost unite [345926 $]; labor [800 h]; Physical Units [2980644 h] | 345,926.26 |  | ZNB | CON |  |
| A86550 |  | Street lighting sub-station construction & installation | 16d | 2027-06-02 | 2027-06-21 | A86540 |  |  |  |  | 63.5d | 59.5d | ICKMO1-cost unite [115309 $]; labor [800 h]; Physical Units [993548 h] | 115,308.75 |  | ZNB | CON |  |

| ID | WBS | Activity | Duration | Start | Finish | Predecessors | Complete | Planned start | Planned finish | Total float | Free float | Resources | Cost | Actual cost | ALKHARJ INDUSTERIAL AREA - PROJECT ZONES | ALKHARJ INDUSTERIAL AREA - DECEPLINS | ALKHARJ INDUSTERIAL AREA - Wet networks |
| --- | --- | --- | --- | --- | --- | --- | --- | --- | --- | --- | --- | --- | --- | --- | --- | --- | --- |
|  | 6 | **PSS 8714 - loop 04 Zone B** |  | 2027-05-24 | 2027-07-03 |  |  |  |  |  |  |  |  |  |  |  |  |
| A86560 |  | Trenching for lighting network | 10d | 2027-05-24 | 2027-06-05 | A86370, A86510 |  |  |  | 53.5d | 0d | ICKMO1-cost unite [230618 $]; labor [800 h]; Physical Units [1987096 h] | 230,617.51 |  | ZNB | CON |  |
| A86590 |  | LV cable laying & termination / Backfilling | 12d | 2027-05-31 | 2027-06-14 | A86560 SS+6d, A86560 FF+6d |  |  |  | 53.5d | 0d | ICKMO1-cost unite [288272 $]; labor [800 h]; Physical Units [2483870 h] | 288,271.9 |  | ZNB | CON |  |
| A86580 |  | Installation of lighting poles foundations | 14d | 2027-06-07 | 2027-06-23 | A86590 SS+6d |  |  |  | 120.5d | 0d | ICKMO1-cost unite [172963 $]; labor [800 h]; Physical Units [1490322 h] | 172,963.15 |  | ZNB | CON |  |
| A86570 |  | Installation of lighting poles & luminaires | 14d | 2027-06-14 | 2027-06-30 | A86580 SS+6d, A86580 FF+6d |  |  |  | 120.5d | 78.5d | ICKMO1-cost unite [345926 $]; labor [800 h]; Physical Units [2980644 h] | 345,926.26 |  | ZNB | CON |  |
| A86600 |  | Street lighting sub-station construction & installation | 16d | 2027-06-14 | 2027-07-03 | A86590 |  |  |  | 53.5d | 49.5d | ICKMO1-cost unite [115309 $]; labor [800 h]; Physical Units [993548 h] | 115,308.75 |  | ZNB | CON |  |
|  | 1 | **TELECOMMUNICATION** |  | 2026-08-20 | 2027-02-16 |  |  |  |  |  |  |  |  |  |  |  |  |
|  | RR18 | **Road 18** |  | 2026-08-20 | 2027-02-16 |  |  |  |  |  |  |  |  |  |  |  |  |
| A91860 |  | Road Crossing Encasement | 14d | 2026-08-20 A | 2026-09-28 A | A91850 | 100% | 2027-03-16 | 2027-04-01 |  |  | ICKMO1-cost unite [29803.8 $]; Roller compactor [200 h]; JCB [200 h]; Physical Units [256802 h] | 29,803.8 | 29,803.8 | ZNB | CON |  |
| A91840 |  | Excavation | 14d | 2026-12-14 | 2026-12-29 | A63920, A58910, A11110 |  |  |  | -11d | 0d | ICKMO1-cost unite [29803.8 $]; Roller compactor [200 h]; JCB [200 h]; Physical Units [256802 h] | 29,803.8 |  | ZNB | CON |  |
| A91850 |  | Duct Jointing & Laying | 14d | 2026-12-30 | 2027-01-14 | A91840 |  |  |  | -11d | 0d | ICKMO1-cost unite [22352.8 $]; labor [800 h]; Physical Units [192601 h] | 22,352.83 |  | ZNB | CON |  |
| A91870 |  | Manhole Civil Works | 14d | 2027-01-16 | 2027-01-31 | A91860 |  |  |  | -11d | 0d | ICKMO1-cost unite [37254.7 $]; labor [800 h]; Physical Units [321002 h] | 37,254.74 |  | ZNB | CON | MH |
| A91880 |  | Backfilling & Compaction | 14d | 2027-02-01 | 2027-02-16 | A91870 |  |  |  | -11d | 26.9d | ICKMO1-cost unite [29803.8 $]; Roller compactor [200 h]; JCB [200 h]; Physical Units [256802 h] | 29,803.8 |  | ZNB | CON |  |
|  | R19 | **Road 19** |  | 2026-08-20 | 2027-02-16 |  |  |  |  |  |  |  |  |  |  |  |  |
| A91910 |  | Road Crossing Encasement | 14d | 2026-08-20 A | 2026-09-28 A | A91900 | 100% | 2027-03-16 | 2027-04-01 |  |  | ICKMO1-cost unite [29803.8 $]; Roller compactor [200 h]; JCB [200 h]; Physical Units [256802 h] | 29,803.8 | 29,803.8 | ZNB | CON |  |
| A91890 |  | Excavation | 14d | 2026-12-14 | 2026-12-29 | A63920, A58910, A11110 |  |  |  | -11d | 0d | ICKMO1-cost unite [29803.8 $]; Roller compactor [200 h]; JCB [200 h]; Physical Units [256802 h] | 29,803.8 |  | ZNB | CON |  |
| A91900 |  | Duct Jointing & Laying | 14d | 2026-12-30 | 2027-01-14 | A91890 |  |  |  | -11d | 0d | ICKMO1-cost unite [22352.8 $]; labor [800 h]; Physical Units [192601 h] | 22,352.83 |  | ZNB | CON |  |
| A91920 |  | Manhole Civil Works | 14d | 2027-01-16 | 2027-01-31 | A91910 |  |  |  | -11d | 0d | ICKMO1-cost unite [37254.7 $]; labor [800 h]; Physical Units [321002 h] | 37,254.74 |  | ZNB | CON | MH |
| A91930 |  | Backfilling & Compaction | 14d | 2027-02-01 | 2027-02-16 | A91920 |  |  |  | -11d | 26.9d | ICKMO1-cost unite [29803.8 $]; Roller compactor [200 h]; JCB [200 h]; Physical Units [256802 h] | 29,803.8 |  | ZNB | CON |  |
|  | R20 | **Road 20** |  | 2026-08-20 | 2027-02-16 |  |  |  |  |  |  |  |  |  |  |  |  |
| A91960 |  | Road Crossing Encasement | 14d | 2026-08-20 A | 2026-09-28 A | A91950 | 100% | 2027-03-16 | 2027-04-01 |  |  | ICKMO1-cost unite [29803.8 $]; Roller compactor [200 h]; JCB [200 h]; Physical Units [256802 h] | 29,803.8 | 29,803.8 | ZNB | CON |  |
| A91940 |  | Excavation | 14d | 2026-12-14 | 2026-12-29 | A63920, A58910, A11110 |  |  |  | -11d | 0d | ICKMO1-cost unite [29803.8 $]; Roller compactor [200 h]; JCB [200 h]; Physical Units [256802 h] | 29,803.8 |  | ZNB | CON |  |
| A91950 |  | Duct Jointing & Laying | 14d | 2026-12-30 | 2027-01-14 | A91940 |  |  |  | -11d | 0d | ICKMO1-cost unite [22352.8 $]; labor [800 h]; Physical Units [192601 h] | 22,352.83 |  | ZNB | CON |  |
| A91970 |  | Manhole Civil Works | 14d | 2027-01-16 | 2027-01-31 | A91960 |  |  |  | -11d | 0d | ICKMO1-cost unite [37254.7 $]; labor [800 h]; Physical Units [321002 h] | 37,254.74 |  | ZNB | CON | MH |
| A91980 |  | Backfilling & Compaction | 14d | 2027-02-01 | 2027-02-16 | A91970 |  |  |  | -11d | 26.9d | ICKMO1-cost unite [29803.8 $]; Roller compactor [200 h]; JCB [200 h]; Physical Units [256802 h] | 29,803.8 |  | ZNB | CON |  |

| ID | WBS | Activity | Duration | Start | Finish | Predecessors | Complete | Planned start | Planned finish | Total float | Free float | Resources | Cost | Actual cost | ALKHARJ INDUSTERIAL AREA - PROJECT ZONES | ALKHARJ INDUSTERIAL AREA - DECEPLINS | ALKHARJ INDUSTERIAL AREA - Wet networks |
| --- | --- | --- | --- | --- | --- | --- | --- | --- | --- | --- | --- | --- | --- | --- | --- | --- | --- |
|  | 21 | **Road 21** |  | 2026-08-20 | 2027-02-16 |  |  |  |  |  |  |  |  |  |  |  |  |
| A92060 |  | Road Crossing Encasement | 14d | 2026-08-20 A | 2026-09-28 A | A92050 | 100% | 2027-03-16 | 2027-04-01 |  |  | ICKMO1-cost unite [29803.8 $]; Roller compactor [200 h]; JCB [200 h]; Physical Units [256802 h] | 29,803.8 | 29,803.8 | ZNB | CON |  |
| A92040 |  | Excavation | 14d | 2026-12-14 | 2026-12-29 | A63920, A58910, A11110 |  |  |  | -11d | 0d | ICKMO1-cost unite [29803.8 $]; Roller compactor [200 h]; JCB [200 h]; Physical Units [256802 h] | 29,803.8 |  | ZNB | CON |  |
| A92050 |  | Duct Jointing & Laying | 14d | 2026-12-30 | 2027-01-14 | A92040 |  |  |  | -11d | 0d | ICKMO1-cost unite [22352.8 $]; labor [800 h]; Physical Units [192601 h] | 22,352.83 |  | ZNB | CON |  |
| A92070 |  | Manhole Civil Works | 14d | 2027-01-16 | 2027-01-31 | A92060 |  |  |  | -11d | 0d | ICKMO1-cost unite [37254.7 $]; labor [800 h]; Physical Units [321002 h] | 37,254.74 |  | ZNB | CON | MH |
| A92080 |  | Backfilling & Compaction | 14d | 2027-02-01 | 2027-02-16 | A92070 |  |  |  | -11d | 26.9d | ICKMO1-cost unite [29803.8 $]; Roller compactor [200 h]; JCB [200 h]; Physical Units [256802 h] | 29,803.8 |  | ZNB | CON |  |
|  | R22 | **Road 22** |  | 2026-08-20 | 2027-02-16 |  |  |  |  |  |  |  |  |  |  |  |  |
| A92010 |  | Road Crossing Encasement | 14d | 2026-08-20 A | 2026-09-28 A | A92000 | 100% | 2027-03-16 | 2027-04-01 |  |  | ICKMO1-cost unite [29803.8 $]; Roller compactor [200 h]; JCB [200 h]; Physical Units [256802 h] | 29,803.8 | 29,803.8 | ZNB | CON |  |
| A91990 |  | Excavation | 14d | 2026-12-14 | 2026-12-29 | A63920, A58910, A11110 |  |  |  | -11d | 0d | ICKMO1-cost unite [29803.8 $]; Roller compactor [200 h]; JCB [200 h]; Physical Units [256802 h] | 29,803.8 |  | ZNB | CON |  |
| A92000 |  | Duct Jointing & Laying | 14d | 2026-12-30 | 2027-01-14 | A91990 |  |  |  | -11d | 0d | ICKMO1-cost unite [22352.8 $]; labor [800 h]; Physical Units [192601 h] | 22,352.83 |  | ZNB | CON |  |
| A92020 |  | Manhole Civil Works | 14d | 2027-01-16 | 2027-01-31 | A92010 |  |  |  | -11d | 0d | ICKMO1-cost unite [37254.7 $]; labor [800 h]; Physical Units [321002 h] | 37,254.74 |  | ZNB | CON | MH |
| A92030 |  | Backfilling & Compaction | 14d | 2027-02-01 | 2027-02-16 | A92020 |  |  |  | -11d | 26.9d | ICKMO1-cost unite [29803.8 $]; Roller compactor [200 h]; JCB [200 h]; Physical Units [256802 h] | 29,803.8 |  | ZNB | CON |  |
|  | R23 | **Road 23** |  | 2026-08-20 | 2027-02-16 |  |  |  |  |  |  |  |  |  |  |  |  |
| A92110 |  | Road Crossing Encasement | 14d | 2026-08-20 A | 2026-09-28 A | A92100 | 100% | 2027-03-16 | 2027-04-01 |  |  | ICKMO1-cost unite [29803.8 $]; Roller compactor [200 h]; JCB [200 h]; Physical Units [256802 h] | 29,803.8 | 29,803.8 | ZNB | CON |  |
| A92090 |  | Excavation | 14d | 2026-12-14 | 2026-12-29 | A63920, A58910, A11110 |  |  |  | -11d | 0d | ICKMO1-cost unite [29803.8 $]; Roller compactor [200 h]; JCB [200 h]; Physical Units [256802 h] | 29,803.8 |  | ZNB | CON |  |
| A92100 |  | Duct Jointing & Laying | 14d | 2026-12-30 | 2027-01-14 | A92090 |  |  |  | -11d | 0d | ICKMO1-cost unite [22352.8 $]; labor [800 h]; Physical Units [192601 h] | 22,352.83 |  | ZNB | CON |  |
| A92120 |  | Manhole Civil Works | 14d | 2027-01-16 | 2027-01-31 | A92110 |  |  |  | -11d | 0d | ICKMO1-cost unite [37254.7 $]; labor [800 h]; Physical Units [321002 h] | 37,254.74 |  | ZNB | CON | MH |
| A92130 |  | Backfilling & Compaction | 14d | 2027-02-01 | 2027-02-16 | A92120 |  |  |  | -11d | 26.9d | ICKMO1-cost unite [29803.8 $]; Roller compactor [200 h]; JCB [200 h]; Physical Units [256802 h] | 29,803.8 |  | ZNB | CON |  |
|  | R24 | **Road 24** |  | 2026-08-20 | 2027-02-16 |  |  |  |  |  |  |  |  |  |  |  |  |
| A92160 |  | Road Crossing Encasement | 14d | 2026-08-20 A | 2026-09-28 A | A92150 | 100% | 2027-03-16 | 2027-04-01 |  |  | ICKMO1-cost unite [29803.8 $]; Roller compactor [200 h]; JCB [200 h]; Physical Units [256802 h] | 29,803.8 | 29,803.8 | ZNB | CON |  |
| A92140 |  | Excavation | 14d | 2026-12-14 | 2026-12-29 | A63920, A58910, A11110 |  |  |  | -11d | 0d | ICKMO1-cost unite [29803.8 $]; Roller compactor [200 h]; JCB [200 h]; Physical Units [256802 h] | 29,803.8 |  | ZNB | CON |  |
| A92150 |  | Duct Jointing & Laying | 14d | 2026-12-30 | 2027-01-14 | A92140 |  |  |  | -11d | 0d | ICKMO1-cost unite [22352.8 $]; labor [800 h]; Physical Units [192601 h] | 22,352.83 |  | ZNB | CON |  |
| A92170 |  | Manhole Civil Works | 14d | 2027-01-16 | 2027-01-31 | A92160 |  |  |  | -11d | 0d | ICKMO1-cost unite [37254.7 $]; labor [800 h]; Physical Units [321002 h] | 37,254.74 |  | ZNB | CON | MH |
| A92180 |  | Backfilling & Compaction | 14d | 2027-02-01 | 2027-02-16 | A92170 |  |  |  | -11d | 26.9d | ICKMO1-cost unite [29803.8 $]; Roller compactor [200 h]; JCB [200 h]; Physical Units [256802 h] | 29,803.8 |  | ZNB | CON |  |

| ID | WBS | Activity | Duration | Start | Finish | Predecessors | Complete | Planned start | Planned finish | Total float | Free float | Resources | Cost | Actual cost | ALKHARJ INDUSTERIAL AREA - PROJECT ZONES | ALKHARJ INDUSTERIAL AREA - DECEPLINS | ALKHARJ INDUSTERIAL AREA - Wet networks |
| --- | --- | --- | --- | --- | --- | --- | --- | --- | --- | --- | --- | --- | --- | --- | --- | --- | --- |
|  | R25 | **Road 25** |  | 2026-08-20 | 2027-02-16 |  |  |  |  |  |  |  |  |  |  |  |  |
| A92210 |  | Road Crossing Encasement | 14d | 2026-08-20 A | 2026-09-28 A | A92200 | 100% | 2027-03-16 | 2027-04-01 |  |  | ICKMO1-cost unite [29803.8 $]; Roller compactor [200 h]; JCB [200 h]; Physical Units [256802 h] | 29,803.8 | 29,803.8 | ZNB | CON |  |
| A92190 |  | Excavation | 14d | 2026-12-14 | 2026-12-29 | A63920, A58910, A11110 |  |  |  | -11d | 0d | ICKMO1-cost unite [29803.8 $]; Roller compactor [200 h]; JCB [200 h]; Physical Units [256802 h] | 29,803.8 |  | ZNB | CON |  |
| A92200 |  | Duct Jointing & Laying | 14d | 2026-12-30 | 2027-01-14 | A92190 |  |  |  | -11d | 0d | ICKMO1-cost unite [22352.8 $]; labor [800 h]; Physical Units [192601 h] | 22,352.83 |  | ZNB | CON |  |
| A92220 |  | Manhole Civil Works | 14d | 2027-01-16 | 2027-01-31 | A92210 |  |  |  | -11d | 0d | ICKMO1-cost unite [37254.7 $]; labor [800 h]; Physical Units [321002 h] | 37,254.74 |  | ZNB | CON | MH |
| A92230 |  | Backfilling & Compaction | 14d | 2027-02-01 | 2027-02-16 | A92220 |  |  |  | -11d | 26.9d | ICKMO1-cost unite [29803.8 $]; Roller compactor [200 h]; JCB [200 h]; Physical Units [256802 h] | 29,803.8 |  | ZNB | CON |  |
|  | R26 | **Road 26** |  | 2026-08-20 | 2027-02-16 |  |  |  |  |  |  |  |  |  |  |  |  |
| A92260 |  | Road Crossing Encasement | 14d | 2026-08-20 A | 2026-09-28 A | A92250 | 100% | 2027-03-16 | 2027-04-01 |  |  | ICKMO1-cost unite [29803.8 $]; Roller compactor [200 h]; JCB [200 h]; Physical Units [256802 h] | 29,803.8 | 29,803.8 | ZNB | CON |  |
| A92240 |  | Excavation | 14d | 2026-12-14 | 2026-12-29 | A63920, A58910, A11110 |  |  |  | -11d | 0d | ICKMO1-cost unite [29803.8 $]; Roller compactor [200 h]; JCB [200 h]; Physical Units [256802 h] | 29,803.8 |  | ZNB | CON |  |
| A92250 |  | Duct Jointing & Laying | 14d | 2026-12-30 | 2027-01-14 | A92240 |  |  |  | -11d | 0d | ICKMO1-cost unite [22352.8 $]; labor [800 h]; Physical Units [192601 h] | 22,352.83 |  | ZNB | CON |  |
| A92270 |  | Manhole Civil Works | 14d | 2027-01-16 | 2027-01-31 | A92260 |  |  |  | -11d | 0d | ICKMO1-cost unite [37254.7 $]; labor [800 h]; Physical Units [321002 h] | 37,254.74 |  | ZNB | CON | MH |
| A92280 |  | Backfilling & Compaction | 14d | 2027-02-01 | 2027-02-16 | A92270 |  |  |  | -11d | 26.9d | ICKMO1-cost unite [29803.8 $]; Roller compactor [200 h]; JCB [200 h]; Physical Units [256802 h] | 29,803.8 |  | ZNB | CON |  |
|  | R27 | **Road 27** |  | 2026-08-20 | 2027-02-16 |  |  |  |  |  |  |  |  |  |  |  |  |
| A92310 |  | Road Crossing Encasement | 14d | 2026-08-20 A | 2026-09-28 A | A92300 | 100% | 2027-03-16 | 2027-04-01 |  |  | ICKMO1-cost unite [29803.8 $]; Roller compactor [200 h]; JCB [200 h]; Physical Units [256802 h] | 29,803.8 | 29,803.8 | ZNB | CON |  |
| A92290 |  | Excavation | 14d | 2026-12-14 | 2026-12-29 | A63920, A58910, A11110 |  |  |  | -11d | 0d | ICKMO1-cost unite [29803.8 $]; Roller compactor [200 h]; JCB [200 h]; Physical Units [256802 h] | 29,803.8 |  | ZNB | CON |  |
| A92300 |  | Duct Jointing & Laying | 14d | 2026-12-30 | 2027-01-14 | A92290 |  |  |  | -11d | 0d | ICKMO1-cost unite [22352.8 $]; labor [800 h]; Physical Units [192601 h] | 22,352.83 |  | ZNB | CON |  |
| A92320 |  | Manhole Civil Works | 14d | 2027-01-16 | 2027-01-31 | A92310 |  |  |  | -11d | 0d | ICKMO1-cost unite [37254.7 $]; labor [800 h]; Physical Units [321002 h] | 37,254.74 |  | ZNB | CON | MH |
| A92330 |  | Backfilling & Compaction | 14d | 2027-02-01 | 2027-02-16 | A92320 |  |  |  | -11d | 26.9d | ICKMO1-cost unite [29803.8 $]; Roller compactor [200 h]; JCB [200 h]; Physical Units [256802 h] | 29,803.8 |  | ZNB | CON |  |
|  | CO2 | **Collector 2** |  | 2026-08-20 | 2027-02-16 |  |  |  |  |  |  |  |  |  |  |  |  |
| A92360 |  | Road Crossing Encasement | 14d | 2026-08-20 A | 2026-09-28 A | A92350 | 100% | 2027-03-16 | 2027-04-01 |  |  | ICKMO1-cost unite [29803.8 $]; Roller compactor [200 h]; JCB [200 h]; Physical Units [256802 h] | 29,803.8 | 29,803.8 | ZNB | CON |  |
| A92340 |  | Excavation | 14d | 2026-12-14 | 2026-12-29 | A63920, A58910, A11110 |  |  |  | -11d | 0d | ICKMO1-cost unite [29803.8 $]; Roller compactor [200 h]; JCB [200 h]; Physical Units [256802 h] | 29,803.8 |  | ZNB | CON |  |
| A92350 |  | Duct Jointing & Laying | 14d | 2026-12-30 | 2027-01-14 | A92340 |  |  |  | -11d | 0d | ICKMO1-cost unite [22352.8 $]; labor [800 h]; Physical Units [192601 h] | 22,352.83 |  | ZNB | CON |  |
| A92370 |  | Manhole Civil Works | 14d | 2027-01-16 | 2027-01-31 | A92360 |  |  |  | -11d | 0d | ICKMO1-cost unite [37254.7 $]; labor [800 h]; Physical Units [321002 h] | 37,254.74 |  | ZNB | CON | MH |
| A92380 |  | Backfilling & Compaction | 14d | 2027-02-01 | 2027-02-16 | A92370 |  |  |  | -11d | 26.9d | ICKMO1-cost unite [29803.8 $]; Roller compactor [200 h]; JCB [200 h]; Physical Units [256802 h] | 29,803.8 |  | ZNB | CON |  |

| ID | WBS | Activity | Duration | Start | Finish | Predecessors | Complete | Planned start | Planned finish | Total float | Free float | Resources | Cost | Actual cost | ALKHARJ INDUSTERIAL AREA - PROJECT ZONES | ALKHARJ INDUSTERIAL AREA - DECEPLINS | ALKHARJ INDUSTERIAL AREA - Wet networks |
| --- | --- | --- | --- | --- | --- | --- | --- | --- | --- | --- | --- | --- | --- | --- | --- | --- | --- |
|  | ART1 | **Arterial 1** |  | 2026-08-20 | 2027-02-16 |  |  |  |  |  |  |  |  |  |  |  |  |
| A92410 |  | Road Crossing Encasement | 14d | 2026-08-20 A | 2026-09-28 A | A92400 | 100% | 2027-03-16 | 2027-04-01 |  |  | ICKMO1-cost unite [29803.8 $]; Roller compactor [200 h]; JCB [200 h]; Physical Units [256802 h] | 29,803.8 | 29,803.8 | ZNB | CON |  |
| A92390 |  | Excavation | 14d | 2026-12-14 | 2026-12-29 | A63920, A58910, A11110 |  |  |  | -11d | 0d | ICKMO1-cost unite [29803.8 $]; Roller compactor [200 h]; JCB [200 h]; Physical Units [256802 h] | 29,803.8 |  | ZNB | CON |  |
| A92400 |  | Duct Jointing & Laying | 14d | 2026-12-30 | 2027-01-14 | A92390 |  |  |  | -11d | 0d | ICKMO1-cost unite [22352.8 $]; labor [800 h]; Physical Units [192601 h] | 22,352.83 |  | ZNB | CON |  |
| A92420 |  | Manhole Civil Works | 14d | 2027-01-16 | 2027-01-31 | A92410 |  |  |  | -11d | 0d | ICKMO1-cost unite [37254.7 $]; labor [800 h]; Physical Units [321002 h] | 37,254.74 |  | ZNB | CON | MH |
| A92430 |  | Backfilling & Compaction | 14d | 2027-02-01 | 2027-02-16 | A92420 |  |  |  | -11d | 26.9d | ICKMO1-cost unite [29803.8 $]; Roller compactor [200 h]; JCB [200 h]; Physical Units [256802 h] | 29,803.8 |  | ZNB | CON |  |
|  | ART2 | **Arterial 2** |  | 2026-08-20 | 2027-02-16 |  |  |  |  |  |  |  |  |  |  |  |  |
| A92460 |  | Road Crossing Encasement | 14d | 2026-08-20 A | 2026-09-28 A | A92450 | 100% | 2027-03-16 | 2027-04-01 |  |  | ICKMO1-cost unite [29803.8 $]; Roller compactor [200 h]; JCB [200 h]; Physical Units [256802 h] | 29,803.8 | 29,803.8 | ZNB | CON |  |
| A92440 |  | Excavation | 14d | 2026-12-14 | 2026-12-29 | A63920, A58910, A11110 |  |  |  | -11d | 0d | ICKMO1-cost unite [29803.8 $]; Roller compactor [200 h]; JCB [200 h]; Physical Units [256802 h] | 29,803.8 |  | ZNB | CON |  |
| A92450 |  | Duct Jointing & Laying | 14d | 2026-12-30 | 2027-01-14 | A92440 |  |  |  | -11d | 0d | ICKMO1-cost unite [22352.8 $]; labor [800 h]; Physical Units [192601 h] | 22,352.83 |  | ZNB | CON |  |
| A92470 |  | Manhole Civil Works | 14d | 2027-01-16 | 2027-01-31 | A92460 |  |  |  | -11d | 0d | ICKMO1-cost unite [37254.7 $]; labor [800 h]; Physical Units [321002 h] | 37,254.74 |  | ZNB | CON | MH |
| A92480 |  | Backfilling & Compaction | 14d | 2027-02-01 | 2027-02-16 | A92470 |  |  |  | -11d | 26.9d | ICKMO1-cost unite [29803.8 $]; Roller compactor [200 h]; JCB [200 h]; Physical Units [256802 h] | 29,803.8 |  | ZNB | CON |  |
|  | RON1 | **ROUND ABOUT 1** |  | 2026-08-20 | 2027-02-16 |  |  |  |  |  |  |  |  |  |  |  |  |
| A92510 |  | Road Crossing Encasement | 14d | 2026-08-20 A | 2026-09-28 A | A92500 | 100% | 2027-03-16 | 2027-04-01 |  |  | ICKMO1-cost unite [29803.8 $]; Roller compactor [200 h]; JCB [200 h]; Physical Units [256802 h] | 29,803.8 | 29,803.8 | ZNB | CON |  |
| A92490 |  | Excavation | 14d | 2026-12-14 | 2026-12-29 | A63920, A58910, A11110 |  |  |  | -11d | 0d | ICKMO1-cost unite [29803.8 $]; Roller compactor [200 h]; JCB [200 h]; Physical Units [256802 h] | 29,803.8 |  | ZNB | CON |  |
| A92500 |  | Duct Jointing & Laying | 14d | 2026-12-30 | 2027-01-14 | A92490 |  |  |  | -11d | 0d | ICKMO1-cost unite [22352.8 $]; labor [800 h]; Physical Units [192601 h] | 22,352.83 |  | ZNB | CON |  |
| A92520 |  | Manhole Civil Works | 14d | 2027-01-16 | 2027-01-31 | A92510 |  |  |  | -11d | 0d | ICKMO1-cost unite [37254.7 $]; labor [800 h]; Physical Units [321002 h] | 37,254.74 |  | ZNB | CON | MH |
| A92530 |  | Backfilling & Compaction | 14d | 2027-02-01 | 2027-02-16 | A92520 |  |  |  | -11d | 26.9d | ICKMO1-cost unite [29803.8 $]; Roller compactor [200 h]; JCB [200 h]; Physical Units [256802 h] | 29,803.8 |  | ZNB | CON |  |
|  | RON2 | **ROUND ABOUT 2** |  | 2026-08-20 | 2027-02-16 |  |  |  |  |  |  |  |  |  |  |  |  |
| A92560 |  | Road Crossing Encasement | 14d | 2026-08-20 A | 2026-09-28 A | A92550 | 100% | 2027-03-16 | 2027-04-01 |  |  | ICKMO1-cost unite [29803.8 $]; Roller compactor [200 h]; JCB [200 h]; Physical Units [256802 h] | 29,803.8 | 29,803.8 | ZNB | CON |  |
| A92540 |  | Excavation | 14d | 2026-12-14 | 2026-12-29 | A63920, A58910, A11110 |  |  |  | -11d | 0d | ICKMO1-cost unite [29803.8 $]; Roller compactor [200 h]; JCB [200 h]; Physical Units [256802 h] | 29,803.8 |  | ZNB | CON |  |
| A92550 |  | Duct Jointing & Laying | 14d | 2026-12-30 | 2027-01-14 | A92540 |  |  |  | -11d | 0d | ICKMO1-cost unite [22352.8 $]; labor [800 h]; Physical Units [192601 h] | 22,352.83 |  | ZNB | CON |  |
| A92570 |  | Manhole Civil Works | 14d | 2027-01-16 | 2027-01-31 | A92560 |  |  |  | -11d | 0d | ICKMO1-cost unite [37254.7 $]; labor [800 h]; Physical Units [321002 h] | 37,254.74 |  | ZNB | CON | MH |
| A92580 |  | Backfilling & Compaction | 14d | 2027-02-01 | 2027-02-16 | A92570 |  |  |  | -11d | 26.9d | ICKMO1-cost unite [29803.8 $]; Roller compactor [200 h]; JCB [200 h]; Physical Units [256802 h] | 29,803.8 |  | ZNB | CON |  |

| ID | WBS | Activity | Duration | Start | Finish | Predecessors | Complete | Remaining | Planned start | Planned finish | Total float | Free float | Resources | Cost | Actual cost | ALKHARJ INDUSTERIAL AREA - PROJECT ZONES | ALKHARJ INDUSTERIAL AREA - DECEPLINS | ALKHARJ INDUSTERIAL AREA - Wet networks | ALKHARJ INDUSTERIAL AREA - ASPHALT WORKS |
| --- | --- | --- | --- | --- | --- | --- | --- | --- | --- | --- | --- | --- | --- | --- | --- | --- | --- | --- | --- |
|  | EXR | **EX ROAD** |  | 2026-08-20 | 2027-02-16 |  |  |  |  |  |  |  |  |  |  |  |  |  |  |
| A92610 |  | Road Crossing Encasement | 14d | 2026-08-20 A | 2026-09-28 A | A92600 | 100% |  | 2027-03-16 | 2027-04-01 |  |  | ICKMO1-cost unite [29803.8 $]; Roller compactor [200 h]; JCB [200 h]; Physical Units [256802 h] | 29,803.8 | 29,803.8 | ZNB | CON |  |  |
| A92590 |  | Excavation | 14d | 2026-12-14 | 2026-12-29 | A63920, A58910, A11110 |  |  |  |  | -11d | 0d | ICKMO1-cost unite [29803.8 $]; Roller compactor [200 h]; JCB [200 h]; Physical Units [256802 h] | 29,803.8 |  | ZNB | CON |  |  |
| A92600 |  | Duct Jointing & Laying | 14d | 2026-12-30 | 2027-01-14 | A92590 |  |  |  |  | -11d | 0d | ICKMO1-cost unite [22352.8 $]; labor [800 h]; Physical Units [192601 h] | 22,352.83 |  | ZNB | CON |  |  |
| A92620 |  | Manhole Civil Works | 14d | 2027-01-16 | 2027-01-31 | A92610 |  |  |  |  | -11d | 0d | ICKMO1-cost unite [37254.7 $]; labor [800 h]; Physical Units [321002 h] | 37,254.74 |  | ZNB | CON | MH |  |
| A92630 |  | Backfilling & Compaction | 14d | 2027-02-01 | 2027-02-16 | A92620 |  |  |  |  | -11d | 26.9d | ICKMO1-cost unite [29803.8 $]; Roller compactor [200 h]; JCB [200 h]; Physical Units [256802 h] | 29,803.8 |  | ZNB | CON |  |  |
|  | RW | **ROADS WORK** |  | 2026-08-15 | 2027-05-15 |  |  |  |  |  |  |  |  |  |  |  |  |  |  |
|  | R18 | **Road 18** |  | 2026-08-15 | 2027-04-05 |  |  |  |  |  |  |  |  |  |  |  |  |  |  |
|  | AGG | **Aggregate Base Course** |  | 2026-08-15 | 2026-09-20 |  |  |  |  |  |  |  |  |  |  |  |  |  |  |
| A62750 |  | Aggregate base course | 3d | 2026-08-15 A | 2026-09-20 A | A62740, A86340 | 100% |  | 2026-07-28 | 2026-07-30 |  |  | ICKMO1-cost unite [194569 $]; Aggregate base course [3223.11]; Physical Units [1676484 h] | 194,568.6 | 194,568.6 | ZNB | CON |  | ABC |
|  | 2 | **Bituminous Construction** |  | 2026-08-15 | 2026-09-20 |  |  |  |  |  |  |  |  |  |  |  |  |  |  |
| A62760 |  | Bituminous base course (Grading I - Class A) | 3d | 2026-08-15 A | 2026-09-20 A | A62750, A62800 | 100% |  | 2026-08-04 | 2026-08-06 |  |  | ICKMO1-cost unite [243211 $]; Bituminous base course [1425.56]; Physical Units [2095605 h] | 243,210.76 | 243,210.76 | ZNB | CON |  | BBC |
|  | 3 | **Asphalt Wearing Course** |  | 2027-03-25 | 2027-03-27 |  |  |  |  |  |  |  |  |  |  |  |  |  |  |
| A62770 |  | Bituminous concrete wearing course | 1d | 2027-03-25 | 2027-03-27 | A62760, A58920 |  |  |  |  | 4d | 0d | ICKMO1-cost unite [291853 $]; Bituminous concrete wearing course [761.44]; Physical Units [2514725 h] | 291,852.91 |  | ZNB | CON |  | BBC |
|  | 4 | **Precast Concrete Curb** |  | 2026-08-29 | 2026-11-30 |  |  |  |  |  |  |  |  |  |  |  |  |  |  |
| A62780 |  | Concrete curb, Type (K1A) | 1d | 2026-08-29 A | 2026-11-28 | A62750 | 27% | 0.73d | 2026-08-01 | 2026-08-01 | -50.14d | 0d | ICKMO1-cost unite [16214 $]; Physical Units [139707 h] | 16,214.05 | 4,377.79 | ZNB | CON |  |  |
| A62790 |  | Concrete curb, Type (K1B) | 1d | 2026-08-29 A | 2026-11-29 | A62780 | 27% | 0.73d | 2026-08-02 | 2026-08-02 | -50.14d | 0d | ICKMO1-cost unite [16214 $]; Physical Units [139707 h] | 16,214.05 | 4,377.79 | ZNB | CON |  |  |
| A62800 |  | Concrete curb, Type (K2) | 1d | 2026-08-29 A | 2026-11-30 | A62790 | 27% | 0.73d | 2026-08-03 | 2026-08-03 | -50.14d | 0d | ICKMO1-cost unite [16214 $]; Physical Units [139707 h] | 16,214.05 | 4,377.79 | ZNB | CON |  |  |
|  | 5 | **Pavement Markings** |  | 2027-03-27 | 2027-03-29 |  |  |  |  |  |  |  |  |  |  |  |  |  |  |
| A62810 |  | Retroreflective Thermoplastic White Traffic lines | 1d | 2027-03-27 | 2027-03-28 | A62800, A62770 |  |  |  |  | 4d | 0d | ICKMO1-cost unite [48642.2 $]; Physical Units [419121 h] | 48,642.15 |  | ZNB | CON |  |  |
| A62820 |  | Retroreflective Thermoplastic Yellow Traffic lines | 1d | 2027-03-28 | 2027-03-29 | A62810 |  |  |  |  | 4d | 0d | ICKMO1-cost unite [48642.2 $]; Physical Units [419121 h] | 48,642.15 |  | ZNB | CON |  |  |
|  | 6 | **Traffic Signage** |  | 2027-03-29 | 2027-04-05 |  |  |  |  |  |  |  |  |  |  |  |  |  |  |
| A62830 |  | Traffic signs, ground mounted, 1 Sheet Alumenium, (breakaway) Single post | 1d | 2027-03-29 | 2027-03-30 | A62820 |  |  |  |  | 4d | 0d | ICKMO1-cost unite [16214 $]; Physical Units [139707 h] | 16,214.05 |  | ZNB | CON |  |  |
| A62840 |  | Traffic signs, ground mounted, 2 Sheet Alumenium, (breakaway) Single post | 1d | 2027-03-30 | 2027-03-31 | A62830 |  |  |  |  | 4d | 0d | ICKMO1-cost unite [16214 $]; Physical Units [139707 h] | 16,214.05 |  | ZNB | CON |  |  |
| A62850 |  | Traffic signs, ground mounted, Sheet Alumenium, (breakaway) Double post | 1d | 2027-03-31 | 2027-04-01 | A62840 |  |  |  |  | 4d | 0d | ICKMO1-cost unite [16214 $]; Physical Units [139707 h] | 16,214.05 |  | ZNB | CON |  |  |
| A62860 |  | Retroreflective raised pavement markers (Type A) | 1d | 2027-04-01 | 2027-04-03 | A62850 |  |  |  |  | 181d | 0d | ICKMO1-cost unite [16214 $]; Physical Units [139707 h] | 16,214.05 |  | ZNB | CON |  |  |
| A62870 |  | Ceramic raised pavement markers | 1d | 2027-04-03 | 2027-04-04 | A62860 |  |  |  |  | 181d | 0d | ICKMO1-cost unite [16214 $]; Physical Units [139707 h] | 16,214.05 |  | ZNB | CON |  |  |
| A62880 |  | Solar powered lighting cateyes pavement markers | 1d | 2027-04-04 | 2027-04-05 | A62870 |  |  |  |  | 194d |  | ICKMO1-cost unite [16214 $]; Physical Units [139707 h] | 16,214.05 |  | ZNB | CON |  |  |

| ID | WBS | Activity | Duration | Start | Finish | Predecessors | Complete | Remaining | Planned start | Planned finish | Total float | Free float | Resources | Cost | Actual cost | ALKHARJ INDUSTERIAL AREA - PROJECT ZONES | ALKHARJ INDUSTERIAL AREA - DECEPLINS | ALKHARJ INDUSTERIAL AREA - ASPHALT WORKS |
| --- | --- | --- | --- | --- | --- | --- | --- | --- | --- | --- | --- | --- | --- | --- | --- | --- | --- | --- |
|  | R19 | **Road 19** |  | 2026-08-15 | 2027-04-06 |  |  |  |  |  |  |  |  |  |  |  |  |  |
|  | AGG | **Aggregate Base Course** |  | 2026-08-15 | 2026-09-20 |  |  |  |  |  |  |  |  |  |  |  |  |  |
| A64650 |  | Aggregate base course | 4d | 2026-08-15 A | 2026-09-20 A | A62750 SS, A64370, A62750 | 100% |  | 2026-08-01 | 2026-08-04 |  |  | ICKMO1-cost unite [194569 $]; Aggregate base course [3223.11]; Physical Units [1676484 h] | 194,568.6 | 194,568.6 | ZNB | CON | ABC |
|  | 2 | **Bituminous Construction** |  | 2026-08-15 | 2026-09-20 |  |  |  |  |  |  |  |  |  |  |  |  |  |
| A64660 |  | Bituminous base course (Grading I - Class A) | 4d | 2026-08-15 A | 2026-09-20 A | A64650, A64700 | 100% |  | 2026-08-09 | 2026-08-12 |  |  | ICKMO1-cost unite [243211 $]; Bituminous base course [1425.56]; Physical Units [2095605 h] | 243,210.76 | 243,210.76 | ZNB | CON | BBC |
|  | 3 | **Asphalt Wearing Course** |  | 2027-03-27 | 2027-03-28 |  |  |  |  |  |  |  |  |  |  |  |  |  |
| A64670 |  | Bituminous concrete wearing course | 1d | 2027-03-27 | 2027-03-28 | A64660, A62770 |  |  |  |  | 42d | 0d | ICKMO1-cost unite [291853 $]; Bituminous concrete wearing course [761.44]; Physical Units [2514725 h] | 291,852.91 |  | ZNB | CON | BBC |
|  | 4 | **Precast Concrete Curb** |  | 2026-08-29 | 2026-11-30 |  |  |  |  |  |  |  |  |  |  |  |  |  |
| A64680 |  | Concrete curb, Type (K1A) | 1d | 2026-08-29 A | 2026-11-28 | A64650 | 16% | 0.84d | 2026-08-05 | 2026-08-05 | -50.47d | 0d | ICKMO1-cost unite [16538.3 $]; Physical Units [142501 h] | 16,538.33 | 2,646.13 | ZNB | CON |  |
| A64690 |  | Concrete curb, Type (K1B) | 1d | 2026-08-29 A | 2026-11-29 | A64680 | 16% | 0.84d | 2026-08-06 | 2026-08-06 | -50.47d | 0d | ICKMO1-cost unite [16538.3 $]; Physical Units [142501 h] | 16,538.33 | 2,646.13 | ZNB | CON |  |
| A64700 |  | Concrete curb, Type (K2) | 1d | 2026-08-29 A | 2026-11-30 | A64690 | 16% | 0.84d | 2026-08-08 | 2026-08-08 | -50.47d | 0d | ICKMO1-cost unite [16538.3 $]; Physical Units [142501 h] | 16,538.33 | 2,646.13 | ZNB | CON |  |
|  | 5 | **Pavement Markings** |  | 2027-03-28 | 2027-03-30 |  |  |  |  |  |  |  |  |  |  |  |  |  |
| A64710 |  | Retroreflective Thermoplastic White Traffic lines | 1d | 2027-03-28 | 2027-03-29 | A64700, A64670 |  |  |  |  | 168d | 0d | ICKMO1-cost unite [48642.2 $]; Physical Units [419121 h] | 48,642.15 |  | ZNB | CON |  |
| A64720 |  | Retroreflective Thermoplastic Yellow Traffic lines | 1d | 2027-03-29 | 2027-03-30 | A64710 |  |  |  |  | 168d | 0d | ICKMO1-cost unite [48642.2 $]; Physical Units [419121 h] | 48,642.15 |  | ZNB | CON |  |
|  | 6 | **Traffic Signage** |  | 2027-03-30 | 2027-04-06 |  |  |  |  |  |  |  |  |  |  |  |  |  |
| A64730 |  | Traffic signs, ground mounted, 1 Sheet Alumenium, (breakaway) Single post | 1d | 2027-03-30 | 2027-03-31 | A64720 |  |  |  |  | 168d | 0d | ICKMO1-cost unite [16214 $]; Physical Units [139707 h] | 16,214.05 |  | ZNB | CON |  |
| A64740 |  | Traffic signs, ground mounted, 2 Sheet Alumenium, (breakaway) Single post | 1d | 2027-03-31 | 2027-04-01 | A64730 |  |  |  |  | 168d | 0d | ICKMO1-cost unite [16214 $]; Physical Units [139707 h] | 16,214.05 |  | ZNB | CON |  |
| A64750 |  | Traffic signs, ground mounted, Sheet Alumenium, (breakaway) Double post | 1d | 2027-04-01 | 2027-04-03 | A64740 |  |  |  |  | 168d | 0d | ICKMO1-cost unite [16214 $]; Physical Units [139707 h] | 16,214.05 |  | ZNB | CON |  |
| A64760 |  | Retroreflective raised pavement markers (Type A) | 1d | 2027-04-03 | 2027-04-04 | A64750 |  |  |  |  | 180d | 0d | ICKMO1-cost unite [16214 $]; Physical Units [139707 h] | 16,214.05 |  | ZNB | CON |  |
| A64770 |  | Ceramic raised pavement markers | 1d | 2027-04-04 | 2027-04-05 | A64760 |  |  |  |  | 180d | 0d | ICKMO1-cost unite [16214 $]; Physical Units [139707 h] | 16,214.05 |  | ZNB | CON |  |
| A64780 |  | Solar powered lighting cateyes pavement markers | 1d | 2027-04-05 | 2027-04-06 | A64770 |  |  |  |  | 193d |  | ICKMO1-cost unite [16214 $]; Physical Units [139707 h] | 16,214.05 |  | ZNB | CON |  |
|  | R20 | **Road 20** |  | 2026-08-15 | 2027-04-08 |  |  |  |  |  |  |  |  |  |  |  |  |  |
|  | AGG | **Aggregate Base Course** |  | 2026-08-15 | 2026-09-20 |  |  |  |  |  |  |  |  |  |  |  |  |  |
| A64790 |  | Aggregate base course | 3d | 2026-08-15 A | 2026-09-20 A | A64650 SS, A64400, A64650 | 100% |  | 2026-08-05 | 2026-08-08 |  |  | ICKMO1-cost unite [222364 $]; Aggregate base course [3223.11]; Physical Units [1915981 h] | 222,364.11 | 222,364.11 | ZNB | CON | ABC |

| ID | WBS | Activity | Duration | Start | Finish | Predecessors | Complete | Remaining | Planned start | Planned finish | Total float | Free float | Resources | Cost | Actual cost | ALKHARJ INDUSTERIAL AREA - PROJECT ZONES | ALKHARJ INDUSTERIAL AREA - DECEPLINS | ALKHARJ INDUSTERIAL AREA - ASPHALT WORKS |
| --- | --- | --- | --- | --- | --- | --- | --- | --- | --- | --- | --- | --- | --- | --- | --- | --- | --- | --- |
|  | 2 | **Bituminous Construction** |  | 2026-08-20 | 2026-09-28 |  |  |  |  |  |  |  |  |  |  |  |  |  |
| A64800 |  | Bituminous base course (Grading I - Class A) | 1d | 2026-08-20 A | 2026-09-28 A | A64790, A64840 | 100% |  | 2026-08-13 | 2026-08-13 |  |  | ICKMO1-cost unite [277955 $]; Bituminous base course [1425.56]; Physical Units [2394977 h] | 277,955.15 | 277,955.15 | ZNB | CON | BBC |
|  | 3 | **Asphalt Wearing Course** |  | 2027-03-28 | 2027-03-29 |  |  |  |  |  |  |  |  |  |  |  |  |  |
| A64810 |  | Bituminous concrete wearing course | 1d | 2027-03-28 | 2027-03-29 | A64800, A64670 |  |  |  |  | 42d | 0d | ICKMO1-cost unite [333546 $]; Bituminous concrete wearing course [761.44]; Physical Units [2873972 h] | 333,546.18 |  | ZNB | CON | BBC |
|  | 4 | **Precast Concrete Curb** |  | 2026-08-29 | 2026-11-30 |  |  |  |  |  |  |  |  |  |  |  |  |  |
| A64820 |  | Concrete curb, Type (K1A) | 1d | 2026-08-29 A | 2026-11-28 | A64790 | 24% | 0.76d | 2026-08-09 | 2026-08-09 | -50.99d | 0d | ICKMO1-cost unite [18901 $]; Physical Units [162858 h] | 18,900.95 | 4,536.23 | ZNB | CON |  |
| A64830 |  | Concrete curb, Type (K1B) | 1d | 2026-08-29 A | 2026-11-29 | A64820 | 24% | 0.76d | 2026-08-10 | 2026-08-10 | -50.99d | 0d | ICKMO1-cost unite [18901 $]; Physical Units [162858 h] | 18,900.95 | 4,536.23 | ZNB | CON |  |
| A64840 |  | Concrete curb, Type (K2) | 2d | 2026-08-29 A | 2026-11-30 | A64830 | 24% | 1.52d | 2026-08-11 | 2026-08-12 | -50.99d | 0d | ICKMO1-cost unite [18901 $]; Physical Units [162858 h] | 18,900.95 | 4,536.23 | ZNB | CON |  |
|  | 5 | **Pavement Markings** |  | 2027-03-29 | 2027-03-31 |  |  |  |  |  |  |  |  |  |  |  |  |  |
| A64850 |  | Retroreflective Thermoplastic White Traffic lines | 1d | 2027-03-29 | 2027-03-30 | A64840, A64810 |  |  |  |  | 166d | 0d | ICKMO1-cost unite [55591 $]; Physical Units [478995 h] | 55,591.03 |  | ZNB | CON |  |
| A64860 |  | Retroreflective Thermoplastic Yellow Traffic lines | 1d | 2027-03-30 | 2027-03-31 | A64850 |  |  |  |  | 166d | 0d | ICKMO1-cost unite [55591 $]; Physical Units [478995 h] | 55,591.03 |  | ZNB | CON |  |
|  | 6 | **Traffic Signage** |  | 2027-03-31 | 2027-04-08 |  |  |  |  |  |  |  |  |  |  |  |  |  |
| A64870 |  | Traffic signs, ground mounted, 1 Sheet Alumenium, (breakaway) Single post | 1d | 2027-03-31 | 2027-04-01 | A64860 |  |  |  |  | 166d | 0d | ICKMO1-cost unite [18530.3 $]; Physical Units [159665 h] | 18,530.34 |  | ZNB | CON |  |
| A64880 |  | Traffic signs, ground mounted, 2 Sheet Alumenium, (breakaway) Single post | 1d | 2027-04-01 | 2027-04-03 | A64870 |  |  |  |  | 166d | 0d | ICKMO1-cost unite [18530.3 $]; Physical Units [159665 h] | 18,530.34 |  | ZNB | CON |  |
| A64890 |  | Traffic signs, ground mounted, Sheet Alumenium, (breakaway) Double post | 2d | 2027-04-03 | 2027-04-05 | A64880 |  |  |  |  | 166d | 0d | ICKMO1-cost unite [18530.3 $]; Physical Units [159665 h] | 18,530.34 |  | ZNB | CON |  |
| A64900 |  | Retroreflective raised pavement markers (Type A) | 1d | 2027-04-05 | 2027-04-06 | A64890 |  |  |  |  | 178d | 0d | ICKMO1-cost unite [18530.3 $]; Physical Units [159665 h] | 18,530.34 |  | ZNB | CON |  |
| A64910 |  | Ceramic raised pavement markers | 1d | 2027-04-06 | 2027-04-07 | A64900 |  |  |  |  | 178d | 0d | ICKMO1-cost unite [18530.3 $]; Physical Units [159665 h] | 18,530.34 |  | ZNB | CON |  |
| A64920 |  | Solar powered lighting cateyes pavement markers | 1d | 2027-04-07 | 2027-04-08 | A64910 |  |  |  |  | 191d |  | ICKMO1-cost unite [18530.3 $]; Grader [200 h]; Physical Units [159665 h] | 18,530.34 |  | ZNB | CON |  |
|  | R21 | **Road 21** |  | 2026-08-29 | 2027-04-10 |  |  |  |  |  |  |  |  |  |  |  |  |  |
|  | AGG | **Aggregate Base Course** |  | 2026-08-29 | 2026-11-28 |  |  |  |  |  |  |  |  |  |  |  |  |  |
| A64930 |  | Aggregate base course | 3d | 2026-08-29 A | 2026-11-28 | A64790 SS, A64430, A64790 | 98% | 0.06d | 2026-08-09 | 2026-08-11 | -58.86d | 0d | ICKMO1-cost unite [222364 $]; Rubber compactor [200 h]; Roller compactor [200 h]; Trailers Truck [400 h]; Aggregate base course [3223.11]; Physical Units [1915981 h] | 222,364.11 | 217,916.83 | ZNB | CON | ABC |
|  | 2 | **Bituminous Construction** |  | 2026-08-29 | 2026-12-02 |  |  |  |  |  |  |  |  |  |  |  |  |  |
| A64940 |  | Bituminous base course (Grading I - Class A) | 1d | 2026-08-29 A | 2026-12-02 | A64930, A64980 | 98% | 0.02d | 2026-08-17 | 2026-08-17 | -52.03d | 6.83d | ICKMO1-cost unite [277955 $]; labor [600 h]; MC Truck [200 h]; Bituminous base course [1425.56]; Physical Units [2394977 h] | 277,955.15 | 272,396.04 | ZNB | CON | BBC |
|  | 3 | **Asphalt Wearing Course** |  | 2027-03-29 | 2027-03-30 |  |  |  |  |  |  |  |  |  |  |  |  |  |
| A64950 |  | Bituminous concrete wearing course | 1d | 2027-03-29 | 2027-03-30 | A64940, A64810 |  |  |  |  | 42d | 0d | ICKMO1-cost unite [333546 $]; Rubber compactor [200 h]; Roller compactor [200 h]; Trailers Truck [400 h]; Asphalt Paver [200 h]; Bituminous concrete wearing course [761.44]; Physical Units [2873972 h] | 333,546.18 |  | ZNB | CON | BBC |

| ID | WBS | Activity | Duration | Start | Finish | Predecessors | Complete | Remaining | Planned start | Planned finish | Total float | Free float | Resources | Cost | Actual cost | ALKHARJ INDUSTERIAL AREA - PROJECT ZONES | ALKHARJ INDUSTERIAL AREA - DECEPLINS | ALKHARJ INDUSTERIAL AREA - ASPHALT WORKS |
| --- | --- | --- | --- | --- | --- | --- | --- | --- | --- | --- | --- | --- | --- | --- | --- | --- | --- | --- |
|  | 4 | **Precast Concrete Curb** |  | 2026-11-28 | 2026-12-02 |  |  |  |  |  |  |  |  |  |  |  |  |  |
| A64960 |  | Concrete curb, Type (K1A) | 1d | 2026-11-28 | 2026-11-29 | A64930 |  |  |  |  | -52.03d | 0d | ICKMO1-cost unite [18901 $]; Physical Units [162858 h] | 18,900.95 |  | ZNB | CON |  |
| A64970 |  | Concrete curb, Type (K1B) | 1d | 2026-11-29 | 2026-11-30 | A64960 |  |  |  |  | -52.03d | 0d | ICKMO1-cost unite [18901 $]; labor [800 h]; Physical Units [162858 h] | 18,900.95 |  | ZNB | CON |  |
| A64980 |  | Concrete curb, Type (K2) | 2d | 2026-11-30 | 2026-12-02 | A64970 |  |  |  |  | -52.03d | 0d | ICKMO1-cost unite [18901 $]; labor [800 h]; Physical Units [162858 h] | 18,900.95 |  | ZNB | CON |  |
|  | 5 | **Pavement Markings** |  | 2027-03-30 | 2027-04-01 |  |  |  |  |  |  |  |  |  |  |  |  |  |
| A64990 |  | Retroreflective Thermoplastic White Traffic lines | 1d | 2027-03-30 | 2027-03-31 | A64980, A64950 |  |  |  |  | 165d | 0d | ICKMO1-cost unite [55591 $]; labor [400 h]; Marking Machines [200 h]; Physical Units [478995 h] | 55,591.03 |  | ZNB | CON |  |
| A65000 |  | Retroreflective Thermoplastic Yellow Traffic lines | 1d | 2027-03-31 | 2027-04-01 | A64990 |  |  |  |  | 165d | 0d | ICKMO1-cost unite [55591 $]; labor [400 h]; Marking Machines [200 h]; Physical Units [478995 h] | 55,591.03 |  | ZNB | CON |  |
|  | 6 | **Traffic Signage** |  | 2027-04-01 | 2027-04-10 |  |  |  |  |  |  |  |  |  |  |  |  |  |
| A65010 |  | Traffic signs, ground mounted, 1 Sheet Alumenium, (breakaway) Single post | 1d | 2027-04-01 | 2027-04-03 | A65000 |  |  |  |  | 165d | 0d | ICKMO1-cost unite [18530.3 $]; boom truck [200 h]; labor [400 h]; Physical Units [159665 h] | 18,530.34 |  | ZNB | CON |  |
| A65020 |  | Traffic signs, ground mounted, 2 Sheet Alumenium, (breakaway) Single post | 1d | 2027-04-03 | 2027-04-04 | A65010 |  |  |  |  | 165d | 0d | ICKMO1-cost unite [18530.3 $]; boom truck [200 h]; labor [400 h]; Physical Units [159665 h] | 18,530.34 |  | ZNB | CON |  |
| A62890 |  | Traffic signs, ground mounted, Sheet Alumenium, (breakaway) Double post | 2d | 2027-04-04 | 2027-04-06 | A65020 |  |  |  |  | 165d | 0d | ICKMO1-cost unite [18530.3 $]; boom truck [200 h]; labor [400 h]; Physical Units [159665 h] | 18,530.34 |  | ZNB | CON |  |
| A62900 |  | Retroreflective raised pavement markers (Type A) | 1d | 2027-04-06 | 2027-04-07 | A62890 |  |  |  |  | 177d | 0d | ICKMO1-cost unite [18530.3 $]; boom truck [200 h]; labor [400 h]; Physical Units [159665 h] | 18,530.34 |  | ZNB | CON |  |
| A62910 |  | Ceramic raised pavement markers | 1d | 2027-04-07 | 2027-04-08 | A62900 |  |  |  |  | 177d | 0d | ICKMO1-cost unite [18530.3 $]; boom truck [200 h]; labor [400 h]; Physical Units [159665 h] | 18,530.34 |  | ZNB | CON |  |
| A62920 |  | Solar powered lighting cateyes pavement markers | 1d | 2027-04-08 | 2027-04-10 | A62910 |  |  |  |  | 190d |  | ICKMO1-cost unite [18530.3 $]; Grader [200 h]; boom truck [200 h]; labor [400 h]; Physical Units [159665 h] | 18,530.34 |  | ZNB | CON |  |
|  | R22 | **Road 22** |  | 2026-08-29 | 2027-04-11 |  |  |  |  |  |  |  |  |  |  |  |  |  |
|  | AGG | **Aggregate Base Course** |  | 2026-08-29 | 2026-11-28 |  |  |  |  |  |  |  |  |  |  |  |  |  |
| A62930 |  | Aggregate base course | 3d | 2026-08-29 A | 2026-11-28 | A64930, A64460, A64930 FF | 98% | 0.06d | 2026-08-12 | 2026-08-15 | -58.86d | 0d | ICKMO1-cost unite [208466 $]; Rubber compactor [200 h]; Roller compactor [200 h]; Trailers Truck [400 h]; Aggregate base course [3223.11]; Physical Units [1796232 h] | 208,466.36 | 204,297.04 | ZNB | CON | ABC |
|  | 2 | **Bituminous Construction** |  | 2026-08-29 | 2026-12-01 |  |  |  |  |  |  |  |  |  |  |  |  |  |
| A62940 |  | Bituminous base course (Grading I - Class A) | 1d | 2026-08-29 A | 2026-12-01 | A62930, A62980 | 98% | 0.02d | 2026-08-19 | 2026-08-19 | -51.09d | 7.77d | ICKMO1-cost unite [260583 $]; labor [600 h]; MC Truck [200 h]; Bituminous base course [1425.56]; Physical Units [2245291 h] | 260,582.95 | 255,371.29 | ZNB | CON | BBC |
|  | 3 | **Asphalt Wearing Course** |  | 2027-03-30 | 2027-04-01 |  |  |  |  |  |  |  |  |  |  |  |  |  |
| A62950 |  | Bituminous concrete wearing course | 2d | 2027-03-30 | 2027-04-01 | A62940, A64950 |  |  |  |  | 42d | 0d | ICKMO1-cost unite [312700 $]; Rubber compactor [200 h]; Roller compactor [200 h]; Trailers Truck [400 h]; Asphalt Paver [200 h]; Bituminous concrete wearing course [761.44]; Physical Units [2694349 h] | 312,699.54 |  | ZNB | CON | BBC |
|  | 4 | **Precast Concrete Curb** |  | 2026-11-28 | 2026-12-01 |  |  |  |  |  |  |  |  |  |  |  |  |  |
| A62960 |  | Concrete curb, Type (K1A) | 1d | 2026-11-28 | 2026-11-29 | A62930 |  |  |  |  | -51.09d | 0d | ICKMO1-cost unite [17719.6 $]; Physical Units [152680 h] | 17,719.64 |  | ZNB | CON |  |
| A62970 |  | Concrete curb, Type (K1B) | 1d | 2026-11-29 | 2026-11-30 | A62960 |  |  |  |  | -51.09d | 0d | ICKMO1-cost unite [17719.6 $]; labor [800 h]; Physical Units [152680 h] | 17,719.64 |  | ZNB | CON |  |
| A62980 |  | Concrete curb, Type (K2) | 1d | 2026-11-30 | 2026-12-01 | A62970 |  |  |  |  | -51.09d | 0d | ICKMO1-cost unite [17719.6 $]; labor [800 h]; Physical Units [152680 h] | 17,719.64 |  | ZNB | CON |  |

| ID | WBS | Activity | Duration | Start | Finish | Predecessors | Complete | Remaining | Planned start | Planned finish | Total float | Free float | Resources | Cost | Actual cost | ALKHARJ INDUSTERIAL AREA - PROJECT ZONES | ALKHARJ INDUSTERIAL AREA - DECEPLINS | ALKHARJ INDUSTERIAL AREA - ASPHALT WORKS |
| --- | --- | --- | --- | --- | --- | --- | --- | --- | --- | --- | --- | --- | --- | --- | --- | --- | --- | --- |
|  | 5 | **Pavement Markings** |  | 2027-04-01 | 2027-04-04 |  |  |  |  |  |  |  |  |  |  |  |  |  |
| A62990 |  | Retroreflective Thermoplastic White Traffic lines | 1d | 2027-04-01 | 2027-04-03 | A62980, A62950 |  |  |  |  | 164d | 0d | ICKMO1-cost unite [52116.6 $]; labor [400 h]; Marking Machines [200 h]; Physical Units [449058 h] | 52,116.59 |  | ZNB | CON |  |
| A63000 |  | Retroreflective Thermoplastic Yellow Traffic lines | 1d | 2027-04-03 | 2027-04-04 | A62990 |  |  |  |  | 164d | 0d | ICKMO1-cost unite [52116.6 $]; labor [400 h]; Marking Machines [200 h]; Physical Units [449058 h] | 52,116.59 |  | ZNB | CON |  |
|  | 6 | **Traffic Signage** |  | 2027-04-04 | 2027-04-11 |  |  |  |  |  |  |  |  |  |  |  |  |  |
| A63010 |  | Traffic signs, ground mounted, 1 Sheet Alumenium, (breakaway) Single post | 1d | 2027-04-04 | 2027-04-05 | A63000 |  |  |  |  | 164d | 0d | ICKMO1-cost unite [17372.2 $]; boom truck [200 h]; labor [400 h]; Physical Units [149686 h] | 17,372.2 |  | ZNB | CON |  |
| A63020 |  | Traffic signs, ground mounted, 2 Sheet Alumenium, (breakaway) Single post | 1d | 2027-04-05 | 2027-04-06 | A63010 |  |  |  |  | 164d | 0d | ICKMO1-cost unite [17372.2 $]; boom truck [200 h]; labor [400 h]; Physical Units [149686 h] | 17,372.2 |  | ZNB | CON |  |
| A63030 |  | Traffic signs, ground mounted, Sheet Alumenium, (breakaway) Double post | 1d | 2027-04-06 | 2027-04-07 | A63020 |  |  |  |  | 164d | 0d | ICKMO1-cost unite [17372.2 $]; boom truck [200 h]; labor [400 h]; Physical Units [149686 h] | 17,372.2 |  | ZNB | CON |  |
| A63040 |  | Retroreflective raised pavement markers (Type A) | 1d | 2027-04-07 | 2027-04-08 | A63030 |  |  |  |  | 176d | 0d | ICKMO1-cost unite [17372.2 $]; boom truck [200 h]; labor [400 h]; Physical Units [149686 h] | 17,372.2 |  | ZNB | CON |  |
| A63050 |  | Ceramic raised pavement markers | 1d | 2027-04-08 | 2027-04-10 | A63040 |  |  |  |  | 176d | 0d | ICKMO1-cost unite [17372.2 $]; boom truck [200 h]; labor [400 h]; Physical Units [149686 h] | 17,372.2 |  | ZNB | CON |  |
| A63060 |  | Solar powered lighting cateyes pavement markers | 1d | 2027-04-10 | 2027-04-11 | A63050 |  |  |  |  | 189d |  | ICKMO1-cost unite [17372.2 $]; Grader [200 h]; boom truck [200 h]; labor [400 h]; Physical Units [149686 h] | 17,372.2 |  | ZNB | CON |  |
|  | R23 | **Road 23** |  | 2026-08-29 | 2027-04-12 |  |  |  |  |  |  |  |  |  |  |  |  |  |
|  | AGG | **Aggregate Base Course** |  | 2026-08-29 | 2026-11-28 |  |  |  |  |  |  |  |  |  |  |  |  |  |
| A63070 |  | Aggregate base course | 3d | 2026-08-29 A | 2026-11-28 | A62930 SS, A64490, A62930 | 98% | 0.06d | 2026-08-16 | 2026-08-18 | -58.86d | 0d | ICKMO1-cost unite [194569 $]; Rubber compactor [200 h]; Roller compactor [200 h]; Trailers Truck [400 h]; Aggregate base course [3223.11]; Physical Units [1676484 h] | 194,568.6 | 190,677.23 | ZNB | CON | ABC |
|  | 2 | **Bituminous Construction** |  | 2026-08-29 | 2026-12-01 |  |  |  |  |  |  |  |  |  |  |  |  |  |
| A63080 |  | Bituminous base course (Grading I - Class A) | 1d | 2026-08-29 A | 2026-12-01 | A63070, A63120 | 98% | 0.02d | 2026-08-23 | 2026-08-23 | -51.15d | 7.71d | ICKMO1-cost unite [243211 $]; labor [600 h]; MC Truck [200 h]; Bituminous base course [1425.56]; Physical Units [2095605 h] | 243,210.76 | 238,346.54 | ZNB | CON | BBC |
|  | 3 | **Asphalt Wearing Course** |  | 2027-04-01 | 2027-04-03 |  |  |  |  |  |  |  |  |  |  |  |  |  |
| A63090 |  | Bituminous concrete wearing course | 1d | 2027-04-01 | 2027-04-03 | A63080, A62950 |  |  |  |  | 42d | 0d | ICKMO1-cost unite [291853 $]; Rubber compactor [200 h]; Roller compactor [200 h]; Trailers Truck [400 h]; Asphalt Paver [200 h]; Bituminous concrete wearing course [761.44]; Physical Units [2514725 h] | 291,852.91 |  | ZNB | CON | BBC |
|  | 4 | **Precast Concrete Curb** |  | 2026-11-28 | 2026-12-01 |  |  |  |  |  |  |  |  |  |  |  |  |  |
| A63100 |  | Concrete curb, Type (K1A) | 1d | 2026-11-28 | 2026-11-29 | A63070 |  |  |  |  | -51.15d | 0d | ICKMO1-cost unite [16538.3 $]; Physical Units [142501 h] | 16,538.33 |  | ZNB | CON |  |
| A63110 |  | Concrete curb, Type (K1B) | 1d | 2026-11-29 | 2026-11-30 | A63100 |  |  |  |  | -51.15d | 0d | ICKMO1-cost unite [16538.3 $]; labor [800 h]; Physical Units [142501 h] | 16,538.33 |  | ZNB | CON |  |
| A63120 |  | Concrete curb, Type (K2) | 1d | 2026-11-30 | 2026-12-01 | A63110 |  |  |  |  | -51.15d | 0d | ICKMO1-cost unite [16538.3 $]; labor [800 h]; Physical Units [142501 h] | 16,538.33 |  | ZNB | CON |  |
|  | 5 | **Pavement Markings** |  | 2027-04-03 | 2027-04-05 |  |  |  |  |  |  |  |  |  |  |  |  |  |
| A63130 |  | Retroreflective Thermoplastic White Traffic lines | 1d | 2027-04-03 | 2027-04-04 | A63120, A63090 |  |  |  |  | 163d | 0d | ICKMO1-cost unite [48642.2 $]; labor [400 h]; Marking Machines [200 h]; Physical Units [419121 h] | 48,642.15 |  | ZNB | CON |  |
| A63140 |  | Retroreflective Thermoplastic Yellow Traffic lines | 1d | 2027-04-04 | 2027-04-05 | A63130 |  |  |  |  | 163d | 0d | ICKMO1-cost unite [48642.2 $]; labor [400 h]; Marking Machines [200 h]; Physical Units [419121 h] | 48,642.15 |  | ZNB | CON |  |

| ID | WBS | Activity | Duration | Start | Finish | Predecessors | Complete | Remaining | Planned start | Planned finish | Total float | Free float | Resources | Cost | Actual cost | ALKHARJ INDUSTERIAL AREA - PROJECT ZONES | ALKHARJ INDUSTERIAL AREA - DECEPLINS | ALKHARJ INDUSTERIAL AREA - ASPHALT WORKS |
| --- | --- | --- | --- | --- | --- | --- | --- | --- | --- | --- | --- | --- | --- | --- | --- | --- | --- | --- |
|  | 6 | **Traffic Signage** |  | 2027-04-05 | 2027-04-12 |  |  |  |  |  |  |  |  |  |  |  |  |  |
| A63150 |  | Traffic signs, ground mounted, 1 Sheet Alumenium, (breakaway) Single post | 1d | 2027-04-05 | 2027-04-06 | A63140 |  |  |  |  | 163d | 0d | ICKMO1-cost unite [16214 $]; boom truck [200 h]; labor [400 h]; Physical Units [139707 h] | 16,214.05 |  | ZNB | CON |  |
| A63160 |  | Traffic signs, ground mounted, 2 Sheet Alumenium, (breakaway) Single post | 1d | 2027-04-06 | 2027-04-07 | A63150 |  |  |  |  | 163d | 0d | ICKMO1-cost unite [16214 $]; boom truck [200 h]; labor [400 h]; Physical Units [139707 h] | 16,214.05 |  | ZNB | CON |  |
| A63170 |  | Traffic signs, ground mounted, Sheet Alumenium, (breakaway) Double post | 1d | 2027-04-07 | 2027-04-08 | A63160 |  |  |  |  | 163d | 0d | ICKMO1-cost unite [16214 $]; boom truck [200 h]; labor [400 h]; Physical Units [139707 h] | 16,214.05 |  | ZNB | CON |  |
| A63180 |  | Retroreflective raised pavement markers (Type A) | 1d | 2027-04-08 | 2027-04-10 | A63170 |  |  |  |  | 175d | 0d | ICKMO1-cost unite [16214 $]; boom truck [200 h]; labor [400 h]; Physical Units [139707 h] | 16,214.05 |  | ZNB | CON |  |
| A63190 |  | Ceramic raised pavement markers | 1d | 2027-04-10 | 2027-04-11 | A63180 |  |  |  |  | 175d | 0d | ICKMO1-cost unite [16214 $]; boom truck [200 h]; labor [400 h]; Physical Units [139707 h] | 16,214.05 |  | ZNB | CON |  |
| A63200 |  | Solar powered lighting cateyes pavement markers | 1d | 2027-04-11 | 2027-04-12 | A63190 |  |  |  |  | 188d |  | ICKMO1-cost unite [16214 $]; Grader [200 h]; boom truck [200 h]; labor [400 h]; Physical Units [139707 h] | 16,214.05 |  | ZNB | CON |  |
|  | R24 | **Road 24** |  | 2026-08-29 | 2027-04-14 |  |  |  |  |  |  |  |  |  |  |  |  |  |
|  | AGG | **Aggregate Base Course** |  | 2026-08-29 | 2026-11-28 |  |  |  |  |  |  |  |  |  |  |  |  |  |
| A63210 |  | Aggregate base course | 3d | 2026-08-29 A | 2026-11-28 | A63070 SS, A64520, A63070 | 97% | 0.09d | 2026-08-19 | 2026-08-22 | -58.86d | 0d | ICKMO1-cost unite [222364 $]; Rubber compactor [200 h]; Roller compactor [200 h]; Trailers Truck [400 h]; Aggregate base course [3223.11]; Physical Units [1915981 h] | 222,364.11 | 215,693.19 | ZNB | CON | ABC |
|  | 2 | **Bituminous Construction** |  | 2026-08-29 | 2026-12-02 |  |  |  |  |  |  |  |  |  |  |  |  |  |
| A63220 |  | Bituminous base course (Grading I - Class A) | 1d | 2026-08-29 A | 2026-12-02 | A63210, A63260 | 97% | 0.03d | 2026-08-27 | 2026-08-27 | -52.25d | 6.61d | ICKMO1-cost unite [277955 $]; labor [600 h]; MC Truck [200 h]; Bituminous base course [1425.56]; Physical Units [2394977 h] | 277,955.15 | 269,616.49 | ZNB | CON | BBC |
|  | 3 | **Asphalt Wearing Course** |  | 2027-04-03 | 2027-04-05 |  |  |  |  |  |  |  |  |  |  |  |  |  |
| A63230 |  | Bituminous concrete wearing course | 2d | 2027-04-03 | 2027-04-05 | A63220, A63090 |  |  |  |  | 42d | 0d | ICKMO1-cost unite [333546 $]; Rubber compactor [200 h]; Roller compactor [200 h]; Trailers Truck [400 h]; Asphalt Paver [200 h]; Bituminous concrete wearing course [761.44]; Physical Units [2873972 h] | 333,546.18 |  | ZNB | CON | BBC |
|  | 4 | **Precast Concrete Curb** |  | 2026-11-28 | 2026-12-02 |  |  |  |  |  |  |  |  |  |  |  |  |  |
| A63240 |  | Concrete curb, Type (K1A) | 1d | 2026-11-28 | 2026-11-29 | A63210 |  |  |  |  | -52.25d | 0d | ICKMO1-cost unite [18901 $]; Physical Units [162858 h] | 18,900.95 |  | ZNB | CON |  |
| A63250 |  | Concrete curb, Type (K1B) | 1d | 2026-11-29 | 2026-11-30 | A63240 |  |  |  |  | -52.25d | 0d | ICKMO1-cost unite [18901 $]; labor [800 h]; Physical Units [162858 h] | 18,900.95 |  | ZNB | CON |  |
| A63260 |  | Concrete curb, Type (K2) | 2d | 2026-11-30 | 2026-12-02 | A63250 |  |  |  |  | -52.25d | 0d | ICKMO1-cost unite [18901 $]; labor [800 h]; Physical Units [162858 h] | 18,900.95 |  | ZNB | CON |  |
|  | 5 | **Pavement Markings** |  | 2027-04-05 | 2027-04-07 |  |  |  |  |  |  |  |  |  |  |  |  |  |
| A63270 |  | Retroreflective Thermoplastic White Traffic lines | 1d | 2027-04-05 | 2027-04-06 | A63260, A63230 |  |  |  |  | 161d | 0d | ICKMO1-cost unite [55591 $]; labor [400 h]; Marking Machines [200 h]; Physical Units [478995 h] | 55,591.03 |  | ZNB | CON |  |
| A63280 |  | Retroreflective Thermoplastic Yellow Traffic lines | 1d | 2027-04-06 | 2027-04-07 | A63270 |  |  |  |  | 161d | 0d | ICKMO1-cost unite [55591 $]; labor [400 h]; Marking Machines [200 h]; Physical Units [478995 h] | 55,591.03 |  | ZNB | CON |  |
|  | 6 | **Traffic Signage** |  | 2027-04-07 | 2027-04-14 |  |  |  |  |  |  |  |  |  |  |  |  |  |
| A63290 |  | Traffic signs, ground mounted, 1 Sheet Alumenium, (breakaway) Single post | 1d | 2027-04-07 | 2027-04-08 | A63280 |  |  |  |  | 161d | 0d | ICKMO1-cost unite [18530.3 $]; boom truck [200 h]; labor [400 h]; Physical Units [159665 h] | 18,530.34 |  | ZNB | CON |  |
| A63300 |  | Traffic signs, ground mounted, 2 Sheet Alumenium, (breakaway) Single post | 1d | 2027-04-08 | 2027-04-10 | A63290 |  |  |  |  | 161d | 0d | ICKMO1-cost unite [18530.3 $]; boom truck [200 h]; labor [400 h]; Physical Units [159665 h] | 18,530.34 |  | ZNB | CON |  |
| A63310 |  | Traffic signs, ground mounted, Sheet Alumenium, (breakaway) Double post | 1d | 2027-04-10 | 2027-04-11 | A63300 |  |  |  |  | 161d | 0d | ICKMO1-cost unite [18530.3 $]; boom truck [200 h]; labor [400 h]; Physical Units [159665 h] | 18,530.34 |  | ZNB | CON |  |
| A63320 |  | Retroreflective raised pavement markers (Type A) | 1d | 2027-04-11 | 2027-04-12 | A63310 |  |  |  |  | 173d | 0d | ICKMO1-cost unite [18530.3 $]; boom truck [200 h]; labor [400 h]; Physical Units [159665 h] | 18,530.34 |  | ZNB | CON |  |
| A63330 |  | Ceramic raised pavement markers | 1d | 2027-04-12 | 2027-04-13 | A63320 |  |  |  |  | 173d | 0d | ICKMO1-cost unite [18530.3 $]; boom truck [200 h]; labor [400 h]; Physical Units [159665 h] | 18,530.34 |  | ZNB | CON |  |
| A63340 |  | Solar powered lighting cateyes pavement markers | 1d | 2027-04-13 | 2027-04-14 | A63330 |  |  |  |  | 186d |  | ICKMO1-cost unite [18530.3 $]; Grader [200 h]; boom truck [200 h]; labor [400 h]; Physical Units [159665 h] | 18,530.34 |  | ZNB | CON |  |

| ID | WBS | Activity | Duration | Start | Finish | Predecessors | Complete | Remaining | Planned start | Planned finish | Total float | Free float | Resources | Cost | Actual cost | ALKHARJ INDUSTERIAL AREA - PROJECT ZONES | ALKHARJ INDUSTERIAL AREA - DECEPLINS | ALKHARJ INDUSTERIAL AREA - ASPHALT WORKS |
| --- | --- | --- | --- | --- | --- | --- | --- | --- | --- | --- | --- | --- | --- | --- | --- | --- | --- | --- |
|  | R25 | **Road 25** |  | 2026-08-20 | 2027-04-18 |  |  |  |  |  |  |  |  |  |  |  |  |  |
|  | AGG | **Aggregate Base Course** |  | 2026-08-20 | 2026-09-28 |  |  |  |  |  |  |  |  |  |  |  |  |  |
| A63350 |  | Aggregate base course | 3d | 2026-08-20 A | 2026-09-28 A | A63210, A64550, A63210 FF | 100% |  | 2026-08-23 | 2026-08-25 |  |  | ICKMO1-cost unite [236262 $]; Rubber compactor [200 h]; Roller compactor [200 h]; Trailers Truck [400 h]; Aggregate base course [3223.11]; Physical Units [2035730 h] | 236,261.88 | 236,261.88 | ZNB | CON | ABC |
|  | 2 | **Bituminous Construction** |  | 2026-08-20 | 2026-09-28 |  |  |  |  |  |  |  |  |  |  |  |  |  |
| A63360 |  | Bituminous base course (Grading I - Class A) | 1d | 2026-08-20 A | 2026-09-28 A | A63350, A63400 | 100% |  | 2026-08-31 | 2026-08-31 |  |  | ICKMO1-cost unite [295327 $]; labor [600 h]; MC Truck [200 h]; Bituminous base course [1425.56]; Physical Units [2544663 h] | 295,327.34 | 295,327.34 | ZNB | CON | BBC |
|  | 3 | **Asphalt Wearing Course** |  | 2027-04-05 | 2027-04-07 |  |  |  |  |  |  |  |  |  |  |  |  |  |
| A63370 |  | Bituminous concrete wearing course | 2d | 2027-04-05 | 2027-04-07 | A63360, A63230 |  |  |  |  | 42d | 0d | ICKMO1-cost unite [354393 $]; Rubber compactor [200 h]; Roller compactor [200 h]; Trailers Truck [400 h]; Asphalt Paver [200 h]; Bituminous concrete wearing course [761.44]; Physical Units [3053595 h] | 354,392.81 |  | ZNB | CON | BBC |
|  | 4 | **Precast Concrete Curb** |  | 2026-11-28 | 2026-12-02 |  |  |  |  |  |  |  |  |  |  |  |  |  |
| A63380 |  | Concrete curb, Type (K1A) | 1d | 2026-11-28 | 2026-11-29 | A63350 |  |  |  |  | -52.22d | 0d | ICKMO1-cost unite [20082.3 $]; Physical Units [173037 h] | 20,082.26 |  | ZNB | CON |  |
| A63390 |  | Concrete curb, Type (K1B) | 1d | 2026-11-29 | 2026-11-30 | A63380 |  |  |  |  | -52.22d | 0d | ICKMO1-cost unite [20082.3 $]; labor [800 h]; Physical Units [173037 h] | 20,082.26 |  | ZNB | CON |  |
| A63400 |  | Concrete curb, Type (K2) | 2d | 2026-11-30 | 2026-12-02 | A63390 |  |  |  |  | -52.22d | 0d | ICKMO1-cost unite [20082.3 $]; labor [800 h]; Physical Units [173037 h] | 20,082.26 |  | ZNB | CON |  |
|  | 5 | **Pavement Markings** |  | 2027-04-07 | 2027-04-10 |  |  |  |  |  |  |  |  |  |  |  |  |  |
| A63410 |  | Retroreflective Thermoplastic White Traffic lines | 1d | 2027-04-07 | 2027-04-08 | A63400, A63370 |  |  |  |  | 169d | 0d | ICKMO1-cost unite [59065.5 $]; labor [400 h]; Marking Machines [200 h]; Physical Units [508933 h] | 59,065.47 |  | ZNB | CON |  |
| A63420 |  | Retroreflective Thermoplastic Yellow Traffic lines | 1d | 2027-04-08 | 2027-04-10 | A63410 |  |  |  |  | 169d | 0d | ICKMO1-cost unite [59065.5 $]; labor [400 h]; Marking Machines [200 h]; Physical Units [508933 h] | 59,065.47 |  | ZNB | CON |  |
|  | 6 | **Traffic Signage** |  | 2027-04-10 | 2027-04-18 |  |  |  |  |  |  |  |  |  |  |  |  |  |
| A63430 |  | Traffic signs, ground mounted, 1 Sheet Alumenium, (breakaway) Single post | 1d | 2027-04-10 | 2027-04-11 | A63420 |  |  |  |  | 169d | 0d | ICKMO1-cost unite [19688.5 $]; boom truck [200 h]; labor [400 h]; Physical Units [169644 h] | 19,688.49 |  | ZNB | CON |  |
| A63440 |  | Traffic signs, ground mounted, 2 Sheet Alumenium, (breakaway) Single post | 1d | 2027-04-11 | 2027-04-12 | A63430 |  |  |  |  | 169d | 0d | ICKMO1-cost unite [19688.5 $]; boom truck [200 h]; labor [400 h]; Physical Units [169644 h] | 19,688.49 |  | ZNB | CON |  |
| A63450 |  | Traffic signs, ground mounted, Sheet Alumenium, (breakaway) Double post | 2d | 2027-04-12 | 2027-04-14 | A63440 |  |  |  |  | 169d | 0d | ICKMO1-cost unite [19688.5 $]; boom truck [200 h]; labor [400 h]; Physical Units [169644 h] | 19,688.49 |  | ZNB | CON |  |
| A63460 |  | Retroreflective raised pavement markers (Type A) | 1d | 2027-04-14 | 2027-04-15 | A63450 |  |  |  |  | 181d | 0d | ICKMO1-cost unite [19688.5 $]; boom truck [200 h]; labor [400 h]; Physical Units [169644 h] | 19,688.49 |  | ZNB | CON |  |
| A63470 |  | Ceramic raised pavement markers | 1d | 2027-04-15 | 2027-04-17 | A63460 |  |  |  |  | 181d | 0d | ICKMO1-cost unite [19688.5 $]; boom truck [200 h]; labor [400 h]; Physical Units [169644 h] | 19,688.49 |  | ZNB | CON |  |
| A63480 |  | Solar powered lighting cateyes pavement markers | 1d | 2027-04-17 | 2027-04-18 | A63470 |  |  |  |  | 183d |  | ICKMO1-cost unite [19688.5 $]; Grader [200 h]; boom truck [200 h]; labor [400 h]; Physical Units [169644 h] | 19,688.49 |  | ZNB | CON |  |
|  | R251 | **Road 26** |  | 2026-09-05 | 2027-04-19 |  |  |  |  |  |  |  |  |  |  |  |  |  |
|  | AGG | **Aggregate Base Course** |  | 2026-09-05 | 2026-11-28 |  |  |  |  |  |  |  |  |  |  |  |  |  |
| A63910 |  | Aggregate base course | 3d | 2026-09-05 A | 2026-11-28 | A63350, A66650, A63350 FF | 89% | 0.33d | 2026-08-26 | 2026-08-29 | -58.86d | 0d | ICKMO1-cost unite [583706 $]; Rubber compactor [200 h]; Roller compactor [200 h]; Trailers Truck [400 h]; Aggregate base course [3223.11]; Physical Units [5029451 h] | 583,705.81 | 519,498.17 | ZNB | CON | ABC |

| ID | WBS | Activity | Duration | Start | Finish | Predecessors | Complete | Remaining | Planned start | Planned finish | Total float | Free float | Resources | Cost | Actual cost | ALKHARJ INDUSTERIAL AREA - PROJECT ZONES | ALKHARJ INDUSTERIAL AREA - DECEPLINS | ALKHARJ INDUSTERIAL AREA - ASPHALT WORKS |
| --- | --- | --- | --- | --- | --- | --- | --- | --- | --- | --- | --- | --- | --- | --- | --- | --- | --- | --- |
|  | 2 | **Bituminous Construction** |  | 2026-09-05 | 2026-12-02 |  |  |  |  |  |  |  |  |  |  |  |  |  |
| A63920 |  | Bituminous base course (Grading I - Class A) | 2d | 2026-09-05 A | 2026-12-02 | A63910, A63960 | 83% | 0.34d | 2026-09-03 | 2026-09-05 | -52.89d | 5.97d | ICKMO1-cost unite [729632 $]; labor [600 h]; MC Truck [200 h]; Bituminous base course [1425.56]; Physical Units [6286814 h] | 729,632.27 | 605,594.78 | ZNB | CON | BBC |
|  | 3 | **Asphalt Wearing Course** |  | 2027-04-07 | 2027-04-12 |  |  |  |  |  |  |  |  |  |  |  |  |  |
| A63930 |  | Bituminous concrete wearing course | 4d | 2027-04-07 | 2027-04-12 | A63920, A63370 |  |  |  |  | 42d | 0d | ICKMO1-cost unite [875559 $]; Rubber compactor [200 h]; Roller compactor [200 h]; Trailers Truck [400 h]; Asphalt Paver [200 h]; Bituminous concrete wearing course [761.44]; Physical Units [7544176 h] | 875,558.72 |  | ZNB | CON | BBC |
|  | 4 | **Precast Concrete Curb** |  | 2026-11-28 | 2026-12-02 |  |  |  |  |  |  |  |  |  |  |  |  |  |
| A63940 |  | Concrete curb, Type (K1A) | 4d | 2026-11-28 | 2026-12-02 | A63910 |  |  |  |  | -52.89d | 0d | ICKMO1-cost unite [49615 $]; Physical Units [427503 h] | 49,614.99 |  | ZNB | CON |  |
| A63950 |  | Concrete curb, Type (K1B) | 4d | 2026-11-28 | 2026-12-02 | A63940 SS, A63940 FF |  |  |  |  | -52.89d | 0d | ICKMO1-cost unite [49615 $]; labor [800 h]; Physical Units [427503 h] | 49,614.99 |  | ZNB | CON |  |
| A63960 |  | Concrete curb, Type (K2) | 4d | 2026-11-28 | 2026-12-02 | A63950 SS, A63950 FF |  |  |  |  | -52.89d | 0d | ICKMO1-cost unite [49615 $]; labor [800 h]; Physical Units [427503 h] | 49,614.99 |  | ZNB | CON |  |
|  | 5 | **Pavement Markings** |  | 2027-04-12 | 2027-04-17 |  |  |  |  |  |  |  |  |  |  |  |  |  |
| A63970 |  | Retroreflective Thermoplastic White Traffic lines | 2d | 2027-04-12 | 2027-04-14 | A63960, A63930 |  |  |  |  | 154d | 0d | ICKMO1-cost unite [145926 $]; labor [400 h]; Marking Machines [200 h]; Physical Units [1257363 h] | 145,926.45 |  | ZNB | CON |  |
| A63980 |  | Retroreflective Thermoplastic Yellow Traffic lines | 2d | 2027-04-14 | 2027-04-17 | A63970 |  |  |  |  | 154d | 0d | ICKMO1-cost unite [145926 $]; labor [400 h]; Marking Machines [200 h]; Physical Units [1257363 h] | 145,926.45 |  | ZNB | CON |  |
|  | 6 | **Traffic Signage** |  | 2027-04-17 | 2027-04-19 |  |  |  |  |  |  |  |  |  |  |  |  |  |
| A63990 |  | Traffic signs, ground mounted, 1 Sheet Alumenium, (breakaway) Single post | 2d | 2027-04-17 | 2027-04-19 | A63980 |  |  |  |  | 182d |  | ICKMO1-cost unite [48642.2 $]; boom truck [200 h]; labor [400 h]; Physical Units [419121 h] | 48,642.15 |  | ZNB | CON |  |
| A64000 |  | Traffic signs, ground mounted, 2 Sheet Alumenium, (breakaway) Single post | 2d | 2027-04-17 | 2027-04-19 | A63980 |  |  |  |  | 182d |  | ICKMO1-cost unite [48642.2 $]; boom truck [200 h]; labor [400 h]; Physical Units [419121 h] | 48,642.15 |  | ZNB | CON |  |
| A64010 |  | Traffic signs, ground mounted, Sheet Alumenium, (breakaway) Double post | 2d | 2027-04-17 | 2027-04-19 | A63980 |  |  |  |  | 154d | 0d | ICKMO1-cost unite [48642.2 $]; boom truck [200 h]; labor [400 h]; Physical Units [419121 h] | 48,642.15 |  | ZNB | CON |  |
| A64020 |  | Retroreflective raised pavement markers (Type A) | 2d | 2027-04-17 | 2027-04-19 | A63980 |  |  |  |  | 182d |  | ICKMO1-cost unite [48642.2 $]; boom truck [200 h]; labor [400 h]; Physical Units [419121 h] | 48,642.15 |  | ZNB | CON |  |
| A64030 |  | Ceramic raised pavement markers | 2d | 2027-04-17 | 2027-04-19 | A63980 |  |  |  |  | 168d | 0d | ICKMO1-cost unite [48642.2 $]; boom truck [200 h]; labor [400 h]; Physical Units [419121 h] | 48,642.15 |  | ZNB | CON |  |
| A64040 |  | Solar powered lighting cateyes pavement markers | 2d | 2027-04-17 | 2027-04-19 | A63980 |  |  |  |  | 182d |  | ICKMO1-cost unite [48642.2 $]; Grader [200 h]; boom truck [200 h]; labor [400 h]; Physical Units [419121 h] | 48,642.15 |  | ZNB | CON |  |
|  | R2511 | **Road 27** |  | 2026-09-05 | 2027-04-25 |  |  |  |  |  |  |  |  |  |  |  |  |  |
|  | AGG | **Aggregate Base Course** |  | 2026-09-05 | 2026-11-28 |  |  |  |  |  |  |  |  |  |  |  |  |  |
| A64050 |  | Aggregate base course | 3d | 2026-09-05 A | 2026-11-28 | A63910, A66680, A63910 FF | 95% | 0.15d | 2026-08-30 | 2026-09-01 | -58.86d | 0d | ICKMO1-cost unite [236262 $]; Rubber compactor [200 h]; Roller compactor [200 h]; Trailers Truck [400 h]; Aggregate base course [3223.11]; Physical Units [2035730 h] | 236,261.88 | 224,448.78 | ZNB | CON | ABC |
|  | 2 | **Bituminous Construction** |  | 2026-09-05 | 2026-12-02 |  |  |  |  |  |  |  |  |  |  |  |  |  |
| A64060 |  | Bituminous base course (Grading I - Class A) | 1d | 2026-09-05 A | 2026-12-02 | A64050, A64100 | 90% | 0.1d | 2026-09-07 | 2026-09-07 | -52.8d | 6.06d | ICKMO1-cost unite [295327 $]; labor [600 h]; MC Truck [200 h]; Bituminous base course [1425.56]; Physical Units [2544663 h] | 295,327.34 | 265,794.61 | ZNB | CON | BBC |
|  | 3 | **Asphalt Wearing Course** |  | 2027-04-12 | 2027-04-14 |  |  |  |  |  |  |  |  |  |  |  |  |  |
| A64070 |  | Bituminous concrete wearing course | 2d | 2027-04-12 | 2027-04-14 | A64060, A63930 |  |  |  |  | 42d | 0d | ICKMO1-cost unite [354393 $]; Rubber compactor [200 h]; Roller compactor [200 h]; Trailers Truck [400 h]; Asphalt Paver [200 h]; Bituminous concrete wearing course [761.44]; Physical Units [3053595 h] | 354,392.81 |  | ZNB | CON | BBC |

| ID | WBS | Activity | Duration | Start | Finish | Predecessors | Complete | Remaining | Planned start | Planned finish | Total float | Free float | Resources | Cost | Actual cost | ALKHARJ INDUSTERIAL AREA - PROJECT ZONES | ALKHARJ INDUSTERIAL AREA - DECEPLINS | ALKHARJ INDUSTERIAL AREA - ASPHALT WORKS |
| --- | --- | --- | --- | --- | --- | --- | --- | --- | --- | --- | --- | --- | --- | --- | --- | --- | --- | --- |
|  | 4 | **Precast Concrete Curb** |  | 2026-11-28 | 2026-12-02 |  |  |  |  |  |  |  |  |  |  |  |  |  |
| A64080 |  | Concrete curb, Type (K1A) | 1d | 2026-11-28 | 2026-11-29 | A64050 |  |  |  |  | -52.8d | 0d | ICKMO1-cost unite [20082.3 $]; Physical Units [173037 h] | 20,082.26 |  | ZNB | CON |  |
| A64090 |  | Concrete curb, Type (K1B) | 1d | 2026-11-29 | 2026-11-30 | A64080 |  |  |  |  | -52.8d | 0d | ICKMO1-cost unite [20082.3 $]; labor [800 h]; Physical Units [173037 h] | 20,082.26 |  | ZNB | CON |  |
| A64100 |  | Concrete curb, Type (K2) | 2d | 2026-11-30 | 2026-12-02 | A64090 |  |  |  |  | -52.8d | 0d | ICKMO1-cost unite [20082.3 $]; labor [800 h]; Physical Units [173037 h] | 20,082.26 |  | ZNB | CON |  |
|  | 5 | **Pavement Markings** |  | 2027-04-14 | 2027-04-17 |  |  |  |  |  |  |  |  |  |  |  |  |  |
| A64110 |  | Retroreflective Thermoplastic White Traffic lines | 1d | 2027-04-14 | 2027-04-15 | A64100, A64070 |  |  |  |  | 152d | 0d | ICKMO1-cost unite [59065.5 $]; labor [400 h]; Marking Machines [200 h]; Physical Units [508933 h] | 59,065.47 |  | ZNB | CON |  |
| A64120 |  | Retroreflective Thermoplastic Yellow Traffic lines | 1d | 2027-04-15 | 2027-04-17 | A64110 |  |  |  |  | 152d | 0d | ICKMO1-cost unite [59065.5 $]; labor [400 h]; Marking Machines [200 h]; Physical Units [508933 h] | 59,065.47 |  | ZNB | CON |  |
|  | 6 | **Traffic Signage** |  | 2027-04-17 | 2027-04-25 |  |  |  |  |  |  |  |  |  |  |  |  |  |
| A64130 |  | Traffic signs, ground mounted, 1 Sheet Alumenium, (breakaway) Single post | 1d | 2027-04-17 | 2027-04-18 | A64120 |  |  |  |  | 152d | 0d | ICKMO1-cost unite [19688.5 $]; boom truck [200 h]; labor [400 h]; Physical Units [169644 h] | 19,688.49 |  | ZNB | CON |  |
| A64140 |  | Traffic signs, ground mounted, 2 Sheet Alumenium, (breakaway) Single post | 1d | 2027-04-18 | 2027-04-19 | A64130 |  |  |  |  | 152d | 0d | ICKMO1-cost unite [19688.5 $]; boom truck [200 h]; labor [400 h]; Physical Units [169644 h] | 19,688.49 |  | ZNB | CON |  |
| A64150 |  | Traffic signs, ground mounted, Sheet Alumenium, (breakaway) Double post | 2d | 2027-04-19 | 2027-04-21 | A64140 |  |  |  |  | 152d | 0d | ICKMO1-cost unite [19688.5 $]; boom truck [200 h]; labor [400 h]; Physical Units [169644 h] | 19,688.49 |  | ZNB | CON |  |
| A64160 |  | Retroreflective raised pavement markers (Type A) | 1d | 2027-04-21 | 2027-04-22 | A64150 |  |  |  |  | 164d | 0d | ICKMO1-cost unite [19688.5 $]; boom truck [200 h]; labor [400 h]; Physical Units [169644 h] | 19,688.49 |  | ZNB | CON |  |
| A64170 |  | Ceramic raised pavement markers | 1d | 2027-04-22 | 2027-04-24 | A64160 |  |  |  |  | 164d | 0d | ICKMO1-cost unite [19688.5 $]; boom truck [200 h]; labor [400 h]; Physical Units [169644 h] | 19,688.49 |  | ZNB | CON |  |
| A64180 |  | Solar powered lighting cateyes pavement markers | 1d | 2027-04-24 | 2027-04-25 | A64170 |  |  |  |  | 177d |  | ICKMO1-cost unite [19688.5 $]; boom truck [200 h]; labor [400 h]; Physical Units [169644 h] | 19,688.49 |  | ZNB | CON |  |
|  | CO2 | **Collector 2** |  | 2026-08-29 | 2027-04-29 |  |  |  |  |  |  |  |  |  |  |  |  |  |
|  | AGG | **Aggregate Base Course** |  | 2026-08-29 | 2026-11-28 |  |  |  |  |  |  |  |  |  |  |  |  |  |
| A63490 |  | Aggregate base course | 4d | 2026-08-29 A | 2026-11-28 | A64650 SS, A64580, A64050 | 98% | 0.08d | 2026-09-02 | 2026-09-06 | -58.86d | 0d | ICKMO1-cost unite [875559 $]; Rubber compactor [200 h]; Roller compactor [200 h]; Trailers Truck [400 h]; Aggregate base course [3223.11]; Physical Units [7544176 h] | 875,558.72 | 858,047.54 | ZNB | CON | ABC |
|  | 2 | **Bituminous Construction** |  | 2026-08-29 | 2026-12-09 |  |  |  |  |  |  |  |  |  |  |  |  |  |
| A63500 |  | Bituminous base course (Grading I - Class A) | 4d | 2026-08-29 A | 2026-12-09 | A63490, A63540 | 98% | 0.08d | 2026-09-19 | 2026-09-22 | -58.86d | 0d | ICKMO1-cost unite [1094448 $]; labor [600 h]; MC Truck [200 h]; Bituminous base course [1425.56]; Physical Units [9430220 h] | 1,094,448.39 | 1,072,559.43 | ZNB | CON | BBC |
|  | 3 | **Asphalt Wearing Course** |  | 2027-04-14 | 2027-04-20 |  |  |  |  |  |  |  |  |  |  |  |  |  |
| A63510 |  | Bituminous concrete wearing course | 5d | 2027-04-14 | 2027-04-20 | A63500, A64070 |  |  |  |  | 42d | 0d | ICKMO1-cost unite [1313338 $]; Rubber compactor [200 h]; Roller compactor [200 h]; Trailers Truck [400 h]; Asphalt Paver [200 h]; Bituminous concrete wearing course [761.44]; Physical Units [11316264 h] | 1,313,338.07 |  | ZNB | CON | BBC |
|  | 4 | **Precast Concrete Curb** |  | 2026-11-28 | 2026-12-09 |  |  |  |  |  |  |  |  |  |  |  |  |  |
| A63520 |  | Concrete curb, Type (K1A) | 3d | 2026-11-28 | 2026-12-01 | A63490 |  |  |  |  | -58.86d | 0d | ICKMO1-cost unite [74422.5 $]; Physical Units [641255 h] | 74,422.49 |  | ZNB | CON |  |
| A63530 |  | Concrete curb, Type (K1B) | 3d | 2026-12-01 | 2026-12-05 | A63520 |  |  |  |  | -58.86d | 0d | ICKMO1-cost unite [74422.5 $]; labor [800 h]; Physical Units [641255 h] | 74,422.49 |  | ZNB | CON |  |
| A63540 |  | Concrete curb, Type (K2) | 4d | 2026-12-05 | 2026-12-09 | A63530 |  |  |  |  | -58.86d | 0d | ICKMO1-cost unite [74422.5 $]; labor [800 h]; Physical Units [641255 h] | 74,422.49 |  | ZNB | CON |  |

| ID | WBS | Activity | Duration | Start | Finish | Predecessors | Complete | Remaining | Planned start | Planned finish | Total float | Free float | Resources | Cost | Actual cost | ALKHARJ INDUSTERIAL AREA - PROJECT ZONES | ALKHARJ INDUSTERIAL AREA - DECEPLINS | ALKHARJ INDUSTERIAL AREA - ASPHALT WORKS |
| --- | --- | --- | --- | --- | --- | --- | --- | --- | --- | --- | --- | --- | --- | --- | --- | --- | --- | --- |
|  | 5 | **Pavement Markings** |  | 2027-04-20 | 2027-04-22 |  |  |  |  |  |  |  |  |  |  |  |  |  |
| A63550 |  | Retroreflective Thermoplastic White Traffic lines | 2d | 2027-04-20 | 2027-04-22 | A63540, A63510 |  |  |  |  | 53.5d | 0d | ICKMO1-cost unite [218890 $]; labor [400 h]; Marking Machines [200 h]; Physical Units [1886044 h] | 218,889.68 |  | ZNB | CON |  |
| A63560 |  | Retroreflective Thermoplastic Yellow Traffic lines | 2d | 2027-04-20 | 2027-04-22 | A63550 SS, A63550 FF |  |  |  |  | 53.5d | 0d | ICKMO1-cost unite [218890 $]; labor [400 h]; Marking Machines [200 h]; Physical Units [1886044 h] | 218,889.68 |  | ZNB | CON |  |
|  | 6 | **Traffic Signage** |  | 2027-04-20 | 2027-04-29 |  |  |  |  |  |  |  |  |  |  |  |  |  |
| A63570 |  | Traffic signs, ground mounted, 1 Sheet Alumenium, (breakaway) Single post | 2d | 2027-04-20 | 2027-04-22 | A63560 SS, A63560 FF |  |  |  |  | 53.5d | 0d | ICKMO1-cost unite [72963.2 $]; boom truck [200 h]; labor [400 h]; Physical Units [628681 h] | 72,963.23 |  | ZNB | CON |  |
| A63580 |  | Traffic signs, ground mounted, 2 Sheet Alumenium, (breakaway) Single post | 2d | 2027-04-20 | 2027-04-22 | A63570 SS, A63570 FF |  |  |  |  | 53.5d | 0d | ICKMO1-cost unite [72963.2 $]; boom truck [200 h]; labor [400 h]; Physical Units [628681 h] | 72,963.23 |  | ZNB | CON |  |
| A63590 |  | Traffic signs, ground mounted, Sheet Alumenium, (breakaway) Double post | 2d | 2027-04-20 | 2027-04-22 | A63580 SS, A63580 FF |  |  |  |  | 53.5d | 0d | ICKMO1-cost unite [72963.2 $]; boom truck [200 h]; labor [400 h]; Physical Units [628681 h] | 72,963.23 |  | ZNB | CON |  |
| A63600 |  | Retroreflective raised pavement markers (Type A) | 2d | 2027-04-22 | 2027-04-25 | A63590 |  |  |  |  | 53.5d | 0d | ICKMO1-cost unite [72963.2 $]; boom truck [200 h]; labor [400 h]; Physical Units [628681 h] | 72,963.23 |  | ZNB | CON |  |
| A63610 |  | Ceramic raised pavement markers | 2d | 2027-04-25 | 2027-04-27 | A63600 |  |  |  |  | 53.5d | 0d | ICKMO1-cost unite [72963.2 $]; boom truck [200 h]; labor [400 h]; Physical Units [628681 h] | 72,963.23 |  | ZNB | CON |  |
| A63620 |  | Solar powered lighting cateyes pavement markers | 2d | 2027-04-27 | 2027-04-29 | A63610 |  |  |  |  | 53.5d | 0d | ICKMO1-cost unite [72963.2 $]; Grader [200 h]; boom truck [200 h]; labor [400 h]; Physical Units [628681 h] | 72,963.23 |  | ZNB | CON |  |
|  | AR1 | **Arterial 1** |  | 2026-08-29 | 2027-05-13 |  |  |  |  |  |  |  |  |  |  |  |  |  |
|  | AGG | **Aggregate Base Course** |  | 2026-08-29 | 2026-11-26 |  |  |  |  |  |  |  |  |  |  |  |  |  |
| A63630 |  | Aggregate base course | 5d | 2026-08-29 A | 2026-11-26 | A64790, A64610 | 99% | 0.05d | 2026-08-09 | 2026-08-13 | -51.09d | 0d | ICKMO1-cost unite [639297 $]; Rubber compactor [200 h]; Roller compactor [200 h]; Trailers Truck [400 h]; Aggregate base course [3223.11]; Physical Units [5508446 h] | 639,296.84 | 632,903.87 | ZNB | CON | ABC |
|  | 2 | **Bituminous Construction** |  | 2026-08-29 | 2026-11-30 |  |  |  |  |  |  |  |  |  |  |  |  |  |
| A63640 |  | Bituminous base course (Grading I - Class A) | 3d | 2026-08-29 A | 2026-11-30 | A63630, A63680 | 98% | 0.06d | 2026-08-19 | 2026-08-22 | -50.86d | 8d | ICKMO1-cost unite [799121 $]; labor [600 h]; MC Truck [200 h]; Bituminous base course [1425.56]; Physical Units [6885558 h] | 799,121.05 | 783,138.63 | ZNB | CON | BBC |
|  | 3 | **Asphalt Wearing Course** |  | 2027-04-20 | 2027-04-25 |  |  |  |  |  |  |  |  |  |  |  |  |  |
| A63650 |  | Bituminous concrete wearing course | 4d | 2027-04-20 | 2027-04-25 | A63640 SS, A63640 FF, A63510 |  |  |  |  | 42d | 0d | ICKMO1-cost unite [958945 $]; Rubber compactor [200 h]; Roller compactor [200 h]; Trailers Truck [400 h]; Asphalt Paver [200 h]; Bituminous concrete wearing course [761.44]; Physical Units [8262669 h] | 958,945.26 |  | ZNB | CON | BBC |
|  | 4 | **Precast Concrete Curb** |  | 2026-08-29 | 2026-11-30 |  |  |  |  |  |  |  |  |  |  |  |  |  |
| A63660 |  | Concrete curb, Type (K1A) | 3d | 2026-08-29 A | 2026-11-30 | A63630 | 30% | 2.1d | 2026-08-15 | 2026-08-17 | -50.86d | 0d | ICKMO1-cost unite [54340.2 $]; Physical Units [468218 h] | 54,340.24 | 16,302.07 | ZNB | CON |  |
| A63670 |  | Concrete curb, Type (K1B) | 3d | 2026-08-29 A | 2026-11-30 | A63660 SS, A63660 FF | 30% | 2.1d | 2026-08-15 | 2026-08-17 | -50.86d | 0d | ICKMO1-cost unite [54340.2 $]; labor [800 h]; Physical Units [468218 h] | 54,340.24 | 16,302.07 | ZNB | CON |  |
| A63680 |  | Concrete curb, Type (K2) | 4d | 2026-08-29 A | 2026-11-30 | A63670 SS, A63670 FF | 30% | 2.8d | 2026-08-15 | 2026-08-18 | -50.86d | 0d | ICKMO1-cost unite [54340.2 $]; labor [800 h]; Physical Units [468218 h] | 54,340.24 | 16,302.07 | ZNB | CON |  |
|  | 5 | **Pavement Markings** |  | 2027-04-25 | 2027-04-27 |  |  |  |  |  |  |  |  |  |  |  |  |  |
| A63690 |  | Retroreflective Thermoplastic White Traffic lines | 2d | 2027-04-25 | 2027-04-27 | A63680, A63650 |  |  |  |  | 42d | 0d | ICKMO1-cost unite [159824 $]; labor [400 h]; Marking Machines [200 h]; Physical Units [1377112 h] | 159,824.21 |  | ZNB | CON |  |
| A63700 |  | Retroreflective Thermoplastic Yellow Traffic lines | 2d | 2027-04-25 | 2027-04-27 | A63690 SS, A63690 FF |  |  |  |  | 42d | 0d | ICKMO1-cost unite [159824 $]; labor [400 h]; Marking Machines [200 h]; Physical Units [1377112 h] | 159,824.21 |  | ZNB | CON |  |

| ID | WBS | Activity | Duration | Start | Finish | Predecessors | Complete | Remaining | Planned start | Planned finish | Total float | Free float | Resources | Cost | Actual cost | ALKHARJ INDUSTERIAL AREA - PROJECT ZONES | ALKHARJ INDUSTERIAL AREA - DECEPLINS | ALKHARJ INDUSTERIAL AREA - ASPHALT WORKS |
| --- | --- | --- | --- | --- | --- | --- | --- | --- | --- | --- | --- | --- | --- | --- | --- | --- | --- | --- |
|  | 6 | **Traffic Signage** |  | 2027-04-27 | 2027-05-13 |  |  |  |  |  |  |  |  |  |  |  |  |  |
| A63710 |  | Traffic signs, ground mounted, 1 Sheet Alumenium, (breakaway) Single post | 2d | 2027-04-27 | 2027-04-29 | A63700 |  |  |  |  | 42d | 0d | ICKMO1-cost unite [53274.7 $]; boom truck [200 h]; labor [400 h]; Physical Units [459037 h] | 53,274.73 |  | ZNB | CON |  |
| A63720 |  | Traffic signs, ground mounted, 2 Sheet Alumenium, (breakaway) Single post | 2d | 2027-04-27 | 2027-04-29 | A63710 SS, A63710 FF |  |  |  |  | 42d | 0d | ICKMO1-cost unite [53274.7 $]; boom truck [200 h]; labor [400 h]; Physical Units [459037 h] | 53,274.73 |  | ZNB | CON |  |
| A63730 |  | Traffic signs, ground mounted, Sheet Alumenium, (breakaway) Double post | 2d | 2027-04-29 | 2027-05-02 | A63720 |  |  |  |  | 42d | 0d | ICKMO1-cost unite [53274.7 $]; boom truck [200 h]; labor [400 h]; Physical Units [459037 h] | 53,274.73 |  | ZNB | CON |  |
| A63740 |  | Retroreflective raised pavement markers (Type A) | 4d | 2027-05-02 | 2027-05-06 | A63730 |  |  |  |  | 79d | 0d | ICKMO1-cost unite [53274.7 $]; boom truck [200 h]; labor [400 h]; Physical Units [459037 h] | 53,274.73 |  | ZNB | CON |  |
| A63750 |  | Ceramic raised pavement markers | 4d | 2027-05-06 | 2027-05-11 | A63740 |  |  |  |  | 79d | 0d | ICKMO1-cost unite [53274.7 $]; boom truck [200 h]; labor [400 h]; Physical Units [459037 h] | 53,274.73 |  | ZNB | CON |  |
| A63760 |  | Solar powered lighting cateyes pavement markers | 2d | 2027-05-11 | 2027-05-13 | A63750 |  |  |  |  | 161d |  | ICKMO1-cost unite [53274.7 $]; Grader [200 h]; boom truck [200 h]; labor [400 h]; Physical Units [459037 h] | 53,274.73 |  | ZNB | CON |  |
|  | AR2 | **Arterial 2** |  | 2026-08-29 | 2027-05-15 |  |  |  |  |  |  |  |  |  |  |  |  |  |
|  | AGG | **Aggregate Base Course** |  | 2026-08-29 | 2026-11-28 |  |  |  |  |  |  |  |  |  |  |  |  |  |
| A63770 |  | Aggregate base course | 3d | 2026-08-29 A | 2026-11-28 | A63630, A64640 | 98% | 0.06d | 2026-08-15 | 2026-08-17 | -51.09d | 0d | ICKMO1-cost unite [305751 $]; Rubber compactor [200 h]; Roller compactor [200 h]; Trailers Truck [400 h]; Aggregate base course [3223.11]; Physical Units [2634474 h] | 305,750.66 | 299,635.65 | ZNB | CON | ABC |
|  | 2 | **Bituminous Construction** |  | 2026-08-29 | 2026-12-01 |  |  |  |  |  |  |  |  |  |  |  |  |  |
| A63780 |  | Bituminous base course (Grading I - Class A) | 1d | 2026-08-29 A | 2026-12-01 | A63770, A63820 | 97% | 0.03d | 2026-08-22 | 2026-08-22 | -51.09d | 7.77d | ICKMO1-cost unite [382188 $]; labor [600 h]; MC Truck [200 h]; Bituminous base course [1425.56]; Physical Units [3293093 h] | 382,188.32 | 370,722.67 | ZNB | CON | BBC |
|  | 3 | **Asphalt Wearing Course** |  | 2027-04-25 | 2027-04-26 |  |  |  |  |  |  |  |  |  |  |  |  |  |
| A63790 |  | Bituminous concrete wearing course | 1d | 2027-04-25 | 2027-04-26 | A63780, A63650 |  |  |  |  | 145d | 0d | ICKMO1-cost unite [458626 $]; Rubber compactor [200 h]; Roller compactor [200 h]; Trailers Truck [400 h]; Asphalt Paver [200 h]; Bituminous concrete wearing course [761.44]; Physical Units [3951711 h] | 458,625.99 |  | ZNB | CON | BBC |
|  | 4 | **Precast Concrete Curb** |  | 2026-11-28 | 2026-12-01 |  |  |  |  |  |  |  |  |  |  |  |  |  |
| A63800 |  | Concrete curb, Type (K1A) | 1d | 2026-11-28 | 2026-11-29 | A63770 |  |  |  |  | -51.09d | 0d | ICKMO1-cost unite [25988.8 $]; Physical Units [223930 h] | 25,988.81 |  | ZNB | CON |  |
| A63810 |  | Concrete curb, Type (K1B) | 1d | 2026-11-29 | 2026-11-30 | A63800 |  |  |  |  | -51.09d | 0d | ICKMO1-cost unite [25988.8 $]; labor [800 h]; Physical Units [223930 h] | 25,988.81 |  | ZNB | CON |  |
| A63820 |  | Concrete curb, Type (K2) | 1d | 2026-11-30 | 2026-12-01 | A63810 |  |  |  |  | -51.09d | 0d | ICKMO1-cost unite [25988.8 $]; labor [800 h]; Physical Units [223930 h] | 25,988.81 |  | ZNB | CON |  |
|  | 5 | **Pavement Markings** |  | 2027-04-26 | 2027-05-01 |  |  |  |  |  |  |  |  |  |  |  |  |  |
| A63830 |  | Retroreflective Thermoplastic White Traffic lines | 2d | 2027-04-26 | 2027-04-28 | A63820, A63790 |  |  |  |  | 145d | 0d | ICKMO1-cost unite [76437.7 $]; labor [400 h]; Marking Machines [200 h]; Physical Units [658619 h] | 76,437.66 |  | ZNB | CON |  |
| A63840 |  | Retroreflective Thermoplastic Yellow Traffic lines | 2d | 2027-04-28 | 2027-05-01 | A63830 |  |  |  |  | 145d | 0d | ICKMO1-cost unite [76437.7 $]; labor [400 h]; Marking Machines [200 h]; Physical Units [658619 h] | 76,437.66 |  | ZNB | CON |  |
|  | 6 | **Traffic Signage** |  | 2027-05-01 | 2027-05-15 |  |  |  |  |  |  |  |  |  |  |  |  |  |
| A63850 |  | Traffic signs, ground mounted, 1 Sheet Alumenium, (breakaway) Single post | 2d | 2027-05-01 | 2027-05-03 | A63840 |  |  |  |  | 145d | 0d | ICKMO1-cost unite [25479.2 $]; boom truck [200 h]; labor [400 h]; Physical Units [219540 h] | 25,479.22 |  | ZNB | CON |  |
| A63860 |  | Traffic signs, ground mounted, 2 Sheet Alumenium, (breakaway) Single post | 2d | 2027-05-03 | 2027-05-05 | A63850 |  |  |  |  | 145d | 0d | ICKMO1-cost unite [25479.2 $]; boom truck [200 h]; labor [400 h]; Physical Units [219540 h] | 25,479.22 |  | ZNB | CON |  |
| A63870 |  | Traffic signs, ground mounted, Sheet Alumenium, (breakaway) Double post | 2d | 2027-05-05 | 2027-05-08 | A63860 |  |  |  |  | 145d | 0d | ICKMO1-cost unite [25479.2 $]; boom truck [200 h]; labor [400 h]; Physical Units [219540 h] | 25,479.22 |  | ZNB | CON |  |
| A63880 |  | Retroreflective raised pavement markers (Type A) | 2d | 2027-05-08 | 2027-05-10 | A63870 |  |  |  |  | 148d | 0d | ICKMO1-cost unite [25479.2 $]; boom truck [200 h]; labor [400 h]; Physical Units [219540 h] | 25,479.22 |  | ZNB | CON |  |
| A63890 |  | Ceramic raised pavement markers | 2d | 2027-05-10 | 2027-05-12 | A63880 |  |  |  |  | 148d | 0d | ICKMO1-cost unite [25479.2 $]; boom truck [200 h]; labor [400 h]; Physical Units [219540 h] | 25,479.22 |  | ZNB | CON |  |
| A63900 |  | Solar powered lighting cateyes pavement markers | 2d | 2027-05-12 | 2027-05-15 | A63890 |  |  |  |  | 160d |  | ICKMO1-cost unite [25479.2 $]; boom truck [200 h]; labor [400 h]; Physical Units [219540 h] | 25,479.22 |  | ZNB | CON |  |

| ID | WBS | Activity | Duration | Start | Finish | Predecessors | Total float | Free float | Resources | Cost | ALKHARJ INDUSTERIAL AREA - PROJECT ZONES | ALKHARJ INDUSTERIAL AREA - DECEPLINS |
| --- | --- | --- | --- | --- | --- | --- | --- | --- | --- | --- | --- | --- |
|  | LW | **LANDSCAPE WORK** |  | 2027-04-01 | 2027-09-29 |  |  |  |  |  |  |  |
|  | R18 | **Road 18** |  | 2027-04-01 | 2027-05-04 |  |  |  |  |  |  |  |
|  | 2 | **Trees/ Palms** |  | 2027-04-01 | 2027-04-18 |  |  |  |  |  |  |  |
| A64190 |  | Roadside tree - Cordia sebestena | 14d | 2027-04-01 | 2027-04-18 | A62850, A88420 | 4d | 0d | ICKMO1-cost unite [25771.4 $]; boom truck [200 h]; labor [400 h]; Physical Units [222057 h] | 25,771.44 | ZNB | CON |
| A64200 |  | Roadside tree - Parkinsonia aculeata | 14d | 2027-04-01 | 2027-04-18 | A62850, A88420 | 183d | 141d | ICKMO1-cost unite [25771.4 $]; boom truck [200 h]; labor [400 h]; Physical Units [222057 h] | 25,771.44 | ZNB | CON |
| A64210 |  | Roadside tree - Dalbergia sissoo | 14d | 2027-04-01 | 2027-04-18 | A62850, A88420 | 183d | 141d | ICKMO1-cost unite [25771.4 $]; boom truck [200 h]; labor [400 h]; Physical Units [222057 h] | 25,771.44 | ZNB | CON |
| A64220 |  | Roadside tree - Acacia stenophylla | 14d | 2027-04-01 | 2027-04-18 | A62850, A88420 | 183d | 141d | ICKMO1-cost unite [25771.4 $]; boom truck [200 h]; labor [400 h]; Physical Units [222057 h] | 25,771.44 | ZNB | CON |
| A64230 |  | Roadside tree - Hibiscus tiliaceus | 14d | 2027-04-01 | 2027-04-18 | A62850, A88420 | 183d | 141d | ICKMO1-cost unite [25771.4 $]; boom truck [200 h]; labor [400 h]; Physical Units [222057 h] | 25,771.44 | ZNB | CON |
| A64240 |  | Roadside tree - Azadirachla indica | 14d | 2027-04-01 | 2027-04-18 | A62850, A88420 | 169d | 0d | ICKMO1-cost unite [25771.4 $]; boom truck [200 h]; labor [400 h]; Physical Units [222057 h] | 25,771.44 | ZNB | CON |
|  | 3 | **Miscellaneous Landscaping Items** |  | 2027-04-04 | 2027-04-20 |  |  |  |  |  |  |  |
| A64250 |  | Install Precast concrete block paving for sidewalk, mixed grey colour | 14d | 2027-04-04 | 2027-04-20 | A62870, A88420 | 181d | 139d | ICKMO1-cost unite [25771.4 $]; labor [1200 h]; Physical Units [222057 h] | 25,771.44 | ZNB | CON |
| A64260 |  | Install Precast concrete block paving for main intrsection, colour light grey | 14d | 2027-04-04 | 2027-04-20 | A62870, A88420 | 181d | 139d | ICKMO1-cost unite [25771.4 $]; labor [1200 h]; Physical Units [222057 h] | 25,771.44 | ZNB | CON |
| A64270 |  | install Precast concrete block paving for main intrsection, colour mid grey | 14d | 2027-04-04 | 2027-04-20 | A62870, A88420 | 181d | 139d | ICKMO1-cost unite [25771.4 $]; labor [1200 h]; Physical Units [222057 h] | 25,771.44 | ZNB | CON |
| A64280 |  | install Precast concrete block paving for main intrsection, colour dark grey | 14d | 2027-04-04 | 2027-04-20 | A62870, A88420 | 181d | 139d | ICKMO1-cost unite [25771.4 $]; labor [1200 h]; Physical Units [222057 h] | 25,771.44 | ZNB | CON |
| A64290 |  | Gravel, mixed dark beige + medium beige + light beige | 14d | 2027-04-04 | 2027-04-20 | A62870, A88420 | 181d | 139d | ICKMO1-cost unite [25771.4 $]; labor [1200 h]; Physical Units [222057 h] | 25,771.44 | ZNB | CON |
| A64300 |  | Concrete heel kerb | 14d | 2027-04-04 | 2027-04-20 | A62870, A88420 | 181d | 139d | ICKMO1-cost unite [25771.4 $]; labor [1200 h]; Physical Units [222057 h] | 25,771.44 | ZNB | CON |
|  | 1 | **Ground Cover And Shrubs** |  | 2027-04-18 | 2027-05-04 |  |  |  |  |  |  |  |
| A64310 |  | Lantana montevidensis | 14d | 2027-04-18 | 2027-05-04 | A64240, A88420 | 169d | 127d | ICKMO1-cost unite [38657.2 $]; labor [1200 h]; Physical Units [333086 h] | 38,657.16 | ZNB | CON |
| A64320 |  | Portulaca grandiflora | 14d | 2027-04-18 | 2027-05-04 | A64240, A88420 | 169d | 127d | ICKMO1-cost unite [38657.2 $]; labor [1200 h]; Physical Units [333086 h] | 38,657.16 | ZNB | CON |
| A64330 |  | Dodonaea viscosa | 14d | 2027-04-18 | 2027-05-04 | A64240, A88420 | 169d | 127d | ICKMO1-cost unite [38657.2 $]; labor [1200 h]; Physical Units [333086 h] | 38,657.16 | ZNB | CON |
| A64340 |  | Atriplex halimus | 14d | 2027-04-18 | 2027-05-04 | A64240, A88420 | 169d | 127d | ICKMO1-cost unite [38657.2 $]; labor [1200 h]; Physical Units [333086 h] | 38,657.16 | ZNB | CON |
|  | R19 | **Road 19** |  | 2027-04-03 | 2027-05-05 |  |  |  |  |  |  |  |
|  | 2 | **Trees/ Palms** |  | 2027-04-03 | 2027-04-19 |  |  |  |  |  |  |  |
| A65070 |  | Roadside tree - Cordia sebestena | 14d | 2027-04-03 | 2027-04-19 | A64750, A88420 | 182d | 140d | ICKMO1-cost unite [25771.4 $]; boom truck [200 h]; labor [400 h]; Physical Units [222057 h] | 25,771.44 | ZNB | CON |
| A65080 |  | Roadside tree - Parkinsonia aculeata | 14d | 2027-04-03 | 2027-04-19 | A64750, A88420 | 182d | 140d | ICKMO1-cost unite [25771.4 $]; boom truck [200 h]; labor [400 h]; Physical Units [222057 h] | 25,771.44 | ZNB | CON |
| A65090 |  | Roadside tree - Dalbergia sissoo | 14d | 2027-04-03 | 2027-04-19 | A64750, A88420 | 182d | 140d | ICKMO1-cost unite [25771.4 $]; boom truck [200 h]; labor [400 h]; Physical Units [222057 h] | 25,771.44 | ZNB | CON |
| A65100 |  | Roadside tree - Acacia stenophylla | 14d | 2027-04-03 | 2027-04-19 | A64750, A88420 | 182d | 140d | ICKMO1-cost unite [25771.4 $]; boom truck [200 h]; labor [400 h]; Physical Units [222057 h] | 25,771.44 | ZNB | CON |
| A65110 |  | Roadside tree - Hibiscus tiliaceus | 14d | 2027-04-03 | 2027-04-19 | A64750, A88420 | 182d | 140d | ICKMO1-cost unite [25771.4 $]; boom truck [200 h]; labor [400 h]; Physical Units [222057 h] | 25,771.44 | ZNB | CON |
| A65120 |  | Roadside tree - Azadirachla indica | 14d | 2027-04-03 | 2027-04-19 | A64750, A88420 | 168d | 0d | ICKMO1-cost unite [25771.4 $]; boom truck [200 h]; labor [400 h]; Physical Units [222057 h] | 25,771.44 | ZNB | CON |

| ID | WBS | Activity | Duration | Start | Finish | Predecessors | Total float | Free float | Resources | Cost | ALKHARJ INDUSTERIAL AREA - PROJECT ZONES | ALKHARJ INDUSTERIAL AREA - DECEPLINS |
| --- | --- | --- | --- | --- | --- | --- | --- | --- | --- | --- | --- | --- |
|  | 3 | **Miscellaneous Landscaping Items** |  | 2027-04-05 | 2027-04-21 |  |  |  |  |  |  |  |
| A65130 |  | Install Precast concrete block paving for sidewalk, mixed grey colour | 14d | 2027-04-05 | 2027-04-21 | A64770, A88420 | 180d | 138d | ICKMO1-cost unite [25771.4 $]; labor [1200 h]; Physical Units [222057 h] | 25,771.44 | ZNB | CON |
| A65140 |  | Install Precast concrete block paving for main intrsection, colour light grey | 14d | 2027-04-05 | 2027-04-21 | A64770, A88420 | 180d | 138d | ICKMO1-cost unite [25771.4 $]; labor [1200 h]; Physical Units [222057 h] | 25,771.44 | ZNB | CON |
| A65150 |  | install Precast concrete block paving for main intrsection, colour mid grey | 14d | 2027-04-05 | 2027-04-21 | A64770, A88420 | 180d | 138d | ICKMO1-cost unite [25771.4 $]; labor [1200 h]; Physical Units [222057 h] | 25,771.44 | ZNB | CON |
| A65160 |  | install Precast concrete block paving for main intrsection, colour dark grey | 14d | 2027-04-05 | 2027-04-21 | A64770, A88420 | 180d | 138d | ICKMO1-cost unite [25771.4 $]; labor [1200 h]; Physical Units [222057 h] | 25,771.44 | ZNB | CON |
| A65170 |  | Gravel, mixed dark beige + medium beige + light beige | 14d | 2027-04-05 | 2027-04-21 | A64770, A88420 | 180d | 138d | ICKMO1-cost unite [25771.4 $]; labor [1200 h]; Physical Units [222057 h] | 25,771.44 | ZNB | CON |
| A65180 |  | Concrete heel kerb | 14d | 2027-04-05 | 2027-04-21 | A64770, A88420 | 180d | 138d | ICKMO1-cost unite [25771.4 $]; labor [1200 h]; Physical Units [222057 h] | 25,771.44 | ZNB | CON |
|  | 1 | **Ground Cover And Shrubs** |  | 2027-04-19 | 2027-05-05 |  |  |  |  |  |  |  |
| A65030 |  | Lantana montevidensis | 14d | 2027-04-19 | 2027-05-05 | A65120, A88420 | 168d | 126d | ICKMO1-cost unite [38657.2 $]; labor [1200 h]; Physical Units [333086 h] | 38,657.16 | ZNB | CON |
| A65040 |  | Portulaca grandiflora | 14d | 2027-04-19 | 2027-05-05 | A65120, A88420 | 168d | 126d | ICKMO1-cost unite [38657.2 $]; labor [1200 h]; Physical Units [333086 h] | 38,657.16 | ZNB | CON |
| A65050 |  | Dodonaea viscosa | 14d | 2027-04-19 | 2027-05-05 | A65120, A88420 | 168d | 126d | ICKMO1-cost unite [38657.2 $]; labor [1200 h]; Physical Units [333086 h] | 38,657.16 | ZNB | CON |
| A65060 |  | Atriplex halimus | 14d | 2027-04-19 | 2027-05-05 | A65120, A88420 | 168d | 126d | ICKMO1-cost unite [38657.2 $]; labor [1200 h]; Physical Units [333086 h] | 38,657.16 | ZNB | CON |
|  | R20 | **Road 20** |  | 2027-04-05 | 2027-05-08 |  |  |  |  |  |  |  |
|  | 2 | **Trees/ Palms** |  | 2027-04-05 | 2027-04-21 |  |  |  |  |  |  |  |
| A65230 |  | Roadside tree - Cordia sebestena | 14d | 2027-04-05 | 2027-04-21 | A64890, A88420 | 180d | 138d | ICKMO1-cost unite [29453.1 $]; boom truck [200 h]; labor [400 h]; Physical Units [253780 h] | 29,453.06 | ZNB | CON |
| A65240 |  | Roadside tree - Parkinsonia aculeata | 14d | 2027-04-05 | 2027-04-21 | A64890, A88420 | 180d | 138d | ICKMO1-cost unite [29453.1 $]; boom truck [200 h]; labor [400 h]; Physical Units [253780 h] | 29,453.06 | ZNB | CON |
| A65250 |  | Roadside tree - Dalbergia sissoo | 14d | 2027-04-05 | 2027-04-21 | A64890, A88420 | 180d | 138d | ICKMO1-cost unite [29453.1 $]; boom truck [200 h]; labor [400 h]; Physical Units [253780 h] | 29,453.06 | ZNB | CON |
| A65260 |  | Roadside tree - Acacia stenophylla | 14d | 2027-04-05 | 2027-04-21 | A64890, A88420 | 180d | 138d | ICKMO1-cost unite [29453.1 $]; boom truck [200 h]; labor [400 h]; Physical Units [253780 h] | 29,453.06 | ZNB | CON |
| A65270 |  | Roadside tree - Hibiscus tiliaceus | 14d | 2027-04-05 | 2027-04-21 | A64890, A88420 | 180d | 138d | ICKMO1-cost unite [29453.1 $]; boom truck [200 h]; labor [400 h]; Physical Units [253780 h] | 29,453.06 | ZNB | CON |
| A65280 |  | Roadside tree - Azadirachla indica | 14d | 2027-04-05 | 2027-04-21 | A64890, A88420 | 166d | 0d | ICKMO1-cost unite [29453.1 $]; boom truck [200 h]; labor [400 h]; Physical Units [253780 h] | 29,453.06 | ZNB | CON |
|  | 3 | **Miscellaneous Landscaping Items** |  | 2027-04-07 | 2027-04-24 |  |  |  |  |  |  |  |
| A65290 |  | Install Precast concrete block paving for sidewalk, mixed grey colour | 14d | 2027-04-07 | 2027-04-24 | A64910, A88420 | 178d | 136d | ICKMO1-cost unite [29453.1 $]; labor [1200 h]; Physical Units [253780 h] | 29,453.06 | ZNB | CON |
| A65300 |  | Install Precast concrete block paving for main intrsection, colour light grey | 14d | 2027-04-07 | 2027-04-24 | A64910, A88420 | 178d | 136d | ICKMO1-cost unite [29453.1 $]; labor [1200 h]; Physical Units [253780 h] | 29,453.06 | ZNB | CON |
| A65310 |  | install Precast concrete block paving for main intrsection, colour mid grey | 14d | 2027-04-07 | 2027-04-24 | A64910, A88420 | 178d | 136d | ICKMO1-cost unite [29453.1 $]; labor [1200 h]; Physical Units [253780 h] | 29,453.06 | ZNB | CON |
| A65320 |  | install Precast concrete block paving for main intrsection, colour dark grey | 14d | 2027-04-07 | 2027-04-24 | A64910, A88420 | 178d | 136d | ICKMO1-cost unite [29453.1 $]; labor [1200 h]; Physical Units [253780 h] | 29,453.06 | ZNB | CON |
| A65330 |  | Gravel, mixed dark beige + medium beige + light beige | 14d | 2027-04-07 | 2027-04-24 | A64910, A88420 | 178d | 136d | ICKMO1-cost unite [29453.1 $]; labor [1200 h]; Physical Units [253780 h] | 29,453.06 | ZNB | CON |
| A65340 |  | Concrete heel kerb | 14d | 2027-04-07 | 2027-04-24 | A64910, A88420 | 178d | 136d | ICKMO1-cost unite [29453.1 $]; labor [1200 h]; Physical Units [253780 h] | 29,453.06 | ZNB | CON |

| ID | WBS | Activity | Duration | Start | Finish | Predecessors | Total float | Free float | Resources | Cost | ALKHARJ INDUSTERIAL AREA - PROJECT ZONES | ALKHARJ INDUSTERIAL AREA - DECEPLINS |
| --- | --- | --- | --- | --- | --- | --- | --- | --- | --- | --- | --- | --- |
|  | 1 | **Ground Cover And Shrubs** |  | 2027-04-21 | 2027-05-08 |  |  |  |  |  |  |  |
| A65190 |  | Lantana montevidensis | 14d | 2027-04-21 | 2027-05-08 | A65280, A88420 | 166d | 124d | ICKMO1-cost unite [44179.6 $]; labor [1200 h]; Physical Units [380670 h] | 44,179.61 | ZNB | CON |
| A65200 |  | Portulaca grandiflora | 14d | 2027-04-21 | 2027-05-08 | A65280, A88420 | 166d | 124d | ICKMO1-cost unite [44179.6 $]; labor [1200 h]; Physical Units [380670 h] | 44,179.61 | ZNB | CON |
| A65210 |  | Dodonaea viscosa | 14d | 2027-04-21 | 2027-05-08 | A65280, A88420 | 166d | 124d | ICKMO1-cost unite [44179.6 $]; labor [1200 h]; Physical Units [380670 h] | 44,179.61 | ZNB | CON |
| A65220 |  | Atriplex halimus | 14d | 2027-04-21 | 2027-05-08 | A65280, A88420 | 166d | 124d | ICKMO1-cost unite [44179.6 $]; labor [1200 h]; Physical Units [380670 h] | 44,179.61 | ZNB | CON |
|  | R21 | **Road 21** |  | 2027-04-06 | 2027-05-09 |  |  |  |  |  |  |  |
|  | 2 | **Trees/ Palms** |  | 2027-04-06 | 2027-04-22 |  |  |  |  |  |  |  |
| A65390 |  | Roadside tree - Cordia sebestena | 14d | 2027-04-06 | 2027-04-22 | A62890, A88420 | 179d | 137d | ICKMO1-cost unite [29453.1 $]; boom truck [200 h]; labor [400 h]; Physical Units [253780 h] | 29,453.06 | ZNB | CON |
| A65400 |  | Roadside tree - Parkinsonia aculeata | 14d | 2027-04-06 | 2027-04-22 | A62890, A88420 | 179d | 137d | ICKMO1-cost unite [29453.1 $]; boom truck [200 h]; labor [400 h]; Physical Units [253780 h] | 29,453.06 | ZNB | CON |
| A65410 |  | Roadside tree - Dalbergia sissoo | 14d | 2027-04-06 | 2027-04-22 | A62890, A88420 | 179d | 137d | ICKMO1-cost unite [29453.1 $]; boom truck [200 h]; labor [400 h]; Physical Units [253780 h] | 29,453.06 | ZNB | CON |
| A65420 |  | Roadside tree - Acacia stenophylla | 14d | 2027-04-06 | 2027-04-22 | A62890, A88420 | 179d | 137d | ICKMO1-cost unite [29453.1 $]; boom truck [200 h]; labor [400 h]; Physical Units [253780 h] | 29,453.06 | ZNB | CON |
| A65430 |  | Roadside tree - Hibiscus tiliaceus | 14d | 2027-04-06 | 2027-04-22 | A62890, A88420 | 179d | 137d | ICKMO1-cost unite [29453.1 $]; boom truck [200 h]; labor [400 h]; Physical Units [253780 h] | 29,453.06 | ZNB | CON |
| A65440 |  | Roadside tree - Azadirachla indica | 14d | 2027-04-06 | 2027-04-22 | A62890, A88420 | 165d | 0d | ICKMO1-cost unite [29453.1 $]; boom truck [200 h]; labor [400 h]; Physical Units [253780 h] | 29,453.06 | ZNB | CON |
|  | 3 | **Miscellaneous Landscaping Items** |  | 2027-04-08 | 2027-04-25 |  |  |  |  |  |  |  |
| A65450 |  | Install Precast concrete block paving for sidewalk, mixed grey colour | 14d | 2027-04-08 | 2027-04-25 | A62910, A88420 | 177d | 135d | ICKMO1-cost unite [29453.1 $]; labor [1200 h]; Physical Units [253780 h] | 29,453.06 | ZNB | CON |
| A65460 |  | Install Precast concrete block paving for main intrsection, colour light grey | 14d | 2027-04-08 | 2027-04-25 | A62910, A88420 | 177d | 135d | ICKMO1-cost unite [29453.1 $]; labor [1200 h]; Physical Units [253780 h] | 29,453.06 | ZNB | CON |
| A65470 |  | install Precast concrete block paving for main intrsection, colour mid grey | 14d | 2027-04-08 | 2027-04-25 | A62910, A88420 | 177d | 135d | ICKMO1-cost unite [29453.1 $]; labor [1200 h]; Physical Units [253780 h] | 29,453.06 | ZNB | CON |
| A65480 |  | install Precast concrete block paving for main intrsection, colour dark grey | 14d | 2027-04-08 | 2027-04-25 | A62910, A88420 | 177d | 135d | ICKMO1-cost unite [29453.1 $]; labor [1200 h]; Physical Units [253780 h] | 29,453.06 | ZNB | CON |
| A65490 |  | Gravel, mixed dark beige + medium beige + light beige | 14d | 2027-04-08 | 2027-04-25 | A62910, A88420 | 177d | 135d | ICKMO1-cost unite [29453.1 $]; labor [1200 h]; Physical Units [253780 h] | 29,453.06 | ZNB | CON |
| A65500 |  | Concrete heel kerb | 14d | 2027-04-08 | 2027-04-25 | A62910, A88420 | 177d | 135d | ICKMO1-cost unite [29453.1 $]; labor [1200 h]; Physical Units [253780 h] | 29,453.06 | ZNB | CON |
|  | 1 | **Ground Cover And Shrubs** |  | 2027-04-22 | 2027-05-09 |  |  |  |  |  |  |  |
| A65350 |  | Lantana montevidensis | 14d | 2027-04-22 | 2027-05-09 | A65440, A88420 | 165d | 123d | ICKMO1-cost unite [44179.6 $]; labor [1200 h]; Physical Units [380670 h] | 44,179.61 | ZNB | CON |
| A65360 |  | Portulaca grandiflora | 14d | 2027-04-22 | 2027-05-09 | A65440, A88420 | 165d | 123d | ICKMO1-cost unite [44179.6 $]; labor [1200 h]; Physical Units [380670 h] | 44,179.61 | ZNB | CON |
| A65370 |  | Dodonaea viscosa | 14d | 2027-04-22 | 2027-05-09 | A65440, A88420 | 165d | 123d | ICKMO1-cost unite [44179.6 $]; labor [1200 h]; Physical Units [380670 h] | 44,179.61 | ZNB | CON |
| A65380 |  | Atriplex halimus | 14d | 2027-04-22 | 2027-05-09 | A65440, A88420 | 165d | 123d | ICKMO1-cost unite [44179.6 $]; labor [1200 h]; Physical Units [380670 h] | 44,179.61 | ZNB | CON |

| ID | WBS | Activity | Duration | Start | Finish | Predecessors | Total float | Free float | Resources | Cost | ALKHARJ INDUSTERIAL AREA - PROJECT ZONES | ALKHARJ INDUSTERIAL AREA - DECEPLINS |
| --- | --- | --- | --- | --- | --- | --- | --- | --- | --- | --- | --- | --- |
|  | R22 | **Road 22** |  | 2027-04-07 | 2027-05-10 |  |  |  |  |  |  |  |
|  | 2 | **Trees/ Palms** |  | 2027-04-07 | 2027-04-24 |  |  |  |  |  |  |  |
| A65550 |  | Roadside tree - Cordia sebestena | 14d | 2027-04-07 | 2027-04-24 | A63030, A88420 | 178d | 136d | ICKMO1-cost unite [27612.2 $]; boom truck [200 h]; labor [400 h]; Physical Units [237919 h] | 27,612.25 | ZNB | CON |
| A65560 |  | Roadside tree - Parkinsonia aculeata | 14d | 2027-04-07 | 2027-04-24 | A63030, A88420 | 178d | 136d | ICKMO1-cost unite [27612.2 $]; boom truck [200 h]; labor [400 h]; Physical Units [237919 h] | 27,612.25 | ZNB | CON |
| A65570 |  | Roadside tree - Dalbergia sissoo | 14d | 2027-04-07 | 2027-04-24 | A63030, A88420 | 178d | 136d | ICKMO1-cost unite [27612.2 $]; boom truck [200 h]; labor [400 h]; Physical Units [237919 h] | 27,612.25 | ZNB | CON |
| A65580 |  | Roadside tree - Acacia stenophylla | 14d | 2027-04-07 | 2027-04-24 | A63030, A88420 | 178d | 136d | ICKMO1-cost unite [27612.2 $]; boom truck [200 h]; labor [400 h]; Physical Units [237919 h] | 27,612.25 | ZNB | CON |
| A65590 |  | Roadside tree - Hibiscus tiliaceus | 14d | 2027-04-07 | 2027-04-24 | A63030, A88420 | 178d | 136d | ICKMO1-cost unite [27612.2 $]; boom truck [200 h]; labor [400 h]; Physical Units [237919 h] | 27,612.25 | ZNB | CON |
| A65600 |  | Roadside tree - Azadirachla indica | 14d | 2027-04-07 | 2027-04-24 | A63030, A88420 | 164d | 0d | ICKMO1-cost unite [27612.2 $]; boom truck [200 h]; labor [400 h]; Physical Units [237919 h] | 27,612.25 | ZNB | CON |
|  | 3 | **Miscellaneous Landscaping Items** |  | 2027-04-10 | 2027-04-26 |  |  |  |  |  |  |  |
| A65610 |  | Install Precast concrete block paving for sidewalk, mixed grey colour | 14d | 2027-04-10 | 2027-04-26 | A63050, A88420 | 176d | 134d | ICKMO1-cost unite [27612.2 $]; labor [1200 h]; Physical Units [237919 h] | 27,612.25 | ZNB | CON |
| A65620 |  | Install Precast concrete block paving for main intrsection, colour light grey | 14d | 2027-04-10 | 2027-04-26 | A63050, A88420 | 176d | 134d | ICKMO1-cost unite [27612.2 $]; labor [1200 h]; Physical Units [237919 h] | 27,612.25 | ZNB | CON |
| A65630 |  | install Precast concrete block paving for main intrsection, colour mid grey | 14d | 2027-04-10 | 2027-04-26 | A63050, A88420 | 176d | 134d | ICKMO1-cost unite [27612.2 $]; labor [1200 h]; Physical Units [237919 h] | 27,612.25 | ZNB | CON |
| A65640 |  | install Precast concrete block paving for main intrsection, colour dark grey | 14d | 2027-04-10 | 2027-04-26 | A63050, A88420 | 176d | 134d | ICKMO1-cost unite [27612.2 $]; labor [1200 h]; Physical Units [237919 h] | 27,612.25 | ZNB | CON |
| A65650 |  | Gravel, mixed dark beige + medium beige + light beige | 14d | 2027-04-10 | 2027-04-26 | A63050, A88420 | 176d | 134d | ICKMO1-cost unite [27612.2 $]; labor [1200 h]; Physical Units [237919 h] | 27,612.25 | ZNB | CON |
| A65660 |  | Concrete heel kerb | 14d | 2027-04-10 | 2027-04-26 | A63050, A88420 | 176d | 134d | ICKMO1-cost unite [27612.2 $]; labor [1200 h]; Physical Units [237919 h] | 27,612.25 | ZNB | CON |
|  | 1 | **Ground Cover And Shrubs** |  | 2027-04-24 | 2027-05-10 |  |  |  |  |  |  |  |
| A65510 |  | Lantana montevidensis | 14d | 2027-04-24 | 2027-05-10 | A65600, A88420 | 164d | 122d | ICKMO1-cost unite [41418.4 $]; labor [1200 h]; Physical Units [356878 h] | 41,418.38 | ZNB | CON |
| A65520 |  | Portulaca grandiflora | 14d | 2027-04-24 | 2027-05-10 | A65600, A88420 | 164d | 122d | ICKMO1-cost unite [41418.4 $]; labor [1200 h]; Physical Units [356878 h] | 41,418.38 | ZNB | CON |
| A65530 |  | Dodonaea viscosa | 14d | 2027-04-24 | 2027-05-10 | A65600, A88420 | 164d | 122d | ICKMO1-cost unite [41418.4 $]; labor [1200 h]; Physical Units [356878 h] | 41,418.38 | ZNB | CON |
| A65540 |  | Atriplex halimus | 14d | 2027-04-24 | 2027-05-10 | A65600, A88420 | 164d | 122d | ICKMO1-cost unite [41418.4 $]; labor [1200 h]; Physical Units [356878 h] | 41,418.38 | ZNB | CON |
|  | R23 | **Road 23** |  | 2027-04-08 | 2027-05-11 |  |  |  |  |  |  |  |
|  | 2 | **Trees/ Palms** |  | 2027-04-08 | 2027-04-25 |  |  |  |  |  |  |  |
| A65710 |  | Roadside tree - Cordia sebestena | 14d | 2027-04-08 | 2027-04-25 | A63170, A88420 | 177d | 135d | ICKMO1-cost unite [25771.4 $]; boom truck [200 h]; labor [400 h]; Physical Units [222057 h] | 25,771.44 | ZNB | CON |
| A65720 |  | Roadside tree - Parkinsonia aculeata | 14d | 2027-04-08 | 2027-04-25 | A63170, A88420 | 177d | 135d | ICKMO1-cost unite [25771.4 $]; boom truck [200 h]; labor [400 h]; Physical Units [222057 h] | 25,771.44 | ZNB | CON |
| A65730 |  | Roadside tree - Dalbergia sissoo | 14d | 2027-04-08 | 2027-04-25 | A63170, A88420 | 177d | 135d | ICKMO1-cost unite [25771.4 $]; boom truck [200 h]; labor [400 h]; Physical Units [222057 h] | 25,771.44 | ZNB | CON |
| A65740 |  | Roadside tree - Acacia stenophylla | 14d | 2027-04-08 | 2027-04-25 | A63170, A88420 | 177d | 135d | ICKMO1-cost unite [25771.4 $]; boom truck [200 h]; labor [400 h]; Physical Units [222057 h] | 25,771.44 | ZNB | CON |
| A65750 |  | Roadside tree - Hibiscus tiliaceus | 14d | 2027-04-08 | 2027-04-25 | A63170, A88420 | 177d | 135d | ICKMO1-cost unite [25771.4 $]; boom truck [200 h]; labor [400 h]; Physical Units [222057 h] | 25,771.44 | ZNB | CON |
| A65760 |  | Roadside tree - Azadirachla indica | 14d | 2027-04-08 | 2027-04-25 | A63170, A88420 | 163d | 0d | ICKMO1-cost unite [25771.4 $]; boom truck [200 h]; labor [400 h]; Physical Units [222057 h] | 25,771.44 | ZNB | CON |

| ID | WBS | Activity | Duration | Start | Finish | Predecessors | Total float | Free float | Resources | Cost | ALKHARJ INDUSTERIAL AREA - PROJECT ZONES | ALKHARJ INDUSTERIAL AREA - DECEPLINS |
| --- | --- | --- | --- | --- | --- | --- | --- | --- | --- | --- | --- | --- |
|  | 3 | **Miscellaneous Landscaping Items** |  | 2027-04-11 | 2027-04-27 |  |  |  |  |  |  |  |
| A65770 |  | Install Precast concrete block paving for sidewalk, mixed grey colour | 14d | 2027-04-11 | 2027-04-27 | A63190, A88420 | 175d | 133d | ICKMO1-cost unite [25771.4 $]; labor [1200 h]; Physical Units [222057 h] | 25,771.44 | ZNB | CON |
| A65780 |  | Install Precast concrete block paving for main intrsection, colour light grey | 14d | 2027-04-11 | 2027-04-27 | A63190, A88420 | 175d | 133d | ICKMO1-cost unite [25771.4 $]; labor [1200 h]; Physical Units [222057 h] | 25,771.44 | ZNB | CON |
| A65790 |  | install Precast concrete block paving for main intrsection, colour mid grey | 14d | 2027-04-11 | 2027-04-27 | A63190, A88420 | 175d | 133d | ICKMO1-cost unite [25771.4 $]; labor [1200 h]; Physical Units [222057 h] | 25,771.44 | ZNB | CON |
| A65800 |  | install Precast concrete block paving for main intrsection, colour dark grey | 14d | 2027-04-11 | 2027-04-27 | A63190, A88420 | 175d | 133d | ICKMO1-cost unite [25771.4 $]; labor [1200 h]; Physical Units [222057 h] | 25,771.44 | ZNB | CON |
| A65810 |  | Gravel, mixed dark beige + medium beige + light beige | 14d | 2027-04-11 | 2027-04-27 | A63190, A88420 | 175d | 133d | ICKMO1-cost unite [25771.4 $]; labor [1200 h]; Physical Units [222057 h] | 25,771.44 | ZNB | CON |
| A65820 |  | Concrete heel kerb | 14d | 2027-04-11 | 2027-04-27 | A63190, A88420 | 175d | 133d | ICKMO1-cost unite [25771.4 $]; labor [1200 h]; Physical Units [222057 h] | 25,771.44 | ZNB | CON |
|  | 1 | **Ground Cover And Shrubs** |  | 2027-04-25 | 2027-05-11 |  |  |  |  |  |  |  |
| A65670 |  | Lantana montevidensis | 14d | 2027-04-25 | 2027-05-11 | A65760, A88420 | 163d | 121d | ICKMO1-cost unite [38657.2 $]; labor [1200 h]; Physical Units [333086 h] | 38,657.16 | ZNB | CON |
| A65680 |  | Portulaca grandiflora | 14d | 2027-04-25 | 2027-05-11 | A65760, A88420 | 163d | 121d | ICKMO1-cost unite [38657.2 $]; labor [1200 h]; Physical Units [333086 h] | 38,657.16 | ZNB | CON |
| A65690 |  | Dodonaea viscosa | 14d | 2027-04-25 | 2027-05-11 | A65760, A88420 | 163d | 121d | ICKMO1-cost unite [38657.2 $]; labor [1200 h]; Physical Units [333086 h] | 38,657.16 | ZNB | CON |
| A65700 |  | Atriplex halimus | 14d | 2027-04-25 | 2027-05-11 | A65760, A88420 | 163d | 121d | ICKMO1-cost unite [38657.2 $]; labor [1200 h]; Physical Units [333086 h] | 38,657.16 | ZNB | CON |
|  | R24 | **Road 24** |  | 2027-04-11 | 2027-05-13 |  |  |  |  |  |  |  |
|  | 2 | **Trees/ Palms** |  | 2027-04-11 | 2027-04-27 |  |  |  |  |  |  |  |
| A65870 |  | Roadside tree - Cordia sebestena | 14d | 2027-04-11 | 2027-04-27 | A63310, A88420 | 175d | 133d | ICKMO1-cost unite [29453.1 $]; boom truck [200 h]; labor [400 h]; Physical Units [253780 h] | 29,453.06 | ZNB | CON |
| A65880 |  | Roadside tree - Parkinsonia aculeata | 14d | 2027-04-11 | 2027-04-27 | A63310, A88420 | 175d | 133d | ICKMO1-cost unite [29453.1 $]; boom truck [200 h]; labor [400 h]; Physical Units [253780 h] | 29,453.06 | ZNB | CON |
| A65890 |  | Roadside tree - Dalbergia sissoo | 14d | 2027-04-11 | 2027-04-27 | A63310, A88420 | 175d | 133d | ICKMO1-cost unite [29453.1 $]; boom truck [200 h]; labor [400 h]; Physical Units [253780 h] | 29,453.06 | ZNB | CON |
| A65900 |  | Roadside tree - Acacia stenophylla | 14d | 2027-04-11 | 2027-04-27 | A63310, A88420 | 175d | 133d | ICKMO1-cost unite [29453.1 $]; boom truck [200 h]; labor [400 h]; Physical Units [253780 h] | 29,453.06 | ZNB | CON |
| A65910 |  | Roadside tree - Hibiscus tiliaceus | 14d | 2027-04-11 | 2027-04-27 | A63310, A88420 | 175d | 133d | ICKMO1-cost unite [29453.1 $]; boom truck [200 h]; labor [400 h]; Physical Units [253780 h] | 29,453.06 | ZNB | CON |
| A65920 |  | Roadside tree - Azadirachla indica | 14d | 2027-04-11 | 2027-04-27 | A63310, A88420 | 161d | 0d | ICKMO1-cost unite [29453.1 $]; boom truck [200 h]; labor [400 h]; Physical Units [253780 h] | 29,453.06 | ZNB | CON |
|  | 3 | **Miscellaneous Landscaping Items** |  | 2027-04-13 | 2027-04-29 |  |  |  |  |  |  |  |
| A65930 |  | Install Precast concrete block paving for sidewalk, mixed grey colour | 14d | 2027-04-13 | 2027-04-29 | A63330, A88420 | 173d | 131d | ICKMO1-cost unite [29453.1 $]; labor [1200 h]; Physical Units [253780 h] | 29,453.06 | ZNB | CON |
| A65940 |  | Install Precast concrete block paving for main intrsection, colour light grey | 14d | 2027-04-13 | 2027-04-29 | A63330, A88420 | 173d | 131d | ICKMO1-cost unite [29453.1 $]; labor [1200 h]; Physical Units [253780 h] | 29,453.06 | ZNB | CON |
| A65950 |  | install Precast concrete block paving for main intrsection, colour mid grey | 14d | 2027-04-13 | 2027-04-29 | A63330, A88420 | 173d | 131d | ICKMO1-cost unite [29453.1 $]; labor [1200 h]; Physical Units [253780 h] | 29,453.06 | ZNB | CON |
| A65960 |  | install Precast concrete block paving for main intrsection, colour dark grey | 14d | 2027-04-13 | 2027-04-29 | A63330, A88420 | 173d | 131d | ICKMO1-cost unite [29453.1 $]; labor [1200 h]; Physical Units [253780 h] | 29,453.06 | ZNB | CON |
| A65970 |  | Gravel, mixed dark beige + medium beige + light beige | 14d | 2027-04-13 | 2027-04-29 | A63330, A88420 | 173d | 131d | ICKMO1-cost unite [29453.1 $]; labor [1200 h]; Physical Units [253780 h] | 29,453.06 | ZNB | CON |
| A65980 |  | Concrete heel kerb | 14d | 2027-04-13 | 2027-04-29 | A63330, A88420 | 173d | 131d | ICKMO1-cost unite [29453.1 $]; labor [1200 h]; Physical Units [253780 h] | 29,453.06 | ZNB | CON |

| ID | WBS | Activity | Duration | Start | Finish | Predecessors | Total float | Free float | Resources | Cost | ALKHARJ INDUSTERIAL AREA - PROJECT ZONES | ALKHARJ INDUSTERIAL AREA - DECEPLINS |
| --- | --- | --- | --- | --- | --- | --- | --- | --- | --- | --- | --- | --- |
|  | 1 | **Ground Cover And Shrubs** |  | 2027-04-27 | 2027-05-13 |  |  |  |  |  |  |  |
| A65830 |  | Lantana montevidensis | 14d | 2027-04-27 | 2027-05-13 | A65920, A88420 | 161d | 119d | ICKMO1-cost unite [44179.6 $]; labor [1200 h]; Physical Units [380670 h] | 44,179.61 | ZNB | CON |
| A65840 |  | Portulaca grandiflora | 14d | 2027-04-27 | 2027-05-13 | A65920, A88420 | 161d | 119d | ICKMO1-cost unite [44179.6 $]; labor [1200 h]; Physical Units [380670 h] | 44,179.61 | ZNB | CON |
| A65850 |  | Dodonaea viscosa | 14d | 2027-04-27 | 2027-05-13 | A65920, A88420 | 161d | 119d | ICKMO1-cost unite [44179.6 $]; labor [1200 h]; Physical Units [380670 h] | 44,179.61 | ZNB | CON |
| A65860 |  | Atriplex halimus | 14d | 2027-04-27 | 2027-05-13 | A65920, A88420 | 161d | 119d | ICKMO1-cost unite [44179.6 $]; labor [1200 h]; Physical Units [380670 h] | 44,179.61 | ZNB | CON |
|  | R25 | **Road 25** |  | 2027-04-14 | 2027-05-04 |  |  |  |  |  |  |  |
|  | 2 | **Trees/ Palms** |  | 2027-04-14 | 2027-05-01 |  |  |  |  |  |  |  |
| A66030 |  | Roadside tree - Cordia sebestena | 14d | 2027-04-14 | 2027-05-01 | A63450, A88420 | 172d | 130d | ICKMO1-cost unite [31293.9 $]; boom truck [200 h]; labor [400 h]; Physical Units [269641 h] | 31,293.89 | ZNB | CON |
| A66040 |  | Roadside tree - Parkinsonia aculeata | 14d | 2027-04-14 | 2027-05-01 | A63450, A88420 | 172d | 130d | ICKMO1-cost unite [31293.9 $]; boom truck [200 h]; labor [400 h]; Physical Units [269641 h] | 31,293.89 | ZNB | CON |
| A66050 |  | Roadside tree - Dalbergia sissoo | 14d | 2027-04-14 | 2027-05-01 | A63450, A88420 | 172d | 130d | ICKMO1-cost unite [31293.9 $]; boom truck [200 h]; labor [400 h]; Physical Units [269641 h] | 31,293.89 | ZNB | CON |
| A66060 |  | Roadside tree - Acacia stenophylla | 14d | 2027-04-14 | 2027-05-01 | A63450, A88420 | 172d | 130d | ICKMO1-cost unite [31293.9 $]; boom truck [200 h]; labor [400 h]; Physical Units [269641 h] | 31,293.89 | ZNB | CON |
| A66070 |  | Roadside tree - Hibiscus tiliaceus | 14d | 2027-04-14 | 2027-05-01 | A63450, A88420 | 172d | 130d | ICKMO1-cost unite [31293.9 $]; boom truck [200 h]; labor [400 h]; Physical Units [269641 h] | 31,293.89 | ZNB | CON |
| A66080 |  | Roadside tree - Azadirachla indica | 14d | 2027-04-14 | 2027-05-01 | A63450, A88420 | 169d | 0d | ICKMO1-cost unite [31293.9 $]; boom truck [200 h]; labor [400 h]; Physical Units [269641 h] | 31,293.89 | ZNB | CON |
|  | 3 | **Miscellaneous Landscaping Items** |  | 2027-04-17 | 2027-04-20 |  |  |  |  |  |  |  |
| A66090 |  | Install Precast concrete block paving for sidewalk, mixed grey colour | 3d | 2027-04-17 | 2027-04-20 | A63470, A88420 | 181d | 139d | ICKMO1-cost unite [31293.9 $]; labor [1200 h]; Physical Units [269641 h] | 31,293.89 | ZNB | CON |
| A66100 |  | Install Precast concrete block paving for main intrsection, colour light grey | 3d | 2027-04-17 | 2027-04-20 | A63470, A88420 | 181d | 139d | ICKMO1-cost unite [31293.9 $]; labor [1200 h]; Physical Units [269641 h] | 31,293.89 | ZNB | CON |
| A66110 |  | install Precast concrete block paving for main intrsection, colour mid grey | 3d | 2027-04-17 | 2027-04-20 | A63470, A88420 | 181d | 139d | ICKMO1-cost unite [31293.9 $]; labor [1200 h]; Physical Units [269641 h] | 31,293.89 | ZNB | CON |
| A66120 |  | install Precast concrete block paving for main intrsection, colour dark grey | 3d | 2027-04-17 | 2027-04-20 | A63470, A88420 | 181d | 139d | ICKMO1-cost unite [31293.9 $]; labor [1200 h]; Physical Units [269641 h] | 31,293.89 | ZNB | CON |
| A66130 |  | Gravel, mixed dark beige + medium beige + light beige | 3d | 2027-04-17 | 2027-04-20 | A63470, A88420 | 181d | 139d | ICKMO1-cost unite [31293.9 $]; labor [1200 h]; Physical Units [269641 h] | 31,293.89 | ZNB | CON |
| A66140 |  | Concrete heel kerb | 3d | 2027-04-17 | 2027-04-20 | A63470, A88420 | 181d | 139d | ICKMO1-cost unite [31293.9 $]; labor [1200 h]; Physical Units [269641 h] | 31,293.89 | ZNB | CON |
|  | 1 | **Ground Cover And Shrubs** |  | 2027-05-01 | 2027-05-04 |  |  |  |  |  |  |  |
| A65990 |  | Lantana montevidensis | 3d | 2027-05-01 | 2027-05-04 | A66080, A88420 | 169d | 127d | ICKMO1-cost unite [46940.8 $]; labor [1200 h]; Physical Units [404462 h] | 46,940.83 | ZNB | CON |
| A66000 |  | Portulaca grandiflora | 3d | 2027-05-01 | 2027-05-04 | A66080, A88420 | 169d | 127d | ICKMO1-cost unite [46940.8 $]; labor [1200 h]; Physical Units [404462 h] | 46,940.83 | ZNB | CON |
| A66010 |  | Dodonaea viscosa | 3d | 2027-05-01 | 2027-05-04 | A66080, A88420 | 169d | 127d | ICKMO1-cost unite [46940.8 $]; labor [1200 h]; Physical Units [404462 h] | 46,940.83 | ZNB | CON |
| A66020 |  | Atriplex halimus | 3d | 2027-05-01 | 2027-05-04 | A66080, A88420 | 169d | 127d | ICKMO1-cost unite [46940.8 $]; labor [1200 h]; Physical Units [404462 h] | 46,940.83 | ZNB | CON |

| ID | WBS | Activity | Duration | Start | Finish | Predecessors | Total float | Free float | Resources | Cost | ALKHARJ INDUSTERIAL AREA - PROJECT ZONES | ALKHARJ INDUSTERIAL AREA - DECEPLINS |
| --- | --- | --- | --- | --- | --- | --- | --- | --- | --- | --- | --- | --- |
|  | R251 | **Road 26** |  | 2027-04-19 | 2027-05-22 |  |  |  |  |  |  |  |
|  | 2 | **Trees/ Palms** |  | 2027-04-19 | 2027-05-05 |  |  |  |  |  |  |  |
| A66790 |  | Roadside tree - Cordia sebestena | 14d | 2027-04-19 | 2027-05-05 | A64010, A88420 | 168d | 126d | ICKMO1-cost unite [77314.3 $]; boom truck [200 h]; labor [400 h]; Physical Units [666172 h] | 77,314.31 | ZNB | CON |
| A66800 |  | Roadside tree - Parkinsonia aculeata | 14d | 2027-04-19 | 2027-05-05 | A64010, A88420 | 168d | 126d | ICKMO1-cost unite [77314.3 $]; boom truck [200 h]; labor [400 h]; Physical Units [666172 h] | 77,314.31 | ZNB | CON |
| A66810 |  | Roadside tree - Dalbergia sissoo | 14d | 2027-04-19 | 2027-05-05 | A64010, A88420 | 168d | 126d | ICKMO1-cost unite [77314.3 $]; boom truck [200 h]; labor [400 h]; Physical Units [666172 h] | 77,314.31 | ZNB | CON |
| A66820 |  | Roadside tree - Acacia stenophylla | 14d | 2027-04-19 | 2027-05-05 | A64010, A88420 | 168d | 126d | ICKMO1-cost unite [77314.3 $]; boom truck [200 h]; labor [400 h]; Physical Units [666172 h] | 77,314.31 | ZNB | CON |
| A66830 |  | Roadside tree - Hibiscus tiliaceus | 14d | 2027-04-19 | 2027-05-05 | A64010, A88420 | 168d | 126d | ICKMO1-cost unite [77314.3 $]; boom truck [200 h]; labor [400 h]; Physical Units [666172 h] | 77,314.31 | ZNB | CON |
| A66840 |  | Roadside tree - Azadirachla indica | 14d | 2027-04-19 | 2027-05-05 | A64010, A88420 | 154d | 0d | ICKMO1-cost unite [77314.3 $]; boom truck [200 h]; labor [400 h]; Physical Units [666172 h] | 77,314.31 | ZNB | CON |
|  | 3 | **Miscellaneous Landscaping Items** |  | 2027-04-19 | 2027-05-05 |  |  |  |  |  |  |  |
| A66850 |  | Install Precast concrete block paving for sidewalk, mixed grey colour | 14d | 2027-04-19 | 2027-05-05 | A64030, A88420 | 168d | 126d | ICKMO1-cost unite [77314.3 $]; labor [1200 h]; Physical Units [666172 h] | 77,314.31 | ZNB | CON |
| A66860 |  | Install Precast concrete block paving for main intrsection, colour light grey | 14d | 2027-04-19 | 2027-05-05 | A64030, A88420 | 168d | 126d | ICKMO1-cost unite [77314.3 $]; labor [1200 h]; Physical Units [666172 h] | 77,314.31 | ZNB | CON |
| A66870 |  | install Precast concrete block paving for main intrsection, colour mid grey | 14d | 2027-04-19 | 2027-05-05 | A64030, A88420 | 168d | 126d | ICKMO1-cost unite [77314.3 $]; labor [1200 h]; Physical Units [666172 h] | 77,314.31 | ZNB | CON |
| A66880 |  | install Precast concrete block paving for main intrsection, colour dark grey | 14d | 2027-04-19 | 2027-05-05 | A64030, A88420 | 168d | 126d | ICKMO1-cost unite [77314.3 $]; labor [1200 h]; Physical Units [666172 h] | 77,314.31 | ZNB | CON |
| A66890 |  | Gravel, mixed dark beige + medium beige + light beige | 14d | 2027-04-19 | 2027-05-05 | A64030, A88420 | 168d | 126d | ICKMO1-cost unite [77314.3 $]; labor [1200 h]; Physical Units [666172 h] | 77,314.31 | ZNB | CON |
| A66900 |  | Concrete heel kerb | 14d | 2027-04-19 | 2027-05-05 | A64030, A88420 | 168d | 126d | ICKMO1-cost unite [77314.3 $]; labor [1200 h]; Physical Units [666172 h] | 77,314.31 | ZNB | CON |
|  | 1 | **Ground Cover And Shrubs** |  | 2027-05-05 | 2027-05-22 |  |  |  |  |  |  |  |
| A66750 |  | Lantana montevidensis | 14d | 2027-05-05 | 2027-05-22 | A66840, A88420 | 154d | 112d | ICKMO1-cost unite [115971 $]; labor [1200 h]; Physical Units [999258 h] | 115,971.49 | ZNB | CON |
| A66760 |  | Portulaca grandiflora | 14d | 2027-05-05 | 2027-05-22 | A66840, A88420 | 154d | 112d | ICKMO1-cost unite [115971 $]; labor [1200 h]; Physical Units [999258 h] | 115,971.49 | ZNB | CON |
| A66770 |  | Dodonaea viscosa | 14d | 2027-05-05 | 2027-05-22 | A66840, A88420 | 154d | 112d | ICKMO1-cost unite [115971 $]; labor [1200 h]; Physical Units [999258 h] | 115,971.49 | ZNB | CON |
| A66780 |  | Atriplex halimus | 14d | 2027-05-05 | 2027-05-22 | A66840, A88420 | 154d | 112d | ICKMO1-cost unite [115971 $]; labor [1200 h]; Physical Units [999258 h] | 115,971.49 | ZNB | CON |
|  | R2511 | **Road 27** |  | 2027-04-21 | 2027-05-24 |  |  |  |  |  |  |  |
|  | 2 | **Trees/ Palms** |  | 2027-04-21 | 2027-05-08 |  |  |  |  |  |  |  |
| A66950 |  | Roadside tree - Cordia sebestena | 14d | 2027-04-21 | 2027-05-08 | A64150, A88420 | 166d | 124d | ICKMO1-cost unite [31293.9 $]; boom truck [200 h]; labor [400 h]; Physical Units [269641 h] | 31,293.89 | ZNB | CON |
| A66960 |  | Roadside tree - Parkinsonia aculeata | 14d | 2027-04-21 | 2027-05-08 | A64150, A88420 | 166d | 124d | ICKMO1-cost unite [31293.9 $]; boom truck [200 h]; labor [400 h]; Physical Units [269641 h] | 31,293.89 | ZNB | CON |
| A66970 |  | Roadside tree - Dalbergia sissoo | 14d | 2027-04-21 | 2027-05-08 | A64150, A88420 | 166d | 124d | ICKMO1-cost unite [31293.9 $]; boom truck [200 h]; labor [400 h]; Physical Units [269641 h] | 31,293.89 | ZNB | CON |
| A66980 |  | Roadside tree - Acacia stenophylla | 14d | 2027-04-21 | 2027-05-08 | A64150, A88420 | 166d | 124d | ICKMO1-cost unite [31293.9 $]; boom truck [200 h]; labor [400 h]; Physical Units [269641 h] | 31,293.89 | ZNB | CON |
| A66990 |  | Roadside tree - Hibiscus tiliaceus | 14d | 2027-04-21 | 2027-05-08 | A64150, A88420 | 166d | 124d | ICKMO1-cost unite [31293.9 $]; boom truck [200 h]; labor [400 h]; Physical Units [269641 h] | 31,293.89 | ZNB | CON |
| A67000 |  | Roadside tree - Azadirachla indica | 14d | 2027-04-21 | 2027-05-08 | A64150, A88420 | 152d | 0d | ICKMO1-cost unite [31293.9 $]; boom truck [200 h]; labor [400 h]; Physical Units [269641 h] | 31,293.89 | ZNB | CON |

| ID | WBS | Activity | Duration | Start | Finish | Predecessors | Total float | Free float | Resources | Cost | ALKHARJ INDUSTERIAL AREA - PROJECT ZONES | ALKHARJ INDUSTERIAL AREA - DECEPLINS |
| --- | --- | --- | --- | --- | --- | --- | --- | --- | --- | --- | --- | --- |
|  | 3 | **Miscellaneous Landscaping Items** |  | 2027-04-24 | 2027-05-10 |  |  |  |  |  |  |  |
| A67010 |  | Install Precast concrete block paving for sidewalk, mixed grey colour | 14d | 2027-04-24 | 2027-05-10 | A64170, A88420 | 164d | 122d | ICKMO1-cost unite [31293.9 $]; labor [1200 h]; Physical Units [269641 h] | 31,293.89 | ZNB | CON |
| A67020 |  | Install Precast concrete block paving for main intrsection, colour light grey | 14d | 2027-04-24 | 2027-05-10 | A64170, A88420 | 164d | 122d | ICKMO1-cost unite [31293.9 $]; labor [1200 h]; Physical Units [269641 h] | 31,293.89 | ZNB | CON |
| A67030 |  | install Precast concrete block paving for main intrsection, colour mid grey | 14d | 2027-04-24 | 2027-05-10 | A64170, A88420 | 164d | 122d | ICKMO1-cost unite [31293.9 $]; labor [1200 h]; Physical Units [269641 h] | 31,293.89 | ZNB | CON |
| A67040 |  | install Precast concrete block paving for main intrsection, colour dark grey | 14d | 2027-04-24 | 2027-05-10 | A64170, A88420 | 164d | 122d | ICKMO1-cost unite [31293.9 $]; labor [1200 h]; Physical Units [269641 h] | 31,293.89 | ZNB | CON |
| A67050 |  | Gravel, mixed dark beige + medium beige + light beige | 14d | 2027-04-24 | 2027-05-10 | A64170, A88420 | 164d | 122d | ICKMO1-cost unite [31293.9 $]; labor [1200 h]; Physical Units [269641 h] | 31,293.89 | ZNB | CON |
| A67060 |  | Concrete heel kerb | 14d | 2027-04-24 | 2027-05-10 | A64170, A88420 | 164d | 122d | ICKMO1-cost unite [31293.9 $]; labor [1200 h]; Physical Units [269641 h] | 31,293.89 | ZNB | CON |
|  | 1 | **Ground Cover And Shrubs** |  | 2027-05-08 | 2027-05-24 |  |  |  |  |  |  |  |
| A66910 |  | Lantana montevidensis | 14d | 2027-05-08 | 2027-05-24 | A67000, A88420 | 152d | 110d | ICKMO1-cost unite [46940.8 $]; labor [1200 h]; Physical Units [404462 h] | 46,940.83 | ZNB | CON |
| A66920 |  | Portulaca grandiflora | 14d | 2027-05-08 | 2027-05-24 | A67000, A88420 | 152d | 110d | ICKMO1-cost unite [46940.8 $]; labor [1200 h]; Physical Units [404462 h] | 46,940.83 | ZNB | CON |
| A66930 |  | Dodonaea viscosa | 14d | 2027-05-08 | 2027-05-24 | A67000, A88420 | 152d | 110d | ICKMO1-cost unite [46940.8 $]; labor [1200 h]; Physical Units [404462 h] | 46,940.83 | ZNB | CON |
| A66940 |  | Atriplex halimus | 14d | 2027-05-08 | 2027-05-24 | A67000, A88420 | 152d | 110d | ICKMO1-cost unite [46940.8 $]; labor [1200 h]; Physical Units [404462 h] | 46,940.83 | ZNB | CON |
|  | CO2 | **Collector 2** |  | 2027-04-22 | 2027-05-25 |  |  |  |  |  |  |  |
|  | 2 | **Trees/ Palms** |  | 2027-04-22 | 2027-05-09 |  |  |  |  |  |  |  |
| A66190 |  | Roadside tree - Cordia sebestena | 14d | 2027-04-22 | 2027-05-09 | A63590, A88420 | 165d | 123d | ICKMO1-cost unite [115971 $]; boom truck [200 h]; labor [400 h]; Physical Units [999258 h] | 115,971.49 | ZNB | CON |
| A66200 |  | Roadside tree - Parkinsonia aculeata | 14d | 2027-04-22 | 2027-05-09 | A63590, A88420 | 165d | 123d | ICKMO1-cost unite [115971 $]; boom truck [200 h]; labor [400 h]; Physical Units [999258 h] | 115,971.49 | ZNB | CON |
| A66210 |  | Roadside tree - Dalbergia sissoo | 14d | 2027-04-22 | 2027-05-09 | A63590, A88420 | 165d | 123d | ICKMO1-cost unite [115971 $]; boom truck [200 h]; labor [400 h]; Physical Units [999258 h] | 115,971.49 | ZNB | CON |
| A66220 |  | Roadside tree - Acacia stenophylla | 14d | 2027-04-22 | 2027-05-09 | A63590, A88420 | 165d | 123d | ICKMO1-cost unite [115971 $]; boom truck [200 h]; labor [400 h]; Physical Units [999258 h] | 115,971.49 | ZNB | CON |
| A66230 |  | Roadside tree - Hibiscus tiliaceus | 14d | 2027-04-22 | 2027-05-09 | A63590, A88420 | 165d | 123d | ICKMO1-cost unite [115971 $]; boom truck [200 h]; labor [400 h]; Physical Units [999258 h] | 115,971.49 | ZNB | CON |
| A66240 |  | Roadside tree - Azadirachla indica | 14d | 2027-04-22 | 2027-05-09 | A63590, A88420 | 151d | 0d | ICKMO1-cost unite [115971 $]; boom truck [200 h]; labor [400 h]; Physical Units [999258 h] | 115,971.49 | ZNB | CON |
|  | 3 | **Miscellaneous Landscaping Items** |  | 2027-04-27 | 2027-05-13 |  |  |  |  |  |  |  |
| A66250 |  | Install Precast concrete block paving for sidewalk, mixed grey colour | 14d | 2027-04-27 | 2027-05-13 | A63610, A88420 | 161d | 119d | ICKMO1-cost unite [115971 $]; labor [1200 h]; Physical Units [999258 h] | 115,971.49 | ZNB | CON |
| A66260 |  | Install Precast concrete block paving for main intrsection, colour light grey | 14d | 2027-04-27 | 2027-05-13 | A63610, A88420 | 161d | 119d | ICKMO1-cost unite [115971 $]; labor [1200 h]; Physical Units [999258 h] | 115,971.49 | ZNB | CON |
| A66270 |  | install Precast concrete block paving for main intrsection, colour mid grey | 14d | 2027-04-27 | 2027-05-13 | A63610, A88420 | 161d | 119d | ICKMO1-cost unite [115971 $]; labor [1200 h]; Physical Units [999258 h] | 115,971.49 | ZNB | CON |
| A66280 |  | install Precast concrete block paving for main intrsection, colour dark grey | 14d | 2027-04-27 | 2027-05-13 | A63610, A88420 | 161d | 119d | ICKMO1-cost unite [115971 $]; labor [1200 h]; Physical Units [999258 h] | 115,971.49 | ZNB | CON |
| A66290 |  | Gravel, mixed dark beige + medium beige + light beige | 14d | 2027-04-27 | 2027-05-13 | A63610, A88420 | 161d | 119d | ICKMO1-cost unite [115971 $]; labor [1200 h]; Physical Units [999258 h] | 115,971.49 | ZNB | CON |
| A66300 |  | Concrete heel kerb | 14d | 2027-04-27 | 2027-05-13 | A63610, A88420 | 161d | 119d | ICKMO1-cost unite [115971 $]; labor [1200 h]; Physical Units [999258 h] | 115,971.49 | ZNB | CON |

| ID | WBS | Activity | Duration | Start | Finish | Predecessors | Total float | Free float | Resources | Cost | ALKHARJ INDUSTERIAL AREA - PROJECT ZONES | ALKHARJ INDUSTERIAL AREA - DECEPLINS |
| --- | --- | --- | --- | --- | --- | --- | --- | --- | --- | --- | --- | --- |
|  | 1 | **Ground Cover And Shrubs** |  | 2027-05-09 | 2027-05-25 |  |  |  |  |  |  |  |
| A66150 |  | Lantana montevidensis | 14d | 2027-05-09 | 2027-05-25 | A66240, A88420 | 151d | 109d | ICKMO1-cost unite [173957 $]; labor [1200 h]; Physical Units [1498887 h] | 173,957.22 | ZNB | CON |
| A66160 |  | Portulaca grandiflora | 14d | 2027-05-09 | 2027-05-25 | A66240, A88420 | 151d | 109d | ICKMO1-cost unite [173957 $]; labor [1200 h]; Physical Units [1498887 h] | 173,957.22 | ZNB | CON |
| A66170 |  | Dodonaea viscosa | 14d | 2027-05-09 | 2027-05-25 | A66240, A88420 | 151d | 109d | ICKMO1-cost unite [173957 $]; labor [1200 h]; Physical Units [1498887 h] | 173,957.22 | ZNB | CON |
| A66180 |  | Atriplex halimus | 14d | 2027-05-09 | 2027-05-25 | A66240, A88420 | 151d | 109d | ICKMO1-cost unite [173957 $]; labor [1200 h]; Physical Units [1498887 h] | 173,957.22 | ZNB | CON |
|  | AR1 | **Arterial 1** |  | 2027-05-02 | 2027-09-29 |  |  |  |  |  |  |  |
|  | 2 | **Trees/ Palms** |  | 2027-05-02 | 2027-07-26 |  |  |  |  |  |  |  |
| A66350 |  | Roadside tree - Cordia sebestena | 14d | 2027-05-02 | 2027-05-18 | A63730, A88420 | 42d | 0d | ICKMO1-cost unite [84677.6 $]; boom truck [200 h]; labor [400 h]; Physical Units [729617 h] | 84,677.59 | ZNB | CON |
| A66360 |  | Roadside tree - Parkinsonia aculeata | 3d | 2027-05-18 | 2027-05-22 | A63730, A66350, A88420 | 42d | 0d | ICKMO1-cost unite [84677.6 $]; boom truck [200 h]; labor [400 h]; Physical Units [729617 h] | 84,677.59 | ZNB | CON |
| A66370 |  | Roadside tree - Dalbergia sissoo | 14d | 2027-05-22 | 2027-06-07 | A63730, A66360, A88420 | 42d | 0d | ICKMO1-cost unite [84677.6 $]; boom truck [200 h]; labor [400 h]; Physical Units [729617 h] | 84,677.59 | ZNB | CON |
| A66380 |  | Roadside tree - Acacia stenophylla | 14d | 2027-06-07 | 2027-06-23 | A63730, A66370, A88420 | 42d | 0d | ICKMO1-cost unite [84677.6 $]; boom truck [200 h]; labor [400 h]; Physical Units [729617 h] | 84,677.59 | ZNB | CON |
| A66390 |  | Roadside tree - Hibiscus tiliaceus | 14d | 2027-06-23 | 2027-07-10 | A63730, A66380, A88420 | 42d | 0d | ICKMO1-cost unite [84677.6 $]; boom truck [200 h]; labor [400 h]; Physical Units [729617 h] | 84,677.59 | ZNB | CON |
| A66400 |  | Roadside tree - Azadirachla indica | 14d | 2027-07-10 | 2027-07-26 | A63730, A66390, A88420 | 42d | 0d | ICKMO1-cost unite [84677.6 $]; boom truck [200 h]; labor [400 h]; Physical Units [729617 h] | 84,677.59 | ZNB | CON |
|  | 3 | **Miscellaneous Landscaping Items** |  | 2027-05-11 | 2027-08-17 |  |  |  |  |  |  |  |
| A66410 |  | Install Precast concrete block paving for sidewalk, mixed grey colour | 14d | 2027-05-11 | 2027-05-27 | A63750, A88420 | 79d | 0d | ICKMO1-cost unite [84677.6 $]; labor [1200 h]; Physical Units [729617 h] | 84,677.59 | ZNB | CON |
| A66420 |  | Install Precast concrete block paving for main intrsection, colour light grey | 14d | 2027-05-27 | 2027-06-13 | A63750, A66410, A88420 | 79d | 0d | ICKMO1-cost unite [84677.6 $]; labor [1200 h]; Physical Units [729617 h] | 84,677.59 | ZNB | CON |
| A66430 |  | install Precast concrete block paving for main intrsection, colour mid grey | 14d | 2027-06-13 | 2027-06-29 | A63750, A66420, A88420 | 79d | 0d | ICKMO1-cost unite [84677.6 $]; labor [1200 h]; Physical Units [729617 h] | 84,677.59 | ZNB | CON |
| A66440 |  | install Precast concrete block paving for main intrsection, colour dark grey | 14d | 2027-06-29 | 2027-07-15 | A63750, A66430, A88420 | 79d | 0d | ICKMO1-cost unite [84677.6 $]; labor [1200 h]; Physical Units [729617 h] | 84,677.59 | ZNB | CON |
| A66450 |  | Gravel, mixed dark beige + medium beige + light beige | 14d | 2027-07-15 | 2027-08-01 | A63750, A66440, A88420 | 79d | 0d | ICKMO1-cost unite [84677.6 $]; labor [1200 h]; Physical Units [729617 h] | 84,677.59 | ZNB | CON |
| A66460 |  | Concrete heel kerb | 14d | 2027-08-01 | 2027-08-17 | A63750, A66450, A88420 | 79d | 37d | ICKMO1-cost unite [84677.6 $]; labor [1200 h]; Physical Units [729617 h] | 84,677.59 | ZNB | CON |
|  | 1 | **Ground Cover And Shrubs** |  | 2027-07-26 | 2027-09-29 |  |  |  |  |  |  |  |
| A66310 |  | Lantana montevidensis | 14d | 2027-07-26 | 2027-08-11 | A66400, A88420 | 42d | 0d | ICKMO1-cost unite [127016 $]; labor [1200 h]; Physical Units [1094426 h] | 127,016.39 | ZNB | CON |
| A66320 |  | Portulaca grandiflora | 14d | 2027-08-11 | 2027-08-28 | A66400, A66310, A88420 | 42d | 0d | ICKMO1-cost unite [127016 $]; labor [1200 h]; Physical Units [1094426 h] | 127,016.39 | ZNB | CON |
| A66330 |  | Dodonaea viscosa | 14d | 2027-08-28 | 2027-09-13 | A66400, A66320, A88420 | 42d | 0d | ICKMO1-cost unite [127016 $]; labor [1200 h]; Physical Units [1094426 h] | 127,016.39 | ZNB | CON |
| A66340 |  | Atriplex halimus | 14d | 2027-09-13 | 2027-09-29 | A66400, A66330, A88420 | 42d | 0d | ICKMO1-cost unite [127016 $]; labor [1200 h]; Physical Units [1094426 h] | 127,016.39 | ZNB | CON |

| ID | WBS | Activity | Duration | Start | Finish | Predecessors | Total float | Free float | Resources | Cost | ALKHARJ INDUSTERIAL AREA - PROJECT ZONES | ALKHARJ INDUSTERIAL AREA - DECEPLINS |
| --- | --- | --- | --- | --- | --- | --- | --- | --- | --- | --- | --- | --- |
|  | AR2 | **Arterial 2** |  | 2027-05-08 | 2027-06-01 |  |  |  |  |  |  |  |
|  | 2 | **Trees/ Palms** |  | 2027-05-08 | 2027-05-29 |  |  |  |  |  |  |  |
| A66510 |  | Roadside tree - Cordia sebestena | 3d | 2027-05-08 | 2027-05-11 | A63870, A88420 | 145d | 0d | ICKMO1-cost unite [40498 $]; boom truck [200 h]; labor [400 h]; Physical Units [348947 h] | 40,497.99 | ZNB | CON |
| A66520 |  | Roadside tree - Parkinsonia aculeata | 3d | 2027-05-11 | 2027-05-15 | A63870, A66510, A88420 | 145d | 0d | ICKMO1-cost unite [40498 $]; boom truck [200 h]; labor [400 h]; Physical Units [348947 h] | 40,497.99 | ZNB | CON |
| A66530 |  | Roadside tree - Dalbergia sissoo | 3d | 2027-05-15 | 2027-05-18 | A63870, A66520, A88420 | 145d | 0d | ICKMO1-cost unite [40498 $]; boom truck [200 h]; labor [400 h]; Physical Units [348947 h] | 40,497.99 | ZNB | CON |
| A66540 |  | Roadside tree - Acacia stenophylla | 3d | 2027-05-18 | 2027-05-22 | A63870, A66530, A88420 | 145d | 0d | ICKMO1-cost unite [40498 $]; boom truck [200 h]; labor [400 h]; Physical Units [348947 h] | 40,497.99 | ZNB | CON |
| A66550 |  | Roadside tree - Hibiscus tiliaceus | 3d | 2027-05-22 | 2027-05-25 | A63870, A66540, A88420 | 145d | 0d | ICKMO1-cost unite [40498 $]; boom truck [200 h]; labor [400 h]; Physical Units [348947 h] | 40,497.99 | ZNB | CON |
| A66560 |  | Roadside tree - Azadirachla indica | 3d | 2027-05-25 | 2027-05-29 | A63870, A66550, A88420 | 145d | 0d | ICKMO1-cost unite [40498 $]; boom truck [200 h]; labor [400 h]; Physical Units [348947 h] | 40,497.99 | ZNB | CON |
|  | 3 | **Miscellaneous Landscaping Items** |  | 2027-05-12 | 2027-05-29 |  |  |  |  |  |  |  |
| A66570 |  | Install Precast concrete block paving for sidewalk, mixed grey colour | 14d | 2027-05-12 | 2027-05-29 | A63890, A88420 | 148d | 106d | ICKMO1-cost unite [40498 $]; labor [1200 h]; Physical Units [348947 h] | 40,497.99 | ZNB | CON |
| A66580 |  | Install Precast concrete block paving for main intrsection, colour light grey | 14d | 2027-05-12 | 2027-05-29 | A63890, A88420 | 148d | 106d | ICKMO1-cost unite [40498 $]; labor [1200 h]; Physical Units [348947 h] | 40,497.99 | ZNB | CON |
| A66590 |  | install Precast concrete block paving for main intrsection, colour mid grey | 14d | 2027-05-12 | 2027-05-29 | A63890, A88420 | 148d | 106d | ICKMO1-cost unite [40498 $]; labor [1200 h]; Physical Units [348947 h] | 40,497.99 | ZNB | CON |
| A66600 |  | install Precast concrete block paving for main intrsection, colour dark grey | 14d | 2027-05-12 | 2027-05-29 | A63890, A88420 | 148d | 106d | ICKMO1-cost unite [40498 $]; labor [1200 h]; Physical Units [348947 h] | 40,497.99 | ZNB | CON |
| A66610 |  | Gravel, mixed dark beige + medium beige + light beige | 14d | 2027-05-12 | 2027-05-29 | A63890, A88420 | 148d | 106d | ICKMO1-cost unite [40498 $]; labor [1200 h]; Physical Units [348947 h] | 40,497.99 | ZNB | CON |
| A66620 |  | Concrete heel kerb | 14d | 2027-05-12 | 2027-05-29 | A63890, A88420 | 148d | 106d | ICKMO1-cost unite [40498 $]; labor [1200 h]; Physical Units [348947 h] | 40,497.99 | ZNB | CON |
|  | 1 | **Ground Cover And Shrubs** |  | 2027-05-29 | 2027-06-01 |  |  |  |  |  |  |  |
| A66470 |  | Lantana montevidensis | 3d | 2027-05-29 | 2027-06-01 | A66560, A88420 | 145d | 103d | ICKMO1-cost unite [60747 $]; labor [1200 h]; Physical Units [523421 h] | 60,746.96 | ZNB | CON |
| A66480 |  | Portulaca grandiflora | 3d | 2027-05-29 | 2027-06-01 | A66560, A88420 | 145d | 103d | ICKMO1-cost unite [60747 $]; labor [1200 h]; Physical Units [523421 h] | 60,746.96 | ZNB | CON |
| A66490 |  | Dodonaea viscosa | 3d | 2027-05-29 | 2027-06-01 | A66560, A88420 | 145d | 103d | ICKMO1-cost unite [60747 $]; labor [1200 h]; Physical Units [523421 h] | 60,746.96 | ZNB | CON |
| A66500 |  | Atriplex halimus | 3d | 2027-05-29 | 2027-06-01 | A66560, A88420 | 145d | 103d | ICKMO1-cost unite [60747 $]; labor [1200 h]; Physical Units [523421 h] | 60,746.96 | ZNB | CON |
|  | LBC | **LABOR CAMP** |  | 2025-12-06 | 2027-08-29 |  |  |  |  |  |  |  |
|  | RW | **ROAD WORKS** |  | 2025-12-06 | 2027-08-17 |  |  |  |  |  |  |  |
|  | DEM | **DEMOLITION** |  | 2027-04-12 | 2027-05-05 |  |  |  |  |  |  |  |
| A5450 |  | Demolition of existing Asphalt | 15d | 2027-04-12 | 2027-04-29 | A2620, A2740, A2720, A2710, A2700, A2690, A2680, A59030 | 9d | 5d | ICKMO1-cost unite [1088.84 $]; Excavator [800 h]; Bulldozer [200 h]; Physical Units [9381.9 h] | 1,088.84 | CMP | CON |
| A5460 |  | Demolition of existing Kerbs | 15d | 2027-04-18 | 2027-05-05 | A64190 | 4d | 0d | ICKMO1-cost unite [1088.84 $]; Excavator [200 h]; Bulldozer [200 h]; Physical Units [9381.9 h] | 1,088.84 | CMP | CON |

| ID | WBS | Activity | Duration | Start | Finish | Predecessors | Complete | Planned start | Planned finish | Total float | Free float | Resources | Cost | Actual cost | ALKHARJ INDUSTERIAL AREA - PROJECT ZONES | ALKHARJ INDUSTERIAL AREA - DECEPLINS | ALKHARJ INDUSTERIAL AREA - ASPHALT WORKS |
| --- | --- | --- | --- | --- | --- | --- | --- | --- | --- | --- | --- | --- | --- | --- | --- | --- | --- |
|  | ERT | **EARTHWORKS AND SITE GRADING** |  | 2025-12-06 | 2027-05-24 |  |  |  |  |  |  |  |  |  |  |  |  |
| A5470 |  | Earthworks - Cut Excavation | 14d | 2025-12-06 A | 2026-01-29 A | A5450, A5460 | 100% | 2027-12-30 | 2028-01-16 |  |  | ICKMO1-cost unite [253904 $]; Excavator [800 h]; Grader [200 h]; Bulldozer [200 h]; Water Tanker [200 h]; Physical Units [2187740 h] | 253,903.72 | 253,903.72 | CMP | CON |  |
| A5480 |  | Embankments to the site with common / suitable excavated material or suitable imported material | 11d | 2027-05-05 | 2027-05-18 | A5470 |  |  |  | 4d | 0d | ICKMO1-cost unite [159830 $]; Roller compactor [200 h]; Bulldozer [200 h]; Physical Units [1377159 h] | 159,829.74 |  | CMP | CON |  |
| A5490 |  | Subgrade | 5d | 2027-05-18 | 2027-05-24 | A5480 |  |  |  | 4d | 0d | ICKMO1-cost unite [167116 $]; Excavator [800 h]; Grader [200 h]; Bulldozer [200 h]; Physical Units [1439938 h] | 167,115.66 |  | CMP | CON |  |
|  | AGG | **AGGREGATE BASE COURSE** |  | 2027-05-29 | 2027-06-13 |  |  |  |  |  |  |  |  |  |  |  |  |
| A5500 |  | Aggregate base course | 13d | 2027-05-29 | 2027-06-13 | A5490, A5810, A5830, A5840, A5820 |  |  |  | 4d | 0d | ICKMO1-cost unite [350032 $]; Roller compactor [200 h]; Trailers Truck [400 h]; Physical Units [3016021 h] | 350,031.99 |  | CMP | CON | ABC |
|  | BIT | **BITUMINOUS CONSTRUCTION** |  | 2027-06-13 | 2027-06-16 |  |  |  |  |  |  |  |  |  |  |  |  |
| A5510 |  | Bituminous base course (Grading I - Class A), after compaction , including Prime Coat (MC1) (if needed) | 3d | 2027-06-13 | 2027-06-16 | A5500 |  |  |  | 4d | 0d | ICKMO1-cost unite [1060848 $]; labor [600 h]; MC Truck [200 h]; Physical Units [9140703 h] | 1,060,847.76 |  | CMP | CON | BBC |
|  | ASP | **ASPHALT WEARING COURSE** |  | 2027-06-16 | 2027-06-22 |  |  |  |  |  |  |  |  |  |  |  |  |
| A5520 |  | Bituminous concrete wearing course, after compaction (Grading I - Class A), including tack coat (RC2). | 5d | 2027-06-16 | 2027-06-22 | A5510 |  |  |  | 4d | 0d | ICKMO1-cost unite [806366 $]; Rubber compactor [200 h]; Roller compactor [200 h]; Trailers Truck [400 h]; Asphalt Paver [200 h]; Physical Units [6947985 h] | 806,366.18 |  | CMP | CON | BBC |
|  | PRC | **PRECAST CONCRETE CURB** |  | 2027-06-22 | 2027-07-04 |  |  |  |  |  |  |  |  |  |  |  |  |
| A5530 |  | Concrete curb, Type (K1A) | 10d | 2027-06-22 | 2027-07-04 | A5520 |  |  |  | 4d | 0d | ICKMO1-cost unite [196956 $]; labor [800 h]; Physical Units [1697056 h] | 196,956.18 |  | CMP | CON |  |
| A5540 |  | Concrete curb, Type (K1B) | 10d | 2027-06-22 | 2027-07-04 | A5520 |  |  |  | 4d | 0d | ICKMO1-cost unite [81134.4 $]; labor [800 h]; Physical Units [699087 h] | 81,134.38 |  | CMP | CON |  |
|  | PAM | **PAVEMENT MARKINGS** |  | 2027-07-04 | 2027-07-27 |  |  |  |  |  |  |  |  |  |  |  |  |
| A5550 |  | Retroreflective Thermoplastic White Traffic lines | 3d | 2027-07-04 | 2027-07-07 | A5530, A5540 |  |  |  | 4d | 0d | ICKMO1-cost unite [33545.7 $]; labor [400 h]; Marking Machines [200 h]; Physical Units [289044 h] | 33,545.7 |  | CMP | CON |  |
| A5560 |  | Retroreflective Thermoplastic Yellow Traffic lines | 3d | 2027-07-07 | 2027-07-11 | A5550 |  |  |  | 4d | 0d | ICKMO1-cost unite [21045.8 $]; labor [400 h]; Marking Machines [200 h]; Physical Units [181339 h] | 21,045.78 |  | CMP | CON |  |
| A5580 |  | Ceramic raised pavement markers | 4d | 2027-07-11 | 2027-07-15 | A5560 |  |  |  | 4d | 0d | ICKMO1-cost unite [2488.78 $]; labor [400 h]; Marking Machines [200 h]; Physical Units [21444.4 h] | 2,488.78 |  | CMP | CON |  |
| A5570 |  | Retroreflective raised pavement markers (Type A) | 5d | 2027-07-15 | 2027-07-21 | A5560, A5580 |  |  |  | 4d | 0d | ICKMO1-cost unite [6221.96 $]; labor [400 h]; Marking Machines [200 h]; Physical Units [53611 h] | 6,221.96 |  | CMP | CON |  |
| A5590 |  | Solar powered lighting cateyes pavement markers | 5d | 2027-07-21 | 2027-07-27 | A5560, A5570 |  |  |  | 22d | 18d | ICKMO1-cost unite [34428.2 $]; labor [400 h]; Marking Machines [200 h]; Physical Units [296648 h] | 34,428.19 |  | CMP | CON |  |
|  | TRS | **TRAFFIC SIGNAGE** |  | 2027-07-21 | 2027-08-17 |  |  |  |  |  |  |  |  |  |  |  |  |
| A5620 |  | Traffic signs, ground mounted, Sheet Alumenium, Double post | 4d | 2027-07-21 | 2027-07-26 | A5570 |  |  |  | 4d | 0d | ICKMO1-cost unite [12512.4 $]; boom truck [200 h]; labor [400 h]; Physical Units [107812 h] | 12,512.36 |  | CMP | CON |  |
| A5610 |  | Traffic signs, ground mounted, 1 Sheet Alumenium, Single post | 8d | 2027-07-26 | 2027-08-04 | A5570, A5620 |  |  |  | 4d | 0d | ICKMO1-cost unite [113495 $]; boom truck [200 h]; labor [400 h]; Physical Units [977918 h] | 113,494.8 |  | CMP | CON |  |
| A5600 |  | Traffic signs, ground mounted, 2 Sheet Alumenium, Single post | 11d | 2027-08-04 | 2027-08-17 | A5570, A5610 |  |  |  | 4d | 0d | ICKMO1-cost unite [96082.6 $]; boom truck [200 h]; labor [400 h]; Physical Units [827888 h] | 96,082.64 |  | CMP | CON |  |
|  | ELE | **Electrical Works "DRY"** |  | 2027-05-05 | 2027-08-12 |  |  |  |  |  |  |  |  |  |  |  |  |
|  | MVO | **MEDIUM VOLTAGE** |  | 2027-05-05 | 2027-07-18 |  |  |  |  |  |  |  |  |  |  |  |  |
|  | TRE | **MEDIUM VOLTAGE CABLE TRENCH** |  | 2027-05-05 | 2027-05-17 |  |  |  |  |  |  |  |  |  |  |  |  |
| A5630 |  | Excavation for Trench size 1.2m wide and 80cm deep | 10d | 2027-05-05 | 2027-05-17 | A5470 |  |  |  | 8d | 0d | ICKMO1-cost unite [91038.7 $]; Trailers Truck [400 h]; JCB [200 h]; labor [400 h]; Physical Units [784427 h] | 91,038.7 |  | CMP | CON |  |

| ID | WBS | Activity | Duration | Start | Finish | Predecessors | Total float | Free float | Resources | Cost | ALKHARJ INDUSTERIAL AREA - PROJECT ZONES | ALKHARJ INDUSTERIAL AREA - DECEPLINS |
| --- | --- | --- | --- | --- | --- | --- | --- | --- | --- | --- | --- | --- |
|  | DBA | **MEDIUM VOLTAGE CABLES DUCT BANKS** |  | 2027-05-17 | 2027-05-23 |  |  |  |  |  |  |  |
| A5640 |  | 4-way Duct Bank (4x200mm duct) | 5d | 2027-05-17 | 2027-05-23 | A5630 | 16d | 0d | ICKMO1-cost unite [64767.5 $]; labor [800 h]; Physical Units [558064 h] | 64,767.51 | CMP | CON |
|  | CAB | **MEDIUM VOLTAGE CABLES** |  | 2027-05-23 | 2027-07-01 |  |  |  |  |  |  |  |
| A5650 |  | Cable: 33KV 3Cx400mm² AL/XLPE/LLDPE unarmored | 10d | 2027-05-23 | 2027-06-03 | A5640 | 16d | 0d | ICKMO1-cost unite [680811 $]; labor [800 h]; Physical Units [5866151 h] | 680,811.15 | CMP | CON |
| A5660 |  | Single Core Cables, Copper, 33kV (3x1Cx70mm²,AL/XLPE/PVC). | 2d | 2027-06-03 | 2027-06-06 | A5650 | 28d | 12d | ICKMO1-cost unite [8586.31 $]; labor [800 h]; Physical Units [73983.2 h] | 8,586.31 | CMP | CON |
| A5670 |  | Straight joints cables for 36KV 3x400mm² AL/XLPE/LLDPE unarmored | 14d | 2027-06-03 | 2027-06-20 | A5650 | 16d | 0d | ICKMO1-cost unite [162704 $]; labor [800 h]; Physical Units [1401928 h] | 162,704.29 | CMP | CON |
| A5680 |  | Cable Termination for 36KV 3Cx400mm² AL/XLPE/LLDPE | 10d | 2027-06-20 | 2027-07-01 | A5670, A5660 | 16d | 0d | ICKMO1-cost unite [63629.9 $]; labor [800 h]; Physical Units [548262 h] | 63,629.92 | CMP | CON |
|  | TRA | **Liquid-Filled Utility Transformers** |  | 2027-07-01 | 2027-07-18 |  |  |  |  |  |  |  |
| A5690 |  | 1000kVA, 33/0.4 KV unit substation | 14d | 2027-07-01 | 2027-07-18 | A5680 | 16d | 0d | ICKMO1-cost unite [1988366 $]; labor [800 h]; Physical Units [17132582 h] | 1,988,365.65 | CMP | CON |
| A5700 |  | 1500kVA, 33/0.4 KV unit substation | 5d | 2027-07-01 | 2027-07-07 | A5680 | 39d | 35d | ICKMO1-cost unite [335699 $]; labor [800 h]; Physical Units [2892519 h] | 335,698.66 | CMP | CON |
|  | LVO | **LOW VOLTAGE "Road"** |  | 2027-05-17 | 2027-08-12 |  |  |  |  |  |  |  |
|  | CAB | **LOW VOLTAGE CABLES** |  | 2027-06-09 | 2027-08-03 |  |  |  |  |  |  |  |
| A5740 |  | Cables, Copper, (4Cx6mm²,Cu/XLPE/PVC + 1x6mm² PVC/ECC). | 16d | 2027-06-09 | 2027-06-28 | A5750 | 8d | 0d | ICKMO1-cost unite [159050 $]; labor [800 h]; Physical Units [1370440 h] | 159,049.92 | CMP | CON |
| A5710 |  | Cables, Copper, (4Cx10mm²,Cu/XLPE/SWA/PVC +1x10mm² PVC/PVC) | 4d | 2027-07-18 | 2027-07-22 | A5690 | 16d | 0d | ICKMO1-cost unite [99.55 $]; labor [800 h]; Physical Units [857.76 h] | 99.55 | CMP | CON |
| A5730 |  | Cables, Aluminium, (4Cx70mm²,AL/XLPE/PVC). | 4d | 2027-07-22 | 2027-07-27 | A5690, A5710 | 16d | 0d | ICKMO1-cost unite [9540.34 $]; labor [800 h]; Physical Units [82203.5 h] | 9,540.34 | CMP | CON |
| A5720 |  | Cables, Aluminium, (4Cx300mm²,AL/XLPE/PVC). | 6d | 2027-07-27 | 2027-08-03 | A5690, A5730 | 16d | 12d | ICKMO1-cost unite [243375 $]; labor [800 h]; Physical Units [2097021 h] | 243,375.13 | CMP | CON |
|  | CON | **CONDUITS** |  | 2027-05-17 | 2027-06-09 |  |  |  |  |  |  |  |
| A5750 |  | 50 mm diameter PVC Conduit | 20d | 2027-05-17 | 2027-06-09 | A5630 | 8d | 0d | ICKMO1-cost unite [278337 $]; Trailers Truck [400 h]; JCB [200 h]; labor [400 h]; Physical Units [2398270 h] | 278,337.36 | CMP | CON |
|  | LIP | **LIGHTING POLES** |  | 2027-06-28 | 2027-07-10 |  |  |  |  |  |  |  |
| A5760 |  | Street Lighting Hot dip galvanized steel 8-meter, 1-meter single arm | 4d | 2027-06-28 | 2027-07-03 | A5740 | 14d | 6d | ICKMO1-cost unite [27117.4 $]; boom truck [200 h]; labor [400 h]; Physical Units [233655 h] | 27,117.38 | CMP | CON |
| A5770 |  | Street Lighting Hot dip galvanized steel 8-meter, double arm | 2d | 2027-06-28 | 2027-06-30 | A5740 | 16d | 8d | ICKMO1-cost unite [6197.07 $]; boom truck [200 h]; labor [400 h]; Physical Units [53396.5 h] | 6,197.07 | CMP | CON |
| A5780 |  | Street Lighting Hot dip galvanized steel 8-meter, 3-meter single arm | 10d | 2027-06-28 | 2027-07-10 | A5740 | 8d | 0d | ICKMO1-cost unite [362630 $]; boom truck [200 h]; labor [400 h]; Physical Units [3124574 h] | 362,630.42 | CMP | CON |
|  | STL | **STREET LIGHTING LUMINAIRE** |  | 2027-07-10 | 2027-07-18 |  |  |  |  |  |  |  |
| A5790 |  | Street Lighting ( LED) Luminaire with 92 Watt, 13000 Lumen | 7d | 2027-07-10 | 2027-07-18 | A5760, A5770, A5780 | 8d | 0d | ICKMO1-cost unite [120084 $]; boom truck [200 h]; labor [400 h]; Physical Units [1034692 h] | 120,083.85 | CMP | CON |

| ID | WBS | Activity | Duration | Start | Finish | Predecessors | Total float | Free float | Resources | Cost | ALKHARJ INDUSTERIAL AREA - PROJECT ZONES | ALKHARJ INDUSTERIAL AREA - DECEPLINS |
| --- | --- | --- | --- | --- | --- | --- | --- | --- | --- | --- | --- | --- |
|  | ERT | **EARTHING SYSTEM** |  | 2027-07-18 | 2027-08-03 |  |  |  |  |  |  |  |
| A5800 |  | Earthing of lighting poles ,masts. feeder pillars , unit substations, RMU, L.V feeders and KWH meter | 14d | 2027-07-18 | 2027-08-03 | A5790 | 8d | 0d | ICKMO1-cost unite [248630 $]; labor [800 h]; Physical Units [2142295 h] | 248,629.57 | CMP | CON |
|  | RCD | **ROAD CROSSING DUCTS** |  | 2027-05-24 | 2027-05-29 |  |  |  |  |  |  |  |
| A5810 |  | Road crossing ducts, 2 way (2 x 110mm PVC) | 4d | 2027-05-24 | 2027-05-29 | A5490 | 4d | 0d | ICKMO1-cost unite [25551.5 $]; Trailers Truck [400 h]; JCB [200 h]; labor [400 h]; Physical Units [220162 h] | 25,551.52 | CMP | CON |
| A5820 |  | Road crossing ducts, 3 way (3 x 110mm PVC) | 4d | 2027-05-24 | 2027-05-29 | A5490 | 4d | 0d | ICKMO1-cost unite [21080 $]; Trailers Truck [400 h]; JCB [200 h]; labor [400 h]; Physical Units [181634 h] | 21,080 | CMP | CON |
| A5830 |  | Road crossing ducts, 4 way (4 x 110mm PVC) | 2d | 2027-05-24 | 2027-05-26 | A5490 | 6d | 2d | ICKMO1-cost unite [12478.1 $]; Trailers Truck [400 h]; JCB [200 h]; labor [400 h]; Physical Units [107517 h] | 12,478.14 | CMP | CON |
| A5840 |  | Road crossing ducts,6 way (6 x 110mm PVC) | 3d | 2027-05-24 | 2027-05-27 | A5490 | 5d | 1d | ICKMO1-cost unite [26070 $]; Trailers Truck [400 h]; JCB [200 h]; labor [400 h]; Physical Units [224630 h] | 26,070.02 | CMP | CON |
|  | LPA | **LIGHTING PANELS** |  | 2027-08-03 | 2027-08-12 |  |  |  |  |  |  |  |
| A5850 |  | Street Lighting Feeder pillars | 3d | 2027-08-03 | 2027-08-07 | A5800 | 8d | 0d | ICKMO1-cost unite [34472.8 $]; boom truck [200 h]; labor [400 h]; Physical Units [297032 h] | 34,472.78 | CMP | CON |
| A5860 |  | installation of concrete wall | 5d | 2027-08-07 | 2027-08-12 | A5850 | 8d | 0d | ICKMO1-cost unite [2905.66 $]; labor [800 h]; Physical Units [25036.4 h] | 2,905.66 | CMP | CON |
|  | TEC | **TELECOMMUNICATIONS** |  | 2027-05-05 | 2027-05-31 |  |  |  |  |  |  |  |
|  | RCR | **ROAD CROSSING REINFORCED CONCRETE ENCASEMENT DUCTS** |  | 2027-05-05 | 2027-05-10 |  |  |  |  |  |  |  |
| A5870 |  | 6 way 50mm HDPE duct | 3d | 2027-05-05 | 2027-05-09 | A5470 | 76d | 5d | ICKMO1-cost unite [16058.9 $]; Trailers Truck [400 h]; JCB [200 h]; labor [400 h]; Physical Units [138370 h] | 16,058.88 | CMP | CON |
| A5880 |  | 6 way 50mm + 12 way 32mm HDPE duct | 2d | 2027-05-05 | 2027-05-08 | A5470 | 77d | 6d | ICKMO1-cost unite [8503.35 $]; Trailers Truck [400 h]; JCB [200 h]; labor [400 h]; Physical Units [73268.4 h] | 8,503.35 | CMP | CON |
| A5890 |  | 6 way 50mm + 8 way 32mm HDPE duct | 2d | 2027-05-05 | 2027-05-08 | A5470 | 77d | 6d | ICKMO1-cost unite [1444.53 $]; Trailers Truck [400 h]; JCB [200 h]; labor [400 h]; Physical Units [12446.7 h] | 1,444.53 | CMP | CON |
| A5900 |  | 6 way 50mm + 4 way 32mm HDPE duct | 2d | 2027-05-05 | 2027-05-08 | A5470 | 77d | 6d | ICKMO1-cost unite [2801.96 $]; Trailers Truck [400 h]; JCB [200 h]; labor [400 h]; Physical Units [24142.8 h] | 2,801.96 | CMP | CON |
| A5910 |  | 6 way 50mm + 2 way 32mm+1way 16mm HDPE duct | 2d | 2027-05-05 | 2027-05-08 | A5470 | 77d | 6d | ICKMO1-cost unite [4202.93 $]; Trailers Truck [400 h]; JCB [200 h]; labor [400 h]; Physical Units [36214.2 h] | 4,202.93 | CMP | CON |
| A5920 |  | 6 way 50mm + 2 way 32mm | 2d | 2027-05-05 | 2027-05-08 | A5470 | 77d | 6d | ICKMO1-cost unite [2401.68 $]; Trailers Truck [400 h]; JCB [200 h]; labor [400 h]; Physical Units [20693.9 h] | 2,401.68 | CMP | CON |
| A5930 |  | 12 way 50mm + 8 way 32mm HDPE duct | 3d | 2027-05-05 | 2027-05-09 | A5470 | 76d | 5d | ICKMO1-cost unite [3716.58 $]; Trailers Truck [400 h]; JCB [200 h]; labor [400 h]; Physical Units [32023.6 h] | 3,716.58 | CMP | CON |
| A5940 |  | 12 way 50mm + 2 way 32mm HDPE duct | 3d | 2027-05-05 | 2027-05-09 | A5470 | 76d | 5d | ICKMO1-cost unite [2638.11 $]; Trailers Truck [400 h]; JCB [200 h]; labor [400 h]; Physical Units [22731 h] | 2,638.11 | CMP | CON |
| A5950 |  | 8 way 32mm HDPE duct | 4d | 2027-05-05 | 2027-05-10 | A5470 | 75d | 4d | ICKMO1-cost unite [11053.3 $]; Trailers Truck [400 h]; JCB [200 h]; labor [400 h]; Physical Units [95239.9 h] | 11,053.31 | CMP | CON |
| A5960 |  | 4 way 32mm HDPE duct | 2d | 2027-05-05 | 2027-05-08 | A5470 | 77d | 6d | ICKMO1-cost unite [4367.82 $]; Trailers Truck [400 h]; JCB [200 h]; labor [400 h]; Physical Units [37634.9 h] | 4,367.82 | CMP | CON |
|  | UNR | **UNREINFORCED CONCRETE DUCTS** |  | 2027-05-05 | 2027-05-08 |  |  |  |  |  |  |  |
| A5970 |  | HDPE duct | 2d | 2027-05-05 | 2027-05-08 | A5470 | 91d | 87d | ICKMO1-cost unite [6275.88 $]; Trailers Truck [400 h]; JCB [200 h]; labor [400 h]; Physical Units [54075.7 h] | 6,275.89 | CMP | CON |

| ID | WBS | Activity | Duration | Start | Finish | Predecessors | Total float | Free float | Resources | Cost | ALKHARJ INDUSTERIAL AREA - PROJECT ZONES | ALKHARJ INDUSTERIAL AREA - DECEPLINS | ALKHARJ INDUSTERIAL AREA - Wet networks |
| --- | --- | --- | --- | --- | --- | --- | --- | --- | --- | --- | --- | --- | --- |
|  | DUC | **DUCTS** |  | 2027-05-05 | 2027-05-15 |  |  |  |  |  |  |  |  |
| A5980 |  | 2 x 32 mm diameter HDPE ducts | 4d | 2027-05-05 | 2027-05-10 | A5470 | 75d | 4d | ICKMO1-cost unite [16125.2 $]; Trailers Truck [400 h]; JCB [200 h]; labor [400 h]; Physical Units [138942 h] | 16,125.25 | CMP | CON |  |
| A5990 |  | 2 x 32 mm +1 x 16mm diameter HDPE ducts | 7d | 2027-05-05 | 2027-05-13 | A5470 | 72d | 1d | ICKMO1-cost unite [34962.2 $]; Trailers Truck [400 h]; JCB [200 h]; labor [400 h]; Physical Units [301249 h] | 34,962.24 | CMP | CON |  |
| A6000 |  | 8x 32mm diameter HDPE ducts | 2d | 2027-05-05 | 2027-05-08 | A5470 | 77d | 6d | ICKMO1-cost unite [3214.68 $]; Trailers Truck [400 h]; JCB [200 h]; labor [400 h]; Physical Units [27699 h] | 3,214.68 | CMP | CON |  |
| A6010 |  | 4x 32mm diameter HDPE ducts | 2d | 2027-05-05 | 2027-05-08 | A5470 | 77d | 6d | ICKMO1-cost unite [3252.01 $]; Trailers Truck [400 h]; JCB [200 h]; labor [400 h]; Physical Units [28020.7 h] | 3,252.01 | CMP | CON |  |
| A6020 |  | 6 x 50 mm diameter HDPE ducts | 8d | 2027-05-05 | 2027-05-15 | A5470 | 71d | 0d | ICKMO1-cost unite [29056.6 $]; Trailers Truck [400 h]; JCB [200 h]; labor [400 h]; Physical Units [250363 h] | 29,056.56 | CMP | CON |  |
| A6030 |  | 6 x 50 mm +2 x 32mm diameter HDPE ducts | 2d | 2027-05-05 | 2027-05-08 | A5470 | 77d | 6d | ICKMO1-cost unite [4436.26 $]; Trailers Truck [400 h]; JCB [200 h]; labor [400 h]; Physical Units [38224.7 h] | 4,436.26 | CMP | CON |  |
| A6040 |  | 6 x 50 mm +2 x 32mm+1 x 16mm diameter HDPE ducts | 4d | 2027-05-05 | 2027-05-10 | A5470 | 75d | 4d | ICKMO1-cost unite [16218.6 $]; Trailers Truck [400 h]; JCB [200 h]; labor [400 h]; Physical Units [139746 h] | 16,218.58 | CMP | CON |  |
| A6050 |  | 6 x 50 mm +8 x 32mm diameter HDPE ducts | 2d | 2027-05-05 | 2027-05-08 | A5470 | 77d | 6d | ICKMO1-cost unite [1832.37 $]; Trailers Truck [400 h]; JCB [200 h]; labor [400 h]; Physical Units [15788.5 h] | 1,832.37 | CMP | CON |  |
| A6060 |  | 6 x 50 mm +12 x 32mm diameter HDPE ducts | 2d | 2027-05-05 | 2027-05-08 | A5470 | 77d | 6d | ICKMO1-cost unite [3716.58 $]; Trailers Truck [400 h]; JCB [200 h]; labor [400 h]; Physical Units [32023.6 h] | 3,716.58 | CMP | CON |  |
| A6070 |  | 12 x 50 mm +8 x 32mm diameter HDPE ducts | 2d | 2027-05-05 | 2027-05-08 | A5470 | 77d | 6d | ICKMO1-cost unite [510.2 $]; Trailers Truck [400 h]; JCB [200 h]; labor [400 h]; Physical Units [4396.09 h] | 510.2 | CMP | CON |  |
| A6080 |  | 12 x 50 mm +2x 32mm diameter HDPE ducts | 2d | 2027-05-05 | 2027-05-08 | A5470 | 77d | 6d | ICKMO1-cost unite [3490.52 $]; Trailers Truck [400 h]; JCB [200 h]; labor [400 h]; Physical Units [30075.8 h] | 3,490.52 | CMP | CON |  |
| A6090 |  | 1x 16 mm diameter HDPE ducts | 2d | 2027-05-05 | 2027-05-08 | A5470 | 77d | 6d | ICKMO1-cost unite [1294.17 $]; Trailers Truck [400 h]; JCB [200 h]; labor [400 h]; Physical Units [11151.1 h] | 1,294.17 | CMP | CON |  |
|  | MAH | **MANHOLES** |  | 2027-05-15 | 2027-05-31 |  |  |  |  |  |  |  |  |
| A6100 |  | Manhole 2000x1000 mm | 14d | 2027-05-15 | 2027-05-31 | A5870, A6090, A5880, A5890, A5900, A5910, A5920, A5960, A5930, A5940, A5950, A6000, A6010, A6030, A6050, A6060, A6070, A6080, A5980, A6040, A5990, A6020 | 71d | 67d | ICKMO1-cost unite [48678.6 $]; Trailers Truck [400 h]; JCB [200 h]; labor [400 h]; Physical Units [419435 h] | 48,678.55 | CMP | CON | MH |
|  | HAH | **HANDHOLES** |  | 2027-05-15 | 2027-05-20 |  |  |  |  |  |  |  |  |
| A6110 |  | Handhole 600x600 mm | 5d | 2027-05-15 | 2027-05-20 | A5870, A6090, A5880, A5890, A5900, A5910, A5920, A5960, A5930, A5940, A5950, A6000, A6010, A6030, A6050, A6060, A6070, A6080, A5980, A6040, A5990, A6020 | 80d | 76d | ICKMO1-cost unite [23788.6 $]; Trailers Truck [400 h]; JCB [200 h]; labor [400 h]; Physical Units [204973 h] | 23,788.63 | CMP | CON |  |
|  | PWN | **POTABLE WATER NETWORK** |  | 2027-05-05 | 2027-06-28 |  |  |  |  |  |  |  |  |
|  | HDP | **HDPE PIPES 100 SDR 11 (PN 16 Bar)** |  | 2027-05-05 | 2027-05-22 |  |  |  |  |  |  |  |  |
| A6120 |  | 160mm Diameter | 14d | 2027-05-05 | 2027-05-22 | A5470 | 47d | 0d | ICKMO1-cost unite [202598 $]; Trailers Truck [400 h]; JCB [200 h]; labor [400 h]; Physical Units [1745664 h] | 202,597.55 | CMP | CON |  |
| A6130 |  | 200mm Diameter | 4d | 2027-05-05 | 2027-05-10 | A5470 | 89d | 85d | ICKMO1-cost unite [7970.08 $]; Trailers Truck [400 h]; JCB [200 h]; labor [400 h]; Physical Units [68673.5 h] | 7,970.08 | CMP | CON |  |
|  | VAL | **VALVES** |  | 2027-05-22 | 2027-06-22 |  |  |  |  |  |  |  |  |
| A6150 |  | Wash-out Valves | 5d | 2027-05-22 | 2027-05-27 | A6120 | 47d | 0d | ICKMO1-cost unite [5652.56 $]; labor [800 h]; Physical Units [48704.8 h] | 5,652.56 | CMP | CON |  |
| A6160 |  | Air Valves | 5d | 2027-05-27 | 2027-06-02 | A6120, A6150 | 47d | 0d | ICKMO1-cost unite [6263.24 $]; labor [800 h]; Physical Units [53966.7 h] | 6,263.24 | CMP | CON |  |
| A6140 |  | Gate (Sluice) valves (Direct buried) | 12d | 2027-06-02 | 2027-06-16 | A6120, A6160 | 47d | 0d | ICKMO1-cost unite [126787 $]; labor [800 h]; Physical Units [1092448 h] | 126,786.81 | CMP | CON |  |
| A6170 |  | Valve chambers | 5d | 2027-06-16 | 2027-06-22 | A6140 | 47d | 0d | ICKMO1-cost unite [37586.6 $]; labor [800 h]; Physical Units [323861 h] | 37,586.57 | CMP | CON |  |

| ID | WBS | Activity | Duration | Start | Finish | Predecessors | Total float | Free float | Resources | Cost | ALKHARJ INDUSTERIAL AREA - PROJECT ZONES | ALKHARJ INDUSTERIAL AREA - DECEPLINS |
| --- | --- | --- | --- | --- | --- | --- | --- | --- | --- | --- | --- | --- |
|  | RCR | **ROAD CROSSING** |  | 2027-06-22 | 2027-06-28 |  |  |  |  |  |  |  |
| A6180 |  | HDPE road croosing with dia 160 mm | 5d | 2027-06-22 | 2027-06-28 | A6170 | 47d | 43d | ICKMO1-cost unite [102835 $]; labor [800 h]; Physical Units [886072 h] | 102,835.37 | CMP | CON |
|  | FIN | **FIRE NETWORK** |  | 2027-05-05 | 2027-07-01 |  |  |  |  |  |  |  |
|  | HDP | **HDPE PIPES 100 SDR 11 ( PN 16 Bar)** |  | 2027-05-05 | 2027-05-25 |  |  |  |  |  |  |  |
| A6190 |  | 160mm Diameter | 17d | 2027-05-05 | 2027-05-25 | A5470 | 44d | 0d | ICKMO1-cost unite [274259 $]; labor [800 h]; Physical Units [2363128 h] | 274,258.87 | CMP | CON |
| A6200 |  | 200mm Diameter | 5d | 2027-05-05 | 2027-05-11 | A5470 | 88d | 84d | ICKMO1-cost unite [14123.9 $]; labor [800 h]; Physical Units [121697 h] | 14,123.85 | CMP | CON |
|  | VAL | **VALVES** |  | 2027-05-25 | 2027-06-15 |  |  |  |  |  |  |  |
| A6220 |  | Wash-out Valves | 4d | 2027-05-25 | 2027-05-30 | A6190 | 44d | 0d | ICKMO1-cost unite [5730.43 $]; labor [800 h]; Physical Units [49375.8 h] | 5,730.43 | CMP | CON |
| A6230 |  | Air Valves | 4d | 2027-05-30 | 2027-06-03 | A6190, A6220 | 44d | 0d | ICKMO1-cost unite [4454.96 $]; labor [800 h]; Physical Units [38385.8 h] | 4,454.96 | CMP | CON |
| A6210 |  | Gate (Sluice) valves (Direct buried) | 5d | 2027-06-03 | 2027-06-09 | A6190, A6230 | 44d | 0d | ICKMO1-cost unite [37865.6 $]; labor [800 h]; Physical Units [326266 h] | 37,865.62 | CMP | CON |
| A6240 |  | Valve chambers | 5d | 2027-06-09 | 2027-06-15 | A6210 | 44d | 0d | ICKMO1-cost unite [2002.23 $]; labor [1200 h]; Physical Units [17252 h] | 2,002.23 | CMP | CON |
|  | VAC | **VALVE CHAMBERS** |  | 2027-05-25 | 2027-06-06 |  |  |  |  |  |  |  |
| A6250 |  | Wash out chamber; on 160 mm dia pipeline | 5d | 2027-05-25 | 2027-05-31 | A6190 | 52d | 0d | ICKMO1-cost unite [21508.3 $]; labor [1200 h]; Physical Units [185324 h] | 21,508.28 | CMP | CON |
| A6260 |  | Air valve chamber; on 160 mm dia pipeline | 5d | 2027-05-31 | 2027-06-06 | A6190, A6250 | 52d | 8d | ICKMO1-cost unite [16596 $]; labor [1200 h]; Physical Units [142998 h] | 16,596.04 | CMP | CON |
|  | RCR | **Road Crossing** |  | 2027-06-15 | 2027-06-20 |  |  |  |  |  |  |  |
| A6730 |  | HDPE road croosing with dia 160 mm | 4d | 2027-06-15 | 2027-06-20 | A6240, A6260 | 44d | 0d | ICKMO1-cost unite [43460.4 $]; labor [1200 h]; Physical Units [374473 h] | 43,460.4 | CMP | CON |
|  | FIH | **Fire Hydrant** |  | 2027-06-20 | 2027-07-01 |  |  |  |  |  |  |  |
| A6270 |  | 3-outlet fire hydrant | 10d | 2027-06-20 | 2027-07-01 | A6190, A6730 | 44d | 40d | ICKMO1-cost unite [330822 $]; labor [1200 h]; Physical Units [2850497 h] | 330,821.68 | CMP | CON |
|  | TSE | **TSE NETWORK** |  | 2027-05-05 | 2027-06-09 |  |  |  |  |  |  |  |
|  | HDP | **HDPE PIPES 100 SDR 11 ( PN 16 Bar)** |  | 2027-05-05 | 2027-05-17 |  |  |  |  |  |  |  |
| A6280 |  | 90mm Diameter | 6d | 2027-05-05 | 2027-05-12 | A5470 | 46d | 0d | ICKMO1-cost unite [84774.2 $]; Trailers Truck [400 h]; JCB [200 h]; labor [400 h]; Physical Units [730450 h] | 84,774.22 | CMP | CON |
| A6290 |  | 110mm Diameter | 10d | 2027-05-05 | 2027-05-17 | A5470 | 63d | 0d | ICKMO1-cost unite [149846 $]; Trailers Truck [400 h]; JCB [200 h]; labor [400 h]; Physical Units [1291131 h] | 149,845.57 | CMP | CON |
|  | UPV | **UPVC PIPES IRRIGATION DUCTS** |  | 2027-05-05 | 2027-05-10 |  |  |  |  |  |  |  |
| A6300 |  | Pipe with diameter 200 mm. | 4d | 2027-05-05 | 2027-05-10 | A5470 | 89d | 85d | ICKMO1-cost unite [30612 $]; labor [1200 h]; Physical Units [263766 h] | 30,612.05 | CMP | CON |

| ID | WBS | Activity | Duration | Start | Finish | Predecessors | Complete | Remaining | Planned start | Planned finish | Total float | Free float | Resources | Cost | Actual cost | ALKHARJ INDUSTERIAL AREA - PROJECT ZONES | ALKHARJ INDUSTERIAL AREA - DECEPLINS | ALKHARJ INDUSTERIAL AREA - Wet networks |
| --- | --- | --- | --- | --- | --- | --- | --- | --- | --- | --- | --- | --- | --- | --- | --- | --- | --- | --- |
|  | VAL | **VALVES** |  | 2027-05-17 | 2027-05-30 |  |  |  |  |  |  |  |  |  |  |  |  |  |
| A6320 |  | Wash-out Valves | 3d | 2027-05-17 | 2027-05-20 | A6280, A6290 |  |  |  |  | 63d | 0d | ICKMO1-cost unite [5558.29 $]; labor [1200 h]; Physical Units [47892.5 h] | 5,558.29 |  | CMP | CON |  |
| A6330 |  | Air Valves | 3d | 2027-05-20 | 2027-05-24 | A6280, A6290, A6320 |  |  |  |  | 63d | 0d | ICKMO1-cost unite [6158.7 $]; labor [1200 h]; Physical Units [53065.9 h] | 6,158.7 |  | CMP | CON |  |
| A6310 |  | Gate (Sluice) valves (Direct buried) | 5d | 2027-05-24 | 2027-05-30 | A6280, A6290, A6330 |  |  |  |  | 63d | 0d | ICKMO1-cost unite [21818.3 $]; labor [1200 h]; Physical Units [187996 h] | 21,818.34 |  | CMP | CON |  |
|  | VAC | **VALVE CHAMBERS** |  | 2027-05-30 | 2027-06-08 |  |  |  |  |  |  |  |  |  |  |  |  |  |
| A6340 |  | Wash out chambers | 4d | 2027-05-30 | 2027-06-03 | A6310 |  |  |  |  | 64d | 0d | ICKMO1-cost unite [21783.1 $]; labor [1200 h]; Physical Units [187692 h] | 21,783.09 |  | CMP | CON |  |
| A6350 |  | Air Valve chambers | 4d | 2027-06-03 | 2027-06-08 | A6310, A6340 |  |  |  |  | 64d | 60d | ICKMO1-cost unite [6441.8 $]; labor [1200 h]; Physical Units [55505.2 h] | 6,441.8 |  | CMP | CON |  |
|  | RCR | **ROAD CROSSING** |  | 2027-05-30 | 2027-06-02 |  |  |  |  |  |  |  |  |  |  |  |  |  |
| A6360 |  | HDPE road croosing with dia 110 mm | 3d | 2027-05-30 | 2027-06-02 | A6310 |  |  |  |  | 63d | 0d | ICKMO1-cost unite [39120.6 $]; labor [1200 h]; Physical Units [337079 h] | 39,120.58 |  | CMP | CON |  |
|  | IRC | **IRRIGATION CABLES** |  | 2027-06-02 | 2027-06-09 |  |  |  |  |  |  |  |  |  |  |  |  |  |
| A6370 |  | Decoder cables 12 AWG between valves and controllers | 6d | 2027-06-02 | 2027-06-09 | A6360 |  |  |  |  | 63d | 59d | ICKMO1-cost unite [41064.9 $]; labor [1200 h]; Physical Units [353833 h] | 41,064.94 |  | CMP | CON |  |
|  | SWN | **SEWERAGE NETWORK** |  | 2026-08-11 | 2027-06-08 |  |  |  |  |  |  |  |  |  |  |  |  |  |
|  | GRP | **GRP PIPES** |  | 2026-08-11 | 2027-05-30 |  |  |  |  |  |  |  |  |  |  |  |  |  |
| A6380 |  | 150mm Diameter | 6d | 2026-08-11 A | 2027-05-11 | A5470 | 20% | 4.8d | 2028-01-16 | 2028-01-23 | 64.48d | 0d | ICKMO1-cost unite [43553.7 $]; labor [1200 h]; Physical Units [375277 h] | 43,553.73 | 8,710.75 | CMP | CON |  |
| A6390 |  | 200mm Diameter | 10d | 2026-08-11 A | 2027-05-30 | A5470, A6400 | 20% | 8d | 2028-02-03 | 2028-02-15 | 72.2d | 68.2d | ICKMO1-cost unite [205926 $]; labor [1200 h]; Physical Units [1774345 h] | 205,926.18 | 41,185.24 | CMP | CON |  |
| A6400 |  | 250mm Diameter | 10d | 2026-08-11 A | 2027-05-20 | A5470, A6380 | 20% | 8d | 2028-01-23 | 2028-02-03 | 72.2d | 0d | ICKMO1-cost unite [91773.9 $]; labor [1200 h]; Physical Units [790762 h] | 91,773.93 | 18,354.79 | CMP | CON |  |
| A6410 |  | 300mm Diameter | 5d | 2026-08-11 A | 2027-05-10 | A5470 | 25% | 3.75d | 2028-01-16 | 2028-01-22 | 65.53d | 1.05d | ICKMO1-cost unite [22170.9 $]; labor [1200 h]; Physical Units [191034 h] | 22,170.92 | 5,543 | CMP | CON |  |
|  | MAH | **MANHOLES** |  | 2026-08-11 | 2027-06-08 |  |  |  |  |  |  |  |  |  |  |  |  |  |
|  | PCH | **PRECAST MANHOLE** |  | 2026-08-11 | 2027-05-16 |  |  |  |  |  |  |  |  |  |  |  |  |  |
| A6420 |  | Precast Manhole ring 1200 mm internal dia. | 4d | 2026-08-11 A | 2027-05-16 | A6380, A6410 | 7% | 3.72d | 2028-01-23 | 2028-01-27 | 64.48d | 0d | ICKMO1-cost unite [741481 $]; boom truck [200 h]; labor [1200 h]; Physical Units [6388909 h] | 741,481.19 | 51,904 | CMP | CON | MH |
|  | ISH | **INSPECTION MANHOLES** |  | 2027-05-16 | 2027-06-08 |  |  |  |  |  |  |  |  |  |  |  |  |  |
| A6430 |  | Manholes with internal dimensions of 60 cm x 60 cm Phase 1 | 20d | 2027-05-16 | 2027-06-08 | A6420 |  |  |  |  | 64.48d | 0d | ICKMO1-cost unite [251981 $]; boom truck [200 h]; labor [1200 h]; Physical Units [2171171 h] | 251,980.77 |  | CMP | CON | MH |
| A6740 |  | Manholes with internal dimensions of 60 cm x 60 cm Phase 2 | 20d | 2027-05-16 | 2027-06-08 | A6420, A6430 SS, A6430 FF |  |  |  |  | 64.48d | 60.48d | ICKMO1-cost unite [251981 $]; boom truck [200 h]; labor [1200 h]; Physical Units [2171171 h] | 251,980.77 |  | CMP | CON | MH |
|  | STW | **STORM WATER DRAINAGE NETWORK** |  | 2027-05-05 | 2027-07-14 |  |  |  |  |  |  |  |  |  |  |  |  |  |
|  | GRP | **GRP PIPES** |  | 2027-05-05 | 2027-05-29 |  |  |  |  |  |  |  |  |  |  |  |  |  |
| A6440 |  | 400mm Diameter | 12d | 2027-05-05 | 2027-05-19 | A5470 |  |  |  |  | 41d | 0d | ICKMO1-cost unite [83752.8 $]; labor [1200 h]; Physical Units [721649 h] | 83,752.78 |  | CMP | CON |  |
| A6450 |  | 500mm Diameter | 10d | 2027-05-05 | 2027-05-17 | A5470 |  |  |  |  | 43d | 10d | ICKMO1-cost unite [59533.8 $]; labor [1200 h]; Physical Units [512968 h] | 59,533.8 |  | CMP | CON |  |
| A6460 |  | 600mm Diameter | 20d | 2027-05-05 | 2027-05-29 | A5470 |  |  |  |  | 33d | 0d | ICKMO1-cost unite [129064 $]; labor [1200 h]; Physical Units [1112071 h] | 129,064.22 |  | CMP | CON |  |
| A6470 |  | 700mm Diameter | 20d | 2027-05-05 | 2027-05-29 | A5470 |  |  |  |  | 33d | 0d | ICKMO1-cost unite [208477 $]; labor [1200 h]; Physical Units [1796326 h] | 208,477.18 |  | CMP | CON |  |
| A6480 |  | 800mm Diameter | 6d | 2027-05-05 | 2027-05-12 | A5470 |  |  |  |  | 47d | 14d | ICKMO1-cost unite [8912.96 $]; labor [1200 h]; Physical Units [76797.8 h] | 8,912.96 |  | CMP | CON |  |
| A6490 |  | 900mm Diameter | 6d | 2027-05-05 | 2027-05-12 | A5470 |  |  |  |  | 47d | 14d | ICKMO1-cost unite [20309.5 $]; labor [1200 h]; Physical Units [174995 h] | 20,309.52 |  | CMP | CON |  |
| A6500 |  | 1000mm Diameter | 5d | 2027-05-05 | 2027-05-11 | A5470 |  |  |  |  | 48d | 15d | ICKMO1-cost unite [29886.2 $]; labor [1200 h]; Physical Units [257511 h] | 29,886.15 |  | CMP | CON |  |

| ID | WBS | Activity | Duration | Start | Finish | Predecessors | Total float | Free float | Resources | Cost | ALKHARJ INDUSTERIAL AREA - PROJECT ZONES | ALKHARJ INDUSTERIAL AREA - DECEPLINS | ALKHARJ INDUSTERIAL AREA - Wet networks |
| --- | --- | --- | --- | --- | --- | --- | --- | --- | --- | --- | --- | --- | --- |
|  | UPV | **UPVC PIPES** |  | 2027-05-05 | 2027-05-22 |  |  |  |  |  |  |  |  |
| A6510 |  | 300mm Diameter | 14d | 2027-05-05 | 2027-05-22 | A5470 | 79d | 75d | ICKMO1-cost unite [113423 $]; labor [1200 h]; Physical Units [977302 h] | 113,423.24 | CMP | CON |  |
| A6520 |  | 400mm Diameter | 4d | 2027-05-05 | 2027-05-10 | A5470 | 49d | 8d | ICKMO1-cost unite [75615.5 $]; labor [1200 h]; Physical Units [651534 h] | 75,615.5 | CMP | CON |  |
|  | MAH | **MANHOLES** |  | 2027-05-19 | 2027-07-14 |  |  |  |  |  |  |  |  |
|  | 2 | **Precast Manhole 1200** |  | 2027-05-29 | 2027-06-21 |  |  |  |  |  |  |  |  |
| A6530 |  | Precast Manhole ring 1200 mm internal dia. | 20d | 2027-05-29 | 2027-06-21 | A6440, A6520, A6500, A6480, A6490, A6450, A6460, A6470 | 33d | 0d | ICKMO1-cost unite [503087 $]; boom truck [200 h]; labor [1200 h]; Physical Units [4334806 h] | 503,087.05 | CMP | CON | MH |
|  | 1 | **Precast Manhole 1500** |  | 2027-05-19 | 2027-06-08 |  |  |  |  |  |  |  |  |
| A6540 |  | Precast Manhole ring 1500 mm internal dia Phase 1 | 16d | 2027-05-19 | 2027-06-07 | A6440, A6520 | 64d | 0d | ICKMO1-cost unite [109006 $]; boom truck [200 h]; labor [1200 h]; Physical Units [939242 h] | 109,006.18 | CMP | CON | MH |
| A6750 |  | Precast Manhole ring 1500 mm internal dia Phase 2 | 17d | 2027-05-19 | 2027-06-08 | A6440, A6520, A6540 SS, A6540 FF | 64d | 60d | ICKMO1-cost unite [109006 $]; boom truck [200 h]; labor [1200 h]; Physical Units [939242 h] | 109,006.18 | CMP | CON | MH |
|  | 3 | **Precast Manhole 2000** |  | 2027-05-19 | 2027-06-07 |  |  |  |  |  |  |  |  |
| A6550 |  | Precast Manhole ring 2000 mm internal dia Phase 1 | 16d | 2027-05-19 | 2027-06-07 | A6440, A6520, A6760 SS, A6760 FF | 65d | 61d | ICKMO1-cost unite [33925.2 $]; boom truck [200 h]; labor [1200 h]; Physical Units [292314 h] | 33,925.24 | CMP | CON | MH |
| A6760 |  | Precast Manhole ring 2000 mm internal dia Phase 2 | 15d | 2027-05-19 | 2027-06-06 | A6440, A6520 | 65d | 0d | ICKMO1-cost unite [33925.2 $]; boom truck [200 h]; labor [1200 h]; Physical Units [292314 h] | 33,925.24 | CMP | CON | MH |
|  | 4 | **Concrete Catch Basin** |  | 2027-06-21 | 2027-07-14 |  |  |  |  |  |  |  |  |
| A6560 |  | Single Catch basin | 20d | 2027-06-21 | 2027-07-14 | A6530, A6570 SS, A6570 FF | 33d | 29d | ICKMO1-cost unite [175662 $]; boom truck [200 h]; labor [1200 h]; Physical Units [1513572 h] | 175,661.52 | CMP | CON |  |
| A6570 |  | Double Catch basin | 4d | 2027-06-21 | 2027-06-26 | A6530 | 33d | 0d | ICKMO1-cost unite [175662 $]; boom truck [200 h]; labor [1200 h]; Physical Units [1513572 h] | 175,661.52 | CMP | CON |  |
|  | 1 | **LANDSCAPE** |  | 2027-05-05 | 2027-08-29 |  |  |  |  |  |  |  |  |
|  | GCS | **GROUND COVER AND SHRUBS** |  | 2027-06-22 | 2027-07-04 |  |  |  |  |  |  |  |  |
| A6580 |  | GROUND COVER AND SHRUBS | 10d | 2027-06-22 | 2027-07-04 | A5520 | 42d | 34d | ICKMO1-cost unite [203020 $]; boom truck [200 h]; labor [1200 h]; Physical Units [1749301 h] | 203,019.56 | CMP | CON |  |
|  | TRP | **TREES &PALMS** |  | 2027-08-12 | 2027-08-29 |  |  |  |  |  |  |  |  |
| A6590 |  | Trees/ Palms Package 1 | 10d | 2027-08-12 | 2027-08-24 | A6580, A5860 | 8d | 0d | ICKMO1-cost unite [59753.4 $]; Physical Units [514860 h] | 59,753.38 | CMP | CON |  |
| A6770 |  | Trees/ Palms Package 2 | 10d | 2027-08-12 | 2027-08-24 | A6580, A6590 SS, A5860, A6590 FF | 8d | 0d | ICKMO1-cost unite [59753.4 $]; boom truck [200 h]; labor [1200 h]; Physical Units [514860 h] | 59,753.38 | CMP | CON |  |
| A6780 |  | Trees/ Palms Package 3 | 10d | 2027-08-12 | 2027-08-24 | A6580, A6770 SS, A5860, A6770 FF | 8d | 4d | ICKMO1-cost unite [59753.4 $]; boom truck [200 h]; labor [1200 h]; Physical Units [514860 h] | 59,753.38 | CMP | CON |  |
| A6790 |  | Trees/ Palms Package 4 | 10d | 2027-08-17 | 2027-08-29 | A6580, A6780 SS, A6660, A7210, A6560, A6550, A6750, A6510, A6390, A6740, A5590, A5600, A5700, A5720, A5860, A5970, A6100, A6110, A6130, A6180, A6200, A6270, A6300, A6350, A6370, A6780 FF | 4d | 0d | ICKMO1-cost unite [59753.4 $]; boom truck [200 h]; labor [1200 h]; Physical Units [514860 h] | 59,753.38 | CMP | CON |  |
|  | MIS | **MISCELLANEOUS** |  | 2027-07-04 | 2027-07-20 |  |  |  |  |  |  |  |  |
| A6600 |  | Precast concrete block paving for sidewalk | 4d | 2027-07-04 | 2027-07-08 | A5530 | 18d | 0d | ICKMO1-cost unite [760246 $]; Physical Units [6550593 h] | 760,245.9 | CMP | CON |  |
| A6610 |  | Precast concrete block paving for main intrsection | 4d | 2027-07-04 | 2027-07-08 | A5530 | 18d | 0d | ICKMO1-cost unite [12599.5 $]; boom truck [200 h]; labor [1200 h]; Physical Units [108562 h] | 12,599.47 | CMP | CON |  |
| A6620 |  | Gravel, mixed | 3d | 2027-07-08 | 2027-07-12 | A6600, A6610 | 18d | 0d | ICKMO1-cost unite [232.29 $]; boom truck [200 h]; labor [1200 h]; Physical Units [2001.51 h] | 232.29 | CMP | CON |  |
| A6640 |  | Supply and install Compacted sand | 3d | 2027-07-12 | 2027-07-15 | A6600, A6620 | 18d | 0d | ICKMO1-cost unite [36543.7 $]; boom truck [200 h]; labor [1200 h]; Physical Units [314875 h] | 36,543.65 | CMP | CON |  |
| A6630 |  | concrete heel kerb | 4d | 2027-07-15 | 2027-07-20 | A6600, A6640 | 18d | 0d | ICKMO1-cost unite [760510 $]; boom truck [200 h]; labor [1200 h]; Physical Units [6552872 h] | 760,510.33 | CMP | CON |  |

| ID | WBS | Activity | Duration | Start | Finish | Predecessors | Total float | Free float | Resources | Cost | ALKHARJ INDUSTERIAL AREA - PROJECT ZONES | ALKHARJ INDUSTERIAL AREA - DECEPLINS |
| --- | --- | --- | --- | --- | --- | --- | --- | --- | --- | --- | --- | --- |
|  | FEG | **FENCES & GATES** |  | 2027-05-05 | 2027-08-01 |  |  |  |  |  |  |  |
| A6650 |  | Fences and Gates Phase 1 | 10d | 2027-05-05 | 2027-05-17 | A5470 | 53d | 0d | ICKMO1-cost unite [132222 $]; boom truck [200 h]; labor [1200 h]; Physical Units [1139278 h] | 132,221.86 | CMP | CON |
| A7030 |  | Fences and Gates Phase 2 | 10d | 2027-05-05 | 2027-05-17 | A5470, A6650 SS, A6650 FF | 53d | 0d | ICKMO1-cost unite [132222 $]; boom truck [200 h]; labor [1200 h]; Physical Units [1139278 h] | 132,221.86 | CMP | CON |
| A7040 |  | Fences and Gates Phase 3 | 10d | 2027-05-05 | 2027-05-17 | A5470, A7030 SS, A7030 FF | 53d | 0d | ICKMO1-cost unite [132222 $]; boom truck [200 h]; labor [1200 h]; Physical Units [1139278 h] | 132,221.86 | CMP | CON |
| A7050 |  | Fences and Gates Phase 4 | 10d | 2027-05-05 | 2027-05-17 | A5470, A7040 SS, A7040 FF | 53d | 0d | ICKMO1-cost unite [132222 $]; boom truck [200 h]; labor [1200 h]; Physical Units [1139278 h] | 132,221.86 | CMP | CON |
| A7060 |  | Fences and Gates Phase 5 | 10d | 2027-05-05 | 2027-05-17 | A5470, A7050 SS, A7050 FF | 53d | 0d | ICKMO1-cost unite [132222 $]; boom truck [200 h]; labor [1200 h]; Physical Units [1139278 h] | 132,221.86 | CMP | CON |
| A7070 |  | Fences and Gates Phase 6 | 10d | 2027-05-17 | 2027-05-29 | A5470, A7060 | 53d | 0d | ICKMO1-cost unite [132222 $]; boom truck [200 h]; labor [1200 h]; Physical Units [1139278 h] | 132,221.86 | CMP | CON |
| A7080 |  | Fences and Gates Phase 7 | 10d | 2027-05-17 | 2027-05-29 | A5470, A7070 SS, A7070 FF | 53d | 0d | ICKMO1-cost unite [132222 $]; boom truck [200 h]; labor [1200 h]; Physical Units [1139278 h] | 132,221.86 | CMP | CON |
| A7090 |  | Fences and Gates Phase 8 | 10d | 2027-05-17 | 2027-05-29 | A5470, A7080 SS, A7080 FF | 53d | 0d | ICKMO1-cost unite [132222 $]; boom truck [200 h]; labor [1200 h]; Physical Units [1139278 h] | 132,221.86 | CMP | CON |
| A7100 |  | Fences and Gates Phase 9 | 10d | 2027-05-17 | 2027-05-29 | A5470, A7090 SS, A7090 FF | 53d | 0d | ICKMO1-cost unite [132222 $]; boom truck [200 h]; labor [1200 h]; Physical Units [1139278 h] | 132,221.86 | CMP | CON |
| A7110 |  | Fences and Gates Phase 10 | 10d | 2027-05-17 | 2027-05-29 | A5470, A7100 SS, A7100 FF | 53d | 0d | ICKMO1-cost unite [132222 $]; boom truck [200 h]; labor [1200 h]; Physical Units [1139278 h] | 132,221.86 | CMP | CON |
| A7120 |  | Fences and Gates Phase 11 | 10d | 2027-05-29 | 2027-06-09 | A5470, A7110 | 53d | 0d | ICKMO1-cost unite [132222 $]; boom truck [200 h]; labor [1200 h]; Physical Units [1139278 h] | 132,221.86 | CMP | CON |
| A7130 |  | Fences and Gates Phase 12 | 10d | 2027-05-29 | 2027-06-09 | A5470, A7120 SS, A7120 FF | 53d | 0d | ICKMO1-cost unite [132222 $]; boom truck [200 h]; labor [1200 h]; Physical Units [1139278 h] | 132,221.86 | CMP | CON |
| A7140 |  | Fences and Gates Phase 13 | 10d | 2027-05-29 | 2027-06-09 | A5470, A7130 SS, A7130 FF | 53d | 0d | ICKMO1-cost unite [132222 $]; boom truck [200 h]; labor [1200 h]; Physical Units [1139278 h] | 132,221.86 | CMP | CON |
| A7150 |  | Fences and Gates Phase 14 | 10d | 2027-05-29 | 2027-06-09 | A5470, A7140 SS, A7140 FF | 53d | 0d | ICKMO1-cost unite [132222 $]; boom truck [200 h]; labor [1200 h]; Physical Units [1139278 h] | 132,221.86 | CMP | CON |
| A7160 |  | Fences and Gates Phase 15 | 10d | 2027-05-29 | 2027-06-09 | A5470, A7150 SS, A7150 FF | 53d | 0d | ICKMO1-cost unite [132222 $]; boom truck [200 h]; labor [1200 h]; Physical Units [1139278 h] | 132,221.86 | CMP | CON |
| A7170 |  | Fences and Gates Phase 16 | 10d | 2027-06-09 | 2027-06-21 | A5470, A7160 | 53d | 0d | ICKMO1-cost unite [132222 $]; boom truck [200 h]; labor [1200 h]; Physical Units [1139278 h] | 132,221.86 | CMP | CON |
| A7180 |  | Fences and Gates Phase 17 | 10d | 2027-06-09 | 2027-06-21 | A5470, A7170 SS, A7170 FF | 53d | 0d | ICKMO1-cost unite [132222 $]; boom truck [200 h]; labor [1200 h]; Physical Units [1139278 h] | 132,221.86 | CMP | CON |
| A7190 |  | Fences and Gates Phase 18 | 10d | 2027-06-09 | 2027-06-21 | A5470, A7180 SS, A7180 FF | 53d | 0d | ICKMO1-cost unite [132222 $]; boom truck [200 h]; labor [1200 h]; Physical Units [1139278 h] | 132,221.86 | CMP | CON |
| A7200 |  | Fences and Gates Phase 19 | 10d | 2027-06-09 | 2027-06-21 | A5470, A7190 SS, A7190 FF | 53d | 35d | ICKMO1-cost unite [132222 $]; boom truck [200 h]; labor [1200 h]; Physical Units [1139278 h] | 132,221.86 | CMP | CON |
| A7210 |  | Fences and Gates Phase 20 | 10d | 2027-07-20 | 2027-08-01 | A5470, A7200 SS, A6630, A7200 FF | 18d | 14d | ICKMO1-cost unite [132222 $]; boom truck [200 h]; labor [1200 h]; Physical Units [1139278 h] | 132,221.86 | CMP | CON |
|  | FUR | **SITE FURNISHINGS** |  | 2027-07-04 | 2027-07-28 |  |  |  |  |  |  |  |
| A7000 |  | Site Furnishings Phase 3 | 7d | 2027-07-04 | 2027-07-12 | A5530 | 21d | 0d | ICKMO1-cost unite [52904.6 $]; labor [1200 h]; Physical Units [455848 h] | 52,904.64 | CMP | CON |
| A6990 |  | Site Furnishings Phase 2 | 7d | 2027-07-12 | 2027-07-20 | A5530, A7000, A7000 FF | 21d | 0d | ICKMO1-cost unite [52904.6 $]; labor [1200 h]; Physical Units [455848 h] | 52,904.64 | CMP | CON |
| A6660 |  | Site Furnishings Phase 1 | 7d | 2027-07-20 | 2027-07-28 | A5530, A6990, A6990 FF, A7020 | 21d | 17d | ICKMO1-cost unite [52904.6 $]; labor [1200 h]; Physical Units [455848 h] | 52,904.64 | CMP | CON |

| ID | WBS | Activity | Duration | Start | Finish | Predecessors | Complete | Remaining | Planned start | Planned finish | Total float | Free float | Resources | Cost | Actual cost | ALKHARJ INDUSTERIAL AREA - PROJECT ZONES | ALKHARJ INDUSTERIAL AREA - DECEPLINS |
| --- | --- | --- | --- | --- | --- | --- | --- | --- | --- | --- | --- | --- | --- | --- | --- | --- | --- |
|  | SIR | **SECONDARY IRRIGATION** |  | 2027-05-12 | 2027-06-21 |  |  |  |  |  |  |  |  |  |  |  |  |
|  | HDP | **HDPE PIPES** |  | 2027-05-12 | 2027-05-29 |  |  |  |  |  |  |  |  |  |  |  |  |
| A6670 |  | 90 mm PN 10, | 4d | 2027-05-12 | 2027-05-17 | A6280 |  |  |  |  | 56d | 10d | ICKMO1-cost unite [7072.3 $]; labor [1200 h]; Physical Units [60937.9 h] | 7,072.3 |  | CMP | CON |
| A6680 |  | 75 mm PN 10, | 3d | 2027-05-12 | 2027-05-16 | A6280 |  |  |  |  | 57d | 11d | ICKMO1-cost unite [1804.37 $]; labor [1200 h]; Physical Units [15547.2 h] | 1,804.37 |  | CMP | CON |
| A6690 |  | 63 mm PN 10, | 4d | 2027-05-12 | 2027-05-17 | A6280 |  |  |  |  | 56d | 10d | ICKMO1-cost unite [5039.79 $]; labor [1200 h]; Physical Units [43424.9 h] | 5,039.79 |  | CMP | CON |
| A6700 |  | 50 mm PN 10, | 5d | 2027-05-12 | 2027-05-18 | A6280 |  |  |  |  | 55d | 9d | ICKMO1-cost unite [18546.6 $]; labor [1200 h]; Physical Units [159805 h] | 18,546.63 |  | CMP | CON |
| A6710 |  | 32 mm PN 10, | 14d | 2027-05-12 | 2027-05-29 | A6280 |  |  |  |  | 46d | 0d | ICKMO1-cost unite [37871 $]; labor [1200 h]; Physical Units [326312 h] | 37,871 |  | CMP | CON |
|  | 1 | **VALVES & FITTINGS** |  | 2027-05-29 | 2027-06-21 |  |  |  |  |  |  |  |  |  |  |  |  |
| A6720 |  | Valves and Fittings Phase 1 | 20d | 2027-05-29 | 2027-06-21 | A6670, A6710, A6680, A6690, A6700 |  |  |  |  | 46d | 0d | ICKMO1-cost unite [23444.7 $]; labor [1200 h]; Physical Units [202009 h] | 23,444.69 |  | CMP | CON |
| A7010 |  | Valves and Fittings Phase 1 | 20d | 2027-05-29 | 2027-06-21 | A6670, A6710, A6720 SS, A6720 FF |  |  |  |  | 46d | 0d | ICKMO1-cost unite [23444.7 $]; labor [1200 h]; Physical Units [202009 h] | 23,444.69 |  | CMP | CON |
| A7020 |  | Valves and Fittings Phase 1 | 20d | 2027-05-29 | 2027-06-21 | A6670, A6710, A7010 SS, A7010 FF |  |  |  |  | 46d | 25d | ICKMO1-cost unite [23444.7 $]; labor [1200 h]; Physical Units [202009 h] | 23,444.69 |  | CMP | CON |
|  | MOS | **MOSQUE** |  | 2026-08-15 | 2027-08-10 |  |  |  |  |  |  |  |  |  |  |  |  |
|  | 1 | **Mosque – Foundations** |  | 2026-08-15 | 2027-03-08 |  |  |  |  |  |  |  |  |  |  |  |  |
| A55800 |  | Excavation for Mosque Footings | 7d | 2026-08-15 A | 2026-09-20 A | A10330, A10340, A10350, A10360, A10370, A10380, A10390, A10400, A10410, A10420, A10430, A10440, A10450, A10460, A10470, A10480, A10490, A10500, A10510, A10520, A10530, A10540, A10550, A10560, A10570, A10580, A10590, A10600, A10610, A10620, A10630, A10640, A10650, A10660, A10670, A10680, A11190, A11200, A11210, A11220, A10970, A10980, A93190 | 100% |  | 2027-11-10 | 2027-11-17 |  |  | ICKMO1-cost unite [408206 $]; Excavator [200 h]; Bulldozer [200 h]; Physical Units [3517272 h] | 408,205.99 | 408,206 | MSJ | CON |
| A55810 |  | RC Footings Reinforcement for Mosque | 12d | 2026-08-15 A | 2026-09-20 A | A55800 | 100% |  | 2027-11-18 | 2027-12-01 |  |  | ICKMO1-cost unite [816412 $]; labor [800 h]; Physical Units [7034541 h] | 816,411.67 | 816,412 | MSJ | CON |
| A55820 |  | RC Footings Concreting for Mosque | 5d | 2026-08-21 A | 2027-03-04 | A55810 | 30% | 3.5d | 2027-12-02 | 2027-12-07 | 20.68d | 0d | ICKMO1-cost unite [408206 $]; labor [800 h]; Physical Units [3517270 h] | 408,205.83 | 122,461.75 | MSJ | CON |
| A55830 |  | Backfilling & Compaction for Mosque | 4d | 2026-08-21 A | 2027-03-08 | A55820 | 30% | 2.8d | 2027-12-08 | 2027-12-12 | 20.68d | 0d | ICKMO1-cost unite [408206 $]; Roller compactor [200 h]; Trailers Truck [400 h]; Physical Units [3517270 h] | 408,205.83 | 122,461.75 | MSJ | CON |
|  | 4 | **Mosque – Superstructure** |  | 2026-08-21 | 2027-04-15 |  |  |  |  |  |  |  |  |  |  |  |  |
| A55840 |  | Columns Reinforcement & Shuttering for Mosque | 12d | 2026-08-21 A | 2027-03-18 | A55830 | 20% | 9.6d | 2027-12-13 | 2027-12-26 | 52.48d | 0d | ICKMO1-cost unite [510257 $]; labor [1200 h]; Physical Units [4396588 h] | 510,257.28 | 102,051.46 | MSJ | CON |
| A55850 |  | Columns Concreting for Mosque | 4d | 2026-08-21 A | 2027-03-23 | A55840 | 20% | 3.2d | 2027-12-27 | 2027-12-30 | 52.48d | 0d | ICKMO1-cost unite [510257 $]; labor [1200 h]; Physical Units [4396588 h] | 510,257.28 | 102,051.46 | MSJ | CON |
| A55860 |  | Slab / beams Formwork & Reinforcement for Mosque | 12d | 2026-08-21 A | 2027-04-03 | A55850 | 20% | 9.6d | 2028-01-01 | 2028-01-13 | 52.48d | 0d | ICKMO1-cost unite [510257 $]; labor [1200 h]; Physical Units [4396588 h] | 510,257.28 | 102,051.46 | MSJ | CON |
| A55870 |  | Slab / beams Concreting for Mosque | 4d | 2026-08-21 A | 2027-04-06 | A55860 | 20% | 3.2d | 2028-01-15 | 2028-01-18 | 52.48d | 0d | ICKMO1-cost unite [510257 $]; labor [1200 h]; Physical Units [4396588 h] | 510,257.28 | 102,051.46 | MSJ | CON |
| A55990 |  | Slab on grade for Mosque | 10d | 2026-08-21 A | 2027-04-15 | A55870 | 20% | 8d | 2028-01-19 | 2028-01-30 | 52.48d | 0d | ICKMO1-cost unite [510257 $]; labor [1200 h]; Physical Units [4396588 h] | 510,257.28 | 102,051.46 | MSJ | CON |
|  | 6 | **Mosque – Masonry & Roofing** |  | 2026-08-21 | 2027-04-22 |  |  |  |  |  |  |  |  |  |  |  |  |
| A55880 |  | External Blockwork walls for Mosque | 8d | 2026-08-21 A | 2027-04-22 | A55990 | 30% | 5.6d | 2028-01-31 | 2028-02-08 | 52.48d | 0d | ICKMO1-cost unite [510257 $]; labor [1200 h]; Physical Units [4396588 h] | 510,257.28 | 153,077.18 | MSJ | CON |
| A55950 |  | Internal Blockwork walls for Mosque | 8d | 2026-08-21 A | 2027-04-22 | A55990 | 30% | 5.6d | 2028-01-31 | 2028-02-08 | 52.48d | 0d | ICKMO1-cost unite [510257 $]; labor [1200 h]; Physical Units [4396588 h] | 510,257.28 | 153,077.18 | MSJ | CON |

| ID | WBS | Activity | Duration | Start | Finish | Predecessors | Complete | Remaining | Planned start | Planned finish | Total float | Free float | Resources | Cost | Actual cost | ALKHARJ INDUSTERIAL AREA - PROJECT ZONES | ALKHARJ INDUSTERIAL AREA - DECEPLINS |
| --- | --- | --- | --- | --- | --- | --- | --- | --- | --- | --- | --- | --- | --- | --- | --- | --- | --- |
|  | 5 | **Mosque – Finishes** |  | 2026-08-21 | 2027-06-28 |  |  |  |  |  |  |  |  |  |  |  |  |
| A55930 |  | MEP First Fix for Mosque | 10d | 2026-08-21 A | 2027-05-01 | A55950, A55880 | 30% | 7d | 2028-02-09 | 2028-02-20 | 52.48d | 0d | ICKMO1-cost unite [226781 $]; Physical Units [1954039 h] | 226,781.01 | 68,034.3 | MSJ | CON |
| A55890 |  | Internal Plastering for Mosque | 15d | 2027-04-22 | 2027-05-10 | A55930 SS+6d, A55930 FF+6d |  |  |  |  | 52.48d | 0d | ICKMO1-cost unite [226781 $]; labor [1200 h]; Physical Units [1954039 h] | 226,781.01 |  | MSJ | CON |
| A55900 |  | Floor Finishes for Mosque | 15d | 2027-04-29 | 2027-05-17 | A55890 SS+6d |  |  |  |  | 54.48d | 0d | ICKMO1-cost unite [226781 $]; labor [1200 h]; Physical Units [1954039 h] | 226,781.01 |  | MSJ | CON |
| A55910 |  | Ceiling Works for Mosque | 14d | 2027-04-29 | 2027-05-16 | A55890 SS+6d |  |  |  |  | 55.48d | 1d | ICKMO1-cost unite [226781 $]; labor [1200 h]; Physical Units [1954039 h] | 226,781.01 |  | MSJ | CON |
| A55970 |  | Install Doors & Windows | 10d | 2027-05-10 | 2027-05-22 | A55890 |  |  |  |  | 52.48d | 0d | ICKMO1-cost unite [226781 $]; labor [1200 h]; Physical Units [1954039 h] | 226,781.01 |  | MSJ | CON |
| A55920 |  | painting and cladding works for Mosque | 12d | 2027-05-17 | 2027-05-31 | A55900, A55910 |  |  |  |  | 54.48d | 2d | ICKMO1-cost unite [226781 $]; labor [1200 h]; Physical Units [1954039 h] | 226,781.01 |  | MSJ | CON |
| A55960 |  | Install handrails / Ladders / GRC works | 10d | 2027-05-22 | 2027-06-02 | A55970 |  |  |  |  | 52.48d | 0d | ICKMO1-cost unite [226781 $]; labor [1200 h]; Physical Units [1954039 h] | 226,781.01 |  | MSJ | CON |
| A55940 |  | MEP Second Fix for Mosque | 8d | 2027-06-02 | 2027-06-12 | A55920, A55960 |  |  |  |  | 52.48d | 0d | ICKMO1-cost unite [226781 $]; labor [1200 h]; Physical Units [1954039 h] | 226,781.01 |  | MSJ | CON |
| A55980 |  | Required finished works includes Quran shelf / shoe rack and other requirments | 14d | 2027-06-12 | 2027-06-28 | A55920, A55940 |  |  |  |  | 52.48d | 31.8d | ICKMO1-cost unite [226781 $]; labor [1200 h]; Physical Units [1954039 h] | 226,781.01 |  | MSJ | CON |
|  | 2 | **MINARET** |  | 2026-08-15 | 2027-04-12 |  |  |  |  |  |  |  |  |  |  |  |  |
|  | 1 | **Minaret – Foundations** |  | 2026-08-15 | 2026-09-20 |  |  |  |  |  |  |  |  |  |  |  |  |
| A56000 |  | Excavation for Mosque Footings | 7d | 2026-08-15 A | 2026-09-20 A | A55800 SS, A55830 | 100% |  | 2027-12-13 | 2027-12-20 |  |  | ICKMO1-cost unite [51025.7 $]; Excavator [200 h]; Trailers Truck [800 h]; Bulldozer [200 h]; Physical Units [439659 h] | 51,025.73 | 51,025.73 | MSJ | CON |
| A56010 |  | RC Footings Reinforcement for minaret | 12d | 2026-08-15 A | 2026-09-20 A | A56000 | 100% |  | 2027-12-21 | 2028-01-03 |  |  | ICKMO1-cost unite [102051 $]; labor [1200 h]; Physical Units [879318 h] | 102,051.45 | 102,051.45 | MSJ | CON |
| A56020 |  | RC Footings Concreting for minaret | 5d | 2026-08-15 A | 2026-09-20 A | A56010 | 100% |  | 2028-01-04 | 2028-01-09 |  |  | ICKMO1-cost unite [51025.7 $]; labor [1200 h]; Physical Units [439659 h] | 51,025.73 | 51,025.73 | MSJ | CON |
| A56030 |  | Backfilling & Compaction for minaret | 4d | 2026-08-15 A | 2026-09-20 A | A56020 | 100% |  | 2028-01-10 | 2028-01-13 |  |  | ICKMO1-cost unite [51025.7 $]; Roller compactor [200 h]; Trailers Truck [400 h]; Physical Units [439659 h] | 51,025.73 | 51,025.73 | MSJ | CON |
|  | 2 | **Minaret – RC Structure** |  | 2026-08-15 | 2027-03-20 |  |  |  |  |  |  |  |  |  |  |  |  |
| A56040 |  | Columns Reinforcement & Shuttering for minaret | 18d | 2026-08-15 A | 2026-09-20 A | A56030 | 100% |  | 2028-01-15 | 2028-02-03 |  |  | ICKMO1-cost unite [81641.2 $]; labor [1200 h]; Physical Units [703454 h] | 81,641.17 | 81,641.17 | MSJ | CON |
| A56050 |  | Columns Concreting for minaret | 18d | 2026-08-15 A | 2026-09-20 A | A56040 SS+8d, A56040 FF+8d | 100% |  | 2028-01-24 | 2028-02-13 |  |  | ICKMO1-cost unite [81641.2 $]; labor [1200 h]; Physical Units [703454 h] | 81,641.17 | 81,641.17 | MSJ | CON |
| A56060 |  | Slab / beams Formwork & Reinforcement for minaret | 12d | 2026-08-15 A | 2026-09-20 A | A56050 | 100% |  | 2028-02-14 | 2028-02-27 |  |  | ICKMO1-cost unite [81641.2 $]; labor [1200 h]; Physical Units [703454 h] | 81,641.17 | 81,641.17 | MSJ | CON |
| A56070 |  | Slab / beams Concreting for minaret | 4d | 2026-08-15 A | 2026-09-20 A | A56060 | 100% |  | 2028-02-28 | 2028-03-02 |  |  | ICKMO1-cost unite [81641.2 $]; labor [1200 h]; Physical Units [703454 h] | 81,641.17 | 81,641.17 | MSJ | CON |
| A56080 |  | Slab on grade for minaret | 10d | 2027-03-08 | 2027-03-20 | A56070 |  |  |  |  | 118.68d | 0d | ICKMO1-cost unite [81641.2 $]; labor [1200 h]; Physical Units [703454 h] | 81,641.17 |  | MSJ | CON |
|  | 3 | **Minaret – Finishes** |  | 2027-03-20 | 2027-04-12 |  |  |  |  |  |  |  |  |  |  |  |  |
| A56090 |  | Block works | 8d | 2027-03-20 | 2027-03-29 | A56080 |  |  |  |  | 118.68d | 0d | ICKMO1-cost unite [178590 $]; labor [1200 h]; Physical Units [1538806 h] | 178,590.05 |  | MSJ | CON |
| A56100 |  | Finishes & GRC | 12d | 2027-03-29 | 2027-04-12 | A56090 |  |  |  |  | 118.68d | 98d | ICKMO1-cost unite [178590 $]; labor [1200 h]; Physical Units [1538806 h] | 178,590.05 |  | MSJ | CON |

| ID | WBS | Activity | Duration | Start | Finish | Predecessors | Total float | Free float | Resources | Cost | ALKHARJ INDUSTERIAL AREA - PROJECT ZONES | ALKHARJ INDUSTERIAL AREA - DECEPLINS |
| --- | --- | --- | --- | --- | --- | --- | --- | --- | --- | --- | --- | --- |
|  | 3 | **TOILET & WASH AREA** |  | 2027-03-08 | 2027-08-10 |  |  |  |  |  |  |  |
|  | 1 | **Toilet – Foundations** |  | 2027-03-08 | 2027-04-10 |  |  |  |  |  |  |  |
| A56110 |  | Excavation for toilet & wash area | 7d | 2027-03-08 | 2027-03-16 | A56030 | 20.68d | 0d | ICKMO1-cost unite [95673.2 $]; Excavator [200 h]; Trailers Truck [800 h]; Bulldozer [200 h]; Physical Units [824360 h] | 95,673.23 | MSJ | CON |
| A56120 |  | RC Footings Reinforcement for toilet & wash area | 12d | 2027-03-16 | 2027-03-30 | A56110 | 20.68d | 0d | ICKMO1-cost unite [95673.2 $]; labor [1200 h]; Physical Units [824360 h] | 95,673.23 | MSJ | CON |
| A56130 |  | RC Footings Concreting for toilet & wash area | 5d | 2027-03-30 | 2027-04-05 | A56120 | 20.68d | 0d | ICKMO1-cost unite [95673.2 $]; labor [1200 h]; Physical Units [824360 h] | 95,673.23 | MSJ | CON |
| A56140 |  | Backfilling & Compaction for toilet & wash area | 4d | 2027-04-05 | 2027-04-10 | A56130 | 20.68d | 0d | ICKMO1-cost unite [95673.2 $]; Roller compactor [200 h]; Trailers Truck [400 h]; Physical Units [824360 h] | 95,673.23 | MSJ | CON |
|  | 2 | **Toilet – Superstructure** |  | 2027-04-10 | 2027-06-05 |  |  |  |  |  |  |  |
| A56150 |  | Columns Reinforcement & Shuttering for toilet & wash area | 18d | 2027-04-10 | 2027-05-01 | A56140 | 20.68d | 0d | ICKMO1-cost unite [91846.3 $]; labor [1200 h]; Physical Units [791386 h] | 91,846.3 | MSJ | CON |
| A56160 |  | Columns Concreting for toilet & wash area | 18d | 2027-04-14 | 2027-05-05 | A56150 SS+4d, A56150 FF+4d | 20.68d | 0d | ICKMO1-cost unite [91846.3 $]; labor [1200 h]; Physical Units [791386 h] | 91,846.3 | MSJ | CON |
| A56170 |  | Slab / beams Formwork & Reinforcement for toilet & wash area | 12d | 2027-05-05 | 2027-05-19 | A56160 | 20.68d | 0d | ICKMO1-cost unite [91846.3 $]; labor [1200 h]; Physical Units [791386 h] | 91,846.3 | MSJ | CON |
| A56180 |  | Slab / beams Concreting for toilet & wash area | 4d | 2027-05-19 | 2027-05-24 | A56170 | 20.68d | 0d | ICKMO1-cost unite [91846.3 $]; labor [1200 h]; Physical Units [791386 h] | 91,846.3 | MSJ | CON |
| A56190 |  | Slab on grade for toilet & wash area | 10d | 2027-05-24 | 2027-06-05 | A56180 | 20.68d | 0d | ICKMO1-cost unite [91846.3 $]; labor [1200 h]; Physical Units [791386 h] | 91,846.3 | MSJ | CON |
|  | 3 | **Toilet – MEP Works** |  | 2027-06-05 | 2027-06-14 |  |  |  |  |  |  |  |
| A56200 |  | External Blockwork walls for toilet & wash area | 8d | 2027-06-05 | 2027-06-14 | A56190, A11070 | 20.68d | 0d | ICKMO1-cost unite [114808 $]; labor [1200 h]; Physical Units [989232 h] | 114,807.89 | MSJ | CON |
| A56210 |  | Internal walls for toilet & wash area | 8d | 2027-06-05 | 2027-06-14 | A56190, A56190 FF | 20.68d | 0d | ICKMO1-cost unite [114808 $]; labor [1200 h]; Physical Units [989232 h] | 114,807.89 | MSJ | CON |
|  | 4 | **Toilet – Finishes** |  | 2027-06-14 | 2027-08-10 |  |  |  |  |  |  |  |
| A56260 |  | MEP First Fix for toilet & wash area | 8d | 2027-06-14 | 2027-06-23 | A56210, A56200 | 20.68d | 0d | ICKMO1-cost unite [45923.2 $]; labor [1200 h]; Physical Units [395693 h] | 45,923.17 | MSJ | CON |
| A56220 |  | Internal Plastering for toilet & wash area | 12d | 2027-06-20 | 2027-07-04 | A56260 SS+5d, A56260 FF+5d | 20.68d | 0d | ICKMO1-cost unite [45923.2 $]; labor [1200 h]; Physical Units [395693 h] | 45,923.17 | MSJ | CON |
| A56230 |  | Floor Finishes for toilet & wash area | 13d | 2027-06-27 | 2027-07-12 | A56220 SS+6d | 20.68d | 0d | ICKMO1-cost unite [45923.2 $]; labor [1200 h]; Physical Units [395693 h] | 45,923.17 | MSJ | CON |
| A56240 |  | Ceiling Works for toilet & wash area | 12d | 2027-06-27 | 2027-07-11 | A56220 SS+6d | 21.68d | 1d | ICKMO1-cost unite [45923.2 $]; labor [1200 h]; Physical Units [395693 h] | 45,923.17 | MSJ | CON |
| A56290 |  | Install Doors & Windows for toilet & wash area | 8d | 2027-07-04 | 2027-07-13 | A56220 | 31.68d | 0d | ICKMO1-cost unite [45923.2 $]; labor [1200 h]; Physical Units [395693 h] | 45,923.17 | MSJ | CON |
| A56250 |  | Painting and cladding works for toilet & wash area | 10d | 2027-07-12 | 2027-07-24 | A56230, A56240 | 20.68d | 0d | ICKMO1-cost unite [45923.2 $]; labor [1200 h]; Physical Units [395693 h] | 45,923.17 | MSJ | CON |
| A56280 |  | Sanitary fixtures installation | 8d | 2027-07-13 | 2027-07-22 | A56290 | 31.68d | 11d | ICKMO1-cost unite [45923.2 $]; labor [1200 h]; Physical Units [395693 h] | 45,923.17 | MSJ | CON |
| A56270 |  | MEP Second Fix | 6d | 2027-07-24 | 2027-07-31 | A56250 | 24.68d | 4d | ICKMO1-cost unite [45923.2 $]; labor [1200 h]; Physical Units [395693 h] | 45,923.17 | MSJ | CON |
| A56300 |  | Installation of toilet partitions | 10d | 2027-07-24 | 2027-08-04 | A56250 | 20.68d | 0d | ICKMO1-cost unite [45923.2 $]; labor [1200 h]; Physical Units [395693 h] | 45,923.17 | MSJ | CON |
| A56310 |  | Setting out for hygiene & sanitary accessories | 5d | 2027-08-04 | 2027-08-10 | A56300, A56280, A56270, A56100, A55980 | 20.68d | 16.68d | ICKMO1-cost unite [45923.2 $]; labor [1200 h]; Physical Units [395693 h] | 45,923.17 | MSJ | CON |

| ID | WBS | Activity | Duration | Start | Finish | Predecessors | Total float | Free float | Resources | Cost | ALKHARJ INDUSTERIAL AREA - PROJECT ZONES | ALKHARJ INDUSTERIAL AREA - DECEPLINS |
| --- | --- | --- | --- | --- | --- | --- | --- | --- | --- | --- | --- | --- |
|  | 7 | **Portable cabins** |  | 2027-02-17 | 2027-05-20 |  |  |  |  |  |  |  |
|  | 1 | **Prepration works and foundations** |  | 2027-02-17 | 2027-03-08 |  |  |  |  |  |  |  |
| A56320 |  | Excavation for cabin foundations / pads | 6d | 2027-02-17 | 2027-02-24 | A93270, A56680 | 0d |  | ICKMO1-cost unite [45988.8 $]; Physical Units [396259 h] | 45,988.8 | PCA | CON |
| A56330 |  | RC foundations / plinths | 6d | 2027-02-24 | 2027-03-03 | A56320 | 90d | 0d | ICKMO1-cost unite [34491.6 $]; Physical Units [297194 h] | 34,491.6 | PCA | CON |
| A56340 |  | Backfilling & compaction around pads | 4d | 2027-03-03 | 2027-03-08 | A56330 | 125d | 0d | ICKMO1-cost unite [34491.6 $]; Roller compactor [200 h]; Trailers Truck [400 h]; Marking Machines [200 h]; Physical Units [297194 h] | 34,491.6 | PCA | CON |
|  | 2 | **Cabins installation** |  | 2027-03-08 | 2027-05-20 |  |  |  |  |  |  |  |
| A56350 |  | Alignment & leveling of cabins | 8d | 2027-03-08 | 2027-03-17 | A56340, A11040 | 125d | 0d | ICKMO1-cost unite [21899.4 $]; labor [1200 h]; Physical Units [188695 h] | 21,899.43 | PCA | CON |
| A56360 |  | Electrical conduits & DB installation | 7d | 2027-03-17 | 2027-03-25 | A56350 | 130d | 40d | ICKMO1-cost unite [21899.4 $]; labor [1200 h]; Physical Units [188695 h] | 21,899.43 | PCA | CON |
| A56370 |  | Plumbing & drainage rough-in | 7d | 2027-03-17 | 2027-03-25 | A56350 | 130d | 40d | ICKMO1-cost unite [21899.4 $]; labor [1200 h]; Physical Units [188695 h] | 21,899.43 | PCA | CON |
| A56380 |  | Power sockets & switches | 8d | 2027-03-17 | 2027-03-27 | A56350 | 125d | 0d | ICKMO1-cost unite [21899.4 $]; labor [1200 h]; Water Tanker [200 h]; Physical Units [188695 h] | 21,899.43 | PCA | CON |
| A56390 |  | AC units installation | 4d | 2027-03-27 | 2027-03-31 | A56380 | 125d | 35d | ICKMO1-cost unite [21899.4 $]; labor [1200 h]; Physical Units [188695 h] | 21,899.43 | PCA | CON |
| A56450 |  | Final inspection & snag rectification | 10d | 2027-04-29 | 2027-05-11 | A56440 | 90d | 0d | ICKMO1-cost unite [21899.4 $]; labor [1200 h]; Physical Units [188695 h] | 21,899.43 | PCA | CON |
| A56460 |  | Final cleaning & handover | 8d | 2027-05-11 | 2027-05-20 | A56450, A56360, A56370, A56390 | 90d | 86d | ICKMO1-cost unite [21899.4 $]; Grader [200 h]; labor [1200 h]; Physical Units [188695 h] | 21,899.43 | PCA | CON |
|  | 3 | **Parking & Landscape** |  | 2027-03-03 | 2027-04-29 |  |  |  |  |  |  |  |
| A56400 |  | Parking sub-base & kerbstone works | 10d | 2027-03-03 | 2027-03-15 | A56330 | 90d | 0d | ICKMO1-cost unite [22994.4 $]; Excavator [200 h]; Grader [200 h]; Bulldozer [200 h]; Physical Units [198129 h] | 22,994.4 | PCA | CON |
| A56410 |  | Asphalt base & wearing course | 12d | 2027-03-15 | 2027-03-29 | A56400 | 90d | 0d | ICKMO1-cost unite [22994.4 $]; Roller compactor [200 h]; Physical Units [198129 h] | 22,994.4 | PCA | CON |
| A56420 |  | Parking line marking & signage | 8d | 2027-03-29 | 2027-04-07 | A56410 | 90d | 0d | ICKMO1-cost unite [22994.4 $]; labor [400 h]; Marking Machines [200 h]; Physical Units [198129 h] | 22,994.4 | PCA | CON |
| A56430 |  | Interlock & walkways | 9d | 2027-04-07 | 2027-04-18 | A56420 | 90d | 0d | ICKMO1-cost unite [22994.4 $]; labor [1200 h]; Physical Units [198129 h] | 22,994.4 | PCA | CON |
| A56440 |  | Softscape & irrigation works | 10d | 2027-04-18 | 2027-04-29 | A56420, A56430 | 90d | 0d | ICKMO1-cost unite [22994.4 $]; labor [1200 h]; Physical Units [198129 h] | 22,994.4 | PCA | CON |
|  | 1 | **Factories Area** |  | 2027-02-24 | 2027-08-30 |  |  |  |  |  |  |  |
|  | LR 02 | **Storm Network** |  | 2027-02-24 | 2027-08-30 |  |  |  |  |  |  |  |
|  | MH-32-01 /MH-32A | **LINE 01** |  | 2027-02-24 | 2027-04-29 |  |  |  |  |  |  |  |
| A93580 |  | Excavation | 8d | 2027-02-24 | 2027-03-06 | A1920, A56320 | 0d |  | ICKMO1-cost unite [18357.6 $]; Excavator [200 h]; Physical Units [158177 h] | 18,357.64 |  |  |
| A93590 |  | Pipe Laying | 14d | 2027-03-06 | 2027-03-22 | A93580 SS+8d | 0d |  | ICKMO1-cost unite [12238.4 $]; boom truck [200 h]; labor [1200 h]; Storm Network Circular pipes (GRP) [80.79]; Physical Units [105451 h] | 12,238.4 |  |  |
| A93600 |  | Install Manholes | 14d | 2027-03-06 | 2027-03-22 | A93580 SS+8d | 18d |  | ICKMO1-cost unite [55072.9 $]; boom truck [200 h]; labor [1200 h]; Physical Units [474531 h] | 55,072.91 |  |  |
| A93610 |  | Testing & Inspection | 6d | 2027-03-29 | 2027-04-05 | A93590 FS+6d | 0d |  | ICKMO1-cost unite [12238.4 $]; labor [1200 h]; Physical Units [105451 h] | 12,238.4 |  |  |
| A93620 |  | Backfilling & Compaction | 12d | 2027-03-29 | 2027-04-12 | A93610 SS, A93600 SS, A93610 FF, A93600 FF | 0d |  | ICKMO1-cost unite [24476.8 $]; Roller compactor [200 h]; Physical Units [210903 h] | 24,476.84 |  |  |
| A93630 |  | Catch Basin installation and backfilling | 21d | 2027-04-05 | 2027-04-29 | A93620 SS+6d, A93620 FF+6d | 0d |  | Physical Units |  |  |  |

| ID | WBS | Activity | Duration | Start | Finish | Predecessors | Total float | Free float | Resources | Cost |
| --- | --- | --- | --- | --- | --- | --- | --- | --- | --- | --- |
|  | MH-32-A-04 /MH-32A-03 | **LINE 06** |  | 2027-04-17 | 2027-07-12 |  |  |  |  |  |
| A93400 |  | Excavation | 18d | 2027-04-17 | 2027-05-08 | A93460 | 12d | 0d | ICKMO1-cost unite [18357.6 $]; Excavator [200 h]; Physical Units [158177 h] | 18,357.64 |
| A93410 |  | Pipe Laying | 21d | 2027-04-26 | 2027-05-20 | A93400 SS+8d | 12d | 0d | ICKMO1-cost unite [12238.4 $]; boom truck [200 h]; labor [1200 h]; Storm Network Circular pipes (GRP) [80.79]; Physical Units [105451 h] | 12,238.4 |
| A93420 |  | Install Manholes | 21d | 2027-04-26 | 2027-05-20 | A93400 SS+8d | 18d | 6d | ICKMO1-cost unite [55072.9 $]; boom truck [200 h]; labor [1200 h]; Physical Units [474531 h] | 55,072.91 |
| A93430 |  | Testing & Inspection | 6d | 2027-05-27 | 2027-06-03 | A93410 FS+6d, A93420 | 12d | 0d | ICKMO1-cost unite [12238.4 $]; labor [1200 h]; Physical Units [105451 h] | 12,238.4 |
| A93440 |  | Backfilling & Compaction | 12d | 2027-05-27 | 2027-06-10 | A93430 SS, A93420 SS, A93430 FF | 12d |  | ICKMO1-cost unite [24476.8 $]; Roller compactor [200 h]; Physical Units [210903 h] | 24,476.84 |
| A93450 |  | Catch Basin installation and backfilling | 21d | 2027-06-17 | 2027-07-12 | A93440 SS+6d, A93510, A93440 FF+6d | 0d |  | Physical Units |  |
|  | MH-32-A-05 /MH-32A-04 | **LINE 07** |  | 2027-05-08 | 2027-08-05 |  |  |  |  |  |
| A93280 |  | Excavation | 18d | 2027-05-08 | 2027-05-29 | A93400 | 15d | 0d | ICKMO1-cost unite [18357.6 $]; Excavator [200 h]; Physical Units [158177 h] | 18,357.64 |
| A93290 |  | Pipe Laying | 21d | 2027-05-17 | 2027-06-10 | A93280 SS+8d | 15d | 0d | ICKMO1-cost unite [12238.4 $]; boom truck [200 h]; labor [1200 h]; Storm Network Circular pipes (GRP) [80.79]; Physical Units [105451 h] | 12,238.4 |
| A93300 |  | Install Manholes | 21d | 2027-05-17 | 2027-06-10 | A93280 SS+8d | 21d | 6d | ICKMO1-cost unite [55072.9 $]; boom truck [200 h]; labor [1200 h]; Physical Units [474531 h] | 55,072.91 |
| A93310 |  | Testing & Inspection | 6d | 2027-06-17 | 2027-06-24 | A93290 FS+6d, A93300 | 15d | 0d | ICKMO1-cost unite [12238.4 $]; labor [1200 h]; Physical Units [105451 h] | 12,238.4 |
| A93320 |  | Backfilling & Compaction | 12d | 2027-06-17 | 2027-07-01 | A93310 SS, A93300 SS, A93310 FF | 15d |  | ICKMO1-cost unite [24476.8 $]; Roller compactor [200 h]; Physical Units [210903 h] | 24,476.84 |
| A93330 |  | Catch Basin installation and backfilling | 21d | 2027-07-12 | 2027-08-05 | A93320 SS+6d, A93450, A93320 FF+6d | 0d |  | Physical Units |  |
|  | MH-32-A-06 /MH-32A-05 | **LINE 08** |  | 2027-05-29 | 2027-08-30 |  |  |  |  |  |
| A93340 |  | Excavation | 18d | 2027-05-29 | 2027-06-19 | A93280 | 18d | 0d | ICKMO1-cost unite [18357.6 $]; Excavator [200 h]; Physical Units [158177 h] | 18,357.64 |
| A93350 |  | Pipe Laying | 21d | 2027-06-07 | 2027-07-01 | A93340 SS+8d, A93340 FF+8d | 18d | 0d | ICKMO1-cost unite [12238.4 $]; boom truck [200 h]; labor [1200 h]; Storm Network Circular pipes (GRP) [80.79]; Physical Units [105451 h] | 12,238.4 |
| A93360 |  | Install Manholes | 18d | 2027-06-07 | 2027-06-28 | A93340 SS+8d, A93340 FF+8d | 27d | 9d | ICKMO1-cost unite [55072.9 $]; boom truck [200 h]; labor [1200 h]; Physical Units [474531 h] | 55,072.91 |
| A93370 |  | Testing & Inspection | 6d | 2027-07-08 | 2027-07-15 | A93350 FS+6d, A93360 | 18d | 0d | ICKMO1-cost unite [12238.4 $]; labor [1200 h]; Physical Units [105451 h] | 12,238.4 |
| A93380 |  | Backfilling & Compaction | 12d | 2027-07-08 | 2027-07-22 | A93370 SS, A93360 SS, A93370 FF | 18d |  | ICKMO1-cost unite [24476.8 $]; Roller compactor [200 h]; Physical Units [210903 h] | 24,476.84 |
| A93390 |  | Catch Basin installation and backfilling | 21d | 2027-08-05 | 2027-08-30 | A93380 SS+6d, A93330, A93380 FF+6d | 0d |  | Physical Units |  |
|  | MH-32A-02 /MH-32A-01 | **LINE 02** |  | 2027-03-06 | 2027-05-24 |  |  |  |  |  |
| A93520 |  | Excavation | 18d | 2027-03-06 | 2027-03-27 | A93580 | 6d | 0d | ICKMO1-cost unite [18357.6 $]; Excavator [200 h]; Physical Units [158177 h] | 18,357.64 |
| A93530 |  | Pipe Laying | 21d | 2027-03-15 | 2027-04-08 | A93520 SS+8d | 6d | 0d | ICKMO1-cost unite [12238.4 $]; boom truck [200 h]; labor [1200 h]; Storm Network Circular pipes (GRP) [80.79]; Physical Units [105451 h] | 12,238.4 |
| A93540 |  | Install Manholes | 21d | 2027-03-15 | 2027-04-08 | A93520 SS+8d | 24d | 18d | ICKMO1-cost unite [55072.9 $]; boom truck [200 h]; labor [1200 h]; Physical Units [474531 h] | 55,072.91 |
| A93550 |  | Testing & Inspection | 6d | 2027-04-15 | 2027-04-22 | A93530 FS+6d | 6d | 0d | ICKMO1-cost unite [12238.4 $]; labor [1200 h]; Physical Units [105451 h] | 12,238.4 |
| A93560 |  | Backfilling & Compaction | 12d | 2027-04-15 | 2027-04-29 | A93550 SS, A93540 SS, A93550 FF, A93540 FF | 6d |  | ICKMO1-cost unite [24476.8 $]; Roller compactor [200 h]; Physical Units [210903 h] | 24,476.84 |
| A93570 |  | Catch Basin installation and backfilling | 21d | 2027-04-29 | 2027-05-24 | A93560 SS+6d, A93630, A93560 FF+6d | 0d |  | Physical Units |  |

| ID | WBS | Activity | Duration | Start | Finish | Predecessors | Total float | Free float | Resources | Cost | ALKHARJ INDUSTERIAL AREA - PROJECT ZONES | ALKHARJ INDUSTERIAL AREA - DECEPLINS |
| --- | --- | --- | --- | --- | --- | --- | --- | --- | --- | --- | --- | --- |
|  | MH-32A-03 /MH-32A-02 | **LINE 03** |  | 2027-03-27 | 2027-06-17 |  |  |  |  |  |  |  |
| A93460 |  | Excavation | 18d | 2027-03-27 | 2027-04-17 | A93520 | 9d | 0d | ICKMO1-cost unite [18357.6 $]; Excavator [200 h]; Physical Units [158177 h] | 18,357.64 |  |  |
| A93470 |  | Pipe Laying | 21d | 2027-04-05 | 2027-04-29 | A93460 SS+8d | 9d | 0d | ICKMO1-cost unite [12238.4 $]; boom truck [200 h]; labor [1200 h]; Storm Network Circular pipes (GRP) [80.79]; Physical Units [105451 h] | 12,238.4 |  |  |
| A93480 |  | Install Manholes | 21d | 2027-04-05 | 2027-04-29 | A93460 SS+8d | 27d | 18d | ICKMO1-cost unite [55072.9 $]; boom truck [200 h]; labor [1200 h]; Physical Units [474531 h] | 55,072.91 |  |  |
| A93490 |  | Testing & Inspection | 6d | 2027-05-06 | 2027-05-13 | A93470 FS+6d | 9d | 0d | ICKMO1-cost unite [12238.4 $]; labor [1200 h]; Physical Units [105451 h] | 12,238.4 |  |  |
| A93500 |  | Backfilling & Compaction | 12d | 2027-05-06 | 2027-05-20 | A93490 SS, A93480 SS, A93490 FF, A93480 FF | 9d |  | ICKMO1-cost unite [24476.8 $]; Roller compactor [200 h]; Physical Units [210903 h] | 24,476.84 |  |  |
| A93510 |  | Catch Basin installation and backfilling | 21d | 2027-05-24 | 2027-06-17 | A93500 SS+6d, A93570, A93500 FF+6d | 0d |  | Physical Units |  |  |  |
|  | 2 | **Rehabilitate Road** |  | 2027-08-30 | 2027-11-17 |  |  |  |  |  |  |  |
| A93640 |  | Existing Asphalt milling / Demolishing | 14d | 2027-08-30 | 2027-09-15 | A93390 | 0d |  | ICKMO1-cost unite [5870 $]; Physical Units [50578.3 h] | 5,870 |  |  |
| A93650 |  | Removal & disposal of damaged asphalt | 14d | 2027-09-01 | 2027-09-18 | A93640 SS+2d, A93640 FF+2d | 0d |  | ICKMO1-cost unite [5870 $]; Physical Units [50578.3 h] | 5,870 |  |  |
| A93660 |  | Aggregate base course replacement | 14d | 2027-09-13 | 2027-09-29 | A93650 SS+10d, A93650 FF+10d | 0d |  | ICKMO1-cost unite [5870 $]; Physical Units [50578.3 h] | 5,870 |  |  |
| A93670 |  | Compaction & level check | 14d | 2027-09-25 | 2027-10-11 | A93660 SS+10d, A93660 FF+10d | 0d |  | ICKMO1-cost unite [5870 $]; Physical Units [50578.3 h] | 5,870 |  |  |
| A93680 |  | Prime coat | 4d | 2027-10-11 | 2027-10-16 | A93670 | 0d |  | ICKMO1-cost unite [5870 $]; Physical Units [50578.3 h] | 5,870 |  |  |
| A93690 |  | Asphalt wearing course | 18d | 2027-10-13 | 2027-11-03 | A93680 SS+2d, A93680 FF+2d | 0d |  | ICKMO1-cost unite [5870 $]; Physical Units [50578.3 h] | 5,870 |  |  |
| A93700 |  | Asphalt compaction & finishing | 18d | 2027-10-16 | 2027-11-06 | A93690 SS+2d, A93690 FF+2d | 0d |  | ICKMO1-cost unite [5870 $]; Physical Units [50578.3 h] | 5,870 |  |  |
| A93710 |  | Hardscape, Road markings & signage reinstatement | 10d | 2027-11-06 | 2027-11-17 | A93700 | 0d |  | ICKMO1-cost unite [5870 $]; Physical Units [50578.3 h] | 5,870 |  |  |
|  | 3 | **Project Saving Quantities** |  | 2027-10-26 | 2027-11-11 |  |  |  |  |  |  |  |
| A93720 |  | Project Saving Quantities | 14d | 2027-10-26 | 2027-11-11 | A92670 | 5d |  | ICKMO1-cost unite [59547339 $]; Physical Units | 59,547,338.97 |  |  |
|  | T&C | **Testing & Commissionin** |  | 2026-12-30 | 2027-05-20 |  |  |  |  |  |  |  |
|  | 1 | **Storm Network Testing & Commissioning Zone A** |  | 2027-02-17 | 2027-02-23 |  |  |  |  |  |  |  |
| A93230 |  | Testing & Commissioning of Storm Network for Zone A | 5d | 2027-02-17 | 2027-02-23 | A68220, A68620, A69070, A69220, A69420, A69570, A69720, A69870, A69970, A70170, A70520, A70920, A71220, A71470, A71820, A74170 | -16.72d | 57.48d | Physical Units [33466448 h] |  | ZNA | CLS |
|  | 2 | **Sewage Network Testing & Commissioning Zone A** |  | 2027-02-21 | 2027-02-27 |  |  |  |  |  |  |  |
| A93240 |  | Testing & Commissioning of Sewage Network for Zone A | 5d | 2027-02-21 | 2027-02-27 | A39740, A41340, A48890, A49340, A49690, A49890 | -20.96d | 0d | Physical Units [33466448 h] |  | ZNA | CLS |
|  | 3 | **Potable Water Network Testing & Commissioning Zone A** |  | 2027-05-15 | 2027-05-20 |  |  |  |  |  |  |  |
| A93180 |  | Testing & Commissioning of potable Network for Zone A | 5d | 2027-05-15 | 2027-05-20 | A86660, A86740, A86810, A86880, A86950, A87020, A87090, A87160, A87230, A87300, A87370, A87440, A87510, A87580, A87650, A87720, A87790, A87280, A87350, A87560, A87420, A87630, A87210, A87490, A87700, A87770, A86630, A86860, A86930, A87000, A87070, A87140, A86720, A86790 | -90.1d | 0d | Physical Units [33466448 h] |  | ZNA | CLS |

| ID | WBS | Activity | Duration | Start | Finish | Predecessors | Total float | Free float | Resources | ALKHARJ INDUSTERIAL AREA - PROJECT ZONES | ALKHARJ INDUSTERIAL AREA - DECEPLINS |
| --- | --- | --- | --- | --- | --- | --- | --- | --- | --- | --- | --- |
|  | 4 | **MV Network Testing & Commissioning Zone A** |  | 2027-04-08 | 2027-04-14 |  |  |  |  |  |  |
| A93210 |  | Testing & Commissioning of MV Network for Zone B | 5d | 2027-04-08 | 2027-04-14 | A84200, A84130, A84060 | -166.81d | 0d | Physical Units [33466448 h] | ZNA | CLS |
|  | 5 | **Storm Network Testing & Commissioning Zone B** |  | 2027-04-26 | 2027-05-02 |  |  |  |  |  |  |
| A93250 |  | Testing & Commissioning of Storm Network for Zone B | 5d | 2027-04-26 | 2027-05-02 | A67370, A67620, A75420, A78720, A79670, A80020, A81620, A92810, A92870, A92930, A92990, A93050, A93110, A93170 | -74.2d | 0d | Physical Units [33466448 h] | ZNB | CLS |
|  | 6 | **Sewage Network Testing & Commissioning Zone B** |  | 2026-12-30 | 2027-01-04 |  |  |  |  |  |  |
| A93220 |  | Testing & Commissioning of Sewage Network for Zone B | 5d | 2026-12-30 | 2027-01-04 | A50990, A51040, A51190, A51090, A51240, A51340, A51140, A51290, A51390, A51540, A51440, A51590, A51740, A51490, A51640, A51790, A52040, A51690, A51840, A52090, A52340, A51890, A52140, A52390, A52740, A51940, A52190, A52440, A52790, A53090, A55190, A51990, A52240, A52490, A52840, A53140, A55240, A52290, A52540, A52890, A53190, A55290, A52590, A52940, A53240, A55340, A52640, A52990, A53290, A55390, A52690, A53040, A53340, A55440, A53390, A55490, A53440, A55540, A53490, A55590, A53540, A55640, A53590, A49940, A55690, A53640, A49990, A55740, A53690, A50040, A55790, A53740, A50090, A50140, A53790, A50190, A50290, A53840, A50240, A50590, A53890, A50340, A50640, A53940, A50390, A50690, A53990, A50440, A50740, A54040, A50490, A54090, A50540, A54140, A50790, A54190, A50840, A54240, A50890, A50940, A54290, A54340, A54390, A54440, A54490, A54540, A54590, A54640, A54690, A54740, A54790, A54840, A54890, A54940, A54990, A55040, A55090, A55140 | 25d | 45.96d | Physical Units [33466448 h] | ZNB | CLS |
|  | 7 | **Potable water Network Testing & Commissioning Zone B** |  | 2027-02-22 | 2027-02-28 |  |  |  |  |  |  |
| A93190 |  | Testing & Commissioning of potable Network for Zone A | 5d | 2027-02-22 | 2027-02-28 | A87860, A87930, A88000, A88070, A88140, A88630, A88290, A88350, A88280, A88210, A88420, A88490, A88560 | -20.92d | 0d | Physical Units [33466448 h] | ZNB | CLS |
|  | 8 | **MV Network Testing & Commissioning Zone B** |  | 2026-12-30 | 2027-01-06 |  |  |  |  |  |  |
| A93200 |  | Testing & Commissioning of MV Network for Zone B | 6d | 2026-12-30 | 2027-01-06 | A86390, A86320, A86250, A86180 | -82.75d | 84.06d | Physical Units [33466448 h] | ZNB | CLS |
|  | 2 | **Close-out and Handover** |  | 2027-08-29 | 2027-11-13 |  |  |  |  |  |  |
|  | 3 | **Documentation & As-Built** |  | 2027-08-29 | 2027-09-14 |  |  |  |  |  |  |
| A92740 |  | Complete As Built Drawings submission | 14d | 2027-08-29 | 2027-09-14 | A56460, A56310, A6790, A84360, A86450, A86500, A86550, A86600, A84260, A84310 | 4d | 0d |  |  | CLS |
| A92750 |  | Complete Commissioning Reports | 14d | 2027-08-29 | 2027-09-14 | A92740 SS | 4d | 0d |  |  | CLS |
|  | 4 | **Handover & TOC** |  | 2027-09-14 | 2027-10-09 |  |  |  |  |  |  |
| A92720 |  | Snag List Clearance | 21d | 2027-09-14 | 2027-10-09 | A92740, A92750 | 4d | 0d |  |  | CLS |
| A92730 |  | Final Site Walkdown | 21d | 2027-09-14 | 2027-10-09 | A92740, A92750 | 4d | 0d |  |  | CLS |
|  | 5 | **Demobilization** |  | 2027-10-09 | 2027-11-13 |  |  |  |  |  |  |
| A92670 |  | Removal of temporary site facilities | 15d | 2027-10-09 | 2027-10-26 | A92720, A92730 | 4d | 0d |  |  | CLS |
| A92680 |  | Removal of temporary utilities, fencing & access gates | 15d | 2027-10-09 | 2027-10-26 | A92720, A92730 | 4d | 0d |  |  | CLS |
| A92690 |  | Demobilization of construction equipment & machinery | 15d | 2027-10-09 | 2027-10-26 | A92720, A92730 | 4d | 0d |  |  | CLS |
| A92700 |  | Final site cleaning & housekeeping | 15d | 2027-10-26 | 2027-11-13 | A92670, A92680, A92690 | 4d | 0d |  |  | CLS |
| A92710 |  | Final site inspection & clearance | 15d | 2027-10-26 | 2027-11-13 | A92700 SS | 4d |  |  |  | CLS |

## Activity codes

| Code | Value | Meaning |
| --- | --- | --- |
| ALKHARJ INDUSTERIAL AREA - ASPHALT WORKS | ABC | Aggregate base course |
| ALKHARJ INDUSTERIAL AREA - ASPHALT WORKS | BBC | Bituminous base course / Wearing Course |
| ALKHARJ INDUSTERIAL AREA - DECEPLINS | CLS | CLOSING |
| ALKHARJ INDUSTERIAL AREA - DECEPLINS | CON | CONSTRUCTION |
| ALKHARJ INDUSTERIAL AREA - DECEPLINS | ENG | ENGINEERING |
| ALKHARJ INDUSTERIAL AREA - DECEPLINS | GEN | MILESTONES |
| ALKHARJ INDUSTERIAL AREA - DECEPLINS | PRE | PREMOBILIZATION |
| ALKHARJ INDUSTERIAL AREA - DECEPLINS | PRO | PROCUREMENT |
| ALKHARJ INDUSTERIAL AREA - PROJECT ZONES | CMP | LABOR CAMP |
| ALKHARJ INDUSTERIAL AREA - PROJECT ZONES | MSJ | MASJID |
| ALKHARJ INDUSTERIAL AREA - PROJECT ZONES | PCA | PORTABLE CAPIN |
| ALKHARJ INDUSTERIAL AREA - PROJECT ZONES | ZNA | ZONE A |
| ALKHARJ INDUSTERIAL AREA - PROJECT ZONES | ZNB | ZONE B |
| ALKHARJ INDUSTERIAL AREA - Wet networks | LAY | Pipe Laying |
| ALKHARJ INDUSTERIAL AREA - Wet networks | MH | Manhole Installation |
