# Infrastructure Works of Area J -3rd Industrial City-Dammam-Phase 2 - Update 24-11-2026

Schedule from Primavera P6, 2025-01-12 to 2027-10-02, data date 2026-11-24, costs in USD, A marks actual dates.
Must finish by 2027-01-12

## Calendars

- MODON - ACTIVITY: Mon-Thu 08:00-12:00, 13:00-17:00; Fri off; Sat-Sun 08:00-12:00, 13:00-17:00. Exceptions (off unless hours are given): 2025-02-22, 2025-02-23 08:00-12:00, 13:00-17:00, 2025-03-01 to 2025-03-06 08:00-12:00, 13:00-17:00, 2025-03-08 to 2025-03-13 08:00-12:00, 13:00-17:00, 2025-03-15 to 2025-03-20 08:00-12:00, 13:00-17:00, 2025-03-22 to 2025-03-27 08:00-12:00, 13:00-17:00, 2025-03-29 08:00-12:00, 13:00-17:00, 2025-03-30 to 2025-04-02, 2025-06-05, 2025-06-07 to 2025-06-09, 2025-06-15 to 2025-06-19 08:00-12:00, 13:00-17:00, 2025-06-21 to 2025-06-26 08:00-12:00, 13:00-17:00, 2025-06-28 to 2025-07-03 08:00-12:00, 13:00-17:00, 2025-07-05 to 2025-07-10 08:00-12:00, 13:00-17:00, 2025-07-12 to 2025-07-17 08:00-12:00, 13:00-17:00, 2025-07-19 to 2025-07-24 08:00-12:00, 13:00-17:00, 2025-07-26 to 2025-07-31 08:00-12:00, 13:00-17:00, 2025-08-02 to 2025-08-07 08:00-12:00, 13:00-17:00, 2025-08-09 to 2025-08-14 08:00-12:00, 13:00-17:00, 2025-08-16 to 2025-08-21 08:00-12:00, 13:00-17:00, 2025-08-23 to 2025-08-28 08:00-12:00, 13:00-17:00, 2025-08-30 to 2025-09-04 08:00-12:00, 13:00-17:00, 2025-09-06 to 2025-09-11 08:00-12:00, 13:00-17:00, 2025-09-13 to 2025-09-15 08:00-12:00, 13:00-17:00, 2025-09-23, 2026-02-18 to 2026-02-19 08:00-12:00, 13:00-17:00, 2026-02-21 to 2026-02-26 08:00-12:00, 13:00-17:00, 2026-02-28 to 2026-03-05 08:00-12:00, 13:00-17:00, 2026-03-07 to 2026-03-12 08:00-12:00, 13:00-17:00, 2026-03-14 to 2026-03-19 08:00-12:00, 13:00-17:00, 2026-03-21 to 2026-03-23, 2026-05-26 to 2026-05-28, 2026-05-30, 2026-06-15 to 2026-06-18 08:00-12:00, 13:00-17:00, 2026-06-20 to 2026-06-25 08:00-12:00, 13:00-17:00, 2026-06-27 to 2026-07-02 08:00-12:00, 13:00-17:00, 2026-07-04 to 2026-07-09 08:00-12:00, 13:00-17:00, 2026-07-11 to 2026-07-16 08:00-12:00, 13:00-17:00, 2026-07-18 to 2026-07-23 08:00-12:00, 13:00-17:00, 2026-07-25 to 2026-07-30 08:00-12:00, 13:00-17:00, 2026-08-01 to 2026-08-06 08:00-12:00, 13:00-17:00, 2026-08-08 to 2026-08-13 08:00-12:00, 13:00-17:00, 2026-08-15 to 2026-08-20 08:00-12:00, 13:00-17:00, 2026-08-22 to 2026-08-27 08:00-12:00, 13:00-17:00, 2026-08-29 to 2026-09-03 08:00-12:00, 13:00-17:00, 2026-09-05 to 2026-09-10 08:00-12:00, 13:00-17:00, 2026-09-12 to 2026-09-15 08:00-12:00, 13:00-17:00, 2026-09-23, 2027-02-08 to 2027-02-11 08:00-12:00, 13:00-17:00, 2027-02-13 to 2027-02-18 08:00-12:00, 13:00-17:00, 2027-02-20 to 2027-02-21 08:00-12:00, 13:00-17:00, 2027-02-22, 2027-02-23 to 2027-02-25 08:00-12:00, 13:00-17:00, 2027-02-27 to 2027-03-04 08:00-12:00, 13:00-17:00, 2027-03-06 to 2027-03-08 08:00-12:00, 13:00-17:00, 2027-03-09 to 2027-03-11, 2027-05-15 to 2027-05-19, 2027-06-15 to 2027-06-17 08:00-12:00, 13:00-17:00, 2027-06-19 to 2027-06-24 08:00-12:00, 13:00-17:00, 2027-06-26 to 2027-07-01 08:00-12:00, 13:00-17:00, 2027-07-03 to 2027-07-08 08:00-12:00, 13:00-17:00, 2027-07-10 to 2027-07-15 08:00-12:00, 13:00-17:00, 2027-07-17 to 2027-07-22 08:00-12:00, 13:00-17:00, 2027-07-24 to 2027-07-29 08:00-12:00, 13:00-17:00, 2027-07-31 to 2027-08-05 08:00-12:00, 13:00-17:00, 2027-08-07 to 2027-08-12 08:00-12:00, 13:00-17:00, 2027-08-14 to 2027-08-19 08:00-12:00, 13:00-17:00, 2027-08-21 to 2027-08-26 08:00-12:00, 13:00-17:00, 2027-08-28 to 2027-09-02 08:00-12:00, 13:00-17:00, 2027-09-04 to 2027-09-09 08:00-12:00, 13:00-17:00, 2027-09-11 to 2027-09-15 08:00-12:00, 13:00-17:00, 2027-09-23.

## Resources

| Resource | Group | Rate |
| --- | --- | --- |
| Engineering | labor |  |
| MH ; depth: 0.0m - 1.5m | material | 291.48 |
| MH ; depth: 1.51m - 2.5m | material | 315.51 |
| MH ; depth: 2.51 - 3.5m | material | 415.92 |
| MH ; depth: 0.0m - 1.5m | material | 395.61 |
| MH ; depth: 1.51m - 2.5m | material | 426.06 |
| MH ; depth: 1.51m - 2.5m with back drop less than 1.0 m | material | 754.86 |
| MH ; depth: 2.51 - 3.5m | material | 571.2 |
| MH ; depth: 2.51 - 3.5m with back drop less than 1.0 m | material | 974.46 |
| MH ; depth: 0.0m - 1.5m | material | 722.55 |
| MH ; depth: 1.51m - 2.5m | material | 764.7 |
| MH ; depth: 2.51 - 3.5m | material | 920.97 |
| MH ; depth: 2.51 - 3.5m | material | 1785 |
| MH ; depth: 3.51 - 4.5m | material | 1963.5 |
| Pipe with diameter 400mm ; depth: 0.0m - 1.5m | material | 11.76 |
| Pipe with diameter 400mm ; depth: 1.51m - 2.5m | material | 12.33 |
| Pipe with diameter 400mm ; depth: 2.51m - 3.5m | material | 16.08 |
| Pipe with diameter 500mm ; depth: 0.0m - 1.5m | material | 14.19 |
| Pipe with diameter 500mm ; depth: 1.51m - 2.5m | material | 14.91 |
| Pipe with diameter 600mm ; depth: 0.0m - 1.5m | material | 17.4 |
| Pipe with diameter 600mm ; depth: 1.51m - 2.5m | material | 18.21 |
| Pipe with diameter 600mm ; depth: 2.51m - 3.5m | material | 22.32 |
| Pipe with diameter 700mm ; depth: 0.0m - 1.5m | material | 20.58 |
| Pipe with diameter 700mm ; depth: 1.51m - 2.5m | material | 21.51 |
| Pipe with diameter 700mm ; depth: 2.51m - 3.5m | material | 25.65 |
| Pipe with diameter 800mm ; depth: 0.0m - 1.5m | material | 23.73 |
| Pipe with diameter 800mm ; depth: 1.51m - 2.5m | material | 24.72 |
| Pipe with diameter 800mm ; depth: 2.51m - 3.5m | material | 28.92 |
| Pipe with diameter 900mm ; depth: 0.0m - 1.5m | material | 26.85 |
| Pipe with diameter 900mm ; depth: 1.51m - 2.5m | material | 27.84 |
| Pipe with diameter 900mm ; depth: 2.51 - 3.5m | material | 32.07 |
| Pipe with diameter 1000mm ; depth: 0.0m - 1.5m | material | 30.99 |
| Pipe with diameter 1000mm ; depth: 1.51m - 2.5m | material | 32.07 |
| Pipe with diameter 1000mm ; depth: 2.51 - 3.5m | material | 36.42 |
| Pipe with diameter 1100mm ; depth: 0.0m - 1.5m | material | 35.25 |
| Pipe with diameter 1100mm ; depth: 1.51m - 2.5m | material | 36.42 |
| Pipe with diameter 1100mm ; depth: 2.51 - 3.5m | material | 40.86 |
| Pipe with diameter 1200mm ; depth: 1.51m - 2.5m | material | 40.68 |
| Pipe with diameter 1200mm ; depth: 2.51 - 3.5m | material | 45.18 |
| Access opening with dimensions 1000*1000 mm | material | 357 |
| Pipe with diameter 300mm ; depth: 0 - 1.5m | material | 10.2 |
| Pipe with diameter 400mm ; depth: 0 - 1.5m | material | 13.8 |
| Single Catch basin | material | 160.65 |
| Double Catch basin | material | 321.3 |
| Nominal bore : 160mm; Depth : 0.0m - 1.5m | material | 7.08 |
| Nominal bore : 160mm; Depth : 1.5m - 2.5m | material | 7.47 |
| Nominal bore : 200mm; Depth : 0.0m - 1.5m | material | 7.98 |
| Nominal bore : 200mm; Depth : 1.5m - 2.5m | material | 8.4 |
| Nominal bore : 200mm; Depth : 2.5m - 3.5m | material | 12.66 |
| Nominal bore : 200mm; Depth : 3.5m - 4.5m | material | 13.23 |
| Nominal bore : 200mm; Depth : 4.5m -5.5m | material | 13.83 |
| Nominal bore : 200mm; Depth : 5.5m - 6.5m | material | 27.78 |
| Nominal bore : 250mm; Depth : 4.5m -5.5m | material | 16.44 |
| Nominal bore : 250mm; Depth : 5.5m - 6.5m | material | 19.29 |
| Nominal bore : 315mm; Depth : 4.5m -5.5m | material | 24 |
| Nominal bore : 315mm; Depth : 6.5m - 7.5m | material | 36.69 |
| Depth : 1.5 - 2.5m | material | 14.91 |
| Depth : 2.5 - 3.5m | material | 19.71 |
| Depth : 3.5 - 4.5m | material | 20.55 |
| Depth : 4.5 - 5.5m | material | 21.39 |
| Depth : 5.5 - 6.5m | material | 38.04 |
| Depth : 6.5 -7.5m | material | 38.04 |
| Depth : 6.5 -7.5m | material | 46.92 |
| Depth :more than 7.5m | material | 46.92 |
| Depth : 6.5 -7.5m | material | 52.62 |
| Depth :more than 7.5m | material | 52.62 |
| HDPE force main DN 800mm diameter, in trenches depth: 0- 1.5m | material | 62.82 |
| HDPE force main DN 800mm diameter, in trenches depth: 1.51- 2.5m | material | 64.05 |
| Washout valve 200mm, on 800mm dia. pipe | material | 1160.25 |
| Air release valve 110 mm dia, on 800mm dia. pipe | material | 856.8 |
| Washout valve chamber | material | 1428 |
| Air release valve chamber | material | 364.14 |
| Depth: not exceeding 1.5m | material | 285.75 |
| Depth: 1.5 - 2.5m | material | 320.79 |
| Depth: 2.5 - 3.5m | material | 431.73 |
| Depth: 3.5 - 4.5m | material | 505.02 |
| Depth: 4.5 - 5.5m | material | 563.25 |
| Depth: 5.5 - 6.5m | material | 1185.6 |
| Depth:6.5 - 7.5m | material | 1249.05 |
| Depth: more than 7.5m | material | 1299.45 |
| Depth: 2.5 - 3.5m | material | 601.14 |
| Depth: 3.5 - 4.5m | material | 692.28 |
| Depth: 4.5 - 5.5m | material | 781.02 |
| Depth: 5.5 - 6.5m | material | 1388.97 |
| Depth:6.5 - 7.5m | material | 1469.13 |
| Pipe with diameter 160 mm; in depth 1.5m - 3.0m | material | 5.43 |
| Pipe with diameter 200mm; in depth 0.0m - 1.5m | material | 6.51 |
| Pipe with diameter 200mm; in depth 1.5m - 3.0m | material | 7.29 |
| Pipe with diameter 355mm; in depth 0.0m - 1.5m | material | 13.2 |
| Pipe with diameter 355mm; in depth 1.5m - 3.0m | material | 14.22 |
| Pipe with diameter 560mm; in depth 1.5m - 3.0m | material | 30.99 |
| Pipe with diameter 630mm; in depth 1.5m - 3.0m | material | 38.52 |
| Butterfly valves with dia (355)mm on pipes with dia (355)mm. | material | 1196.91 |
| Butterfly valves with dia (560)mm on pipes with dia (560)mm. | material | 2677.5 |
| Butterfly valves with dia (630)mm on pipes with dia (630)mm. | material | 3009.57 |
| Wash out valve with dia (100)mm on pipes with dia (200) mm | material | 254.46 |
| Wash out valve with dia (150)mm on pipes with dia (560) mm | material | 816.66 |
| Wash out valve with dia (150)mm on pipes with dia (630) mm | material | 1059.87 |
| Air valves with dia (50mm) mm on pipes with dia(200)mm. | material | 290.16 |
| Air valves with dia (65mm) mm on pipes with dia(355)mm. | material | 390.57 |
| Air valves with dia (65mm) mm on pipes with dia(560)mm. | material | 533.37 |
| Air valves with dia (65mm) mm on pipes with dia(630)mm. | material | 782.01 |
| 125 mm pipe; depth 0.0m - 1.5m | material | 3.33 |
| 280 mm pipe; depth 0.0m - 1.5m | material | 12.87 |
| 280 mm pipe; depth 1.5m - 3.0m | material | 13.71 |
| 355 mm pipe; depth 1.5m - 3.0m | material | 18.33 |
| 400 mm pipe; depth 1.5m - 3.0m | material | 17.22 |
| 500. mm pipe; depth 1.5m - 3.0m | material | 25.2 |
| Gate valves dia (90)mm on pipes with dia (125) mm. | material | 89.25 |
| Gate valves dia (200)mm on pipes with dia (280) mm. | material | 133.89 |
| Butterfly valves with dia (355)mm on pipes with dia (355)mm. | material | 1196.91 |
| Butterfly valves with dia (400)mm on pipes with dia (400)mm. | material | 1492.14 |
| Butterfly valves with dia (500)mm on pipes with dia (500)mm. | material | 2285.85 |
| Wash out valve with dia (100)mm on pipes with dia (125) mm | material | 248.52 |
| Wash out valve with dia (100)mm on pipes with dia (355) mm | material | 454.29 |
| Wash out valve with dia (150)mm on pipes with dia (400) mm | material | 586.53 |
| Wash out valve with dia (150)mm on pipes with dia (500) mm | material | 816.66 |
| Air valves with dia (50mm) mm on pipes with dia(125)mm. | material | 285.69 |
| Air valves with dia (65mm) mm on pipes with dia(280)mm. | material | 321.3 |
| Air valves with dia (65mm) mm on pipes with dia(400)mm. | material | 535.5 |
| Air valves with dia (65mm) mm on pipes with dia(500)mm. | material | 600.3 |
| Excavation for Trench size 40cm wide and 80cm deep ( Maximum 1 cable 33kv) | material | 0.79 |
| Excavation for Trench size 60cm wide and 80cm deep ( for Max two cables 33 kv) | material | 0.82 |
| Excavation for Trench size 90cm wide and 80cm deep ( Maximum 3 cable 33kv) | material | 0.89 |
| Excavation for Trench size 120cm wide and 80cm deep ( Maximum 4cable 33kv) | material | 0.93 |
| Excavation for Trench size 150cm wide and 80cm deep ( Maximum 4cable 33kv) | material | 1.03 |
| Duct bank for (2) 33 kv cables | material | 4.71 |
| Duct bank for (4) 33 kv cables | material | 9.35 |
| Duct bank for (6) 33 kv cables | material | 13.99 |
| 33kv 3Cx400 mmï¿½ Al XLPE / LLDPE /PVC Cable | material | 5.71 |
| 33kv 3Cx400 mmï¿½ Al XLPE /LLDPE/PVC | material | 80.04 |
| 33kv 3Cx400 mmï¿½ Al XLPE/LLDPE Cable Termination | material | 80.04 |
| Supply & installation of (33) kv MV Switch (RMU) for Normally-open Points (NOP) according to the Saudi Electric Company specification | material | 3593.6 |
| Supply, installation , test and operation of cables, Copper, (4Cx25mmï¿½,Cu/XLPE/SWA/PVC +1x16mmï¿½ PVC/PVC) | material | 2.1 |
| Street Lighting Feeder pillars , Includes foundation and draw pits | material | 350.37 |
| Reinforced concrete foundation, for 12m high lighting columns With Drawpits | material | 16.29 |
| Reinforced concrete base With fence for Distribution substation in accordance with SEC Specifications | material | 646.17 |
| Lighting poles with one arm, including the power distribution box, screws, cables, 12 meters in height. | material | 85.23 |
| Lighting poles complete with two arms, including the power distribution box, screws, cables, 12 meters in height. | material | 94.35 |
| Road crossing ducts, 4 way (4 x 100mm PVC) | material | 5.67 |
| Street Lighting( LED) Luminaire,(Type C) complete with control gear and lamp, ?.17000 Lumen | material | 26.82 |
| Street Lighting( LED) Luminaire,(Type B) complete with control gear and lamp, ?.40600 Lumen | material | 43.17 |
| Earthing installation, lighting plants. | material | 84.48 |
| Earthing installation, for Street lighting circuits, including earth rod in plastic chamber | material | 8.4 |
| Earthing installation Lighting Panales | material | 21.42 |
| Package Substation 33000/400V, 500kVA with RMU | material | 4826.49 |
| 6-way ducts, 50mm dia. HDPE | material | 6 |
| Road crossing ducts (6-way) | material | 7.5 |
| Manhole Type 1 (2000x1000x1000) | material | 139.53 |
| Manhole Type 2 (2000x1000x1000) | material | 140.7 |
| Manhole Type 3 (2000x1000x1000) | material | 141.87 |
| 300mm thick Subgrade, including subgrade preparation, CBR?25% | material | 1.5 |
| Aggregate base course 200mm thick after compaction in two layers(Grading 1); CBR?80%; including watering, compaction and testing | material | 3.63 |
| Bituminous base course(Grading I - Class A), 70mm thick after compaction including Prime Coat (MC1) | material | 16.35 |
| Bituminous concrete wearing course, 50 mm thick, after compaction(Grading I - Class A), including tack coat (RC) | material | 18 |
| Interlocking block pavers for sidewalk/footpath 60mm thick on and including 30mm Sand Bedding, 200mm Aggregate subbase, all in accordance with authority standards and complete as per specifications | material | 2.1 |
| Extraover for Pedestrian ramps | material | 19.65 |
| Precast Concrete Kerb, Type K1 | material | 1.8 |
| Precast Concrete Kerb, Type L1 | material | 1.8 |
| Traffic signs, ground mounted, Sheet Alumenium, (breakaway) Single post, with all accessories | material | 39.27 |
| Straight Arrow | material | 4.29 |
| Right or Left Arrow | material | 4.29 |
| Straight-Right Arrow | material | 4.29 |
| Straight-Left Arrow | material | 4.29 |
| Retroreflective Thermoplastic White, Traffic lines | material | 1.26 |
| Retroreflective Thermoplastic Yellow, Traffic lines | material | 1.26 |
| Retroreflective raised pavement markers(Type A) | material | 1.62 |
| Pro Engineer | labor |  |
| Skilled Labor/Surveyor | labor |  |
| Foreman | labor |  |
| Excavator | equipment |  |
| Pipe with diameter 400mm ; depth: 0.0m - 1.5m | material | 262.64 |
| Pipe with diameter 600mm ; depth: 0.0m - 1.5m | material | 388.6 |
| Pipe with diameter 700mm ; depth: 1.51m - 2.5m | material | 480.39 |
| Pipe with diameter 700mm ; depth: 2.51m - 3.5m | material | 572.85 |
| Pipe with diameter 800mm ; depth: 1.51m - 2.5m | material | 552.08 |
| Pipe with diameter 1100mm ; depth: 1.51m - 2.5m | material | 813.38 |
| Pipe with diameter 1100mm ; depth: 2.51 - 3.5m | material | 912.54 |
| Labor/Helper | labor |  |
| Plumber | labor |  |
| Pipe with diameter 1000mm ; depth: 2.51 - 3.5m | material | 813.38 |
| Pipe encasement dia 300 mm | material | 139.5 |
| Pipe encasement dia 400 mm | material | 165.6 |
| Pipe encasement dia 500 mm | material | 197.1 |
| Pipe encasement dia 600 mm | material | 240.3 |
| Pipe encasement dia 700 mm | material | 264.6 |
| Pipe encasement dia 800 mm | material | 301.5 |
| Pipe encasement dia 900 mm | material | 339.3 |
| Pipe encasement dia 1000 mm | material | 377.1 |
| Pipe encasement dia 1100 mm | material | 418.5 |
| Pipe encasement dia 1200 mm | material | 459 |
| Box Conduit with dimensions 1200*1200 mm ; depth: 0.0m - 1.5m | material | 3308.4 |
| Box Conduit with dimensions 1200*1200 mm ; depth: 2.51m - 3.5m | material | 3400.2 |
| Box Conduit with dimensions 1500*1200 mm ; depth: 2.51m - 3.5m | material | 3689.1 |
| Box Conduit with dimensions 1500*1500 mm ; depth: 2.51m - 3.5m | material | 4078.8 |
| Box Conduit with dimensions 2000*1200 mm ; depth: 2.51m - 3.5m | material | 4311.9 |
| Pipe with diameter 300mm ; depth: 0 - 1.5m | material | 227.8 |
| Pipe with diameter 400mm ; depth: 0 - 1.5m | material | 308.2 |
| Pipe with diameter 400mm ; depth: 1.51m - 2.5m | material | 275.37 |
| Pipe with diameter 1200mm ; depth: 1.51m - 2.5m | material | 908.52 |
| Pipe with diameter 160 mm; in depth 1.5m - 3.0m | material | 121.27 |
| Pipe with diameter 200mm; in depth 0.0m - 1.5m | material | 145.39 |
| Pipe with diameter 200mm; in depth 1.5m - 3.0m | material | 162.81 |
| 125 mm pipe; depth 0.0m - 1.5m | material | 74.37 |
| 500. mm pipe; depth 1.5m - 3.0m | material | 562.8 |
| Gate valves dia (90)mm on pipes with dia (125) mm. | material | 1993.25 |
| Wash out valve with dia (100)mm on pipes with dia (125) mm | material | 5550.28 |
| Wash out chamber; on 125 mm dia pipeline Depth 1.5 - 3m | material | 31915.8 |
| Pipe Fitter | labor |  |
| Excavation for Trench size 40cm wide and 80cm deep ( Maximum 1 cable 33kv) | material | 17.54 |
| Excavation for Trench size 60cm wide and 80cm deep ( for Max two cables 33 kv) | material | 18.34 |
| Excavation for Trench size 90cm wide and 80cm deep ( Maximum 3 cable 33kv) | material | 19.93 |
| Excavation for Trench size 120cm wide and 80cm deep ( Maximum 4cable 33kv) | material | 20.73 |
| Excavation for Trench size 150cm wide and 80cm deep ( Maximum 4cable 33kv) | material | 23.12 |
| Duct bank for (2) 33 kv cables | material | 105.24 |
| Duct bank for (4) 33 kv cables | material | 208.89 |
| Duct bank for (6) 33 kv cables | material | 312.54 |
| Electrician | labor |  |
| Low Current Technician | labor |  |
| 33kv 3Cx400 mmï¿½ Al XLPE / LLDPE /PVC Cable | material | 127.57 |
| 33kv 3Cx400 mmï¿½ Al XLPE /LLDPE/PVC | material | 1787.55 |
| Water Tank | equipment |  |
| Supply, installation , test and operation of cables, Copper, (4Cx25mmï¿½,Cu/XLPE/SWA/PVC +1x16mmï¿½ PVC/PVC) | material | 46.9 |
| Lighting poles with one arm, including the power distribution box, screws, cables, 12 meters in height. | material | 1903.47 |
| Eq. Operator | labor |  |
| Loader | equipment |  |
| Reinforced concrete foundation, for 12m high lighting columns With Drawpits | material | 363.81 |
| Earthing installation, for Street lighting circuits, including earth rod in plastic chamber | material | 187.6 |
| Earthing installation Lighting Panales | material | 478.38 |
| Manlift | equipment |  |
| Street Lighting( LED) Luminaire,(Type C) complete with control gear and lamp, ?.17000 Lumen | material | 598.98 |
| Earthing installation, lighting plants. | material | 1886.72 |
| Package Substation 33000/400V, 500kVA with RMU | material | 107792 |
| 6-way ducts, 50mm dia. HDPE | material | 134 |
| Road crossing ducts (6-way) | material | 167.5 |
| JCB | equipment |  |
| Truck | equipment |  |
| Manhole Type 1 (2000x1000x1000) | material | 3116.17 |
| Manhole Type 2 (2000x1000x1000) | material | 3142.3 |
| Block Mason | labor |  |
| Precast Concrete Kerb, Type K1 | material | 40.2 |
| Precast Concrete Kerb, Type L1 | material | 40.2 |
| Interlocking block pavers for sidewalk/footpath 60mm thick on and including 30mm Sand Bedding, 200mm Aggregate subbase, all in accordance with authority standards and complete as per specifications | material | 46.9 |
| Extraover for Pedestrian ramps | material | 438.85 |
| Painter | labor |  |
| Retroreflective Thermoplastic White, Traffic lines | material | 28.14 |
| Retroreflective Thermoplastic Yellow, Traffic lines | material | 28.14 |
| Retroreflective raised pavement markers(Type A) | material | 36.18 |
| Traffic signs, ground mounted, Sheet Alumenium, (breakaway) Single post, with all accessories | material | 877.03 |
| Straight Arrow | material | 95.81 |
| Right or Left Arrow | material | 95.81 |
| Straight-Left Arrow | material | 95.81 |
| Grader | equipment |  |
| Road Roller | equipment |  |
| 300mm capping layer underneath subgrade , CBR?15% | material | 44.1 |
| 300mm thick Subgrade, including subgrade preparation, CBR?25% | material | 33.5 |
| Aggregate base course 200mm thick after compaction in two layers(Grading 1); CBR?80%; including watering, compaction and testing | material | 81.07 |
| Insulation Worker | labor |  |
| Bituminous base course(Grading I - Class A), 70mm thick after compaction including Prime Coat (MC1) | material | 365.15 |
| Asphalt Cutter | equipment |  |
| Asphalt Paver | equipment |  |
| Bituminous concrete wearing course, 50 mm thick, after compaction(Grading I - Class A), including tack coat (RC) | material | 402 |
| Nominal bore : 160mm; Depth : 1.5m - 2.5m | material | 166.83 |
| Nominal bore : 200mm; Depth : 0.0m - 1.5m | material | 178.22 |
| Nominal bore : 200mm; Depth : 1.5m - 2.5m | material | 187.6 |
| Nominal bore : 200mm; Depth : 2.5m - 3.5m | material | 282.74 |
| Nominal bore : 200mm; Depth : 3.5m - 4.5m | material | 295.47 |
| Nominal bore : 200mm; Depth : 4.5m -5.5m | material | 308.87 |
| Nominal bore : 200mm; Depth : 5.5m - 6.5m | material | 620.42 |
| Nominal bore : 250mm; Depth : 4.5m -5.5m | material | 367.16 |
| Nominal bore : 250mm; Depth : 5.5m - 6.5m | material | 430.81 |
| Nominal bore : 315mm; Depth : 4.5m -5.5m | material | 536 |
| Nominal bore : 315mm; Depth : 6.5m - 7.5m | material | 819.41 |
| Depth : 6.5 -7.5m | material | 1175.18 |
| Depth :more than 7.5m | material | 1175.18 |
| Nominal bore : 160mm; Depth : 0.0m - 1.5m | material | 158.12 |
| Depth: 1.5 - 2.5m | material | 7164.31 |
| Depth: 3.5 - 4.5m | material | 11278.8 |
| Depth: 4.5 - 5.5m | material | 12579.2 |
| Depth:6.5 - 7.5m | material | 27895.5 |
| Depth: more than 7.5m | material | 29021 |
| Depth: 2.5 - 3.5m | material | 13425.5 |
| Depth: 3.5 - 4.5m | material | 15460.9 |
| Depth: 4.5 - 5.5m | material | 17442.8 |
| Depth: 5.5 - 6.5m | material | 31020.3 |
| Depth:6.5 - 7.5m | material | 32810.6 |
| 3-outlet fire hydrant (2 x 2.5 inch and 1 x 4 inch) in the form of a separate dry vacuum cylinder | material | 339.15 |
| MH ; depth: 0.0m - 1.5m | material | 1943.2 |
| MH ; depth: 1.51m - 2.5m | material | 2103.4 |
| MH ; depth: 2.51 - 3.5m | material | 2772.8 |
| MH ; depth: 0.0m - 1.5m | material | 2637.4 |
| MH ; depth: 1.51m - 2.5m | material | 2840.4 |
| MH ; depth: 2.51 - 3.5m | material | 3808 |
| MH ; depth: 0.0m - 1.5m | material | 4817 |
| MH ; depth: 1.51m - 2.5m | material | 5098 |
| MH ; depth: 2.51 - 3.5m | material | 6139.8 |
| Pipe with diameter 400mm ; depth: 0.0m - 1.5m | material | 78.4 |
| Pipe with diameter 400mm ; depth: 1.51m - 2.5m | material | 82.2 |
| Pipe with diameter 600mm ; depth: 0.0m - 1.5m | material | 116 |
| Pipe with diameter 700mm ; depth: 1.51m - 2.5m | material | 143.4 |
| Pipe with diameter 700mm ; depth: 2.51m - 3.5m | material | 171 |
| Pipe with diameter 800mm ; depth: 1.51m - 2.5m | material | 164.8 |
| Pipe with diameter 1100mm ; depth: 1.51m - 2.5m | material | 242.8 |
| Pipe with diameter 1100mm ; depth: 2.51 - 3.5m | material | 272.4 |
| Pipe with diameter 1200mm ; depth: 1.51m - 2.5m | material | 271.2 |
| Pipe with diameter 300mm ; depth: 0 - 1.5m | material | 68 |
| Pipe with diameter 400mm ; depth: 0 - 1.5m | material | 92 |
| Access opening with dimensions 1000*1000 mm | material | 2380 |
| Single Catch basin | material | 1071 |
| Double Catch basin | material | 2142 |
| Nominal bore : 160mm; Depth : 1.5m - 2.5m | material | 49.8 |
| Nominal bore : 200mm; Depth : 0.0m - 1.5m | material | 53.2 |
| Nominal bore : 200mm; Depth : 1.5m - 2.5m | material | 56 |
| Nominal bore : 200mm; Depth : 2.5m - 3.5m | material | 84.4 |
| Nominal bore : 200mm; Depth : 3.5m - 4.5m | material | 88.2 |
| Nominal bore : 200mm; Depth : 4.5m -5.5m | material | 92.2 |
| Nominal bore : 200mm; Depth : 5.5m - 6.5m | material | 185.2 |
| Nominal bore : 250mm; Depth : 4.5m -5.5m | material | 109.6 |
| Nominal bore : 250mm; Depth : 5.5m - 6.5m | material | 128.6 |
| Nominal bore : 315mm; Depth : 4.5m -5.5m | material | 160 |
| Nominal bore : 315mm; Depth : 6.5m - 7.5m | material | 244.6 |
| Depth : 6.5 -7.5m | material | 350.8 |
| Depth :more than 7.5m | material | 350.8 |
| Depth: 1.5 - 2.5m | material | 2138.6 |
| Depth: 3.5 - 4.5m | material | 3366.8 |
| Depth: 4.5 - 5.5m | material | 3755 |
| Depth:6.5 - 7.5m | material | 8327 |
| Depth: more than 7.5m | material | 8663 |
| Depth: 2.5 - 3.5m | material | 4007.6 |
| Depth: 3.5 - 4.5m | material | 4615.2 |
| Depth: 4.5 - 5.5m | material | 5206.8 |
| Depth: 5.5 - 6.5m | material | 9259.8 |
| Depth:6.5 - 7.5m | material | 9794.2 |
| Pipe with diameter 160 mm; in depth 1.5m - 3.0m | material | 36.2 |
| Pipe with diameter 200mm; in depth 0.0m - 1.5m | material | 43.4 |
| Pipe with diameter 200mm; in depth 1.5m - 3.0m | material | 48.6 |
| Gate valves dia(200)mm on pipes with dia (200) mm. | material | 790.4 |
| Wash out valve with dia (100)mm on pipes with dia (200) mm | material | 1696.4 |
| 125 mm pipe; depth 0.0m - 1.5m | material | 22.2 |
| Gate valves dia (90)mm on pipes with dia (125) mm. | material | 595 |
| Wash out valve with dia (100)mm on pipes with dia (125) mm | material | 1656.8 |
| Excavation for Trench size 40cm wide and 80cm deep ( Maximum 1 cable 33kv) | material | 5.24 |
| Excavation for Trench size 60cm wide and 80cm deep ( for Max two cables 33 kv) | material | 5.47 |
| Excavation for Trench size 90cm wide and 80cm deep ( Maximum 3 cable 33kv) | material | 5.95 |
| Excavation for Trench size 120cm wide and 80cm deep ( Maximum 4cable 33kv) | material | 6.19 |
| Excavation for Trench size 150cm wide and 80cm deep ( Maximum 4cable 33kv) | material | 6.9 |
| Duct bank for (2) 33 kv cables | material | 31.42 |
| Duct bank for (4) 33 kv cables | material | 62.36 |
| Duct bank for (6) 33 kv cables | material | 93.3 |
| 33kv 3Cx400 mmï¿½ Al XLPE / LLDPE /PVC Cable | material | 38.08 |
| 33kv 3Cx400 mmï¿½ Al XLPE /LLDPE/PVC | material | 533.6 |
| Supply, installation , test and operation of cables, Copper, (4Cx25mmï¿½,Cu/XLPE/SWA/PVC +1x16mmï¿½ PVC/PVC) | material | 14 |
| Reinforced concrete foundation, for 12m high lighting columns With Drawpits | material | 108.6 |
| Reinforced concrete base With fence for Distribution substation in accordance with SEC Specifications | material | 4307.8 |
| Lighting poles with one arm, including the power distribution box, screws, cables, 12 meters in height. | material | 568.2 |
| Road crossing ducts, 4 way (4 x 100mm PVC) | material | 37.8 |
| Drawpit with medium duty steel cover, size 600x600x1000mm, Type 18 | material | 673.8 |
| Drawpit with medium duty steel cover, size 900x900x1200mm, Type 4 | material | 754.4 |
| Street Lighting( LED) Luminaire,(Type C) complete with control gear and lamp, ?.17000 Lumen | material | 178.8 |
| Earthing installation, lighting plants. | material | 563.2 |
| Earthing installation, for Street lighting circuits, including earth rod in plastic chamber | material | 56 |
| Earthing installation Lighting Panales | material | 142.8 |
| Package Substation 33000/400V, 500kVA with RMU | material | 32176.6 |
| Street Lighting Feeder pillars , Includes foundation and draw pits | material | 2335.8 |
| 6-way ducts, 50mm dia. HDPE | material | 40 |
| Road crossing ducts (6-way) | material | 50 |
| Manhole Type 1 (2000x1000x1000) | material | 930.2 |
| Manhole Type 2 (2000x1000x1000) | material | 938 |
| Manhole Type 3 (2000x1000x1000) | material | 945.8 |
| Interlocking block pavers for sidewalk/footpath 60mm thick on and including 30mm Sand Bedding, 200mm Aggregate subbase, all in accordance with authority standards and complete as per specifications | material | 14 |
| Extraover for Pedestrian ramps | material | 131 |
| Precast Concrete Kerb, Type K1 | material | 12 |
| Precast Concrete Kerb, Type L1 | material | 12 |
| Traffic signs, ground mounted, Sheet Alumenium, (breakaway) Single post, with all accessories | material | 261.8 |
| Straight Arrow | material | 28.6 |
| Right or Left Arrow | material | 28.6 |
| Straight-Left Arrow | material | 28.6 |
| Retroreflective Thermoplastic White, Traffic lines | material | 8.4 |
| Retroreflective Thermoplastic Yellow, Traffic lines | material | 8.4 |
| Retroreflective raised pavement markers(Type A) | material | 10.8 |
| 3-outlet fire hydrant (2 x 2.5 inch and 1 x 4 inch) in the form of a separate dry vacuum cylinder | material | 2261 |
| 33kv 3Cx400 mmï¿½ Al XLPE/LLDPE Cable Termination | material | 533.6 |
| Dozer | equipment |  |
| Roadway Excavation for cuttings; on any type of material for all depths including trimming and Preparation of excavated surfaces and disposal. | material | 6.3 |
| Embankments to the ROW, with suitable material other than top soil or rock according to specifications | material | 8.1 |
| MH ; depth: 0.0m - 1.5m | material | 6509.72 |
| MH ; depth: 1.51m - 2.5m | material | 7046.39 |
| MH ; depth: 2.51 - 3.5m | material | 9288.88 |
| MH ; depth: 0.0m - 1.5m | material | 8835.29 |
| MH ; depth: 1.51m - 2.5m | material | 9515.34 |
| MH ; depth: 2.51 - 3.5m | material | 12756.8 |
| MH ; depth: 0.0m - 1.5m | material | 16137 |
| MH ; depth: 1.51m - 2.5m | material | 17078.3 |
| MH ; depth: 2.51 - 3.5m | material | 20568.3 |
| Access opening with dimensions 1000*1000 mm | material | 7973 |
| Single Catch basin | material | 3587.85 |
| Double Catch basin | material | 7175.7 |
| Drawpit with medium duty steel cover, size 600x600x1000mm, Type 18 | material | 101.07 |
| Drawpit with medium duty steel cover, size 900x900x1200mm, Type 4 | material | 113.16 |
| Cons. Carpenter | labor |  |
| Gate valves dia(200)mm on pipes with dia (200) mm. | material | 118.56 |
| Pipe with diameter 500mm ; depth: 1.51m - 2.5m | material | 332.99 |
| Pipe with diameter 600mm ; depth: 1.51m - 2.5m | material | 406.69 |
| Pipe with diameter 900mm ; depth: 1.51m - 2.5m | material | 621.76 |
| Pipe with diameter 900mm ; depth: 2.51 - 3.5m | material | 716.23 |
| Pipe with diameter 1000mm ; depth: 1.51m - 2.5m | material | 716.23 |
| Depth: not exceeding 1.5m | material | 6381.75 |
| Depth: 2.5 - 3.5m | material | 9641.97 |
| Depth: 5.5 - 6.5m | material | 26478.4 |
| Pipe with diameter 500mm ; depth: 0.0m - 1.5m | material | 316.91 |
| Pipe with diameter 600mm ; depth: 2.51m - 3.5m | material | 498.48 |
| Pipe with diameter 700mm ; depth: 0.0m - 1.5m | material | 459.62 |
| Pipe with diameter 1000mm ; depth: 0.0m - 1.5m | material | 692.11 |
| Pipe with diameter 1100mm ; depth: 0.0m - 1.5m | material | 787.25 |
| 3-outlet fire hydrant (2 x 2.5 inch and 1 x 4 inch) in the form of a separate dry vacuum cylinder | material | 7574.35 |
| Pipe with diameter 560mm; in depth 1.5m - 3.0m | material | 692.11 |
| Pipe with diameter 630mm; in depth 1.5m - 3.0m | material | 860.28 |
| Compactor | equipment |  |
| 355 mm pipe; depth 1.5m - 3.0m | material | 409.37 |
| 400 mm pipe; depth 1.5m - 3.0m | material | 384.58 |
| Butterfly valves with dia (355)mm on pipes with dia (355)mm. | material | 26731 |
| Butterfly valves with dia (400)mm on pipes with dia (400)mm. | material | 33324.5 |
| Butterfly valves with dia (500)mm on pipes with dia (500)mm. | material | 51050.7 |
| Wash out valve with dia (100)mm on pipes with dia (355) mm | material | 10145.8 |
| Wash out valve with dia (150)mm on pipes with dia (400) mm | material | 13099.2 |
| Wash out valve with dia (150)mm on pipes with dia (500) mm | material | 18238.7 |
| Air valves with dia (65mm) mm on pipes with dia(280)mm. | material | 7175.7 |
| Air valves with dia (65mm) mm on pipes with dia(400)mm. | material | 11959.5 |
| Air valves with dia (65mm) mm on pipes with dia(500)mm. | material | 13406.7 |
| Wash out chamber; on 355 mm dia pipeline Depth 1.5 - 3m | material | 32665.5 |
| Wash out chamber; on 400 mm dia pipeline Depth 1.5 - 3m | material | 33736.5 |
| Wash out chamber; on 500 mm dia pipeline Depth 1.5 - 3m | material | 42382.8 |
| Reinforced concrete base With fence for Distribution substation in accordance with SEC Specifications | material | 14431.1 |
| Straight-Right Arrow | material | 95.81 |
| Depth : 1.5 - 2.5m | material | 332.99 |
| Depth : 2.5 - 3.5m | material | 440.19 |
| Depth : 3.5 - 4.5m | material | 458.95 |
| Depth : 5.5 - 6.5m | material | 849.56 |
| Depth : 6.5 -7.5m | material | 849.56 |
| Depth : 6.5 -7.5m | material | 1047.88 |
| Depth :more than 7.5m | material | 1047.88 |
| MH ; depth: 1.51m - 2.5m with back drop less than 1.0 m | material | 5032.4 |
| MH ; depth: 3.51 - 4.5m | material | 13090 |
| Pipe with diameter 500mm ; depth: 0.0m - 1.5m | material | 94.6 |
| Pipe with diameter 500mm ; depth: 1.51m - 2.5m | material | 99.4 |
| Pipe with diameter 600mm ; depth: 1.51m - 2.5m | material | 121.4 |
| Pipe with diameter 600mm ; depth: 2.51m - 3.5m | material | 148.8 |
| Pipe with diameter 700mm ; depth: 0.0m - 1.5m | material | 137.2 |
| Pipe with diameter 900mm ; depth: 1.51m - 2.5m | material | 185.6 |
| Pipe with diameter 1000mm ; depth: 0.0m - 1.5m | material | 206.6 |
| Pipe with diameter 1100mm ; depth: 0.0m - 1.5m | material | 235 |
| Depth : 1.5 - 2.5m | material | 99.4 |
| Depth : 2.5 - 3.5m | material | 131.4 |
| Depth : 3.5 - 4.5m | material | 137 |
| Depth : 5.5 - 6.5m | material | 253.6 |
| Depth : 6.5 -7.5m | material | 253.6 |
| Depth : 6.5 -7.5m | material | 312.8 |
| Depth :more than 7.5m | material | 312.8 |
| Depth: 2.5 - 3.5m | material | 2878.2 |
| Depth: 5.5 - 6.5m | material | 7904 |
| Pipe with diameter 560mm; in depth 1.5m - 3.0m | material | 206.6 |
| Pipe with diameter 630mm; in depth 1.5m - 3.0m | material | 256.8 |
| Butterfly valves with dia (560)mm on pipes with dia (560)mm. | material | 17850 |
| Butterfly valves with dia (630)mm on pipes with dia (630)mm. | material | 20063.8 |
| Wash out valve with dia (150)mm on pipes with dia (560) mm | material | 5444.4 |
| Wash out valve with dia (150)mm on pipes with dia (630) mm | material | 7065.8 |
| Air valves with dia (50mm) mm on pipes with dia(200)mm. | material | 1934.4 |
| Air valves with dia (65mm) mm on pipes with dia(560)mm. | material | 3555.8 |
| Air valves with dia (65mm) mm on pipes with dia(630)mm. | material | 5213.4 |
| 400 mm pipe; depth 1.5m - 3.0m | material | 114.8 |
| 500. mm pipe; depth 1.5m - 3.0m | material | 168 |
| Butterfly valves with dia (355)mm on pipes with dia (355)mm. | material | 7979.4 |
| Butterfly valves with dia (400)mm on pipes with dia (400)mm. | material | 9947.6 |
| Butterfly valves with dia (500)mm on pipes with dia (500)mm. | material | 15239 |
| Wash out valve with dia (100)mm on pipes with dia (355) mm | material | 3028.6 |
| Wash out valve with dia (150)mm on pipes with dia (500) mm | material | 5444.4 |
| Air valves with dia (65mm) mm on pipes with dia(280)mm. | material | 2142 |
| Air valves with dia (65mm) mm on pipes with dia(400)mm. | material | 3570 |
| Air valves with dia (65mm) mm on pipes with dia(500)mm. | material | 4002 |
| Straight-Right Arrow | material | 28.6 |
| MH ; depth: 1.51m - 2.5m with back drop less than 1.0 m | material | 16858.5 |
| MH ; depth: 3.51 - 4.5m | material | 43851.5 |
| Wash out chamber; on 200 mm dia pipeline Depth 1.5 - 3m | material | 7092.4 |
| Wash out chamber; on 560 mm dia pipeline Depth 1.5 - 3m | material | 9418.4 |
| Wash out chamber; on 630 mm dia pipeline Depth 1.5 - 3m | material | 9418.4 |
| Air valve chamber; on 200 mm dia pipeline Depth 1.5 - 3 m | material | 1719.8 |
| Air valve chamber on 560 mm dia pipeline Depth 1.5 - 3 m | material | 1719.8 |
| Air valve chamber on 630 mm dia pipeline Depth 1.5 - 3 m | material | 1719.8 |
| Pipe with diameter 800mm ; depth: 0.0m - 1.5m | material | 529.97 |
| Pipe with diameter 800mm ; depth: 2.51m - 3.5m | material | 645.88 |
| Pipe with diameter 900mm ; depth: 0.0m - 1.5m | material | 599.65 |
| Air valves with dia (50mm) mm on pipes with dia(125)mm. | material | 6380.41 |
| Air valve chamber; on 125 mm dia pipeline Depth 1.5 - 3 m | material | 7818.3 |
| Supply & installation of (33) kv MV Switch (RMU) for Normally-open Points (NOP) according to the Saudi Electric Company specification | material | 80257 |
| Depth : 4.5 - 5.5m | material | 477.71 |
| Pipe with diameter 800mm ; depth: 0.0m - 1.5m | material | 158.2 |
| Pipe with diameter 800mm ; depth: 2.51m - 3.5m | material | 192.8 |
| Pipe with diameter 900mm ; depth: 0.0m - 1.5m | material | 179 |
| Pipe with diameter 1000mm ; depth: 1.51m - 2.5m | material | 213.8 |
| Pipe with diameter 1000mm ; depth: 2.51 - 3.5m | material | 242.8 |
| Depth : 4.5 - 5.5m | material | 142.6 |
| Depth: not exceeding 1.5m | material | 1905 |
| Air valves with dia (50mm) mm on pipes with dia(125)mm. | material | 1904.6 |
| MH ; depth: 2.51 - 3.5m | material | 39865 |
| Pipe with diameter 1200mm ; depth: 2.51 - 3.5m | material | 1009.02 |
| Pipe with diameter 355mm; in depth 0.0m - 1.5m | material | 294.8 |
| Pipe with diameter 355mm; in depth 1.5m - 3.0m | material | 317.58 |
| 280 mm pipe; depth 0.0m - 1.5m | material | 287.43 |
| 280 mm pipe; depth 1.5m - 3.0m | material | 306.19 |
| Gate valves dia (200)mm on pipes with dia (280) mm. | material | 2990.21 |
| Lighting poles complete with two arms, including the power distribution box, screws, cables, 12 meters in height. | material | 2107.15 |
| Street Lighting( LED) Luminaire,(Type B) complete with control gear and lamp, ?.40600 Lumen | material | 964.13 |
| MH ; depth: 2.51 - 3.5m with back drop less than 1.0 m | material | 6496.4 |
| MH ; depth: 2.51 - 3.5m | material | 11900 |
| Pipe with diameter 400mm ; depth: 2.51m - 3.5m | material | 107.2 |
| Pipe with diameter 1200mm ; depth: 2.51 - 3.5m | material | 301.2 |
| Nominal bore : 160mm; Depth : 0.0m - 1.5m | material | 47.2 |
| 280 mm pipe; depth 0.0m - 1.5m | material | 85.8 |
| 280 mm pipe; depth 1.5m - 3.0m | material | 91.4 |
| Gate valves dia (200)mm on pipes with dia (280) mm. | material | 892.6 |
| Supply & installation of (33) kv MV Switch (RMU) for Normally-open Points (NOP) according to the Saudi Electric Company specification | material | 23957.3 |
| Lighting poles complete with two arms, including the power distribution box, screws, cables, 12 meters in height. | material | 629 |
| Street Lighting( LED) Luminaire,(Type B) complete with control gear and lamp, ?.40600 Lumen | material | 287.8 |
| MH ; depth: 2.51 - 3.5m with back drop less than 1.0 m | material | 21762.9 |
| Dump Truck | equipment |  |
| 355 mm pipe; depth 1.5m - 3.0m | material | 122.2 |
| Wash out valve with dia (150)mm on pipes with dia (400) mm | material | 3910.2 |
| Wet well structure internal size (5.5*4.0m) at 11.0m depth | material | 6618.78 |
| Valve chamber | material | 4284 |
| for the pump station | material | 3034.5 |
| basket screen | material | 6872.61 |
| CMU walls with thickness 200mm | material | 3.57 |
| Waterproofing for foundation | material | 1.62 |
| Roof Insulation | material | 5.19 |
| Acrylic paint on elevations including plastering | material | 4.29 |
| Acrylic paint on internal wallsand ceiling including plastering | material | 4.29 |
| Epoxy paint on floors | material | 4.29 |
| Supply and install 2000*3000 mm double leaf manufacturer label shall pass the test requirements complete with accessories as per door schedule and material as approved by the Client. | material | 257.04 |
| Excavation in all type of soil for any depth including levelling, compaction and disposal of surplus material | material | 1.5 |
| Reinforced Concrete lining including blinding concrete, construction, isolation layers and expansion joints as shown in drawings. | material | 32.13 |
| Excavation in all type of soil to increase the depth of the existing pond for any depth including levelling, compaction and disposal of surplus material | material | 0.6 |
| Reinforced Concrete lining including blinding concrete, construction, isolation layers and expansion joints as shown in drawings. | material | 32.13 |
| Constant speed drive, sewage pumps, centrifugal submersible type; 2 duty / 1 standby capable of delivering a flow rate of flow 424 l/s against a total head of 22m, rate includes provision of MCC | material | 25639.7 |
| Odour control system | material | 7206.3 |
| Gate valves for the pump station | material | 4873.47 |
| Non return valves for the pump station | material | 4503.33 |
| Penstok for the pump station | material | 3103.77 |
| Standby Diesel Generator Set 400/230KVA, 3P, 60Hz in Sound Attenuated Enclosure KVA rating by contractor as per total load onsite after pumps selection | material | 4797.93 |
| Supply, install, test and commission of manually operated fuel pump, The pump should be supplied with all accessories as specified. | material | 836.55 |
| Supply, install, test and commission of Fuel pump with capacity of not less than 1 hour to fill the daily tank of generator at required head. | material | 856.8 |
| supply, install, test & commission Automatic Transfer Switch ATS panel including all accessories & works required. | material | 1069.35 |
| Supply, install, test and commission under ground fuel tank for 3 days of continuous operation of the standby generator at full load. The tank should be supplied with all accessories such as black steel pipes, float switches with two contactors ï¿½etc. as | material | 2077.74 |
| 4Cx 185mm2 Cu/XLPE//PVC from nearest power supply (SEC) and generator to the ATS and from ATS to MCC-SPS | material | 10.89 |
| 4Cx 95mm2 Cu/XLPE//PVC from nearest power supply (SEC) and generator to the ATS and from ATS to MCC-SPS | material | 6.42 |
| 4Cx 10mm2 Cu/XLPE/SWA/PVC from MCC-SPS to ELP | material | 1.23 |
| 4Cx 150mm2 + 1Cx25mm2 SUBMERGED RUBBER INSULATED FLEXIBLE CABLE from MCC to PUMP1& PUMP2. | material | 12.27 |
| 4Cx 10mm2 + 1Cx10mm2 Cu/XLPE/PVC FROM MCC-SPS to DB-SPS | material | 1.26 |
| 4Cx 10mm2 + 1Cx10mm2 Cu/XLPE/PVC FROM MCC-SPS to Penstok | material | 1.26 |
| 4Cx 10mm2 + 1Cx10mm2 Cu/XLPE/PVC FROM MCC-SPS to Odor Control Unit | material | 1.26 |
| 4Cx 6mm2 + 1Cx6mm2 Cu/XLPE/PVC FROM MCC-SPS to the mechanical bar screen | material | 0.93 |
| 3Cx 6mm2 Cu/XLPE/PVC FROM MCC-SPS to the two fuel pumps. | material | 0.81 |
| 3Cx 4mm2 Cu/XLPE/PVC to the AC. | material | 0.66 |
| MCC | material | 3370.41 |
| Surge protection system study | material | 8701.08 |
| Surge protection system | material | 17641.3 |
| Local Control Panel, IP 65 | material | 1489.2 |
| Isolator/disconnect switches IP65 | material | 81.84 |
| DB-SPS Panel | material | 180 |
| ELP Panel: phtocell , timer,40 Ampere, 3P, IP66,60Hz incomer MCCB & 5ways outgoing MCCB | material | 224.25 |
| Electrical Hand Hole 600mm x 600mm x 800mm concrete hand hole with hot dip galvanized heavy duty steel cover | material | 78.09 |
| Electrical Hand Hole 400mm x 400mm x 600mm concrete hand hole with hot dip galvanized heavy duty steel cover | material | 69.99 |
| Surfaced Mounted Light | material | 25.71 |
| 13A DOUBLE SWITCH SOCKET OUTLET (WEATHER PROOF) | material | 9.48 |
| 20A SWITCH SOCKET OUTLET (FOR SPLIT UNIT), (WEATHER PROOF) | material | 10.71 |
| Supply, install and test the following grounding and lightning system including ground wires, ground rods, inspection pits, terminations, bonding/clamping, civil works and all materials and accessories required to complete the work according to specificat | material | 475.89 |
| Supply and install telephone and fire alarm system including smoke detector, cabinet, control panel, cables, conduits, switches, and other accessories to complete as per drawings and specifications. | material | 892.5 |
| "Supply, installation, testing and commissioning of PLC system, serving the pumping station and all related utilities. The PLC shall consists but limited to the following: | material | 9639 |
| Supply, installation, testing and commissioning of all control, instrumentation( as shown on the P & ID drawings cable schedule) including all installation accessories such as termination kits, lugs, glands, cable containments, junction boxes , conduits, | material | 1606.5 |
| Supply, installation, testing and commissioning of all field instruments such as hydrostatic level meter, level switches, flow switch, and all necessary instruments including all installation accessories, etc. all as per specifications and design drawings | material | 1785 |
| DX wall mounted Split/AC | material | 188.49 |
| CO2 fire extinguishers | material | 10.89 |
| Powder fire extinguishers | material | 10.05 |
| Flood lights shall be high pole with 250 watt HPS luminaire | material | 132.45 |
| 1 - way duct - not exceeding 1.5m deep | material | 3.75 |
| 2 - way duct - not exceeding 1.5m deep | material | 6.06 |
| 8 - way duct - not exceeding 1.5m deep | material | 15.63 |
| Earth pits | material | 8.76 |
| Cable draw pit, 600x600mm | material | 71.4 |
| HDPE force main DN 800mm diameter, in trenches depth: 0- 1.5m | material | 418.8 |
| HDPE force main DN 800mm diameter, in trenches depth: 1.51- 2.5m | material | 427 |
| Washout valve 200mm, on 800mm dia. pipe | material | 7735 |
| Air release valve 110 mm dia, on 800mm dia. pipe | material | 5712 |
| Washout valve chamber | material | 9520 |
| Air release valve chamber | material | 2427.6 |
| Wet well structure internal size (5.5*4.0m) at 11.0m depth | material | 44125.2 |
| Valve chamber | material | 28560 |
| for the pump station | material | 20230 |
| basket screen | material | 45817.4 |
| CMU walls with thickness 200mm | material | 23.8 |
| Waterproofing for foundation | material | 10.8 |
| Roof Insulation | material | 34.6 |
| Acrylic paint on elevations including plastering | material | 28.6 |
| Acrylic paint on internal wallsand ceiling including plastering | material | 28.6 |
| Epoxy paint on floors | material | 28.6 |
| Supply and install 2000*3000 mm double leaf manufacturer label shall pass the test requirements complete with accessories as per door schedule and material as approved by the Client. | material | 1713.6 |
| Excavation in all type of soil for any depth including levelling, compaction and disposal of surplus material | material | 10 |
| Reinforced Concrete lining including blinding concrete, construction, isolation layers and expansion joints as shown in drawings. | material | 214.2 |
| Excavation in all type of soil to increase the depth of the existing pond for any depth including levelling, compaction and disposal of surplus material | material | 4 |
| Reinforced Concrete lining including blinding concrete, construction, isolation layers and expansion joints as shown in drawings. | material | 214.2 |
| Constant speed drive, sewage pumps, centrifugal submersible type; 2 duty / 1 standby capable of delivering a flow rate of flow 424 l/s against a total head of 22m, rate includes provision of MCC | material | 170932 |
| Odour control system | material | 48042 |
| Gate valves for the pump station | material | 32489.8 |
| Non return valves for the pump station | material | 30022.2 |
| Penstok for the pump station | material | 20691.8 |
| Standby Diesel Generator Set 400/230KVA, 3P, 60Hz in Sound Attenuated Enclosure KVA rating by contractor as per total load onsite after pumps selection | material | 31986.2 |
| Supply, install, test and commission of manually operated fuel pump, The pump should be supplied with all accessories as specified. | material | 5577 |
| Supply, install, test and commission of Fuel pump with capacity of not less than 1 hour to fill the daily tank of generator at required head. | material | 5712 |
| supply, install, test & commission Automatic Transfer Switch ATS panel including all accessories & works required. | material | 7129 |
| Supply, install, test and commission under ground fuel tank for 3 days of continuous operation of the standby generator at full load. The tank should be supplied with all accessories such as black steel pipes, float switches with two contactors ï¿½etc. as | material | 13851.6 |
| 4Cx 185mm2 Cu/XLPE//PVC from nearest power supply (SEC) and generator to the ATS and from ATS to MCC-SPS | material | 72.6 |
| 4Cx 95mm2 Cu/XLPE//PVC from nearest power supply (SEC) and generator to the ATS and from ATS to MCC-SPS | material | 42.8 |
| 4Cx 10mm2 Cu/XLPE/SWA/PVC from MCC-SPS to ELP | material | 8.2 |
| 4Cx 150mm2 + 1Cx25mm2 SUBMERGED RUBBER INSULATED FLEXIBLE CABLE from MCC to PUMP1& PUMP2. | material | 81.8 |
| 4Cx 10mm2 + 1Cx10mm2 Cu/XLPE/PVC FROM MCC-SPS to DB-SPS | material | 8.4 |
| 4Cx 10mm2 + 1Cx10mm2 Cu/XLPE/PVC FROM MCC-SPS to Penstok | material | 8.4 |
| 4Cx 10mm2 + 1Cx10mm2 Cu/XLPE/PVC FROM MCC-SPS to Odor Control Unit | material | 8.4 |
| 4Cx 6mm2 + 1Cx6mm2 Cu/XLPE/PVC FROM MCC-SPS to the mechanical bar screen | material | 6.2 |
| 3Cx 6mm2 Cu/XLPE/PVC FROM MCC-SPS to the two fuel pumps. | material | 5.4 |
| 3Cx 4mm2 Cu/XLPE/PVC to the AC. | material | 4.4 |
| MCC | material | 22469.4 |
| Surge protection system study | material | 58007.2 |
| Surge protection system | material | 117609 |
| Local Control Panel, IP 65 | material | 9928 |
| Isolator/disconnect switches IP65 | material | 545.6 |
| DB-SPS Panel | material | 1200 |
| ELP Panel: phtocell , timer,40 Ampere, 3P, IP66,60Hz incomer MCCB & 5ways outgoing MCCB | material | 1495 |
| Electrical Hand Hole 600mm x 600mm x 800mm concrete hand hole with hot dip galvanized heavy duty steel cover | material | 520.6 |
| Electrical Hand Hole 400mm x 400mm x 600mm concrete hand hole with hot dip galvanized heavy duty steel cover | material | 466.6 |
| Surfaced Mounted Light | material | 171.4 |
| 13A DOUBLE SWITCH SOCKET OUTLET (WEATHER PROOF) | material | 63.2 |
| 20A SWITCH SOCKET OUTLET (FOR SPLIT UNIT), (WEATHER PROOF) | material | 71.4 |
| Supply, install and test the following grounding and lightning system including ground wires, ground rods, inspection pits, terminations, bonding/clamping, civil works and all materials and accessories required to complete the work according to specificat | material | 3172.6 |
| Supply and install telephone and fire alarm system including smoke detector, cabinet, control panel, cables, conduits, switches, and other accessories to complete as per drawings and specifications. | material | 5950 |
| Supply, installation, testing and commissioning of all control, instrumentation( as shown on the P & ID drawings cable schedule) including all installation accessories such as termination kits, lugs, glands, cable containments, junction boxes , conduits, | material | 10710 |
| Supply, installation, testing and commissioning of all field instruments such as hydrostatic level meter, level switches, flow switch, and all necessary instruments including all installation accessories, etc. all as per specifications and design drawings | material | 11900 |
| DX wall mounted Split/AC | material | 1256.6 |
| CO2 fire extinguishers | material | 72.6 |
| Powder fire extinguishers | material | 67 |
| Flood lights shall be high pole with 250 watt HPS luminaire | material | 883 |
| 1 - way duct - not exceeding 1.5m deep | material | 25 |
| 2 - way duct - not exceeding 1.5m deep | material | 40.4 |
| 8 - way duct - not exceeding 1.5m deep | material | 104.2 |
| Earth pits | material | 58.4 |
| Cable draw pit, 600x600mm | material | 476 |
| Supply, installation, testing and commissioning of PLC system | material | 64260 |
| Manhole Type 3 (2000x1000x1000) | material | 3168.43 |
| Air valve chamber on 280 mm dia pipeline Depth 1.5 - 3 m | material | 8139.6 |
| Pipe with diameter 400mm ; depth: 2.51m - 3.5m | material | 359.12 |
| 300mm thick Subgrade, including subgrade preparation, CBR?25% | material | 10 |
| Aggregate base course 200mm thick after compaction in two layers(Grading 1); CBR?80%; including watering, compaction and testing | material | 24.2 |
| Bituminous base course(Grading I - Class A), 70mm thick after compaction including Prime Coat (MC1) | material | 109 |
| Bituminous concrete wearing course, 50 mm thick, after compaction(Grading I - Class A), including tack coat (RC) | material | 120 |
| Excavation in all type of soil for any depth including levelling, compaction and disposal of surplus material | material | 33.5 |
| Reinforced Concrete lining including blinding concrete, construction, isolation layers and expansion joints as shown in drawings. | material | 717.57 |
| Excavation in all type of soil to increase the depth of the existing pond for any depth including levelling, compaction and disposal of surplus material | material | 13.4 |
| Reinforced Concrete lining including blinding concrete, construction, isolation layers and expansion joints as shown in drawings. | material | 717.57 |
| Valve chamber | material | 95676 |
| Gate valves for the pump station | material | 108841 |
| Non return valves for the pump station | material | 100574 |
| Penstok for the pump station | material | 69317.5 |
| Constant speed drive, sewage pumps, centrifugal submersible type; 2 duty / 1 standby capable of delivering a flow rate of flow 424 l/s against a total head of 22m, rate includes provision of MCC | material | 572621 |
| Odour control system | material | 160941 |
| Site Preparation (including survey, removal and disposal of unsuitable materials, placement and compaction fill material to bring the pump station site to proposed grades) | material | 10710 |
| Supply and install 300mm thick Subgrade as per drawings and specifications. | material | 44.1 |
| Supply and install 200mm thick Aggregate base course | material | 114.3 |
| Supply and install Bituminous base course (Grading I - Class A), including Prime Coat (MC1) as per drawings and specifications. | material | 525.6 |
| Supply and install Bituminous concrete wearing course, (Grading I - Class A), including tack coat (RC2) as per drawings and specifications. | material | 551.7 |
| Supply and install Precast Concrete Kerb | material | 43.2 |
| Supply and install 60mm thick - Interlocking block pavers for sidewalk/footpath as per drawings and specifications. | material | 54 |
| Supply and install Traffic signs, ground mounted, Sheet Alumenium, (breakaway)Single post, with all accessories as per drawings and specifications. | material | 1178.1 |
| Supply and install thermoplastic pavement road markings as per drawings and specifications. | material | 10710 |
| surface drainage channel | material | 268.2 |
| Standby Diesel Generator Set 400/230KVA, 3P, 60Hz in Sound Attenuated Enclosure KVA rating by contractor as per total load onsite after pumps selection | material | 107154 |
| Supply, install, test and commission of manually operated fuel pump, The pump should be supplied with all accessories as specified. | material | 18683 |
| Supply, install, test and commission of Fuel pump with capacity of not less than 1 hour to fill the daily tank of generator at required head. | material | 19135.2 |
| supply, install, test & commission Automatic Transfer Switch ATS panel including all accessories & works required. | material | 23882.2 |
| Supply, install, test and commission under ground fuel tank for 3 days of continuous operation of the standby generator at full load. The tank should be supplied with all accessories such as black steel pipes, float switches with two contactors ï¿½etc. as | material | 46402.9 |
| Double leaf swing or sliding main entrance gate | material | 10710 |
| 1.8m high Chainlink Fence (mesh opening size 60mm x 60mm) | material | 214.2 |
| Single leaf personal access gate | material | 8032.5 |
| Surfaced Mounted Light | material | 574.19 |
| Flood lights shall be high pole with 250 watt HPS luminaire | material | 2958.05 |
| DX wall mounted Split/AC | material | 4209.61 |
| CO2 fire extinguishers | material | 243.21 |
| Powder fire extinguishers | material | 224.45 |
| 1 - way duct - not exceeding 1.5m deep | material | 83.75 |
| 2 - way duct - not exceeding 1.5m deep | material | 135.34 |
| 8 - way duct - not exceeding 1.5m deep | material | 349.07 |
| Plain concrete foundation | material | 482.4 |
| Reinfirced concrete foundation | material | 1178.1 |
| Reinforced concrete columns | material | 1178.1 |
| Reinfirced concrete SOG | material | 1178.1 |
| Reinfirced concrete slab | material | 1178.1 |
| CMU walls with thickness 200mm | material | 79.73 |
| Waterproofing for foundation | material | 36.18 |
| Roof Insulation | material | 115.91 |
| Plasterer | labor |  |
| Acrylic paint on elevations including plastering | material | 95.81 |
| Acrylic paint on internal wallsand ceiling including plastering | material | 95.81 |
| Epoxy paint on floors | material | 95.81 |
| Supply and install 2000*3000 mm double leaf manufacturer label shall pass the test requirements complete with accessories as per door schedule and material as approved by the Client. | material | 5740.56 |
| Plinth for odour control system | material | 1178.1 |
| 4Cx 185mm2 Cu/XLPE//PVC from nearest power supply (SEC) and generator to the ATS and from ATS to MCC-SPS | material | 243.21 |
| 4Cx 95mm2 Cu/XLPE//PVC from nearest power supply (SEC) and generator to the ATS and from ATS to MCC-SPS | material | 143.38 |
| 4Cx 10mm2 Cu/XLPE/SWA/PVC from MCC-SPS to ELP | material | 27.47 |
| 4Cx 150mm2 + 1Cx25mm2 SUBMERGED RUBBER INSULATED FLEXIBLE CABLE from MCC to PUMP1& PUMP2. | material | 274.03 |
| 4Cx 10mm2 + 1Cx10mm2 Cu/XLPE/PVC FROM MCC-SPS to DB-SPS | material | 28.14 |
| 4Cx 10mm2 + 1Cx10mm2 Cu/XLPE/PVC FROM MCC-SPS to Penstok | material | 28.14 |
| 4Cx 10mm2 + 1Cx10mm2 Cu/XLPE/PVC FROM MCC-SPS to Odor Control Unit | material | 28.14 |
| 4Cx 6mm2 + 1Cx6mm2 Cu/XLPE/PVC FROM MCC-SPS to the mechanical bar screen | material | 20.77 |
| 3Cx 6mm2 Cu/XLPE/PVC FROM MCC-SPS to the two fuel pumps. | material | 18.09 |
| 3Cx 4mm2 Cu/XLPE/PVC to the AC. | material | 14.74 |
| 13A DOUBLE SWITCH SOCKET OUTLET (WEATHER PROOF) | material | 211.72 |
| 20A SWITCH SOCKET OUTLET (FOR SPLIT UNIT), (WEATHER PROOF) | material | 239.19 |
| Supply, install and test the following grounding and lightning system including ground wires, ground rods, inspection pits, terminations, bonding/clamping, civil works and all materials and accessories required to complete the work according to specificat | material | 10628.2 |
| MCC | material | 75272.5 |
| Surge protection system study | material | 194324 |
| Surge protection system | material | 393990 |
| Local Control Panel, IP 65 | material | 33258.8 |
| Isolator/disconnect switches IP65 | material | 1827.76 |
| DB-SPS Panel | material | 4020 |
| ELP Panel: phtocell , timer,40 Ampere, 3P, IP66,60Hz incomer MCCB & 5ways outgoing MCCB | material | 5008.25 |
| Electrical Hand Hole 600mm x 600mm x 800mm concrete hand hole with hot dip galvanized heavy duty steel cover | material | 1744.01 |
| Electrical Hand Hole 400mm x 400mm x 600mm concrete hand hole with hot dip galvanized heavy duty steel cover | material | 1563.11 |
| Supply and install telephone and fire alarm system including smoke detector, cabinet, control panel, cables, conduits, switches, and other accessories to complete as per drawings and specifications. | material | 19932.5 |
| Supply, installation, testing and commissioning of all control, instrumentation( as shown on the P & ID drawings cable schedule) including all installation accessories such as termination kits, lugs, glands, cable containments, junction boxes , conduits, | material | 35878.5 |
| Supply, installation, testing and commissioning of all field instruments such as hydrostatic level meter, level switches, flow switch, and all necessary instruments including all installation accessories, etc. all as per specifications and design drawings | material | 39865 |
| Earth pits | material | 195.64 |
| Cable draw pit, 600x600mm | material | 1594.6 |
| Supply, installation, testing and commissioning of PLC system, | material | 215271 |
| Site Preparation (including survey, removal and disposal of unsuitable materials, placement and compaction fill material to bring the pump station site to proposed grades) | material | 1190 |
| Supply and install 300mm thick Subgrade as per drawings and specifications. | material | 4.9 |
| Supply and install 200mm thick Aggregate base course | material | 12.7 |
| Supply and install Bituminous base course (Grading I - Class A), including Prime Coat (MC1) as per drawings and specifications. | material | 58.4 |
| Supply and install Bituminous concrete wearing course, (Grading I - Class A), including tack coat (RC2) as per drawings and specifications. | material | 61.3 |
| Supply and install Precast Concrete Kerb | material | 4.8 |
| Supply and install 60mm thick - Interlocking block pavers for sidewalk/footpath as per drawings and specifications. | material | 6 |
| Supply and install Traffic signs, ground mounted, Sheet Alumenium, (breakaway)Single post, with all accessories as per drawings and specifications. | material | 130.9 |
| Supply and install thermoplastic pavement road markings as per drawings and specifications. | material | 1190 |
| surface drainage channel | material | 29.8 |
| Excavation in all type of soil for any depth including levelling, compaction and disposal of surplus material | material | 5 |
| Reinforced Concrete lining including blinding concrete, construction, isolation layers and expansion joints as shown in drawings. | material | 107.1 |
| Excavation in all type of soil to increase the depth of the existing pond for any depth including levelling, compaction and disposal of surplus material | material | 2 |
| Reinforced Concrete lining including blinding concrete, construction, isolation layers and expansion joints as shown in drawings. | material | 107.1 |
| Wet well structure internal size (5.5*4.0m) at 11.0m depth | material | 147819 |
| for the pump station | material | 67770.5 |
| basket screen | material | 153488 |
| Gate valves dia(200)mm on pipes with dia (200) mm. | material | 2647.84 |
| Wash out valve with dia (100)mm on pipes with dia (200) mm | material | 5682.94 |
| Air valve chamber; on 200 mm dia pipeline Depth 1.5 - 3 m | material | 7739.1 |
| Steel Fixer | labor |  |
| Wash out chamber; on 200 mm dia pipeline Depth 1.5 - 3m | material | 31915.8 |
| Air valves with dia (50mm) mm on pipes with dia(200)mm. | material | 6480.24 |
| Wash out chamber; on 560 mm dia pipeline Depth 1.5 - 3m | material | 42382.8 |
| Wash out chamber; on 630 mm dia pipeline Depth 1.5 - 3m | material | 42382.8 |
| Air valve chamber on 560 mm dia pipeline Depth 1.5 - 3 m | material | 7739.1 |
| Air valve chamber on 630 mm dia pipeline Depth 1.5 - 3 m | material | 7739.1 |
| Butterfly valves with dia (560)mm on pipes with dia (560)mm. | material | 59797.5 |
| Butterfly valves with dia (630)mm on pipes with dia (630)mm. | material | 67213.7 |
| Wash out valve with dia (150)mm on pipes with dia (560) mm | material | 18238.7 |
| Wash out valve with dia (150)mm on pipes with dia (630) mm | material | 23670.4 |
| Air valves with dia (65mm) mm on pipes with dia(560)mm. | material | 11911.9 |
| Air valves with dia (65mm) mm on pipes with dia(630)mm. | material | 17464.9 |
| In-situ, reinforced single concrete valve chambers on the pipeline, as defined and shown on the drawingss, and all necessary works and equipment (valve measured elsewhere), and supplies construction, cut and installation of pipe cutting, backfilling, in | material | 37485 |
| Air valve chamber on 355 mm dia pipeline Depth 1.5 - 3 m | material | 9373.5 |
| Butterfly valves with dia (355)mm on pipes with dia (355)mm. | material | 26731 |
| Air valves with dia (65mm) mm on pipes with dia(355)mm. | material | 8722.73 |
| Road crossing ducts, 4 way (4 x 100mm PVC) | material | 126.63 |
| Drawpit with medium duty steel cover, size 900x900x1200mm, Type 4 | material | 2527.24 |
| Drawpit with medium duty steel cover, size 600x600x1000mm, Type 18 | material | 2257.23 |
| Street Lighting Feeder pillars , Includes foundation and draw pits | material | 7824.93 |
| Pipe with diameter 900mm ; depth: 2.51 - 3.5m | material | 213.8 |
| HDPE force main DN 800mm diameter, in trenches depth: 0- 1.5m | material | 1402.98 |
| HDPE force main DN 800mm diameter, in trenches depth: 1.51- 2.5m | material | 1430.45 |
| Washout valve 200mm, on 800mm dia. pipe | material | 25912.2 |
| Air release valve 110 mm dia, on 800mm dia. pipe | material | 19135.2 |
| Washout valve chamber | material | 31892 |
| Air release valve chamber | material | 8132.46 |
| Pipe with diameter 355mm; in depth 0.0m - 1.5m | material | 88 |
| Pipe with diameter 355mm; in depth 1.5m - 3.0m | material | 94.8 |
| Butterfly valves with dia (355)mm on pipes with dia (355)mm. | material | 7979.4 |
| Air valves with dia (65mm) mm on pipes with dia(355)mm. | material | 2603.8 |
| In-situ, reinforced single concrete valve chambers on the pipeline, as defined and shown on the drawingss, and all necessary works and equipment (valve measured elsewhere), and supplies construction, cut and installation of pipe cutting, backfilling, in | material | 8330 |
| Air valve chamber on 355 mm dia pipeline Depth 1.5 - 3 m | material | 2083 |

## Schedule

| ID | WBS | Activity | Type | Duration | Start | Finish | Predecessors | Complete | Planned start | Planned finish | Total float | Free float | Constraint | Activity ID N | 02- Network-WBS | 05-Discipline | 01- Network | 06-Employer Responsibilities | Discipline | New Discipline | 03- Activity | 04-UOM |
| --- | --- | --- | --- | --- | --- | --- | --- | --- | --- | --- | --- | --- | --- | --- | --- | --- | --- | --- | --- | --- | --- | --- |
|  | MS | **Key Milestones** |  |  | 2025-01-12 | 2027-10-02 |  |  |  |  |  |  |  |  |  |  |  |  |  |  |  |  |
|  | CM | **Contractual Milestones** |  |  | 2025-01-12 | 2027-10-02 |  |  |  |  |  |  |  |  |  |  |  |  |  |  |  |  |
| MS-CS-PS |  | Project Commencement Date ( Site Handover ) | milestone | 0d | 2025-01-12 A | 2025-01-12 A |  | 100% |  |  |  |  |  | MS-CS-PS | GN | C | MS | ER | MS | MS |  |  |
| MS-CF-MOB |  | Completion of Mobilization Works | milestone | 0d | 2025-03-09 A | 2025-03-09 A | MOB-30, MOB-40, MOB-50, MOB-60, MOB-70, MOB-80 FF | 100% |  |  |  |  | finish on or before 2025-03-09 | MS-CF-MOB | GN | MON | MS |  | MS | MS |  |  |
| MS-CF-EBL |  | Completion of Work Plan and Baseline Schedule | milestone | 0d | 2025-03-10 A | 2025-03-10 A | PRE-CON-MDC-20, PRE-CON-MDC-30, PRE-CON-MDC-40, PRE-CON-MDC-50, PRE-CON-MDC-60, PRE-CON-MDC-70, PRE-CON-MDC-80 | 100% | 2025-02-10 | 2025-02-10 |  |  | finish on or before 2025-02-11 | MS-CF-EBL | GN | MON | MS |  | MS | MS |  |  |
| MS-CF-ENG |  | Completion of Submitting and Approval of Shopdrwing and Material | milestone | 0d | 2025-05-24 A | 2025-05-24 A | ENG-SH-PW-ML-A-110, ENG-SH-SW-ML-A-110, ENG-SH-SD-ML-A-110, ENG-SH-SD-CB-A-110, ENG-SH-IR-ML-A-110, ENG-SH-IR-LL-A-110, ENG-SH-SL-A-110, ENG-SH-TE-A-110, ENG-SH-MV-A-110, ENG-SH-RD-A-130, ENG-SH-MRK-A-110, ENG-SH-HS-A-110, ENG-SH-RD-A-110, ENG-SH-RD-A-120, ENG-MS-PW-ML-A-110, ENG-MS-SW-ML-A-110, ENG-MS-SD-ML-A-110, ENG-MS-SD-CB-A-110, ENG-MS-IR-ML-A-110, ENG-MS-IR-LL-A-110, ENG-MS-SL-A-110, ENG-MS-TE-A-110, ENG-MS-MV-A-110, ENG-MS-RD-A-40, ENG-MS-MRK-A-10, ENG-MS-HS-A-10, ENG-MS-RD-A-20, ENG-MS-RD-A-30, ENG-SH-PW-FH-A-110, ENG-MT-SW-ML-A-110, ENG-MT-SW-ML-A-100, ENG-MT-SW-TF-A-100, ENG-MT-SW-TF-A-120, ENG-MT-SD-ML-A-100, ENG-MT-SD-ML-A-110, ENG-MT-SD-CB-A-110, ENG-MT-SD-CB-A-100, ENG-MT-SD-TF-A-100, ENG-MT-SD-TF-A-110, ENG-MT-SD-TF-A-120, ENG-MT-PW-ML-A-100, ENG-MT-PW-ML-A-110, ENG-MT-PW-FH-A-100, ENG-MT-PW-TF-A-100, ENG-MT-IR-ML-A-100, ENG-MT-IR-ML-A-110, ENG-MT-MV-ML-A-100, ENG-MT-MV-SS-A-100, ENG-MT-MV-TF-A-100, ENG-MT-SL-ML-A-100, ENG-MT-SL-A-100, ENG-MT-SL-A-110, ENG-MT-SL-A-120, ENG-MT-SL-DB-A-100, ENG-MT-SL-TF-A-100, ENG-MT-SL-TF-A-110, ENG-MT-SL-ES-A-100, ENG-MT-TE-A-100, ENG-MT-TE-A-110, ENG-MT-SPS-CV-A-110, ENG-MT-DPO-CV-A-110, ENG-MT-MV-A-10, ENG-MT-SPS-MC-A-110, ENG-MS-CTV-A-110, ENG-SH-CTV-A-110 | 100% | 2025-02-10 | 2025-02-10 |  |  | finish on or before 2025-02-11 | MS-CF-ENG | GN | MON | MS |  | MS | MS |  |  |
| MS-CF-MV |  | Completion of Construction Works for Medium Voltage Network | milestone | 0d | 2027-03-21 | 2027-03-21 | CO-R09.S01-MV-120, CO-R09-MV-TF-100, ENG-SH-MV-A-110, CO-R09.S01-EW-100, CO-R09.S01-EW-110, CO-R18-MV-TF-120, CO-R10.S03-ES-MV-120, CO-R10-MV-TF-140, CO-R10.S03-ES-EW-100, CO-R10.S03-ES-EW-110, CO-R11.S05-MV-120, CO-R11-MV-TF-160, CO-R11.S05-EW-100, CO-R11.S05-EW-110, CO-R11-MV-TF-180, CO-R14.S07-EW-100, CO-R14.S07-EW-110, CO-R15.S09-MV-ML-270, CO-R15-MV-TF-200, CO-R15.S09-EW-200, CO-R15.S09-EW-110, CO-R16.S11-MV-ML-300, CO-R16-MV-TF-220, CO-R16.S11-EW-100, CO-R16.S11-EW-110, CO-R17.S13-MV-ML-330, CO-R17-MV-TF-240, CO-R17.S13-EW-100, CO-R17.S13-EW-110, ENG-MS-MV-A-110, CO-R10.S03-WE-MV-120, CO-R10.S03-WE-EW-100, CO-R10.S03-WE-EW-110, MS-CS-MV |  |  |  | -119d | 0d | finish on or before 2026-10-28 | MS-CF-MV | MS | EPC | MV |  | MV | MV |  |  |
| MS-CF-TE |  | Completion of Construction Works for Telecom Network | milestone | 0d | 2027-03-27 | 2027-03-27 | CO-R09.S01-TE-130, CO-R09.S01-TE-160, CO-R10.S03-ES-TE-130, CO-R10.S03-ES-TE-160, CO-R11.S05-TE-130, CO-R11.S05-TE-160, CO-R14.S07-TE-130, CO-R14.S07-TE-160, CO-R15.S09-TE-130, CO-R15.S09-TE-160, CO-R16.S11-TE-130, CO-R16.S11-TE-160, CO-R17.S13-TE-130, CO-R17.S13-TE-160, CO-R17.S14-TE-160 FF, CO-R17.S14-TE-130 FF, CO-R16.S12-TE-160 FF, CO-R16.S12-TE-130 FF, CO-R15.S10-TE-160 FF, CO-R15.S10-TE-130 FF, CO-R14.S08-TE-160 FF, CO-R14.S08-TE-130 FF, CO-R11.S06-TE-160 FF, CO-R11.S06-TE-130 FF, CO-R10.S04-ES-TE-130 FF, CO-R10.S04-ES-TE-160 FF, CO-R09.S02-TE-160 FF, CO-R10.S03-WE-TE-130, CO-R10.S03-WE-TE-160, CO-R10.S04-WE-TE-130 FF, CO-R10.S04-WE-TE-160 FF |  |  |  | -172d | 0d | finish on or before 2026-09-01 | MS-CF-TE | MS | EPC | TE |  | TE | TE |  |  |
| MS-CF-IR |  | Completion of Construction Works for Irrigation Network | milestone | 0d | 2027-04-14 | 2027-04-14 | CO-R09.S01-IR-140, CO-R09-IR-TF-100, CO-R18-IR-TF-110, CO-R10.S03-ES-IR-130, CO-R10-IR-TF-120, CO-R11.S05-IR-130, CO-R11-IR-TF-130, CO-R14.S07-IR-130, CO-R11-IR-TF-140, CO-R15.S09-IR-130, CO-R15-IR-TF-150, CO-R16.S11-IR-130, CO-R16-IR-TF-160, CO-R17.S13-IR-130, CO-R17-IR-TF-170, CO-R10.S03-WE-IR-130, CO-R10.S04-ES-IR-120, CO-R10.S03-WE-IR-120, CO-R09.S01-IR-120, CO-R16.S11-IR-120, CO-R15.S09-IR-120, CO-R14.S07-IR-120, CO-R10.S03-ES-IR-120, CO-R18.S15-IR-160, CO-R17.S13-IR-120 |  |  |  | -140d | 0d | finish on or before 2026-10-28 | MS-CF-IR | MS | EPC | IR |  | IR | IR |  |  |
| MS-CF-SW |  | Completion of Construction Works for Sewage Network | milestone | 0d | 2027-04-25 | 2027-04-25 | CO-R09.S01-SW-130, CO-R09-SW-TF-100, CO-R09-SW-TF-110, CO-R09-SW-TF-120, CO-R18-SW-TF-100, CO-R18-SW-TF-110, CO-R18-SW-TF-130, CO-R10-SW-TF-100, CO-R10-SW-TF-110, CO-R10-SW-TF-130, CO-R11.S05-SW-130, CO-R11-SW-TF-100, CO-R11-SW-TF-110, CO-R11-SW-TF-130, CO-R14.S07-SW-130, CO-R14-SW-TF-100, CO-R14-SW-TF-110, CO-R14-SW-TF-130, CO-R15.S09-SW-130, CO-R15-SW-TF-100, CO-R15-SW-TF-110, CO-R15-SW-TF-130, CO-R16.S11-SW-130, CO-R16-SW-TF-100, CO-R16-SW-TF-110, CO-R16-SW-TF-130, CO-R17.S13-SW-130, CO-R17-SW-TF-100, CO-R17-SW-TF-110, CO-R17-SW-TF-130, CO-R11.S06-SW-130 FF, CO-R14.S08-SW-130 FF, CO-R09.S02-SW-130 FF, CO-RM-SW-440, CO-RM-SW-370 |  |  |  | -140d | 0d | finish on or before 2026-11-08 | MS-CF-SW | MS | EPC | SW |  | SW | SW |  |  |
| MS-CF-SD |  | Completion of Construction Works for Storm Drainage Network | milestone | 0d | 2027-05-20 | 2027-05-20 | CO-R09.S01-SD-130, CO-R09.S01-SD-170, CO-R09-SD-TF-100, CO-R09-SD-TF-110, CO-R09-SD-TF-120, CO-R09-SD-TF-130, CO-R18-SD-TF-100, CO-R18-SD-TF-110, CO-R18-SD-TF-120, CO-R18-SD-TF-130, CO-R10.S03-ES-SD-130, CO-R10.S03-ES-SD-170, CO-R10-SD-TF-100, CO-R10-SD-TF-110, CO-R10-SD-TF-120, CO-R10-SD-TF-130, CO-R11.S05-SD-130, CO-R11.S05-SD-170, CO-R11-SD-TF-100, CO-R11-SD-TF-110, CO-R11-SD-TF-120, CO-R11-SD-TF-130, CO-R14.S07-SD-130, CO-R14.S07-SD-170, CO-R14-SD-TF-110, CO-R14-SD-TF-120, CO-R14-SD-TF-130, CO-R15.S09-SD-130, CO-R15.S09-SD-170, CO-R15-SD-TF-100, CO-R15-SD-TF-110, CO-R15-SD-TF-120, CO-R15-SD-TF-130, CO-R16.S11-SD-130, CO-R16.S11-SD-170, CO-R16-SD-TF-100, CO-R16-SD-TF-110, CO-R16-SD-TF-120, CO-R16-SD-TF-130, CO-R17.S13-SD-130, CO-R17.S13-SD-170, CO-R17-SD-TF-100, CO-R17-SD-TF-110, CO-R17-SD-TF-120, CO-R17-SD-TF-130, CO-R14-SD-TF-100, CO-R10.S03-WE-SD-130, CO-R10.S03-WE-SD-170, CO-R09.S01-SD-210, PRO-R11-SD-DL-140 |  |  |  | -128d | 0d | finish on or before 2026-12-12 | MS-CF-SD | MS | EPC | SD |  | SD | SD |  |  |
| MS-CF-SL |  | Completion of Construction Works for Street Lighting Network | milestone | 0d | 2027-06-28 | 2027-06-28 | CO-R09.S01-SL-120, CO-R09.S01-SL-130, CO-R09.S01-SL-160, CO-R09.S01-SL-180, CO-R09.S01-SL-190, CO-R09-SL-TF-100, CO-R09-SL-TF-110, CO-R09-SL-ES-100, CO-R09-SL-ES-110, CO-R18-SL-TF-120, CO-R18-SL-TF-130, CO-R10.S03-ES-SL-120, CO-R10.S03-ES-SL-130, CO-R10.S03-ES-SL-160, CO-R10.S03-ES-SL-180, CO-R10.S03-ES-SL-190, CO-R10-SL-TF-140, CO-R10-SL-TF-150, CO-R10-SL-ES-140, CO-R10-SL-ES-150, CO-R11-SL-TF-160, CO-R11-SL-TF-170, CO-R14.S07-SL-120, CO-R14.S07-SL-130, CO-R14.S07-SL-160, CO-R14.S07-SL-180, CO-R14.S07-SL-190, CO-R11-SL-TF-180, CO-R11-SL-TF-190, CO-R15-SL-TF-200, CO-R15-SL-TF-210, CO-R16-SL-TF-220, CO-R16-SL-TF-230, CO-R17-SL-TF-240, CO-R17-SL-TF-250, CO-R14.S08-SL-850 FF, CO-R09-SL-TF-380, CO-R10-SL-TF-380, CO-R11-SL-TF-380, CO-R14-SL-TF-380, CO-R15-SL-TF-380, CO-R16-SL-TF-380, CO-R17-SL-TF-380, CO-R18-SL-TF-380, CO-R15.S10-SL-130 FF, CO-R15.S10-SL-160 FF, CO-R15.S10-SL-190 FF, CO-R17.S14-SL-130 FF, CO-R17.S14-SL-160 FF, CO-R17.S14-SL-190 FF, CO-R18.S16-SL-130 FF, CO-R18.S16-SL-160 FF, CO-R18.S16-SL-190 FF, CO-R09.S02-SL-130 FF, CO-R10.S03-WE-SL-120, CO-R10.S03-WE-SL-130, CO-R10.S03-WE-SL-160, CO-R10.S03-WE-SL-180, CO-R10.S03-WE-SL-190, CO-R11.S06-SL-160 |  |  |  | -209.5d | 0d | finish on or before 2026-10-15 | MS-CF-SL | MS | EPC | SL |  | SL | SL |  |  |
| MS-CF-PW |  | Completion of Construction Works for Potable Water Network | milestone | 0d | 2027-07-08 | 2027-07-08 | CO-R09-PW-TF-100, CO-R09-PW-TF-110, CO-R09-PW-TF-120, CO-R18-PW-TF-100, CO-R18-PW-TF-110, CO-R18-PW-TF-120, CO-R10.S03-ES-PW-130, CO-R10.S03-ES-PW-160, CO-R10-PW-TF-100, CO-R10-PW-TF-110, CO-R10-PW-TF-120, CO-R11-PW-TF-100, CO-R11-PW-TF-110, CO-R11-PW-TF-120, CO-R14-PW-TF-100, CO-R14-PW-TF-110, CO-R14-PW-TF-120, CO-R15-PW-TF-100, CO-R15-PW-TF-110, CO-R15-PW-TF-120, CO-R16-PW-TF-100, CO-R16-PW-TF-110, CO-R16-PW-TF-120, CO-R17-PW-TF-100, CO-R17-PW-TF-110, CO-R17-PW-TF-120, CO-R10.S03-WE-PW-130, CO-R10.S03-WE-PW-160, CO-R17.S14-PW-210, CO-R18.S16-PW-330, CO-R11.S06-PW-210, CO-R15.S10-PW-210, CO-R10.S04-WE-PW-220, CO-R11.S06-PW-160, CO-R14.S08-PW-160, CO-R16.S12-PW-210, CO-R18.S16-PW-270, CO-R17.S14-PW-160 |  |  |  | -190d | 0d | finish on or before 2026-11-18 | MS-CF-PW | MS | EPC | PW |  | PW | PW |  |  |
| MS-CF-RD |  | Completion of Construction Works for Road Works | milestone | 0d | 2027-09-16 | 2027-09-16 | CO-R09-S1-RD-F-150 FF, CO-R09-S2-RD-F-170 FF, CO-R18-S15-RD-F-130 FF, CO-R18-S16-RD-F-160 FF, CO-R10-S03-RD-F-100 FF, CO-R10-S04-RD-F-130 FF, CO-R11-S05-RD-F-100 FF, CO-R11-S06-RD-F-130 FF, CO-R11-S07-RD-F-100 FF, CO-R11-S08-RD-F-130 FF, CO-R15-S09-RD-F-100 FF, CO-R15-S10-RD-F-130 FF, CO-R16-S11-RD-F-100 FF, CO-R16-S12-RD-F-130 FF, CO-R17-S13-RD-F-100 FF, CO-R17-S14-RD-F-130 FF, CO-R09-S1-RD-F-140 FF, CO-R09-S2-RD-F-160 FF, CO-R18-S15-RD-F-120 FF, CO-R18-S16-RD-F-140 FF, CO-R10-S03-RD-F-160 FF, CO-R10-S04-RD-F-170 FF, CO-R11-S05-RD-F-160 FF, CO-R11-S06-RD-F-170 FF, CO-R11-S07-RD-F-160 FF, CO-R11-S08-RD-F-170 FF, CO-R15-S09-RD-F-160 FF, CO-R15-S10-RD-F-170 FF, CO-R16-S11-RD-F-160 FF, CO-R16-S12-RD-F-170 FF, CO-R17-S13-RD-F-160 FF, CO-R17-S14-RD-F-170 FF, CO-R18.S15-RD-P-150 FF, CO-R18.S16-RD-P-150 FF, CO-R09.S02-RD-P-110, CO-R10.S04-WE-RD-110, CO-R10.S04-ES-RD-110, CO-R10.S03-WE-RD-110, CO-R10.S03-ES-RD-110, CO-R09.S01-RD-P-110 |  |  |  | -215.5d | 0d |  | MS-CF-RD | MS | EPC | RD |  | RD | RD |  |  |
| MS-CF-PF |  | Project Completion Date | milestone | 0d | 2027-10-02 | 2027-10-02 | MS-CF-IR, MS-CF-SL, MS-CF-TE, MS-CF-RD, HO-120 FF, HO-230 FF, HO-220 FF, HO-280 FF, CO-RM-SW-310 FF |  |  |  | -215.5d | 0d |  | MS-CF-PF | GN | C | MS |  | MS | MS |  |  |
|  | CM1 | **Control Milestones** |  |  | 2025-04-29 | 2027-01-09 |  |  |  |  |  |  |  |  |  |  |  |  |  |  |  |  |
| MS-CS-SW |  | The Employer Approval NOC for Sewage Network | milestone | 0d | 2025-04-29 A | 2025-04-29 A | CO-R09.S01-SW-100 SS | 100% | 2025-07-09 | 2025-07-09 |  |  |  | MS-CS-SW | NOC | NOC | SW |  | SW | SW | NOC | Each |
| MS-CS-SD |  | The Employer Approval NOC for Storm Drainage Network | milestone | 0d | 2025-04-30 A | 2025-04-30 A | CO-R09.S01-SD-100 SS | 100% | 2025-09-08 | 2025-09-08 |  |  |  | MS-CS-SD | NOC | NOC | SD |  | SD | SD | NOC | Each |
| MS-CS-IR |  | The Employer Approval NOC for Irrigation Network | milestone | 0d | 2025-06-16 A | 2025-06-16 A | CO-R09.S01-IR-100 SS | 100% | 2025-11-19 | 2025-11-19 |  |  |  | MS-CS-IR | NOC | NOC | IR |  | IR | IR | NOC | Each |
| MS-CS-PW |  | The Employer Approval NOC for Potable Water Network | milestone | 0d | 2025-06-19 A | 2025-06-19 A | CO-R09.S02-PW-100 SS | 100% | 2025-11-03 | 2025-11-03 |  |  |  | MS-CS-PW | NOC | NOC | PW |  | PW | PW | NOC | Each |
| MS-CS-SL |  | The Employer Approval NOC for Street Lighting Network | milestone | 0d | 2025-07-08 A | 2025-07-08 A | MS-CF-ENG | 100% | 2025-12-29 | 2025-12-29 |  |  |  | MS-CS-SL | NOC | NOC | SL |  | SL | SL | NOC | Each |
| MS-CS-TE |  | The Employer Approval NOC for Telecom Network | milestone | 0d | 2025-07-08 A | 2025-07-08 A | MS-CF-ENG | 100% | 2026-05-03 | 2026-05-03 |  |  |  | MS-CS-TE | NOC | NOC | TE |  | TE | TE | NOC | Each |
| MS-CS-RD |  | The Employer Approval NOC for Roads Works | milestone | 0d | 2025-07-10 A | 2025-07-10 A | CO-R09.S01-RD-P-100 SS | 100% | 2026-06-21 | 2026-06-21 |  |  |  | MS-CS-RD | NOC | NOC | RD |  | RD | RD | NOC | Each |
| MS-CS-MV |  | The Employer Approval NOC for Medium Voltage Network | milestone | 0d | 2027-01-09 | 2027-01-09 | CO-R09.S01-MV-100 SS |  |  |  | -61d | 58d |  | MS-CS-MV | NOC | NOC | MV |  | MV | MV | NOC | Each |

| ID | WBS | Activity | Type | Duration | Start | Finish | Predecessors | Complete | Planned start | Planned finish | Total float | Free float | Activity ID N | 02- Network-WBS | 03- Activity | 04-UOM | 05-Discipline | 01- Network | Discipline | New Discipline | 06-Employer Responsibilities |
| --- | --- | --- | --- | --- | --- | --- | --- | --- | --- | --- | --- | --- | --- | --- | --- | --- | --- | --- | --- | --- | --- |
|  | MM | **Intermediate Milestones** |  |  | 2026-12-23 | 2027-09-16 |  |  |  |  |  |  |  |  |  |  |  |  |  |  |  |
| MS-MO-20 |  | Completion of Storm Drainage Ponds | milestone | 0d | 2026-12-23 | 2026-12-23 | CO-SD-PO-K2-130 |  |  |  | -3d | 104d | MS-MO-20 | DSN | DSS | Each | S | TE | SD | SD |  |
| MS-MO-10 |  | Completion of Sewage Pump Stations | milestone | 0d | 2027-06-26 | 2027-06-26 | CO-SW-PS7-SWS-110 |  |  |  | -152d | 0d | MS-MO-10 | DSN | DSS | Each | S | SL | SW | SW |  |
| MS-MO-30 |  | Completion of Tie In To Existing Networks | milestone | 0d | 2027-09-16 | 2027-09-16 | TIE-SD-R09, TIE-SW-R09, TIE-PW-R09, TIE-IR-R09, TIE-R09-MV, TIE-R09-SL, TIE-R09-TE, TIE-SD-R10, TIE-SW-R10, TIE-PW-R10, TIE-IR-R10, TIE-R10-MV, TIE-R10-SL, TIE-R10-TE, TIE-R10-RD, TIE-SD-R11, TIE-SW-R11, TIE-PW-R11, TIE-IR-R11, TIE-R11-MV, TIE-R11-SL, TIE-R11-TE, TIE-SD-R14, TIE-SW-R14, TIE-PW-R14, TIE-IR-R14, TIE-R14-MV, TIE-R14-SL, TIE-R14-TE, TIE-R14-RD, TIE-SD-R15, TIE-SW-R15, TIE-PW-R15, TIE-IR-R15, TIE-R15-MV, TIE-R15-SL, TIE-R15-TE, TIE-SD-R16, TIE-SW-R16, TIE-PW-R16, TIE-IR-R16, TIE-R16-MV, TIE-R16-SL, TIE-R16-TE, TIE-SD-R17, TIE-SW-R17, TIE-PW-R17, TIE-IR-R17, TIE-R17-MV, TIE-R17-SL, TIE-R17-TE |  |  |  | -212.5d | 0d | MS-MO-30 |  |  |  |  |  | MS | MS |  |
|  | MOB | **Preliminaries and Mobilization Works** |  |  | 2025-01-12 | 2025-03-12 |  |  |  |  |  |  |  |  |  |  |  |  |  |  |  |
|  | MOB | **Mobilization Works** |  |  | 2025-01-12 | 2025-03-12 |  |  |  |  |  |  |  |  |  |  |  |  |  |  |  |
| MOB-10 |  | Clear and Grub for Offices and Access Roads |  | 24d | 2025-01-12 A | 2025-03-12 A | MS-CS-PS | 100% | 2025-01-12 | 2025-02-08 |  |  | MOB-10 | MB |  | Each | Mob | MB | MOB | MEP |  |
| MOB-20 |  | Project Site Layout Plan Approval |  | 24d | 2025-01-12 A | 2025-03-12 A | MS-CS-PS | 100% | 2025-01-12 | 2025-02-08 |  |  | MOB-20 |  |  |  |  | MB | MOB | MEP |  |
| MOB-30 |  | Supply & Install of Project Supervision Offices |  | 24d | 2025-02-09 A | 2025-03-12 A | MS-CS-PS, MOB-20, MOB-10 | 100% | 2025-02-09 | 2025-03-09 |  |  | MOB-30 | MB |  | Each | Mob | MB | MOB | MEP |  |
| MOB-40 |  | Construction Project Store & Temporary Fence |  | 24d | 2025-02-09 A | 2025-03-12 A | MOB-10 | 100% | 2025-02-09 | 2025-03-09 |  |  | MOB-40 | MB |  | Each | Mob | MB | MOB | MEP |  |
| MOB-50 |  | Mobilization of Major Manpower |  | 24d | 2025-02-09 A | 2025-03-12 A | MOB-20 | 100% | 2025-02-09 | 2025-03-09 |  |  | MOB-50 | MB |  | Each | Mob | MB | MOB | MEP |  |
| MOB-60 |  | Mobilization of Major Equipments |  | 24d | 2025-02-09 A | 2025-03-12 A | MOB-20 | 100% | 2025-02-09 | 2025-03-09 |  |  | MOB-60 | MB |  | Each | Mob | MB | MOB | MEP |  |
| MOB-70 |  | Installation Project Sign Board |  | 24d | 2025-02-09 A | 2025-03-12 A | MOB-10 | 100% | 2025-02-09 | 2025-03-09 |  |  | MOB-70 | MB |  |  | Mob | MB | MOB | MEP |  |
| MOB-80 |  | Construction Site Access Roads |  | 24d | 2025-02-09 A | 2025-03-12 A | MOB-10 | 100% | 2025-02-09 | 2025-03-09 |  |  | MOB-80 |  |  |  |  | MB | MOB | MEP |  |
|  | 2 | **Project Documents Provision From The Employer** |  |  | 2025-01-12 | 2025-02-12 |  |  |  |  |  |  |  |  |  |  |  |  |  |  |  |
| PRE-EMP-MDC-10 |  | Receive of Approved Project Master Plans of works (IFC) From The Employer | milestone | 0d | 2025-01-12 A | 2025-01-12 A | PRE-EMP-MDC-20 SS | 100% |  |  |  |  | PRE-EMP-MDC-10 | NOC |  |  | NOC | MS | MS | MS | ER |
| PRE-EMP-MDC-20 |  | Receive of Site Benchmark Coordinates (Original Point) From The Employer | milestone | 0d | 2025-02-12 A | 2025-02-12 A | MS-CS-PS | 100% | 2025-01-12 | 2025-01-12 |  |  | PRE-EMP-MDC-20 | GN |  |  |  | MS | MS | MS |  |
| PRE-EMP-MDC-30 |  | Receive of Site Surveying Details From The Employer | milestone | 0d | 2025-02-12 A | 2025-02-12 A | PRE-EMP-MDC-20 SS | 100% | 2025-01-12 | 2025-01-12 |  |  | PRE-EMP-MDC-30 | GN |  |  |  | MS | MS | MS |  |
|  | 1 | **Project Main Documents From The Contractor** |  |  | 2025-01-12 | 2025-03-02 |  |  |  |  |  |  |  |  |  |  |  |  |  |  |  |
| PRE-CON-MDC-20 |  | Submission Project Baseline Schedule |  | 26d | 2025-01-12 A | 2025-03-01 A | MS-CS-PS | 100% | 2025-01-12 | 2025-02-10 |  |  | PRE-CON-MDC-20 |  |  |  |  | MB | MOB | MEP |  |
| PRE-CON-MDC-30 |  | Submission Project Health & Safety Plan |  | 26d | 2025-01-12 A | 2025-03-02 A | MS-CS-PS | 100% | 2025-01-12 | 2025-02-10 |  |  | PRE-CON-MDC-30 |  |  |  |  | MB | MOB | MEP |  |
| PRE-CON-MDC-40 |  | Submission Project Quality Control Plan |  | 26d | 2025-01-12 A | 2025-03-02 A | MS-CS-PS | 100% | 2025-01-12 | 2025-02-10 |  |  | PRE-CON-MDC-40 |  |  |  |  | MB | MOB | MEP |  |
| PRE-CON-MDC-50 |  | Submission Project Surveying Report |  | 26d | 2025-01-12 A | 2025-03-02 A | MS-CS-PS | 100% | 2025-01-12 | 2025-02-10 |  |  | PRE-CON-MDC-50 |  |  |  |  | MB | MOB | MEP |  |
| PRE-CON-MDC-60 |  | Submission Project Geotechnical Soil Report |  | 26d | 2025-01-12 A | 2025-03-02 A | MS-CS-PS | 100% | 2025-01-12 | 2025-02-10 |  |  | PRE-CON-MDC-60 |  |  |  |  | MB | MOB | MEP |  |
| PRE-CON-MDC-70 |  | Submission Project Environmental Plan |  | 26d | 2025-01-12 A | 2025-03-02 A | MS-CS-PS | 100% | 2025-01-12 | 2025-02-10 |  |  | PRE-CON-MDC-70 |  |  |  |  | MB | MOB | MEP |  |
| PRE-CON-MDC-80 |  | Submission Project Organization Chart and Communications Plan |  | 26d | 2025-01-12 A | 2025-03-02 A | MS-CS-PS | 100% | 2025-01-12 | 2025-02-10 |  |  | PRE-CON-MDC-80 |  |  |  |  | MB | MOB | MEP |  |

| ID | WBS | Activity | Duration | Start | Finish | Predecessors | Complete | Resources | Activity ID N | 02- Network-WBS | 03- Activity | 04-UOM | 05-Discipline | 01- Network | 08 Stage | Discipline | New Discipline |
| --- | --- | --- | --- | --- | --- | --- | --- | --- | --- | --- | --- | --- | --- | --- | --- | --- | --- |
|  | ENG | **Engineering Works** |  | 2025-01-12 | 2025-06-02 |  |  |  |  |  |  |  |  |  |  |  |  |
|  | DS | **Design Reviews** |  | 2025-01-12 | 2025-01-21 |  |  |  |  |  |  |  |  |  |  |  |  |
|  | INF | **Infrastructure Networks** |  | 2025-01-12 | 2025-01-21 |  |  |  |  |  |  |  |  |  |  |  |  |
|  | RD | **Road Works** |  | 2025-01-12 | 2025-01-21 |  |  |  |  |  |  |  |  |  |  |  |  |
| ENG-DS-RD-S-100 |  | Receive of Design Drawing Package for Road Works from Modon | 6d | 2025-01-12 A | 2025-01-18 A | PRE-EMP-MDC-10, PRE-EMP-MDC-20, PRE-EMP-MDC-30 | 100% | Engineering [86.27 h] | ENG-DS-RD-S-100 | DSN | DSS | Each | S | RD | EN | ENG | MEP |
| ENG-DS-RD-A-110 |  | Review and Comment of Design Drawings for Road Works by Contractor | 6d | 2025-01-15 A | 2025-01-21 A | ENG-DS-RD-S-100 FF+3d, ENG-DS-RD-S-100 SS+3d | 100% | Engineering [86.27 h] | ENG-DS-RD-A-110 | DSN | DSA | Each | A | RD | EN | ENG | MEP |
|  | SW | **Sewage Network** |  | 2025-01-12 | 2025-01-21 |  |  |  |  |  |  |  |  |  |  |  |  |
| ENG-DS-SW-S-100 |  | Receive of Design Drawing Package for Sewage Network from Modon | 6d | 2025-01-12 A | 2025-01-18 A | PRE-EMP-MDC-10, PRE-EMP-MDC-20, PRE-EMP-MDC-30 | 100% | Engineering [86.27 h] | ENG-DS-SW-S-100 | DSN | DSS | Each | S | SW | EN | ENG | MEP |
| ENG-DS-SW-A-110 |  | Review and Comment of Design Drawings for Sewage Network by Contractor | 6d | 2025-01-15 A | 2025-01-21 A | ENG-DS-SW-S-100 FF+3d, ENG-DS-SW-S-100 SS+3d | 100% | Engineering [86.27 h] | ENG-DS-SW-A-110 | DSN | DSA | Each | A | SW | EN | ENG | MEP |
|  | SD | **Storm Drainage Network** |  | 2025-01-12 | 2025-01-21 |  |  |  |  |  |  |  |  |  |  |  |  |
| ENG-DS-SD-S-100 |  | Receive of Design Drawing Package for Storm Drainage Network from Modon | 6d | 2025-01-12 A | 2025-01-18 A | PRE-EMP-MDC-10, PRE-EMP-MDC-20, PRE-EMP-MDC-30 | 100% | Engineering [86.27 h] | ENG-DS-SD-S-100 | DSN | DSS | Each | S | SD | EN | ENG | MEP |
| ENG-DS-SD-A-110 |  | Review and Comment of Design Drawings for Storm Drainage Network by Contractor | 6d | 2025-01-15 A | 2025-01-21 A | ENG-DS-SD-S-100 FF+3d, ENG-DS-SD-S-100 SS+3d | 100% | Engineering [86.27 h] | ENG-DS-SD-A-110 | DSN | DSA | Each | A | SD | EN | ENG | MEP |
|  | PW | **Potable Water Network** |  | 2025-01-12 | 2025-01-21 |  |  |  |  |  |  |  |  |  |  |  |  |
| ENG-DS-PW-S-100 |  | Receive of Design Drawing Package for Potable Water Network from Modon | 6d | 2025-01-12 A | 2025-01-18 A | PRE-EMP-MDC-10, PRE-EMP-MDC-20 | 100% | Engineering [86.27 h] | ENG-DS-PW-S-100 | DSN | DSS | Each | S | PW | EN | ENG | MEP |
| ENG-DS-PW-A-110 |  | Review and Comment of Design Drawings for Potable Water Network by Contractor | 6d | 2025-01-15 A | 2025-01-21 A | ENG-DS-PW-S-100 FF+3d, ENG-DS-PW-S-100 SS+3d | 100% | Engineering [86.27 h] | ENG-DS-PW-A-110 | DSN | DSA | Each | A | PW | EN | ENG | MEP |
|  | IR | **Irrigation Network** |  | 2025-01-12 | 2025-01-21 |  |  |  |  |  |  |  |  |  |  |  |  |
| ENG-DS-IR-S-100 |  | Receive of Design Drawing Package for Irrigation Network from Modon | 6d | 2025-01-12 A | 2025-01-18 A | PRE-EMP-MDC-10, PRE-EMP-MDC-20, PRE-EMP-MDC-30 | 100% | Engineering [86.27 h] | ENG-DS-IR-S-100 | DSN | DSS | Each | S | IR | EN | ENG | MEP |
| ENG-DS-IR-A-110 |  | Review and Comment of Design Drawings for Irrigation Network by Contractor | 6d | 2025-01-15 A | 2025-01-21 A | ENG-DS-IR-S-100 FF+3d, ENG-DS-IR-S-100 SS+3d | 100% | Engineering [86.27 h] | ENG-DS-IR-A-110 | DSN | DSA | Each | A | IR | EN | ENG | MEP |
|  | MV | **Medium Voltage Network** |  | 2025-01-12 | 2025-01-21 |  |  |  |  |  |  |  |  |  |  |  |  |
| ENG-DS-MV-S-100 |  | Receive of Design Drawing Package for Medium Voltage Network from Modon | 6d | 2025-01-12 A | 2025-01-18 A | PRE-EMP-MDC-10, PRE-EMP-MDC-20, PRE-EMP-MDC-30 | 100% | Engineering [86.27 h] | ENG-DS-MV-S-100 | DSN | DSS | Each | S | MV | EN | ENG | MEP |
| ENG-DS-MV-A-110 |  | Review and Comment of Design Drawings for Medium Voltage Network by Contractor | 6d | 2025-01-15 A | 2025-01-21 A | ENG-DS-MV-S-100 FF+3d, ENG-DS-MV-S-100 SS+3d | 100% | Engineering [86.27 h] | ENG-DS-MV-A-110 | DSN | DSA | Each | A | MV | EN | ENG | MEP |
|  | SL | **Street Lighting Network** |  | 2025-01-12 | 2025-01-21 |  |  |  |  |  |  |  |  |  |  |  |  |
| ENG-DS-SL-S-100 |  | Receive of Design Drawing Package for Street Lighting Network from Modon | 6d | 2025-01-12 A | 2025-01-18 A | PRE-EMP-MDC-10, PRE-EMP-MDC-20, PRE-EMP-MDC-30 | 100% | Engineering [86.27 h] | ENG-DS-SL-S-100 | DSN | DSS | Each | S | SL | EN | ENG | MEP |
| ENG-DS-SL-A-110 |  | Review and Comment of Design Drawings for Street Lighting Network by Contractor | 6d | 2025-01-15 A | 2025-01-21 A | ENG-DS-SL-S-100 FF+3d, ENG-DS-SL-S-100 SS+3d | 100% | Engineering [86.27 h] | ENG-DS-SL-A-110 | DSN | DSA | Each | A | SL | EN | ENG | MEP |

| ID | WBS | Activity | Duration | Start | Finish | Predecessors | Complete | Planned start | Planned finish | Resources | Activity ID N | 02- Network-WBS | 03- Activity | 04-UOM | 05-Discipline | 01- Network | 08 Stage | Discipline | New Discipline |
| --- | --- | --- | --- | --- | --- | --- | --- | --- | --- | --- | --- | --- | --- | --- | --- | --- | --- | --- | --- |
|  | TE | **Telecom Network** |  | 2025-01-12 | 2025-01-21 |  |  |  |  |  |  |  |  |  |  |  |  |  |  |
| ENG-DS-TE-S-100 |  | Receive of Design Drawing Package for Telecom Network from Modon | 6d | 2025-01-12 A | 2025-01-18 A | PRE-EMP-MDC-10, PRE-EMP-MDC-20, PRE-EMP-MDC-30 | 100% |  |  | Engineering [86.27 h] | ENG-DS-TE-S-100 | DSN | DSS | Each | S | TE | EN | ENG | MEP |
| ENG-DS-TE-A-110 |  | Review and Comment of Design Drawings for Telecom Network by Contractor | 6d | 2025-01-15 A | 2025-01-21 A | ENG-DS-TE-S-100 FF+3d, ENG-DS-TE-S-100 SS+3d | 100% |  |  | Engineering [86.27 h] | ENG-DS-TE-A-110 | DSN | DSA | Each | A | TE | EN | ENG | MEP |
|  | 1 | **Superstructure Works** |  | 2025-01-12 | 2025-01-21 |  |  |  |  |  |  |  |  |  |  |  |  |  |  |
|  | SL | **Sewage Pump Stations ( PS06 )** |  | 2025-01-12 | 2025-01-21 |  |  |  |  |  |  |  |  |  |  |  |  |  |  |
| ENG-DS-SPS-S-100 |  | Receive of Design Drawing Package for Sewage Pump Stations from Modon | 6d | 2025-01-12 A | 2025-01-18 A | PRE-EMP-MDC-10, PRE-EMP-MDC-20, PRE-EMP-MDC-30 | 100% |  |  | Engineering [86.27 h] | ENG-DS-SPS-S-100 | DSN | DSS | Each | S | SL | EN | ENG | MEP |
| ENG-DS-SPS-A-110 |  | Review and Comment of Design Drawings for Sewage Pump Stations by Contractor | 6d | 2025-01-15 A | 2025-01-21 A | ENG-DS-SPS-S-100 FF+3d, ENG-DS-SPS-S-100 SS | 100% |  |  | Engineering [86.27 h] | ENG-DS-SPS-A-110 | DSN | DSA | Each | A | SL | EN | ENG | MEP |
|  | TE | **Storm Drainage Ponds ( PO-J1 , PO-J2 )** |  | 2025-01-12 | 2025-01-21 |  |  |  |  |  |  |  |  |  |  |  |  |  |  |
| ENG-DS-DPO-S-100 |  | Receive of Design Drawing Package for Storm Drainage Ponds from Modon | 6d | 2025-01-12 A | 2025-01-18 A | PRE-EMP-MDC-10, PRE-EMP-MDC-20, PRE-EMP-MDC-30 | 100% |  |  | Engineering [86.27 h] | ENG-DS-DPO-S-100 | DSN | DSS | Each | S | TE | EN | ENG | MEP |
| ENG-DS-DPO-A-110 |  | Review and Comment of Design Drawings for Storm Drainage Ponds by Contractor | 6d | 2025-01-15 A | 2025-01-21 A | ENG-DS-DPO-S-100 FF+3d, ENG-DS-DPO-S-100 SS | 100% |  |  | Engineering [86.27 h] | ENG-DS-DPO-A-110 | DSN | DSA | Each | A | TE | EN | ENG | MEP |
|  | SD | **Shop Drawings** |  | 2025-01-22 | 2025-05-19 |  |  |  |  |  |  |  |  |  |  |  |  |  |  |
|  | INF | **Infrastructure Networks** |  | 2025-01-22 | 2025-05-19 |  |  |  |  |  |  |  |  |  |  |  |  |  |  |
|  | 10 | **Road Works** |  | 2025-01-22 | 2025-05-19 |  |  |  |  |  |  |  |  |  |  |  |  |  |  |
|  | 1 | **Road Pavement Works** |  | 2025-01-22 | 2025-05-19 |  |  |  |  |  |  |  |  |  |  |  |  |  |  |
| ENG-SH-RD-S-100 |  | Submission Shop Drawings for Plan and Profile of Road Works | 7d | 2025-01-22 A | 2025-01-29 A | ENG-DS-RD-A-110 | 100% |  |  | Engineering [86.27 h] | ENG-SH-RD-S-100 | SD | SDS | Each | S | RD | EN | ENG | MEP |
| ENG-SH-RD-S-110 |  | Submission Shop Drawings for Roads Typical Sections and Pavement Details | 7d | 2025-01-22 A | 2025-01-29 A | ENG-DS-RD-A-110 | 100% |  |  | Engineering [86.27 h] | ENG-SH-RD-S-110 | SD | SDS | Each | S | RD | EN | ENG | MEP |
| ENG-SH-RD-S-120 |  | Submission Shop Drawings of Extraover for Pedestrian ramps | 7d | 2025-01-22 A | 2025-01-29 A | ENG-DS-RD-A-110 | 100% |  |  | Engineering [86.27 h] | ENG-SH-RD-S-120 | SD | SDS | Each | S | RD | EN | ENG | MEP |
| ENG-SH-RD-S-130 |  | Submission Shop Drawings for Intersections of Road Works | 7d | 2025-01-22 A | 2025-01-29 A | ENG-DS-RD-A-110 | 100% |  |  | Engineering [86.27 h] | ENG-SH-RD-S-130 | SD | SDS | Each | S | RD | EN | ENG | MEP |
| ENG-SH-RD-A-100 |  | Approval Shop Drawings for Plan and Profile of Road Works | 8d | 2025-01-29 A | 2025-02-09 A | ENG-SH-RD-S-100 | 100% | 2025-01-30 | 2025-02-08 | Engineering [86.27 h] | ENG-SH-RD-A-100 | SD | SDA | Each | A | RD | EN | ENG | MEP |
| ENG-SH-RD-A-110 |  | Approval Shop Drawings for Roads Typical Sections and Pavement Details | 10d | 2025-01-30 A | 2025-03-19 A | ENG-SH-RD-S-110 | 100% | 2025-01-30 | 2025-02-10 | Engineering [86.27 h] | ENG-SH-RD-A-110 | SD | SDA | Each | A | RD | EN | ENG | MEP |
| ENG-SH-RD-A-120 |  | Approval Shop Drawings of Extraover for Pedestrian ramps | 10d | 2025-01-30 A | 2025-03-19 A | ENG-SH-RD-S-120 | 100% | 2025-01-30 | 2025-02-10 | Engineering [86.27 h] | ENG-SH-RD-A-120 | SD | SDA | Each | A | RD | EN | ENG | MEP |
| ENG-SH-RD-A-130 |  | Approval Shop Drawings for Intersections of Road Works | 10d | 2025-01-30 A | 2025-05-19 A | ENG-SH-RD-S-130, ENG-SH-RD-A-100 FF | 100% | 2025-01-30 | 2025-02-10 | Engineering [86.27 h] | ENG-SH-RD-A-130 | SD | SDA | Each | A | RD | EN | ENG | MEP |
|  | 10 | **Pavement Works** |  | 2025-01-22 | 2025-03-19 |  |  |  |  |  |  |  |  |  |  |  |  |  |  |
| ENG-SH-HS-S-100 |  | Submission Shop Drawings for Hardscaping Works | 6d | 2025-01-22 A | 2025-01-28 A | ENG-DS-RD-A-110 | 100% |  |  | Engineering [86.27 h] | ENG-SH-HS-S-100 | SD | SDS | Each | S | RD | EN | ENG | MEP |
| ENG-SH-HS-A-110 |  | Approval Shop Drawings for Hardscaping Works | 10d | 2025-01-29 A | 2025-03-19 A | ENG-SH-HS-S-100 | 100% | 2025-01-29 | 2025-02-09 | Engineering [86.27 h] | ENG-SH-HS-A-110 | SD | SDA | Each | A | RD | EN | ENG | MEP |

| ID | WBS | Activity | Duration | Start | Finish | Predecessors | Complete | Planned start | Planned finish | Resources | Activity ID N | 02- Network-WBS | 03- Activity | 04-UOM | 05-Discipline | 01- Network | 08 Stage | Discipline | New Discipline |
| --- | --- | --- | --- | --- | --- | --- | --- | --- | --- | --- | --- | --- | --- | --- | --- | --- | --- | --- | --- |
|  | 11 | **Traffic Sign Boards and Road Marking** |  | 2025-01-22 | 2025-03-19 |  |  |  |  |  |  |  |  |  |  |  |  |  |  |
| ENG-SH-MRK-S-110 |  | Submission Shop Drawings for Roads Markings | 6d | 2025-01-22 A | 2025-01-28 A | ENG-DS-RD-A-110 | 100% |  |  | Engineering [86.27 h] | ENG-SH-MRK-S-110 | SD | SDS | Each | S | RD | EN | ENG | MEP |
| ENG-SH-TSB-S-100 |  | Submission Shop Drawings for Traffic Signs Boards | 6d | 2025-01-22 A | 2025-01-29 A | ENG-DS-RD-A-110 | 100% | 2025-01-22 | 2025-01-28 | Engineering [86.27 h] | ENG-SH-TSB-S-100 | SD | SDS | Each | S | RD | EN | ENG | MEP |
| ENG-SH-MRK-A-110 |  | Approval Shop Drawings for Roads Markings | 10d | 2025-01-29 A | 2025-03-19 A | ENG-SH-MRK-S-110, ENG-SH-TSB-A-100 FF | 100% | 2025-01-29 | 2025-02-09 | Engineering [86.27 h] | ENG-SH-MRK-A-110 | SD | SDA | Each | A | RD | EN | ENG | MEP |
| ENG-SH-TSB-A-100 |  | Approval Shop Drawings for Traffic Signs Boards | 10d | 2025-01-29 A | 2025-03-19 A | ENG-SH-TSB-S-100 | 100% | 2025-01-29 | 2025-02-09 | Engineering [86.27 h] | ENG-SH-TSB-A-100 | SD | SDA | Each | A | RD | EN | ENG | MEP |
|  | 2 | **Sewage Network** |  | 2025-01-22 | 2025-04-28 |  |  |  |  |  |  |  |  |  |  |  |  |  |  |
|  | 1 | **Main Line Sections** |  | 2025-01-22 | 2025-04-28 |  |  |  |  |  |  |  |  |  |  |  |  |  |  |
| ENG-SH-SW-ML-S-100 |  | Submission Shop Drawings for Main Line of Sewage Network | 5d | 2025-01-22 A | 2025-01-27 A | ENG-DS-SW-A-110 | 100% |  |  | Engineering [86.27 h] | ENG-SH-SW-ML-S-100 | SD | SDS | Each | S | SW | EN | ENG | MEP |
| ENG-SH-SW-ML-A-110 |  | Approval Shop Drawings for Main Line of Sewage Network | 7d | 2025-01-28 A | 2025-04-28 A | ENG-SH-SW-ML-S-100 | 100% | 2025-01-28 | 2025-02-04 | Engineering [86.27 h] | ENG-SH-SW-ML-A-110 | SD | SDA | Each | A | SW | EN | ENG | MEP |
|  | 9 | **Storm Drainage Network** |  | 2025-01-22 | 2025-02-09 |  |  |  |  |  |  |  |  |  |  |  |  |  |  |
|  | 1 | **Main Line Sections** |  | 2025-01-22 | 2025-02-09 |  |  |  |  |  |  |  |  |  |  |  |  |  |  |
| ENG-SH-SD-ML-S-100 |  | Submission Shop Drawings for Main Line of Storm Drainage Network | 6d | 2025-01-22 A | 2025-01-28 A | ENG-DS-SD-A-110 | 100% |  |  | Engineering [86.27 h] | ENG-SH-SD-ML-S-100 | SD | SDS | Each | S | SD | EN | ENG | MEP |
| ENG-SH-SD-ML-A-110 |  | Approval Shop Drawings for Main Line of Storm Drainage Network | 10d | 2025-01-29 A | 2025-02-09 A | ENG-SH-SD-ML-S-100 | 100% |  |  | Engineering [86.27 h] | ENG-SH-SD-ML-A-110 | SD | SDA | Each | A | SD | EN | ENG | MEP |
|  | 2 | **Catch Basin Sections** |  | 2025-01-22 | 2025-02-09 |  |  |  |  |  |  |  |  |  |  |  |  |  |  |
| ENG-SH-SD-CB-S-100 |  | Submission Shop Drawings for Catch Basin of Storm Drainage Network | 6d | 2025-01-22 A | 2025-01-28 A | ENG-DS-SD-A-110 | 100% |  |  | Engineering [86.27 h] | ENG-SH-SD-CB-S-100 | SD | SDS | Each | S | SD | EN | ENG | MEP |
| ENG-SH-SD-CB-A-110 |  | Approval Shop Drawings for Catch Basin of Storm Drainage Network | 10d | 2025-01-29 A | 2025-02-09 A | ENG-SH-SD-CB-S-100 | 100% |  |  | Engineering [86.27 h] | ENG-SH-SD-CB-A-110 | SD | SDA | Each | A | SD | EN | ENG | MEP |
|  | 3 | **Potable Water Network** |  | 2025-01-22 | 2025-05-13 |  |  |  |  |  |  |  |  |  |  |  |  |  |  |
|  | 1 | **Main Line Sections** |  | 2025-01-22 | 2025-05-13 |  |  |  |  |  |  |  |  |  |  |  |  |  |  |
| ENG-SH-PW-ML-S-100 |  | Submission Shop Drawings for Main Line of Potable Water Network | 5d | 2025-01-22 A | 2025-01-27 A | ENG-DS-PW-A-110 | 100% |  |  | Engineering [86.27 h] | ENG-SH-PW-ML-S-100 | SD | SDS | Each | S | PW | EN | ENG | MEP |
| ENG-SH-PW-ML-A-110 |  | Approval Shop Drawings for Main Line of Potable Water Network | 10d | 2025-01-28 A | 2025-05-13 A | ENG-SH-PW-ML-S-100 | 100% | 2025-01-28 | 2025-02-08 | Engineering [86.27 h] | ENG-SH-PW-ML-A-110 | SD | SDA | Each | A | PW | EN | ENG | MEP |
|  | 1 | **Main Line Sections** |  |  |  |  |  |  |  |  |  |  |  |  |  |  |  |  |  |
|  | 2 | **Fire Hydrant** |  | 2025-01-22 | 2025-04-02 |  |  |  |  |  |  |  |  |  |  |  |  |  |  |
| ENG-SH-PW-FH-S-100 |  | Submission Shop Drawings for Fire Hydrant Network | 5d | 2025-01-22 A | 2025-01-27 A | ENG-DS-PW-A-110 | 100% |  |  | Engineering [86.27 h] | ENG-SH-PW-FH-S-100 | SD | SDS | Each | S | PW | EN | ENG | MEP |
| ENG-SH-PW-FH-A-110 |  | Approval Shop Drawings for Fire Hydrant Network | 10d | 2025-01-28 A | 2025-04-02 A | ENG-SH-PW-FH-S-100 | 100% | 2025-01-28 | 2025-02-08 | Engineering [86.27 h] | ENG-SH-PW-FH-A-110 | SD | SDA | Each | A | PW | EN | ENG | MEP |

| ID | WBS | Activity | Duration | Start | Finish | Predecessors | Complete | Planned start | Planned finish | Resources | Activity ID N | 02- Network-WBS | 03- Activity | 04-UOM | 05-Discipline | 01- Network | 08 Stage | Discipline | New Discipline |
| --- | --- | --- | --- | --- | --- | --- | --- | --- | --- | --- | --- | --- | --- | --- | --- | --- | --- | --- | --- |
|  | 1 | **Main Line Sections** |  |  |  |  |  |  |  |  |  |  |  |  |  |  |  |  |  |
|  | 4 | **Irrigation Network** |  | 2025-01-22 | 2025-04-28 |  |  |  |  |  |  |  |  |  |  |  |  |  |  |
|  | 1 | **Main Line Sections** |  | 2025-01-22 | 2025-04-27 |  |  |  |  |  |  |  |  |  |  |  |  |  |  |
| ENG-SH-IR-ML-S-100 |  | Submission Shop Drawings for Main Line of Irrigation Network | 6d | 2025-01-22 A | 2025-01-28 A | ENG-DS-IR-A-110 | 100% |  |  | Engineering [86.27 h] | ENG-SH-IR-ML-S-100 | SD | SDS | Each | S | IR | EN | ENG | MEP |
| ENG-SH-IR-ML-A-110 |  | Approval Shop Drawings for Main Line of Irrigation Network | 10d | 2025-01-29 A | 2025-04-27 A | ENG-SH-IR-ML-S-100 | 100% | 2025-01-29 | 2025-02-09 | Engineering [86.27 h] | ENG-SH-IR-ML-A-110 | SD | SDA | Each | A | IR | EN | ENG | MEP |
|  | 2 | **Lateral Line Sections** |  | 2025-01-22 | 2025-04-28 |  |  |  |  |  |  |  |  |  |  |  |  |  |  |
| ENG-SH-IR-LL-S-100 |  | Submission Shop Drawings for Lateral Line of Irrigation Network | 6d | 2025-01-22 A | 2025-01-28 A | ENG-DS-IR-A-110 | 100% |  |  | Engineering [86.27 h] | ENG-SH-IR-LL-S-100 | SD | SDS | Each | S | IR | EN | ENG | MEP |
| ENG-SH-IR-LL-A-110 |  | Approval Shop Drawings for Lateral Line of Irrigation Network | 10d | 2025-01-29 A | 2025-04-28 A | ENG-SH-IR-LL-S-100 | 100% | 2025-01-29 | 2025-02-09 | Engineering [86.27 h] | ENG-SH-IR-LL-A-110 | SD | SDA | Each | A | IR | EN | ENG | MEP |
|  | 5 | **Medium Voltage Network** |  | 2025-01-22 | 2025-02-09 |  |  |  |  |  |  |  |  |  |  |  |  |  |  |
| ENG-SH-MV-S-100 |  | Submission Shop Drawings for Medium Voltage Network | 6d | 2025-01-22 A | 2025-01-28 A | ENG-DS-MV-A-110 | 100% |  |  | Engineering [86.27 h] | ENG-SH-MV-S-100 | SD | SDS | Each | S | MV | EN | ENG | MEP |
| ENG-SH-MV-A-110 |  | Approval Shop Drawings for Medium Voltage Network | 10d | 2025-01-29 A | 2025-02-09 A | ENG-SH-MV-S-100 | 100% |  |  | Engineering [86.27 h] | ENG-SH-MV-A-110 | SD | SDA | Each | A | MV | EN | ENG | MEP |
|  | 7 | **Street Lighting Network** |  | 2025-01-22 | 2025-02-09 |  |  |  |  |  |  |  |  |  |  |  |  |  |  |
| ENG-SH-SL-S-100 |  | Submission Shop Drawings for Street Lighting Network | 6d | 2025-01-22 A | 2025-01-28 A | ENG-DS-SL-A-110 | 100% |  |  | Engineering [86.27 h] | ENG-SH-SL-S-100 | SD | SDS | Each | S | SL | EN | ENG | MEP |
| ENG-SH-SL-A-110 |  | Approval Shop Drawings for Street Lighting Network | 10d | 2025-01-29 A | 2025-02-09 A | ENG-SH-SL-S-100 | 100% |  |  | Engineering [86.27 h] | ENG-SH-SL-A-110 | SD | SDA | Each | A | SL | EN | ENG | MEP |
|  | 8 | **Telecom Network** |  | 2025-01-22 | 2025-02-09 |  |  |  |  |  |  |  |  |  |  |  |  |  |  |
| ENG-SH-CTV-S-100 |  | Submission Shop Drawings for CCTV Complete System | 6d | 2025-01-22 A | 2025-01-28 A | ENG-DS-TE-A-110 | 100% |  |  | Engineering [86.27 h] | ENG-SH-CTV-S-100 | SD | SDS | Each | S | TE | EN | ENG | MEP |
| ENG-SH-TE-S-100 |  | Submission Shop Drawings for Telecom Network | 6d | 2025-01-22 A | 2025-01-28 A | ENG-DS-TE-A-110 | 100% |  |  | Engineering [86.27 h] | ENG-SH-TE-S-100 | SD | SDS | Each | S | TE | EN | ENG | MEP |
| ENG-SH-CTV-A-110 |  | Approval Shop Drawings for CCTV Complete System | 10d | 2025-01-29 A | 2025-02-09 A | ENG-SH-CTV-S-100 | 100% |  |  | Engineering [86.27 h] | ENG-SH-CTV-A-110 | SD | SDA | Each | A | TE | EN | ENG | MEP |
| ENG-SH-TE-A-110 |  | Approval Shop Drawings for Telecom Network | 10d | 2025-01-29 A | 2025-02-09 A | ENG-SH-TE-S-100 | 100% |  |  | Engineering [86.27 h] | ENG-SH-TE-A-110 | SD | SDA | Each | A | TE | EN | ENG | MEP |
|  | 1 | **Superstructure Works** |  | 2025-01-22 | 2025-02-10 |  |  |  |  |  |  |  |  |  |  |  |  |  |  |
|  | SL | **Sewage Pump Stations ( PS 06 )** |  | 2025-01-22 | 2025-02-10 |  |  |  |  |  |  |  |  |  |  |  |  |  |  |
| ENG-SH-SPS-S-110 |  | Submission Shop Drawings Package for Sewage Pump Stations | 7d | 2025-01-22 A | 2025-01-29 A | ENG-DS-SPS-A-110 | 100% |  |  | Engineering [86.27 h] | ENG-SH-SPS-S-110 | DSN | DSS | Each | S | SL | EN | ENG | MEP |
| ENG-SH-SPS-A-110 |  | Approval Shop Drawings Package for Sewage Pump Stations | 10d | 2025-01-30 A | 2025-02-10 A | ENG-SH-SPS-S-110 | 100% |  |  | Engineering [86.27 h] | ENG-SH-SPS-A-110 | DSN | DSA | Each | A | SL | EN | ENG | MEP |
|  | TE | **Storm Drainage Ponds ( PO-J1 , PO-J2 )** |  | 2025-01-22 | 2025-02-10 |  |  |  |  |  |  |  |  |  |  |  |  |  |  |
| ENG-SH-DPO-S-100 |  | Submission Shop Drawings Package for Storm Drainage Ponds | 7d | 2025-01-22 A | 2025-01-29 A | ENG-DS-DPO-A-110 | 100% |  |  | Engineering [86.27 h] | ENG-SH-DPO-S-100 | DSN | DSS | Each | S | TE | EN | ENG | MEP |
| ENG-SH-DPO-A-110 |  | Approval Shop Drawings Package for Storm Drainage Ponds | 10d | 2025-01-30 A | 2025-02-10 A | ENG-SH-DPO-S-100 | 100% |  |  | Engineering [86.27 h] | ENG-SH-DPO-A-110 | DSN | DSA | Each | A | TE | EN | ENG | MEP |

| ID | WBS | Activity | Duration | Start | Finish | Predecessors | Complete | Planned start | Planned finish | Resources | Activity ID N | 02- Network-WBS | 03- Activity | 04-UOM | 05-Discipline | 01- Network | 08 Stage | Discipline | New Discipline |
| --- | --- | --- | --- | --- | --- | --- | --- | --- | --- | --- | --- | --- | --- | --- | --- | --- | --- | --- | --- |
|  | SD1 | **Method Statements** |  | 2025-01-22 | 2025-02-10 |  |  |  |  |  |  |  |  |  |  |  |  |  |  |
|  | INF | **Infrastructure Networks** |  | 2025-01-22 | 2025-02-10 |  |  |  |  |  |  |  |  |  |  |  |  |  |  |
|  | 10 | **Road Works** |  | 2025-01-22 | 2025-02-10 |  |  |  |  |  |  |  |  |  |  |  |  |  |  |
|  | 1 | **Road Pavement Works** |  | 2025-01-22 | 2025-02-10 |  |  |  |  |  |  |  |  |  |  |  |  |  |  |
| ENG-MS-RD-S-10 |  | Submission Method Statement for Plan and Profile of Road Works | 7d | 2025-01-22 A | 2025-01-29 A | ENG-DS-RD-A-110 | 100% |  |  | Engineering [86.27 h] | ENG-MS-RD-S-10 | SD | SDS | Each | S | RD | EN | ENG | MEP |
| ENG-MS-RD-S-20 |  | Submission Method Statement for Roads Typical Sections and Pavement Details | 7d | 2025-01-22 A | 2025-01-29 A | ENG-DS-RD-A-110 | 100% |  |  | Engineering [86.27 h] | ENG-MS-RD-S-20 | SD | SDS | Each | S | RD | EN | ENG | MEP |
| ENG-MS-RD-S-30 |  | Submission Method Statement of Extraover for Pedestrian ramps | 7d | 2025-01-22 A | 2025-01-29 A | ENG-DS-RD-A-110 | 100% |  |  | Engineering [86.27 h] | ENG-MS-RD-S-30 | SD | SDS | Each | S | RD | EN | ENG | MEP |
| ENG-MS-RD-S-40 |  | Submission Method Statement for Intersections of Road Works | 7d | 2025-01-22 A | 2025-01-29 A | ENG-DS-RD-A-110 | 100% |  |  | Engineering [86.27 h] | ENG-MS-RD-S-40 | SD | SDS | Each | S | RD | EN | ENG | MEP |
| ENG-MS-RD-A-10 |  | Approval Method Statement for Plan and Profile of Road Works | 8d | 2025-01-30 A | 2025-02-10 A | ENG-MS-RD-S-10 | 100% | 2025-01-30 | 2025-02-08 | Engineering [86.27 h] | ENG-MS-RD-A-10 | SD | SDA | Each | A | RD | EN | ENG | MEP |
| ENG-MS-RD-A-20 |  | Approval Method Statement for Roads Typical Sections and Pavement Details | 10d | 2025-01-30 A | 2025-02-10 A | ENG-MS-RD-S-20 | 100% |  |  | Engineering [86.27 h] | ENG-MS-RD-A-20 | SD | SDA | Each | A | RD | EN | ENG | MEP |
| ENG-MS-RD-A-30 |  | Approval Method Statement of Extraover for Pedestrian ramps | 10d | 2025-01-30 A | 2025-02-10 A | ENG-MS-RD-S-30 | 100% |  |  | Engineering [86.27 h] | ENG-MS-RD-A-30 | SD | SDA | Each | A | RD | EN | ENG | MEP |
| ENG-MS-RD-A-40 |  | Approval Method Statement for Intersections of Road Works | 10d | 2025-01-30 A | 2025-02-10 A | ENG-MS-RD-S-40, ENG-MS-RD-A-10 FF | 100% |  |  | Engineering [86.27 h] | ENG-MS-RD-A-40 | SD | SDA | Each | A | RD | EN | ENG | MEP |
|  | 10 | **Pavement Works** |  | 2025-01-22 | 2025-02-10 |  |  |  |  |  |  |  |  |  |  |  |  |  |  |
| ENG-MS-HS-S-10 |  | Submission Method Statement for Hardscaping Works | 7d | 2025-01-22 A | 2025-01-29 A | ENG-DS-RD-A-110 | 100% |  |  | Engineering [86.27 h] | ENG-MS-HS-S-10 | SD | SDS | Each | S | RD | EN | ENG | MEP |
| ENG-MS-HS-A-10 |  | Approval Method Statement for Hardscaping Works | 10d | 2025-01-30 A | 2025-02-10 A | ENG-MS-HS-S-10 | 100% |  |  | Engineering [86.27 h] | ENG-MS-HS-A-10 | SD | SDA | Each | A | RD | EN | ENG | MEP |
|  | 11 | **Traffic Sign Boards and Road Marking** |  | 2025-01-22 | 2025-02-10 |  |  |  |  |  |  |  |  |  |  |  |  |  |  |
| ENG-MS-MRK-S-10 |  | Submission Method Statement for Roads Markings | 7d | 2025-01-22 A | 2025-01-29 A | ENG-DS-RD-A-110 | 100% |  |  | Engineering [86.27 h] | ENG-MS-MRK-S-10 | SD | SDS | Each | S | RD | EN | ENG | MEP |
| ENG-MS-TSB-S-10 |  | Submission Method Statement for Traffic Signs Boards | 7d | 2025-01-22 A | 2025-01-29 A | ENG-DS-RD-A-110 | 100% |  |  | Engineering [86.27 h] | ENG-MS-TSB-S-10 | SD | SDS | Each | S | RD | EN | ENG | MEP |
| ENG-MS-MRK-A-10 |  | Approval Method Statement for Roads Markings | 10d | 2025-01-30 A | 2025-02-10 A | ENG-MS-MRK-S-10, ENG-MS-TSB-A-10 FF | 100% |  |  | Engineering [86.27 h] | ENG-MS-MRK-A-10 | SD | SDA | Each | A | RD | EN | ENG | MEP |
| ENG-MS-TSB-A-10 |  | Approval Method Statement for Traffic Signs Boards | 10d | 2025-01-30 A | 2025-02-10 A | ENG-MS-TSB-S-10 | 100% |  |  | Engineering [86.27 h] | ENG-MS-TSB-A-10 | SD | SDA | Each | A | RD | EN | ENG | MEP |
|  | 2 | **Sewage Network** |  | 2025-01-22 | 2025-02-08 |  |  |  |  |  |  |  |  |  |  |  |  |  |  |
|  | 1 | **Main Line Sections** |  | 2025-01-22 | 2025-02-08 |  |  |  |  |  |  |  |  |  |  |  |  |  |  |
| ENG-MS-SW-ML-S-100 |  | Submission Method Statement for Main Line of Sewage Network | 5d | 2025-01-22 A | 2025-01-27 A | ENG-DS-SW-A-110 | 100% |  |  | Engineering [86.27 h] | ENG-MS-SW-ML-S-100 | SD | SDS | Each | S | SW | EN | ENG | MEP |
| ENG-MS-SW-ML-A-110 |  | Approval Method Statement for Main Line of Sewage Network | 7d | 2025-01-28 A | 2025-02-08 A | ENG-MS-SW-ML-S-100 | 100% | 2025-01-28 | 2025-02-04 | Engineering [86.27 h] | ENG-MS-SW-ML-A-110 | SD | SDA | Each | A | SW | EN | ENG | MEP |

| ID | WBS | Activity | Duration | Start | Finish | Predecessors | Complete | Resources | Activity ID N | 02- Network-WBS | 03- Activity | 04-UOM | 05-Discipline | 01- Network | 08 Stage | Discipline | New Discipline |
| --- | --- | --- | --- | --- | --- | --- | --- | --- | --- | --- | --- | --- | --- | --- | --- | --- | --- |
|  | 9 | **Storm Drainage Network** |  | 2025-01-22 | 2025-02-09 |  |  |  |  |  |  |  |  |  |  |  |  |
|  | 1 | **Main Line Sections** |  | 2025-01-22 | 2025-02-09 |  |  |  |  |  |  |  |  |  |  |  |  |
| ENG-MS-SD-ML-S-100 |  | Submission Method Statement for Main Line of Storm Drainage Network | 6d | 2025-01-22 A | 2025-01-28 A | ENG-DS-SD-A-110 | 100% | Engineering [86.27 h] | ENG-MS-SD-ML-S-100 | SD | SDS | Each | S | SD | EN | ENG | MEP |
| ENG-MS-SD-ML-A-110 |  | Approval Method Statement for Main Line of Storm Drainage Network | 10d | 2025-01-29 A | 2025-02-09 A | ENG-MS-SD-ML-S-100 | 100% | Engineering [86.27 h] | ENG-MS-SD-ML-A-110 | SD | SDA | Each | A | SD | EN | ENG | MEP |
|  | 2 | **Catch Basin Sections** |  | 2025-01-22 | 2025-02-09 |  |  |  |  |  |  |  |  |  |  |  |  |
| ENG-MS-SD-CB-S-100 |  | Submission Method Statement for Catch Basin of Storm Drainage Network | 6d | 2025-01-22 A | 2025-01-28 A | ENG-DS-SD-A-110 | 100% | Engineering [86.27 h] | ENG-MS-SD-CB-S-100 | SD | SDS | Each | S | SD | EN | ENG | MEP |
| ENG-MS-SD-CB-A-110 |  | Approval Method Statement for Catch Basin of Storm Drainage Network | 10d | 2025-01-29 A | 2025-02-09 A | ENG-MS-SD-CB-S-100 | 100% | Engineering [86.27 h] | ENG-MS-SD-CB-A-110 | SD | SDA | Each | A | SD | EN | ENG | MEP |
|  | 3 | **Potable Water Network** |  | 2025-01-22 | 2025-02-08 |  |  |  |  |  |  |  |  |  |  |  |  |
|  | 1 | **Main Line Sections** |  | 2025-01-22 | 2025-02-08 |  |  |  |  |  |  |  |  |  |  |  |  |
| ENG-MS-PW-ML-S-100 |  | Submission Method Statement for Main Line of Potable Water Network | 5d | 2025-01-22 A | 2025-01-27 A | ENG-DS-PW-A-110 | 100% | Engineering [86.27 h] | ENG-MS-PW-ML-S-100 | SD | SDS | Each | S | PW | EN | ENG | MEP |
| ENG-MS-PW-ML-A-110 |  | Approval Method Statement for Main Line of Potable Water Network | 10d | 2025-01-28 A | 2025-02-08 A | ENG-MS-PW-ML-S-100 | 100% | Engineering [86.27 h] | ENG-MS-PW-ML-A-110 | SD | SDA | Each | A | PW | EN | ENG | MEP |
|  | 4 | **Irrigation Network** |  | 2025-01-22 | 2025-02-09 |  |  |  |  |  |  |  |  |  |  |  |  |
|  | 1 | **Main Line Sections** |  | 2025-01-22 | 2025-02-09 |  |  |  |  |  |  |  |  |  |  |  |  |
| ENG-MS-IR-ML-S-100 |  | Submission Method Statement for Main Line of Irrigation Network | 6d | 2025-01-22 A | 2025-01-28 A | ENG-DS-IR-A-110 | 100% | Engineering [86.27 h] | ENG-MS-IR-ML-S-100 | SD | SDS | Each | S | IR | EN | ENG | MEP |
| ENG-MS-IR-ML-A-110 |  | Approval Method Statement for Main Line of Irrigation Network | 10d | 2025-01-29 A | 2025-02-09 A | ENG-MS-IR-ML-S-100 | 100% | Engineering [86.27 h] | ENG-MS-IR-ML-A-110 | SD | SDA | Each | A | IR | EN | ENG | MEP |
|  | 2 | **Lateral Line Sections** |  | 2025-01-22 | 2025-02-09 |  |  |  |  |  |  |  |  |  |  |  |  |
| ENG-MS-IR-LL-S-100 |  | Submission Method Statement for Lateral Line of Irrigation Network | 6d | 2025-01-22 A | 2025-01-28 A | ENG-DS-IR-A-110 | 100% | Engineering [86.27 h] | ENG-MS-IR-LL-S-100 | SD | SDS | Each | S | IR | EN | ENG | MEP |
| ENG-MS-IR-LL-A-110 |  | Approval Method Statement for Lateral Line of Irrigation Network | 10d | 2025-01-29 A | 2025-02-09 A | ENG-MS-IR-LL-S-100 | 100% | Engineering [86.27 h] | ENG-MS-IR-LL-A-110 | SD | SDA | Each | A | IR | EN | ENG | MEP |
|  | 5 | **Medium Voltage Network** |  | 2025-01-22 | 2025-02-09 |  |  |  |  |  |  |  |  |  |  |  |  |
| ENG-MS-MV-S-100 |  | Submission Method Statement for Medium Voltage Network | 6d | 2025-01-22 A | 2025-01-28 A | ENG-DS-MV-A-110 | 100% | Engineering [86.27 h] | ENG-MS-MV-S-100 | SD | SDS | Each | S | MV | EN | ENG | MEP |
| ENG-MS-MV-A-110 |  | Approval Method Statement for Medium Voltage Network | 10d | 2025-01-29 A | 2025-02-09 A | ENG-MS-MV-S-100 | 100% | Engineering [86.27 h] | ENG-MS-MV-A-110 | SD | SDA | Each | A | MV | EN | ENG | MEP |
|  | 7 | **Street Lighting Network** |  | 2025-01-22 | 2025-02-09 |  |  |  |  |  |  |  |  |  |  |  |  |
| ENG-MS-SL-S-100 |  | Submission Method Statement for Street Lighting Network | 6d | 2025-01-22 A | 2025-01-28 A | ENG-DS-SL-A-110 | 100% | Engineering [86.27 h] | ENG-MS-SL-S-100 | SD | SDS | Each | S | SL | EN | ENG | MEP |
| ENG-MS-SL-A-110 |  | Approval Method Statement for Street Lighting Network | 10d | 2025-01-29 A | 2025-02-09 A | ENG-MS-SL-S-100 | 100% | Engineering [86.27 h] | ENG-MS-SL-A-110 | SD | SDA | Each | A | SL | EN | ENG | MEP |

| ID | WBS | Activity | Duration | Start | Finish | Predecessors | Complete | Planned start | Planned finish | Resources | Activity ID N | 02- Network-WBS | 03- Activity | 04-UOM | 05-Discipline | 01- Network | 08 Stage | Discipline | New Discipline |
| --- | --- | --- | --- | --- | --- | --- | --- | --- | --- | --- | --- | --- | --- | --- | --- | --- | --- | --- | --- |
|  | 8 | **Telecom Network** |  | 2025-01-22 | 2025-02-09 |  |  |  |  |  |  |  |  |  |  |  |  |  |  |
| ENG-MS-CTV-S-100 |  | Submission Method Statement for CCTV Complete System | 6d | 2025-01-22 A | 2025-01-28 A | ENG-DS-TE-A-110 | 100% |  |  | Engineering [86.27 h] | ENG-MS-CTV-S-100 | SD | SDS | Each | S | TE | EN | ENG | MEP |
| ENG-MS-TE-S-100 |  | Submission Method Statement for Telecom Network | 6d | 2025-01-22 A | 2025-01-28 A | ENG-DS-TE-A-110 | 100% |  |  | Engineering [86.27 h] | ENG-MS-TE-S-100 | SD | SDS | Each | S | TE | EN | ENG | MEP |
| ENG-MS-CTV-A-110 |  | Approval Method Statement for CCTV Complete System | 10d | 2025-01-29 A | 2025-02-09 A | ENG-MS-CTV-S-100 | 100% |  |  | Engineering [86.27 h] | ENG-MS-CTV-A-110 | SD | SDA | Each | A | TE | EN | ENG | MEP |
| ENG-MS-TE-A-110 |  | Approval Method Statement for Telecom Network | 10d | 2025-01-29 A | 2025-02-09 A | ENG-MS-TE-S-100 | 100% |  |  | Engineering [86.27 h] | ENG-MS-TE-A-110 | SD | SDA | Each | A | TE | EN | ENG | MEP |
|  | 1 | **Superstructure Works** |  | 2025-01-22 | 2025-02-10 |  |  |  |  |  |  |  |  |  |  |  |  |  |  |
|  | SL | **Sewage Pump Stations ( PS 06 )** |  | 2025-01-22 | 2025-02-10 |  |  |  |  |  |  |  |  |  |  |  |  |  |  |
| ENG-MS-SPS-S-100 |  | Submission Method Statement Package for Sewage Pump Stations | 7d | 2025-01-22 A | 2025-01-29 A | ENG-DS-SPS-A-110 | 100% |  |  | Engineering [86.27 h] | ENG-MS-SPS-S-100 | DSN | DSS | Each | S | SL | EN | ENG | MEP |
| ENG-MS-SPS-A-110 |  | Approval Method Statement Package for Sewage Pump Stations | 10d | 2025-01-30 A | 2025-02-10 A | ENG-MS-SPS-S-100 | 100% |  |  | Engineering [86.27 h] | ENG-MS-SPS-A-110 | DSN | DSA | Each | A | SL | EN | ENG | MEP |
|  | TE | **Storm Drainage Ponds ( PO-J1 , PO-J2 )** |  | 2025-01-22 | 2025-02-10 |  |  |  |  |  |  |  |  |  |  |  |  |  |  |
| ENG-MS-DPO-S-100 |  | Submission Method Statement Package for Storm Drainage Ponds | 7d | 2025-01-22 A | 2025-01-29 A | ENG-DS-DPO-A-110 | 100% |  |  | Engineering [86.27 h] | ENG-MS-DPO-S-100 | DSN | DSS | Each | S | TE | EN | ENG | MEP |
| ENG-MS-DPO-A-110 |  | Approval Method Statement Package for Storm Drainage Ponds | 10d | 2025-01-30 A | 2025-02-10 A | ENG-MS-DPO-S-100 | 100% |  |  | Engineering [86.27 h] | ENG-MS-DPO-A-110 | DSN | DSA | Each | A | TE | EN | ENG | MEP |
|  | SD11 | **Material Submittals** |  | 2025-01-22 | 2025-06-02 |  |  |  |  |  |  |  |  |  |  |  |  |  |  |
|  | 2 | **Short Lead Time Items** |  | 2025-01-22 | 2025-06-01 |  |  |  |  |  |  |  |  |  |  |  |  |  |  |
|  | INF | **Infrastructure Networks** |  | 2025-01-22 | 2025-06-01 |  |  |  |  |  |  |  |  |  |  |  |  |  |  |
|  | 10 | **Road Works** |  | 2025-01-22 | 2025-06-01 |  |  |  |  |  |  |  |  |  |  |  |  |  |  |
|  | MS | **Submission of Material** |  | 2025-01-22 | 2025-05-27 |  |  |  |  |  |  |  |  |  |  |  |  |  |  |
|  | 1 | **Roads Works** |  | 2025-01-22 | 2025-05-26 |  |  |  |  |  |  |  |  |  |  |  |  |  |  |
| ENG-MT-RD-S-100 |  | Material Submittal for Subgrade of Road Works | 12d | 2025-01-22 A | 2025-02-04 A | ENG-DS-RD-A-110 | 100% |  |  | Engineering [86.27 h] | ENG-MT-RD-S-100 | PRC | MS | Each | S | RD | EN | ENG | MEP |
| ENG-MT-RD-S-110 |  | Material Submittal for Aggregate Base Course of Road Works | 12d | 2025-01-22 A | 2025-02-04 A | ENG-DS-RD-A-110 | 100% |  |  | Engineering [86.27 h] | ENG-MT-RD-S-110 | PRC | MS | Each | S | RD | EN | ENG | MEP |
| ENG-MT-RD-S-120 |  | Material Submittal for Prime Coat of Road Works | 12d | 2025-05-13 A | 2025-05-26 A | ENG-DS-RD-A-110 | 100% | 2025-01-22 | 2025-02-04 | Engineering [86.27 h] | ENG-MT-RD-S-120 | PRC | MS | Each | S | RD | EN | ENG | MEP |
| ENG-MT-RD-S-130 |  | Material Submittal for Bituminous Base & Wearing Courses of Road Works | 12d | 2025-05-13 A | 2025-05-26 A | ENG-DS-RD-A-110 | 100% | 2025-01-22 | 2025-02-04 | Engineering [86.27 h] | ENG-MT-RD-S-130 | PRC | MS | Each | S | RD | EN | ENG | MEP |
|  | 10 | **Pavement Works** |  | 2025-01-27 | 2025-05-27 |  |  |  |  |  |  |  |  |  |  |  |  |  |  |
| ENG-MT-RD-S-140 |  | Material Submittal for Interlock Tiles of Landscaping | 12d | 2025-01-27 A | 2025-03-15 A | ENG-DS-RD-A-110 | 100% | 2025-01-22 | 2025-02-04 | Engineering [86.27 h] | ENG-MT-RD-S-140 | PRC | MS | Each | S | RD | EN | ENG | MEP |
| ENG-MT-RD-S-150 |  | Material Submittal for Curbstones of Landscaping | 12d | 2025-04-26 A | 2025-05-27 A | ENG-DS-RD-A-110 | 100% | 2025-01-22 | 2025-02-04 | Engineering [86.27 h] | ENG-MT-RD-S-150 | PRC | MS | Each | S | RD | EN | ENG | MEP |

| ID | WBS | Activity | Duration | Start | Finish | Predecessors | Complete | Planned start | Planned finish | Resources | Activity ID N | 02- Network-WBS | 03- Activity | 04-UOM | 05-Discipline | 01- Network | 08 Stage | Discipline | New Discipline |
| --- | --- | --- | --- | --- | --- | --- | --- | --- | --- | --- | --- | --- | --- | --- | --- | --- | --- | --- | --- |
|  | 11 | **Traffic Signs Boards and Roads Marking** |  | 2025-05-13 | 2025-05-26 |  |  |  |  |  |  |  |  |  |  |  |  |  |  |
| ENG-MT-TS-S-100 |  | Material Submittal for Traffic Signs Boards of Road Works | 12d | 2025-05-13 A | 2025-05-26 A | ENG-DS-RD-A-110 | 100% | 2025-01-22 | 2025-02-04 | Engineering [86.27 h] | ENG-MT-TS-S-100 | PRC | MS | Each | S | RD | EN | ENG | MEP |
| ENG-MT-TS-S-110 |  | Material Submittal for Road Markings of Road Works | 12d | 2025-05-13 A | 2025-05-25 A | ENG-DS-RD-A-110 | 100% | 2025-01-22 | 2025-02-04 | Engineering [86.27 h] | ENG-MT-TS-S-110 | PRC | MS | Each | S | RD | EN | ENG | MEP |
|  | NA | **Approval of Material** |  | 2025-01-27 | 2025-06-01 |  |  |  |  |  |  |  |  |  |  |  |  |  |  |
|  | 1 | **Road Works** |  | 2025-02-05 | 2025-06-01 |  |  |  |  |  |  |  |  |  |  |  |  |  |  |
| ENG-MT-RD-A-100 |  | Material Approval for Subgrade of Road Works | 5d | 2025-02-05 A | 2025-03-13 A | ENG-MT-RD-S-100 | 100% | 2025-02-05 | 2025-02-10 | Engineering [86.27 h]; 300mm thick Subgrade, including subgrade preparation, CBR?25% | ENG-MT-RD-A-100 | PRC | MA | Each | A | RD | EN | ENG | MEP |
| ENG-MT-RD-A-110 |  | Material Approval for Aggregate Base Course of Road Works | 5d | 2025-02-05 A | 2025-03-13 A | ENG-MT-RD-S-110 | 100% | 2025-02-05 | 2025-02-10 | Engineering [86.27 h]; Aggregate base course 200mm thick after compaction in two layers(Grading 1); CBR?80%; including watering, compaction and testing | ENG-MT-RD-A-110 | PRC | MA | Each | A | RD | EN | ENG | MEP |
| ENG-MT-RD-A-120 |  | Material Approval for Prime Coat of Road Works | 5d | 2025-05-27 A | 2025-06-01 A | ENG-MT-RD-S-120 | 100% | 2025-02-05 | 2025-02-10 | Engineering [86.27 h]; Aggregate base course 200mm thick after compaction in two layers(Grading 1); CBR?80%; including watering, compaction and testing | ENG-MT-RD-A-120 | PRC | MA | Each | A | RD | EN | ENG | MEP |
| ENG-MT-RD-A-130 |  | Material Approval for Bituminous Base & Wearing Courses of Road Works | 5d | 2025-05-27 A | 2025-06-01 A | ENG-MT-RD-S-130 | 100% | 2025-02-05 | 2025-02-10 | Engineering [86.27 h]; Bituminous base course(Grading I - Class A), 70mm thick after compaction including Prime Coat (MC1); Bituminous concrete wearing course, 50 mm thick, after compaction(Grading I - Class A), including tack coat (RC) | ENG-MT-RD-A-130 | PRC | MA | Each | A | RD | EN | ENG | MEP |
|  | 2 | **Pavement Works** |  | 2025-01-27 | 2025-04-27 |  |  |  |  |  |  |  |  |  |  |  |  |  |  |
| ENG-MT-RD-A-140 |  | Material Approval of Interlock Tiles for Landscaping | 10d | 2025-01-27 A | 2025-03-15 A | ENG-MT-RD-S-140 | 100% | 2025-02-05 | 2025-02-16 | Engineering [86.27 h]; Interlocking block pavers for sidewalk/footpath 60mm thick on and including 30mm Sand Bedding, 200mm Aggregate subbase, all in accordance with authority standards and complete as per specifications; Extraover for Pedestrian ramps | ENG-MT-RD-A-140 | PRC | MA | Each | A | RD | EN | ENG | MEP |
| ENG-MT-RD-A-150 |  | Material Approval of Curbstones for Landscaping | 10d | 2025-04-26 A | 2025-04-27 A | ENG-MT-RD-S-150 | 100% | 2025-02-05 | 2025-02-16 | Engineering [86.27 h]; Precast Concrete Kerb, Type K1; Precast Concrete Kerb, Type L1 | ENG-MT-RD-A-150 | PRC | MA | Each | A | RD | EN | ENG | MEP |
|  | 3 | **Traffic Signs Boards and Roads Marking** |  | 2025-05-26 | 2025-05-31 |  |  |  |  |  |  |  |  |  |  |  |  |  |  |
| ENG-MT-TS-A-110 |  | Material Approval for Road Markings of Road Works | 10d | 2025-05-26 A | 2025-05-31 A | ENG-MT-TS-S-110 | 100% | 2025-02-05 | 2025-02-16 | Engineering [86.27 h]; Retroreflective Thermoplastic White, Traffic lines; Retroreflective Thermoplastic Yellow, Traffic lines; Retroreflective raised pavement markers(Type A) | ENG-MT-TS-A-110 | PRC | MA | Each | A | RD | EN | ENG | MEP |
| ENG-MT-TS-A-100 |  | Material Approval for Traffic Signs Boards of Road Works | 10d | 2025-05-27 A | 2025-05-31 A | ENG-MT-TS-S-100 | 100% | 2025-02-05 | 2025-02-16 | Engineering [86.27 h]; Traffic signs, ground mounted, Sheet Alumenium, (breakaway) Single post, with all accessories; Straight Arrow; Right or Left Arrow; Straight-Right Arrow; Straight-Left Arrow | ENG-MT-TS-A-100 | PRC | MA | Each | A | RD | EN | ENG | MEP |
|  | 2 | **Sewage Network** |  | 2025-01-22 | 2025-05-15 |  |  |  |  |  |  |  |  |  |  |  |  |  |  |
|  | MS | **Submission of Material** |  | 2025-01-22 | 2025-01-29 |  |  |  |  |  |  |  |  |  |  |  |  |  |  |
|  | 1 | **Main Line Sections** |  | 2025-01-22 | 2025-01-29 |  |  |  |  |  |  |  |  |  |  |  |  |  |  |
| ENG-MT-SW-ML-S-100 |  | Material Submittal for Manholes of Sewage Network | 5d | 2025-01-22 A | 2025-01-29 A | ENG-DS-SW-A-110 | 100% | 2025-01-22 | 2025-01-27 | Engineering [86.27 h] | ENG-MT-SW-ML-S-100 | PRC | MS | Each | S | SW | EN | ENG | MEP |
| ENG-MT-SW-ML-S-110 |  | Material Submittal for Main Line Pipes of Sewage Network | 7d | 2025-01-22 A | 2025-01-29 A | ENG-DS-SW-A-110 | 100% |  |  | Engineering [86.27 h] | ENG-MT-SW-ML-S-110 | PRC | MS | Each | S | SW | EN | ENG | MEP |
|  | 3 | **Testing and Finishes** |  | 2025-01-22 | 2025-01-29 |  |  |  |  |  |  |  |  |  |  |  |  |  |  |
| ENG-MT-SW-TF-S-100 |  | Material Submittal for Manhole Covers of Sewage Network | 7d | 2025-01-22 A | 2025-01-29 A | ENG-DS-SW-A-110 | 100% |  |  | Engineering [86.27 h] | ENG-MT-SW-TF-S-100 | PRC | MS | Each | S | SW | EN | ENG | MEP |
| ENG-MT-SW-TF-S-120 |  | Material Submittal for Membrane Insulation of Sewage Network | 7d | 2025-01-22 A | 2025-01-29 A | ENG-DS-SW-A-110 | 100% |  |  | Engineering [86.27 h] | ENG-MT-SW-TF-S-120 | PRC | MS | Each | S | SW | EN | ENG | MEP |
|  | MA | **Approval of Material** |  | 2025-01-30 | 2025-05-15 |  |  |  |  |  |  |  |  |  |  |  |  |  |  |
|  | 1 | **Main Line Sections** |  | 2025-01-30 | 2025-04-20 |  |  |  |  |  |  |  |  |  |  |  |  |  |  |
| ENG-MT-SW-ML-A-100 |  | Material Approval for Manholes of Sewage Network | 6d | 2025-01-30 A | 2025-04-20 A | ENG-MT-SW-ML-S-100 | 100% | 2025-01-28 | 2025-02-03 | Engineering [86.27 h]; Washout valve chamber; Air release valve chamber; Depth: not exceeding 1.5m; Depth: 1.5 - 2.5m; Depth: 2.5 - 3.5m; Depth: 3.5 - 4.5m; Depth: 4.5 - 5.5m; Depth: 5.5 - 6.5m; Depth:6.5 - 7.5m; Depth: more than 7.5m | ENG-MT-SW-ML-A-100 | PRC | MA | Each | A | SW | EN | ENG | MEP |
| ENG-MT-SW-ML-A-110 |  | Material Approval for Main Line Pipes of Sewage Network | 10d | 2025-01-30 A | 2025-02-10 A | ENG-MT-SW-ML-S-110 | 100% |  |  | Engineering [86.27 h]; Nominal bore : 160mm; Depth : 0.0m - 1.5m; Nominal bore : 160mm; Depth : 1.5m - 2.5m; Nominal bore : 200mm; Depth : 0.0m - 1.5m; Nominal bore : 200mm; Depth : 1.5m - 2.5m; Nominal bore : 200mm; Depth : 2.5m - 3.5m; Nominal bore : 200mm; Depth : 3.5m - 4.5m; Nominal bore : 200mm; Depth : 4.5m -5.5m; Nominal bore : 200mm; Depth : 5.5m - 6.5m; Nominal bore : 250mm; Depth : 4.5m -5.5m; Nominal bore : 250mm; Depth : 5.5m - 6.5m; Nominal bore : 315mm; Depth : 4.5m -5.5m; Nominal bore : 315mm; Depth : 6.5m - 7.5m; Depth : 1.5 - 2.5m; Depth : 2.5 - 3.5m; Depth : 3.5 - 4.5m; Depth : 4.5 - 5.5m; Depth : 5.5 - 6.5m; Depth : 6.5 -7.5m; Depth :more than 7.5m; HDPE force main DN 800mm diameter, in trenches depth: 0- 1.5m; HDPE force main DN 800mm diameter, in trenches depth: 1.51- 2.5m; Washout valve 200mm, on 800mm dia. pipe; Air release valve 110 mm dia, on 800mm dia. pipe | ENG-MT-SW-ML-A-110 | PRC | MA | Each | A | SW | EN | ENG | MEP |

| ID | WBS | Activity | Duration | Start | Finish | Predecessors | Complete | Planned start | Planned finish | Resources | Activity ID N | 02- Network-WBS | 03- Activity | 04-UOM | 05-Discipline | 01- Network | 08 Stage | Discipline | New Discipline |
| --- | --- | --- | --- | --- | --- | --- | --- | --- | --- | --- | --- | --- | --- | --- | --- | --- | --- | --- | --- |
|  | 3 | **Testing and Finishes** |  | 2025-03-05 | 2025-05-15 |  |  |  |  |  |  |  |  |  |  |  |  |  |  |
| ENG-MT-SW-TF-A-100 |  | Material Approval for Manhole Covers of Sewage Network | 10d | 2025-03-05 A | 2025-05-15 A | ENG-MT-SW-TF-S-100 | 100% | 2025-01-30 | 2025-02-10 | Engineering [86.27 h]; Depth: not exceeding 1.5m; Depth: 1.5 - 2.5m; Depth: 2.5 - 3.5m; Depth: 3.5 - 4.5m; Depth: 4.5 - 5.5m; Depth: 5.5 - 6.5m; Depth:6.5 - 7.5m; Depth: more than 7.5m | ENG-MT-SW-TF-A-100 | PRC | MA | Each | A | SW | EN | ENG | MEP |
| ENG-MT-SW-TF-A-120 |  | Material Approval for Membrane Insulation of Sewage Network | 10d | 2025-03-06 A | 2025-03-15 A | ENG-MT-SW-TF-S-120 | 100% | 2025-01-30 | 2025-02-10 | Engineering [86.27 h]; Depth: not exceeding 1.5m; Depth: 1.5 - 2.5m; Depth: 2.5 - 3.5m; Depth: 3.5 - 4.5m; Depth: 4.5 - 5.5m; Depth: 5.5 - 6.5m; Depth:6.5 - 7.5m; Depth: more than 7.5m | ENG-MT-SW-TF-A-120 | PRC | MA | Each | A | SW | EN | ENG | MEP |
|  | 9 | **Storm Drainage Network** |  | 2025-01-22 | 2025-02-20 |  |  |  |  |  |  |  |  |  |  |  |  |  |  |
|  | MS | **Submission of Material** |  | 2025-01-22 | 2025-01-29 |  |  |  |  |  |  |  |  |  |  |  |  |  |  |
|  | 1 | **Main Line Sections** |  | 2025-01-22 | 2025-01-29 |  |  |  |  |  |  |  |  |  |  |  |  |  |  |
| ENG-MT-SD-ML-S-100 |  | Material Submittal for Manholes of Storm Drainage Network | 7d | 2025-01-22 A | 2025-01-29 A | ENG-DS-SD-A-110 | 100% |  |  | Engineering [86.27 h] | ENG-MT-SD-ML-S-100 | PRC | MS | Each | S | SD | EN | ENG | MEP |
| ENG-MT-SD-ML-S-110 |  | Material Submittal for Main Line Pipes of Storm Drainage Network | 7d | 2025-01-22 A | 2025-01-29 A | ENG-DS-SD-A-110 | 100% |  |  | Engineering [86.27 h] | ENG-MT-SD-ML-S-110 | PRC | MS | Each | S | SD | EN | ENG | MEP |
|  | 2 | **Catch Basin Sections** |  | 2025-01-22 | 2025-01-29 |  |  |  |  |  |  |  |  |  |  |  |  |  |  |
| ENG-MT-SD-CB-S-100 |  | Material Submittal for Catch Basins of Storm Drainage Network | 7d | 2025-01-22 A | 2025-01-29 A | ENG-DS-SD-A-110 | 100% |  |  | Engineering [86.27 h] | ENG-MT-SD-CB-S-100 | PRC | MS | Each | S | SD | EN | ENG | MEP |
| ENG-MT-SD-CB-S-110 |  | Material Submittal for Catch Basin Pipes of Storm Drainage Network | 7d | 2025-01-22 A | 2025-01-29 A | ENG-DS-SD-A-110 | 100% |  |  | Engineering [86.27 h] | ENG-MT-SD-CB-S-110 | PRC | MS | Each | S | SD | EN | ENG | MEP |
|  | 3 | **Testing and Finishes** |  | 2025-01-22 | 2025-01-29 |  |  |  |  |  |  |  |  |  |  |  |  |  |  |
| ENG-MT-SD-TF-S-100 |  | Material Submittal for Manhole Covers of Storm Drainage Network | 7d | 2025-01-22 A | 2025-01-29 A | ENG-DS-SD-A-110 | 100% |  |  | Engineering [86.27 h] | ENG-MT-SD-TF-S-100 | PRC | MS | Each | S | SD | EN | ENG | MEP |
| ENG-MT-SD-TF-S-110 |  | Material Submittal for Catch Basin Covers of Storm Drainage Network | 7d | 2025-01-22 A | 2025-01-29 A | ENG-DS-SD-A-110 | 100% |  |  | Engineering [86.27 h] | ENG-MT-SD-TF-S-110 | PRC | MS | Each | S | SD | EN | ENG | MEP |
| ENG-MT-SD-TF-S-120 |  | Material Submittal for Epoxy Insulation of Storm Drainage Network | 7d | 2025-01-22 A | 2025-01-29 A | ENG-DS-SD-A-110 | 100% |  |  | Engineering [86.27 h] | ENG-MT-SD-TF-S-120 | PRC | MS | Each | S | SD | EN | ENG | MEP |
|  | MA | **Approval of Material** |  | 2025-01-30 | 2025-02-20 |  |  |  |  |  |  |  |  |  |  |  |  |  |  |
|  | 1 | **Main Line Sections** |  | 2025-01-30 | 2025-02-10 |  |  |  |  |  |  |  |  |  |  |  |  |  |  |
| ENG-MT-SD-ML-A-100 |  | Material Approval for Manholes of Storm Drainage Network | 10d | 2025-01-30 A | 2025-02-10 A | ENG-MT-SD-ML-S-100 | 100% |  |  | Engineering [86.27 h]; MH ; depth: 0.0m - 1.5m; MH ; depth: 1.51m - 2.5m; MH ; depth: 2.51 - 3.5m; MH ; depth: 1.51m - 2.5m with back drop less than 1.0 m; MH ; depth: 2.51 - 3.5m with back drop less than 1.0 m; MH ; depth: 3.51 - 4.5m | ENG-MT-SD-ML-A-100 | PRC | MA | Each | A | SD | EN | ENG | MEP |
| ENG-MT-SD-ML-A-110 |  | Material Approval for Main Line Pipes of Storm Drainage Network | 10d | 2025-01-30 A | 2025-02-10 A | ENG-MT-SD-ML-S-110 | 100% |  |  | Engineering [86.27 h]; Pipe with diameter 400mm ; depth: 0.0m - 1.5m; Pipe with diameter 400mm ; depth: 1.51m - 2.5m; Pipe with diameter 400mm ; depth: 2.51m - 3.5m; Pipe with diameter 500mm ; depth: 0.0m - 1.5m; Pipe with diameter 500mm ; depth: 1.51m - 2.5m; Pipe with diameter 600mm ; depth: 0.0m - 1.5m; Pipe with diameter 600mm ; depth: 1.51m - 2.5m; Pipe with diameter 600mm ; depth: 2.51m - 3.5m; Pipe with diameter 700mm ; depth: 0.0m - 1.5m; Pipe with diameter 700mm ; depth: 1.51m - 2.5m; Pipe with diameter 700mm ; depth: 2.51m - 3.5m; Pipe with diameter 800mm ; depth: 0.0m - 1.5m; Pipe with diameter 800mm ; depth: 1.51m - 2.5m; Pipe with diameter 800mm ; depth: 2.51m - 3.5m; Pipe with diameter 900mm ; depth: 0.0m - 1.5m; Pipe with diameter 900mm ; depth: 1.51m - 2.5m; Pipe with diameter 900mm ; depth: 2.51 - 3.5m; Pipe with diameter 1000mm ; depth: 0.0m - 1.5m; Pipe with diameter 1000mm ; depth: 1.51m - 2.5m; Pipe with diameter 1000mm ; depth: 2.51 - 3.5m; Pipe with diameter 1100mm ; depth: 0.0m - 1.5m; Pipe with diameter 1100mm ; depth: 1.51m - 2.5m; Pipe with diameter 1100mm ; depth: 2.51 - 3.5m; Pipe with diameter 1200mm ; depth: 1.51m - 2.5m; Pipe with diameter 1200mm ; depth: 2.51 - 3.5m; Access opening with dimensions 1000*1000 mm | ENG-MT-SD-ML-A-110 | PRC | MA | Each | A | SD | EN | ENG | MEP |
|  | 2 | **Catch Basin Sections** |  | 2025-01-30 | 2025-02-13 |  |  |  |  |  |  |  |  |  |  |  |  |  |  |
| ENG-MT-SD-CB-A-100 |  | Material Approval for Catch Basins of Storm Drainage Network | 10d | 2025-01-30 A | 2025-02-12 A | ENG-MT-SD-CB-S-100 | 100% | 2025-01-30 | 2025-02-10 | Engineering [86.27 h]; Single Catch basin; Double Catch basin | ENG-MT-SD-CB-A-100 | PRC | MA | Each | A | SD | EN | ENG | MEP |
| ENG-MT-SD-CB-A-110 |  | Material Approval for Catch Basin Pipes of Storm Drainage Network | 10d | 2025-01-30 A | 2025-02-13 A | ENG-MT-SD-CB-S-110 | 100% | 2025-01-30 | 2025-02-10 | Engineering [86.27 h]; Pipe with diameter 300mm ; depth: 0 - 1.5m; Pipe with diameter 400mm ; depth: 0 - 1.5m | ENG-MT-SD-CB-A-110 | PRC | MA | Each | A | SD | EN | ENG | MEP |
|  | 3 | **Testing and Finishes** |  | 2025-01-30 | 2025-02-20 |  |  |  |  |  |  |  |  |  |  |  |  |  |  |
| ENG-MT-SD-TF-A-100 |  | Material Approval for Manhole Covers of Storm Drainage Network | 10d | 2025-01-30 A | 2025-02-20 A | ENG-MT-SD-TF-S-100 | 100% | 2025-01-30 | 2025-02-10 | Engineering [86.27 h]; MH ; depth: 0.0m - 1.5m; MH ; depth: 1.51m - 2.5m; MH ; depth: 2.51 - 3.5m; MH ; depth: 1.51m - 2.5m with back drop less than 1.0 m [0.1]; MH ; depth: 2.51 - 3.5m with back drop less than 1.0 m [0.1]; MH ; depth: 2.51 - 3.5m [0.4]; MH ; depth: 3.51 - 4.5m | ENG-MT-SD-TF-A-100 | PRC | MA | Each | A | SD | EN | ENG | MEP |
| ENG-MT-SD-TF-A-110 |  | Material Approval for Catch Basin Covers of Storm Drainage Network | 10d | 2025-01-30 A | 2025-02-20 A | ENG-MT-SD-TF-S-110 | 100% | 2025-01-30 | 2025-02-10 | Engineering [86.27 h]; Single Catch basin; Double Catch basin | ENG-MT-SD-TF-A-110 | PRC | MA | Each | A | SD | EN | ENG | MEP |
| ENG-MT-SD-TF-A-120 |  | Material Approval for Epoxy Insulation of Storm Drainage Network | 10d | 2025-01-30 A | 2025-02-20 A | ENG-MT-SD-TF-S-120 | 100% | 2025-01-30 | 2025-02-10 | Engineering [86.27 h]; MH ; depth: 0.0m - 1.5m; MH ; depth: 1.51m - 2.5m; MH ; depth: 2.51 - 3.5m; MH ; depth: 1.51m - 2.5m with back drop less than 1.0 m [0.1]; MH ; depth: 2.51 - 3.5m with back drop less than 1.0 m [0.1]; MH ; depth: 2.51 - 3.5m [0.4]; MH ; depth: 3.51 - 4.5m; Single Catch basin; Double Catch basin | ENG-MT-SD-TF-A-120 | PRC | MA | Each | A | SD | EN | ENG | MEP |

| ID | WBS | Activity | Duration | Start | Finish | Predecessors | Complete | Planned start | Planned finish | Resources | Activity ID N | 02- Network-WBS | 03- Activity | 04-UOM | 05-Discipline | 01- Network | 08 Stage | Discipline | New Discipline |
| --- | --- | --- | --- | --- | --- | --- | --- | --- | --- | --- | --- | --- | --- | --- | --- | --- | --- | --- | --- |
|  | 3 | **Potable Water Network** |  | 2025-01-22 | 2025-05-14 |  |  |  |  |  |  |  |  |  |  |  |  |  |  |
|  | MS | **Submission of Material** |  | 2025-01-22 | 2025-05-13 |  |  |  |  |  |  |  |  |  |  |  |  |  |  |
|  | 1 | **Main Line Sections** |  | 2025-01-22 | 2025-05-13 |  |  |  |  |  |  |  |  |  |  |  |  |  |  |
| ENG-MT-PW-ML-S-100 |  | Material Submittal for Main Line Pipes of Potable Water Network | 7d | 2025-01-22 A | 2025-01-29 A | ENG-DS-PW-A-110 | 100% |  |  | Engineering [86.27 h] | ENG-MT-PW-ML-S-100 | PRC | MS | Each | S | PW | EN | ENG | MEP |
| ENG-MT-PW-ML-S-110 |  | Material Submittal for Main Line Valves of Potable Water Network | 7d | 2025-01-22 A | 2025-05-13 A | ENG-DS-PW-A-110 | 100% | 2025-01-22 | 2025-01-29 | Engineering [86.27 h] | ENG-MT-PW-ML-S-110 | PRC | MS | Each | S | PW | EN | ENG | MEP |
|  | 3 | **Fire Hydrant** |  | 2025-01-22 | 2025-02-15 |  |  |  |  |  |  |  |  |  |  |  |  |  |  |
| ENG-MT-PW-FH-S-100 |  | Material Submittal for Fire Hydrant of Potable Water Network | 7d | 2025-01-22 A | 2025-02-15 A | ENG-DS-PW-A-110 | 100% | 2025-01-22 | 2025-01-29 | Engineering [86.27 h] | ENG-MT-PW-FH-S-100 | PRC | MS | Each | S | PW | EN | ENG | MEP |
|  | 4 | **Testing and Finishes** |  | 2025-01-22 | 2025-02-10 |  |  |  |  |  |  |  |  |  |  |  |  |  |  |
| ENG-MT-PW-TF-S-100 |  | Material Submittal for Surface Box of Potable Water Network | 7d | 2025-01-22 A | 2025-02-10 A | ENG-DS-PW-A-110 | 100% | 2025-01-22 | 2025-01-29 | Engineering [86.27 h] | ENG-MT-PW-TF-S-100 | PRC | MS | Each | S | PW | EN | ENG | MEP |
|  | MA | **Approval of Material** |  | 2025-01-30 | 2025-05-14 |  |  |  |  |  |  |  |  |  |  |  |  |  |  |
|  | 1 | **Main Line Sections** |  | 2025-01-30 | 2025-05-14 |  |  |  |  |  |  |  |  |  |  |  |  |  |  |
| ENG-MT-PW-ML-A-100 |  | Material Approval for Main Line Pipes of Potable Water Network | 10d | 2025-01-30 A | 2025-02-10 A | ENG-MT-PW-ML-S-100 | 100% |  |  | Engineering [86.27 h]; Pipe with diameter 160 mm; in depth 1.5m - 3.0m; Pipe with diameter 200mm; in depth 0.0m - 1.5m; Pipe with diameter 200mm; in depth 1.5m - 3.0m; Pipe with diameter 355mm; in depth 0.0m - 1.5m; Pipe with diameter 355mm; in depth 1.5m - 3.0m; Pipe with diameter 560mm; in depth 1.5m - 3.0m; Pipe with diameter 630mm; in depth 1.5m - 3.0m | ENG-MT-PW-ML-A-100 | PRC | MA | Each | A | PW | EN | ENG | MEP |
| ENG-MT-PW-ML-A-110 |  | Material Approval for Valves of Potable Water Network | 10d | 2025-01-30 A | 2025-05-14 A | ENG-MT-PW-ML-S-110 | 100% | 2025-01-30 | 2025-02-10 | Engineering [86.27 h]; Butterfly valves with dia (355)mm on pipes with dia (355)mm.; Butterfly valves with dia (560)mm on pipes with dia (560)mm.; Butterfly valves with dia (630)mm on pipes with dia (630)mm.; Wash out valve with dia (100)mm on pipes with dia (200) mm; Wash out valve with dia (150)mm on pipes with dia (560) mm; Wash out valve with dia (150)mm on pipes with dia (630) mm; Air valves with dia (50mm) mm on pipes with dia(200)mm.; Air valves with dia (65mm) mm on pipes with dia(355)mm.; Air valves with dia (65mm) mm on pipes with dia(560)mm.; Air valves with dia (65mm) mm on pipes with dia(630)mm. | ENG-MT-PW-ML-A-110 | PRC | MA | Each | A | PW | EN | ENG | MEP |
|  | 3 | **Fire Hydrant** |  | 2025-02-16 | 2025-03-14 |  |  |  |  |  |  |  |  |  |  |  |  |  |  |
| ENG-MT-PW-FH-A-100 |  | Material Approval for Fire Hydrants of Potable Water Network | 10d | 2025-02-16 A | 2025-03-14 A | ENG-MT-PW-FH-S-100 | 100% | 2025-01-30 | 2025-02-10 | Engineering [86.27 h]; 3-outlet fire hydrant (2 x 2.5 inch and 1 x 4 inch) in the form of a separate dry vacuum cylinder | ENG-MT-PW-FH-A-100 | PRC | MA | Each | A | PW | EN | ENG | MEP |
|  | 4 | **Testing and Finishes** |  | 2025-02-11 | 2025-03-14 |  |  |  |  |  |  |  |  |  |  |  |  |  |  |
| ENG-MT-PW-TF-A-100 |  | Material Approval for Surface Box of Potable Water Network | 0.63d | 2025-02-11 A | 2025-03-14 A | ENG-MT-PW-TF-S-100 | 100% | 2025-01-30 | 2025-01-30 | Engineering [86.27 h]; Gate valves dia(200)mm on pipes with dia (200) mm. | ENG-MT-PW-TF-A-100 | PRC | MA | Each | A | PW | EN | ENG | MEP |
|  | 4 | **Irrigation Network** |  | 2025-01-22 | 2025-05-14 |  |  |  |  |  |  |  |  |  |  |  |  |  |  |
|  | MS | **Submission of Material** |  | 2025-01-22 | 2025-01-29 |  |  |  |  |  |  |  |  |  |  |  |  |  |  |
|  | 1 | **Main Line Pipes** |  | 2025-01-22 | 2025-01-29 |  |  |  |  |  |  |  |  |  |  |  |  |  |  |
| ENG-MT-IR-ML-S-100 |  | Material Submittal for Main Line Pipes of Irrigation Network | 7d | 2025-01-22 A | 2025-01-29 A | ENG-DS-IR-A-110 | 100% |  |  | Engineering [86.27 h] | ENG-MT-IR-ML-S-100 | PRC | MS | Each | S | IR | EN | ENG | MEP |
| ENG-MT-IR-ML-S-110 |  | Material Submittal for Main Line Valves of Irrigation Network | 7d | 2025-01-22 A | 2025-01-29 A | ENG-DS-IR-A-110 | 100% |  |  | Engineering [86.27 h] | ENG-MT-IR-ML-S-110 | PRC | MS | Each | S | IR | EN | ENG | MEP |
|  | MA | **Approval of Material** |  | 2025-01-30 | 2025-05-14 |  |  |  |  |  |  |  |  |  |  |  |  |  |  |
|  | 1 | **Main Line Pipes** |  | 2025-01-30 | 2025-05-14 |  |  |  |  |  |  |  |  |  |  |  |  |  |  |
| ENG-MT-IR-ML-A-100 |  | Material Approval for Main Line Pipes of Irrigation Network | 10d | 2025-01-30 A | 2025-02-10 A | ENG-MT-IR-ML-S-100 | 100% |  |  | Engineering [86.27 h]; 125 mm pipe; depth 0.0m - 1.5m; 280 mm pipe; depth 0.0m - 1.5m; 280 mm pipe; depth 1.5m - 3.0m; 355 mm pipe; depth 1.5m - 3.0m; 400 mm pipe; depth 1.5m - 3.0m; 500. mm pipe; depth 1.5m - 3.0m | ENG-MT-IR-ML-A-100 | PRC | MA | Each | A | IR | EN | ENG | MEP |
| ENG-MT-IR-ML-A-110 |  | Material Approval for Valves of Irrigation Network | 10d | 2025-01-30 A | 2025-05-14 A | ENG-MT-IR-ML-S-110 | 100% | 2025-01-30 | 2025-02-10 | Engineering [86.27 h]; Gate valves dia (90)mm on pipes with dia (125) mm.; Gate valves dia (200)mm on pipes with dia (280) mm.; Butterfly valves with dia (355)mm on pipes with dia (355)mm.; Butterfly valves with dia (400)mm on pipes with dia (400)mm.; Butterfly valves with dia (500)mm on pipes with dia (500)mm.; Wash out valve with dia (100)mm on pipes with dia (125) mm; Wash out valve with dia (100)mm on pipes with dia (355) mm; Wash out valve with dia (150)mm on pipes with dia (400) mm; Wash out valve with dia (150)mm on pipes with dia (500) mm; Air valves with dia (50mm) mm on pipes with dia(125)mm.; Air valves with dia (65mm) mm on pipes with dia(280)mm.; Air valves with dia (65mm) mm on pipes with dia(400)mm.; Air valves with dia (65mm) mm on pipes with dia(500)mm. | ENG-MT-IR-ML-A-110 | PRC | MA | Each | A | IR | EN | ENG | MEP |

| ID | WBS | Activity | Duration | Start | Finish | Predecessors | Complete | Planned start | Planned finish | Resources | Activity ID N | 02- Network-WBS | 03- Activity | 04-UOM | 05-Discipline | 01- Network | 08 Stage | Discipline | New Discipline |
| --- | --- | --- | --- | --- | --- | --- | --- | --- | --- | --- | --- | --- | --- | --- | --- | --- | --- | --- | --- |
|  | 5 | **Medium Voltage Network** |  | 2025-01-22 | 2025-05-13 |  |  |  |  |  |  |  |  |  |  |  |  |  |  |
|  | MS | **Submission of Material** |  | 2025-01-22 | 2025-01-29 |  |  |  |  |  |  |  |  |  |  |  |  |  |  |
|  | 1 | **Cabling Works** |  | 2025-01-22 | 2025-01-29 |  |  |  |  |  |  |  |  |  |  |  |  |  |  |
| ENG-MT-MV-ML-S-100 |  | Material Submittal for Medium Voltage Cables of Medium Voltage Network | 7d | 2025-01-22 A | 2025-01-29 A | ENG-DS-MV-A-110 | 100% |  |  | Engineering [86.27 h] | ENG-MT-MV-ML-S-100 | PRC | MS | Each | S | MV | EN | ENG | MEP |
|  | 2 | **RMU Concrete Works** |  | 2025-01-22 | 2025-01-29 |  |  |  |  |  |  |  |  |  |  |  |  |  |  |
| ENG-MT-MV-SS-S-100 |  | Material Submittal for RMU Concrete Foundations of Medium Voltage Network | 7d | 2025-01-22 A | 2025-01-29 A | ENG-DS-MV-A-110 | 100% |  |  | Engineering [86.27 h] | ENG-MT-MV-SS-S-100 | PRC | MS | Each | S | MV | EN | ENG | MEP |
|  | 3 | **Termination and Testing Works** |  | 2025-01-22 | 2025-01-29 |  |  |  |  |  |  |  |  |  |  |  |  |  |  |
| ENG-MT-MV-TF-S-100 |  | Material Submittal for Termination Kits of Medium Voltage Network | 7d | 2025-01-22 A | 2025-01-29 A | ENG-DS-MV-A-110 | 100% |  |  | Engineering [86.27 h] | ENG-MT-MV-TF-S-100 | PRC | MS | Each | S | MV | EN | ENG | MEP |
|  | MA | **Approval of Material** |  | 2025-01-30 | 2025-05-13 |  |  |  |  |  |  |  |  |  |  |  |  |  |  |
|  | 1 | **Cabling Works** |  | 2025-01-30 | 2025-05-13 |  |  |  |  |  |  |  |  |  |  |  |  |  |  |
| ENG-MT-MV-ML-A-100 |  | Material Approval for Medium Voltage Cables of Medium Voltage Network | 10d | 2025-01-30 A | 2025-05-13 A | ENG-MT-MV-ML-S-100 | 100% | 2025-01-30 | 2025-02-10 | Engineering [86.27 h]; Excavation for Trench size 40cm wide and 80cm deep ( Maximum 1 cable 33kv); Excavation for Trench size 60cm wide and 80cm deep ( for Max two cables 33 kv); Excavation for Trench size 90cm wide and 80cm deep ( Maximum 3 cable 33kv); Excavation for Trench size 120cm wide and 80cm deep ( Maximum 4cable 33kv); Excavation for Trench size 150cm wide and 80cm deep ( Maximum 4cable 33kv); Duct bank for (2) 33 kv cables; Duct bank for (4) 33 kv cables; Duct bank for (6) 33 kv cables; 33kv 3Cx400 mmï¿½ Al XLPE / LLDPE /PVC Cable; 33kv 3Cx400 mmï¿½ Al XLPE /LLDPE/PVC | ENG-MT-MV-ML-A-100 | PRC | MA | Each | A | MV | EN | ENG | MEP |
|  | 2 | **RMU Concrete Works** |  | 2025-01-30 | 2025-02-20 |  |  |  |  |  |  |  |  |  |  |  |  |  |  |
| ENG-MT-MV-SS-A-100 |  | Material Approval for RMU Concrete Foundations of Medium Voltage Network | 10d | 2025-01-30 A | 2025-02-20 A | ENG-MT-MV-SS-S-100 | 100% | 2025-01-30 | 2025-02-10 | Engineering [86.27 h]; 33kv 3Cx400 mmï¿½ Al XLPE/LLDPE Cable Termination | ENG-MT-MV-SS-A-100 | PRC | MA | Each | A | MV | EN | ENG | MEP |
|  | 3 | **Termination and Testing Works** |  | 2025-01-30 | 2025-02-10 |  |  |  |  |  |  |  |  |  |  |  |  |  |  |
| ENG-MT-MV-TF-A-100 |  | Material Approval for Termination and Joints Kits of Medium Voltage Network | 10d | 2025-01-30 A | 2025-02-10 A | ENG-MT-MV-TF-S-100 | 100% |  |  | Engineering [86.27 h]; Excavation for Trench size 40cm wide and 80cm deep ( Maximum 1 cable 33kv); Excavation for Trench size 60cm wide and 80cm deep ( for Max two cables 33 kv); Excavation for Trench size 90cm wide and 80cm deep ( Maximum 3 cable 33kv); Excavation for Trench size 120cm wide and 80cm deep ( Maximum 4cable 33kv); Excavation for Trench size 150cm wide and 80cm deep ( Maximum 4cable 33kv); Duct bank for (2) 33 kv cables; Duct bank for (4) 33 kv cables; Duct bank for (6) 33 kv cables | ENG-MT-MV-TF-A-100 | PRC | MA | Each | A | MV | EN | ENG | MEP |
|  | 7 | **Street Lighting Network** |  | 2025-01-22 | 2025-05-24 |  |  |  |  |  |  |  |  |  |  |  |  |  |  |
|  | MS | **Submission of Material** |  | 2025-01-22 | 2025-01-29 |  |  |  |  |  |  |  |  |  |  |  |  |  |  |
|  | 1 | **Cabling Works** |  | 2025-01-22 | 2025-01-29 |  |  |  |  |  |  |  |  |  |  |  |  |  |  |
| ENG-MT-SL-ML-S-100 |  | Material Submittal for Lighting Cables of Street Lighting Network | 7d | 2025-01-22 A | 2025-01-29 A | ENG-DS-SL-A-110 | 100% |  |  | Engineering [86.27 h] | ENG-MT-SL-ML-S-100 | PRC | MS | Each | S | SL | EN | ENG | MEP |
|  | 2 | **Lighting Poles Works** |  | 2025-01-22 | 2025-01-29 |  |  |  |  |  |  |  |  |  |  |  |  |  |  |
| ENG-MT-SL-S-100 |  | Material Submittal for Lighting Poles Concrete Foundations of Street Lighting Network | 7d | 2025-01-22 A | 2025-01-29 A | ENG-DS-SL-A-110 | 100% |  |  | Engineering [86.27 h] | ENG-MT-SL-S-100 | PRC | MS | Each | S | SL | EN | ENG | MEP |
| ENG-MT-SL-S-110 |  | Material Submittal for Lighting Poles of Street Lighting Network | 7d | 2025-01-22 A | 2025-01-29 A | ENG-DS-SL-A-110 | 100% |  |  | Engineering [86.27 h] | ENG-MT-SL-S-110 | PRC | MS | Each | S | SL | EN | ENG | MEP |
| ENG-MT-SL-S-120 |  | Material Submittal for Lighting Fixtures of Street Lighting Network | 7d | 2025-01-22 A | 2025-01-29 A | ENG-DS-SL-A-110 | 100% |  |  | Engineering [86.27 h] | ENG-MT-SL-S-120 | PRC | MS | Each | S | SL | EN | ENG | MEP |
|  | 3 | **Distribution Panel Board** |  | 2025-01-22 | 2025-01-29 |  |  |  |  |  |  |  |  |  |  |  |  |  |  |
| ENG-MT-SL-DB-S-100 |  | Material Submittal for Lighting Distrubution Panel Boards of Street Lighting Network | 7d | 2025-01-22 A | 2025-01-29 A | ENG-DS-SL-A-110 | 100% |  |  | Engineering [86.27 h] | ENG-MT-SL-DB-S-100 | PRC | MS | Each | S | SL | EN | ENG | MEP |

| ID | WBS | Activity | Duration | Start | Finish | Predecessors | Complete | Planned start | Planned finish | Resources | Activity ID N | 02- Network-WBS | 03- Activity | 04-UOM | 05-Discipline | 01- Network | 08 Stage | Discipline | New Discipline |
| --- | --- | --- | --- | --- | --- | --- | --- | --- | --- | --- | --- | --- | --- | --- | --- | --- | --- | --- | --- |
|  | 5 | **Termination and Testing Works** |  | 2025-01-22 | 2025-01-29 |  |  |  |  |  |  |  |  |  |  |  |  |  |  |
| ENG-MT-SL-TF-S-100 |  | Material Submittal for Fuse Boxes of Street Lighting Network | 7d | 2025-01-22 A | 2025-01-29 A | ENG-DS-SL-A-110 | 100% |  |  | Engineering [86.27 h] | ENG-MT-SL-TF-S-100 | PRC | MS | Each | S | SL | EN | ENG | MEP |
| ENG-MT-SL-TF-S-110 |  | Material Submittal for Cable Lugs of Street Lighting Network | 7d | 2025-01-22 A | 2025-01-29 A | ENG-DS-SL-A-110 | 100% |  |  | Engineering [86.27 h] | ENG-MT-SL-TF-S-110 | PRC | MS | Each | S | SL | EN | ENG | MEP |
|  | 4 | **Earthing System Works** |  | 2025-01-22 | 2025-01-29 |  |  |  |  |  |  |  |  |  |  |  |  |  |  |
| ENG-MT-SL-ES-S-100 |  | Material Submittal for Lighting Earthing of Street Lighting Network | 7d | 2025-01-22 A | 2025-01-29 A | ENG-DS-SL-A-110 | 100% |  |  | Engineering [86.27 h] | ENG-MT-SL-ES-S-100 | PRC | MS | Each | S | SL | EN | ENG | MEP |
|  | MA | **Approval of Material** |  | 2025-01-30 | 2025-05-24 |  |  |  |  |  |  |  |  |  |  |  |  |  |  |
|  | 1 | **Cabling Works** |  | 2025-01-30 | 2025-05-14 |  |  |  |  |  |  |  |  |  |  |  |  |  |  |
| ENG-MT-SL-ML-A-100 |  | Material Approval for Lighting Cables of Street Lighting Network | 10d | 2025-01-30 A | 2025-05-14 A | ENG-MT-SL-ML-S-100 | 100% | 2025-01-30 | 2025-02-10 | Engineering [86.27 h]; Supply, installation , test and operation of cables, Copper, (4Cx25mmï¿½,Cu/XLPE/SWA/PVC +1x16mmï¿½ PVC/PVC); Street Lighting Feeder pillars , Includes foundation and draw pits | ENG-MT-SL-ML-A-100 | PRC | MA | Each | A | SL | EN | ENG | MEP |
|  | 2 | **Lighting Poles Works** |  | 2025-01-30 | 2025-05-24 |  |  |  |  |  |  |  |  |  |  |  |  |  |  |
| ENG-MT-SL-A-100 |  | Material Approval for Lighting Poles Concrete Foundations of Street Lighting Network | 10d | 2025-01-30 A | 2025-05-21 A | ENG-MT-SL-S-100 | 100% | 2025-01-30 | 2025-02-10 | Engineering [86.27 h]; Reinforced concrete foundation, for 12m high lighting columns With Drawpits; Reinforced concrete base With fence for Distribution substation in accordance with SEC Specifications | ENG-MT-SL-A-100 | PRC | MA | Each | A | SL | EN | ENG | MEP |
| ENG-MT-SL-A-110 |  | Material Approval for Lighting Poles of Street Lighting Network | 10d | 2025-05-13 A | 2025-05-24 A | ENG-MT-SL-S-110 | 100% | 2025-01-30 | 2025-02-10 | Engineering [86.27 h]; Lighting poles with one arm, including the power distribution box, screws, cables, 12 meters in height.; Lighting poles complete with two arms, including the power distribution box, screws, cables, 12 meters in height. | ENG-MT-SL-A-110 | PRC | MA | Each | A | SL | EN | ENG | MEP |
| ENG-MT-SL-A-120 |  | Material Approval for Lighting Fixtures of Street Lighting Network | 10d | 2025-05-13 A | 2025-05-24 A | ENG-MT-SL-S-120 | 100% | 2025-01-30 | 2025-02-10 | Engineering [86.27 h]; Street Lighting( LED) Luminaire,(Type C) complete with control gear and lamp, ?.17000 Lumen; Street Lighting( LED) Luminaire,(Type B) complete with control gear and lamp, ?.40600 Lumen | ENG-MT-SL-A-120 | PRC | MA | Each | A | SL | EN | ENG | MEP |
|  | 3 | **Distribution Panel Board** |  | 2025-01-30 | 2025-02-10 |  |  |  |  |  |  |  |  |  |  |  |  |  |  |
| ENG-MT-SL-DB-A-100 |  | Material Approval for Distrubution Panel Boards of Street Lighting Network | 10d | 2025-01-30 A | 2025-02-10 A | ENG-MT-SL-DB-S-100 | 100% |  |  | Engineering [86.27 h]; Package Substation 33000/400V, 500kVA with RMU | ENG-MT-SL-DB-A-100 | PRC | MA | Each | A | SL | EN | ENG | MEP |
|  | 4 | **Earthing System Works** |  | 2025-01-30 | 2025-02-10 |  |  |  |  |  |  |  |  |  |  |  |  |  |  |
| ENG-MT-SL-ES-A-100 |  | Material Approval for Lighting Earthing of Street Lighting Network | 10d | 2025-01-30 A | 2025-02-10 A | ENG-MT-SL-ES-S-100 | 100% |  |  | Engineering [86.27 h]; Earthing installation, lighting plants.; Earthing installation, for Street lighting circuits, including earth rod in plastic chamber; Earthing installation Lighting Panales | ENG-MT-SL-ES-A-100 | PRC | MA | Each | A | SL | EN | ENG | MEP |
|  | 5 | **Termination and Testing Works** |  | 2025-01-30 | 2025-02-10 |  |  |  |  |  |  |  |  |  |  |  |  |  |  |
| ENG-MT-SL-TF-A-100 |  | Material Approval for Fuse Boxes of Street Lighting Network | 10d | 2025-01-30 A | 2025-02-10 A | ENG-MT-SL-TF-S-100 | 100% |  |  | Engineering [86.27 h]; Road crossing ducts, 4 way (4 x 100mm PVC) | ENG-MT-SL-TF-A-100 | PRC | MA | Each | A | SL | EN | ENG | MEP |
| ENG-MT-SL-TF-A-110 |  | Material Approval for Cable Lugs of Street Lighting Network | 10d | 2025-01-30 A | 2025-02-10 A | ENG-MT-SL-TF-S-110 | 100% |  |  | Engineering [86.27 h]; Drawpit with medium duty steel cover, size 600x600x1000mm, Type 18; Drawpit with medium duty steel cover, size 900x900x1200mm, Type 4 | ENG-MT-SL-TF-A-110 | PRC | MA | Each | A | SL | EN | ENG | MEP |
|  | 8 | **Telecom Network** |  | 2025-01-22 | 2025-05-14 |  |  |  |  |  |  |  |  |  |  |  |  |  |  |
|  | MS | **Submission of Material** |  | 2025-01-22 | 2025-01-29 |  |  |  |  |  |  |  |  |  |  |  |  |  |  |
|  | 1 | **Ducts Works** |  | 2025-01-22 | 2025-01-29 |  |  |  |  |  |  |  |  |  |  |  |  |  |  |
| ENG-MT-TE-S-100 |  | Material Submittal for Ducts of Telecom Network | 7d | 2025-01-22 A | 2025-01-29 A | ENG-DS-TE-A-110 | 100% |  |  | Engineering [86.27 h] | ENG-MT-TE-S-100 | PRC | MS | Each | S | TE | EN | ENG | MEP |
|  | 3 | **Manholes Works** |  | 2025-01-22 | 2025-01-29 |  |  |  |  |  |  |  |  |  |  |  |  |  |  |
| ENG-MT-TE-S-110 |  | Material Submittal for Manholes of Telecom Network | 7d | 2025-01-22 A | 2025-01-29 A | ENG-DS-TE-A-110 | 100% |  |  | Engineering [86.27 h] | ENG-MT-TE-S-110 | PRC | MS | Each | S | TE | EN | ENG | MEP |

| ID | WBS | Activity | Duration | Start | Finish | Predecessors | Complete | Planned start | Planned finish | Resources | Activity ID N | 02- Network-WBS | 03- Activity | 04-UOM | 05-Discipline | 01- Network | 08 Stage | Discipline | New Discipline |
| --- | --- | --- | --- | --- | --- | --- | --- | --- | --- | --- | --- | --- | --- | --- | --- | --- | --- | --- | --- |
|  | MA | **Approval of Material** |  | 2025-01-30 | 2025-05-14 |  |  |  |  |  |  |  |  |  |  |  |  |  |  |
|  | 1 | **Ducts Works** |  | 2025-01-30 | 2025-02-10 |  |  |  |  |  |  |  |  |  |  |  |  |  |  |
| ENG-MT-TE-A-100 |  | Material Approval for Ducts of Telecom Network | 10d | 2025-01-30 A | 2025-02-10 A | ENG-MT-TE-S-100 | 100% |  |  | Engineering [86.27 h]; 6-way ducts, 50mm dia. HDPE; Road crossing ducts (6-way) | ENG-MT-TE-A-100 | PRC | MA | Each | A | TE | EN | ENG | MEP |
|  | 3 | **Manholes Works** |  | 2025-01-30 | 2025-05-14 |  |  |  |  |  |  |  |  |  |  |  |  |  |  |
| ENG-MT-TE-A-110 |  | Material Approval for Manholes of Telecom Network | 10d | 2025-01-30 A | 2025-05-14 A | ENG-MT-TE-S-110 | 100% | 2025-01-30 | 2025-02-10 | Engineering [86.27 h]; Manhole Type 1 (2000x1000x1000); Manhole Type 2 (2000x1000x1000); Manhole Type 3 (2000x1000x1000) | ENG-MT-TE-A-110 | PRC | MA | Each | A | TE | EN | ENG | MEP |
|  | 1 | **Superstructure Works** |  | 2025-01-22 | 2025-05-11 |  |  |  |  |  |  |  |  |  |  |  |  |  |  |
|  | SL | **Sewage Pump Stations ( PS 06 )** |  | 2025-01-22 | 2025-05-11 |  |  |  |  |  |  |  |  |  |  |  |  |  |  |
|  | 1 | **Submission of Material** |  | 2025-01-22 | 2025-05-11 |  |  |  |  |  |  |  |  |  |  |  |  |  |  |
| ENG-MT-SPS-CV-S-100 |  | Material Submittal for Civil Works for Sewage Pump Stations | 7d | 2025-01-22 A | 2025-05-11 A | ENG-DS-SW-A-110 | 100% | 2025-01-22 | 2025-01-29 | Engineering [86.27 h] | ENG-MT-SPS-CV-S-100 | DSN | DSS | Each | S | SL | EN | ENG | MEP |
|  | 2 | **Approval of Material** |  | 2025-01-30 | 2025-05-11 |  |  |  |  |  |  |  |  |  |  |  |  |  |  |
| ENG-MT-SPS-CV-A-110 |  | Material Approval for Civil Works for Sewage Pump Stations | 10d | 2025-01-30 A | 2025-05-11 A | ENG-MT-SPS-CV-S-100 | 100% | 2025-01-30 | 2025-02-10 | Engineering [86.27 h]; Wet well structure internal size (5.5*4.0m) at 11.0m depth; Valve chamber; for the pump station; basket screen; CMU walls with thickness 200mm; Waterproofing for foundation; Roof Insulation; Acrylic paint on elevations including plastering; Acrylic paint on internal wallsand ceiling including plastering; Epoxy paint on floors; Supply and install 2000*3000 mm double leaf manufacturer label shall pass the test requirements complete with accessories as per door schedule and material as approved by the Client. | ENG-MT-SPS-CV-A-110 | DSN | DSA | Each | A | SL | EN | ENG | MEP |
|  | TE | **Storm Drainage Ponds ( PO-J1 , PO-J2 )** |  | 2025-01-22 | 2025-03-18 |  |  |  |  |  |  |  |  |  |  |  |  |  |  |
|  | 1 | **Submission of Material** |  | 2025-01-22 | 2025-01-29 |  |  |  |  |  |  |  |  |  |  |  |  |  |  |
| ENG-MT-DPO-CV-S-100 |  | Material Submittal for Civil Works for Storm Drainage Ponds | 7d | 2025-01-22 A | 2025-01-29 A | ENG-DS-SD-A-110 | 100% |  |  | Engineering [86.27 h] | ENG-MT-DPO-CV-S-100 | DSN | DSS | Each | S | TE | EN | ENG | MEP |
|  | 2 | **Approval of Material** |  | 2025-01-30 | 2025-03-18 |  |  |  |  |  |  |  |  |  |  |  |  |  |  |
| ENG-MT-DPO-CV-A-110 |  | Material Approval for Civil Works for Storm Drainage Ponds | 10d | 2025-01-30 A | 2025-03-18 A | ENG-MT-DPO-CV-S-100 | 100% | 2025-01-30 | 2025-02-10 | Engineering [86.27 h]; Excavation in all type of soil for any depth including levelling, compaction and disposal of surplus material; Reinforced Concrete lining including blinding concrete, construction, isolation layers and expansion joints as shown in drawings.; Excavation in all type of soil to increase the depth of the existing pond for any depth including levelling, compaction and disposal of surplus material | ENG-MT-DPO-CV-A-110 | DSN | DSA | Each | A | TE | EN | ENG | MEP |
|  | 1 | **Long Lead Time Items** |  | 2025-02-01 | 2025-06-02 |  |  |  |  |  |  |  |  |  |  |  |  |  |  |
|  | 1 | **Infrastructure Networks** |  | 2025-02-01 | 2025-05-23 |  |  |  |  |  |  |  |  |  |  |  |  |  |  |
|  | 1 | **RMU Works of Medium Voltage Network** |  | 2025-02-01 | 2025-05-23 |  |  |  |  |  |  |  |  |  |  |  |  |  |  |
|  | MS | **Submission of Material** |  | 2025-02-01 | 2025-02-12 |  |  |  |  |  |  |  |  |  |  |  |  |  |  |
| ENG-MT-MV-S-10 |  | Material Submittal for RMU of Medium Voltage Network | 7d | 2025-02-01 A | 2025-02-12 A | ENG-DS-MV-A-110 | 100% | 2025-01-22 | 2025-01-29 | Engineering [86.27 h] | ENG-MT-MV-S-10 | PRC | MS | Each | S | MV | EN | ENG | MEP |
|  | MA | **Approval of Material** |  | 2025-05-01 | 2025-05-23 |  |  |  |  |  |  |  |  |  |  |  |  |  |  |
| ENG-MT-MV-A-10 |  | Material Approval for RMU of Medium Voltage Network | 2d | 2025-05-01 A | 2025-05-23 A | ENG-MT-MV-S-10 | 100% | 2025-01-30 | 2025-02-01 | Engineering [86.27 h]; Supply & installation of (33) kv MV Switch (RMU) for Normally-open Points (NOP) according to the Saudi Electric Company specification | ENG-MT-MV-A-10 | PRC | MA | Each | A | MV | EN | ENG | MEP |
|  | 2 | **Superstructure Works** |  | 2025-05-11 | 2025-06-02 |  |  |  |  |  |  |  |  |  |  |  |  |  |  |
|  | SL | **Sewage Pump Stations ( PS 06 )** |  | 2025-05-11 | 2025-06-02 |  |  |  |  |  |  |  |  |  |  |  |  |  |  |
|  | 1 | **Submission of Material** |  | 2025-05-11 | 2025-05-19 |  |  |  |  |  |  |  |  |  |  |  |  |  |  |
| ENG-MT-SPS-MC-S-100 |  | Material Submittal for Electromechanical Works for Sewage Pump Stations | 7d | 2025-05-11 A | 2025-05-19 A | ENG-DS-SW-A-110 | 100% | 2025-01-22 | 2025-01-29 | Engineering [86.27 h] | ENG-MT-SPS-MC-S-100 | DSN | DSS | Each | S | SL | EN | ENG | MEP |

| ID | WBS | Activity | Duration | Start | Finish | Predecessors | Complete | Planned start | Planned finish | Resources | Activity ID N | 02- Network-WBS | 03- Activity | 04-UOM | 05-Discipline | 01- Network | 08 Stage | Discipline | New Discipline |
| --- | --- | --- | --- | --- | --- | --- | --- | --- | --- | --- | --- | --- | --- | --- | --- | --- | --- | --- | --- |
|  | 2 | **Approval of Material** |  | 2025-05-20 | 2025-06-02 |  |  |  |  |  |  |  |  |  |  |  |  |  |  |
| ENG-MT-SPS-MC-A-110 |  | Material Approval for Electromechanical Works for Sewage Pump Stations | 10d | 2025-05-20 A | 2025-06-02 A | ENG-MT-SPS-MC-S-100 | 100% | 2025-01-30 | 2025-02-10 | Engineering [86.27 h]; Constant speed drive, sewage pumps, centrifugal submersible type; 2 duty / 1 standby capable of delivering a flow rate of flow 424 l/s against a total head of 22m, rate includes provision of MCC; Odour control system; Gate valves for the pump station; Non return valves for the pump station; Penstok for the pump station; Standby Diesel Generator Set 400/230KVA, 3P, 60Hz in Sound Attenuated Enclosure KVA rating by contractor as per total load onsite after pumps selection; Supply, install, test and commission of manually operated fuel pump, The pump should be supplied with all accessories as specified.; Supply, install, test and commission of Fuel pump with capacity of not less than 1 hour to fill the daily tank of generator at required head.; supply, install, test & commission Automatic Transfer Switch ATS panel including all accessories & works required.; Supply, install, test and commission under ground fuel tank for 3 days of continuous operation of the standby generator at full load. The tank should be supplied with all accessories such as black steel pipes, float switches with two contactors ï¿½etc. as; 4Cx 185mm2 Cu/XLPE//PVC from nearest power supply (SEC) and generator to the ATS and from ATS to MCC-SPS; 4Cx 95mm2 Cu/XLPE//PVC from nearest power supply (SEC) and generator to the ATS and from ATS to MCC-SPS; 4Cx 10mm2 Cu/XLPE/SWA/PVC from MCC-SPS to ELP; 4Cx 150mm2 + 1Cx25mm2 SUBMERGED RUBBER INSULATED FLEXIBLE CABLE from MCC to PUMP1& PUMP2.; 4Cx 10mm2 + 1Cx10mm2 Cu/XLPE/PVC FROM MCC-SPS to DB-SPS; 4Cx 10mm2 + 1Cx10mm2 Cu/XLPE/PVC FROM MCC-SPS to Penstok; 4Cx 10mm2 + 1Cx10mm2 Cu/XLPE/PVC FROM MCC-SPS to Odor Control Unit; 4Cx 6mm2 + 1Cx6mm2 Cu/XLPE/PVC FROM MCC-SPS to the mechanical bar screen; 3Cx 6mm2 Cu/XLPE/PVC FROM MCC-SPS to the two fuel pumps.; 3Cx 4mm2 Cu/XLPE/PVC to the AC.; MCC; Surge protection system study; Surge protection system; Local Control Panel, IP 65; Isolator/disconnect switches IP65; DB-SPS Panel; ELP Panel: phtocell , timer,40 Ampere, 3P, IP66,60Hz incomer MCCB & 5ways outgoing MCCB; Electrical Hand Hole 600mm x 600mm x 800mm concrete hand hole with hot dip galvanized heavy duty steel cover; Electrical Hand Hole 400mm x 400mm x 600mm concrete hand hole with hot dip galvanized heavy duty steel cover; Surfaced Mounted Light; 13A DOUBLE SWITCH SOCKET OUTLET (WEATHER PROOF); 20A SWITCH SOCKET OUTLET (FOR SPLIT UNIT), (WEATHER PROOF); Supply, install and test the following grounding and lightning system including ground wires, ground rods, inspection pits, terminations, bonding/clamping, civil works and all materials and accessories required to complete the work according to specificat; Supply and install telephone and fire alarm system including smoke detector, cabinet, control panel, cables, conduits, switches, and other accessories to complete as per drawings and specifications.; "Supply, installation, testing and commissioning of PLC system, serving the pumping station and all related utilities. The PLC shall consists but limited to the following:; Supply, installation, testing and commissioning of all control, instrumentation( as shown on the P & ID drawings cable schedule) including all installation accessories such as termination kits, lugs, glands, cable containments, junction boxes , conduits,; Supply, installation, testing and commissioning of all field instruments such as hydrostatic level meter, level switches, flow switch, and all necessary instruments including all installation accessories, etc. all as per specifications and design drawings; DX wall mounted Split/AC; CO2 fire extinguishers; Powder fire extinguishers; Flood lights shall be high pole with 250 watt HPS luminaire; 1 - way duct - not exceeding 1.5m deep; 2 - way duct - not exceeding 1.5m deep; 8 - way duct - not exceeding 1.5m deep; Earth pits; Cable draw pit, 600x600mm | ENG-MT-SPS-MC-A-110 | DSN | DSA | Each | A | SL | EN | ENG | MEP |
|  | PROC | **Procurement Cycle** |  | 2025-02-11 | 2027-03-02 |  |  |  |  |  |  |  |  |  |  |  |  |  |  |
|  | NLL | **Short Lead Time Items** |  | 2025-02-11 | 2027-03-02 |  |  |  |  |  |  |  |  |  |  |  |  |  |  |
|  | INF | **Infrastructure Networks** |  | 2025-02-11 | 2027-03-02 |  |  |  |  |  |  |  |  |  |  |  |  |  |  |
|  | RD | **Road Works** |  | 2025-02-11 | 2027-02-15 |  |  |  |  |  |  |  |  |  |  |  |  |  |  |
|  | PO | **Issuance of Purchase Orders** |  | 2025-02-11 | 2025-06-12 |  |  |  |  |  |  |  |  |  |  |  |  |  |  |
|  | 1 | **Road Works** |  | 2025-02-11 | 2025-02-25 |  |  |  |  |  |  |  |  |  |  |  |  |  |  |
| PRO-RD-PO-100 |  | Issuance of Purchase Order for Subgrade of Road Works | 12d | 2025-02-11 A | 2025-02-25 A | ENG-MT-RD-A-100, ENG-SH-RD-A-100, ENG-MS-RD-A-10 | 100% |  |  | Pro Engineer [312.12 h] | PRO-RD-PO-100 | PRC | PO | Each | PO | RD | PRO | PROC | MEP |
| PRO-RD-PO-110 |  | Issuance of Purchase Order for Aggregate Base Course of Road Works | 12d | 2025-02-11 A | 2025-02-25 A | ENG-MT-RD-A-110, ENG-SH-RD-A-100, ENG-MS-RD-A-10 | 100% |  |  | Pro Engineer [312.12 h] | PRO-RD-PO-110 | PRC | PO | Each | PO | RD | PRO | PROC | MEP |
| PRO-RD-PO-120 |  | Issuance of Purchase Order for Prime Coat of Road Works | 12d | 2025-02-11 A | 2025-02-25 A | ENG-MT-RD-A-120, ENG-SH-RD-A-100, ENG-MS-RD-A-10 | 100% |  |  | Pro Engineer [312.12 h] | PRO-RD-PO-120 | PRC | PO | Each | PO | RD | PRO | PROC | MEP |
| PRO-RD-PO-130 |  | Issuance of Purchase Order for Bituminous Base & Wearing Courses of Road Works | 12d | 2025-02-11 A | 2025-02-25 A | ENG-MT-RD-A-130, ENG-SH-RD-A-100, ENG-MS-RD-A-10 | 100% |  |  | Pro Engineer [312.12 h] | PRO-RD-PO-130 | PRC | PO | Each | PO | RD | PRO | PROC | MEP |
|  | 2 | **Pavement Works** |  | 2025-02-17 | 2025-03-04 |  |  |  |  |  |  |  |  |  |  |  |  |  |  |
| PRO-RD-PO-140 |  | Issuance of Purchase Order for Interlock Tiles of Landscaping | 12d | 2025-02-17 A | 2025-03-04 A | ENG-MT-RD-A-140, ENG-SH-HS-A-110, ENG-MS-HS-A-10 | 100% | 2025-02-17 | 2025-03-03 | Pro Engineer [312.12 h] | PRO-RD-PO-140 | PRC | PO | Each | PO | RD | PRO | PROC | MEP |
| PRO-RD-PO-150 |  | Issuance of Purchase Order for Curbstones of Landscaping | 12d | 2025-02-17 A | 2025-03-04 A | ENG-MT-RD-A-150, ENG-SH-HS-A-110, ENG-MS-HS-A-10 | 100% | 2025-02-17 | 2025-03-03 | Pro Engineer [312.12 h] | PRO-RD-PO-150 | PRC | PO | Each | PO | RD | PRO | PROC | MEP |
|  | 3 | **Traffic Signs Boards and Roads Marking** |  | 2025-06-01 | 2025-06-12 |  |  |  |  |  |  |  |  |  |  |  |  |  |  |
| PRO-RD-PO-160 |  | Issuance of Purchase Order for Traffic Signs Boards of Road Works | 12d | 2025-06-01 A | 2025-06-12 A | ENG-MT-TS-A-100, ENG-SH-TSB-A-100, ENG-MS-TSB-A-10 | 100% | 2025-02-17 | 2025-03-03 | Pro Engineer [312.12 h] | PRO-RD-PO-160 | PRC | PO | Each | PO | RD | PRO | PROC | MEP |
| PRO-RD-PO-170 |  | Issuance of Purchase Order for Road Markings of Road Works | 12d | 2025-06-01 A | 2025-06-12 A | ENG-MT-TS-A-110, ENG-SH-MRK-A-110, ENG-MS-MRK-A-10 | 100% | 2025-02-17 | 2025-03-03 | Pro Engineer [312.12 h] | PRO-RD-PO-170 | PRC | PO | Each | PO | RD | PRO | PROC | MEP |
|  | MF | **Manufacturing of Material** |  | 2025-04-01 | 2025-06-01 |  |  |  |  |  |  |  |  |  |  |  |  |  |  |
|  | 1 | **Road Works** |  | 2025-04-01 | 2025-06-01 |  |  |  |  |  |  |  |  |  |  |  |  |  |  |
| PRO-RD-MF-100 |  | Manufacturing of Subgrade for Road Works | 90d | 2025-04-01 A | 2025-05-29 A | PRO-RD-PO-100 | 100% | 2025-02-26 | 2025-06-19 | Pro Engineer [312.12 h] | PRO-RD-MF-100 | PRC | MF | Each | MF | RD | PRO | PROC | MEP |
| PRO-RD-MF-110 |  | Manufacturing of Aggregate Base Course for Road Works | 110d | 2025-05-11 A | 2025-06-01 A | PRO-RD-PO-110 | 100% | 2025-02-26 | 2025-07-13 | Pro Engineer [312.12 h] | PRO-RD-MF-110 | PRC | MF | Each | MF | RD | PRO | PROC | MEP |
| PRO-RD-MF-120 |  | Manufacturing of Prime Coat for Road Works | 110d | 2025-05-12 A | 2025-05-22 A | PRO-RD-PO-120 | 100% | 2025-02-26 | 2025-07-13 | Pro Engineer [312.12 h] | PRO-RD-MF-120 | PRC | MF | Each | MF | RD | PRO | PROC | MEP |
| PRO-RD-MF-130 |  | Manufacturing of Bituminous Base & Wearing Courses for Road Works | 110d | 2025-05-28 A | 2025-06-01 A | PRO-RD-PO-130 | 100% | 2025-02-26 | 2025-07-13 | Pro Engineer [312.12 h] | PRO-RD-MF-130 | PRC | MF | Each | MF | RD | PRO | PROC | MEP |

| ID | WBS | Activity | Duration | Start | Finish | Predecessors | Complete | Planned start | Planned finish | Total float | Free float | Resources | Activity ID N | 02- Network-WBS | 03- Activity | 04-UOM | 05-Discipline | 01- Network | 08 Stage | Discipline | New Discipline | 09 Roads |
| --- | --- | --- | --- | --- | --- | --- | --- | --- | --- | --- | --- | --- | --- | --- | --- | --- | --- | --- | --- | --- | --- | --- |
|  | 2 | **Pavement Works** |  | 2025-05-04 | 2025-06-01 |  |  |  |  |  |  |  |  |  |  |  |  |  |  |  |  |  |
| PRO-RD-MF-140 |  | Manufacturing of Interlock Tiles for Landscaping | 110d | 2025-05-04 A | 2025-05-26 A | PRO-RD-PO-140 | 100% | 2025-03-04 | 2025-07-19 |  |  | Pro Engineer [312.12 h] | PRO-RD-MF-140 | PRC | MF | Each | MF | RD | PRO | PROC | MEP |  |
| PRO-RD-MF-150 |  | Manufacturing of Curbstones for Landscaping | 110d | 2025-05-20 A | 2025-06-01 A | PRO-RD-PO-150 | 100% | 2025-03-04 | 2025-07-19 |  |  | Pro Engineer [312.12 h] | PRO-RD-MF-150 | PRC | MF | Each | MF | RD | PRO | PROC | MEP |  |
|  | 3 | **Traffic Signs Boards and Roads Marking** |  | 2025-05-12 | 2025-05-29 |  |  |  |  |  |  |  |  |  |  |  |  |  |  |  |  |  |
| PRO-RD-MF-170 |  | Manufacturing of Road Markings for Road Works | 130d | 2025-05-12 A | 2025-05-29 A | PRO-RD-PO-170 | 100% | 2025-03-04 | 2025-08-11 |  |  | Pro Engineer [312.12 h] | PRO-RD-MF-170 | PRC | MF | Each | MF | RD | PRO | PROC | MEP |  |
| PRO-RD-MF-160 |  | Manufacturing of Traffic Signs Boards for Road Works | 130d | 2025-05-14 A | 2025-05-29 A | PRO-RD-PO-160 | 100% | 2025-03-04 | 2025-08-11 |  |  | Pro Engineer [312.12 h] | PRO-RD-MF-160 | PRC | MF | Each | MF | RD | PRO | PROC | MEP |  |
|  | 1DL | **1st Material Delivery & Site Inspection** |  | 2025-05-22 | 2026-11-30 |  |  |  |  |  |  |  |  |  |  |  |  |  |  |  |  |  |
|  | 1 | **Road Works** |  | 2025-05-22 | 2025-07-05 |  |  |  |  |  |  |  |  |  |  |  |  |  |  |  |  |  |
| PRO-RD-1DL-120 |  | 1ST Material Delivery for Prime Coat of Road Works | 6d | 2025-05-22 A | 2025-05-30 A | PRO-RD-MF-120 | 100% | 2025-07-14 | 2025-07-20 |  |  | Pro Engineer [312.12 h] | PRO-RD-1DL-120 | PRC | 1DL | Each | 1DL | RD | PRO | PROC | MEP |  |
| PRO-RD-1DL-100 |  | 1ST Material Delivery for Subgrade of Road Works | 6d | 2025-05-30 A | 2025-06-08 A | PRO-RD-MF-100 | 100% | 2025-06-21 | 2025-06-26 |  |  | Pro Engineer [312.12 h] | PRO-RD-1DL-100 | PRC | 1DL | Each | 1DL | RD | PRO | PROC | MEP |  |
| PRO-RD-1DL-130 |  | 1ST Material Delivery for Bituminous Base & Wearing Courses of Road Works | 6d | 2025-06-01 A | 2025-06-15 A | PRO-RD-MF-130 | 100% | 2025-07-14 | 2025-07-20 |  |  | Pro Engineer [312.12 h] | PRO-RD-1DL-130 | PRC | 1DL | Each | 1DL | RD | PRO | PROC | MEP |  |
| PRO-RD-1DL-110 |  | 1ST Material Delivery for Aggregate Base Course of Road Works | 6d | 2025-06-02 A | 2025-07-05 A | PRO-RD-MF-110 | 100% | 2025-07-14 | 2025-07-20 |  |  | Pro Engineer [312.12 h] | PRO-RD-1DL-110 | PRC | 1DL | Each | 1DL | RD | PRO | PROC | MEP |  |
|  | 2 | **Pavement Works** |  | 2026-02-17 | 2026-07-19 |  |  |  |  |  |  |  |  |  |  |  |  |  |  |  |  |  |
| PRO-RD-1DL-140 |  | 1ST Material Delivery for Interlock Tiles of Landscaping | 6d | 2026-02-17 A | 2026-07-19 A | PRO-RD-MF-140 | 100% | 2025-07-20 | 2025-07-26 |  |  | Pro Engineer [312.12 h] | PRO-RD-1DL-140 | PRC | 1DL | Each | 1DL | RD | PRO | PROC | MEP |  |
| PRO-RD-1DL-150 |  | 1ST Material Delivery for Curbstones of Landscaping | 6d | 2026-02-17 A | 2026-07-19 A | PRO-RD-MF-150 | 100% | 2025-07-20 | 2025-07-26 |  |  | Pro Engineer [312.12 h] | PRO-RD-1DL-150 | PRC | 1DL | Each | 1DL | RD | PRO | PROC | MEP |  |
|  | 3 | **Traffic Signs Boards and Roads Marking** |  | 2026-11-24 | 2026-11-30 |  |  |  |  |  |  |  |  |  |  |  |  |  |  |  |  |  |
| PRO-RD-1DL-160 |  | 1ST Material Delivery for Traffic Signs Boards of Road Works | 6d | 2026-11-24 | 2026-11-30 | PRO-RD-MF-160 |  |  |  | -85d | 0d | Pro Engineer [44.04 h] | PRO-RD-1DL-160 | PRC | 1DL | Each | 1DL | RD | PRO | PROC | MEP |  |
| PRO-RD-1DL-170 |  | 1ST Material Delivery for Road Markings of Road Works | 6d | 2026-11-24 | 2026-11-30 | PRO-RD-MF-170 |  |  |  | -80d | 5d | Pro Engineer [44.04 h] | PRO-RD-1DL-170 | PRC | 1DL | Each | 1DL | RD | PRO | PROC | MEP |  |
|  | DL | **Material Delivery & Site Inspection** |  | 2025-06-09 | 2027-02-15 |  |  |  |  |  |  |  |  |  |  |  |  |  |  |  |  |  |
|  | 1 | **Road 18 Local 1 ( 479 LM )** |  | 2025-06-10 | 2027-01-05 |  |  |  |  |  |  |  |  |  |  |  |  |  |  |  |  |  |
|  | 1 | **Pre-Bituminous Construction** |  | 2025-06-10 | 2025-08-11 |  |  |  |  |  |  |  |  |  |  |  |  |  |  |  |  |  |
| PRO-R18-RD-DL-220 |  | Material Delivery & Site Inspection for Subgrade of Road Works | 26d | 2025-06-10 A | 2025-07-07 A | PRO-RD-1DL-100 | 100% | 2025-06-28 | 2025-07-27 |  |  | Pro Engineer [312.12 h]; 300mm thick Subgrade, including subgrade preparation, CBR?25% | PRO-R18-RD-DL-220 | PRC | 1DL | Each | 1DL | RD | PRO | PROC | MEP | R18 |
| PRO-R18-RD-DL-230 |  | Material Delivery & Site Inspection for Aggregate Base Course of Road Works | 26d | 2025-08-01 A | 2025-08-11 A | PRO-RD-1DL-110, PRO-R18-RD-DL-220 | 100% | 2025-07-28 | 2025-08-26 |  |  | Pro Engineer [312.12 h]; Aggregate base course 200mm thick after compaction in two layers(Grading 1); CBR?80%; including watering, compaction and testing | PRO-R18-RD-DL-230 | PRC | 1DL | Each | 1DL | RD | PRO | PROC | MEP | R18 |
|  | 2 | **Pavement Works** |  | 2026-08-03 | 2026-08-20 |  |  |  |  |  |  |  |  |  |  |  |  |  |  |  |  |  |
| PRO-R18-RD-DL-180 |  | Material Delivery & Site Inspection of Interlock Tiles for Landscaping | 26d | 2026-08-03 A | 2026-08-20 A | PRO-RD-1DL-140, PRO-R18-RD-DL-230 | 100% | 2025-08-27 | 2025-09-27 |  |  | Pro Engineer [312.12 h]; Interlocking block pavers for sidewalk/footpath 60mm thick on and including 30mm Sand Bedding, 200mm Aggregate subbase, all in accordance with authority standards and complete as per specifications; Extraover for Pedestrian ramps | PRO-R18-RD-DL-180 | PRC | DL | Each | DL | RD | PRO | PROC | MEP | R18 |
| PRO-R18-RD-DL-190 |  | Material Delivery & Site Inspection of Curbstones for Landscaping | 26d | 2026-08-03 A | 2026-08-20 A | PRO-RD-1DL-150, PRO-R18-RD-DL-180 | 100% | 2025-09-28 | 2025-10-27 |  |  | Pro Engineer [312.12 h]; Precast Concrete Kerb, Type K1; Precast Concrete Kerb, Type L1 | PRO-R18-RD-DL-190 | PRC | DL | Each | DL | RD | PRO | PROC | MEP | R18 |

| ID | WBS | Activity | Duration | Start | Finish | Predecessors | Complete | Planned start | Planned finish | Total float | Free float | Resources | Activity ID N | 02- Network-WBS | 03- Activity | 04-UOM | 05-Discipline | 01- Network | 08 Stage | 09 Roads | Discipline | New Discipline |
| --- | --- | --- | --- | --- | --- | --- | --- | --- | --- | --- | --- | --- | --- | --- | --- | --- | --- | --- | --- | --- | --- | --- |
|  | 4 | **Bituminous Construction** |  | 2025-09-20 | 2025-10-11 |  |  |  |  |  |  |  |  |  |  |  |  |  |  |  |  |  |
| PRO-R18-RD-DL-240 |  | Material Delivery & Site Inspection for Prime Coat of Road Works | 26d | 2025-09-20 A | 2025-09-21 A | PRO-RD-1DL-120, PRO-R18-RD-DL-190 | 100% | 2025-10-28 | 2025-11-26 |  |  | Pro Engineer [312.12 h]; Bituminous base course(Grading I - Class A), 70mm thick after compaction including Prime Coat (MC1); Bituminous concrete wearing course, 50 mm thick, after compaction(Grading I - Class A), including tack coat (RC) | PRO-R18-RD-DL-240 | PRC | 1DL | Each | 1DL | RD | PRO | R18 | PROC | MEP |
| PRO-R18-RD-DL-250 |  | Material Delivery & Site Inspection for Bituminous Base & Wearing Courses of Road Works | 26d | 2025-09-23 A | 2025-10-11 A | PRO-RD-1DL-130, PRO-R18-RD-DL-240 | 100% | 2025-11-27 | 2025-12-27 |  |  | Pro Engineer [312.12 h]; Bituminous base course(Grading I - Class A), 70mm thick after compaction including Prime Coat (MC1); Bituminous concrete wearing course, 50 mm thick, after compaction(Grading I - Class A), including tack coat (RC) | PRO-R18-RD-DL-250 | PRC | 1DL | Each | 1DL | RD | PRO | R18 | PROC | MEP |
|  | 3 | **Traffic Signs Boards and Roads Marking** |  | 2026-12-01 | 2027-01-05 |  |  |  |  |  |  |  |  |  |  |  |  |  |  |  |  |  |
| PRO-R18-RD-DL-200 |  | Material Delivery & Site Inspection of Traffic Signs Boards For Road Works | 26d | 2026-12-01 | 2026-12-30 | PRO-R18-RD-DL-250 FF, PRO-RD-1DL-160, PRO-R18-RD-DL-250 SS+5d |  |  |  | -85d | 0d | Pro Engineer [44.04 h]; Traffic signs, ground mounted, Sheet Alumenium, (breakaway) Single post, with all accessories; Straight Arrow; Straight-Right Arrow | PRO-R18-RD-DL-200 | PRC | DL | Each | DL | RD | PRO | R18 | PROC | MEP |
| PRO-R18-RD-DL-210 |  | Material Delivery & Site Inspection of Road Markings For Road Works | 26d | 2026-12-07 | 2027-01-05 | PRO-R18-RD-DL-200 SS, PRO-RD-1DL-170, PRO-R18-RD-DL-200 SS+5d |  |  |  | -85d | 0d | Pro Engineer [44.04 h]; Retroreflective Thermoplastic White, Traffic lines; Retroreflective Thermoplastic Yellow, Traffic lines; Retroreflective raised pavement markers(Type A) | PRO-R18-RD-DL-210 | PRC | DL | Each | DL | RD | PRO | R18 | PROC | MEP |
|  | 9 | **Road 17 Local 1 ( 500 LM )** |  | 2025-07-06 | 2027-01-11 |  |  |  |  |  |  |  |  |  |  |  |  |  |  |  |  |  |
|  | 1 | **Pre-Bituminous Construction** |  | 2025-07-06 | 2025-09-04 |  |  |  |  |  |  |  |  |  |  |  |  |  |  |  |  |  |
| PRO-R17-RD-DL-120 |  | Material Delivery & Site Inspection for Subgrade of Road Works | 26d | 2025-07-06 A | 2025-07-13 A | PRO-RD-1DL-100, PRO-R18-RD-DL-220 | 100% | 2025-07-28 | 2025-08-26 |  |  | Pro Engineer [312.12 h]; 300mm thick Subgrade, including subgrade preparation, CBR?25% | PRO-R17-RD-DL-120 | PRC | 1DL | Each | 1DL | RD | PRO | R17 | PROC | MEP |
| PRO-R17-RD-DL-130 |  | Material Delivery & Site Inspection for Aggregate Base Course of Road Works | 26d | 2025-09-01 A | 2025-09-04 A | PRO-RD-1DL-110, PRO-R18-RD-DL-230, PRO-R17-RD-DL-120 | 100% | 2025-08-27 | 2025-09-27 |  |  | Pro Engineer [312.12 h]; Aggregate base course 200mm thick after compaction in two layers(Grading 1); CBR?80%; including watering, compaction and testing | PRO-R17-RD-DL-130 | PRC | 1DL | Each | 1DL | RD | PRO | R17 | PROC | MEP |
|  | 2 | **Pavement Works** |  | 2026-08-22 | 2026-08-29 |  |  |  |  |  |  |  |  |  |  |  |  |  |  |  |  |  |
| PRO-R17-RD-DL-100 |  | Material Delivery & Site Inspection of Interlock Tiles for Landscaping | 26d | 2026-08-22 A | 2026-08-29 A | PRO-RD-1DL-140, PRO-R18-RD-DL-180, PRO-R17-RD-DL-130 | 100% | 2025-09-28 | 2025-10-27 |  |  | Pro Engineer [312.12 h]; Interlocking block pavers for sidewalk/footpath 60mm thick on and including 30mm Sand Bedding, 200mm Aggregate subbase, all in accordance with authority standards and complete as per specifications; Extraover for Pedestrian ramps | PRO-R17-RD-DL-100 | PRC | DL | Each | DL | RD | PRO | R17 | PROC | MEP |
| PRO-R17-RD-DL-110 |  | Material Delivery & Site Inspection of Curbstones for Landscaping | 26d | 2026-08-22 A | 2026-08-29 A | PRO-RD-1DL-150, PRO-R18-RD-DL-190, PRO-R17-RD-DL-100 | 100% | 2025-10-28 | 2025-11-26 |  |  | Pro Engineer [312.12 h]; Precast Concrete Kerb, Type K1; Precast Concrete Kerb, Type L1 | PRO-R17-RD-DL-110 | PRC | DL | Each | DL | RD | PRO | R17 | PROC | MEP |
|  | 4 | **Bituminous Construction** |  | 2025-09-20 | 2025-10-11 |  |  |  |  |  |  |  |  |  |  |  |  |  |  |  |  |  |
| PRO-R17-RD-DL-160 |  | Material Delivery & Site Inspection for Prime Coat of Road Works | 26d | 2025-09-20 A | 2025-09-25 A | PRO-RD-1DL-120, PRO-R18-RD-DL-240, PRO-R17-RD-DL-110 | 100% | 2025-11-27 | 2025-12-27 |  |  | Pro Engineer [312.12 h]; Bituminous base course(Grading I - Class A), 70mm thick after compaction including Prime Coat (MC1); Bituminous concrete wearing course, 50 mm thick, after compaction(Grading I - Class A), including tack coat (RC) | PRO-R17-RD-DL-160 | PRC | 1DL | Each | 1DL | RD | PRO | R17 | PROC | MEP |
| PRO-R17-RD-DL-170 |  | Material Delivery & Site Inspection for Bituminous Base & Wearing Courses of Road Works | 26d | 2025-10-09 A | 2025-10-11 A | PRO-RD-1DL-130, PRO-R18-RD-DL-250, PRO-R17-RD-DL-160 | 100% | 2025-12-28 | 2026-01-26 |  |  | Pro Engineer [312.12 h]; Bituminous base course(Grading I - Class A), 70mm thick after compaction including Prime Coat (MC1); Bituminous concrete wearing course, 50 mm thick, after compaction(Grading I - Class A), including tack coat (RC) | PRO-R17-RD-DL-170 | PRC | 1DL | Each | 1DL | RD | PRO | R17 | PROC | MEP |
|  | 3 | **Traffic Signs Boards and Roads Marking** |  | 2026-12-07 | 2027-01-11 |  |  |  |  |  |  |  |  |  |  |  |  |  |  |  |  |  |
| PRO-R17-RD-DL-140 |  | Material Delivery & Site Inspection of Traffic Signs Boards For Road Works | 26d | 2026-12-07 | 2027-01-05 | PRO-RD-1DL-160, PRO-R17-RD-DL-170 FF, PRO-R18-RD-DL-200 SS+5d, PRO-R17-RD-DL-170 SS+5d |  |  |  | -85d | 0d | Pro Engineer [44.04 h]; Traffic signs, ground mounted, Sheet Alumenium, (breakaway) Single post, with all accessories; Straight Arrow; Straight-Right Arrow; Straight-Left Arrow | PRO-R17-RD-DL-140 | PRC | DL | Each | DL | RD | PRO | R17 | PROC | MEP |
| PRO-R17-RD-DL-150 |  | Material Delivery & Site Inspection of Road Markings For Road Works | 26d | 2026-12-13 | 2027-01-11 | PRO-RD-1DL-170, PRO-R17-RD-DL-140 SS, PRO-R18-RD-DL-210 SS+5d, PRO-R17-RD-DL-140 SS+5d |  |  |  | -85d | 0d | Pro Engineer [44.04 h]; Retroreflective Thermoplastic White, Traffic lines; Retroreflective Thermoplastic Yellow, Traffic lines; Retroreflective raised pavement markers(Type A) | PRO-R17-RD-DL-150 | PRC | DL | Each | DL | RD | PRO | R17 | PROC | MEP |
|  | 8 | **Road 16 Local 1 ( 527 LM )** |  | 2025-07-28 | 2027-01-17 |  |  |  |  |  |  |  |  |  |  |  |  |  |  |  |  |  |
|  | 1 | **Pre-Bituminous Construction** |  | 2025-07-28 | 2025-10-12 |  |  |  |  |  |  |  |  |  |  |  |  |  |  |  |  |  |
| PRO-R16-RD-DL-100 |  | Material Delivery & Site Inspection for Subgrade of Road Works | 26d | 2025-07-28 A | 2025-08-02 A | PRO-RD-1DL-100, PRO-R17-RD-DL-120 | 100% | 2025-08-27 | 2025-09-27 |  |  | Pro Engineer [312.12 h]; 300mm thick Subgrade, including subgrade preparation, CBR?25% | PRO-R16-RD-DL-100 | PRC | 1DL | Each | 1DL | RD | PRO | R16 | PROC | MEP |
| PRO-R16-RD-DL-110 |  | Material Delivery & Site Inspection for Aggregate Base Course of Road Works | 26d | 2025-09-17 A | 2025-10-12 A | PRO-RD-1DL-110, PRO-R17-RD-DL-130 | 100% | 2025-09-28 | 2025-10-27 |  |  | Pro Engineer [312.12 h]; Aggregate base course 200mm thick after compaction in two layers(Grading 1); CBR?80%; including watering, compaction and testing | PRO-R16-RD-DL-110 | PRC | 1DL | Each | 1DL | RD | PRO | R16 | PROC | MEP |
|  | 2 | **Pavement Works** |  | 2026-08-24 | 2026-08-27 |  |  |  |  |  |  |  |  |  |  |  |  |  |  |  |  |  |
| PRO-R16-RD-DL-120 |  | Material Delivery & Site Inspection of Interlock Tiles for Landscaping | 26d | 2026-08-24 A | 2026-08-27 A | PRO-RD-1DL-140, PRO-R17-RD-DL-100 | 100% | 2025-10-28 | 2025-11-26 |  |  | Pro Engineer [312.12 h]; Interlocking block pavers for sidewalk/footpath 60mm thick on and including 30mm Sand Bedding, 200mm Aggregate subbase, all in accordance with authority standards and complete as per specifications; Extraover for Pedestrian ramps | PRO-R16-RD-DL-120 | PRC | DL | Each | DL | RD | PRO | R16 | PROC | MEP |
| PRO-R16-RD-DL-130 |  | Material Delivery & Site Inspection of Curbstones for Landscaping | 26d | 2026-08-24 A | 2026-08-27 A | PRO-RD-1DL-150, PRO-R16-RD-DL-110 FF, PRO-R17-RD-DL-110 | 100% | 2025-11-27 | 2025-12-27 |  |  | Pro Engineer [312.12 h]; Precast Concrete Kerb, Type K1; Precast Concrete Kerb, Type L1 | PRO-R16-RD-DL-130 | PRC | DL | Each | DL | RD | PRO | R16 | PROC | MEP |

| ID | WBS | Activity | Duration | Start | Finish | Predecessors | Complete | Planned start | Planned finish | Total float | Free float | Resources | Activity ID N | 02- Network-WBS | 03- Activity | 04-UOM | 05-Discipline | 01- Network | 08 Stage | 09 Roads | Discipline | New Discipline |
| --- | --- | --- | --- | --- | --- | --- | --- | --- | --- | --- | --- | --- | --- | --- | --- | --- | --- | --- | --- | --- | --- | --- |
|  | 4 | **Bituminous Construction** |  | 2025-10-12 | 2025-12-15 |  |  |  |  |  |  |  |  |  |  |  |  |  |  |  |  |  |
| PRO-R16-RD-DL-160 |  | Material Delivery & Site Inspection for Prime Coat of Road Works | 26d | 2025-10-12 A | 2025-10-12 A | PRO-RD-1DL-120, PRO-R17-RD-DL-160 | 100% | 2025-12-28 | 2026-01-26 |  |  | Pro Engineer [312.12 h]; Bituminous base course(Grading I - Class A), 70mm thick after compaction including Prime Coat (MC1); Bituminous concrete wearing course, 50 mm thick, after compaction(Grading I - Class A), including tack coat (RC) | PRO-R16-RD-DL-160 | PRC | 1DL | Each | 1DL | RD | PRO | R16 | PROC | MEP |
| PRO-R16-RD-DL-170 |  | Material Delivery & Site Inspection for Bituminous Base & Wearing Courses of Road Works | 26d | 2025-12-13 A | 2025-12-15 A | PRO-RD-1DL-130, PRO-R16-RD-DL-120, PRO-R17-RD-DL-170 | 100% | 2026-01-27 | 2026-02-25 |  |  | Pro Engineer [312.12 h]; Bituminous base course(Grading I - Class A), 70mm thick after compaction including Prime Coat (MC1); Bituminous concrete wearing course, 50 mm thick, after compaction(Grading I - Class A), including tack coat (RC) | PRO-R16-RD-DL-170 | PRC | 1DL | Each | 1DL | RD | PRO | R16 | PROC | MEP |
|  | 3 | **Traffic Signs Boards and Roads Marking** |  | 2026-12-13 | 2027-01-17 |  |  |  |  |  |  |  |  |  |  |  |  |  |  |  |  |  |
| PRO-R16-RD-DL-140 |  | Material Delivery & Site Inspection of Traffic Signs Boards For Road Works | 26d | 2026-12-13 | 2027-01-11 | PRO-RD-1DL-160, PRO-R16-RD-DL-170 FF, PRO-R17-RD-DL-140 SS+5d |  |  |  | -80d | 0d | Pro Engineer [44.04 h]; Traffic signs, ground mounted, Sheet Alumenium, (breakaway) Single post, with all accessories; Straight Arrow; Right or Left Arrow; Straight-Right Arrow | PRO-R16-RD-DL-140 | PRC | DL | Each | DL | RD | PRO | R16 | PROC | MEP |
| PRO-R16-RD-DL-150 |  | Material Delivery & Site Inspection of Road Markings For Road Works | 26d | 2026-12-19 | 2027-01-17 | PRO-RD-1DL-170, PRO-R16-RD-DL-140 SS, PRO-R17-RD-DL-150 SS+5d |  |  |  | -85d | 0d | Pro Engineer [44.04 h]; Retroreflective Thermoplastic White, Traffic lines; Retroreflective Thermoplastic Yellow, Traffic lines; Retroreflective raised pavement markers(Type A) | PRO-R16-RD-DL-150 | PRC | DL | Each | DL | RD | PRO | R16 | PROC | MEP |
|  | 7 | **Road 15 Local 1 ( 556 LM )** |  | 2025-06-09 | 2027-01-23 |  |  |  |  |  |  |  |  |  |  |  |  |  |  |  |  |  |
|  | 1 | **Pre-Bituminous Construction** |  | 2025-06-09 | 2025-10-13 |  |  |  |  |  |  |  |  |  |  |  |  |  |  |  |  |  |
| PRO-R15-RD-DL-100 |  | Material Delivery & Site Inspection for Subgrade of Road Works | 26d | 2025-06-09 A | 2025-07-13 A | PRO-RD-1DL-100, PRO-R16-RD-DL-100 | 100% | 2025-09-28 | 2025-10-27 |  |  | Pro Engineer [312.12 h]; 300mm thick Subgrade, including subgrade preparation, CBR?25% | PRO-R15-RD-DL-100 | PRC | 1DL | Each | 1DL | RD | PRO | R15 | PROC | MEP |
| PRO-R15-RD-DL-110 |  | Material Delivery & Site Inspection for Aggregate Base Course of Road Works | 26d | 2025-10-12 A | 2025-10-13 A | PRO-RD-1DL-110, PRO-R16-RD-DL-110 | 100% | 2025-10-28 | 2025-11-26 |  |  | Pro Engineer [312.12 h]; Aggregate base course 200mm thick after compaction in two layers(Grading 1); CBR?80%; including watering, compaction and testing | PRO-R15-RD-DL-110 | PRC | 1DL | Each | 1DL | RD | PRO | R15 | PROC | MEP |
|  | 2 | **Pavement Works** |  | 2026-05-16 | 2026-06-01 |  |  |  |  |  |  |  |  |  |  |  |  |  |  |  |  |  |
| PRO-R15-RD-DL-130 |  | Material Delivery & Site Inspection of Curbstones for Landscaping | 26d | 2026-05-16 A | 2026-06-01 A | PRO-RD-1DL-150, PRO-R15-RD-DL-110 FF, PRO-R16-RD-DL-130 | 100% | 2025-12-28 | 2026-01-26 |  |  | Pro Engineer [312.12 h]; Precast Concrete Kerb, Type K1; Precast Concrete Kerb, Type L1 | PRO-R15-RD-DL-130 | PRC | DL | Each | DL | RD | PRO | R15 | PROC | MEP |
| PRO-R15-RD-DL-120 |  | Material Delivery & Site Inspection of Interlock Tiles for Landscaping | 26d | 2026-05-20 A | 2026-06-01 A | PRO-RD-1DL-140, PRO-R16-RD-DL-120 | 100% | 2025-11-27 | 2025-12-27 |  |  | Pro Engineer [312.12 h]; Interlocking block pavers for sidewalk/footpath 60mm thick on and including 30mm Sand Bedding, 200mm Aggregate subbase, all in accordance with authority standards and complete as per specifications; Extraover for Pedestrian ramps | PRO-R15-RD-DL-120 | PRC | DL | Each | DL | RD | PRO | R15 | PROC | MEP |
|  | 4 | **Bituminous Construction** |  | 2026-03-01 | 2026-03-08 |  |  |  |  |  |  |  |  |  |  |  |  |  |  |  |  |  |
| PRO-R15-RD-DL-160 |  | Material Delivery & Site Inspection for Prime Coat of Road Works | 26d | 2026-03-01 A | 2026-03-08 A | PRO-RD-1DL-120, PRO-R16-RD-DL-160 | 100% | 2026-01-27 | 2026-02-25 |  |  | Pro Engineer [312.12 h]; Bituminous base course(Grading I - Class A), 70mm thick after compaction including Prime Coat (MC1); Bituminous concrete wearing course, 50 mm thick, after compaction(Grading I - Class A), including tack coat (RC) | PRO-R15-RD-DL-160 | PRC | 1DL | Each | 1DL | RD | PRO | R15 | PROC | MEP |
| PRO-R15-RD-DL-170 |  | Material Delivery & Site Inspection for Bituminous Base & Wearing Courses of Road Works | 26d | 2026-03-01 A | 2026-03-08 A | PRO-RD-1DL-130, PRO-R15-RD-DL-120, PRO-R16-RD-DL-170 | 100% | 2026-02-26 | 2026-03-31 |  |  | Pro Engineer [312.12 h]; Bituminous base course(Grading I - Class A), 70mm thick after compaction including Prime Coat (MC1); Bituminous concrete wearing course, 50 mm thick, after compaction(Grading I - Class A), including tack coat (RC) | PRO-R15-RD-DL-170 | PRC | 1DL | Each | 1DL | RD | PRO | R15 | PROC | MEP |
|  | 3 | **Traffic Signs Boards and Roads Marking** |  | 2026-12-19 | 2027-01-23 |  |  |  |  |  |  |  |  |  |  |  |  |  |  |  |  |  |
| PRO-R15-RD-DL-140 |  | Material Delivery & Site Inspection of Traffic Signs Boards For Road Works | 26d | 2026-12-19 | 2027-01-17 | PRO-RD-1DL-160, PRO-R15-RD-DL-170 FF, PRO-R16-RD-DL-140 SS+5d |  |  |  | -80d | 0d | Pro Engineer [44.04 h]; Traffic signs, ground mounted, Sheet Alumenium, (breakaway) Single post, with all accessories; Straight Arrow; Straight-Right Arrow | PRO-R15-RD-DL-140 | PRC | DL | Each | DL | RD | PRO | R15 | PROC | MEP |
| PRO-R15-RD-DL-150 |  | Material Delivery & Site Inspection of Road Markings For Road Works | 26d | 2026-12-24 | 2027-01-23 | PRO-RD-1DL-170, PRO-R15-RD-DL-140 SS, PRO-R16-RD-DL-150 SS+5d |  |  |  | -85d | 0d | Pro Engineer [44.04 h]; Retroreflective Thermoplastic White, Traffic lines; Retroreflective Thermoplastic Yellow, Traffic lines; Retroreflective raised pavement markers(Type A) | PRO-R15-RD-DL-150 | PRC | DL | Each | DL | RD | PRO | R15 | PROC | MEP |
|  | 4 | **Road 10 Local 2 ( 2352 LM )** |  | 2025-09-20 | 2027-01-28 |  |  |  |  |  |  |  |  |  |  |  |  |  |  |  |  |  |
|  | 1 | **Pre-Bituminous Construction** |  | 2025-09-20 | 2025-09-27 |  |  |  |  |  |  |  |  |  |  |  |  |  |  |  |  |  |
| PRO-R10-RD-DL-110 |  | Material Delivery & Site Inspection for Aggregate Base Course of Road Works | 26d | 2025-09-20 A | 2025-09-24 A | PRO-RD-1DL-110, PRO-R15-RD-DL-110 | 100% | 2025-11-27 | 2025-12-27 |  |  | Pro Engineer [312.12 h]; Aggregate base course 200mm thick after compaction in two layers(Grading 1); CBR?80%; including watering, compaction and testing | PRO-R10-RD-DL-110 | PRC | 1DL | Each | 1DL | RD | PRO | R10 | PROC | MEP |
| PRO-R10-RD-DL-100 |  | Material Delivery & Site Inspection for Subgrade of Road Works | 26d | 2025-09-24 A | 2025-09-27 A | PRO-RD-1DL-100, PRO-R15-RD-DL-100 | 100% | 2025-10-28 | 2025-11-26 |  |  | Pro Engineer [312.12 h]; 300mm thick Subgrade, including subgrade preparation, CBR?25% | PRO-R10-RD-DL-100 | PRC | 1DL | Each | 1DL | RD | PRO | R10 | PROC | MEP |
|  | 2 | **Pavement Works** |  | 2026-02-17 | 2026-03-11 |  |  |  |  |  |  |  |  |  |  |  |  |  |  |  |  |  |
| PRO-R10-RD-DL-120 |  | Material Delivery & Site Inspection of Interlock Tiles for Landscaping | 26d | 2026-02-17 A | 2026-03-11 A | PRO-RD-1DL-140, PRO-R15-RD-DL-120 | 100% | 2025-12-28 | 2026-01-26 |  |  | Pro Engineer [312.12 h]; Interlocking block pavers for sidewalk/footpath 60mm thick on and including 30mm Sand Bedding, 200mm Aggregate subbase, all in accordance with authority standards and complete as per specifications; Extraover for Pedestrian ramps | PRO-R10-RD-DL-120 | PRC | DL | Each | DL | RD | PRO | R10 | PROC | MEP |
| PRO-R10-RD-DL-130 |  | Material Delivery & Site Inspection of Curbstones for Landscaping | 26d | 2026-02-17 A | 2026-03-11 A | PRO-RD-1DL-150, PRO-R10-RD-DL-110 FF, PRO-R15-RD-DL-130 | 100% | 2026-01-27 | 2026-02-25 |  |  | Pro Engineer [312.12 h]; Precast Concrete Kerb, Type K1; Precast Concrete Kerb, Type L1 | PRO-R10-RD-DL-130 | PRC | DL | Each | DL | RD | PRO | R10 | PROC | MEP |

| ID | WBS | Activity | Duration | Start | Finish | Predecessors | Complete | Planned start | Planned finish | Total float | Free float | Resources | Activity ID N | 02- Network-WBS | 03- Activity | 04-UOM | 05-Discipline | 01- Network | 08 Stage | 09 Roads | Discipline | New Discipline |
| --- | --- | --- | --- | --- | --- | --- | --- | --- | --- | --- | --- | --- | --- | --- | --- | --- | --- | --- | --- | --- | --- | --- |
|  | 4 | **Bituminous Construction** |  | 2026-11-24 | 2026-12-23 |  |  |  |  |  |  |  |  |  |  |  |  |  |  |  |  |  |
| PRO-R10-RD-DL-160 |  | Material Delivery & Site Inspection for Prime Coat of Road Works | 26d | 2026-11-24 | 2026-12-23 | PRO-RD-1DL-120, PRO-R15-RD-DL-160 SS+5d |  |  |  | -64d | 119d | Pro Engineer [44.04 h]; Bituminous base course(Grading I - Class A), 70mm thick after compaction including Prime Coat (MC1); Bituminous concrete wearing course, 50 mm thick, after compaction(Grading I - Class A), including tack coat (RC) | PRO-R10-RD-DL-160 | PRC | 1DL | Each | 1DL | RD | PRO | R10 | PROC | MEP |
| PRO-R10-RD-DL-170 |  | Material Delivery & Site Inspection for Bituminous Base & Wearing Courses of Road Works | 26d | 2026-11-24 | 2026-12-23 | PRO-RD-1DL-130, PRO-R10-RD-DL-120 SS+5d, PRO-R15-RD-DL-170 SS+5d |  |  |  | -61d | 26d | Pro Engineer [44.04 h]; Bituminous base course(Grading I - Class A), 70mm thick after compaction including Prime Coat (MC1); Bituminous concrete wearing course, 50 mm thick, after compaction(Grading I - Class A), including tack coat (RC) | PRO-R10-RD-DL-170 | PRC | 1DL | Each | 1DL | RD | PRO | R10 | PROC | MEP |
|  | 3 | **Traffic Signs Boards and Roads Marking** |  | 2026-12-24 | 2027-01-28 |  |  |  |  |  |  |  |  |  |  |  |  |  |  |  |  |  |
| PRO-R10-RD-DL-140 |  | Material Delivery & Site Inspection of Traffic Signs Boards For Road Works | 26d | 2026-12-24 | 2027-01-23 | PRO-RD-1DL-160, PRO-R10-RD-DL-170 FF, PRO-R15-RD-DL-140 SS+5d |  |  |  | -80d | 0d | Pro Engineer [44.04 h]; Traffic signs, ground mounted, Sheet Alumenium, (breakaway) Single post, with all accessories; Straight Arrow; Right or Left Arrow; Straight-Right Arrow; Straight-Left Arrow | PRO-R10-RD-DL-140 | PRC | DL | Each | DL | RD | PRO | R10 | PROC | MEP |
| PRO-R10-RD-DL-150 |  | Material Delivery & Site Inspection of Road Markings For Road Works | 26d | 2026-12-30 | 2027-01-28 | PRO-RD-1DL-170, PRO-R10-RD-DL-140 SS, PRO-R15-RD-DL-150 SS+5d |  |  |  | -85d | 0d | Pro Engineer [44.04 h]; Retroreflective Thermoplastic White, Traffic lines; Retroreflective Thermoplastic Yellow, Traffic lines; Retroreflective raised pavement markers(Type A) | PRO-R10-RD-DL-150 | PRC | DL | Each | DL | RD | PRO | R10 | PROC | MEP |
|  | 6 | **Road 14 Local 1 ( 584 LM )** |  | 2025-09-25 | 2027-02-03 |  |  |  |  |  |  |  |  |  |  |  |  |  |  |  |  |  |
|  | 1 | **Pre-Bituminous Construction** |  | 2025-09-25 | 2025-09-29 |  |  |  |  |  |  |  |  |  |  |  |  |  |  |  |  |  |
| PRO-R14-RD-DL-100 |  | Material Delivery & Site Inspection for Subgrade of Road Works | 26d | 2025-09-25 A | 2025-09-29 A | PRO-RD-1DL-100, PRO-R10-RD-DL-100 | 100% | 2025-11-27 | 2025-12-27 |  |  | Pro Engineer [312.12 h]; 300mm thick Subgrade, including subgrade preparation, CBR?25% | PRO-R14-RD-DL-100 | PRC | 1DL | Each | 1DL | RD | PRO | R14 | PROC | MEP |
| PRO-R14-RD-DL-110 |  | Material Delivery & Site Inspection for Aggregate Base Course of Road Works | 26d | 2025-09-25 A | 2025-09-28 A | PRO-RD-1DL-110, PRO-R10-RD-DL-110 | 100% | 2025-12-28 | 2026-01-26 |  |  | Pro Engineer [312.12 h]; Aggregate base course 200mm thick after compaction in two layers(Grading 1); CBR?80%; including watering, compaction and testing | PRO-R14-RD-DL-110 | PRC | 1DL | Each | 1DL | RD | PRO | R14 | PROC | MEP |
|  | 2 | **Pavement Works** |  | 2026-08-23 | 2026-08-29 |  |  |  |  |  |  |  |  |  |  |  |  |  |  |  |  |  |
| PRO-R14-RD-DL-120 |  | Material Delivery & Site Inspection of Interlock Tiles for Landscaping | 26d | 2026-08-23 A | 2026-08-29 A | PRO-RD-1DL-140, PRO-R10-RD-DL-120 | 100% | 2026-01-27 | 2026-02-25 |  |  | Pro Engineer [312.12 h]; Interlocking block pavers for sidewalk/footpath 60mm thick on and including 30mm Sand Bedding, 200mm Aggregate subbase, all in accordance with authority standards and complete as per specifications; Extraover for Pedestrian ramps | PRO-R14-RD-DL-120 | PRC | DL | Each | DL | RD | PRO | R14 | PROC | MEP |
| PRO-R14-RD-DL-130 |  | Material Delivery & Site Inspection of Curbstones for Landscaping | 26d | 2026-08-23 A | 2026-08-29 A | PRO-RD-1DL-150, PRO-R14-RD-DL-110 FF, PRO-R10-RD-DL-130 | 100% | 2026-02-26 | 2026-03-31 |  |  | Pro Engineer [312.12 h]; Precast Concrete Kerb, Type K1; Precast Concrete Kerb, Type L1 | PRO-R14-RD-DL-130 | PRC | DL | Each | DL | RD | PRO | R14 | PROC | MEP |
|  | 4 | **Bituminous Construction** |  | 2026-08-23 | 2026-08-29 |  |  |  |  |  |  |  |  |  |  |  |  |  |  |  |  |  |
| PRO-R14-RD-DL-160 |  | Material Delivery & Site Inspection for Prime Coat of Road Works | 26d | 2026-08-23 A | 2026-08-29 A | PRO-RD-1DL-120 | 100% | 2026-04-01 | 2026-04-30 |  |  | Pro Engineer [312.12 h]; Bituminous base course(Grading I - Class A), 70mm thick after compaction including Prime Coat (MC1); Bituminous concrete wearing course, 50 mm thick, after compaction(Grading I - Class A), including tack coat (RC) | PRO-R14-RD-DL-160 | PRC | 1DL | Each | 1DL | RD | PRO | R14 | PROC | MEP |
| PRO-R14-RD-DL-170 |  | Material Delivery & Site Inspection for Bituminous Base & Wearing Courses of Road Works | 26d | 2026-08-23 A | 2026-08-29 A | PRO-RD-1DL-130, PRO-R14-RD-DL-120 | 100% | 2026-05-02 | 2026-06-04 |  |  | Pro Engineer [312.12 h]; Bituminous base course(Grading I - Class A), 70mm thick after compaction including Prime Coat (MC1); Bituminous concrete wearing course, 50 mm thick, after compaction(Grading I - Class A), including tack coat (RC) | PRO-R14-RD-DL-170 | PRC | 1DL | Each | 1DL | RD | PRO | R14 | PROC | MEP |
|  | 3 | **Traffic Signs Boards and Roads Marking** |  | 2026-12-30 | 2027-02-03 |  |  |  |  |  |  |  |  |  |  |  |  |  |  |  |  |  |
| PRO-R14-RD-DL-140 |  | Material Delivery & Site Inspection of Traffic Signs Boards For Road Works | 26d | 2026-12-30 | 2027-01-28 | PRO-RD-1DL-160, PRO-R14-RD-DL-170 FF, PRO-R10-RD-DL-140 SS+5d |  |  |  | -80d | 0d | Pro Engineer [44.04 h]; Traffic signs, ground mounted, Sheet Alumenium, (breakaway) Single post, with all accessories; Straight Arrow; Straight-Right Arrow; Straight-Left Arrow | PRO-R14-RD-DL-140 | PRC | DL | Each | DL | RD | PRO | R14 | PROC | MEP |
| PRO-R14-RD-DL-150 |  | Material Delivery & Site Inspection of Road Markings For Road Works | 26d | 2027-01-05 | 2027-02-03 | PRO-RD-1DL-170, PRO-R14-RD-DL-140 SS, PRO-R10-RD-DL-150 SS+5d |  |  |  | -85d | 0d | Pro Engineer [44.04 h]; Retroreflective Thermoplastic White, Traffic lines; Retroreflective Thermoplastic Yellow, Traffic lines; Retroreflective raised pavement markers(Type A) | PRO-R14-RD-DL-150 | PRC | DL | Each | DL | RD | PRO | R14 | PROC | MEP |
|  | 2 | **Road 09 Local 2 ( 2278 LM )** |  | 2025-09-25 | 2027-02-09 |  |  |  |  |  |  |  |  |  |  |  |  |  |  |  |  |  |
|  | 1 | **Pre-Bituminous Construction** |  | 2025-09-25 | 2026-03-15 |  |  |  |  |  |  |  |  |  |  |  |  |  |  |  |  |  |
| PRO-R09-RD-DL-100 |  | Material Delivery & Site Inspection for Subgrade of Road Works | 26d | 2025-09-25 A | 2026-03-12 A | PRO-RD-1DL-100, PRO-RD-1DL-100 FF, PRO-R14-RD-DL-100 | 100% | 2025-12-28 | 2026-01-26 |  |  | Pro Engineer [312.12 h]; 300mm thick Subgrade, including subgrade preparation, CBR?25% | PRO-R09-RD-DL-100 | PRC | 1DL | Each | 1DL | RD | PRO | R09 | PROC | MEP |
| PRO-R09-RD-DL-110 |  | Material Delivery & Site Inspection for Aggregate Base Course of Road Works | 26d | 2026-03-10 A | 2026-03-15 A | PRO-RD-1DL-110, PRO-RD-1DL-110 FF, PRO-R14-RD-DL-110 | 100% | 2026-01-27 | 2026-02-25 |  |  | Pro Engineer [312.12 h]; Aggregate base course 200mm thick after compaction in two layers(Grading 1); CBR?80%; including watering, compaction and testing | PRO-R09-RD-DL-110 | PRC | 1DL | Each | 1DL | RD | PRO | R09 | PROC | MEP |
|  | 2 | **Pavement Works** |  | 2026-03-10 | 2026-03-15 |  |  |  |  |  |  |  |  |  |  |  |  |  |  |  |  |  |
| PRO-R09-RD-DL-120 |  | Material Delivery & Site Inspection of Interlock Tiles for Landscaping | 26d | 2026-03-10 A | 2026-03-15 A | PRO-RD-1DL-140, PRO-R14-RD-DL-120 | 100% | 2026-02-26 | 2026-03-31 |  |  | Pro Engineer [312.12 h]; Interlocking block pavers for sidewalk/footpath 60mm thick on and including 30mm Sand Bedding, 200mm Aggregate subbase, all in accordance with authority standards and complete as per specifications; Extraover for Pedestrian ramps | PRO-R09-RD-DL-120 | PRC | DL | Each | DL | RD | PRO | R09 | PROC | MEP |
| PRO-R09-RD-DL-130 |  | Material Delivery & Site Inspection of Curbstones for Landscaping | 26d | 2026-03-10 A | 2026-03-15 A | PRO-RD-1DL-150, PRO-R09-RD-DL-110 FF, PRO-R14-RD-DL-130 | 100% | 2026-04-01 | 2026-04-30 |  |  | Pro Engineer [312.12 h]; Precast Concrete Kerb, Type K1; Precast Concrete Kerb, Type L1 | PRO-R09-RD-DL-130 | PRC | DL | Each | DL | RD | PRO | R09 | PROC | MEP |

| ID | WBS | Activity | Duration | Start | Finish | Predecessors | Complete | Planned start | Planned finish | Total float | Free float | Resources | Activity ID N | 02- Network-WBS | 03- Activity | 04-UOM | 05-Discipline | 01- Network | 08 Stage | 09 Roads | Discipline | New Discipline |
| --- | --- | --- | --- | --- | --- | --- | --- | --- | --- | --- | --- | --- | --- | --- | --- | --- | --- | --- | --- | --- | --- | --- |
|  | 4 | **Bituminous Construction** |  | 2026-11-24 | 2026-12-23 |  |  |  |  |  |  |  |  |  |  |  |  |  |  |  |  |  |
| PRO-R09-RD-DL-160 |  | Material Delivery & Site Inspection for Prime Coat of Road Works | 26d | 2026-11-24 | 2026-12-23 | PRO-RD-1DL-120, PRO-RD-1DL-120 FF, PRO-R14-RD-DL-160 SS+5d |  |  |  | -32d | 183.5d | Pro Engineer [44.04 h]; Bituminous base course(Grading I - Class A), 70mm thick after compaction including Prime Coat (MC1); Bituminous concrete wearing course, 50 mm thick, after compaction(Grading I - Class A), including tack coat (RC) | PRO-R09-RD-DL-160 | PRC | 1DL | Each | 1DL | RD | PRO | R09 | PROC | MEP |
| PRO-R09-RD-DL-170 |  | Material Delivery & Site Inspection for Bituminous Base & Wearing Courses of Road Works | 26d | 2026-11-24 | 2026-12-23 | PRO-RD-1DL-130, PRO-RD-1DL-130 FF, PRO-R09-RD-DL-120 SS+5d, PRO-R14-RD-DL-170 SS+5d |  |  |  | -49d | 31d | Pro Engineer [44.04 h]; Bituminous base course(Grading I - Class A), 70mm thick after compaction including Prime Coat (MC1); Bituminous concrete wearing course, 50 mm thick, after compaction(Grading I - Class A), including tack coat (RC) | PRO-R09-RD-DL-170 | PRC | 1DL | Each | 1DL | RD | PRO | R09 | PROC | MEP |
|  | 3 | **Traffic Signs Boards and Roads Marking** |  | 2027-01-05 | 2027-02-09 |  |  |  |  |  |  |  |  |  |  |  |  |  |  |  |  |  |
| PRO-R09-RD-DL-140 |  | Material Delivery & Site Inspection of Traffic Signs Boards For Road Works | 26d | 2027-01-05 | 2027-02-03 | PRO-RD-1DL-160, PRO-R09-RD-DL-170 SS+5d, PRO-R14-RD-DL-140 SS+5d |  |  |  | -80d | 0d | Pro Engineer [44.04 h]; Traffic signs, ground mounted, Sheet Alumenium, (breakaway) Single post, with all accessories; Straight Arrow; Right or Left Arrow; Straight-Left Arrow | PRO-R09-RD-DL-140 | PRC | DL | Each | DL | RD | PRO | R09 | PROC | MEP |
| PRO-R09-RD-DL-150 |  | Material Delivery & Site Inspection of Road Markings For Road Works | 26d | 2027-01-11 | 2027-02-09 | PRO-RD-1DL-170, PRO-R09-RD-DL-140 SS, PRO-R14-RD-DL-150 SS+5d |  |  |  | -85d | 0d | Pro Engineer [44.04 h]; Retroreflective Thermoplastic White, Traffic lines; Retroreflective Thermoplastic Yellow, Traffic lines; Retroreflective raised pavement markers(Type A) | PRO-R09-RD-DL-150 | PRC | DL | Each | DL | RD | PRO | R09 | PROC | MEP |
|  | 5 | **Road 11 Local 1 ( 670 LM )** |  | 2026-02-19 | 2027-02-15 |  |  |  |  |  |  |  |  |  |  |  |  |  |  |  |  |  |
|  | 1 | **Pre-Bituminous Construction** |  | 2026-02-19 | 2026-02-23 |  |  |  |  |  |  |  |  |  |  |  |  |  |  |  |  |  |
| PRO-R11-RD-DL-100 |  | Material Delivery & Site Inspection for Subgrade of Road Works | 26d | 2026-02-19 A | 2026-02-23 A | PRO-RD-1DL-100, PRO-R09-RD-DL-100 | 100% | 2026-01-27 | 2026-02-25 |  |  | Pro Engineer [312.12 h]; 300mm thick Subgrade, including subgrade preparation, CBR?25% | PRO-R11-RD-DL-100 | PRC | 1DL | Each | 1DL | RD | PRO | R11 | PROC | MEP |
| PRO-R11-RD-DL-110 |  | Material Delivery & Site Inspection for Aggregate Base Course of Road Works | 26d | 2026-02-19 A | 2026-02-23 A | PRO-RD-1DL-110, PRO-R09-RD-DL-110 | 100% | 2026-02-26 | 2026-03-31 |  |  | Pro Engineer [312.12 h]; Aggregate base course 200mm thick after compaction in two layers(Grading 1); CBR?80%; including watering, compaction and testing | PRO-R11-RD-DL-110 | PRC | 1DL | Each | 1DL | RD | PRO | R11 | PROC | MEP |
|  | 2 | **Pavement Works** |  | 2026-06-01 | 2026-08-27 |  |  |  |  |  |  |  |  |  |  |  |  |  |  |  |  |  |
| PRO-R11-RD-DL-130 |  | Material Delivery & Site Inspection of Curbstones for Landscaping | 26d | 2026-06-01 A | 2026-08-27 A | PRO-RD-1DL-150, PRO-R11-RD-DL-110 FF, PRO-R09-RD-DL-130 | 100% | 2026-05-02 | 2026-06-04 |  |  | Pro Engineer [312.12 h]; Precast Concrete Kerb, Type K1; Precast Concrete Kerb, Type L1 | PRO-R11-RD-DL-130 | PRC | DL | Each | DL | RD | PRO | R11 | PROC | MEP |
| PRO-R11-RD-DL-120 |  | Material Delivery & Site Inspection of Interlock Tiles for Landscaping | 26d | 2026-08-23 A | 2026-08-27 A | PRO-RD-1DL-140, PRO-R09-RD-DL-120 | 100% | 2026-04-01 | 2026-04-30 |  |  | Pro Engineer [312.12 h]; Interlocking block pavers for sidewalk/footpath 60mm thick on and including 30mm Sand Bedding, 200mm Aggregate subbase, all in accordance with authority standards and complete as per specifications; Extraover for Pedestrian ramps | PRO-R11-RD-DL-120 | PRC | DL | Each | DL | RD | PRO | R11 | PROC | MEP |
|  | 4 | **Bituminous Construction** |  | 2026-08-13 | 2026-08-27 |  |  |  |  |  |  |  |  |  |  |  |  |  |  |  |  |  |
| PRO-R11-RD-DL-160 |  | Material Delivery & Site Inspection for Prime Coat of Road Works | 26d | 2026-08-13 A | 2026-08-27 A | PRO-RD-1DL-120 | 100% | 2026-06-06 | 2026-07-05 |  |  | Pro Engineer [312.12 h]; Bituminous base course(Grading I - Class A), 70mm thick after compaction including Prime Coat (MC1); Bituminous concrete wearing course, 50 mm thick, after compaction(Grading I - Class A), including tack coat (RC) | PRO-R11-RD-DL-160 | PRC | 1DL | Each | 1DL | RD | PRO | R11 | PROC | MEP |
| PRO-R11-RD-DL-170 |  | Material Delivery & Site Inspection for Bituminous Base & Wearing Courses of Road Works | 26d | 2026-08-23 A | 2026-08-27 A | PRO-RD-1DL-130, PRO-R11-RD-DL-120 | 100% | 2026-07-06 | 2026-08-04 |  |  | Pro Engineer [312.12 h]; Bituminous base course(Grading I - Class A), 70mm thick after compaction including Prime Coat (MC1); Bituminous concrete wearing course, 50 mm thick, after compaction(Grading I - Class A), including tack coat (RC) | PRO-R11-RD-DL-170 | PRC | 1DL | Each | 1DL | RD | PRO | R11 | PROC | MEP |
|  | 3 | **Traffic Signs Boards and Roads Marking** |  | 2027-01-11 | 2027-02-15 |  |  |  |  |  |  |  |  |  |  |  |  |  |  |  |  |  |
| PRO-R11-RD-DL-140 |  | Material Delivery & Site Inspection of Traffic Signs Boards For Road Works | 26d | 2027-01-11 | 2027-02-09 | PRO-RD-1DL-160, PRO-R11-RD-DL-170 FF, PRO-R09-RD-DL-140 SS+5d |  |  |  | -80d | 5d | Pro Engineer [44.04 h]; Traffic signs, ground mounted, Sheet Alumenium, (breakaway) Single post, with all accessories; Straight Arrow; Straight-Left Arrow | PRO-R11-RD-DL-140 | PRC | DL | Each | DL | RD | PRO | R11 | PROC | MEP |
| PRO-R11-RD-DL-150 |  | Material Delivery & Site Inspection of Road Markings For Road Works | 26d | 2027-01-17 | 2027-02-15 | PRO-RD-1DL-170, PRO-R11-RD-DL-140 SS, PRO-R09-RD-DL-150 SS+5d |  |  |  | -85d | 98d | Pro Engineer [44.04 h]; Retroreflective Thermoplastic White, Traffic lines; Retroreflective Thermoplastic Yellow, Traffic lines; Retroreflective raised pavement markers(Type A) | PRO-R11-RD-DL-150 | PRC | DL | Each | DL | RD | PRO | R11 | PROC | MEP |
|  | SW | **Sewage Network** |  | 2025-02-11 | 2026-10-12 |  |  |  |  |  |  |  |  |  |  |  |  |  |  |  |  |  |
|  | PO | **Issuance of Purchase Orders** |  | 2025-02-11 | 2025-02-17 |  |  |  |  |  |  |  |  |  |  |  |  |  |  |  |  |  |
|  | 1 | **Main Line Sections** |  | 2025-02-11 | 2025-02-17 |  |  |  |  |  |  |  |  |  |  |  |  |  |  |  |  |  |
| PRO-SW-PO-100 |  | Issuance of Purchase Order for Main Line Pipes of Sewage Network | 6d | 2025-02-11 A | 2025-02-17 A | ENG-MT-SW-ML-A-110, ENG-SH-SW-ML-A-110, ENG-MS-SW-ML-A-110 | 100% |  |  |  |  | Pro Engineer [312.12 h] | PRO-SW-PO-100 | PRC | PO | Each | PO | SW | PRO |  | PROC | MEP |
| PRO-SW-PO-110 |  | Issuance of Purchase Order for Manhole of Sewage Network | 6d | 2025-02-11 A | 2025-02-17 A | ENG-MT-SW-ML-A-100, ENG-SH-SW-ML-A-110, ENG-MS-SW-ML-A-110 | 100% | 2025-02-05 | 2025-02-11 |  |  | Pro Engineer [312.12 h] | PRO-SW-PO-110 | PRC | PO | Each | PO | SW | PRO |  | PROC | MEP |

| ID | WBS | Activity | Duration | Start | Finish | Predecessors | Complete | Planned start | Planned finish | Resources | Activity ID N | 02- Network-WBS | 03- Activity | 04-UOM | 05-Discipline | 01- Network | 08 Stage | Discipline | New Discipline | 09 Roads |
| --- | --- | --- | --- | --- | --- | --- | --- | --- | --- | --- | --- | --- | --- | --- | --- | --- | --- | --- | --- | --- |
|  | 3 | **Testing and Finishes** |  | 2025-02-11 | 2025-02-17 |  |  |  |  |  |  |  |  |  |  |  |  |  |  |  |
| PRO-SW-PO-120 |  | Issuance of Purchase Order for Manhole Covers of Sewage Network | 6d | 2025-02-11 A | 2025-02-17 A | ENG-MT-SW-TF-A-100, ENG-SH-SW-ML-A-110, ENG-MS-SW-ML-A-110 | 100% |  |  | Pro Engineer [312.12 h] | PRO-SW-PO-120 | PRC | PO | Each | PO | SW | PRO | PROC | MEP |  |
| PRO-SW-PO-140 |  | Issuance of Purchase Order for Membrane Insulation of Sewage Network | 6d | 2025-02-11 A | 2025-02-17 A | ENG-MT-SW-TF-A-120, ENG-SH-SW-ML-A-110, ENG-MS-SW-ML-A-110 | 100% |  |  | Pro Engineer [312.12 h] | PRO-SW-PO-140 | PRC | PO | Each | PO | SW | PRO | PROC | MEP |  |
|  | MF | **Manufacturing of Material** |  | 2025-02-12 | 2025-05-29 |  |  |  |  |  |  |  |  |  |  |  |  |  |  |  |
|  | 1 | **Main Line Sections** |  | 2025-02-12 | 2025-05-13 |  |  |  |  |  |  |  |  |  |  |  |  |  |  |  |
| PRO-SW-MF-110 |  | Manufacturing of Manholes for Sewage Network | 30d | 2025-02-12 A | 2025-05-13 A | PRO-SW-PO-110 | 100% | 2025-02-12 | 2025-03-19 | Pro Engineer [312.12 h] | PRO-SW-MF-110 | PRC | MF | Each | MF | SW | PRO | PROC | MEP |  |
| PRO-SW-MF-100 |  | Manufacturing of Main Line Pipes for Sewage Network | 30d | 2025-02-15 A | 2025-04-24 A | PRO-SW-PO-100 | 100% | 2025-02-18 | 2025-03-25 | Pro Engineer [312.12 h] | PRO-SW-MF-100 | PRC | MF | Each | MF | SW | PRO | PROC | MEP |  |
|  | 3 | **Testing and Finishes** |  | 2025-05-04 | 2025-05-29 |  |  |  |  |  |  |  |  |  |  |  |  |  |  |  |
| PRO-SW-MF-140 |  | Manufacturing of Membrane Insulation for Sewage Network | 120d | 2025-05-04 A | 2025-05-26 A | PRO-SW-PO-140 | 100% | 2025-02-18 | 2025-07-17 | Pro Engineer [312.12 h] | PRO-SW-MF-140 | PRC | MF | Each | MF | SW | PRO | PROC | MEP |  |
| PRO-SW-MF-120 |  | Manufacturing of Manhole Covers for Sewage Network | 120d | 2025-05-12 A | 2025-05-29 A | PRO-SW-PO-120 | 100% | 2025-02-18 | 2025-07-17 | Pro Engineer [312.12 h] | PRO-SW-MF-120 | PRC | MF | Each | MF | SW | PRO | PROC | MEP |  |
|  | 1DL | **1st Material Delivery & Site Inspection** |  | 2025-03-19 | 2025-06-10 |  |  |  |  |  |  |  |  |  |  |  |  |  |  |  |
|  | 1 | **Main Line Sections** |  | 2025-03-19 | 2025-05-25 |  |  |  |  |  |  |  |  |  |  |  |  |  |  |  |
| PRO-SW-1DL-100 |  | 1ST Material Delivery for Main Line Pipes of Sewage Network | 6d | 2025-03-19 A | 2025-04-26 A | PRO-SW-MF-100 FF, PRO-SW-MF-100 SS+24d | 100% | 2025-03-19 | 2025-03-25 | Pro Engineer [312.12 h] | PRO-SW-1DL-100 | PRC | 1DL | Each | 1DL | SW | PRO | PROC | MEP |  |
| PRO-SW-1DL-110 |  | 1ST Material Delivery for Manholes of Sewage Network | 6d | 2025-04-10 A | 2025-05-25 A | PRO-SW-MF-110 | 100% | 2025-03-20 | 2025-03-26 | Pro Engineer [312.12 h] | PRO-SW-1DL-110 | PRC | 1DL | Each | 1DL | SW | PRO | PROC | MEP |  |
|  | 3 | **Testing and Finishes** |  | 2025-05-14 | 2025-06-10 |  |  |  |  |  |  |  |  |  |  |  |  |  |  |  |
| PRO-SW-1DL-120 |  | 1ST Material Delivery for Manholes Covers of Sewage Network | 6d | 2025-05-14 A | 2025-06-10 A | PRO-SW-MF-120 | 100% | 2025-07-19 | 2025-07-24 | Pro Engineer [312.12 h] | PRO-SW-1DL-120 | PRC | 1DL | Each | 1DL | SW | PRO | PROC | MEP |  |
| PRO-SW-1DL-140 |  | 1ST Material Delivery for Membrane Insulation of Sewage Network | 6d | 2025-05-27 A | 2025-06-05 A | PRO-SW-MF-140 | 100% | 2025-07-19 | 2025-07-24 | Pro Engineer [312.12 h] | PRO-SW-1DL-140 | PRC | 1DL | Each | 1DL | SW | PRO | PROC | MEP |  |
|  | DL | **Material Delivery & Site Inspection** |  | 2025-04-13 | 2026-10-12 |  |  |  |  |  |  |  |  |  |  |  |  |  |  |  |
|  | 1 | **Road 18 Local 1 ( 479 LM )** |  | 2025-04-13 | 2025-06-01 |  |  |  |  |  |  |  |  |  |  |  |  |  |  |  |
|  | 1 | **Main Line Sections** |  | 2025-04-13 | 2025-05-27 |  |  |  |  |  |  |  |  |  |  |  |  |  |  |  |
| PRO-R18-SW-DL-150 |  | Material Delivery & Site Inspection of Main Line Pipes for Sewage Network | 10d | 2025-04-13 A | 2025-04-28 A | PRO-SW-1DL-100, PRO-R18-SW-DL-160 | 100% | 2025-04-13 | 2025-04-23 | Pro Engineer [312.12 h]; Nominal bore : 160mm; Depth : 1.5m - 2.5m; Nominal bore : 200mm; Depth : 0.0m - 1.5m; Nominal bore : 200mm; Depth : 1.5m - 2.5m; Nominal bore : 200mm; Depth : 2.5m - 3.5m; Nominal bore : 200mm; Depth : 3.5m - 4.5m; Nominal bore : 200mm; Depth : 4.5m -5.5m; Nominal bore : 200mm; Depth : 5.5m - 6.5m | PRO-R18-SW-DL-150 | PRC | DL | Each | DL | SW | PRO | PROC | MEP | R18 |
| PRO-R18-SW-DL-160 |  | Material Delivery & Site Inspection of Manholes for Sewage Network | 10d | 2025-04-22 A | 2025-05-27 A | PRO-SW-1DL-110 | 100% | 2025-03-27 | 2025-04-12 | Pro Engineer [312.12 h]; Depth: not exceeding 1.5m; Depth: 1.5 - 2.5m; Depth: 2.5 - 3.5m; Depth: 5.5 - 6.5m; Depth:6.5 - 7.5m | PRO-R18-SW-DL-160 | PRC | DL | Each | DL | SW | PRO | PROC | MEP | R18 |
|  | 3 | **Testing and Finishes** |  | 2025-05-14 | 2025-06-01 |  |  |  |  |  |  |  |  |  |  |  |  |  |  |  |
| PRO-R18-SW-DL-170 |  | Material Delivery & Site Inspection of Manholes Covers for Sewage Network | 26d | 2025-05-14 A | 2025-06-01 A | PRO-SW-1DL-120, PRO-R18-SW-DL-150 | 100% | 2025-07-26 | 2025-08-24 | Pro Engineer [312.12 h] | PRO-R18-SW-DL-170 | PRC | DL | Each | DL | SW | PRO | PROC | MEP | R18 |
| PRO-R18-SW-DL-190 |  | Material Delivery & Site Inspection of Membrane Insulation for Sewage Network | 26d | 2025-05-29 A | 2025-06-01 A | PRO-SW-1DL-140, PRO-R18-SW-DL-170 | 100% | 2025-08-25 | 2025-09-24 | Pro Engineer [312.12 h] | PRO-R18-SW-DL-190 | PRC | DL | Each | DL | SW | PRO | PROC | MEP | R18 |

| ID | WBS | Activity | Duration | Start | Finish | Predecessors | Complete | Planned start | Planned finish | Resources | Activity ID N | 02- Network-WBS | 03- Activity | 04-UOM | 05-Discipline | 01- Network | 08 Stage | 09 Roads | Discipline | New Discipline |
| --- | --- | --- | --- | --- | --- | --- | --- | --- | --- | --- | --- | --- | --- | --- | --- | --- | --- | --- | --- | --- |
|  | 9 | **Road 17 Local 1 ( 500 LM )** |  | 2025-05-26 | 2026-10-12 |  |  |  |  |  |  |  |  |  |  |  |  |  |  |  |
|  | 1 | **Main Line Sections** |  | 2025-05-26 | 2025-07-03 |  |  |  |  |  |  |  |  |  |  |  |  |  |  |  |
| PRO-R17-SW-DL-100 |  | Material Delivery & Site Inspection of Main Line Pipes for Sewage Network | 14d | 2025-05-26 A | 2025-06-12 A | PRO-SW-1DL-100, PRO-R18-SW-DL-150 | 100% | 2025-04-24 | 2025-05-10 | Pro Engineer [312.12 h]; Nominal bore : 160mm; Depth : 0.0m - 1.5m; Nominal bore : 160mm; Depth : 1.5m - 2.5m; Nominal bore : 200mm; Depth : 0.0m - 1.5m; Nominal bore : 200mm; Depth : 1.5m - 2.5m; Nominal bore : 200mm; Depth : 2.5m - 3.5m; Nominal bore : 200mm; Depth : 3.5m - 4.5m; Nominal bore : 200mm; Depth : 4.5m -5.5m; Nominal bore : 200mm; Depth : 5.5m - 6.5m | PRO-R17-SW-DL-100 | PRC | DL | Each | DL | SW | PRO | R17 | PROC | MEP |
| PRO-R17-SW-DL-110 |  | Material Delivery & Site Inspection of Manholes for Sewage Network | 15d | 2025-06-10 A | 2025-07-03 A | PRO-SW-1DL-110, PRO-R18-SW-DL-160 | 100% | 2025-04-13 | 2025-04-29 | Pro Engineer [312.12 h]; Depth: not exceeding 1.5m; Depth: 1.5 - 2.5m; Depth: 2.5 - 3.5m; Depth: 5.5 - 6.5m; Depth:6.5 - 7.5m | PRO-R17-SW-DL-110 | PRC | DL | Each | DL | SW | PRO | R17 | PROC | MEP |
|  | 3 | **Testing and Finishes** |  | 2026-10-10 | 2026-10-12 |  |  |  |  |  |  |  |  |  |  |  |  |  |  |  |
| PRO-R17-SW-DL-120 |  | Material Delivery & Site Inspection of Manholes Covers for Sewage Network | 26d | 2026-10-10 A | 2026-10-12 A | PRO-SW-1DL-120, PRO-R18-SW-DL-170 SS+5d | 100% | 2026-11-10 | 2026-12-09 | Pro Engineer [44.04 h] | PRO-R17-SW-DL-120 | PRC | DL | Each | DL | SW | PRO | R17 | PROC | MEP |
| PRO-R17-SW-DL-130 |  | Material Delivery & Site Inspection of Membrane Insulation for Sewage Network | 26d | 2026-10-10 A | 2026-10-12 A | PRO-SW-1DL-140, PRO-R18-SW-DL-190 SS+5d | 100% | 2026-11-10 | 2026-12-09 | Pro Engineer [44.04 h] | PRO-R17-SW-DL-130 | PRC | DL | Each | DL | SW | PRO | R17 | PROC | MEP |
|  | 8 | **Road 16 Local 1 ( 527 LM )** |  | 2025-05-27 | 2026-10-12 |  |  |  |  |  |  |  |  |  |  |  |  |  |  |  |
|  | 1 | **Main Line Sections** |  | 2025-05-27 | 2025-06-04 |  |  |  |  |  |  |  |  |  |  |  |  |  |  |  |
| PRO-R16-SW-DL-100 |  | Material Delivery & Site Inspection of Main Line Pipes for Sewage Network | 14d | 2025-05-27 A | 2025-06-04 A | PRO-SW-1DL-100, PRO-R17-SW-DL-100 | 100% | 2025-05-11 | 2025-05-26 | Pro Engineer [312.12 h]; Nominal bore : 160mm; Depth : 0.0m - 1.5m; Nominal bore : 200mm; Depth : 0.0m - 1.5m; Nominal bore : 200mm; Depth : 1.5m - 2.5m; Nominal bore : 200mm; Depth : 2.5m - 3.5m; Nominal bore : 200mm; Depth : 3.5m - 4.5m; Nominal bore : 200mm; Depth : 4.5m -5.5m; Nominal bore : 200mm; Depth : 5.5m - 6.5m | PRO-R16-SW-DL-100 | PRC | DL | Each | DL | SW | PRO | R16 | PROC | MEP |
| PRO-R16-SW-DL-110 |  | Material Delivery & Site Inspection of Manholes for Sewage Network | 15d | 2025-05-27 A | 2025-06-04 A | PRO-SW-1DL-110, PRO-R17-SW-DL-110 | 100% | 2025-04-30 | 2025-05-17 | Pro Engineer [312.12 h]; Depth: not exceeding 1.5m; Depth: 1.5 - 2.5m; Depth: 2.5 - 3.5m; Depth: 5.5 - 6.5m; Depth:6.5 - 7.5m | PRO-R16-SW-DL-110 | PRC | DL | Each | DL | SW | PRO | R16 | PROC | MEP |
|  | 3 | **Testing and Finishes** |  | 2026-10-10 | 2026-10-12 |  |  |  |  |  |  |  |  |  |  |  |  |  |  |  |
| PRO-R16-SW-DL-120 |  | Material Delivery & Site Inspection of Manholes Covers for Sewage Network | 26d | 2026-10-10 A | 2026-10-12 A | PRO-SW-1DL-120, PRO-R17-SW-DL-120 SS+5d | 100% | 2026-11-16 | 2026-12-15 | Pro Engineer [44.04 h] | PRO-R16-SW-DL-120 | PRC | DL | Each | DL | SW | PRO | R16 | PROC | MEP |
| PRO-R16-SW-DL-130 |  | Material Delivery & Site Inspection of Membrane Insulation for Sewage Network | 26d | 2026-10-10 A | 2026-10-12 A | PRO-SW-1DL-140, PRO-R17-SW-DL-130 SS+5d | 100% | 2026-11-16 | 2026-12-15 | Pro Engineer [44.04 h] | PRO-R16-SW-DL-130 | PRC | DL | Each | DL | SW | PRO | R16 | PROC | MEP |
|  | 7 | **Road 15 Local 1 ( 556 LM )** |  | 2025-05-09 | 2026-10-12 |  |  |  |  |  |  |  |  |  |  |  |  |  |  |  |
|  | 1 | **Main Line Sections** |  | 2025-05-09 | 2025-06-29 |  |  |  |  |  |  |  |  |  |  |  |  |  |  |  |
| PRO-R15-SW-DL-100 |  | Material Delivery & Site Inspection of Main Line Pipes for Sewage Network | 14d | 2025-05-09 A | 2025-05-29 A | PRO-SW-1DL-100, PRO-R16-SW-DL-100 | 100% | 2025-05-27 | 2025-06-16 | Pro Engineer [312.12 h]; Nominal bore : 160mm; Depth : 0.0m - 1.5m; Nominal bore : 200mm; Depth : 0.0m - 1.5m; Nominal bore : 200mm; Depth : 1.5m - 2.5m; Nominal bore : 200mm; Depth : 2.5m - 3.5m; Nominal bore : 200mm; Depth : 3.5m - 4.5m; Nominal bore : 200mm; Depth : 4.5m -5.5m; Nominal bore : 200mm; Depth : 5.5m - 6.5m | PRO-R15-SW-DL-100 | PRC | DL | Each | DL | SW | PRO | R15 | PROC | MEP |
| PRO-R15-SW-DL-110 |  | Material Delivery & Site Inspection of Manholes for Sewage Network | 15d | 2025-06-05 A | 2025-06-29 A | PRO-SW-1DL-110, PRO-R16-SW-DL-110 | 100% | 2025-05-18 | 2025-06-03 | Pro Engineer [312.12 h]; Depth: not exceeding 1.5m; Depth: 1.5 - 2.5m; Depth: 2.5 - 3.5m; Depth: 3.5 - 4.5m; Depth: 5.5 - 6.5m; Depth:6.5 - 7.5m | PRO-R15-SW-DL-110 | PRC | DL | Each | DL | SW | PRO | R15 | PROC | MEP |
|  | 3 | **Testing and Finishes** |  | 2026-10-10 | 2026-10-12 |  |  |  |  |  |  |  |  |  |  |  |  |  |  |  |
| PRO-R15-SW-DL-120 |  | Material Delivery & Site Inspection of Manholes Covers for Sewage Network | 26d | 2026-10-10 A | 2026-10-12 A | PRO-SW-1DL-120, PRO-R16-SW-DL-120 SS+5d | 100% | 2026-11-22 | 2026-12-21 | Pro Engineer [44.04 h] | PRO-R15-SW-DL-120 | PRC | DL | Each | DL | SW | PRO | R15 | PROC | MEP |
| PRO-R15-SW-DL-130 |  | Material Delivery & Site Inspection of Membrane Insulation for Sewage Network | 26d | 2026-10-10 A | 2026-10-12 A | PRO-SW-1DL-140, PRO-R16-SW-DL-130 SS+5d | 100% | 2026-11-22 | 2026-12-21 | Pro Engineer [44.04 h] | PRO-R15-SW-DL-130 | PRC | DL | Each | DL | SW | PRO | R15 | PROC | MEP |
|  | 4 | **Road 10 Local 2 ( 2352 LM )** |  | 2025-05-21 | 2026-10-12 |  |  |  |  |  |  |  |  |  |  |  |  |  |  |  |
|  | 1 | **Main Line Sections** |  | 2025-05-21 | 2025-06-04 |  |  |  |  |  |  |  |  |  |  |  |  |  |  |  |
| PRO-R10-SW-DL-100 |  | Material Delivery & Site Inspection of Main Line Pipes for Sewage Network | 14d | 2025-05-21 A | 2025-06-02 A | PRO-SW-1DL-100, PRO-R15-SW-DL-100 | 100% | 2025-06-17 | 2025-07-02 | Pro Engineer [312.12 h]; Depth : 1.5 - 2.5m; Depth : 2.5 - 3.5m; Depth : 3.5 - 4.5m; Depth : 5.5 - 6.5m; Depth : 6.5 -7.5m; Depth :more than 7.5m | PRO-R10-SW-DL-100 | PRC | DL | Each | DL | SW | PRO | R10 | PROC | MEP |
| PRO-R10-SW-DL-110 |  | Material Delivery & Site Inspection of Manholes for Sewage Network | 15d | 2025-05-22 A | 2025-06-04 A | PRO-SW-1DL-110, PRO-R15-SW-DL-110 | 100% | 2025-06-04 | 2025-06-25 | Pro Engineer [312.12 h]; Depth: 1.5 - 2.5m; Depth: 2.5 - 3.5m; Depth: 3.5 - 4.5m; Depth: 4.5 - 5.5m; Depth: 5.5 - 6.5m; Depth:6.5 - 7.5m; Depth: more than 7.5m | PRO-R10-SW-DL-110 | PRC | DL | Each | DL | SW | PRO | R10 | PROC | MEP |

| ID | WBS | Activity | Duration | Start | Finish | Predecessors | Complete | Planned start | Planned finish | Resources | Activity ID N | 02- Network-WBS | 03- Activity | 04-UOM | 05-Discipline | 01- Network | 08 Stage | 09 Roads | Discipline | New Discipline |
| --- | --- | --- | --- | --- | --- | --- | --- | --- | --- | --- | --- | --- | --- | --- | --- | --- | --- | --- | --- | --- |
|  | 3 | **Testing and Finishes** |  | 2026-10-10 | 2026-10-12 |  |  |  |  |  |  |  |  |  |  |  |  |  |  |  |
| PRO-R10-SW-DL-120 |  | Material Delivery & Site Inspection of Manholes Covers for Sewage Network | 26d | 2026-10-10 A | 2026-10-12 A | PRO-SW-1DL-120, PRO-R15-SW-DL-120 SS+5d | 100% | 2026-11-28 | 2026-12-27 | Pro Engineer [44.04 h] | PRO-R10-SW-DL-120 | PRC | DL | Each | DL | SW | PRO | R10 | PROC | MEP |
| PRO-R10-SW-DL-130 |  | Material Delivery & Site Inspection of Membrane Insulation for Sewage Network | 26d | 2026-10-10 A | 2026-10-12 A | PRO-SW-1DL-140, PRO-R15-SW-DL-130 SS+5d | 100% | 2026-11-28 | 2026-12-27 | Pro Engineer [44.04 h] | PRO-R10-SW-DL-130 | PRC | DL | Each | DL | SW | PRO | R10 | PROC | MEP |
|  | 6 | **Road 14 Local 1 ( 584 LM )** |  | 2025-06-03 | 2026-10-12 |  |  |  |  |  |  |  |  |  |  |  |  |  |  |  |
|  | 1 | **Main Line Sections** |  | 2025-06-03 | 2025-06-26 |  |  |  |  |  |  |  |  |  |  |  |  |  |  |  |
| PRO-R14-SW-DL-100 |  | Material Delivery & Site Inspection of Main Line Pipes for Sewage Network | 14d | 2025-06-03 A | 2025-06-20 A | PRO-SW-1DL-100, PRO-R10-SW-DL-100 | 100% | 2025-07-03 | 2025-07-19 | Pro Engineer [312.12 h]; Nominal bore : 160mm; Depth : 0.0m - 1.5m; Nominal bore : 200mm; Depth : 0.0m - 1.5m; Nominal bore : 200mm; Depth : 1.5m - 2.5m; Nominal bore : 200mm; Depth : 2.5m - 3.5m; Nominal bore : 200mm; Depth : 3.5m - 4.5m; Nominal bore : 200mm; Depth : 4.5m -5.5m; Nominal bore : 200mm; Depth : 5.5m - 6.5m | PRO-R14-SW-DL-100 | PRC | DL | Each | DL | SW | PRO | R14 | PROC | MEP |
| PRO-R14-SW-DL-110 |  | Material Delivery & Site Inspection of Manholes for Sewage Network | 15d | 2025-06-05 A | 2025-06-26 A | PRO-SW-1DL-110, PRO-R10-SW-DL-110 | 100% | 2025-06-26 | 2025-07-13 | Pro Engineer [312.12 h]; Depth: not exceeding 1.5m; Depth: 1.5 - 2.5m; Depth: 3.5 - 4.5m; Depth: 4.5 - 5.5m; Depth: 5.5 - 6.5m; Depth:6.5 - 7.5m | PRO-R14-SW-DL-110 | PRC | DL | Each | DL | SW | PRO | R14 | PROC | MEP |
|  | 3 | **Testing and Finishes** |  | 2026-10-10 | 2026-10-12 |  |  |  |  |  |  |  |  |  |  |  |  |  |  |  |
| PRO-R14-SW-DL-120 |  | Material Delivery & Site Inspection of Manholes Covers for Sewage Network | 26d | 2026-10-10 A | 2026-10-12 A | PRO-SW-1DL-120, PRO-R10-SW-DL-120 SS+5d | 100% | 2026-12-03 | 2027-01-02 | Pro Engineer [44.04 h] | PRO-R14-SW-DL-120 | PRC | DL | Each | DL | SW | PRO | R14 | PROC | MEP |
| PRO-R14-SW-DL-130 |  | Material Delivery & Site Inspection of Membrane Insulation for Sewage Network | 26d | 2026-10-10 A | 2026-10-12 A | PRO-SW-1DL-140, PRO-R10-SW-DL-130 SS+5d | 100% | 2026-12-03 | 2027-01-02 | Pro Engineer [44.04 h] | PRO-R14-SW-DL-130 | PRC | DL | Each | DL | SW | PRO | R14 | PROC | MEP |
|  | 2 | **Road 09 Local 2 ( 2278 LM )** |  | 2025-05-10 | 2026-10-12 |  |  |  |  |  |  |  |  |  |  |  |  |  |  |  |
|  | 1 | **Main Line Sections** |  | 2025-05-10 | 2025-06-01 |  |  |  |  |  |  |  |  |  |  |  |  |  |  |  |
| PRO-R09-SW-DL-110 |  | Material Delivery & Site Inspection of Manholes for Rising Main Network | 7d | 2025-05-10 A | 2025-06-01 A | PRO-SW-1DL-110 | 100% | 2025-03-27 | 2025-04-08 | Pro Engineer [312.12 h]; Depth: 1.5 - 2.5m; Depth: 3.5 - 4.5m; Depth: 4.5 - 5.5m; Depth:6.5 - 7.5m; Depth: more than 7.5m; Depth: 2.5 - 3.5m; Depth: 5.5 - 6.5m | PRO-R09-SW-DL-110 | PRC | DL | Each | DL | SW | PRO | R09 | PROC | MEP |
| PRO-R09-SW-DL-100 |  | Material Delivery & Site Inspection of Main Line Pipes for Rising Main Network | 10d | 2025-05-14 A | 2025-05-29 A | PRO-SW-1DL-100 | 100% | 2025-03-26 | 2025-04-10 | Pro Engineer [312.12 h]; Nominal bore : 160mm; Depth : 1.5m - 2.5m; Nominal bore : 200mm; Depth : 0.0m - 1.5m; Nominal bore : 200mm; Depth : 1.5m - 2.5m; Nominal bore : 200mm; Depth : 2.5m - 3.5m; Nominal bore : 200mm; Depth : 3.5m - 4.5m; Nominal bore : 200mm; Depth : 4.5m -5.5m; Nominal bore : 200mm; Depth : 5.5m - 6.5m; Nominal bore : 250mm; Depth : 4.5m -5.5m; Nominal bore : 250mm; Depth : 5.5m - 6.5m; Nominal bore : 315mm; Depth : 4.5m -5.5m; Nominal bore : 315mm; Depth : 6.5m - 7.5m; Depth : 6.5 -7.5m; Depth :more than 7.5m | PRO-R09-SW-DL-100 | PRC | DL | Each | DL | SW | PRO | R09 | PROC | MEP |
|  | 3 | **Testing and Finishes** |  | 2026-10-10 | 2026-10-12 |  |  |  |  |  |  |  |  |  |  |  |  |  |  |  |
| PRO-R09-SW-DL-120 |  | Material Delivery & Site Inspection of Manholes Covers for Rising Main Network | 38d | 2026-10-10 A | 2026-10-12 A | PRO-SW-1DL-120 | 100% | 2026-11-10 | 2026-12-23 | Pro Engineer [44.04 h] | PRO-R09-SW-DL-120 | PRC | DL | Each | DL | SW | PRO | R09 | PROC | MEP |
| PRO-R09-SW-DL-130 |  | Material Delivery & Site Inspection of Membrane Insulation for Rising Main Network | 38d | 2026-10-10 A | 2026-10-12 A | PRO-SW-1DL-140 | 100% | 2026-11-10 | 2026-12-23 | Pro Engineer [44.04 h] | PRO-R09-SW-DL-130 | PRC | DL | Each | DL | SW | PRO | R09 | PROC | MEP |
|  | 5 | **Road 11 Local 1 ( 670 LM )** |  | 2025-05-06 | 2026-10-12 |  |  |  |  |  |  |  |  |  |  |  |  |  |  |  |
|  | 1 | **Main Line Sections** |  | 2025-05-06 | 2025-06-01 |  |  |  |  |  |  |  |  |  |  |  |  |  |  |  |
| PRO-R11-SW-DL-100 |  | Material Delivery & Site Inspection of Main Line Pipes for Sewage Network | 14d | 2025-05-06 A | 2025-05-29 A | PRO-SW-1DL-100, PRO-R14-SW-DL-100 | 100% | 2025-07-20 | 2025-08-04 | Pro Engineer [312.12 h]; Nominal bore : 160mm; Depth : 1.5m - 2.5m; Nominal bore : 200mm; Depth : 0.0m - 1.5m; Nominal bore : 200mm; Depth : 1.5m - 2.5m; Nominal bore : 200mm; Depth : 2.5m - 3.5m; Nominal bore : 200mm; Depth : 3.5m - 4.5m; Nominal bore : 200mm; Depth : 4.5m -5.5m; Nominal bore : 200mm; Depth : 5.5m - 6.5m; Depth : 1.5 - 2.5m; Depth : 2.5 - 3.5m; Depth : 3.5 - 4.5m; Depth : 4.5 - 5.5m; Depth : 5.5 - 6.5m; Depth : 6.5 -7.5m; Depth :more than 7.5m | PRO-R11-SW-DL-100 | PRC | DL | Each | DL | SW | PRO | R11 | PROC | MEP |
| PRO-R11-SW-DL-110 |  | Material Delivery & Site Inspection of Manholes for Sewage Network | 15d | 2025-05-19 A | 2025-06-01 A | PRO-SW-1DL-110, PRO-R14-SW-DL-110 | 100% | 2025-07-14 | 2025-07-30 | Pro Engineer [312.12 h]; Depth: not exceeding 1.5m; Depth: 1.5 - 2.5m; Depth: 2.5 - 3.5m; Depth: 3.5 - 4.5m; Depth: 4.5 - 5.5m; Depth: 5.5 - 6.5m; Depth:6.5 - 7.5m | PRO-R11-SW-DL-110 | PRC | DL | Each | DL | SW | PRO | R11 | PROC | MEP |
|  | 3 | **Testing and Finishes** |  | 2026-10-10 | 2026-10-12 |  |  |  |  |  |  |  |  |  |  |  |  |  |  |  |
| PRO-R11-SW-DL-120 |  | Material Delivery & Site Inspection of Manholes Covers for Sewage Network | 26d | 2026-10-10 A | 2026-10-12 A | PRO-SW-1DL-120, PRO-R14-SW-DL-120 SS+5d | 100% | 2026-12-09 | 2027-01-07 | Pro Engineer [44.04 h] | PRO-R11-SW-DL-120 | PRC | DL | Each | DL | SW | PRO | R11 | PROC | MEP |
| PRO-R11-SW-DL-130 |  | Material Delivery & Site Inspection of Membrane Insulation for Sewage Network | 26d | 2026-10-10 A | 2026-10-12 A | PRO-SW-1DL-140, PRO-R14-SW-DL-130 SS+5d | 100% | 2026-12-09 | 2027-01-07 | Pro Engineer [44.04 h] | PRO-R11-SW-DL-130 | PRC | DL | Each | DL | SW | PRO | R11 | PROC | MEP |

| ID | WBS | Activity | Duration | Start | Finish | Predecessors | Complete | Planned start | Planned finish | Resources | Activity ID N | 02- Network-WBS | 03- Activity | 04-UOM | 05-Discipline | 01- Network | 08 Stage | Discipline | New Discipline |
| --- | --- | --- | --- | --- | --- | --- | --- | --- | --- | --- | --- | --- | --- | --- | --- | --- | --- | --- | --- |
|  | SD | **Storm Drainage Network** |  | 2025-02-11 | 2026-11-29 |  |  |  |  |  |  |  |  |  |  |  |  |  |  |
|  | MF | **Manufacturing of Material** |  | 2025-02-18 | 2025-07-13 |  |  |  |  |  |  |  |  |  |  |  |  |  |  |
|  | 1 | **Main Line Sections** |  | 2025-02-18 | 2025-05-13 |  |  |  |  |  |  |  |  |  |  |  |  |  |  |
| PRO-SD-MF-100 |  | Manufacturing of Materials for Manholes of Storm Drainage Network | 50d | 2025-02-18 A | 2025-05-13 A | PRO-SD-PO-100 | 100% | 2025-02-18 | 2025-04-22 | Pro Engineer [312.12 h] | PRO-SD-MF-100 | PRC | MF | Each | MF | SD | PRO | PROC | MEP |
| PRO-SD-MF-110 |  | Manufacturing of Materials for Main Line Pipes of Storm Drainage Network | 40d | 2025-02-18 A | 2025-05-11 A | PRO-SD-PO-110 | 100% | 2025-02-18 | 2025-04-10 | Pro Engineer [312.12 h] | PRO-SD-MF-110 | PRC | MF | Each | MF | SD | PRO | PROC | MEP |
|  | 2 | **Catch Basin Sections** |  | 2025-02-18 | 2025-07-13 |  |  |  |  |  |  |  |  |  |  |  |  |  |  |
| PRO-SD-MF-130 |  | Manufacturing of Materials for Catch Basins of Storm Drainage Network | 50d | 2025-02-18 A | 2025-05-15 A | PRO-SD-PO-130 | 100% | 2025-02-18 | 2025-04-22 | Pro Engineer [312.12 h] | PRO-SD-MF-130 | PRC | MF | Each | MF | SD | PRO | PROC | MEP |
| PRO-SD-MF-150 |  | Manufacturing of Materials for Catch Basin Pipes of Storm Drainage Network | 50d | 2025-02-18 A | 2025-07-13 A | PRO-SD-PO-150 | 100% | 2025-02-18 | 2025-04-22 | Pro Engineer [312.12 h] | PRO-SD-MF-150 | PRC | MF | Each | MF | SD | PRO | PROC | MEP |
|  | 3 | **Testing and Finishes** |  | 2025-02-18 | 2025-05-29 |  |  |  |  |  |  |  |  |  |  |  |  |  |  |
| PRO-SD-MF-120 |  | Manufacturing of Materials for Manhole Covers of Storm Drainage Network | 120d | 2025-02-18 A | 2025-05-27 A | PRO-SD-PO-120 | 100% | 2025-02-18 | 2025-07-17 | Pro Engineer [312.12 h] | PRO-SD-MF-120 | PRC | MF | Each | MF | SD | PRO | PROC | MEP |
| PRO-SD-MF-140 |  | Manufacturing of Materials for Catch Basin Covers of Storm Drainage Network | 120d | 2025-02-18 A | 2025-05-29 A | PRO-SD-PO-140 | 100% | 2025-02-18 | 2025-07-17 | Pro Engineer [312.12 h] | PRO-SD-MF-140 | PRC | MF | Each | MF | SD | PRO | PROC | MEP |
| PRO-SD-MF-160 |  | Manufacturing of Materials for Epoxy Insulation of Storm Drainage Network | 120d | 2025-02-18 A | 2025-05-28 A | PRO-SD-PO-160 | 100% | 2025-02-18 | 2025-07-17 | Pro Engineer [312.12 h] | PRO-SD-MF-160 | PRC | MF | Each | MF | SD | PRO | PROC | MEP |
|  | PO | **Issuance of Purchase Orders** |  | 2025-02-11 | 2025-02-17 |  |  |  |  |  |  |  |  |  |  |  |  |  |  |
|  | 1 | **Main Line Sections** |  | 2025-02-11 | 2025-02-17 |  |  |  |  |  |  |  |  |  |  |  |  |  |  |
| PRO-SD-PO-100 |  | Issuance of Purchase Order for Manholes of Storm Drainage Network | 6d | 2025-02-11 A | 2025-02-17 A | ENG-MT-SD-ML-A-100, ENG-SH-SD-ML-A-110, ENG-MS-SD-ML-A-110 | 100% |  |  | Pro Engineer [312.12 h] | PRO-SD-PO-100 | PRC | PO | Each | PO | SD | PRO | PROC | MEP |
| PRO-SD-PO-110 |  | Issuance of Purchase Order for Main Line Pipes of Storm Drainage Network | 6d | 2025-02-11 A | 2025-02-17 A | ENG-MT-SD-ML-A-110, ENG-SH-SD-ML-A-110, ENG-MS-SD-ML-A-110 | 100% |  |  | Pro Engineer [312.12 h] | PRO-SD-PO-110 | PRC | PO | Each | PO | SD | PRO | PROC | MEP |
|  | 2 | **Catch Basin Sections** |  | 2025-02-11 | 2025-02-17 |  |  |  |  |  |  |  |  |  |  |  |  |  |  |
| PRO-SD-PO-130 |  | Issuance of Purchase Order for Catch Basins of Storm Drainage Network | 6d | 2025-02-11 A | 2025-02-17 A | ENG-MT-SD-CB-A-100, ENG-SH-SD-CB-A-110, ENG-MS-SD-CB-A-110 | 100% |  |  | Pro Engineer [312.12 h] | PRO-SD-PO-130 | PRC | PO | Each | PO | SD | PRO | PROC | MEP |
| PRO-SD-PO-150 |  | Issuance of Purchase Order for Catch Basin Pipes of Storm Drainage Network | 6d | 2025-02-11 A | 2025-02-17 A | ENG-MT-SD-CB-A-110, ENG-SH-SD-CB-A-110, ENG-MS-SD-CB-A-110 | 100% |  |  | Pro Engineer [312.12 h] | PRO-SD-PO-150 | PRC | PO | Each | PO | SD | PRO | PROC | MEP |
|  | 3 | **Testing and Finishes** |  | 2025-02-11 | 2025-02-17 |  |  |  |  |  |  |  |  |  |  |  |  |  |  |
| PRO-SD-PO-120 |  | Issuance of Purchase Order for Manhole Covers of Storm Drainage Network | 6d | 2025-02-11 A | 2025-02-17 A | ENG-MT-SD-TF-A-100, ENG-SH-SD-ML-A-110, ENG-MS-SD-ML-A-110 | 100% |  |  | Pro Engineer [312.12 h] | PRO-SD-PO-120 | PRC | PO | Each | PO | SD | PRO | PROC | MEP |
| PRO-SD-PO-140 |  | Issuance of Purchase Order for Catch Basin Covers of Storm Drainage Network | 6d | 2025-02-11 A | 2025-02-17 A | ENG-MT-SD-TF-A-110, ENG-SH-SD-CB-A-110, ENG-MS-SD-CB-A-110 | 100% |  |  | Pro Engineer [312.12 h] | PRO-SD-PO-140 | PRC | PO | Each | PO | SD | PRO | PROC | MEP |
| PRO-SD-PO-160 |  | Issuance of Purchase Order for Epoxy Insulation of Storm Drainage Network | 6d | 2025-02-11 A | 2025-02-17 A | ENG-MT-SD-TF-A-120, ENG-SH-SD-ML-A-110, ENG-MS-SD-ML-A-110 | 100% |  |  | Pro Engineer [312.12 h] | PRO-SD-PO-160 | PRC | PO | Each | PO | SD | PRO | PROC | MEP |
|  | 1DL | **1st Material Delivery & Site Inspection** |  | 2025-04-29 | 2026-06-30 |  |  |  |  |  |  |  |  |  |  |  |  |  |  |
|  | 1 | **Main Line Sections** |  | 2025-04-29 | 2025-05-29 |  |  |  |  |  |  |  |  |  |  |  |  |  |  |
| PRO-SD-1DL-110 |  | 1ST Material Delivery for Main Line Pipes of Storm Drainage Network | 6d | 2025-04-29 A | 2025-04-30 A | PRO-SD-MF-110 | 100% | 2025-04-12 | 2025-04-17 | Pro Engineer [312.12 h] | PRO-SD-1DL-110 | PRC | 1DL | Each | 1DL | SD | PRO | PROC | MEP |
| PRO-SD-1DL-100 |  | 1ST Material Delivery for Manholes of Storm Drainage Network | 6d | 2025-05-11 A | 2025-05-29 A | PRO-SD-MF-100 | 100% | 2025-04-23 | 2025-04-29 | Pro Engineer [312.12 h] | PRO-SD-1DL-100 | PRC | 1DL | Each | 1DL | SD | PRO | PROC | MEP |

| ID | WBS | Activity | Duration | Start | Finish | Predecessors | Complete | Planned start | Planned finish | Resources | Activity ID N | 02- Network-WBS | 03- Activity | 04-UOM | 05-Discipline | 01- Network | 08 Stage | Discipline | New Discipline | 09 Roads |
| --- | --- | --- | --- | --- | --- | --- | --- | --- | --- | --- | --- | --- | --- | --- | --- | --- | --- | --- | --- | --- |
|  | 2 | **Catch Basin Sections** |  | 2025-05-10 | 2025-05-31 |  |  |  |  |  |  |  |  |  |  |  |  |  |  |  |
| PRO-SD-1DL-120 |  | 1ST Material Delivery for Catch Basin Pipes of Storm Drainage Network | 6d | 2025-05-10 A | 2025-05-20 A | PRO-SD-MF-150 | 100% | 2025-04-23 | 2025-04-29 | Pro Engineer [312.12 h] | PRO-SD-1DL-120 | PRC | 1DL | Each | 1DL | SD | PRO | PROC | MEP |  |
| PRO-SD-1DL-130 |  | 1ST Material Delivery for Catch Basins of Storm Drainage Network | 6d | 2025-05-19 A | 2025-05-31 A | PRO-SD-MF-130 | 100% | 2025-04-23 | 2025-04-29 | Pro Engineer [312.12 h] | PRO-SD-1DL-130 | PRC | 1DL | Each | 1DL | SD | PRO | PROC | MEP |  |
|  | 3 | **Testing and Finishes** |  | 2026-06-17 | 2026-06-30 |  |  |  |  |  |  |  |  |  |  |  |  |  |  |  |
| PRO-SD-1DL-150 |  | 1ST Material Delivery for Catch Basin Covers of Storm Drainage Network | 6d | 2026-06-17 A | 2026-06-30 A | PRO-SD-MF-140 | 100% | 2025-07-19 | 2025-07-24 | Pro Engineer [312.12 h] | PRO-SD-1DL-150 | PRC | 1DL | Each | 1DL | SD | PRO | PROC | MEP |  |
| PRO-SD-1DL-160 |  | 1ST Material Delivery for Epoxy Insulation of Storm Drainage Network | 6d | 2026-06-18 A | 2026-06-30 A | PRO-SD-MF-160 | 100% | 2025-07-19 | 2025-07-24 | Pro Engineer [312.12 h] | PRO-SD-1DL-160 | PRC | 1DL | Each | 1DL | SD | PRO | PROC | MEP |  |
| PRO-SD-1DL-140 |  | 1ST Material Delivery for Manholes Covers of Storm Drainage Network | 6d | 2026-06-24 A | 2026-06-30 A | PRO-SD-MF-120 | 100% | 2025-07-19 | 2025-07-24 | Pro Engineer [312.12 h] | PRO-SD-1DL-140 | PRC | 1DL | Each | 1DL | SD | PRO | PROC | MEP |  |
|  | DL | **Material Delivery & Site Inspection** |  | 2025-05-01 | 2026-11-29 |  |  |  |  |  |  |  |  |  |  |  |  |  |  |  |
|  | 1 | **Road 18 Local 1 ( 479 LM )** |  | 2025-05-01 | 2026-11-18 |  |  |  |  |  |  |  |  |  |  |  |  |  |  |  |
|  | 1 | **Main Line Sections** |  | 2025-05-01 | 2025-05-29 |  |  |  |  |  |  |  |  |  |  |  |  |  |  |  |
| PRO-R18-SD-DL-180 |  | Material Delivery & Site Inspection of Main Line Pipes of Storm Drainage Network | 17d | 2025-05-01 A | 2025-05-29 A | PRO-SD-1DL-110 | 100% | 2025-04-19 | 2025-05-07 | Pro Engineer [312.12 h]; Pipe with diameter 400mm ; depth: 0.0m - 1.5m; Pipe with diameter 400mm ; depth: 1.51m - 2.5m; Pipe with diameter 500mm ; depth: 1.51m - 2.5m; Pipe with diameter 600mm ; depth: 1.51m - 2.5m; Pipe with diameter 700mm ; depth: 1.51m - 2.5m; Pipe with diameter 800mm ; depth: 1.51m - 2.5m; Pipe with diameter 900mm ; depth: 1.51m - 2.5m; Pipe with diameter 900mm ; depth: 2.51 - 3.5m; Pipe with diameter 1000mm ; depth: 1.51m - 2.5m; Pipe with diameter 1000mm ; depth: 2.51 - 3.5m | PRO-R18-SD-DL-180 | PRC | DL | Each | DL | SD | PRO | PROC | MEP | R18 |
| PRO-R18-SD-DL-170 |  | Material Delivery & Site Inspection of Manholes of Storm Drainage Network | 20d | 2025-05-11 A | 2025-05-24 A | PRO-SD-1DL-100 | 100% | 2025-04-30 | 2025-05-22 | Pro Engineer [312.12 h]; MH ; depth: 0.0m - 1.5m; MH ; depth: 1.51m - 2.5m; MH ; depth: 2.51 - 3.5m | PRO-R18-SD-DL-170 | PRC | DL | Each | DL | SD | PRO | PROC | MEP | R18 |
|  | 2 | **Catch Basin Sections** |  | 2025-05-21 | 2025-05-31 |  |  |  |  |  |  |  |  |  |  |  |  |  |  |  |
| PRO-R18-SD-DL-200 |  | Material Delivery & Site Inspection of Catch Basins for Storm Drainage Network | 26d | 2025-05-21 A | 2025-05-31 A | PRO-SD-1DL-130 | 100% | 2025-04-30 | 2025-05-29 | Pro Engineer [312.12 h]; Pipe with diameter 300mm ; depth: 0 - 1.5m; Pipe with diameter 400mm ; depth: 0 - 1.5m; Single Catch basin; Double Catch basin | PRO-R18-SD-DL-200 | PRC | DL | Each | DL | SD | PRO | PROC | MEP | R18 |
| PRO-R18-SD-DL-220 |  | Material Delivery & Site Inspection of Catch Basin Pipes for Storm Drainage Network | 26d | 2025-05-21 A | 2025-05-29 A | PRO-SD-1DL-120 | 100% | 2025-04-30 | 2025-05-29 | Pro Engineer [312.12 h] | PRO-R18-SD-DL-220 | PRC | DL | Each | DL | SD | PRO | PROC | MEP | R18 |
|  | 3 | **Testing and Finishes** |  | 2026-10-10 | 2026-11-18 |  |  |  |  |  |  |  |  |  |  |  |  |  |  |  |
| PRO-R18-SD-DL-210 |  | Material Delivery & Site Inspection of Catch Basin Covers for Storm Drainage Network | 26d | 2026-10-10 A | 2026-10-12 A | PRO-SD-1DL-150 | 100% | 2026-11-10 | 2026-12-09 | Pro Engineer [44.04 h] | PRO-R18-SD-DL-210 | PRC | DL | Each | DL | SD | PRO | PROC | MEP | R18 |
| PRO-R18-SD-DL-230 |  | Material Delivery & Site Inspection of Epoxy Insulation for Storm Drainage Network | 26d | 2026-10-10 A | 2026-10-13 A | PRO-SD-1DL-160 | 100% | 2026-11-10 | 2026-12-09 | Pro Engineer [44.04 h] | PRO-R18-SD-DL-230 | PRC | DL | Each | DL | SD | PRO | PROC | MEP | R18 |
| PRO-R18-SD-DL-190 |  | Material Delivery & Site Inspection of Manholes Covers for Storm Drainage Network | 26d | 2026-11-17 A | 2026-11-18 A | PRO-SD-1DL-140 | 100% | 2026-11-17 | 2026-12-16 | Pro Engineer [44.04 h] | PRO-R18-SD-DL-190 | PRC | DL | Each | DL | SD | PRO | PROC | MEP | R18 |
|  | 9 | **Road 17 Local 1 ( 500 LM )** |  | 2025-05-15 | 2026-11-29 |  |  |  |  |  |  |  |  |  |  |  |  |  |  |  |
|  | 1 | **Main Line Sections** |  | 2025-05-15 | 2025-05-29 |  |  |  |  |  |  |  |  |  |  |  |  |  |  |  |
| PRO-R17-SD-DL-120 |  | Material Delivery & Site Inspection of Main Line Pipes of Storm Drainage Network | 17d | 2025-05-15 A | 2025-05-29 A | PRO-SD-1DL-110, PRO-R18-SD-DL-180 | 100% | 2025-05-08 | 2025-05-27 | Pro Engineer [312.12 h]; Pipe with diameter 400mm ; depth: 0.0m - 1.5m; Pipe with diameter 400mm ; depth: 1.51m - 2.5m; Pipe with diameter 500mm ; depth: 1.51m - 2.5m; Pipe with diameter 600mm ; depth: 1.51m - 2.5m; Pipe with diameter 700mm ; depth: 1.51m - 2.5m; Pipe with diameter 800mm ; depth: 1.51m - 2.5m; Pipe with diameter 900mm ; depth: 1.51m - 2.5m; Pipe with diameter 1000mm ; depth: 1.51m - 2.5m; Pipe with diameter 1000mm ; depth: 2.51 - 3.5m | PRO-R17-SD-DL-120 | PRC | DL | Each | DL | SD | PRO | PROC | MEP | R17 |
| PRO-R17-SD-DL-100 |  | Material Delivery & Site Inspection of Manholes of Storm Drainage Network | 20d | 2025-05-17 A | 2025-05-27 A | PRO-SD-1DL-100, PRO-R18-SD-DL-170 | 100% | 2025-05-24 | 2025-06-19 | Pro Engineer [312.12 h]; MH ; depth: 0.0m - 1.5m; MH ; depth: 1.51m - 2.5m; MH ; depth: 2.51 - 3.5m | PRO-R17-SD-DL-100 | PRC | DL | Each | DL | SD | PRO | PROC | MEP | R17 |
|  | 2 | **Catch Basin Sections** |  | 2025-05-19 | 2025-05-31 |  |  |  |  |  |  |  |  |  |  |  |  |  |  |  |
| PRO-R17-SD-DL-130 |  | Material Delivery & Site Inspection of Catch Basins for Storm Drainage Network | 26d | 2025-05-19 A | 2025-05-31 A | PRO-SD-1DL-130, PRO-R18-SD-DL-200 | 100% | 2025-05-31 | 2025-07-03 | Pro Engineer [312.12 h]; Pipe with diameter 300mm ; depth: 0 - 1.5m; Pipe with diameter 400mm ; depth: 0 - 1.5m; Single Catch basin; Double Catch basin | PRO-R17-SD-DL-130 | PRC | DL | Each | DL | SD | PRO | PROC | MEP | R17 |
| PRO-R17-SD-DL-110 |  | Material Delivery & Site Inspection of Catch Basin Pipes for Storm Drainage Network | 26d | 2025-05-22 A | 2025-05-29 A | PRO-SD-1DL-120, PRO-R18-SD-DL-220 | 100% | 2025-05-31 | 2025-07-03 | Pro Engineer [312.12 h] | PRO-R17-SD-DL-110 | PRC | DL | Each | DL | SD | PRO | PROC | MEP | R17 |

| ID | WBS | Activity | Duration | Start | Finish | Predecessors | Complete | Remaining | Planned start | Planned finish | Total float | Free float | Resources | Activity ID N | 02- Network-WBS | 03- Activity | 04-UOM | 05-Discipline | 01- Network | 08 Stage | 09 Roads | Discipline | New Discipline |
| --- | --- | --- | --- | --- | --- | --- | --- | --- | --- | --- | --- | --- | --- | --- | --- | --- | --- | --- | --- | --- | --- | --- | --- |
|  | 3 | **Testing and Finishes** |  | 2026-06-20 | 2026-11-29 |  |  |  |  |  |  |  |  |  |  |  |  |  |  |  |  |  |  |
| PRO-R17-SD-DL-160 |  | Material Delivery & Site Inspection of Epoxy Insulation for Storm Drainage Network | 26d | 2026-06-20 A | 2026-11-29 | PRO-SD-1DL-160, PRO-R18-SD-DL-230 FF+5d | 20% | 5d | 2025-08-25 | 2025-09-24 | -12d | 0d | Pro Engineer [85.07 h] | PRO-R17-SD-DL-160 | PRC | DL | Each | DL | SD | PRO | R17 | PROC | MEP |
| PRO-R17-SD-DL-140 |  | Material Delivery & Site Inspection of Manholes Covers for Storm Drainage Network | 26d | 2026-10-16 A | 2026-11-18 A | PRO-SD-1DL-140 | 100% |  | 2026-11-16 | 2026-12-15 |  |  | Pro Engineer [44.04 h] | PRO-R17-SD-DL-140 | PRC | DL | Each | DL | SD | PRO | R17 | PROC | MEP |
| PRO-R17-SD-DL-150 |  | Material Delivery & Site Inspection of Catch Basin Covers for Storm Drainage Network | 26d | 2026-10-16 A | 2026-10-17 A | PRO-SD-1DL-150, PRO-R18-SD-DL-210 SS+5d | 100% |  | 2026-11-16 | 2026-12-15 |  |  | Pro Engineer [44.04 h] | PRO-R17-SD-DL-150 | PRC | DL | Each | DL | SD | PRO | R17 | PROC | MEP |
|  | 8 | **Road 16 Local 1 ( 527 LM )** |  | 2025-05-20 | 2026-11-18 |  |  |  |  |  |  |  |  |  |  |  |  |  |  |  |  |  |  |
|  | 1 | **Main Line Sections** |  | 2025-05-20 | 2025-06-01 |  |  |  |  |  |  |  |  |  |  |  |  |  |  |  |  |  |  |
| PRO-R16-SD-DL-100 |  | Material Delivery & Site Inspection of Manholes of Storm Drainage Network | 20d | 2025-05-20 A | 2025-05-28 A | PRO-SD-1DL-100, PRO-R17-SD-DL-100 | 100% |  | 2025-06-21 | 2025-07-13 |  |  | Pro Engineer [312.12 h]; MH ; depth: 0.0m - 1.5m; MH ; depth: 1.51m - 2.5m; MH ; depth: 2.51 - 3.5m | PRO-R16-SD-DL-100 | PRC | DL | Each | DL | SD | PRO | R16 | PROC | MEP |
| PRO-R16-SD-DL-120 |  | Material Delivery & Site Inspection of Main Line Pipes of Storm Drainage Network | 17d | 2025-05-20 A | 2025-06-01 A | PRO-SD-1DL-110, PRO-R17-SD-DL-120 | 100% |  | 2025-05-28 | 2025-06-21 |  |  | Pro Engineer [312.12 h]; Pipe with diameter 400mm ; depth: 0.0m - 1.5m; Pipe with diameter 400mm ; depth: 1.51m - 2.5m; Pipe with diameter 500mm ; depth: 1.51m - 2.5m; Pipe with diameter 600mm ; depth: 1.51m - 2.5m; Pipe with diameter 700mm ; depth: 1.51m - 2.5m; Pipe with diameter 800mm ; depth: 1.51m - 2.5m; Pipe with diameter 900mm ; depth: 1.51m - 2.5m; Pipe with diameter 1000mm ; depth: 1.51m - 2.5m; Pipe with diameter 1000mm ; depth: 2.51 - 3.5m | PRO-R16-SD-DL-120 | PRC | DL | Each | DL | SD | PRO | R16 | PROC | MEP |
|  | 2 | **Catch Basin Sections** |  | 2025-05-21 | 2025-06-01 |  |  |  |  |  |  |  |  |  |  |  |  |  |  |  |  |  |  |
| PRO-R16-SD-DL-110 |  | Material Delivery & Site Inspection of Catch Basin Pipes for Storm Drainage Network | 26d | 2025-05-21 A | 2025-05-31 A | PRO-SD-1DL-120, PRO-R17-SD-DL-110 | 100% |  | 2025-07-05 | 2025-08-03 |  |  | Pro Engineer [312.12 h] | PRO-R16-SD-DL-110 | PRC | DL | Each | DL | SD | PRO | R16 | PROC | MEP |
| PRO-R16-SD-DL-130 |  | Material Delivery & Site Inspection of Catch Basins for Storm Drainage Network | 26d | 2025-05-26 A | 2025-06-01 A | PRO-SD-1DL-130, PRO-R17-SD-DL-130 | 100% |  | 2025-07-05 | 2025-08-03 |  |  | Pro Engineer [312.12 h]; Pipe with diameter 300mm ; depth: 0 - 1.5m; Pipe with diameter 400mm ; depth: 0 - 1.5m; Single Catch basin; Double Catch basin | PRO-R16-SD-DL-130 | PRC | DL | Each | DL | SD | PRO | R16 | PROC | MEP |
|  | 3 | **Testing and Finishes** |  | 2026-09-22 | 2026-11-18 |  |  |  |  |  |  |  |  |  |  |  |  |  |  |  |  |  |  |
| PRO-R16-SD-DL-150 |  | Material Delivery & Site Inspection of Catch Basin Covers for Storm Drainage Network | 26d | 2026-09-22 A | 2026-10-21 A | PRO-SD-1DL-150, PRO-R17-SD-DL-150 SS+5d | 100% |  | 2026-11-22 | 2026-12-21 |  |  | Pro Engineer [44.04 h] | PRO-R16-SD-DL-150 | PRC | DL | Each | DL | SD | PRO | R16 | PROC | MEP |
| PRO-R16-SD-DL-160 |  | Material Delivery & Site Inspection of Epoxy Insulation for Storm Drainage Network | 26d | 2026-09-22 A | 2026-10-21 A | PRO-SD-1DL-160, PRO-R17-SD-DL-160 SS+5d | 100% |  | 2026-12-10 | 2027-01-09 |  |  | Pro Engineer [44.04 h] | PRO-R16-SD-DL-160 | PRC | DL | Each | DL | SD | PRO | R16 | PROC | MEP |
| PRO-R16-SD-DL-140 |  | Material Delivery & Site Inspection of Manholes Covers for Storm Drainage Network | 26d | 2026-11-17 A | 2026-11-18 A | PRO-SD-1DL-140, PRO-R17-SD-DL-140 SS+5d, PRO-R18-SD-DL-190 | 100% |  | 2026-12-17 | 2027-01-16 |  |  | Pro Engineer [44.04 h] | PRO-R16-SD-DL-140 | PRC | DL | Each | DL | SD | PRO | R16 | PROC | MEP |
|  | 7 | **Road 15 Local 1 ( 556 LM )** |  | 2025-05-03 | 2026-11-18 |  |  |  |  |  |  |  |  |  |  |  |  |  |  |  |  |  |  |
|  | 1 | **Main Line Sections** |  | 2025-05-03 | 2025-05-31 |  |  |  |  |  |  |  |  |  |  |  |  |  |  |  |  |  |  |
| PRO-R15-SD-DL-120 |  | Material Delivery & Site Inspection of Main Line Pipes of Storm Drainage Network | 17d | 2025-05-03 A | 2025-05-31 A | PRO-SD-1DL-110, PRO-R16-SD-DL-120 | 100% |  | 2025-06-22 | 2025-07-10 |  |  | Pro Engineer [312.12 h]; Pipe with diameter 400mm ; depth: 0.0m - 1.5m; Pipe with diameter 400mm ; depth: 1.51m - 2.5m; Pipe with diameter 500mm ; depth: 1.51m - 2.5m; Pipe with diameter 600mm ; depth: 1.51m - 2.5m; Pipe with diameter 700mm ; depth: 1.51m - 2.5m; Pipe with diameter 900mm ; depth: 1.51m - 2.5m; Pipe with diameter 1000mm ; depth: 1.51m - 2.5m; Pipe with diameter 1000mm ; depth: 2.51 - 3.5m | PRO-R15-SD-DL-120 | PRC | DL | Each | DL | SD | PRO | R15 | PROC | MEP |
| PRO-R15-SD-DL-100 |  | Material Delivery & Site Inspection of Manholes of Storm Drainage Network | 25.75d | 2025-05-15 A | 2025-05-31 A | PRO-SD-1DL-100, PRO-R16-SD-DL-100 | 100% |  | 2025-07-14 | 2025-08-12 |  |  | Pro Engineer [312.12 h]; MH ; depth: 0.0m - 1.5m; MH ; depth: 1.51m - 2.5m; MH ; depth: 2.51 - 3.5m | PRO-R15-SD-DL-100 | PRC | DL | Each | DL | SD | PRO | R15 | PROC | MEP |
|  | 2 | **Catch Basin Sections** |  | 2025-05-10 | 2025-06-01 |  |  |  |  |  |  |  |  |  |  |  |  |  |  |  |  |  |  |
| PRO-R15-SD-DL-110 |  | Material Delivery & Site Inspection of Catch Basin Pipes for Storm Drainage Network | 26d | 2025-05-10 A | 2025-05-29 A | PRO-SD-1DL-120, PRO-R16-SD-DL-110 | 100% |  | 2025-08-04 | 2025-09-02 |  |  | Pro Engineer [312.12 h] | PRO-R15-SD-DL-110 | PRC | DL | Each | DL | SD | PRO | R15 | PROC | MEP |
| PRO-R15-SD-DL-130 |  | Material Delivery & Site Inspection of Catch Basins for Storm Drainage Network | 26d | 2025-05-24 A | 2025-06-01 A | PRO-SD-1DL-130, PRO-R16-SD-DL-130 | 100% |  | 2025-08-04 | 2025-09-02 |  |  | Pro Engineer [312.12 h]; Pipe with diameter 300mm ; depth: 0 - 1.5m; Pipe with diameter 400mm ; depth: 0 - 1.5m; Single Catch basin; Double Catch basin | PRO-R15-SD-DL-130 | PRC | DL | Each | DL | SD | PRO | R15 | PROC | MEP |
|  | 3 | **Testing and Finishes** |  | 2026-09-28 | 2026-11-18 |  |  |  |  |  |  |  |  |  |  |  |  |  |  |  |  |  |  |
| PRO-R15-SD-DL-150 |  | Material Delivery & Site Inspection of Catch Basin Covers for Storm Drainage Network | 26d | 2026-09-28 A | 2026-10-01 A | PRO-SD-1DL-150, PRO-R16-SD-DL-150 SS+5d | 100% |  | 2026-11-28 | 2026-12-27 |  |  | Pro Engineer [44.04 h] | PRO-R15-SD-DL-150 | PRC | DL | Each | DL | SD | PRO | R15 | PROC | MEP |
| PRO-R15-SD-DL-160 |  | Material Delivery & Site Inspection of Epoxy Insulation for Storm Drainage Network | 26d | 2026-09-28 A | 2026-10-01 A | PRO-SD-1DL-160, PRO-R16-SD-DL-160 SS+5d | 100% |  | 2026-12-16 | 2027-01-14 |  |  | Pro Engineer [44.04 h] | PRO-R15-SD-DL-160 | PRC | DL | Each | DL | SD | PRO | R15 | PROC | MEP |
| PRO-R15-SD-DL-140 |  | Material Delivery & Site Inspection of Manholes Covers for Storm Drainage Network | 26d | 2026-11-17 A | 2026-11-18 A | PRO-SD-1DL-140, PRO-R16-SD-DL-140 SS+5d | 100% |  | 2026-12-23 | 2027-01-21 |  |  | Pro Engineer [44.04 h] | PRO-R15-SD-DL-140 | PRC | DL | Each | DL | SD | PRO | R15 | PROC | MEP |

| ID | WBS | Activity | Duration | Start | Finish | Predecessors | Complete | Planned start | Planned finish | Resources | Activity ID N | 02- Network-WBS | 03- Activity | 04-UOM | 05-Discipline | 01- Network | 08 Stage | 09 Roads | Discipline | New Discipline |
| --- | --- | --- | --- | --- | --- | --- | --- | --- | --- | --- | --- | --- | --- | --- | --- | --- | --- | --- | --- | --- |
|  | 4 | **Road 10 Local 2 ( 2352 LM )** |  | 2025-06-10 | 2026-11-18 |  |  |  |  |  |  |  |  |  |  |  |  |  |  |  |
|  | 1 | **Main Line Sections** |  | 2025-06-10 | 2025-06-25 |  |  |  |  |  |  |  |  |  |  |  |  |  |  |  |
| PRO-R10-SD-DL-100 |  | Material Delivery & Site Inspection of Manholes of Storm Drainage Network | 26d | 2025-06-10 A | 2025-06-25 A | PRO-SD-1DL-100, PRO-R15-SD-DL-100 | 100% | 2025-08-12 | 2025-09-11 | Pro Engineer [312.12 h]; MH ; depth: 0.0m - 1.5m; MH ; depth: 1.51m - 2.5m; MH ; depth: 1.51m - 2.5m with back drop less than 1.0 m; MH ; depth: 2.51 - 3.5m; MH ; depth: 3.51 - 4.5m | PRO-R10-SD-DL-100 | PRC | DL | Each | DL | SD | PRO | R10 | PROC | MEP |
| PRO-R10-SD-DL-120 |  | Material Delivery & Site Inspection of Main Line Pipes of Storm Drainage Network | 17d | 2025-06-10 A | 2025-06-25 A | PRO-SD-1DL-110, PRO-R15-SD-DL-120 | 100% | 2025-07-12 | 2025-07-30 | Pro Engineer [312.12 h]; Pipe with diameter 400mm ; depth: 0.0m - 1.5m; Pipe with diameter 400mm ; depth: 1.51m - 2.5m; Pipe with diameter 500mm ; depth: 0.0m - 1.5m; Pipe with diameter 500mm ; depth: 1.51m - 2.5m; Pipe with diameter 600mm ; depth: 1.51m - 2.5m; Pipe with diameter 600mm ; depth: 2.51m - 3.5m; Pipe with diameter 700mm ; depth: 0.0m - 1.5m; Pipe with diameter 700mm ; depth: 1.51m - 2.5m; Pipe with diameter 800mm ; depth: 1.51m - 2.5m; Pipe with diameter 900mm ; depth: 1.51m - 2.5m; Pipe with diameter 1000mm ; depth: 0.0m - 1.5m; Pipe with diameter 1100mm ; depth: 0.0m - 1.5m | PRO-R10-SD-DL-120 | PRC | DL | Each | DL | SD | PRO | R10 | PROC | MEP |
|  | 2 | **Catch Basin Sections** |  | 2025-06-12 | 2025-07-12 |  |  |  |  |  |  |  |  |  |  |  |  |  |  |  |
| PRO-R10-SD-DL-110 |  | Material Delivery & Site Inspection of Catch Basin Pipes for Storm Drainage Network | 26d | 2025-06-12 A | 2025-07-12 A | PRO-SD-1DL-120, PRO-R15-SD-DL-110 | 100% | 2025-09-03 | 2025-10-04 | Pro Engineer [312.12 h] | PRO-R10-SD-DL-110 | PRC | DL | Each | DL | SD | PRO | R10 | PROC | MEP |
| PRO-R10-SD-DL-130 |  | Material Delivery & Site Inspection of Catch Basins for Storm Drainage Network | 26d | 2025-06-12 A | 2025-06-30 A | PRO-SD-1DL-130, PRO-R15-SD-DL-130 | 100% | 2025-09-03 | 2025-10-04 | Pro Engineer [312.12 h]; Pipe with diameter 300mm ; depth: 0 - 1.5m; Pipe with diameter 400mm ; depth: 0 - 1.5m; Single Catch basin; Double Catch basin | PRO-R10-SD-DL-130 | PRC | DL | Each | DL | SD | PRO | R10 | PROC | MEP |
|  | 3 | **Testing and Finishes** |  | 2026-06-17 | 2026-11-18 |  |  |  |  |  |  |  |  |  |  |  |  |  |  |  |
| PRO-R10-SD-DL-150 |  | Material Delivery & Site Inspection of Catch Basin Covers for Storm Drainage Network | 26d | 2026-06-17 A | 2026-08-30 A | PRO-SD-1DL-150 | 100% | 2025-11-25 | 2025-12-24 | Pro Engineer [312.12 h] | PRO-R10-SD-DL-150 | PRC | DL | Each | DL | SD | PRO | R10 | PROC | MEP |
| PRO-R10-SD-DL-160 |  | Material Delivery & Site Inspection of Epoxy Insulation for Storm Drainage Network | 26d | 2026-06-18 A | 2026-07-30 A | PRO-SD-1DL-160 | 100% | 2025-11-25 | 2025-12-24 | Pro Engineer [312.12 h] | PRO-R10-SD-DL-160 | PRC | DL | Each | DL | SD | PRO | R10 | PROC | MEP |
| PRO-R10-SD-DL-140 |  | Material Delivery & Site Inspection of Manholes Covers for Storm Drainage Network | 26d | 2026-11-17 A | 2026-11-18 A | PRO-SD-1DL-140, PRO-R15-SD-DL-140 SS+5d, PRO-R15-SD-DL-140 FF | 100% | 2026-12-29 | 2027-01-27 | Pro Engineer [44.04 h] | PRO-R10-SD-DL-140 | PRC | DL | Each | DL | SD | PRO | R10 | PROC | MEP |
|  | 6 | **Road 14 Local 1 ( 584 LM )** |  | 2025-07-15 | 2026-11-18 |  |  |  |  |  |  |  |  |  |  |  |  |  |  |  |
|  | 1 | **Main Line Sections** |  | 2025-07-15 | 2025-11-01 |  |  |  |  |  |  |  |  |  |  |  |  |  |  |  |
| PRO-R14-SD-DL-120 |  | Material Delivery & Site Inspection of Main Line Pipes of Storm Drainage Network | 17d | 2025-07-15 A | 2025-08-02 A | PRO-SD-1DL-110, PRO-R10-SD-DL-120 | 100% | 2025-07-31 | 2025-08-19 | Pro Engineer [312.12 h]; Pipe with diameter 400mm ; depth: 0.0m - 1.5m; Pipe with diameter 400mm ; depth: 1.51m - 2.5m; Pipe with diameter 400mm ; depth: 2.51m - 3.5m; Pipe with diameter 500mm ; depth: 1.51m - 2.5m; Pipe with diameter 600mm ; depth: 1.51m - 2.5m; Pipe with diameter 700mm ; depth: 1.51m - 2.5m; Pipe with diameter 1200mm ; depth: 2.51 - 3.5m | PRO-R14-SD-DL-120 | PRC | DL | Each | DL | SD | PRO | R14 | PROC | MEP |
| PRO-R14-SD-DL-100 |  | Material Delivery & Site Inspection of Manholes of Storm Drainage Network | 26d | 2025-10-04 A | 2025-11-01 A | PRO-SD-1DL-100, PRO-R10-SD-DL-100 | 100% | 2025-09-11 | 2025-10-13 | Pro Engineer [312.12 h]; MH ; depth: 0.0m - 1.5m; MH ; depth: 1.51m - 2.5m; MH ; depth: 2.51 - 3.5m; MH ; depth: 2.51 - 3.5m with back drop less than 1.0 m | PRO-R14-SD-DL-100 | PRC | DL | Each | DL | SD | PRO | R14 | PROC | MEP |
|  | 2 | **Catch Basin Sections** |  | 2025-10-04 | 2026-06-15 |  |  |  |  |  |  |  |  |  |  |  |  |  |  |  |
| PRO-R14-SD-DL-130 |  | Material Delivery & Site Inspection of Catch Basins for Storm Drainage Network | 26d | 2025-10-04 A | 2025-11-01 A | PRO-SD-1DL-130, PRO-R10-SD-DL-130 | 100% | 2025-10-05 | 2025-11-03 | Pro Engineer [312.12 h]; Pipe with diameter 300mm ; depth: 0 - 1.5m; Pipe with diameter 400mm ; depth: 0 - 1.5m; Single Catch basin; Double Catch basin | PRO-R14-SD-DL-130 | PRC | DL | Each | DL | SD | PRO | R14 | PROC | MEP |
| PRO-R14-SD-DL-110 |  | Material Delivery & Site Inspection of Catch Basin Pipes for Storm Drainage Network | 26d | 2026-06-04 A | 2026-06-15 A | PRO-SD-1DL-120, PRO-R10-SD-DL-110 | 100% | 2025-10-05 | 2025-11-03 | Pro Engineer [312.12 h] | PRO-R14-SD-DL-110 | PRC | DL | Each | DL | SD | PRO | R14 | PROC | MEP |
|  | 3 | **Testing and Finishes** |  | 2026-07-24 | 2026-11-18 |  |  |  |  |  |  |  |  |  |  |  |  |  |  |  |
| PRO-R14-SD-DL-160 |  | Material Delivery & Site Inspection of Epoxy Insulation for Storm Drainage Network | 26d | 2026-07-24 A | 2026-07-30 A | PRO-SD-1DL-160, PRO-R10-SD-DL-160 | 100% | 2025-12-25 | 2026-01-24 | Pro Engineer [312.12 h] | PRO-R14-SD-DL-160 | PRC | DL | Each | DL | SD | PRO | R14 | PROC | MEP |
| PRO-R14-SD-DL-150 |  | Material Delivery & Site Inspection of Catch Basin Covers for Storm Drainage Network | 26d | 2026-09-10 A | 2026-09-12 A | PRO-SD-1DL-150, PRO-R10-SD-DL-150 SS+5d | 100% | 2026-11-10 | 2026-12-09 | Pro Engineer [44.04 h] | PRO-R14-SD-DL-150 | PRC | DL | Each | DL | SD | PRO | R14 | PROC | MEP |
| PRO-R14-SD-DL-140 |  | Material Delivery & Site Inspection of Manholes Covers for Storm Drainage Network | 26d | 2026-11-17 A | 2026-11-18 A | PRO-SD-1DL-140, PRO-R10-SD-DL-140 SS+5d, PRO-R10-SD-DL-140 FF | 100% | 2027-01-04 | 2027-02-02 | Pro Engineer [44.04 h] | PRO-R14-SD-DL-140 | PRC | DL | Each | DL | SD | PRO | R14 | PROC | MEP |
|  | 2 | **Road 09 Local 2 ( 2278 LM )** |  | 2025-06-03 | 2026-11-18 |  |  |  |  |  |  |  |  |  |  |  |  |  |  |  |
|  | 1 | **Main Line Sections** |  | 2025-06-03 | 2025-06-30 |  |  |  |  |  |  |  |  |  |  |  |  |  |  |  |
| PRO-R09-SD-DL-120 |  | Material Delivery & Site Inspection of Main Line Pipes of Storm Drainage Network | 17d | 2025-06-03 A | 2025-06-30 A | PRO-SD-1DL-110, PRO-R14-SD-DL-120 | 100% | 2025-08-20 | 2025-09-08 | Pro Engineer [312.12 h]; Pipe with diameter 400mm ; depth: 0.0m - 1.5m; Pipe with diameter 400mm ; depth: 1.51m - 2.5m; Pipe with diameter 600mm ; depth: 0.0m - 1.5m; Pipe with diameter 700mm ; depth: 1.51m - 2.5m; Pipe with diameter 700mm ; depth: 2.51m - 3.5m; Pipe with diameter 800mm ; depth: 1.51m - 2.5m; Pipe with diameter 1100mm ; depth: 1.51m - 2.5m; Pipe with diameter 1100mm ; depth: 2.51 - 3.5m; Pipe with diameter 1200mm ; depth: 1.51m - 2.5m | PRO-R09-SD-DL-120 | PRC | DL | Each | DL | SD | PRO | R09 | PROC | MEP |
| PRO-R09-SD-DL-100 |  | Material Delivery & Site Inspection of Manholes of Storm Drainage Network | 12d | 2025-06-14 A | 2025-06-30 A | PRO-SD-1DL-100, PRO-R14-SD-DL-100 | 100% | 2025-10-13 | 2025-10-27 | Pro Engineer [312.12 h]; MH ; depth: 0.0m - 1.5m; MH ; depth: 1.51m - 2.5m; MH ; depth: 2.51 - 3.5m | PRO-R09-SD-DL-100 | PRC | DL | Each | DL | SD | PRO | R09 | PROC | MEP |

| ID | WBS | Activity | Duration | Start | Finish | Predecessors | Complete | Planned start | Planned finish | Resources | Activity ID N | 02- Network-WBS | 03- Activity | 04-UOM | 05-Discipline | 01- Network | 08 Stage | 09 Roads | Discipline | New Discipline |
| --- | --- | --- | --- | --- | --- | --- | --- | --- | --- | --- | --- | --- | --- | --- | --- | --- | --- | --- | --- | --- |
|  | 2 | **Catch Basin Sections** |  | 2025-12-01 | 2025-12-08 |  |  |  |  |  |  |  |  |  |  |  |  |  |  |  |
| PRO-R09-SD-DL-110 |  | Material Delivery & Site Inspection of Catch Basin Pipes for Storm Drainage Network | 26d | 2025-12-01 A | 2025-12-08 A | PRO-SD-1DL-120, PRO-R14-SD-DL-110 | 100% | 2025-11-04 | 2025-12-03 | Pro Engineer [312.12 h] | PRO-R09-SD-DL-110 | PRC | DL | Each | DL | SD | PRO | R09 | PROC | MEP |
| PRO-R09-SD-DL-130 |  | Material Delivery & Site Inspection of Catch Basins for Storm Drainage Network | 26d | 2025-12-01 A | 2025-12-07 A | PRO-SD-1DL-130, PRO-R14-SD-DL-130 | 100% | 2025-11-04 | 2025-12-03 | Pro Engineer [312.12 h]; Pipe with diameter 300mm ; depth: 0 - 1.5m; Pipe with diameter 400mm ; depth: 0 - 1.5m; Access opening with dimensions 1000*1000 mm; Single Catch basin; Double Catch basin | PRO-R09-SD-DL-130 | PRC | DL | Each | DL | SD | PRO | R09 | PROC | MEP |
|  | 3 | **Testing and Finishes** |  | 2026-08-24 | 2026-11-18 |  |  |  |  |  |  |  |  |  |  |  |  |  |  |  |
| PRO-R09-SD-DL-160 |  | Material Delivery & Site Inspection of Epoxy Insulation for Storm Drainage Network | 26d | 2026-08-24 A | 2026-08-29 A | PRO-SD-1DL-160, PRO-R14-SD-DL-160 | 100% | 2026-01-25 | 2026-02-23 | Pro Engineer [312.12 h] | PRO-R09-SD-DL-160 | PRC | DL | Each | DL | SD | PRO | R09 | PROC | MEP |
| PRO-R09-SD-DL-150 |  | Material Delivery & Site Inspection of Catch Basin Covers for Storm Drainage Network | 26d | 2026-10-15 A | 2026-10-17 A | PRO-SD-1DL-150, PRO-R14-SD-DL-150 SS+5d, PRO-R14-SD-DL-150 FF | 100% | 2026-11-16 | 2026-12-15 | Pro Engineer [44.04 h] | PRO-R09-SD-DL-150 | PRC | DL | Each | DL | SD | PRO | R09 | PROC | MEP |
| PRO-R09-SD-DL-140 |  | Material Delivery & Site Inspection of Manholes Covers for Storm Drainage Network | 26d | 2026-11-17 A | 2026-11-18 A | PRO-SD-1DL-140, PRO-R14-SD-DL-140 SS+5d, PRO-R14-SD-DL-140 FF | 100% | 2027-01-10 | 2027-02-08 | Pro Engineer [44.04 h] | PRO-R09-SD-DL-140 | PRC | DL | Each | DL | SD | PRO | R09 | PROC | MEP |
|  | 5 | **Road 11 Local 1 ( 670 LM )** |  | 2025-07-29 | 2026-11-18 |  |  |  |  |  |  |  |  |  |  |  |  |  |  |  |
|  | 1 | **Main Line Sections** |  | 2025-07-29 | 2026-07-02 |  |  |  |  |  |  |  |  |  |  |  |  |  |  |  |
| PRO-R11-SD-DL-120 |  | Material Delivery & Site Inspection of Main Line Pipes of Storm Drainage Network | 17d | 2025-07-29 A | 2025-08-07 A | PRO-SD-1DL-110, PRO-R09-SD-DL-120 | 100% | 2025-09-09 | 2025-09-29 | Pro Engineer [312.12 h]; Pipe with diameter 500mm ; depth: 1.51m - 2.5m; Pipe with diameter 600mm ; depth: 1.51m - 2.5m; Pipe with diameter 700mm ; depth: 1.51m - 2.5m; Pipe with diameter 800mm ; depth: 0.0m - 1.5m; Pipe with diameter 800mm ; depth: 1.51m - 2.5m; Pipe with diameter 800mm ; depth: 2.51m - 3.5m; Pipe with diameter 900mm ; depth: 0.0m - 1.5m; Pipe with diameter 900mm ; depth: 1.51m - 2.5m; Pipe with diameter 1000mm ; depth: 1.51m - 2.5m; Pipe with diameter 1000mm ; depth: 2.51 - 3.5m | PRO-R11-SD-DL-120 | PRC | DL | Each | DL | SD | PRO | R11 | PROC | MEP |
| PRO-R11-SD-DL-100 |  | Material Delivery & Site Inspection of Manholes of Storm Drainage Network | 26d | 2025-11-01 A | 2026-07-02 A | PRO-SD-1DL-100, PRO-R09-SD-DL-100 | 100% | 2025-10-27 | 2025-11-26 | Pro Engineer [312.12 h]; MH ; depth: 0.0m - 1.5m; MH ; depth: 1.51m - 2.5m; MH ; depth: 2.51 - 3.5m | PRO-R11-SD-DL-100 | PRC | DL | Each | DL | SD | PRO | R11 | PROC | MEP |
|  | 2 | **Catch Basin Sections** |  | 2025-12-01 | 2026-07-06 |  |  |  |  |  |  |  |  |  |  |  |  |  |  |  |
| PRO-R11-SD-DL-130 |  | Material Delivery & Site Inspection of Catch Basins for Storm Drainage Network | 26d | 2025-12-01 A | 2025-12-08 A | PRO-SD-1DL-130, PRO-R09-SD-DL-130 | 100% | 2025-12-04 | 2026-01-03 | Pro Engineer [312.12 h]; Pipe with diameter 300mm ; depth: 0 - 1.5m; Pipe with diameter 400mm ; depth: 0 - 1.5m; Single Catch basin; Double Catch basin | PRO-R11-SD-DL-130 | PRC | DL | Each | DL | SD | PRO | R11 | PROC | MEP |
| PRO-R11-SD-DL-110 |  | Material Delivery & Site Inspection of Catch Basin Pipes for Storm Drainage Network | 26d | 2026-06-14 A | 2026-07-06 A | PRO-SD-1DL-120, PRO-R09-SD-DL-110 | 100% | 2025-12-04 | 2026-01-03 | Pro Engineer [312.12 h] | PRO-R11-SD-DL-110 | PRC | DL | Each | DL | SD | PRO | R11 | PROC | MEP |
|  | 3 | **Testing and Finishes** |  | 2026-06-22 | 2026-11-18 |  |  |  |  |  |  |  |  |  |  |  |  |  |  |  |
| PRO-R11-SD-DL-160 |  | Material Delivery & Site Inspection of Epoxy Insulation for Storm Drainage Network | 26d | 2026-06-22 A | 2026-09-16 A | PRO-SD-1DL-160, PRO-R09-SD-DL-160 | 100% | 2026-02-24 | 2026-03-29 | Pro Engineer [312.12 h] | PRO-R11-SD-DL-160 | PRC | DL | Each | DL | SD | PRO | R11 | PROC | MEP |
| PRO-R11-SD-DL-150 |  | Material Delivery & Site Inspection of Catch Basin Covers for Storm Drainage Network | 26d | 2026-06-27 A | 2026-08-30 A | PRO-SD-1DL-150 | 100% | 2026-02-24 | 2026-03-29 | Pro Engineer [312.12 h] | PRO-R11-SD-DL-150 | PRC | DL | Each | DL | SD | PRO | R11 | PROC | MEP |
| PRO-R11-SD-DL-140 |  | Material Delivery & Site Inspection of Manholes Covers for Storm Drainage Network | 26d | 2026-11-17 A | 2026-11-18 A | PRO-SD-1DL-140, PRO-R09-SD-DL-140 SS+5d | 100% | 2027-01-16 | 2027-02-14 | Pro Engineer [44.04 h] | PRO-R11-SD-DL-140 | PRC | DL | Each | DL | SD | PRO | R11 | PROC | MEP |
|  | PW | **Potable Water Network** |  | 2025-02-11 | 2027-01-31 |  |  |  |  |  |  |  |  |  |  |  |  |  |  |  |
|  | PO | **Issuance of Purchase Orders** |  | 2025-02-11 | 2025-02-23 |  |  |  |  |  |  |  |  |  |  |  |  |  |  |  |
|  | 1 | **Main Line Sections** |  | 2025-02-11 | 2025-02-17 |  |  |  |  |  |  |  |  |  |  |  |  |  |  |  |
| PRO-PW-PO-100 |  | Issuance of Purchase Order for Main Line Pipes of Potable Water Network | 6d | 2025-02-11 A | 2025-02-17 A | ENG-MT-PW-ML-A-100, ENG-SH-PW-ML-A-110, ENG-MS-PW-ML-A-110, ENG-SH-PW-FH-A-110 | 100% |  |  | Pro Engineer [312.12 h] | PRO-PW-PO-100 | PRC | PO | Each | PO | PW | PRO |  | PROC | MEP |
| PRO-PW-PO-110 |  | Issuance of Purchase Order for Valves of Potable Water Network | 6d | 2025-02-11 A | 2025-02-17 A | ENG-MT-PW-ML-A-110, ENG-SH-PW-ML-A-110, ENG-MS-PW-ML-A-110, ENG-SH-PW-FH-A-110 | 100% |  |  | Pro Engineer [312.12 h] | PRO-PW-PO-110 | PRC | PO | Each | PO | PW | PRO |  | PROC | MEP |
|  | 3 | **Fire Hydrant** |  | 2025-02-11 | 2025-02-23 |  |  |  |  |  |  |  |  |  |  |  |  |  |  |  |
| PRO-PW-PO-120 |  | Issuance of Purchase Order for Fire Hydrants of Potable Water Network | 10d | 2025-02-11 A | 2025-02-23 A | ENG-MT-PW-FH-A-100, ENG-SH-PW-ML-A-110, ENG-MS-PW-ML-A-110, ENG-SH-PW-FH-A-110 | 100% |  |  | Pro Engineer [312.12 h] | PRO-PW-PO-120 | PRC | PO | Each | PO | PW | PRO |  | PROC | MEP |

| ID | WBS | Activity | Duration | Start | Finish | Predecessors | Complete | Planned start | Planned finish | Resources | Activity ID N | 02- Network-WBS | 03- Activity | 04-UOM | 05-Discipline | 01- Network | 08 Stage | Discipline | New Discipline | 09 Roads |
| --- | --- | --- | --- | --- | --- | --- | --- | --- | --- | --- | --- | --- | --- | --- | --- | --- | --- | --- | --- | --- |
|  | 4 | **Testing and Finishes** |  | 2025-02-11 | 2025-02-23 |  |  |  |  |  |  |  |  |  |  |  |  |  |  |  |
| PRO-PW-PO-130 |  | Issuance of Purchase Order for Surface Box of Potable Water Network | 10d | 2025-02-11 A | 2025-02-23 A | ENG-MT-PW-TF-A-100, ENG-SH-PW-ML-A-110, ENG-MS-PW-ML-A-110, ENG-SH-PW-FH-A-110 | 100% | 2025-02-09 | 2025-02-19 | Pro Engineer [312.12 h] | PRO-PW-PO-130 | PRC | PO | Each | PO | PW | PRO | PROC | MEP |  |
|  | MF | **Manufacturing of Material** |  | 2025-02-18 | 2025-05-31 |  |  |  |  |  |  |  |  |  |  |  |  |  |  |  |
|  | 1 | **Main Line Sections** |  | 2025-02-18 | 2025-05-31 |  |  |  |  |  |  |  |  |  |  |  |  |  |  |  |
| PRO-PW-MF-100 |  | Manufacturing of Main Line Pipes for Potable Water Network | 60d | 2025-02-18 A | 2025-05-22 A | PRO-PW-PO-100 | 100% | 2025-02-18 | 2025-05-04 | Pro Engineer [312.12 h] | PRO-PW-MF-100 | PRC | MF | Each | MF | PW | PRO | PROC | MEP |  |
| PRO-PW-MF-110 |  | Manufacturing of Valves for Potable Water Network | 60d | 2025-02-18 A | 2025-05-31 A | PRO-PW-PO-110 | 100% | 2025-02-18 | 2025-05-04 | Pro Engineer [312.12 h] | PRO-PW-MF-110 | PRC | MF | Each | MF | PW | PRO | PROC | MEP |  |
|  | 3 | **Fire Hydrant** |  | 2025-02-24 | 2025-05-21 |  |  |  |  |  |  |  |  |  |  |  |  |  |  |  |
| PRO-PW-MF-120 |  | Manufacturing of Fire Hydrants for Potable Water Network | 60d | 2025-02-24 A | 2025-05-21 A | PRO-PW-PO-120 | 100% | 2025-02-24 | 2025-05-08 | Pro Engineer [312.12 h] | PRO-PW-MF-120 | PRC | MF | Each | MF | PW | PRO | PROC | MEP |  |
|  | 4 | **Testing and Finishes** |  | 2025-02-24 | 2025-04-26 |  |  |  |  |  |  |  |  |  |  |  |  |  |  |  |
| PRO-PW-MF-130 |  | Manufacturing for Surface Box of Potable Water Network | 80d | 2025-02-24 A | 2025-04-26 A | PRO-PW-PO-130 | 100% | 2025-02-20 | 2025-05-29 | Pro Engineer [312.12 h] | PRO-PW-MF-130 | PRC | MF | Each | MF | PW | PRO | PROC | MEP |  |
|  | 1DL | **1st Material Delivery & Site Inspection** |  | 2025-04-29 | 2025-12-01 |  |  |  |  |  |  |  |  |  |  |  |  |  |  |  |
|  | 1 | **Main Line Sections** |  | 2025-04-29 | 2025-10-10 |  |  |  |  |  |  |  |  |  |  |  |  |  |  |  |
| PRO-PW-1DL-100 |  | 1ST Material Delivery for Main Line Pipes of Potable Water Network | 6d | 2025-04-29 A | 2025-05-28 A | PRO-PW-MF-100 | 100% | 2025-05-05 | 2025-05-11 | Pro Engineer [312.12 h] | PRO-PW-1DL-100 | PRC | 1DL | Each | 1DL | PW | PRO | PROC | MEP |  |
| PRO-PW-1DL-110 |  | 1ST Material Delivery for Valves of Potable Water Network | 6d | 2025-06-21 A | 2025-10-10 A | PRO-PW-MF-110 | 100% | 2025-05-05 | 2025-05-11 | Pro Engineer [312.12 h] | PRO-PW-1DL-110 | PRC | 1DL | Each | 1DL | PW | PRO | PROC | MEP |  |
|  | 3 | **Fire Hydrant** |  | 2025-11-01 | 2025-11-04 |  |  |  |  |  |  |  |  |  |  |  |  |  |  |  |
| PRO-PW-1DL-120 |  | 1ST Material Delivery for Fire Hydrants of Potable Water Network | 6d | 2025-11-01 A | 2025-11-04 A | PRO-PW-MF-120 | 100% | 2025-05-10 | 2025-05-15 | Pro Engineer [312.12 h] | PRO-PW-1DL-120 | PRC | 1DL | Each | 1DL | PW | PRO | PROC | MEP |  |
|  | 4 | **Testing and Finishes** |  | 2025-11-24 | 2025-12-01 |  |  |  |  |  |  |  |  |  |  |  |  |  |  |  |
| PRO-PW-1DL-130 |  | 1ST Material Delivery for Finishes of Potable Water Network | 6d | 2025-11-24 A | 2025-12-01 A | PRO-PW-MF-130 | 100% | 2025-05-31 | 2025-06-10 | Pro Engineer [312.12 h] | PRO-PW-1DL-130 | PRC | 1DL | Each | 1DL | PW | PRO | PROC | MEP |  |
|  | DL | **Material Delivery & Site Inspection** |  | 2025-04-29 | 2027-01-31 |  |  |  |  |  |  |  |  |  |  |  |  |  |  |  |
|  | 1 | **Road 18 Local 1 ( 479 LM )** |  | 2025-05-03 | 2026-11-18 |  |  |  |  |  |  |  |  |  |  |  |  |  |  |  |
|  | 1 | **Main Line Sections** |  | 2025-05-03 | 2025-11-04 |  |  |  |  |  |  |  |  |  |  |  |  |  |  |  |
| PRO-R18-PW-DL-140 |  | Material Delivery & Site Inspection of Main Line Pipes for Potable Water Network | 26d | 2025-05-03 A | 2025-05-28 A | PRO-PW-1DL-100 | 100% | 2025-05-12 | 2025-06-15 | Pro Engineer [312.12 h]; Pipe with diameter 200mm; in depth 0.0m - 1.5m | PRO-R18-PW-DL-140 | PRC | DL | Each | DL | PW | PRO | PROC | MEP | R18 |
| PRO-R18-PW-DL-150 |  | Material Delivery & Site Inspection of Valves for Potable Water Network | 26d | 2025-06-21 A | 2025-11-04 A | PRO-PW-1DL-110 | 100% | 2025-05-12 | 2025-06-15 | Pro Engineer [312.12 h]; Gate valves dia(200)mm on pipes with dia (200) mm. | PRO-R18-PW-DL-150 | PRC | DL | Each | DL | PW | PRO | PROC | MEP | R18 |
|  | 3 | **Fire Hydrant** |  | 2026-07-14 | 2026-07-18 |  |  |  |  |  |  |  |  |  |  |  |  |  |  |  |
| PRO-R18-PW-DL-160 |  | Material Delivery & Site Inspection of Fire Hydrants for Potable Water Network | 26d | 2026-07-14 A | 2026-07-18 A | PRO-PW-1DL-120 | 100% | 2025-05-17 | 2025-06-19 | Pro Engineer [312.12 h]; 3-outlet fire hydrant (2 x 2.5 inch and 1 x 4 inch) in the form of a separate dry vacuum cylinder | PRO-R18-PW-DL-160 | PRC | DL | Each | DL | PW | PRO | PROC | MEP | R18 |

| ID | WBS | Activity | Duration | Start | Finish | Predecessors | Complete | Remaining | Planned start | Planned finish | Total float | Free float | Resources | Activity ID N | 02- Network-WBS | 03- Activity | 04-UOM | 05-Discipline | 01- Network | 08 Stage | 09 Roads | Discipline | New Discipline |
| --- | --- | --- | --- | --- | --- | --- | --- | --- | --- | --- | --- | --- | --- | --- | --- | --- | --- | --- | --- | --- | --- | --- | --- |
|  | 4 | **Testing and Finishes** |  | 2026-11-17 | 2026-11-18 |  |  |  |  |  |  |  |  |  |  |  |  |  |  |  |  |  |  |
| PRO-R18-PW-DL-170 |  | Material Delivery & Site Inspection for Finishes of Potable Water Network | 26d | 2026-11-17 A | 2026-11-18 A | PRO-PW-1DL-130 | 100% |  | 2026-11-17 | 2026-12-16 |  |  | Pro Engineer [44.04 h] | PRO-R18-PW-DL-170 | PRC | DL | Each | DL | PW | PRO | R18 | PROC | MEP |
|  | 9 | **Road 17 Local 1 ( 500 LM )** |  | 2025-05-17 | 2026-12-23 |  |  |  |  |  |  |  |  |  |  |  |  |  |  |  |  |  |  |
|  | 1 | **Main Line Sections** |  | 2025-05-17 | 2026-12-23 |  |  |  |  |  |  |  |  |  |  |  |  |  |  |  |  |  |  |
| PRO-R17-PW-DL-100 |  | Material Delivery & Site Inspection of Main Line Pipes for Potable Water Network | 26d | 2025-05-17 A | 2025-05-31 A | PRO-PW-1DL-100, PRO-R18-PW-DL-140 | 100% |  | 2025-06-16 | 2025-07-15 |  |  | Pro Engineer [312.12 h]; Pipe with diameter 200mm; in depth 0.0m - 1.5m | PRO-R17-PW-DL-100 | PRC | DL | Each | DL | PW | PRO | R17 | PROC | MEP |
| PRO-R17-PW-DL-110 |  | Material Delivery & Site Inspection of Valves for Potable Water Network | 26d | 2026-11-17 A | 2026-12-23 | PRO-PW-1DL-110, PRO-R18-PW-DL-150 SS+5d | 50% | 26d | 2026-11-17 | 2026-12-16 | -69d | 0d | Pro Engineer [44.04 h]; Gate valves dia(200)mm on pipes with dia (200) mm. | PRO-R17-PW-DL-110 | PRC | DL | Each | DL | PW | PRO | R17 | PROC | MEP |
|  | 3 | **Fire Hydrant** |  | 2026-07-14 | 2026-07-18 |  |  |  |  |  |  |  |  |  |  |  |  |  |  |  |  |  |  |
| PRO-R17-PW-DL-120 |  | Material Delivery & Site Inspection of Fire Hydrants for Potable Water Network | 26d | 2026-07-14 A | 2026-07-18 A | PRO-PW-1DL-120, PRO-R18-PW-DL-160 | 100% |  | 2025-06-21 | 2025-07-20 |  |  | Pro Engineer [312.12 h]; 3-outlet fire hydrant (2 x 2.5 inch and 1 x 4 inch) in the form of a separate dry vacuum cylinder | PRO-R17-PW-DL-120 | PRC | DL | Each | DL | PW | PRO | R17 | PROC | MEP |
|  | 4 | **Testing and Finishes** |  | 2026-11-17 | 2026-11-18 |  |  |  |  |  |  |  |  |  |  |  |  |  |  |  |  |  |  |
| PRO-R17-PW-DL-130 |  | Material Delivery & Site Inspection for Finishes of Potable Water Network | 26d | 2026-11-17 A | 2026-11-18 A | PRO-PW-1DL-130, PRO-R18-PW-DL-170 SS+5d | 100% |  | 2026-11-23 | 2026-12-22 |  |  | Pro Engineer [44.04 h] | PRO-R17-PW-DL-130 | PRC | DL | Each | DL | PW | PRO | R17 | PROC | MEP |
|  | 8 | **Road 16 Local 1 ( 527 LM )** |  | 2025-04-29 | 2026-12-23 |  |  |  |  |  |  |  |  |  |  |  |  |  |  |  |  |  |  |
|  | 1 | **Main Line Sections** |  | 2025-04-29 | 2026-12-23 |  |  |  |  |  |  |  |  |  |  |  |  |  |  |  |  |  |  |
| PRO-R16-PW-DL-100 |  | Material Delivery & Site Inspection of Main Line Pipes for Potable Water Network | 26d | 2025-04-29 A | 2025-05-29 A | PRO-PW-1DL-100, PRO-R17-PW-DL-100 | 100% |  | 2025-07-16 | 2025-08-14 |  |  | Pro Engineer [312.12 h]; Pipe with diameter 200mm; in depth 0.0m - 1.5m | PRO-R16-PW-DL-100 | PRC | DL | Each | DL | PW | PRO | R16 | PROC | MEP |
| PRO-R16-PW-DL-110 |  | Material Delivery & Site Inspection of Valves for Potable Water Network | 26d | 2026-11-21 A | 2026-12-23 | PRO-PW-1DL-110, PRO-R17-PW-DL-110 SS+5d, PRO-R17-PW-DL-110 FF | 50% | 26d | 2026-11-23 | 2026-12-22 | -69d | 0d | Pro Engineer [44.04 h]; Gate valves dia(200)mm on pipes with dia (200) mm. | PRO-R16-PW-DL-110 | PRC | DL | Each | DL | PW | PRO | R16 | PROC | MEP |
|  | 3 | **Fire Hydrant** |  | 2026-07-14 | 2026-07-18 |  |  |  |  |  |  |  |  |  |  |  |  |  |  |  |  |  |  |
| PRO-R16-PW-DL-120 |  | Material Delivery & Site Inspection of Fire Hydrants for Potable Water Network | 26d | 2026-07-14 A | 2026-07-18 A | PRO-PW-1DL-120, PRO-R17-PW-DL-120 | 100% |  | 2025-07-21 | 2025-08-19 |  |  | Pro Engineer [312.12 h]; 3-outlet fire hydrant (2 x 2.5 inch and 1 x 4 inch) in the form of a separate dry vacuum cylinder | PRO-R16-PW-DL-120 | PRC | DL | Each | DL | PW | PRO | R16 | PROC | MEP |
|  | 4 | **Testing and Finishes** |  | 2026-11-17 | 2026-11-18 |  |  |  |  |  |  |  |  |  |  |  |  |  |  |  |  |  |  |
| PRO-R16-PW-DL-130 |  | Material Delivery & Site Inspection for Finishes of Potable Water Network | 26d | 2026-11-17 A | 2026-11-18 A | PRO-PW-1DL-130, PRO-R17-PW-DL-130 SS+5d | 100% |  | 2026-11-29 | 2026-12-28 |  |  | Pro Engineer [44.04 h] | PRO-R16-PW-DL-130 | PRC | DL | Each | DL | PW | PRO | R16 | PROC | MEP |
|  | 7 | **Road 15 Local 1 ( 556 LM )** |  | 2025-05-12 | 2026-12-26 |  |  |  |  |  |  |  |  |  |  |  |  |  |  |  |  |  |  |
|  | 1 | **Main Line Sections** |  | 2025-05-12 | 2026-12-26 |  |  |  |  |  |  |  |  |  |  |  |  |  |  |  |  |  |  |
| PRO-R15-PW-DL-100 |  | Material Delivery & Site Inspection of Main Line Pipes for Potable Water Network | 26d | 2025-05-12 A | 2025-05-29 A | PRO-PW-1DL-100, PRO-R16-PW-DL-100 | 100% |  | 2025-08-16 | 2025-09-14 |  |  | Pro Engineer [312.12 h]; Pipe with diameter 200mm; in depth 0.0m - 1.5m | PRO-R15-PW-DL-100 | PRC | DL | Each | DL | PW | PRO | R15 | PROC | MEP |
| PRO-R15-PW-DL-110 |  | Material Delivery & Site Inspection of Valves for Potable Water Network | 26d | 2026-11-21 A | 2026-12-26 | PRO-PW-1DL-110, PRO-R16-PW-DL-110 SS+5d, PRO-R16-PW-DL-110 FF | 50% | 26d | 2026-11-29 | 2026-12-28 | -69d | 0d | Pro Engineer [44.04 h]; Gate valves dia(200)mm on pipes with dia (200) mm. | PRO-R15-PW-DL-110 | PRC | DL | Each | DL | PW | PRO | R15 | PROC | MEP |
|  | 3 | **Fire Hydrant** |  | 2026-07-14 | 2026-07-18 |  |  |  |  |  |  |  |  |  |  |  |  |  |  |  |  |  |  |
| PRO-R15-PW-DL-120 |  | Material Delivery & Site Inspection of Fire Hydrants for Potable Water Network | 26d | 2026-07-14 A | 2026-07-18 A | PRO-PW-1DL-120, PRO-R16-PW-DL-120 | 100% |  | 2025-08-20 | 2025-09-18 |  |  | Pro Engineer [312.12 h]; 3-outlet fire hydrant (2 x 2.5 inch and 1 x 4 inch) in the form of a separate dry vacuum cylinder | PRO-R15-PW-DL-120 | PRC | DL | Each | DL | PW | PRO | R15 | PROC | MEP |

| ID | WBS | Activity | Duration | Start | Finish | Predecessors | Complete | Remaining | Planned start | Planned finish | Total float | Free float | Resources | Activity ID N | 02- Network-WBS | 03- Activity | 04-UOM | 05-Discipline | 01- Network | 08 Stage | 09 Roads | Discipline | New Discipline |
| --- | --- | --- | --- | --- | --- | --- | --- | --- | --- | --- | --- | --- | --- | --- | --- | --- | --- | --- | --- | --- | --- | --- | --- |
|  | 4 | **Testing and Finishes** |  | 2026-11-17 | 2026-11-18 |  |  |  |  |  |  |  |  |  |  |  |  |  |  |  |  |  |  |
| PRO-R15-PW-DL-130 |  | Material Delivery & Site Inspection for Finishes of Potable Water Network | 26d | 2026-11-17 A | 2026-11-18 A | PRO-PW-1DL-130, PRO-R16-PW-DL-130 SS+5d | 100% |  | 2026-12-05 | 2027-01-03 |  |  | Pro Engineer [44.04 h] | PRO-R15-PW-DL-130 | PRC | DL | Each | DL | PW | PRO | R15 | PROC | MEP |
|  | 4 | **Road 10 Local 2 ( 2352 LM )** |  | 2025-05-30 | 2026-12-31 |  |  |  |  |  |  |  |  |  |  |  |  |  |  |  |  |  |  |
|  | 1 | **Main Line Sections** |  | 2025-05-30 | 2026-12-31 |  |  |  |  |  |  |  |  |  |  |  |  |  |  |  |  |  |  |
| PRO-R10-PW-DL-100 |  | Material Delivery & Site Inspection of Main Line Pipes for Potable Water Network | 26d | 2025-05-30 A | 2025-06-26 A | PRO-PW-1DL-100, PRO-R15-PW-DL-100 | 100% |  | 2025-09-15 | 2025-10-15 |  |  | Pro Engineer [312.12 h]; Pipe with diameter 200mm; in depth 0.0m - 1.5m; Pipe with diameter 560mm; in depth 1.5m - 3.0m; Pipe with diameter 630mm; in depth 1.5m - 3.0m | PRO-R10-PW-DL-100 | PRC | DL | Each | DL | PW | PRO | R10 | PROC | MEP |
| PRO-R10-PW-DL-110 |  | Material Delivery & Site Inspection of Valves for Potable Water Network | 26d | 2025-12-13 A | 2026-12-31 | PRO-PW-1DL-110, PRO-R15-PW-DL-110 FF+5d | 80% | 3d | 2025-09-15 | 2025-10-15 | -69d | 0d | Pro Engineer [208.18 h]; Gate valves dia(200)mm on pipes with dia (200) mm.; Butterfly valves with dia (560)mm on pipes with dia (560)mm.; Butterfly valves with dia (630)mm on pipes with dia (630)mm.; Wash out valve with dia (100)mm on pipes with dia (200) mm; Wash out valve with dia (150)mm on pipes with dia (560) mm; Wash out valve with dia (150)mm on pipes with dia (630) mm; Air valves with dia (50mm) mm on pipes with dia(200)mm.; Air valves with dia (65mm) mm on pipes with dia(560)mm.; Air valves with dia (65mm) mm on pipes with dia(630)mm. | PRO-R10-PW-DL-110 | PRC | DL | Each | DL | PW | PRO | R10 | PROC | MEP |
|  | 3 | **Fire Hydrant** |  | 2026-07-14 | 2026-07-18 |  |  |  |  |  |  |  |  |  |  |  |  |  |  |  |  |  |  |
| PRO-R10-PW-DL-120 |  | Material Delivery & Site Inspection of Fire Hydrants for Potable Water Network | 26d | 2026-07-14 A | 2026-07-18 A | PRO-PW-1DL-120, PRO-R15-PW-DL-120 | 100% |  | 2025-09-20 | 2025-10-20 |  |  | Pro Engineer [312.12 h]; 3-outlet fire hydrant (2 x 2.5 inch and 1 x 4 inch) in the form of a separate dry vacuum cylinder | PRO-R10-PW-DL-120 | PRC | DL | Each | DL | PW | PRO | R10 | PROC | MEP |
|  | 4 | **Testing and Finishes** |  | 2026-11-17 | 2026-11-18 |  |  |  |  |  |  |  |  |  |  |  |  |  |  |  |  |  |  |
| PRO-R10-PW-DL-130 |  | Material Delivery & Site Inspection for Finishes of Potable Water Network | 26d | 2026-11-17 A | 2026-11-18 A | PRO-PW-1DL-130, PRO-R15-PW-DL-130 SS+5d | 100% |  | 2026-12-10 | 2027-01-09 |  |  | Pro Engineer [44.04 h]; Wash out chamber; on 200 mm dia pipeline Depth 1.5 - 3m; Wash out chamber; on 560 mm dia pipeline Depth 1.5 - 3m; Wash out chamber; on 630 mm dia pipeline Depth 1.5 - 3m; Air valve chamber; on 200 mm dia pipeline Depth 1.5 - 3 m; Air valve chamber on 560 mm dia pipeline Depth 1.5 - 3 m; Air valve chamber on 630 mm dia pipeline Depth 1.5 - 3 m | PRO-R10-PW-DL-130 | PRC | DL | Each | DL | PW | PRO | R10 | PROC | MEP |
|  | 3 | **Road 14 Local 1 ( 584 LM )** |  | 2025-07-22 | 2027-01-02 |  |  |  |  |  |  |  |  |  |  |  |  |  |  |  |  |  |  |
|  | 1 | **Main Line Sections** |  | 2025-07-22 | 2027-01-02 |  |  |  |  |  |  |  |  |  |  |  |  |  |  |  |  |  |  |
| PRO-R14-PW-DL-100 |  | Material Delivery & Site Inspection of Main Line Pipes for Potable Water Network | 26d | 2025-07-22 A | 2025-08-04 A | PRO-PW-1DL-100, PRO-R10-PW-DL-100 | 100% |  | 2025-10-16 | 2025-11-15 |  |  | Pro Engineer [312.12 h]; Pipe with diameter 355mm; in depth 0.0m - 1.5m; Pipe with diameter 355mm; in depth 1.5m - 3.0m | PRO-R09-PW-DL-100 | PRC | DL | Each | DL | PW | PRO | R14 | PROC | MEP |
| PRO-R14-PW-DL-110 |  | Material Delivery & Site Inspection of Valves for Potable Water Network | 26d | 2026-10-10 A | 2027-01-02 | PRO-PW-1DL-110, PRO-R10-PW-DL-110 SS+5d, PRO-R10-PW-DL-110 FF | 10% | 0d | 2025-10-16 | 2025-11-15 | -69d | 0d | Pro Engineer [249.22 h]; Butterfly valves with dia (355)mm on pipes with dia (355)mm.; Air valves with dia (65mm) mm on pipes with dia(355)mm. | PRO-R09-PW-DL-110 | PRC | DL | Each | DL | PW | PRO | R14 | PROC | MEP |
|  | 3 | **Fire Hydrant** |  | 2025-12-01 | 2026-07-18 |  |  |  |  |  |  |  |  |  |  |  |  |  |  |  |  |  |  |
| PRO-R14-PW-DL-120 |  | Material Delivery & Site Inspection of Fire Hydrants for Potable Water Network | 26d | 2025-12-01 A | 2026-07-18 A | PRO-PW-1DL-120, PRO-R10-PW-DL-120 | 100% |  | 2025-10-21 | 2025-11-19 |  |  | Pro Engineer [312.12 h]; 3-outlet fire hydrant (2 x 2.5 inch and 1 x 4 inch) in the form of a separate dry vacuum cylinder | PRO-R09-PW-DL-120 | PRC | DL | Each | DL | PW | PRO | R14 | PROC | MEP |
|  | 4 | **Testing and Finishes** |  | 2025-12-01 | 2026-11-18 |  |  |  |  |  |  |  |  |  |  |  |  |  |  |  |  |  |  |
| PRO-R14-PW-DL-130 |  | Material Delivery & Site Inspection for Finishes of Potable Water Network | 26d | 2025-12-01 A | 2026-11-18 A | PRO-PW-1DL-130 | 100% |  | 2025-11-11 | 2025-12-10 |  |  | Pro Engineer [312.12 h]; In-situ, reinforced single concrete valve chambers on the pipeline, as defined and shown on the drawingss, and all necessary works and equipment (valve measured elsewhere), and supplies construction, cut and installation of pipe cutting, backfilling, in; Air valve chamber on 355 mm dia pipeline Depth 1.5 - 3 m | PRO-R09-PW-DL-130 | PRC | DL | Each | DL | PW | PRO | R14 | PROC | MEP |
|  | 2 | **Road 09 Local 2 ( 2278 LM )** |  | 2025-11-01 | 2026-11-18 |  |  |  |  |  |  |  |  |  |  |  |  |  |  |  |  |  |  |
|  | 1 | **Main Line Sections** |  | 2025-11-01 | 2026-08-17 |  |  |  |  |  |  |  |  |  |  |  |  |  |  |  |  |  |  |
| PRO-R09-PW-DL-100 |  | Material Delivery & Site Inspection of Main Line Pipes for Potable Water Network | 26d | 2025-11-01 A | 2025-11-08 A | PRO-PW-1DL-100, PRO-R14-PW-DL-100 | 100% |  | 2025-11-16 | 2025-12-15 |  |  | Pro Engineer [312.12 h]; Pipe with diameter 160 mm; in depth 1.5m - 3.0m; Pipe with diameter 200mm; in depth 0.0m - 1.5m; Pipe with diameter 200mm; in depth 1.5m - 3.0m | PRO-R09-PW-DL-100 | PRC | DL | Each | DL | PW | PRO | R09 | PROC | MEP |
| PRO-R09-PW-DL-110 |  | Material Delivery & Site Inspection of Valves for Potable Water Network | 26d | 2026-06-30 A | 2026-08-17 A | PRO-PW-1DL-110 | 100% |  | 2025-11-16 | 2025-12-15 |  |  | Pro Engineer [312.12 h]; Gate valves dia(200)mm on pipes with dia (200) mm.; Wash out valve with dia (100)mm on pipes with dia (200) mm | PRO-R09-PW-DL-110 | PRC | DL | Each | DL | PW | PRO | R09 | PROC | MEP |
|  | 3 | **Fire Hydrant** |  | 2026-07-14 | 2026-07-18 |  |  |  |  |  |  |  |  |  |  |  |  |  |  |  |  |  |  |
| PRO-R09-PW-DL-120 |  | Material Delivery & Site Inspection of Fire Hydrants for Potable Water Network | 26d | 2026-07-14 A | 2026-07-18 A | PRO-PW-1DL-120, PRO-R14-PW-DL-120 | 100% |  | 2025-11-20 | 2025-12-20 |  |  | Pro Engineer [312.12 h]; 3-outlet fire hydrant (2 x 2.5 inch and 1 x 4 inch) in the form of a separate dry vacuum cylinder | PRO-R09-PW-DL-120 | PRC | DL | Each | DL | PW | PRO | R09 | PROC | MEP |

| ID | WBS | Activity | Duration | Start | Finish | Predecessors | Complete | Remaining | Planned start | Planned finish | Total float | Free float | Resources | Activity ID N | 02- Network-WBS | 03- Activity | 04-UOM | 05-Discipline | 01- Network | 08 Stage | 09 Roads | Discipline | New Discipline |
| --- | --- | --- | --- | --- | --- | --- | --- | --- | --- | --- | --- | --- | --- | --- | --- | --- | --- | --- | --- | --- | --- | --- | --- |
|  | 4 | **Testing and Finishes** |  | 2026-11-17 | 2026-11-18 |  |  |  |  |  |  |  |  |  |  |  |  |  |  |  |  |  |  |
| PRO-R09-PW-DL-130 |  | Material Delivery & Site Inspection for Finishes of Potable Water Network | 26d | 2026-11-17 A | 2026-11-18 A | PRO-PW-1DL-130, PRO-R14-PW-DL-130 SS+5d | 100% |  | 2026-11-17 | 2026-12-16 |  |  | Pro Engineer [44.04 h] | PRO-R09-PW-DL-130 | PRC | DL | Each | DL | PW | PRO | R09 | PROC | MEP |
|  | 5 | **Road 11 Local 1 ( 670 LM )** |  | 2025-08-02 | 2027-01-31 |  |  |  |  |  |  |  |  |  |  |  |  |  |  |  |  |  |  |
|  | 1 | **Main Line Sections** |  | 2025-08-02 | 2027-01-31 |  |  |  |  |  |  |  |  |  |  |  |  |  |  |  |  |  |  |
| PRO-R11-PW-DL-100 |  | Material Delivery & Site Inspection of Main Line Pipes for Potable Water Network | 26d | 2025-08-02 A | 2025-08-09 A | PRO-PW-1DL-100, PRO-R09-PW-DL-100 | 100% |  | 2025-12-16 | 2026-01-14 |  |  | Pro Engineer [312.12 h]; Pipe with diameter 200mm; in depth 0.0m - 1.5m | PRO-R11-PW-DL-100 | PRC | DL | Each | DL | PW | PRO | R11 | PROC | MEP |
| PRO-R11-PW-DL-110 |  | Material Delivery & Site Inspection of Valves for Potable Water Network | 26d | 2026-11-21 A | 2027-01-31 | PRO-PW-1DL-110, PRO-R09-PW-DL-110 SS+5d, PRO-R14-PW-DL-110 SS | 50% | 26d | 2027-01-04 | 2027-02-02 | -69d | 0d | Pro Engineer [44.04 h]; Gate valves dia(200)mm on pipes with dia (200) mm. | PRO-R11-PW-DL-110 | PRC | DL | Each | DL | PW | PRO | R11 | PROC | MEP |
|  | 3 | **Fire Hydrant** |  | 2026-07-14 | 2026-07-18 |  |  |  |  |  |  |  |  |  |  |  |  |  |  |  |  |  |  |
| PRO-R11-PW-DL-120 |  | Material Delivery & Site Inspection of Fire Hydrants for Potable Water Network | 26d | 2026-07-14 A | 2026-07-18 A | PRO-PW-1DL-120, PRO-R09-PW-DL-120 | 100% |  | 2025-12-21 | 2026-01-19 |  |  | Pro Engineer [312.12 h]; 3-outlet fire hydrant (2 x 2.5 inch and 1 x 4 inch) in the form of a separate dry vacuum cylinder | PRO-R11-PW-DL-120 | PRC | DL | Each | DL | PW | PRO | R11 | PROC | MEP |
|  | 4 | **Testing and Finishes** |  | 2026-11-17 | 2026-11-18 |  |  |  |  |  |  |  |  |  |  |  |  |  |  |  |  |  |  |
| PRO-R11-PW-DL-130 |  | Material Delivery & Site Inspection for Finishes of Potable Water Network | 26d | 2026-11-17 A | 2026-11-18 A | PRO-PW-1DL-130, PRO-R09-PW-DL-130 SS+5d | 100% |  | 2026-11-23 | 2026-12-22 |  |  | Pro Engineer [44.04 h] | PRO-R11-PW-DL-130 | PRC | DL | Each | DL | PW | PRO | R11 | PROC | MEP |
|  | IR | **Irrigation Network** |  | 2025-02-11 | 2026-12-15 |  |  |  |  |  |  |  |  |  |  |  |  |  |  |  |  |  |  |
|  | PO | **Issuance of Purchase Orders** |  | 2025-02-11 | 2025-02-17 |  |  |  |  |  |  |  |  |  |  |  |  |  |  |  |  |  |  |
|  | 1 | **Main Line Pipes** |  | 2025-02-11 | 2025-02-17 |  |  |  |  |  |  |  |  |  |  |  |  |  |  |  |  |  |  |
| PRO-IR-PO-100 |  | Issuance of Purchase Order for Main Line Pipes of Irrigation Network | 6d | 2025-02-11 A | 2025-02-17 A | ENG-MT-IR-ML-A-100, ENG-SH-IR-ML-A-110, ENG-MS-IR-ML-A-110 | 100% |  |  |  |  |  | Pro Engineer [312.12 h] | PRO-IR-PO-100 | PRC | PO | Each | PO | IR | PRO |  | PROC | MEP |
| PRO-IR-PO-110 |  | Issuance of Purchase Order for Valves of Irrigation Network | 6d | 2025-02-11 A | 2025-02-17 A | ENG-MT-IR-ML-A-110, ENG-SH-IR-ML-A-110, ENG-MS-IR-ML-A-110 | 100% |  |  |  |  |  | Pro Engineer [312.12 h] | PRO-IR-PO-110 | PRC | PO | Each | PO | IR | PRO |  | PROC | MEP |
|  | MF | **Manufacturing of Material** |  | 2025-02-18 | 2025-04-30 |  |  |  |  |  |  |  |  |  |  |  |  |  |  |  |  |  |  |
|  | 1 | **Main Line Pipes** |  | 2025-02-18 | 2025-04-30 |  |  |  |  |  |  |  |  |  |  |  |  |  |  |  |  |  |  |
| PRO-IR-MF-100 |  | Manufacturing of Main Line Pipes for Irrigation Network | 105d | 2025-02-18 A | 2025-04-30 A | PRO-IR-PO-100 | 100% |  | 2025-02-18 | 2025-06-30 |  |  | Pro Engineer [312.12 h] | PRO-IR-MF-100 | PRC | MF | Each | MF | IR | PRO |  | PROC | MEP |
| PRO-IR-MF-110 |  | Manufacturing of Valves for Irrigation Network | 119d | 2025-02-18 A | 2025-04-08 A | PRO-IR-PO-110 | 100% |  | 2025-02-18 | 2025-07-16 |  |  | Pro Engineer [312.12 h] | PRO-IR-MF-110 | PRC | MF | Each | MF | IR | PRO |  | PROC | MEP |
|  | 1DL | **1st Material Delivery & Site Inspection** |  | 2025-05-01 | 2026-11-18 |  |  |  |  |  |  |  |  |  |  |  |  |  |  |  |  |  |  |
|  | 1 | **Main Line Pipes** |  | 2025-05-01 | 2026-11-18 |  |  |  |  |  |  |  |  |  |  |  |  |  |  |  |  |  |  |
| PRO-IR-1DL-100 |  | 1ST Material Delivery for Main Line Pipes of Irrigation Network | 6d | 2025-05-01 A | 2025-05-10 A | PRO-IR-MF-100 | 100% |  | 2025-07-01 | 2025-07-07 |  |  | Pro Engineer [312.12 h] | PRO-IR-1DL-100 | PRC | 1DL | Each | 1DL | IR | PRO |  | PROC | MEP |
| PRO-IR-1DL-110 |  | 1ST Material Delivery for Valves of Irrigation Network | 6d | 2025-12-11 A | 2026-11-18 A | PRO-IR-MF-110 | 100% |  | 2025-07-17 | 2025-07-23 |  |  | Pro Engineer [146.63 h] | PRO-IR-1DL-110 | PRC | 1DL | Each | 1DL | IR | PRO |  | PROC | MEP |
|  | DL | **Material Delivery & Site Inspection** |  | 2025-05-03 | 2026-12-15 |  |  |  |  |  |  |  |  |  |  |  |  |  |  |  |  |  |  |
|  | 1 | **Road 18 Local 1 ( 479 LM )** |  | 2025-05-03 | 2026-12-12 |  |  |  |  |  |  |  |  |  |  |  |  |  |  |  |  |  |  |
|  | 1 | **Main Line Pipes** |  | 2025-05-03 | 2026-12-12 |  |  |  |  |  |  |  |  |  |  |  |  |  |  |  |  |  |  |
| PRO-R18-IR-DL-120 |  | Material Delivery & Site Inspection of Main Line Pipes for Irrigation Network | 16d | 2025-05-03 A | 2025-05-17 A | PRO-IR-1DL-100 | 100% |  | 2025-07-08 | 2025-07-26 |  |  | Pro Engineer [312.12 h]; 125 mm pipe; depth 0.0m - 1.5m | PRO-R18-IR-DL-120 | PRC | DL | Each | DL | IR | PRO | R18 | PROC | MEP |
| PRO-R18-IR-DL-130 |  | Material Delivery & Site Inspection of Valves for Irrigation Network | 16d | 2026-11-19 A | 2026-12-12 | PRO-IR-1DL-110 | 50% | 16d | 2026-11-19 | 2026-12-07 | -44d | 0d | Pro Engineer [44.04 h]; Gate valves dia (90)mm on pipes with dia (125) mm.; Wash out valve with dia (100)mm on pipes with dia (125) mm | PRO-R18-IR-DL-130 | PRC | DL | Each | DL | IR | PRO | R18 | PROC | MEP |

| ID | WBS | Activity | Duration | Start | Finish | Predecessors | Complete | Remaining | Planned start | Planned finish | Total float | Free float | Resources | Activity ID N | 02- Network-WBS | 03- Activity | 04-UOM | 05-Discipline | 01- Network | 08 Stage | 09 Roads | Discipline | New Discipline |
| --- | --- | --- | --- | --- | --- | --- | --- | --- | --- | --- | --- | --- | --- | --- | --- | --- | --- | --- | --- | --- | --- | --- | --- |
|  | 9 | **Road 17 Local 1 ( 500 LM )** |  | 2025-05-05 | 2026-12-13 |  |  |  |  |  |  |  |  |  |  |  |  |  |  |  |  |  |  |
|  | 1 | **Main Line Pipes** |  | 2025-05-05 | 2026-12-13 |  |  |  |  |  |  |  |  |  |  |  |  |  |  |  |  |  |  |
| PRO-R17-IR-DL-100 |  | Material Delivery & Site Inspection of Main Line Pipes for Irrigation Network | 16d | 2025-05-05 A | 2025-05-20 A | PRO-IR-1DL-100, PRO-R18-IR-DL-120 | 100% |  | 2025-07-27 | 2025-08-13 |  |  | Pro Engineer [312.12 h]; 125 mm pipe; depth 0.0m - 1.5m; 355 mm pipe; depth 1.5m - 3.0m | PRO-R17-IR-DL-100 | PRC | DL | Each | DL | IR | PRO | R17 | PROC | MEP |
| PRO-R17-IR-DL-110 |  | Material Delivery & Site Inspection of Valves for Irrigation Network | 16d | 2026-11-19 A | 2026-12-13 | PRO-IR-1DL-110, PRO-R18-IR-DL-130 SS+5d | 50% | 16d | 2026-11-25 | 2026-12-13 | -44d | 0d | Pro Engineer [44.04 h]; Gate valves dia (90)mm on pipes with dia (125) mm.; Wash out valve with dia (150)mm on pipes with dia (400) mm | PRO-R17-IR-DL-110 | PRC | DL | Each | DL | IR | PRO | R17 | PROC | MEP |
|  | 8 | **Road 16 Local 1 ( 527 LM )** |  | 2025-05-14 | 2026-12-14 |  |  |  |  |  |  |  |  |  |  |  |  |  |  |  |  |  |  |
|  | 1 | **Main Line Pipes** |  | 2025-05-14 | 2026-12-14 |  |  |  |  |  |  |  |  |  |  |  |  |  |  |  |  |  |  |
| PRO-R16-IR-DL-100 |  | Material Delivery & Site Inspection of Main Line Pipes for Irrigation Network | 16d | 2025-05-14 A | 2025-05-31 A | PRO-IR-1DL-100, PRO-R17-IR-DL-100 | 100% |  | 2025-08-14 | 2025-09-01 |  |  | Pro Engineer [312.12 h]; 125 mm pipe; depth 0.0m - 1.5m | PRO-R16-IR-DL-100 | PRC | DL | Each | DL | IR | PRO | R16 | PROC | MEP |
| PRO-R16-IR-DL-110 |  | Material Delivery & Site Inspection of Valves for Irrigation Network | 16d | 2026-11-19 A | 2026-12-14 | PRO-IR-1DL-110, PRO-R17-IR-DL-110 SS+5d | 50% | 16d | 2026-12-01 | 2026-12-19 | -44d | 0d | Pro Engineer [44.04 h]; Gate valves dia (90)mm on pipes with dia (125) mm.; Air valves with dia (50mm) mm on pipes with dia(125)mm. | PRO-R16-IR-DL-110 | PRC | DL | Each | DL | IR | PRO | R16 | PROC | MEP |
|  | 7 | **Road 15 Local 1 ( 556 LM )** |  | 2025-05-06 | 2026-12-15 |  |  |  |  |  |  |  |  |  |  |  |  |  |  |  |  |  |  |
|  | 1 | **Main Line Pipes** |  | 2025-05-06 | 2026-12-15 |  |  |  |  |  |  |  |  |  |  |  |  |  |  |  |  |  |  |
| PRO-R15-IR-DL-100 |  | Material Delivery & Site Inspection of Main Line Pipes for Irrigation Network | 16d | 2025-05-06 A | 2025-05-29 A | PRO-IR-1DL-100, PRO-R16-IR-DL-100 | 100% |  | 2025-09-02 | 2025-09-20 |  |  | Pro Engineer [312.12 h]; 125 mm pipe; depth 0.0m - 1.5m | PRO-R15-IR-DL-100 | PRC | DL | Each | DL | IR | PRO | R15 | PROC | MEP |
| PRO-R15-IR-DL-110 |  | Material Delivery & Site Inspection of Valves for Irrigation Network | 16d | 2026-11-19 A | 2026-12-15 | PRO-IR-1DL-110, PRO-R16-IR-DL-110 SS+5d | 50% | 16d | 2026-12-07 | 2026-12-24 | -44d | 0d | Pro Engineer [44.04 h]; Gate valves dia (90)mm on pipes with dia (125) mm. | PRO-R15-IR-DL-110 | PRC | DL | Each | DL | IR | PRO | R15 | PROC | MEP |
|  | 4 | **Road 10 Local 2 ( 2352 LM )** |  | 2025-06-19 | 2026-06-01 |  |  |  |  |  |  |  |  |  |  |  |  |  |  |  |  |  |  |
|  | 1 | **Main Line Pipes** |  | 2025-06-19 | 2026-06-01 |  |  |  |  |  |  |  |  |  |  |  |  |  |  |  |  |  |  |
| PRO-R19.2-IR-DL-100 |  | Material Delivery & Site Inspection of Main Line Pipes for Irrigation Network | 16d | 2025-06-19 A | 2025-07-08 A | PRO-IR-1DL-100, PRO-R15-IR-DL-100 | 100% |  | 2025-09-21 | 2025-10-09 |  |  | Pro Engineer [312.12 h]; 125 mm pipe; depth 0.0m - 1.5m; 400 mm pipe; depth 1.5m - 3.0m; 500. mm pipe; depth 1.5m - 3.0m | PRO-R19.2-IR-DL-100 | PRC | DL | Each | DL | IR | PRO | R10 | PROC | MEP |
| PRO-R19.2-IR-DL-110 |  | Material Delivery & Site Inspection of Valves for Irrigation Network | 16d | 2025-12-11 A | 2026-06-01 A | PRO-IR-MF-110 | 100% |  | 2025-10-08 | 2025-10-26 |  |  | Pro Engineer [312.12 h]; Gate valves dia (90)mm on pipes with dia (125) mm.; Butterfly valves with dia (355)mm on pipes with dia (355)mm.; Butterfly valves with dia (400)mm on pipes with dia (400)mm.; Butterfly valves with dia (500)mm on pipes with dia (500)mm.; Wash out valve with dia (100)mm on pipes with dia (355) mm; Wash out valve with dia (150)mm on pipes with dia (500) mm; Air valves with dia (65mm) mm on pipes with dia(280)mm.; Air valves with dia (65mm) mm on pipes with dia(400)mm.; Air valves with dia (65mm) mm on pipes with dia(500)mm. | PRO-R19.2-IR-DL-110 | PRC | DL | Each | DL | IR | PRO | R10 | PROC | MEP |
|  | 6 | **Road 14 Local 1 ( 584 LM )** |  | 2025-10-13 | 2026-06-01 |  |  |  |  |  |  |  |  |  |  |  |  |  |  |  |  |  |  |
|  | 1 | **Main Line Pipes** |  | 2025-10-13 | 2026-06-01 |  |  |  |  |  |  |  |  |  |  |  |  |  |  |  |  |  |  |
| PRO-R14-IR-DL-100 |  | Material Delivery & Site Inspection of Main Line Pipes for Irrigation Network | 16d | 2025-10-13 A | 2026-06-01 A | PRO-IR-1DL-100, PRO-R19.2-IR-DL-100 | 100% |  | 2025-10-11 | 2025-10-28 |  |  | Pro Engineer [312.12 h]; 125 mm pipe; depth 0.0m - 1.5m; 280 mm pipe; depth 0.0m - 1.5m; 280 mm pipe; depth 1.5m - 3.0m | PRO-R14-IR-DL-100 | PRC | DL | Each | DL | IR | PRO | R14 | PROC | MEP |
| PRO-R14-IR-DL-110 |  | Material Delivery & Site Inspection of Valves for Irrigation Network | 16d | 2026-05-21 A | 2026-06-01 A | PRO-R19.2-IR-DL-110 | 100% |  | 2025-10-27 | 2025-11-13 |  |  | Pro Engineer [312.12 h]; Gate valves dia (90)mm on pipes with dia (125) mm.; Gate valves dia (200)mm on pipes with dia (280) mm.; Air valves with dia (50mm) mm on pipes with dia(125)mm. | PRO-R14-IR-DL-110 | PRC | DL | Each | DL | IR | PRO | R14 | PROC | MEP |
|  | 2 | **Road 09 Local 2 ( 2278 LM )** |  | 2025-11-30 | 2026-06-02 |  |  |  |  |  |  |  |  |  |  |  |  |  |  |  |  |  |  |
|  | 1 | **Main Line Pipes** |  | 2025-11-30 | 2026-06-02 |  |  |  |  |  |  |  |  |  |  |  |  |  |  |  |  |  |  |
| PRO-R09-IR-DL-100 |  | Material Delivery & Site Inspection of Main Line Pipes for Irrigation Network | 16d | 2025-11-30 A | 2026-06-02 A | PRO-IR-1DL-100, PRO-R14-IR-DL-100 | 100% |  | 2025-10-29 | 2025-11-16 |  |  | Pro Engineer [312.12 h]; 125 mm pipe; depth 0.0m - 1.5m | PRO-R09-IR-DL-100 | PRC | DL | Each | DL | IR | PRO | R09 | PROC | MEP |
| PRO-R09-IR-DL-110 |  | Material Delivery & Site Inspection of Valves for Irrigation Network | 16d | 2026-05-21 A | 2026-06-02 A | PRO-R14-IR-DL-110 | 100% |  | 2025-11-15 | 2025-12-02 |  |  | Pro Engineer [312.12 h]; Gate valves dia (90)mm on pipes with dia (125) mm.; Wash out valve with dia (100)mm on pipes with dia (125) mm | PRO-R09-IR-DL-110 | PRC | DL | Each | DL | IR | PRO | R09 | PROC | MEP |

| ID | WBS | Activity | Duration | Start | Finish | Predecessors | Complete | Planned start | Planned finish | Resources | Activity ID N | 02- Network-WBS | 03- Activity | 04-UOM | 05-Discipline | 01- Network | 08 Stage | 09 Roads | Discipline | New Discipline |
| --- | --- | --- | --- | --- | --- | --- | --- | --- | --- | --- | --- | --- | --- | --- | --- | --- | --- | --- | --- | --- |
|  | 5 | **Road 11 Local 1 ( 670 LM )** |  | 2025-10-13 | 2026-06-01 |  |  |  |  |  |  |  |  |  |  |  |  |  |  |  |
|  | 1 | **Main Line Pipes** |  | 2025-10-13 | 2026-06-01 |  |  |  |  |  |  |  |  |  |  |  |  |  |  |  |
| PRO-R11-IR-DL-140 |  | Material Delivery & Site Inspection of Main Line Pipes for Irrigation Network | 16d | 2025-10-13 A | 2026-06-01 A | PRO-IR-1DL-100, PRO-R09-IR-DL-100 | 100% | 2025-11-17 | 2025-12-04 | Pro Engineer [312.12 h]; 125 mm pipe; depth 0.0m - 1.5m | PRO-R11-IR-DL-140 | PRC | DL | Each | DL | IR | PRO | R11 | PROC | MEP |
| PRO-R11-IR-DL-150 |  | Material Delivery & Site Inspection of Valves for Irrigation Network | 16d | 2026-05-19 A | 2026-06-01 A | PRO-R09-IR-DL-110 | 100% | 2025-12-03 | 2025-12-21 | Pro Engineer [312.12 h]; Gate valves dia (90)mm on pipes with dia (125) mm.; Air valves with dia (50mm) mm on pipes with dia(125)mm. | PRO-R11-IR-DL-150 | PRC | DL | Each | DL | IR | PRO | R11 | PROC | MEP |
|  | MV | **Medium Voltage Network** |  | 2025-02-11 | 2026-10-07 |  |  |  |  |  |  |  |  |  |  |  |  |  |  |  |
|  | PO | **Issuance of Purchase Orders** |  | 2025-02-11 | 2025-03-10 |  |  |  |  |  |  |  |  |  |  |  |  |  |  |  |
|  | 1 | **Cabling Works** |  | 2025-02-11 | 2025-02-25 |  |  |  |  |  |  |  |  |  |  |  |  |  |  |  |
| PRO-MV-PO-100 |  | Issuance of Purchase Order for Medium Voltage Cables of Medium Voltage Network | 12d | 2025-02-11 A | 2025-02-25 A | ENG-MT-MV-ML-A-100, ENG-SH-MV-A-110, ENG-MS-MV-A-110 | 100% |  |  | Pro Engineer [312.12 h] | PRO-MV-PO-100 | PRC | PO | Each | PO | MV | PRO |  | PROC | MEP |
|  | 2 | **RMU Concrete Works** |  | 2025-02-21 | 2025-03-10 |  |  |  |  |  |  |  |  |  |  |  |  |  |  |  |
| PRO-MV-PO-110 |  | Issuance of Purchase Order for RMU Concrete Foundations of Medium Voltage Network | 12d | 2025-02-21 A | 2025-03-10 A | ENG-MT-MV-SS-A-100, ENG-SH-MV-A-110, ENG-MS-MV-A-110 | 100% | 2025-02-11 | 2025-02-25 | Pro Engineer [312.12 h] | PRO-MV-PO-110 | PRC | PO | Each | PO | MV | PRO |  | PROC | MEP |
|  | 3 | **Termination and Testing Works** |  | 2025-02-11 | 2025-02-25 |  |  |  |  |  |  |  |  |  |  |  |  |  |  |  |
| PRO-MV-PO-120 |  | Issuance of Purchase Order for Termination and Joints Kits of Medium Voltage Network | 12d | 2025-02-11 A | 2025-02-25 A | ENG-MT-MV-TF-A-100, ENG-SH-MV-A-110, ENG-MS-MV-A-110 | 100% |  |  | Pro Engineer [312.12 h] | PRO-MV-PO-120 | PRC | PO | Each | PO | MV | PRO |  | PROC | MEP |
|  | MF | **Manufacturing of Material** |  | 2025-02-26 | 2025-07-15 |  |  |  |  |  |  |  |  |  |  |  |  |  |  |  |
|  | 1 | **Cabling Works** |  | 2025-02-26 | 2025-04-30 |  |  |  |  |  |  |  |  |  |  |  |  |  |  |  |
| PRO-MV-MF-100 |  | Manufacturing of Medium Voltage Cables for Medium Voltage Network | 52d | 2025-02-26 A | 2025-04-30 A | PRO-MV-PO-100 | 100% | 2025-02-26 | 2025-05-01 | Pro Engineer [312.12 h] | PRO-MV-MF-100 | PRC | MF | Each | MF | MV | PRO |  | PROC | MEP |
|  | 2 | **RMU Concrete Works** |  | 2025-03-11 | 2025-07-15 |  |  |  |  |  |  |  |  |  |  |  |  |  |  |  |
| PRO-MV-MF-120 |  | Manufacturing of RMU Concrete Foundations for Medium Voltage Network | 160d | 2025-03-11 A | 2025-07-15 A | PRO-MV-PO-110 | 100% | 2025-02-26 | 2025-09-09 | Pro Engineer [312.12 h] | PRO-MV-MF-120 | PRC | MF | Each | MF | MV | PRO |  | PROC | MEP |
|  | 3 | **Termination and Testing Works** |  | 2025-02-26 | 2025-04-29 |  |  |  |  |  |  |  |  |  |  |  |  |  |  |  |
| PRO-MV-MF-110 |  | Manufacturing of Termination and Joints Kits for Medium Voltage Network | 52d | 2025-02-26 A | 2025-04-29 A | PRO-MV-PO-120 | 100% | 2025-02-26 | 2025-05-01 | Pro Engineer [312.12 h] | PRO-MV-MF-110 | PRC | MF | Each | MF | MV | PRO |  | PROC | MEP |
|  | 1DL | **1st Material Delivery & Site Inspection** |  | 2025-05-01 | 2026-10-05 |  |  |  |  |  |  |  |  |  |  |  |  |  |  |  |
|  | 1 | **Cabling Works** |  | 2025-05-01 | 2025-05-15 |  |  |  |  |  |  |  |  |  |  |  |  |  |  |  |
| PRO-MV-1DL-100 |  | 1ST Material Delivery for Medium Voltage Cables of Medium Voltage Network | 12d | 2025-05-01 A | 2025-05-15 A | PRO-MV-MF-100 | 100% | 2025-05-03 | 2025-05-15 | Pro Engineer [312.12 h] | PRO-MV-1DL-100 | PRC | 1DL | Each | 1DL | MV | PRO |  | PROC | MEP |
|  | 2 | **RMU Concrete Works** |  | 2026-07-07 | 2026-07-13 |  |  |  |  |  |  |  |  |  |  |  |  |  |  |  |
| PRO-MV-1DL-110 |  | 1ST Material Delivery for RMU Concrete Foundations of Medium Voltage Network | 52d | 2026-07-07 A | 2026-07-13 A | PRO-MV-MF-120 | 100% | 2025-09-10 | 2025-11-10 | Pro Engineer [312.12 h] | PRO-MV-1DL-110 | PRC | 1DL | Each | 1DL | MV | PRO |  | PROC | MEP |

| ID | WBS | Activity | Duration | Start | Finish | Predecessors | Complete | Planned start | Planned finish | Resources | Activity ID N | 02- Network-WBS | 03- Activity | 04-UOM | 05-Discipline | 01- Network | 08 Stage | Discipline | New Discipline | 09 Roads |
| --- | --- | --- | --- | --- | --- | --- | --- | --- | --- | --- | --- | --- | --- | --- | --- | --- | --- | --- | --- | --- |
|  | 3 | **Termination and Testing Works** |  | 2026-09-03 | 2026-10-05 |  |  |  |  |  |  |  |  |  |  |  |  |  |  |  |
| PRO-MV-1DL-120 |  | 1ST Material Delivery for Termination and Joints Kits of Medium Voltage Network | 26d | 2026-09-03 A | 2026-10-05 A | PRO-MV-MF-110, PRO-MV-1DL-100 FF | 100% | 2025-05-03 | 2025-06-01 | Pro Engineer [312.12 h] | PRO-MV-1DL-120 | PRC | 1DL | Each | 1DL | MV | PRO | PROC | MEP |  |
|  | DL | **Material Delivery & Site Inspection** |  | 2025-05-16 | 2026-10-07 |  |  |  |  |  |  |  |  |  |  |  |  |  |  |  |
|  | 1 | **Road 18 Local 1 ( 479 LM )** |  | 2025-05-16 | 2026-10-07 |  |  |  |  |  |  |  |  |  |  |  |  |  |  |  |
|  | 1 | **Cabling Works** |  | 2025-05-16 | 2025-05-27 |  |  |  |  |  |  |  |  |  |  |  |  |  |  |  |
| PRO-R18-MV-DL-120 |  | Material Delivery & Site Inspection of Medium Voltage Cables for Medium Voltage Network | 26d | 2025-05-16 A | 2025-05-27 A | PRO-MV-1DL-100 | 100% | 2025-05-17 | 2025-06-19 | Pro Engineer [312.12 h]; Excavation for Trench size 40cm wide and 80cm deep ( Maximum 1 cable 33kv); Excavation for Trench size 60cm wide and 80cm deep ( for Max two cables 33 kv); Excavation for Trench size 90cm wide and 80cm deep ( Maximum 3 cable 33kv); Excavation for Trench size 120cm wide and 80cm deep ( Maximum 4cable 33kv); Excavation for Trench size 150cm wide and 80cm deep ( Maximum 4cable 33kv); Duct bank for (2) 33 kv cables; Duct bank for (4) 33 kv cables; Duct bank for (6) 33 kv cables; 33kv 3Cx400 mmï¿½ Al XLPE / LLDPE /PVC Cable; 33kv 3Cx400 mmï¿½ Al XLPE /LLDPE/PVC | PRO-R18-MV-DL-120 | PRC | DL | Each | DL | MV | PRO | PROC | MEP | R18 |
|  | 3 | **Termination and Testing Works** |  | 2026-10-07 | 2026-10-07 |  |  |  |  |  |  |  |  |  |  |  |  |  |  |  |
| PRO-R18-MV-DL-130 |  | Material Delivery & Site Inspection of Termination and Joints Kits for Medium Voltage Network | 26d | 2026-10-07 A | 2026-10-07 A | PRO-MV-1DL-120, PRO-R18-MV-DL-120 | 100% | 2025-06-21 | 2025-07-20 | Pro Engineer [312.12 h]; 33kv 3Cx400 mmï¿½ Al XLPE/LLDPE Cable Termination | PRO-R18-MV-DL-130 | PRC | DL | Each | DL | MV | PRO | PROC | MEP | R18 |
|  | 9 | **Road 17 Local 1 ( 500 LM )** |  | 2025-05-16 | 2026-10-07 |  |  |  |  |  |  |  |  |  |  |  |  |  |  |  |
|  | 1 | **Cabling Works** |  | 2025-05-16 | 2025-05-27 |  |  |  |  |  |  |  |  |  |  |  |  |  |  |  |
| PRO-R17-MV-DL-100 |  | Material Delivery & Site Inspection of Medium Voltage Cables for Medium Voltage Network | 26d | 2025-05-16 A | 2025-05-27 A | PRO-MV-1DL-100, PRO-R18-MV-DL-120 | 100% | 2025-06-21 | 2025-07-20 | Pro Engineer [312.12 h]; Excavation for Trench size 40cm wide and 80cm deep ( Maximum 1 cable 33kv); Excavation for Trench size 60cm wide and 80cm deep ( for Max two cables 33 kv); Excavation for Trench size 90cm wide and 80cm deep ( Maximum 3 cable 33kv); Excavation for Trench size 120cm wide and 80cm deep ( Maximum 4cable 33kv); Excavation for Trench size 150cm wide and 80cm deep ( Maximum 4cable 33kv); Duct bank for (2) 33 kv cables; Duct bank for (4) 33 kv cables; Duct bank for (6) 33 kv cables; 33kv 3Cx400 mmï¿½ Al XLPE / LLDPE /PVC Cable; 33kv 3Cx400 mmï¿½ Al XLPE /LLDPE/PVC | PRO-R17-MV-DL-100 | PRC | DL | Each | DL | MV | PRO | PROC | MEP | R17 |
|  | 2 | **RMU Concrete Works** |  | 2026-07-07 | 2026-10-06 |  |  |  |  |  |  |  |  |  |  |  |  |  |  |  |
| PRO-R17-MV-DL-120 |  | Material Delivery & Site Inspection of RMU Concrete Foundations for Medium Voltage Network | 38d | 2026-07-07 A | 2026-10-06 A | PRO-MV-1DL-110, PRO-R10-MV-DL-120 | 100% | 2026-01-20 | 2026-03-04 | Pro Engineer [312.12 h] | PRO-R14-MV-DL-120 | PRC | DL | Each | DL | MV | PRO | PROC | MEP | R17 |
|  | 3 | **Termination and Testing Works** |  | 2026-10-05 | 2026-10-07 |  |  |  |  |  |  |  |  |  |  |  |  |  |  |  |
| PRO-R17-MV-DL-110 |  | Material Delivery & Site Inspection of Termination and Joints Kits for Medium Voltage Network | 26d | 2026-10-05 A | 2026-10-07 A | PRO-MV-1DL-120, PRO-R18-MV-DL-130 | 100% | 2025-07-21 | 2025-08-19 | Pro Engineer [312.12 h]; 33kv 3Cx400 mmï¿½ Al XLPE/LLDPE Cable Termination | PRO-R17-MV-DL-110 | PRC | DL | Each | DL | MV | PRO | PROC | MEP | R17 |
|  | 3 | **Road 16 Local 1 ( 527 LM )** |  | 2025-05-16 | 2026-10-07 |  |  |  |  |  |  |  |  |  |  |  |  |  |  |  |
|  | 1 | **Cabling Works** |  | 2025-05-16 | 2025-05-29 |  |  |  |  |  |  |  |  |  |  |  |  |  |  |  |
| PRO-R16-MV-DL-100 |  | Material Delivery & Site Inspection of Medium Voltage Cables for Medium Voltage Network | 26d | 2025-05-16 A | 2025-05-29 A | PRO-MV-1DL-100, PRO-R17-MV-DL-100 | 100% | 2025-07-21 | 2025-08-19 | Pro Engineer [312.12 h]; Excavation for Trench size 40cm wide and 80cm deep ( Maximum 1 cable 33kv); Excavation for Trench size 60cm wide and 80cm deep ( for Max two cables 33 kv); Excavation for Trench size 90cm wide and 80cm deep ( Maximum 3 cable 33kv); Excavation for Trench size 120cm wide and 80cm deep ( Maximum 4cable 33kv); Excavation for Trench size 150cm wide and 80cm deep ( Maximum 4cable 33kv); Duct bank for (2) 33 kv cables; Duct bank for (4) 33 kv cables; Duct bank for (6) 33 kv cables; 33kv 3Cx400 mmï¿½ Al XLPE / LLDPE /PVC Cable; 33kv 3Cx400 mmï¿½ Al XLPE /LLDPE/PVC | PRO-R09-MV-DL-100 | PRC | DL | Each | DL | MV | PRO | PROC | MEP | R16 |
|  | 3 | **Termination and Testing Works** |  | 2026-10-05 | 2026-10-07 |  |  |  |  |  |  |  |  |  |  |  |  |  |  |  |
| PRO-R16-MV-DL-110 |  | Material Delivery & Site Inspection of Termination and Joints Kits for Medium Voltage Network | 26d | 2026-10-05 A | 2026-10-07 A | PRO-MV-1DL-120, PRO-R17-MV-DL-110 | 100% | 2025-08-20 | 2025-09-18 | Pro Engineer [312.12 h]; 33kv 3Cx400 mmï¿½ Al XLPE/LLDPE Cable Termination | PRO-R09-MV-DL-110 | PRC | DL | Each | DL | MV | PRO | PROC | MEP | R16 |
|  | 7 | **Road 15 Local 1 ( 556 LM )** |  | 2025-05-16 | 2026-10-07 |  |  |  |  |  |  |  |  |  |  |  |  |  |  |  |
|  | 1 | **Cabling Works** |  | 2025-05-16 | 2025-05-29 |  |  |  |  |  |  |  |  |  |  |  |  |  |  |  |
| PRO-R15-MV-DL-100 |  | Material Delivery & Site Inspection of Medium Voltage Cables for Medium Voltage Network | 26d | 2025-05-16 A | 2025-05-29 A | PRO-MV-1DL-100, PRO-R16-MV-DL-100 | 100% | 2025-08-20 | 2025-09-18 | Pro Engineer [312.12 h]; Excavation for Trench size 40cm wide and 80cm deep ( Maximum 1 cable 33kv); Excavation for Trench size 60cm wide and 80cm deep ( for Max two cables 33 kv); Excavation for Trench size 90cm wide and 80cm deep ( Maximum 3 cable 33kv); Excavation for Trench size 120cm wide and 80cm deep ( Maximum 4cable 33kv); Excavation for Trench size 150cm wide and 80cm deep ( Maximum 4cable 33kv); Duct bank for (2) 33 kv cables; Duct bank for (4) 33 kv cables; Duct bank for (6) 33 kv cables; 33kv 3Cx400 mmï¿½ Al XLPE / LLDPE /PVC Cable; 33kv 3Cx400 mmï¿½ Al XLPE /LLDPE/PVC | PRO-R15-MV-DL-100 | PRC | DL | Each | DL | MV | PRO | PROC | MEP | R15 |
|  | 3 | **Termination and Testing Works** |  | 2026-10-07 | 2026-10-07 |  |  |  |  |  |  |  |  |  |  |  |  |  |  |  |
| PRO-R15-MV-DL-110 |  | Material Delivery & Site Inspection of Termination and Joints Kits for Medium Voltage Network | 26d | 2026-10-07 A | 2026-10-07 A | PRO-MV-1DL-120, PRO-R16-MV-DL-110 | 100% | 2025-09-20 | 2025-10-20 | Pro Engineer [312.12 h]; 33kv 3Cx400 mmï¿½ Al XLPE/LLDPE Cable Termination | PRO-R15-MV-DL-110 | PRC | DL | Each | DL | MV | PRO | PROC | MEP | R15 |

| ID | WBS | Activity | Duration | Start | Finish | Predecessors | Complete | Planned start | Planned finish | Resources | Activity ID N | 02- Network-WBS | 03- Activity | 04-UOM | 05-Discipline | 01- Network | 08 Stage | 09 Roads | Discipline | New Discipline |
| --- | --- | --- | --- | --- | --- | --- | --- | --- | --- | --- | --- | --- | --- | --- | --- | --- | --- | --- | --- | --- |
|  | 4 | **Road 10 Local 2 ( 2352 LM )** |  | 2025-11-01 | 2026-10-07 |  |  |  |  |  |  |  |  |  |  |  |  |  |  |  |
|  | 1 | **Cabling Works** |  | 2025-11-01 | 2025-11-09 |  |  |  |  |  |  |  |  |  |  |  |  |  |  |  |
| PRO-R10-MV-DL-100 |  | Material Delivery & Site Inspection of Medium Voltage Cables for Medium Voltage Network | 26d | 2025-11-01 A | 2025-11-09 A | PRO-MV-1DL-100, PRO-R15-MV-DL-100 | 100% | 2025-09-20 | 2025-10-20 | Pro Engineer [312.12 h]; Excavation for Trench size 40cm wide and 80cm deep ( Maximum 1 cable 33kv); Excavation for Trench size 60cm wide and 80cm deep ( for Max two cables 33 kv); Excavation for Trench size 90cm wide and 80cm deep ( Maximum 3 cable 33kv); Excavation for Trench size 120cm wide and 80cm deep ( Maximum 4cable 33kv); Excavation for Trench size 150cm wide and 80cm deep ( Maximum 4cable 33kv); Duct bank for (2) 33 kv cables; Duct bank for (4) 33 kv cables; Duct bank for (6) 33 kv cables; 33kv 3Cx400 mmï¿½ Al XLPE / LLDPE /PVC Cable; 33kv 3Cx400 mmï¿½ Al XLPE /LLDPE/PVC | PRO-R10-MV-DL-100 | PRC | DL | Each | DL | MV | PRO | R10 | PROC | MEP |
|  | 2 | **RMU Concrete Works** |  | 2026-07-15 | 2026-07-16 |  |  |  |  |  |  |  |  |  |  |  |  |  |  |  |
| PRO-R10-MV-DL-120 |  | Material Delivery & Site Inspection of RMU Concrete Foundations for Medium Voltage Network | 26d | 2026-07-15 A | 2026-07-16 A | PRO-MV-1DL-110, PRO-R11-MV-DL-100 FF | 100% | 2025-12-21 | 2026-01-19 | Pro Engineer [312.12 h] | PRO-R11-MV-DL-120 | PRC | DL | Each | DL | MV | PRO | R10 | PROC | MEP |
|  | 3 | **Termination and Testing Works** |  | 2026-10-07 | 2026-10-07 |  |  |  |  |  |  |  |  |  |  |  |  |  |  |  |
| PRO-R10-MV-DL-110 |  | Material Delivery & Site Inspection of Termination and Joints Kits for Medium Voltage Network | 26d | 2026-10-07 A | 2026-10-07 A | PRO-MV-1DL-120, PRO-R15-MV-DL-110 | 100% | 2025-10-21 | 2025-11-19 | Pro Engineer [312.12 h]; 33kv 3Cx400 mmï¿½ Al XLPE/LLDPE Cable Termination | PRO-R10-MV-DL-110 | PRC | DL | Each | DL | MV | PRO | R10 | PROC | MEP |
|  | 6 | **Road 14 Local 1 ( 584 LM )** |  | 2025-08-16 | 2026-10-07 |  |  |  |  |  |  |  |  |  |  |  |  |  |  |  |
|  | 1 | **Cabling Works** |  | 2025-08-16 | 2025-08-16 |  |  |  |  |  |  |  |  |  |  |  |  |  |  |  |
| PRO-R14-MV-DL-100 |  | Material Delivery & Site Inspection of Medium Voltage Cables for Medium Voltage Network | 26d | 2025-08-16 A | 2025-08-16 A | PRO-MV-1DL-100, PRO-R10-MV-DL-100 | 100% | 2025-10-21 | 2025-11-19 | Pro Engineer [312.12 h]; Excavation for Trench size 40cm wide and 80cm deep ( Maximum 1 cable 33kv); Excavation for Trench size 60cm wide and 80cm deep ( for Max two cables 33 kv); Excavation for Trench size 90cm wide and 80cm deep ( Maximum 3 cable 33kv); Excavation for Trench size 120cm wide and 80cm deep ( Maximum 4cable 33kv); Excavation for Trench size 150cm wide and 80cm deep ( Maximum 4cable 33kv); Duct bank for (2) 33 kv cables; Duct bank for (4) 33 kv cables; Duct bank for (6) 33 kv cables; 33kv 3Cx400 mmï¿½ Al XLPE / LLDPE /PVC Cable; 33kv 3Cx400 mmï¿½ Al XLPE /LLDPE/PVC | PRO-R14-MV-DL-100 | PRC | DL | Each | DL | MV | PRO | R14 | PROC | MEP |
|  | 3 | **Termination and Testing Works** |  | 2026-10-07 | 2026-10-07 |  |  |  |  |  |  |  |  |  |  |  |  |  |  |  |
| PRO-R14-MV-DL-110 |  | Material Delivery & Site Inspection of Termination and Joints Kits for Medium Voltage Network | 26d | 2026-10-07 A | 2026-10-07 A | PRO-MV-1DL-120, PRO-R10-MV-DL-110 | 100% | 2025-11-20 | 2025-12-20 | Pro Engineer [312.12 h]; 33kv 3Cx400 mmï¿½ Al XLPE/LLDPE Cable Termination | PRO-R14-MV-DL-110 | PRC | DL | Each | DL | MV | PRO | R14 | PROC | MEP |
|  | 2 | **Road 09 Local 2 ( 2278 LM )** |  | 2025-12-13 | 2026-10-07 |  |  |  |  |  |  |  |  |  |  |  |  |  |  |  |
|  | 1 | **Cabling Works** |  | 2025-12-13 | 2026-09-11 |  |  |  |  |  |  |  |  |  |  |  |  |  |  |  |
| PRO-R09-MV-DL-100 |  | Material Delivery & Site Inspection of Medium Voltage Cables for Medium Voltage Network | 26d | 2025-12-13 A | 2026-09-11 A | PRO-MV-1DL-100, PRO-R14-MV-DL-100 | 100% | 2025-11-20 | 2025-12-20 | Pro Engineer [312.12 h]; Excavation for Trench size 40cm wide and 80cm deep ( Maximum 1 cable 33kv); Excavation for Trench size 60cm wide and 80cm deep ( for Max two cables 33 kv); Excavation for Trench size 90cm wide and 80cm deep ( Maximum 3 cable 33kv); Excavation for Trench size 120cm wide and 80cm deep ( Maximum 4cable 33kv); Excavation for Trench size 150cm wide and 80cm deep ( Maximum 4cable 33kv); Duct bank for (2) 33 kv cables; Duct bank for (4) 33 kv cables; Duct bank for (6) 33 kv cables; 33kv 3Cx400 mmï¿½ Al XLPE / LLDPE /PVC Cable; 33kv 3Cx400 mmï¿½ Al XLPE /LLDPE/PVC | PRO-R09-MV-DL-100 | PRC | DL | Each | DL | MV | PRO | R09 | PROC | MEP |
|  | 3 | **Termination and Testing Works** |  | 2026-10-07 | 2026-10-07 |  |  |  |  |  |  |  |  |  |  |  |  |  |  |  |
| PRO-R09-MV-DL-110 |  | Material Delivery & Site Inspection of Termination and Joints Kits for Medium Voltage Network | 26d | 2026-10-07 A | 2026-10-07 A | PRO-MV-1DL-120, PRO-R14-MV-DL-110 | 100% | 2025-12-21 | 2026-01-19 | Pro Engineer [312.12 h]; 33kv 3Cx400 mmï¿½ Al XLPE/LLDPE Cable Termination | PRO-R09-MV-DL-110 | PRC | DL | Each | DL | MV | PRO | R09 | PROC | MEP |
|  | 5 | **Road 11 Local 1 ( 670 LM )** |  | 2026-07-08 | 2026-10-07 |  |  |  |  |  |  |  |  |  |  |  |  |  |  |  |
|  | 1 | **Cabling Works** |  | 2026-07-08 | 2026-08-13 |  |  |  |  |  |  |  |  |  |  |  |  |  |  |  |
| PRO-R11-MV-DL-100 |  | Material Delivery & Site Inspection of Medium Voltage Cables for Medium Voltage Network | 26d | 2026-07-08 A | 2026-08-13 A | PRO-MV-1DL-100, PRO-R09-MV-DL-100 | 100% | 2025-12-21 | 2026-01-19 | Pro Engineer [312.12 h]; Excavation for Trench size 40cm wide and 80cm deep ( Maximum 1 cable 33kv); Excavation for Trench size 60cm wide and 80cm deep ( for Max two cables 33 kv); Excavation for Trench size 90cm wide and 80cm deep ( Maximum 3 cable 33kv); Excavation for Trench size 120cm wide and 80cm deep ( Maximum 4cable 33kv); Excavation for Trench size 150cm wide and 80cm deep ( Maximum 4cable 33kv); Duct bank for (2) 33 kv cables; Duct bank for (4) 33 kv cables; Duct bank for (6) 33 kv cables; 33kv 3Cx400 mmï¿½ Al XLPE / LLDPE /PVC Cable; 33kv 3Cx400 mmï¿½ Al XLPE /LLDPE/PVC | PRO-R11-MV-DL-100 | PRC | DL | Each | DL | MV | PRO | R11 | PROC | MEP |
|  | 3 | **Termination and Testing Works** |  | 2026-10-07 | 2026-10-07 |  |  |  |  |  |  |  |  |  |  |  |  |  |  |  |
| PRO-R11-MV-DL-110 |  | Material Delivery & Site Inspection of Termination and Joints Kits for Medium Voltage Network | 26d | 2026-10-07 A | 2026-10-07 A | PRO-MV-1DL-120, PRO-R09-MV-DL-110 | 100% | 2026-01-20 | 2026-02-18 | Pro Engineer [312.12 h]; 33kv 3Cx400 mmï¿½ Al XLPE/LLDPE Cable Termination | PRO-R11-MV-DL-110 | PRC | DL | Each | DL | MV | PRO | R11 | PROC | MEP |
|  | SL | **Street Lighting Network** |  | 2025-02-11 | 2027-03-02 |  |  |  |  |  |  |  |  |  |  |  |  |  |  |  |
|  | PO | **Issuance of Purchase Orders** |  | 2025-02-11 | 2025-05-31 |  |  |  |  |  |  |  |  |  |  |  |  |  |  |  |
|  | 1 | **Cabling Works** |  | 2025-02-11 | 2025-02-17 |  |  |  |  |  |  |  |  |  |  |  |  |  |  |  |
| PRO-SL-PO-100 |  | Issuance of Purchase Order for Lighting Cables of Street Lighting Network | 6d | 2025-02-11 A | 2025-02-17 A | ENG-MT-SL-ML-A-100, ENG-SH-SL-A-110, ENG-MS-SL-A-110 | 100% |  |  | Pro Engineer [312.12 h] | PRO-SL-PO-100 | PRC | PO | Each | PO | SL | PRO |  | PROC | MEP |

| ID | WBS | Activity | Duration | Start | Finish | Predecessors | Complete | Planned start | Planned finish | Resources | Activity ID N | 02- Network-WBS | 03- Activity | 04-UOM | 05-Discipline | 01- Network | 08 Stage | Discipline | New Discipline |
| --- | --- | --- | --- | --- | --- | --- | --- | --- | --- | --- | --- | --- | --- | --- | --- | --- | --- | --- | --- |
|  | 2 | **Lighting Poles Works** |  | 2025-02-11 | 2025-05-20 |  |  |  |  |  |  |  |  |  |  |  |  |  |  |
| PRO-SL-PO-110 |  | Issuance of Purchase Order for Lighting Poles Foundations of Street Lighting Network | 12d | 2025-02-11 A | 2025-02-25 A | ENG-MT-SL-A-100, ENG-SH-SL-A-110, ENG-MS-SL-A-110 | 100% |  |  | Pro Engineer [312.12 h] | PRO-SL-PO-110 | PRC | PO | Each | PO | SL | PRO | PROC | MEP |
| PRO-SL-PO-120 |  | Issuance of Purchase Order for Lighting Poles of Street Lighting Network | 12d | 2025-02-11 A | 2025-02-25 A | ENG-MT-SL-A-110, ENG-SH-SL-A-110, ENG-MS-SL-A-110 | 100% |  |  | Pro Engineer [312.12 h] | PRO-SL-PO-120 | PRC | PO | Each | PO | SL | PRO | PROC | MEP |
| PRO-SL-PO-140 |  | Issuance of Purchase Order for Lighting Fixtures of Street Lighting Network | 12d | 2025-02-26 A | 2025-05-20 A | ENG-MT-SL-A-120, ENG-SH-SL-A-110, ENG-MS-SL-A-110, PRO-SL-PO-120 | 100% | 2025-02-26 | 2025-03-11 | Pro Engineer [312.12 h] | PRO-SL-PO-140 | PRC | PO | Each | PO | SL | PRO | PROC | MEP |
|  | 3 | **Distribution Panel Board** |  | 2025-05-07 | 2025-05-31 |  |  |  |  |  |  |  |  |  |  |  |  |  |  |
| PRO-SL-PO-160 |  | Issuance of Purchase Order for Distrubution Panel Boards of Street Lighting Network | 10d | 2025-05-07 A | 2025-05-31 A | ENG-MT-SL-DB-A-100, ENG-SH-SL-A-110, ENG-MS-SL-A-110, PRO-SL-PO-140 | 100% | 2025-03-12 | 2025-03-23 | Pro Engineer [312.12 h] | PRO-SL-PO-160 | PRC | PO | Each | PO | SL | PRO | PROC | MEP |
|  | 4 | **Earthing System Works** |  | 2025-05-21 | 2025-05-31 |  |  |  |  |  |  |  |  |  |  |  |  |  |  |
| PRO-SL-PO-150 |  | Issuance of Purchase Order for Lighting Earthing of Street Lighting Network | 10d | 2025-05-21 A | 2025-05-31 A | ENG-MT-SL-ES-A-100, ENG-SH-SL-A-110, ENG-MS-SL-A-110, PRO-SL-PO-170 SS | 100% | 2025-03-12 | 2025-03-23 | Pro Engineer [312.12 h] | PRO-SL-PO-150 | PRC | PO | Each | PO | SL | PRO | PROC | MEP |
|  | 5 | **Termination and Testing Works** |  | 2025-05-12 | 2025-05-29 |  |  |  |  |  |  |  |  |  |  |  |  |  |  |
| PRO-SL-PO-170 |  | Issuance of Purchase Order for Cable Lugs of Street Lighting Network | 10d | 2025-05-12 A | 2025-05-18 A | ENG-MT-SL-TF-A-110, ENG-SH-SL-A-110, ENG-MS-SL-A-110, PRO-SL-PO-130 SS | 100% | 2025-03-12 | 2025-03-23 | Pro Engineer [312.12 h] | PRO-SL-PO-170 | PRC | PO | Each | PO | SL | PRO | PROC | MEP |
| PRO-SL-PO-130 |  | Issuance of Purchase Order for Fuse Boxes of Street Lighting Network | 10d | 2025-05-20 A | 2025-05-29 A | ENG-MT-SL-TF-A-100, ENG-SH-SL-A-110, ENG-MS-SL-A-110, PRO-SL-PO-160 SS | 100% | 2025-03-12 | 2025-03-23 | Pro Engineer [312.12 h] | PRO-SL-PO-130 | PRC | PO | Each | PO | SL | PRO | PROC | MEP |
|  | MF | **Manufacturing of Material** |  | 2025-02-18 | 2026-08-30 |  |  |  |  |  |  |  |  |  |  |  |  |  |  |
|  | 1 | **Cabling Works** |  | 2025-02-18 | 2025-05-31 |  |  |  |  |  |  |  |  |  |  |  |  |  |  |
| PRO-SL-MF-100 |  | Manufacturing of Lighting Cables for Street Lighting Network | 60d | 2025-02-18 A | 2025-05-31 A | PRO-SL-PO-100 | 100% | 2025-02-18 | 2025-05-04 | Pro Engineer [312.12 h] | PRO-SL-MF-100 | PRC | MF | Each | MF | SL | PRO | PROC | MEP |
|  | 2 | **Lighting Poles Works** |  | 2025-02-26 | 2025-06-01 |  |  |  |  |  |  |  |  |  |  |  |  |  |  |
| PRO-SL-MF-110 |  | Manufacturing of Lighting Poles Foundations for Street Lighting Network | 60d | 2025-02-26 A | 2025-04-16 A | PRO-SL-PO-110 | 100% | 2025-02-26 | 2025-05-11 | Pro Engineer [312.12 h] | PRO-SL-MF-110 | PRC | MF | Each | MF | SL | PRO | PROC | MEP |
| PRO-SL-MF-120 |  | Manufacturing of Lighting Poles for Street Lighting Network | 60d | 2025-02-26 A | 2025-04-30 A | PRO-SL-PO-120 | 100% | 2025-02-26 | 2025-05-11 | Pro Engineer [312.12 h] | PRO-SL-MF-120 | PRC | MF | Each | MF | SL | PRO | PROC | MEP |
| PRO-SL-MF-140 |  | Manufacturing of Lighting Fixtures for Street Lighting Network | 60d | 2025-04-30 A | 2025-06-01 A | PRO-SL-PO-140, PRO-SL-MF-120 | 100% | 2025-05-12 | 2025-07-24 | Pro Engineer [312.12 h] | PRO-SL-MF-140 | PRC | MF | Each | MF | SL | PRO | PROC | MEP |
|  | 3 | **Distribution Panel Board** |  | 2026-08-25 | 2026-08-30 |  |  |  |  |  |  |  |  |  |  |  |  |  |  |
| PRO-SL-MF-160 |  | Manufacturing of Distrubution Panel Boards for Street Lighting Network | 26d | 2026-08-25 A | 2026-08-30 A | PRO-SL-PO-160, PRO-SL-MF-140 FF | 100% | 2025-06-25 | 2025-07-24 | Pro Engineer [312.12 h] | PRO-SL-MF-160 | PRC | MF | Each | MF | SL | PRO | PROC | MEP |
|  | 4 | **Earthing System Works** |  | 2026-08-25 | 2026-08-30 |  |  |  |  |  |  |  |  |  |  |  |  |  |  |
| PRO-SL-MF-150 |  | Manufacturing of Lighting Earthing for Street Lighting Network | 26d | 2026-08-25 A | 2026-08-30 A | PRO-SL-PO-150, PRO-SL-MF-170 FF | 100% | 2025-06-25 | 2025-07-24 | Pro Engineer [312.12 h] | PRO-SL-MF-150 | PRC | MF | Each | MF | SL | PRO | PROC | MEP |
|  | 5 | **Termination and Testing Works** |  | 2026-08-25 | 2026-08-30 |  |  |  |  |  |  |  |  |  |  |  |  |  |  |
| PRO-SL-MF-130 |  | Manufacturing of Fuse Boxes for Street Lighting Network | 26d | 2026-08-25 A | 2026-08-30 A | PRO-SL-PO-130, PRO-SL-MF-160 FF | 100% | 2025-06-25 | 2025-07-24 | Pro Engineer [312.12 h] | PRO-SL-MF-130 | PRC | MF | Each | MF | SL | PRO | PROC | MEP |
| PRO-SL-MF-170 |  | Manufacturing of Cable Lugs for Street Lighting Network | 26d | 2026-08-25 A | 2026-08-30 A | PRO-SL-PO-170, PRO-SL-MF-130 FF | 100% | 2025-06-25 | 2025-07-24 | Pro Engineer [312.12 h] | PRO-SL-MF-170 | PRC | MF | Each | MF | SL | PRO | PROC | MEP |

| ID | WBS | Activity | Duration | Start | Finish | Predecessors | Complete | Planned start | Planned finish | Total float | Free float | Resources | Activity ID N | 02- Network-WBS | 03- Activity | 04-UOM | 05-Discipline | 01- Network | 08 Stage | Discipline | New Discipline | 09 Roads |
| --- | --- | --- | --- | --- | --- | --- | --- | --- | --- | --- | --- | --- | --- | --- | --- | --- | --- | --- | --- | --- | --- | --- |
|  | 1DL | **1st Material Delivery & Site Inspection** |  | 2025-04-17 | 2026-11-18 |  |  |  |  |  |  |  |  |  |  |  |  |  |  |  |  |  |
|  | 1 | **Cabling Works** |  | 2025-06-01 | 2025-06-10 |  |  |  |  |  |  |  |  |  |  |  |  |  |  |  |  |  |
| PRO-SL-1DL-100 |  | 1ST Material Delivery for Lighting Cables of Street Lighting Network | 6d | 2025-06-01 A | 2025-06-10 A | PRO-SL-MF-100 | 100% | 2025-05-05 | 2025-05-11 |  |  | Pro Engineer [312.12 h] | PRO-SL-1DL-100 | PRC | 1DL | Each | 1DL | SL | PRO | PROC | MEP |  |
|  | 2 | **Lighting Poles Works** |  | 2025-04-17 | 2026-11-15 |  |  |  |  |  |  |  |  |  |  |  |  |  |  |  |  |  |
| PRO-SL-1DL-110 |  | 1ST Material Delivery for Lighting Poles Foundations of Street Lighting Network | 6d | 2025-04-17 A | 2025-04-27 A | PRO-SL-MF-110 | 100% | 2025-05-12 | 2025-05-18 |  |  | Pro Engineer [312.12 h] | PRO-SL-1DL-110 | PRC | 1DL | Each | 1DL | SL | PRO | PROC | MEP |  |
| PRO-SL-1DL-120 |  | 1ST Material Delivery for Lighting Poles of Street Lighting Network | 6d | 2025-09-01 A | 2025-09-08 A | PRO-SL-MF-120 | 100% | 2025-05-12 | 2025-05-18 |  |  | Pro Engineer [312.12 h] | PRO-SL-1DL-120 | PRC | 1DL | Each | 1DL | SL | PRO | PROC | MEP |  |
| PRO-SL-1DL-140 |  | 1ST Material Delivery for Lighting Fixtures of Street Lighting Network | 6d | 2026-11-14 A | 2026-11-15 A | PRO-SL-MF-140 | 100% | 2026-11-17 | 2026-11-23 |  |  | Pro Engineer [44.04 h] | PRO-SL-1DL-140 | PRC | 1DL | Each | 1DL | SL | PRO | PROC | MEP |  |
|  | 3 | **Distribution Panel Board** |  | 2025-10-25 | 2025-10-31 |  |  |  |  |  |  |  |  |  |  |  |  |  |  |  |  |  |
| PRO-SL-1DL-160 |  | 1ST Material Delivery for Distrubution Panel Boards of Street Lighting Network | 6d | 2025-10-25 A | 2025-10-31 A | PRO-SL-MF-160 | 100% | 2025-07-26 | 2025-07-31 |  |  | Pro Engineer [312.12 h] | PRO-SL-1DL-160 | PRC | 1DL | Each | 1DL | SL | PRO | PROC | MEP |  |
|  | 5 | **Termination and Testing Works** |  | 2026-09-03 | 2026-09-21 |  |  |  |  |  |  |  |  |  |  |  |  |  |  |  |  |  |
| PRO-SL-1DL-130 |  | 1ST Material Delivery for Fuse Boxes of Street Lighting Network | 15d | 2026-09-03 A | 2026-09-21 A | PRO-SL-MF-130 | 100% | 2025-07-26 | 2025-08-11 |  |  | Pro Engineer [312.12 h] | PRO-SL-1DL-130 | PRC | 1DL | Each | 1DL | SL | PRO | PROC | MEP |  |
| PRO-SL-1DL-170 |  | 1ST Material Delivery for Cable Lugs of Street Lighting Network | 15d | 2026-09-03 A | 2026-09-21 A | PRO-SL-MF-170 | 100% | 2025-07-26 | 2025-08-11 |  |  | Pro Engineer [312.12 h] | PRO-SL-1DL-170 | PRC | 1DL | Each | 1DL | SL | PRO | PROC | MEP |  |
|  | 4 | **Earthing System Works** |  | 2026-11-17 | 2026-11-18 |  |  |  |  |  |  |  |  |  |  |  |  |  |  |  |  |  |
| PRO-SL-1DL-150 |  | 1ST Material Delivery for Lighting Earthing of Street Lighting Network | 6d | 2026-11-17 A | 2026-11-18 A | PRO-SL-MF-150 | 100% | 2026-11-17 | 2026-11-23 |  |  | Pro Engineer [44.04 h] | PRO-SL-1DL-150 | PRC | 1DL | Each | 1DL | SL | PRO | PROC | MEP |  |
|  | DL | **Material Delivery & Site Inspection** |  | 2025-06-11 | 2027-03-02 |  |  |  |  |  |  |  |  |  |  |  |  |  |  |  |  |  |
|  | 1 | **Road 18 Local 1 ( 479 LM )** |  | 2025-06-11 | 2026-12-29 |  |  |  |  |  |  |  |  |  |  |  |  |  |  |  |  |  |
|  | 1 | **Cabling Works** |  | 2025-06-11 | 2025-06-30 |  |  |  |  |  |  |  |  |  |  |  |  |  |  |  |  |  |
| PRO-R18-SL-DL-180 |  | Material Delivery & Site Inspection of Lighting Cables for Street Lighting Network | 26d | 2025-06-11 A | 2025-06-30 A | PRO-SL-1DL-100 | 100% | 2025-05-12 | 2025-06-15 |  |  | Pro Engineer [312.12 h]; Supply, installation , test and operation of cables, Copper, (4Cx25mmï¿½,Cu/XLPE/SWA/PVC +1x16mmï¿½ PVC/PVC) | PRO-R18-SL-DL-180 | PRC | DL | Each | DL | SL | PRO | PROC | MEP | R18 |
|  | 2 | **Lighting Poles Works** |  | 2025-07-01 | 2026-11-16 |  |  |  |  |  |  |  |  |  |  |  |  |  |  |  |  |  |
| PRO-R18-SL-DL-190 |  | Material Delivery & Site Inspection of Lighting Poles Foundations for Street Lighting Network | 26d | 2025-07-01 A | 2025-07-10 A | PRO-SL-1DL-110, PRO-R18-SL-DL-180 | 100% | 2025-06-16 | 2025-07-15 |  |  | Pro Engineer [312.12 h]; Reinforced concrete foundation, for 12m high lighting columns With Drawpits | PRO-R18-SL-DL-190 | PRC | DL | Each | DL | SL | PRO | PROC | MEP | R18 |
| PRO-R18-SL-DL-200 |  | Material Delivery & Site Inspection of Lighting Poles for Street Lighting Network | 26d | 2025-09-09 A | 2025-09-09 A | PRO-SL-1DL-120, PRO-R18-SL-DL-190 | 100% | 2025-07-16 | 2025-08-14 |  |  | Pro Engineer [312.12 h]; Lighting poles with one arm, including the power distribution box, screws, cables, 12 meters in height. | PRO-R18-SL-DL-200 | PRC | DL | Each | DL | SL | PRO | PROC | MEP | R18 |
| PRO-R18-SL-DL-220 |  | Material Delivery & Site Inspection of Lighting Fixtures for Street Lighting Network | 26d | 2026-11-11 A | 2026-11-16 A | PRO-SL-1DL-140, PRO-R18-SL-DL-200 SS+5d | 100% | 2026-11-24 | 2026-12-23 |  |  | Pro Engineer [44.04 h]; Street Lighting( LED) Luminaire,(Type C) complete with control gear and lamp, ?.17000 Lumen | PRO-R18-SL-DL-220 | PRC | DL | Each | DL | SL | PRO | PROC | MEP | R18 |
|  | 3 | **Distribution Panel Board** |  |  |  |  |  |  |  |  |  |  |  |  |  |  |  |  |  |  |  |  |
|  | 4 | **Termination and Testing Works** |  | 2026-11-24 | 2026-12-29 |  |  |  |  |  |  |  |  |  |  |  |  |  |  |  |  |  |
| PRO-R18-SL-DL-210 |  | Material Delivery & Site Inspection of Fuse Boxes for Street Lighting Network | 26d | 2026-11-24 | 2026-12-23 | PRO-SL-1DL-130, PRO-R18-SL-DL-220 SS+5d |  |  |  | -191d | 0d | Pro Engineer [44.04 h]; Road crossing ducts, 4 way (4 x 100mm PVC); Drawpit with medium duty steel cover, size 900x900x1200mm, Type 4 | PRO-R18-SL-DL-210 | PRC | DL | Each | DL | SL | PRO | PROC | MEP | R18 |
| PRO-R18-SL-DL-250 |  | Material Delivery & Site Inspection of Cable Lugs for Street Lighting Network | 26d | 2026-11-30 | 2026-12-29 | PRO-SL-1DL-170, PRO-R18-SL-DL-210 SS+5d |  |  |  | -172d | 0d | Pro Engineer [44.04 h] | PRO-R18-SL-DL-250 | PRC | DL | Each | DL | SL | PRO | PROC | MEP | R18 |

| ID | WBS | Activity | Duration | Start | Finish | Predecessors | Complete | Planned start | Planned finish | Total float | Free float | Resources | Activity ID N | 02- Network-WBS | 03- Activity | 04-UOM | 05-Discipline | 01- Network | 08 Stage | 09 Roads | Discipline | New Discipline |
| --- | --- | --- | --- | --- | --- | --- | --- | --- | --- | --- | --- | --- | --- | --- | --- | --- | --- | --- | --- | --- | --- | --- |
|  | 5 | **Earthing System Works** |  |  |  |  |  |  |  |  |  |  |  |  |  |  |  |  |  |  |  |  |
|  | 9 | **Road 17 Local 1 ( 500 LM )** |  | 2025-06-11 | 2027-01-04 |  |  |  |  |  |  |  |  |  |  |  |  |  |  |  |  |  |
|  | 1 | **Cabling Works** |  | 2025-06-11 | 2025-06-30 |  |  |  |  |  |  |  |  |  |  |  |  |  |  |  |  |  |
| PRO-R17-SL-DL-100 |  | Material Delivery & Site Inspection of Lighting Cables for Street Lighting Network | 26d | 2025-06-11 A | 2025-06-30 A | PRO-SL-1DL-100, PRO-R18-SL-DL-180 | 100% | 2025-06-16 | 2025-07-15 |  |  | Pro Engineer [312.12 h]; Supply, installation , test and operation of cables, Copper, (4Cx25mmï¿½,Cu/XLPE/SWA/PVC +1x16mmï¿½ PVC/PVC) | PRO-R17-SL-DL-100 | PRC | DL | Each | DL | SL | PRO | R17 | PROC | MEP |
|  | 2 | **Lighting Poles Works** |  | 2025-07-11 | 2026-11-16 |  |  |  |  |  |  |  |  |  |  |  |  |  |  |  |  |  |
| PRO-R17-SL-DL-110 |  | Material Delivery & Site Inspection of Lighting Poles Foundations for Street Lighting Network | 26d | 2025-07-11 A | 2025-07-20 A | PRO-SL-1DL-110, PRO-R18-SL-DL-190 | 100% | 2025-07-16 | 2025-08-14 |  |  | Pro Engineer [312.12 h]; Reinforced concrete foundation, for 12m high lighting columns With Drawpits | PRO-R17-SL-DL-110 | PRC | DL | Each | DL | SL | PRO | R17 | PROC | MEP |
| PRO-R17-SL-DL-120 |  | Material Delivery & Site Inspection of Lighting Poles for Street Lighting Network | 26d | 2025-09-10 A | 2025-09-10 A | PRO-SL-1DL-120, PRO-R18-SL-DL-200 | 100% | 2025-08-16 | 2025-09-14 |  |  | Pro Engineer [312.12 h]; Lighting poles with one arm, including the power distribution box, screws, cables, 12 meters in height. | PRO-R17-SL-DL-120 | PRC | DL | Each | DL | SL | PRO | R17 | PROC | MEP |
| PRO-R17-SL-DL-140 |  | Material Delivery & Site Inspection of Lighting Fixtures for Street Lighting Network | 26d | 2026-11-11 A | 2026-11-16 A | PRO-SL-1DL-140, PRO-R18-SL-DL-220 SS+5d | 100% | 2026-11-30 | 2026-12-29 |  |  | Pro Engineer [44.04 h]; Street Lighting( LED) Luminaire,(Type C) complete with control gear and lamp, ?.17000 Lumen | PRO-R17-SL-DL-140 | PRC | DL | Each | DL | SL | PRO | R17 | PROC | MEP |
|  | 3 | **Distribution Panel Board** |  |  |  |  |  |  |  |  |  |  |  |  |  |  |  |  |  |  |  |  |
|  | 4 | **Termination and Testing Works** |  | 2026-11-30 | 2027-01-04 |  |  |  |  |  |  |  |  |  |  |  |  |  |  |  |  |  |
| PRO-R17-SL-DL-130 |  | Material Delivery & Site Inspection of Fuse Boxes for Street Lighting Network | 26d | 2026-11-30 | 2026-12-29 | PRO-SL-1DL-130, PRO-R18-SL-DL-210 SS+5d |  |  |  | -191d | 0d | Pro Engineer [44.04 h]; Road crossing ducts, 4 way (4 x 100mm PVC); Drawpit with medium duty steel cover, size 900x900x1200mm, Type 4 | PRO-R17-SL-DL-130 | PRC | DL | Each | DL | SL | PRO | R17 | PROC | MEP |
| PRO-R17-SL-DL-170 |  | Material Delivery & Site Inspection of Cable Lugs for Street Lighting Network | 26d | 2026-12-06 | 2027-01-04 | PRO-SL-1DL-170, PRO-R18-SL-DL-250 SS+5d |  |  |  | -172d | 0d | Pro Engineer [44.04 h] | PRO-R17-SL-DL-170 | PRC | DL | Each | DL | SL | PRO | R17 | PROC | MEP |
|  | 5 | **Earthing System Works** |  |  |  |  |  |  |  |  |  |  |  |  |  |  |  |  |  |  |  |  |
|  | 8 | **Road 16 Local 1 ( 527 LM )** |  | 2025-06-11 | 2027-01-10 |  |  |  |  |  |  |  |  |  |  |  |  |  |  |  |  |  |
|  | 1 | **Cabling Works** |  | 2025-06-11 | 2025-06-30 |  |  |  |  |  |  |  |  |  |  |  |  |  |  |  |  |  |
| PRO-R16-SL-DL-100 |  | Material Delivery & Site Inspection of Lighting Cables for Street Lighting Network | 26d | 2025-06-11 A | 2025-06-30 A | PRO-SL-1DL-100, PRO-R17-SL-DL-100 | 100% | 2025-07-16 | 2025-08-14 |  |  | Pro Engineer [312.12 h]; Supply, installation , test and operation of cables, Copper, (4Cx25mmï¿½,Cu/XLPE/SWA/PVC +1x16mmï¿½ PVC/PVC) | PRO-R16-SL-DL-100 | PRC | DL | Each | DL | SL | PRO | R16 | PROC | MEP |
|  | 2 | **Lighting Poles Works** |  | 2025-09-01 | 2026-11-16 |  |  |  |  |  |  |  |  |  |  |  |  |  |  |  |  |  |
| PRO-R16-SL-DL-110 |  | Material Delivery & Site Inspection of Lighting Poles Foundations for Street Lighting Network | 26d | 2025-09-01 A | 2025-09-02 A | PRO-SL-1DL-110, PRO-R17-SL-DL-110 | 100% | 2025-08-16 | 2025-09-14 |  |  | Pro Engineer [312.12 h]; Reinforced concrete foundation, for 12m high lighting columns With Drawpits | PRO-R16-SL-DL-110 | PRC | DL | Each | DL | SL | PRO | R16 | PROC | MEP |
| PRO-R16-SL-DL-120 |  | Material Delivery & Site Inspection of Lighting Poles for Street Lighting Network | 26d | 2025-09-11 A | 2025-09-11 A | PRO-SL-1DL-120, PRO-R17-SL-DL-120 | 100% | 2025-09-15 | 2025-10-15 |  |  | Pro Engineer [312.12 h]; Lighting poles with one arm, including the power distribution box, screws, cables, 12 meters in height. | PRO-R16-SL-DL-120 | PRC | DL | Each | DL | SL | PRO | R16 | PROC | MEP |
| PRO-R16-SL-DL-140 |  | Material Delivery & Site Inspection of Lighting Fixtures for Street Lighting Network | 26d | 2026-11-11 A | 2026-11-16 A | PRO-SL-1DL-140, PRO-R17-SL-DL-140 SS+5d | 100% | 2026-12-06 | 2027-01-04 |  |  | Pro Engineer [44.04 h]; Street Lighting( LED) Luminaire,(Type C) complete with control gear and lamp, ?.17000 Lumen | PRO-R16-SL-DL-140 | PRC | DL | Each | DL | SL | PRO | R16 | PROC | MEP |
|  | 3 | **Distribution Panel Board** |  |  |  |  |  |  |  |  |  |  |  |  |  |  |  |  |  |  |  |  |
|  | 4 | **Termination and Testing Works** |  | 2026-12-06 | 2027-01-10 |  |  |  |  |  |  |  |  |  |  |  |  |  |  |  |  |  |
| PRO-R16-SL-DL-130 |  | Material Delivery & Site Inspection of Fuse Boxes for Street Lighting Network | 26d | 2026-12-06 | 2027-01-04 | PRO-SL-1DL-130, PRO-R17-SL-DL-130 SS+5d |  |  |  | -191d | 0d | Pro Engineer [44.04 h]; Road crossing ducts, 4 way (4 x 100mm PVC); Drawpit with medium duty steel cover, size 900x900x1200mm, Type 4 | PRO-R16-SL-DL-130 | PRC | DL | Each | DL | SL | PRO | R16 | PROC | MEP |
| PRO-R16-SL-DL-170 |  | Material Delivery & Site Inspection of Cable Lugs for Street Lighting Network | 26d | 2026-12-12 | 2027-01-10 | PRO-SL-1DL-170, PRO-R17-SL-DL-170 SS+5d |  |  |  | -172d | 0d | Pro Engineer [44.04 h] | PRO-R16-SL-DL-170 | PRC | DL | Each | DL | SL | PRO | R16 | PROC | MEP |

| ID | WBS | Activity | Duration | Start | Finish | Predecessors | Complete | Remaining | Planned start | Planned finish | Total float | Free float | Resources | Activity ID N | 02- Network-WBS | 03- Activity | 04-UOM | 05-Discipline | 01- Network | 08 Stage | 09 Roads | Discipline | New Discipline |
| --- | --- | --- | --- | --- | --- | --- | --- | --- | --- | --- | --- | --- | --- | --- | --- | --- | --- | --- | --- | --- | --- | --- | --- |
|  | 5 | **Earthing System Works** |  |  |  |  |  |  |  |  |  |  |  |  |  |  |  |  |  |  |  |  |  |
|  | 7 | **Road 15 Local 1 ( 556 LM )** |  | 2025-06-11 | 2027-01-16 |  |  |  |  |  |  |  |  |  |  |  |  |  |  |  |  |  |  |
|  | 1 | **Cabling Works** |  | 2025-06-11 | 2025-06-30 |  |  |  |  |  |  |  |  |  |  |  |  |  |  |  |  |  |  |
| PRO-R15-SL-DL-100 |  | Material Delivery & Site Inspection of Lighting Cables for Street Lighting Network | 26d | 2025-06-11 A | 2025-06-30 A | PRO-SL-1DL-100, PRO-R16-SL-DL-100 | 100% |  | 2025-08-16 | 2025-09-14 |  |  | Pro Engineer [312.12 h]; Supply, installation , test and operation of cables, Copper, (4Cx25mmï¿½,Cu/XLPE/SWA/PVC +1x16mmï¿½ PVC/PVC) | PRO-R15-SL-DL-100 | PRC | DL | Each | DL | SL | PRO | R15 | PROC | MEP |
|  | 2 | **Lighting Poles Works** |  | 2025-07-28 | 2026-11-16 |  |  |  |  |  |  |  |  |  |  |  |  |  |  |  |  |  |  |
| PRO-R15-SL-DL-110 |  | Material Delivery & Site Inspection of Lighting Poles Foundations for Street Lighting Network | 26d | 2025-07-28 A | 2025-08-03 A | PRO-SL-1DL-110, PRO-R16-SL-DL-110 | 100% |  | 2025-09-15 | 2025-10-15 |  |  | Pro Engineer [312.12 h]; Reinforced concrete foundation, for 12m high lighting columns With Drawpits | PRO-R15-SL-DL-110 | PRC | DL | Each | DL | SL | PRO | R15 | PROC | MEP |
| PRO-R15-SL-DL-120 |  | Material Delivery & Site Inspection of Lighting Poles for Street Lighting Network | 26d | 2025-09-13 A | 2025-09-13 A | PRO-SL-1DL-120, PRO-R16-SL-DL-120 | 100% |  | 2025-10-16 | 2025-11-15 |  |  | Pro Engineer [312.12 h]; Lighting poles with one arm, including the power distribution box, screws, cables, 12 meters in height. | PRO-R15-SL-DL-120 | PRC | DL | Each | DL | SL | PRO | R15 | PROC | MEP |
| PRO-R15-SL-DL-140 |  | Material Delivery & Site Inspection of Lighting Fixtures for Street Lighting Network | 26d | 2026-11-11 A | 2026-11-16 A | PRO-SL-1DL-140, PRO-R16-SL-DL-140 SS+5d, PRO-R16-SL-DL-140 FF | 100% |  | 2026-12-12 | 2027-01-10 |  |  | Pro Engineer [44.04 h]; Street Lighting( LED) Luminaire,(Type C) complete with control gear and lamp, ?.17000 Lumen | PRO-R15-SL-DL-140 | PRC | DL | Each | DL | SL | PRO | R15 | PROC | MEP |
|  | 3 | **Distribution Panel Board** |  |  |  |  |  |  |  |  |  |  |  |  |  |  |  |  |  |  |  |  |  |
|  | 4 | **Termination and Testing Works** |  | 2026-12-12 | 2027-01-16 |  |  |  |  |  |  |  |  |  |  |  |  |  |  |  |  |  |  |
| PRO-R15-SL-DL-130 |  | Material Delivery & Site Inspection of Fuse Boxes for Street Lighting Network | 26d | 2026-12-12 | 2027-01-10 | PRO-SL-1DL-130, PRO-R16-SL-DL-130 SS+5d |  |  |  |  | -191d | 0d | Pro Engineer [44.04 h]; Road crossing ducts, 4 way (4 x 100mm PVC); Drawpit with medium duty steel cover, size 900x900x1200mm, Type 4 | PRO-R15-SL-DL-130 | PRC | DL | Each | DL | SL | PRO | R15 | PROC | MEP |
| PRO-R15-SL-DL-170 |  | Material Delivery & Site Inspection of Cable Lugs for Street Lighting Network | 26d | 2026-12-17 | 2027-01-16 | PRO-SL-1DL-170, PRO-R16-SL-DL-170 SS+5d |  |  |  |  | -172d | 0d | Pro Engineer [44.04 h] | PRO-R15-SL-DL-170 | PRC | DL | Each | DL | SL | PRO | R15 | PROC | MEP |
|  | 5 | **Earthing System Works** |  |  |  |  |  |  |  |  |  |  |  |  |  |  |  |  |  |  |  |  |  |
|  | 4 | **Road 10 Local 2 ( 2352 LM )** |  | 2025-06-15 | 2027-01-21 |  |  |  |  |  |  |  |  |  |  |  |  |  |  |  |  |  |  |
|  | 1 | **Cabling Works** |  | 2025-06-15 | 2025-06-30 |  |  |  |  |  |  |  |  |  |  |  |  |  |  |  |  |  |  |
| PRO-R10-SL-DL-100 |  | Material Delivery & Site Inspection of Lighting Cables for Street Lighting Network | 26d | 2025-06-15 A | 2025-06-30 A | PRO-SL-1DL-100, PRO-R15-SL-DL-100 | 100% |  | 2025-09-15 | 2025-10-15 |  |  | Pro Engineer [312.12 h]; Supply, installation , test and operation of cables, Copper, (4Cx25mmï¿½,Cu/XLPE/SWA/PVC +1x16mmï¿½ PVC/PVC) | PRO-R10-SL-DL-100 | PRC | DL | Each | DL | SL | PRO | R10 | PROC | MEP |
|  | 2 | **Lighting Poles Works** |  | 2026-08-27 | 2026-11-16 |  |  |  |  |  |  |  |  |  |  |  |  |  |  |  |  |  |  |
| PRO-R10-SL-DL-110 |  | Material Delivery & Site Inspection of Lighting Poles Foundations for Street Lighting Network | 26d | 2026-08-27 A | 2026-08-29 A | PRO-SL-1DL-110, PRO-R15-SL-DL-110 | 100% |  | 2025-10-16 | 2025-11-15 |  |  | Pro Engineer [312.12 h]; Reinforced concrete foundation, for 12m high lighting columns With Drawpits; Reinforced concrete base With fence for Distribution substation in accordance with SEC Specifications | PRO-R10-SL-DL-110 | PRC | DL | Each | DL | SL | PRO | R10 | PROC | MEP |
| PRO-R10-SL-DL-120 |  | Material Delivery & Site Inspection of Lighting Poles for Street Lighting Network | 26d | 2026-08-27 A | 2026-08-29 A | PRO-SL-1DL-120, PRO-R15-SL-DL-120 | 100% |  | 2025-11-16 | 2025-12-15 |  |  | Pro Engineer [312.12 h]; Lighting poles with one arm, including the power distribution box, screws, cables, 12 meters in height. | PRO-R10-SL-DL-120 | PRC | DL | Each | DL | SL | PRO | R10 | PROC | MEP |
| PRO-R10-SL-DL-140 |  | Material Delivery & Site Inspection of Lighting Fixtures for Street Lighting Network | 26d | 2026-11-11 A | 2026-11-16 A | PRO-SL-1DL-140, PRO-R15-SL-DL-140 SS+5d | 100% |  | 2026-12-17 | 2027-01-16 |  |  | Pro Engineer [44.04 h]; Street Lighting( LED) Luminaire,(Type C) complete with control gear and lamp, ?.17000 Lumen | PRO-R10-SL-DL-140 | PRC | DL | Each | DL | SL | PRO | R10 | PROC | MEP |
|  | 3 | **Distribution Panel Board** |  | 2026-09-21 | 2026-11-26 |  |  |  |  |  |  |  |  |  |  |  |  |  |  |  |  |  |  |
| PRO-R10-SL-DL-160 |  | Material Delivery & Site Inspection of Distrubution Panel Boards for Street Lighting Network | 26d | 2026-09-21 A | 2026-11-26 | PRO-SL-1DL-160 | 80% | 3d | 2025-08-02 | 2025-08-31 | -121d | 44d | Pro Engineer [208.18 h]; Package Substation 33000/400V, 500kVA with RMU; Street Lighting Feeder pillars , Includes foundation and draw pits | PRO-R10-SL-DL-160 | PRC | DL | Each | DL | SL | PRO | R10 | PROC | MEP |
|  | 4 | **Termination and Testing Works** |  | 2026-09-21 | 2027-01-21 |  |  |  |  |  |  |  |  |  |  |  |  |  |  |  |  |  |  |
| PRO-R10-SL-DL-130 |  | Material Delivery & Site Inspection of Fuse Boxes for Street Lighting Network | 26d | 2026-09-21 A | 2027-01-16 | PRO-SL-1DL-130, PRO-R15-SL-DL-130 FF+5d | 80% | 3d | 2026-01-15 | 2026-02-14 | -191d | 0d | Pro Engineer [208.18 h]; Road crossing ducts, 4 way (4 x 100mm PVC); Drawpit with medium duty steel cover, size 600x600x1000mm, Type 18; Drawpit with medium duty steel cover, size 900x900x1200mm, Type 4 | PRO-R10-SL-DL-130 | PRC | DL | Each | DL | SL | PRO | R10 | PROC | MEP |
| PRO-R10-SL-DL-170 |  | Material Delivery & Site Inspection of Cable Lugs for Street Lighting Network | 26d | 2026-09-21 A | 2027-01-21 | PRO-SL-1DL-170, PRO-R15-SL-DL-170 FF+5d | 80% | 3d | 2026-02-15 | 2026-03-16 | -172d | 0d | Pro Engineer [208.18 h] | PRO-R10-SL-DL-170 | PRC | DL | Each | DL | SL | PRO | R10 | PROC | MEP |

| ID | WBS | Activity | Duration | Start | Finish | Predecessors | Complete | Planned start | Planned finish | Total float | Free float | Resources | Activity ID N | 02- Network-WBS | 03- Activity | 04-UOM | 05-Discipline | 01- Network | 08 Stage | 09 Roads | Discipline | New Discipline |
| --- | --- | --- | --- | --- | --- | --- | --- | --- | --- | --- | --- | --- | --- | --- | --- | --- | --- | --- | --- | --- | --- | --- |
|  | 5 | **Earthing System Works** |  | 2026-11-17 | 2026-11-18 |  |  |  |  |  |  |  |  |  |  |  |  |  |  |  |  |  |
| PRO-R10-SL-DL-150 |  | Material Delivery & Site Inspection of Lighting Earthing for Street Lighting Network | 26d | 2026-11-17 A | 2026-11-18 A | PRO-SL-1DL-150 | 100% | 2026-11-24 | 2026-12-23 |  |  | Pro Engineer [44.04 h]; Earthing installation, lighting plants.; Earthing installation, for Street lighting circuits, including earth rod in plastic chamber; Earthing installation Lighting Panales | PRO-R10-SL-DL-150 | PRC | DL | Each | DL | SL | PRO | R10 | PROC | MEP |
|  | 6 | **Road 14 Local 1 ( 584 LM )** |  | 2025-11-01 | 2027-02-17 |  |  |  |  |  |  |  |  |  |  |  |  |  |  |  |  |  |
|  | 1 | **Cabling Works** |  | 2025-11-01 | 2025-11-04 |  |  |  |  |  |  |  |  |  |  |  |  |  |  |  |  |  |
| PRO-R14-SL-DL-100 |  | Material Delivery & Site Inspection of Lighting Cables for Street Lighting Network | 26d | 2025-11-01 A | 2025-11-04 A | PRO-SL-1DL-100, PRO-R10-SL-DL-100 | 100% | 2025-10-16 | 2025-11-15 |  |  | Pro Engineer [312.12 h]; Supply, installation , test and operation of cables, Copper, (4Cx25mmï¿½,Cu/XLPE/SWA/PVC +1x16mmï¿½ PVC/PVC) | PRO-R14-SL-DL-100 | PRC | DL | Each | DL | SL | PRO | R14 | PROC | MEP |
|  | 2 | **Lighting Poles Works** |  | 2026-08-26 | 2026-12-23 |  |  |  |  |  |  |  |  |  |  |  |  |  |  |  |  |  |
| PRO-R14-SL-DL-110 |  | Material Delivery & Site Inspection of Lighting Poles Foundations for Street Lighting Network | 26d | 2026-08-26 A | 2026-08-31 A | PRO-SL-1DL-110, PRO-R10-SL-DL-110 | 100% | 2025-11-16 | 2025-12-15 |  |  | Pro Engineer [312.12 h]; Reinforced concrete foundation, for 12m high lighting columns With Drawpits | PRO-R14-SL-DL-110 | PRC | DL | Each | DL | SL | PRO | R14 | PROC | MEP |
| PRO-R14-SL-DL-120 |  | Material Delivery & Site Inspection of Lighting Poles for Street Lighting Network | 26d | 2026-08-26 A | 2026-08-31 A | PRO-SL-1DL-120, PRO-R10-SL-DL-120 | 100% | 2025-12-16 | 2026-01-14 |  |  | Pro Engineer [312.12 h]; Lighting poles with one arm, including the power distribution box, screws, cables, 12 meters in height.; Lighting poles complete with two arms, including the power distribution box, screws, cables, 12 meters in height. | PRO-R14-SL-DL-120 | PRC | DL | Each | DL | SL | PRO | R14 | PROC | MEP |
| PRO-R14-SL-DL-140 |  | Material Delivery & Site Inspection of Lighting Fixtures for Street Lighting Network | 26d | 2026-11-24 | 2026-12-23 | PRO-SL-1DL-140, PRO-R10-SL-DL-140 SS+5d |  |  |  | -158.5d | 0d | Pro Engineer [44.04 h]; Street Lighting( LED) Luminaire,(Type C) complete with control gear and lamp, ?.17000 Lumen; Street Lighting( LED) Luminaire,(Type B) complete with control gear and lamp, ?.40600 Lumen | PRO-R14-SL-DL-140 | PRC | DL | Each | DL | SL | PRO | R14 | PROC | MEP |
|  | 3 | **Distribution Panel Board** |  |  |  |  |  |  |  |  |  |  |  |  |  |  |  |  |  |  |  |  |
|  | 4 | **Termination and Testing Works** |  | 2027-01-13 | 2027-02-17 |  |  |  |  |  |  |  |  |  |  |  |  |  |  |  |  |  |
| PRO-R14-SL-DL-130 |  | Material Delivery & Site Inspection of Fuse Boxes for Street Lighting Network | 26d | 2027-01-13 | 2027-02-11 | PRO-SL-1DL-130, PRO-R10-SL-DL-130 SS+5d |  |  |  | -189.5d | 0d | Pro Engineer [44.04 h]; Road crossing ducts, 4 way (4 x 100mm PVC); Drawpit with medium duty steel cover, size 900x900x1200mm, Type 4 | PRO-R14-SL-DL-130 | PRC | DL | Each | DL | SL | PRO | R14 | PROC | MEP |
| PRO-R14-SL-DL-170 |  | Material Delivery & Site Inspection of Cable Lugs for Street Lighting Network | 26d | 2027-01-19 | 2027-02-17 | PRO-SL-1DL-170, PRO-R10-SL-DL-170 SS+5d |  |  |  | -172d | 0d | Pro Engineer [44.04 h] | PRO-R14-SL-DL-170 | PRC | DL | Each | DL | SL | PRO | R14 | PROC | MEP |
|  | 5 | **Earthing System Works** |  |  |  |  |  |  |  |  |  |  |  |  |  |  |  |  |  |  |  |  |
|  | 2 | **Road 09 Local 2 ( 2278 LM )** |  | 2025-10-31 | 2027-02-24 |  |  |  |  |  |  |  |  |  |  |  |  |  |  |  |  |  |
|  | 1 | **Cabling Works** |  | 2026-02-17 | 2026-02-22 |  |  |  |  |  |  |  |  |  |  |  |  |  |  |  |  |  |
| PRO-R09-SL-DL-100 |  | Material Delivery & Site Inspection of Lighting Cables for Street Lighting Network | 26d | 2026-02-17 A | 2026-02-22 A | PRO-SL-1DL-100, PRO-R14-SL-DL-100 | 100% | 2025-11-16 | 2025-12-15 |  |  | Pro Engineer [312.12 h]; Supply, installation , test and operation of cables, Copper, (4Cx25mmï¿½,Cu/XLPE/SWA/PVC +1x16mmï¿½ PVC/PVC) | PRO-R09-SL-DL-100 | PRC | DL | Each | DL | SL | PRO | R09 | PROC | MEP |
|  | 2 | **Lighting Poles Works** |  | 2026-02-17 | 2026-12-29 |  |  |  |  |  |  |  |  |  |  |  |  |  |  |  |  |  |
| PRO-R09-SL-DL-110 |  | Material Delivery & Site Inspection of Lighting Poles Foundations for Street Lighting Network | 26d | 2026-02-17 A | 2026-02-22 A | PRO-SL-1DL-110, PRO-R14-SL-DL-110 | 100% | 2025-12-16 | 2026-01-14 |  |  | Pro Engineer [312.12 h]; Reinforced concrete foundation, for 12m high lighting columns With Drawpits; Reinforced concrete base With fence for Distribution substation in accordance with SEC Specifications | PRO-R09-SL-DL-110 | PRC | DL | Each | DL | SL | PRO | R09 | PROC | MEP |
| PRO-R09-SL-DL-120 |  | Material Delivery & Site Inspection of Lighting Poles for Street Lighting Network | 26d | 2026-02-17 A | 2026-02-22 A | PRO-SL-1DL-120, PRO-R14-SL-DL-120 | 100% | 2026-01-15 | 2026-02-14 |  |  | Pro Engineer [312.12 h]; Lighting poles with one arm, including the power distribution box, screws, cables, 12 meters in height. | PRO-R09-SL-DL-120 | PRC | DL | Each | DL | SL | PRO | R09 | PROC | MEP |
| PRO-R09-SL-DL-140 |  | Material Delivery & Site Inspection of Lighting Fixtures for Street Lighting Network | 26d | 2026-11-30 | 2026-12-29 | PRO-SL-1DL-140, PRO-R14-SL-DL-140 SS+5d |  |  |  | -158.5d | 0d | Pro Engineer [44.04 h]; Street Lighting( LED) Luminaire,(Type C) complete with control gear and lamp, ?.17000 Lumen | PRO-R09-SL-DL-140 | PRC | DL | Each | DL | SL | PRO | R09 | PROC | MEP |
|  | 3 | **Distribution Panel Board** |  | 2025-10-31 | 2026-02-20 |  |  |  |  |  |  |  |  |  |  |  |  |  |  |  |  |  |
| PRO-R09-SL-DL-160 |  | Material Delivery & Site Inspection of Distrubution Panel Boards for Street Lighting Network | 26d | 2025-10-31 A | 2026-02-20 A | PRO-SL-1DL-160 | 100% | 2025-08-02 | 2025-08-31 |  |  | Pro Engineer [312.12 h]; Package Substation 33000/400V, 500kVA with RMU; Street Lighting Feeder pillars , Includes foundation and draw pits | PRO-R09-SL-DL-160 | PRC | DL | Each | DL | SL | PRO | R09 | PROC | MEP |
|  | 4 | **Termination and Testing Works** |  | 2027-01-19 | 2027-02-24 |  |  |  |  |  |  |  |  |  |  |  |  |  |  |  |  |  |
| PRO-R09-SL-DL-130 |  | Material Delivery & Site Inspection of Fuse Boxes for Street Lighting Network | 26d | 2027-01-19 | 2027-02-17 | PRO-SL-1DL-130, PRO-R14-SL-DL-130 SS+5d |  |  |  | -189.5d | 0d | Pro Engineer [44.04 h]; Road crossing ducts, 4 way (4 x 100mm PVC); Drawpit with medium duty steel cover, size 600x600x1000mm, Type 18; Drawpit with medium duty steel cover, size 900x900x1200mm, Type 4 | PRO-R09-SL-DL-130 | PRC | DL | Each | DL | SL | PRO | R09 | PROC | MEP |
| PRO-R09-SL-DL-170 |  | Material Delivery & Site Inspection of Cable Lugs for Street Lighting Network | 26d | 2027-01-25 | 2027-02-24 | PRO-SL-1DL-170, PRO-R14-SL-DL-170 SS+5d |  |  |  | -172d | 0d | Pro Engineer [44.04 h] | PRO-R09-SL-DL-170 | PRC | DL | Each | DL | SL | PRO | R09 | PROC | MEP |

| ID | WBS | Activity | Duration | Start | Finish | Predecessors | Complete | Planned start | Planned finish | Total float | Free float | Resources | Activity ID N | 02- Network-WBS | 03- Activity | 04-UOM | 05-Discipline | 01- Network | 08 Stage | 09 Roads | Discipline | New Discipline |
| --- | --- | --- | --- | --- | --- | --- | --- | --- | --- | --- | --- | --- | --- | --- | --- | --- | --- | --- | --- | --- | --- | --- |
|  | 5 | **Earthing System Works** |  | 2026-11-17 | 2026-11-18 |  |  |  |  |  |  |  |  |  |  |  |  |  |  |  |  |  |
| PRO-R09-SL-DL-150 |  | Material Delivery & Site Inspection of Lighting Earthing for Street Lighting Network | 26d | 2026-11-17 A | 2026-11-18 A | PRO-SL-1DL-150 | 100% | 2026-11-24 | 2026-12-23 |  |  | Pro Engineer [44.04 h]; Earthing installation, lighting plants.; Earthing installation, for Street lighting circuits, including earth rod in plastic chamber; Earthing installation Lighting Panales | PRO-R09-SL-DL-150 | PRC | DL | Each | DL | SL | PRO | R09 | PROC | MEP |
|  | 5 | **Road 11 Local 1 ( 670 LM )** |  | 2026-07-07 | 2027-03-02 |  |  |  |  |  |  |  |  |  |  |  |  |  |  |  |  |  |
|  | 1 | **Cabling Works** |  | 2026-07-09 | 2026-07-25 |  |  |  |  |  |  |  |  |  |  |  |  |  |  |  |  |  |
| PRO-R11-SL-DL-100 |  | Material Delivery & Site Inspection of Lighting Cables for Street Lighting Network | 26d | 2026-07-09 A | 2026-07-25 A | PRO-SL-1DL-100, PRO-R09-SL-DL-100 | 100% | 2025-12-16 | 2026-01-14 |  |  | Pro Engineer [312.12 h]; Supply, installation , test and operation of cables, Copper, (4Cx25mmï¿½,Cu/XLPE/SWA/PVC +1x16mmï¿½ PVC/PVC) | PRO-R11-SL-DL-100 | PRC | DL | Each | DL | SL | PRO | R11 | PROC | MEP |
|  | 2 | **Lighting Poles Works** |  | 2026-07-07 | 2027-01-04 |  |  |  |  |  |  |  |  |  |  |  |  |  |  |  |  |  |
| PRO-R11-SL-DL-110 |  | Material Delivery & Site Inspection of Lighting Poles Foundations for Street Lighting Network | 26d | 2026-07-07 A | 2026-08-22 A | PRO-SL-1DL-110, PRO-R09-SL-DL-110 | 100% | 2026-01-15 | 2026-02-14 |  |  | Pro Engineer [312.12 h]; Reinforced concrete foundation, for 12m high lighting columns With Drawpits | PRO-R11-SL-DL-110 | PRC | DL | Each | DL | SL | PRO | R11 | PROC | MEP |
| PRO-R11-SL-DL-120 |  | Material Delivery & Site Inspection of Lighting Poles for Street Lighting Network | 26d | 2026-07-07 A | 2026-08-22 A | PRO-SL-1DL-120, PRO-R09-SL-DL-120 | 100% | 2026-02-15 | 2026-03-16 |  |  | Pro Engineer [312.12 h]; Lighting poles with one arm, including the power distribution box, screws, cables, 12 meters in height. | PRO-R11-SL-DL-120 | PRC | DL | Each | DL | SL | PRO | R11 | PROC | MEP |
| PRO-R11-SL-DL-140 |  | Material Delivery & Site Inspection of Lighting Fixtures for Street Lighting Network | 26d | 2026-12-06 | 2027-01-04 | PRO-SL-1DL-140, PRO-R09-SL-DL-140 SS+5d |  |  |  | -89.5d | 12d | Pro Engineer [44.04 h]; Street Lighting( LED) Luminaire,(Type C) complete with control gear and lamp, ?.17000 Lumen | PRO-R11-SL-DL-140 | PRC | DL | Each | DL | SL | PRO | R11 | PROC | MEP |
|  | 3 | **Distribution Panel Board** |  |  |  |  |  |  |  |  |  |  |  |  |  |  |  |  |  |  |  |  |
|  | 4 | **Termination and Testing Works** |  | 2027-01-25 | 2027-03-02 |  |  |  |  |  |  |  |  |  |  |  |  |  |  |  |  |  |
| PRO-R11-SL-DL-130 |  | Material Delivery & Site Inspection of Fuse Boxes for Street Lighting Network | 26d | 2027-01-25 | 2027-02-24 | PRO-SL-1DL-130, PRO-R09-SL-DL-130 SS+5d |  |  |  | -163d | 0d | Pro Engineer [44.04 h]; Road crossing ducts, 4 way (4 x 100mm PVC); Drawpit with medium duty steel cover, size 900x900x1200mm, Type 4 | PRO-R11-SL-DL-130 | PRC | DL | Each | DL | SL | PRO | R11 | PROC | MEP |
| PRO-R11-SL-DL-170 |  | Material Delivery & Site Inspection of Cable Lugs for Street Lighting Network | 26d | 2027-01-31 | 2027-03-02 | PRO-SL-1DL-170, PRO-R09-SL-DL-170 SS+5d |  |  |  | -172d | 19d | Pro Engineer [44.04 h] | PRO-R11-SL-DL-170 | PRC | DL | Each | DL | SL | PRO | R11 | PROC | MEP |
|  | 5 | **Earthing System Works** |  |  |  |  |  |  |  |  |  |  |  |  |  |  |  |  |  |  |  |  |
|  | TE | **Telecom Network** |  | 2025-02-11 | 2026-08-16 |  |  |  |  |  |  |  |  |  |  |  |  |  |  |  |  |  |
|  | PO | **Issuance of Purchase Orders** |  | 2025-02-11 | 2025-02-17 |  |  |  |  |  |  |  |  |  |  |  |  |  |  |  |  |  |
|  | 1 | **Ducts Works** |  | 2025-02-11 | 2025-02-17 |  |  |  |  |  |  |  |  |  |  |  |  |  |  |  |  |  |
| PRO-TE-PO-100 |  | Issuance of Purchase Order for Ducts forTelecom Network | 6d | 2025-02-11 A | 2025-02-17 A | ENG-MT-TE-A-100 | 100% |  |  |  |  | Pro Engineer [312.12 h] | PRO-TE-PO-100 | PRC | PO | Each | PO | TE | PRO |  | PROC | MEP |
|  | 3 | **Manholes Works** |  | 2025-02-11 | 2025-02-17 |  |  |  |  |  |  |  |  |  |  |  |  |  |  |  |  |  |
| PRO-TE-PO-110 |  | Issuance of Purchase Order for Manholes forTelecom Network | 6d | 2025-02-11 A | 2025-02-17 A | ENG-MT-TE-A-110 | 100% |  |  |  |  | Pro Engineer [312.12 h] | PRO-TE-PO-110 | PRC | PO | Each | PO | TE | PRO |  | PROC | MEP |
|  | MF | **Manufacturing of Material** |  | 2025-02-18 | 2025-05-21 |  |  |  |  |  |  |  |  |  |  |  |  |  |  |  |  |  |
|  | 1 | **Ducts Works** |  | 2025-02-18 | 2025-05-21 |  |  |  |  |  |  |  |  |  |  |  |  |  |  |  |  |  |
| PRO-TE-MF-100 |  | Manufacturing of Ducts for Telecom Network | 60d | 2025-02-18 A | 2025-05-21 A | PRO-TE-PO-100 | 100% | 2025-02-18 | 2025-05-04 |  |  | Pro Engineer [312.12 h] | PRO-TE-MF-100 | PRC | MF | Each | MF | TE | PRO |  | PROC | MEP |
|  | 3 | **Manholes Works** |  | 2025-02-18 | 2025-05-20 |  |  |  |  |  |  |  |  |  |  |  |  |  |  |  |  |  |
| PRO-TE-MF-110 |  | Manufacturing of Manholes for Telecom Network | 60d | 2025-02-18 A | 2025-05-20 A | PRO-TE-PO-110 | 100% | 2025-02-18 | 2025-05-04 |  |  | Pro Engineer [312.12 h] | PRO-TE-MF-110 | PRC | MF | Each | MF | TE | PRO |  | PROC | MEP |

| ID | WBS | Activity | Duration | Start | Finish | Predecessors | Complete | Planned start | Planned finish | Resources | Activity ID N | 02- Network-WBS | 03- Activity | 04-UOM | 05-Discipline | 01- Network | 08 Stage | Discipline | New Discipline | 09 Roads |
| --- | --- | --- | --- | --- | --- | --- | --- | --- | --- | --- | --- | --- | --- | --- | --- | --- | --- | --- | --- | --- |
|  | 1DL | **1st Material Delivery & Site Inspection** |  | 2025-05-21 | 2025-05-30 |  |  |  |  |  |  |  |  |  |  |  |  |  |  |  |
|  | 1 | **Ducts Works** |  | 2025-05-22 | 2025-05-30 |  |  |  |  |  |  |  |  |  |  |  |  |  |  |  |
| PRO-TE-1DL-100 |  | 1ST Material Delivery for Ducts of Telecom Network | 6d | 2025-05-22 A | 2025-05-30 A | PRO-TE-MF-100 | 100% | 2025-05-05 | 2025-05-11 | Pro Engineer [312.12 h] | PRO-TE-1DL-100 | PRC | 1DL | Each | 1DL | TE | PRO | PROC | MEP |  |
|  | 3 | **Manholes Works** |  | 2025-05-21 | 2025-05-29 |  |  |  |  |  |  |  |  |  |  |  |  |  |  |  |
| PRO-TE-1DL-110 |  | 1ST Material Delivery for Manholes of Telecom Network | 6d | 2025-05-21 A | 2025-05-29 A | PRO-TE-MF-110 | 100% | 2025-05-05 | 2025-05-11 | Pro Engineer [312.12 h] | PRO-TE-1DL-110 | PRC | 1DL | Each | 1DL | TE | PRO | PROC | MEP |  |
|  | DL | **Material Delivery & Site Inspection** |  | 2025-06-01 | 2026-08-16 |  |  |  |  |  |  |  |  |  |  |  |  |  |  |  |
|  | 1 | **Road 18 Local 1 ( 479 LM )** |  | 2025-06-01 | 2025-06-30 |  |  |  |  |  |  |  |  |  |  |  |  |  |  |  |
|  | 1 | **Ducts Works** |  | 2025-06-01 | 2025-06-30 |  |  |  |  |  |  |  |  |  |  |  |  |  |  |  |
| PRO-R18-TE-DL-120 |  | Material Delivery & Site Inspection for Ducts of Telecom Network | 26d | 2025-06-01 A | 2025-06-30 A | PRO-TE-1DL-100 | 100% | 2025-05-12 | 2025-06-15 | Pro Engineer [312.12 h]; 6-way ducts, 50mm dia. HDPE; Road crossing ducts (6-way) | PRO-R18-TE-DL-120 | PRC | DL | Each | DL | TE | PRO | PROC | MEP | R18 |
|  | 3 | **Manholes Works** |  | 2025-06-01 | 2025-06-10 |  |  |  |  |  |  |  |  |  |  |  |  |  |  |  |
| PRO-R18-TE-DL-130 |  | Material Delivery & Site Inspection of Manholes for Telecom Network | 26d | 2025-06-01 A | 2025-06-10 A | PRO-TE-1DL-110 | 100% | 2025-05-12 | 2025-06-15 | Pro Engineer [312.12 h]; Manhole Type 1 (2000x1000x1000); Manhole Type 2 (2000x1000x1000); Manhole Type 3 (2000x1000x1000) | PRO-R18-TE-DL-130 | PRC | DL | Each | DL | TE | PRO | PROC | MEP | R18 |
|  | 9 | **Road 17 Local 1 ( 500 LM )** |  | 2025-06-01 | 2025-06-30 |  |  |  |  |  |  |  |  |  |  |  |  |  |  |  |
|  | 1 | **Ducts Works** |  | 2025-06-01 | 2025-06-30 |  |  |  |  |  |  |  |  |  |  |  |  |  |  |  |
| PRO-R17-TE-DL-100 |  | Material Delivery & Site Inspection for Ducts of Telecom Network | 26d | 2025-06-01 A | 2025-06-30 A | PRO-TE-1DL-100, PRO-R18-TE-DL-120 | 100% | 2025-06-16 | 2025-07-15 | Pro Engineer [312.12 h]; 6-way ducts, 50mm dia. HDPE; Road crossing ducts (6-way) | PRO-R17-TE-DL-100 | PRC | DL | Each | DL | TE | PRO | PROC | MEP | R17 |
|  | 3 | **Manholes Works** |  | 2025-06-11 | 2025-06-14 |  |  |  |  |  |  |  |  |  |  |  |  |  |  |  |
| PRO-R17-TE-DL-110 |  | Material Delivery & Site Inspection of Manholes for Telecom Network | 26d | 2025-06-11 A | 2025-06-14 A | PRO-TE-1DL-110, PRO-R18-TE-DL-130 | 100% | 2025-06-16 | 2025-07-15 | Pro Engineer [312.12 h]; Manhole Type 1 (2000x1000x1000); Manhole Type 2 (2000x1000x1000) | PRO-R17-TE-DL-110 | PRC | DL | Each | DL | TE | PRO | PROC | MEP | R17 |
|  | 8 | **Road 16 Local 1 ( 527 LM )** |  | 2025-06-01 | 2025-06-30 |  |  |  |  |  |  |  |  |  |  |  |  |  |  |  |
|  | 1 | **Ducts Works** |  | 2025-06-01 | 2025-06-30 |  |  |  |  |  |  |  |  |  |  |  |  |  |  |  |
| PRO-R16-TE-DL-100 |  | Material Delivery & Site Inspection for Ducts of Telecom Network | 26d | 2025-06-01 A | 2025-06-30 A | PRO-TE-1DL-100, PRO-R17-TE-DL-100 | 100% | 2025-07-16 | 2025-08-14 | Pro Engineer [312.12 h]; 6-way ducts, 50mm dia. HDPE; Road crossing ducts (6-way) | PRO-R16-TE-DL-100 | PRC | DL | Each | DL | TE | PRO | PROC | MEP | R16 |
|  | 3 | **Manholes Works** |  | 2025-06-15 | 2025-06-19 |  |  |  |  |  |  |  |  |  |  |  |  |  |  |  |
| PRO-R16-TE-DL-110 |  | Material Delivery & Site Inspection of Manholes for Telecom Network | 26d | 2025-06-15 A | 2025-06-19 A | PRO-TE-1DL-110, PRO-R17-TE-DL-110 | 100% | 2025-07-16 | 2025-08-14 | Pro Engineer [312.12 h]; Manhole Type 1 (2000x1000x1000); Manhole Type 2 (2000x1000x1000) | PRO-R16-TE-DL-110 | PRC | DL | Each | DL | TE | PRO | PROC | MEP | R16 |
|  | 7 | **Road 15 Local 1 ( 556 LM )** |  | 2025-06-01 | 2025-06-30 |  |  |  |  |  |  |  |  |  |  |  |  |  |  |  |
|  | 1 | **Ducts Works** |  | 2025-06-01 | 2025-06-30 |  |  |  |  |  |  |  |  |  |  |  |  |  |  |  |
| PRO-R15-TE-DL-100 |  | Material Delivery & Site Inspection for Ducts of Telecom Network | 26d | 2025-06-01 A | 2025-06-30 A | PRO-TE-1DL-100, PRO-R16-TE-DL-100 | 100% | 2025-08-16 | 2025-09-14 | Pro Engineer [312.12 h]; 6-way ducts, 50mm dia. HDPE; Road crossing ducts (6-way) | PRO-R15-TE-DL-100 | PRC | DL | Each | DL | TE | PRO | PROC | MEP | R15 |

| ID | WBS | Activity | Duration | Start | Finish | Predecessors | Complete | Planned start | Planned finish | Resources | Activity ID N | 02- Network-WBS | 03- Activity | 04-UOM | 05-Discipline | 01- Network | 08 Stage | 09 Roads | Discipline | New Discipline |
| --- | --- | --- | --- | --- | --- | --- | --- | --- | --- | --- | --- | --- | --- | --- | --- | --- | --- | --- | --- | --- |
|  | 3 | **Manholes Works** |  | 2025-06-21 | 2025-06-26 |  |  |  |  |  |  |  |  |  |  |  |  |  |  |  |
| PRO-R15-TE-DL-110 |  | Material Delivery & Site Inspection of Manholes for Telecom Network | 26d | 2025-06-21 A | 2025-06-26 A | PRO-TE-1DL-110, PRO-R16-TE-DL-110 | 100% | 2025-08-16 | 2025-09-14 | Pro Engineer [312.12 h]; Manhole Type 1 (2000x1000x1000); Manhole Type 2 (2000x1000x1000) | PRO-R15-TE-DL-110 | PRC | DL | Each | DL | TE | PRO | R15 | PROC | MEP |
|  | 4 | **Road 10 Local 2 ( 2352 LM )** |  | 2025-11-01 | 2026-08-16 |  |  |  |  |  |  |  |  |  |  |  |  |  |  |  |
|  | 1 | **Ducts Works** |  | 2025-11-01 | 2025-11-10 |  |  |  |  |  |  |  |  |  |  |  |  |  |  |  |
| PRO-R10-TE-DL-100 |  | Material Delivery & Site Inspection for Ducts of Telecom Network | 26d | 2025-11-01 A | 2025-11-10 A | PRO-TE-1DL-100, PRO-R15-TE-DL-100 | 100% | 2025-09-15 | 2025-10-15 | Pro Engineer [312.12 h]; 6-way ducts, 50mm dia. HDPE; Road crossing ducts (6-way) | PRO-R10-TE-DL-100 | PRC | DL | Each | DL | TE | PRO | R10 | PROC | MEP |
|  | 3 | **Manholes Works** |  | 2026-08-01 | 2026-08-16 |  |  |  |  |  |  |  |  |  |  |  |  |  |  |  |
| PRO-R10-TE-DL-110 |  | Material Delivery & Site Inspection of Manholes for Telecom Network | 26d | 2026-08-01 A | 2026-08-16 A | PRO-TE-1DL-110, PRO-R15-TE-DL-110 | 100% | 2025-09-15 | 2025-10-15 | Pro Engineer [312.12 h]; Manhole Type 1 (2000x1000x1000); Manhole Type 2 (2000x1000x1000) | PRO-R10-TE-DL-110 | PRC | DL | Each | DL | TE | PRO | R10 | PROC | MEP |
|  | 6 | **Road 14 Local 1 ( 584 LM )** |  | 2025-11-01 | 2026-08-16 |  |  |  |  |  |  |  |  |  |  |  |  |  |  |  |
|  | 1 | **Ducts Works** |  | 2025-11-01 | 2025-11-10 |  |  |  |  |  |  |  |  |  |  |  |  |  |  |  |
| PRO-R14-TE-DL-100 |  | Material Delivery & Site Inspection for Ducts of Telecom Network | 26d | 2025-11-01 A | 2025-11-10 A | PRO-TE-1DL-100, PRO-R10-TE-DL-100 | 100% | 2025-10-16 | 2025-11-15 | Pro Engineer [312.12 h]; 6-way ducts, 50mm dia. HDPE; Road crossing ducts (6-way) | PRO-R14-TE-DL-100 | PRC | DL | Each | DL | TE | PRO | R14 | PROC | MEP |
|  | 3 | **Manholes Works** |  | 2026-08-01 | 2026-08-16 |  |  |  |  |  |  |  |  |  |  |  |  |  |  |  |
| PRO-R14-TE-DL-110 |  | Material Delivery & Site Inspection of Manholes for Telecom Network | 26d | 2026-08-01 A | 2026-08-16 A | PRO-TE-1DL-110, PRO-R10-TE-DL-110 | 100% | 2025-10-16 | 2025-11-15 | Pro Engineer [312.12 h]; Manhole Type 1 (2000x1000x1000); Manhole Type 2 (2000x1000x1000) | PRO-R14-TE-DL-110 | PRC | DL | Each | DL | TE | PRO | R14 | PROC | MEP |
|  | 2 | **Road 09 Local 2 ( 2278 LM )** |  | 2026-08-01 | 2026-08-16 |  |  |  |  |  |  |  |  |  |  |  |  |  |  |  |
|  | 1 | **Ducts Works** |  | 2026-08-01 | 2026-08-16 |  |  |  |  |  |  |  |  |  |  |  |  |  |  |  |
| PRO-R09-TE-DL-110 |  | Material Delivery & Site Inspection of Manholes for Telecom Network | 26d | 2026-08-01 A | 2026-08-16 A | PRO-TE-1DL-110, PRO-R14-TE-DL-110 | 100% | 2025-11-16 | 2025-12-15 | Pro Engineer [312.12 h]; Manhole Type 1 (2000x1000x1000); Manhole Type 2 (2000x1000x1000); Manhole Type 3 (2000x1000x1000) | PRO-R09-TE-DL-110 | PRC | DL | Each | DL | TE | PRO | R09 | PROC | MEP |
|  | 3 | **Manholes Works** |  | 2026-08-01 | 2026-08-16 |  |  |  |  |  |  |  |  |  |  |  |  |  |  |  |
| PRO-R09-TE-DL-100 |  | Material Delivery & Site Inspection for Ducts of Telecom Network | 26d | 2026-08-01 A | 2026-08-16 A | PRO-TE-1DL-100, PRO-R14-TE-DL-100 | 100% | 2025-11-16 | 2025-12-15 | Pro Engineer [312.12 h]; 6-way ducts, 50mm dia. HDPE; Road crossing ducts (6-way) | PRO-R09-TE-DL-100 | PRC | DL | Each | DL | TE | PRO | R09 | PROC | MEP |
|  | 5 | **Road 11 Local 1 ( 670 LM )** |  | 2026-07-09 | 2026-08-16 |  |  |  |  |  |  |  |  |  |  |  |  |  |  |  |
|  | 1 | **Ducts Works** |  | 2026-07-09 | 2026-08-16 |  |  |  |  |  |  |  |  |  |  |  |  |  |  |  |
| PRO-R11-TE-DL-100 |  | Material Delivery & Site Inspection for Ducts of Telecom Network | 26d | 2026-07-09 A | 2026-08-16 A | PRO-TE-1DL-100, PRO-R09-TE-DL-100 | 100% | 2025-12-16 | 2026-01-14 | Pro Engineer [312.12 h]; 6-way ducts, 50mm dia. HDPE; Road crossing ducts (6-way) | PRO-R11-TE-DL-100 | PRC | DL | Each | DL | TE | PRO | R11 | PROC | MEP |
|  | 3 | **Manholes Works** |  | 2026-08-01 | 2026-08-16 |  |  |  |  |  |  |  |  |  |  |  |  |  |  |  |
| PRO-R11-TE-DL-110 |  | Material Delivery & Site Inspection of Manholes for Telecom Network | 26d | 2026-08-01 A | 2026-08-16 A | PRO-TE-1DL-110, PRO-R09-TE-DL-110 | 100% | 2025-12-16 | 2026-01-14 | Pro Engineer [312.12 h]; Manhole Type 1 (2000x1000x1000); Manhole Type 2 (2000x1000x1000) | PRO-R11-TE-DL-110 | PRC | DL | Each | DL | TE | PRO | R11 | PROC | MEP |
|  | 1 | **Superstructure Works** |  | 2025-02-18 | 2026-11-04 |  |  |  |  |  |  |  |  |  |  |  |  |  |  |  |
|  | 1 | **Issuance of Purchase Orders** |  | 2025-02-18 | 2025-03-30 |  |  |  |  |  |  |  |  |  |  |  |  |  |  |  |
|  | SL | **Sewage Pump Stations ( PS 06 )** |  | 2025-02-18 | 2025-03-06 |  |  |  |  |  |  |  |  |  |  |  |  |  |  |  |
| PRO-SPS-CV-PO-10 |  | Issuance of Purchase Order for Civil Works for Sewage Pump Stations | 12d | 2025-02-18 A | 2025-03-06 A | ENG-MT-SPS-CV-A-110, ENG-MS-SPS-A-110, ENG-SH-SPS-A-110, PRO-SW-PO-100, PRO-SW-PO-110 | 100% | 2025-02-18 | 2025-03-04 | Pro Engineer [312.12 h] | PRO-SPS-CV-PO-10 | DSN | DSS | Each | S | SL | PRO |  | PROC | MEP |

| ID | WBS | Activity | Duration | Start | Finish | Predecessors | Complete | Planned start | Planned finish | Resources | Activity ID N | 02- Network-WBS | 03- Activity | 04-UOM | 05-Discipline | 01- Network | 08 Stage | Discipline | New Discipline |
| --- | --- | --- | --- | --- | --- | --- | --- | --- | --- | --- | --- | --- | --- | --- | --- | --- | --- | --- | --- |
|  | TE | **Storm Drainage Ponds ( PO-J1 , PO-J2 )** |  | 2025-03-19 | 2025-03-30 |  |  |  |  |  |  |  |  |  |  |  |  |  |  |
| PRO-DPO-CV-PO-10 |  | Issuance of Purchase Order for Civil Works for Storm Drainage Ponds | 12d | 2025-03-19 A | 2025-03-30 A | ENG-SH-SPS-A-110, ENG-MT-DPO-CV-A-110, ENG-MS-DPO-A-110, ENG-SH-DPO-A-110, PRO-SD-PO-100, PRO-SD-PO-110, PRO-SD-PO-130, PRO-SD-PO-150, PRO-SD-PO-120, PRO-SD-PO-140, PRO-SD-PO-160, PRO-SPS-CV-PO-10 | 100% | 2025-03-05 | 2025-03-18 | Pro Engineer [312.12 h] | PRO-DPO-CV-PO-10 | DSN | DSS | Each | S | TE | PRO | PROC | MEP |
|  | 2 | **Manufacturing of Material** |  | 2025-03-07 | 2026-08-09 |  |  |  |  |  |  |  |  |  |  |  |  |  |  |
|  | SL | **Sewage Pump Stations ( PS 06 )** |  | 2025-03-07 | 2025-07-17 |  |  |  |  |  |  |  |  |  |  |  |  |  |  |
| PRO-SPS-CV-MF-10 |  | Manufacturing of Civil Works for Sewage Pump Stations ( PS06 ) | 130d | 2025-03-07 A | 2025-07-17 A | PRO-SPS-CV-PO-10 | 100% | 2025-03-05 | 2025-08-12 | Pro Engineer [312.12 h] | PRO-SPS-CV-MF-10 | DSN | DSS | Each | S | SL | PRO | PROC | MEP |
|  | TE | **Storm Drainage Ponds ( PO-J1 , PO-J2 )** |  | 2025-04-01 | 2026-08-09 |  |  |  |  |  |  |  |  |  |  |  |  |  |  |
| PRO-DPO-CV-MF-10 |  | Manufacturing of Civil Works for Storm Drainage Ponds ( PO-J1 ) | 120d | 2025-04-01 A | 2025-07-17 A | PRO-DPO-CV-PO-10 | 100% | 2025-03-19 | 2025-08-14 | Pro Engineer [312.12 h] | PRO-DPO-CV-MF-10 | DSN | DSS | Each | S | TE | PRO | PROC | MEP |
| PRO-DPO-CV-MF-20 |  | Manufacturing of Civil Works for Storm Drainage Ponds ( PO-J2 ) | 60d | 2026-06-01 A | 2026-08-09 A | PRO-DPO-CV-MF-10 | 100% | 2025-08-16 | 2025-10-25 | Pro Engineer [312.12 h] | PRO-DPO-CV-MF-20 | DSN | DSS | Each | S | TE | PRO | PROC | MEP |
|  | 3 | **1st Material Delivery & Site Inspection** |  | 2025-05-19 | 2026-09-08 |  |  |  |  |  |  |  |  |  |  |  |  |  |  |
|  | SL | **Sewage Pump Stations ( PS 06 )** |  | 2025-10-13 | 2025-11-29 |  |  |  |  |  |  |  |  |  |  |  |  |  |  |
| PRO-SPS-CV-1DL-10 |  | 1ST Material Delivery for Civil Works for Sewage Pump Stations ( PS 06 ) | 40d | 2025-10-13 A | 2025-11-29 A | PRO-SPS-CV-MF-10 | 100% | 2025-08-13 | 2025-09-29 | Pro Engineer [312.12 h] | PRO-SPS-CV-1DL-10 | DSN | DSS | Each | S | SL | PRO | PROC | MEP |
|  | TE | **Storm Drainage Ponds ( PO-J1 , PO-J2 )** |  | 2025-05-19 | 2026-09-08 |  |  |  |  |  |  |  |  |  |  |  |  |  |  |
| PRO-DPO-CV-1DL-10 |  | 1ST Material Delivery for Civil Works for Storm Drainage Ponds ( PO-J1 ) | 26d | 2025-05-19 A | 2025-10-23 A | PRO-DPO-CV-MF-10 | 100% | 2025-08-16 | 2025-09-14 | Pro Engineer [312.12 h] | PRO-DPO-CV-1DL-10 | DSN | DSS | Each | S | TE | PRO | PROC | MEP |
| PRO-DPO-CV-1DL-20 |  | 1ST Material Delivery for Civil Works for Storm Drainage Ponds ( PO-J2 ) | 26d | 2026-08-10 A | 2026-09-08 A | PRO-DPO-CV-MF-20 | 100% | 2025-10-26 | 2025-11-24 | Pro Engineer [312.12 h] | PRO-DPO-CV-1DL-20 | DSN | DSS | Each | S | TE | PRO | PROC | MEP |
|  | 4 | **Material Delivery & Site Inspection** |  | 2025-10-29 | 2026-11-04 |  |  |  |  |  |  |  |  |  |  |  |  |  |  |
|  | SL | **Sewage Pump Stations ( PS 06 )** |  | 2025-11-29 | 2025-12-01 |  |  |  |  |  |  |  |  |  |  |  |  |  |  |
| PRO-SPS-CV-DL-10 |  | Material Delivery & Site Inspection for Civil Works for Sewage Pump Stations ( PS 06 ) | 70d | 2025-11-29 A | 2025-12-01 A | PRO-SPS-CV-1DL-10 | 100% | 2025-09-30 | 2025-12-20 | Pro Engineer [312.12 h]; HDPE force main DN 800mm diameter, in trenches depth: 0- 1.5m; HDPE force main DN 800mm diameter, in trenches depth: 1.51- 2.5m; Washout valve 200mm, on 800mm dia. pipe; Air release valve 110 mm dia, on 800mm dia. pipe; Washout valve chamber; Air release valve chamber; Wet well structure internal size (5.5*4.0m) at 11.0m depth; Valve chamber; for the pump station; basket screen; CMU walls with thickness 200mm; Waterproofing for foundation; Roof Insulation; Acrylic paint on elevations including plastering; Acrylic paint on internal wallsand ceiling including plastering; Epoxy paint on floors; Supply and install 2000*3000 mm double leaf manufacturer label shall pass the test requirements complete with accessories as per door schedule and material as approved by the Client. | PRO-SPS-CV-DL-10 | DSN | DSS | Each | S | SL | PRO | PROC | MEP |
|  | TE | **Storm Drainage Ponds ( PO-J1 , PO-J2 )** |  | 2025-10-29 | 2026-11-04 |  |  |  |  |  |  |  |  |  |  |  |  |  |  |
| PRO-DPO-CV-DL-10 |  | Material Delivery & Site Inspection for Civil Works for Storm Drainage Ponds ( PO-J1 ) | 70d | 2025-10-29 A | 2026-11-04 A | PRO-DPO-CV-1DL-10 | 100% | 2025-09-15 | 2025-12-06 | Pro Engineer [243.06 h]; Excavation in all type of soil for any depth including levelling, compaction and disposal of surplus material; Reinforced Concrete lining including blinding concrete, construction, isolation layers and expansion joints as shown in drawings. | PRO-DPO-CV-DL-10 | DSN | DSS | Each | S | TE | PRO | PROC | MEP |
| PRO-DPO-CV-DL-20 |  | Material Delivery & Site Inspection for Civil Works for Storm Drainage Ponds ( PO-J2 ) | 70d | 2026-09-09 A | 2026-11-04 A | PRO-DPO-CV-1DL-20 | 100% | 2025-11-25 | 2026-02-14 | Pro Engineer [218.44 h]; Excavation in all type of soil to increase the depth of the existing pond for any depth including levelling, compaction and disposal of surplus material; Reinforced Concrete lining including blinding concrete, construction, isolation layers and expansion joints as shown in drawings. | PRO-DPO-CV-DL-20 | DSN | DSA | Each | A | TE | PRO | PROC | MEP |
|  | LL | **Long Lead Time Items** |  | 2025-02-11 | 2026-12-10 |  |  |  |  |  |  |  |  |  |  |  |  |  |  |
|  | 2 | **Infrastructure Networks** |  | 2025-02-11 | 2026-09-20 |  |  |  |  |  |  |  |  |  |  |  |  |  |  |
|  | 1 | **RMU Works of Medium Voltage Network** |  | 2025-02-11 | 2026-09-20 |  |  |  |  |  |  |  |  |  |  |  |  |  |  |
|  | PO | **Issuance of Purchase Orders** |  | 2025-02-11 | 2025-05-05 |  |  |  |  |  |  |  |  |  |  |  |  |  |  |
| PRO-MV-LL-PO-10 |  | Issuance of Purchase Order for RMU of Medium Voltage Network | 30d | 2025-02-11 A | 2025-05-05 A | ENG-MT-MV-A-10, ENG-SH-MV-A-110, ENG-MS-MV-A-110 | 100% | 2025-02-10 | 2025-03-17 | Pro Engineer [312.12 h] | PRO-MV-LL-PO-10 | PRC | PO | Each | PO | MV | PRO | PROC | MEP |

| ID | WBS | Activity | Duration | Start | Finish | Predecessors | Complete | Remaining | Planned start | Planned finish | Total float | Free float | Resources | Cost | Actual cost | Activity ID N | 02- Network-WBS | 03- Activity | 04-UOM | 05-Discipline | 01- Network | 08 Stage | Discipline | New Discipline | Seq | New Seq | 07-Weightage System | 09 Roads | 10 side Walk |
| --- | --- | --- | --- | --- | --- | --- | --- | --- | --- | --- | --- | --- | --- | --- | --- | --- | --- | --- | --- | --- | --- | --- | --- | --- | --- | --- | --- | --- | --- |
|  | MF | **Manufacturing of Material** |  | 2025-06-01 | 2026-06-20 |  |  |  |  |  |  |  |  |  |  |  |  |  |  |  |  |  |  |  |  |  |  |  |  |
| PRO-MV-LL-MF-10 |  | Manufacturing of RMU for Medium Voltage Network | 150d | 2025-06-01 A | 2026-06-20 A | PRO-MV-LL-PO-10 | 100% |  | 2025-03-18 | 2025-09-17 |  |  | Pro Engineer [312.12 h] |  |  | PRO-MV-LL-MF-10 | PRC | MF | Each | MF | MV | PRO | PROC | MEP |  |  |  |  |  |
|  | 1DL | **Material Shipping/Custom Clearance/Delivery** |  | 2026-05-15 | 2026-05-28 |  |  |  |  |  |  |  |  |  |  |  |  |  |  |  |  |  |  |  |  |  |  |  |  |
| PRO-MV-LL-SH/DL-10 |  | Material Delivery for RMU of Medium Voltage Network | 90d | 2026-05-15 A | 2026-05-28 A | PRO-MV-LL-MF-10 | 100% |  | 2025-09-18 | 2026-01-01 |  |  | Pro Engineer [312.12 h] |  |  | PRO-MV-LL-SH/DL-10 | PRC | 1DL | Each | 1DL | MV | PRO | PROC | MEP |  |  |  |  |  |
|  | DL | **Material Site Inspection** |  | 2026-08-01 | 2026-09-20 |  |  |  |  |  |  |  |  |  |  |  |  |  |  |  |  |  |  |  |  |  |  |  |  |
|  | DL4 | **Road 10 Local 2 ( 2352 LM )** |  | 2026-08-01 | 2026-08-06 |  |  |  |  |  |  |  |  |  |  |  |  |  |  |  |  |  |  |  |  |  |  |  |  |
| PRO-R10-MV-LL-MSI-10 |  | Material Site Inspection of RMU for Medium Voltage Network | 30d | 2026-08-01 A | 2026-08-06 A | PRO-MV-LL-SH/DL-10 | 100% |  | 2026-01-03 | 2026-02-05 |  |  | Pro Engineer [312.12 h]; Supply & installation of (33) kv MV Switch (RMU) for Normally-open Points (NOP) according to the Saudi Electric Company specification |  |  | PRO-R10-MV-LL-MSI-10 | PRC | DL | Each | DL | MV | PRO | PROC | MEP |  |  |  |  |  |
|  | DL9111 | **Road 17 Local 1 ( 500 LM )** |  | 2026-09-15 | 2026-09-20 |  |  |  |  |  |  |  |  |  |  |  |  |  |  |  |  |  |  |  |  |  |  |  |  |
| PRO-R17-MV-LL-MSI-40 |  | Material Site Inspection of RMU for Medium Voltage Network | 30d | 2026-09-15 A | 2026-09-20 A | PRO-MV-LL-SH/DL-10 | 100% |  | 2026-01-03 | 2026-02-05 |  |  | Pro Engineer [312.12 h]; Supply & installation of (33) kv MV Switch (RMU) for Normally-open Points (NOP) according to the Saudi Electric Company specification |  |  | PRO-R18-MV-LL-MSI-40 | PRC | DL | Each | DL | MV | PRO | PROC | MEP |  |  |  |  |  |
|  | 1 | **Superstructure Works** |  | 2025-06-01 | 2026-12-10 |  |  |  |  |  |  |  |  |  |  |  |  |  |  |  |  |  |  |  |  |  |  |  |  |
|  | SL | **Sewage Pump Stations ( PS 06 )** |  | 2025-06-01 | 2026-12-10 |  |  |  |  |  |  |  |  |  |  |  |  |  |  |  |  |  |  |  |  |  |  |  |  |
|  | 1 | **Issuance of Purchase Orders** |  | 2025-06-01 | 2025-06-05 |  |  |  |  |  |  |  |  |  |  |  |  |  |  |  |  |  |  |  |  |  |  |  |  |
| PRO-SPS-LL-PO-10 |  | Issuance of Purchase Order for Electromechanical Works for Sewage Pump Stations | 60d | 2025-06-01 A | 2025-06-05 A | ENG-MS-SPS-A-110, ENG-SH-SPS-A-110, ENG-MT-SPS-MC-A-110, PRO-MV-LL-PO-10, PRO-MV-LL-MF-10 | 100% |  | 2025-09-18 | 2025-11-27 |  |  | Pro Engineer [312.12 h] |  |  | PRO-SPS-LL-PO-10 | DSN | DSS | Each | S | SL | PRO | PROC | MEP |  |  |  |  |  |
|  | 2 | **Manufacturing of Material** |  | 2025-06-01 | 2026-06-30 |  |  |  |  |  |  |  |  |  |  |  |  |  |  |  |  |  |  |  |  |  |  |  |  |
| PRO-SPS7-LL-MF-10 |  | Manufacturing of Electromechanical Works for Sewage Pump Stations ( PS 06 ) | 100d | 2025-06-01 A | 2026-06-30 A | PRO-SPS-LL-PO-10, PRO-MV-LL-MF-10 | 100% |  | 2025-11-29 | 2026-03-28 |  |  | Pro Engineer [312.12 h] |  |  | PRO-SPS7-LL-MF-10 | DSN | DSS | Each | S | SL | PRO | PROC | MEP |  |  |  |  |  |
|  | 3 | **Material Shipping/Custom Clearance/Delivery** |  | 2026-07-05 | 2026-08-06 |  |  |  |  |  |  |  |  |  |  |  |  |  |  |  |  |  |  |  |  |  |  |  |  |
| PRO-SPS7-LL-SH/DL-10 |  | Material Delivery for Electromechanical Works for Sewage Pump Stations ( PS 06 ) | 80d | 2026-07-05 A | 2026-08-06 A | PRO-SPS7-LL-MF-10 | 100% |  | 2026-03-29 | 2026-07-04 |  |  | Pro Engineer [312.12 h] |  |  | PRO-SPS7-LL-SH/DL-10 | DSN | DSS | Each | S | SL | PRO | PROC | MEP |  |  |  |  |  |
|  | 4 | **Material Site Inspection** |  | 2026-10-05 | 2026-12-10 |  |  |  |  |  |  |  |  |  |  |  |  |  |  |  |  |  |  |  |  |  |  |  |  |
| PRO-SPS7-LL-MSI-10 |  | Material Site Inspection for Electromechanical Works for Sewage Pump Stations ( PS06 ) | 50d | 2026-10-05 A | 2026-12-10 | PRO-SPS7-LL-SH/DL-10 | 40% | 15d | 2026-07-05 | 2026-08-31 | -49d | 78d | Pro Engineer [126.11 h]; Constant speed drive, sewage pumps, centrifugal submersible type; 2 duty / 1 standby capable of delivering a flow rate of flow 424 l/s against a total head of 22m, rate includes provision of MCC; Odour control system; Gate valves for the pump station; Non return valves for the pump station; Penstok for the pump station; Standby Diesel Generator Set 400/230KVA, 3P, 60Hz in Sound Attenuated Enclosure KVA rating by contractor as per total load onsite after pumps selection; Supply, install, test and commission of manually operated fuel pump, The pump should be supplied with all accessories as specified.; Supply, install, test and commission of Fuel pump with capacity of not less than 1 hour to fill the daily tank of generator at required head.; supply, install, test & commission Automatic Transfer Switch ATS panel including all accessories & works required.; Supply, install, test and commission under ground fuel tank for 3 days of continuous operation of the standby generator at full load. The tank should be supplied with all accessories such as black steel pipes, float switches with two contactors ï¿½etc. as; 4Cx 185mm2 Cu/XLPE//PVC from nearest power supply (SEC) and generator to the ATS and from ATS to MCC-SPS; 4Cx 95mm2 Cu/XLPE//PVC from nearest power supply (SEC) and generator to the ATS and from ATS to MCC-SPS; 4Cx 10mm2 Cu/XLPE/SWA/PVC from MCC-SPS to ELP; 4Cx 150mm2 + 1Cx25mm2 SUBMERGED RUBBER INSULATED FLEXIBLE CABLE from MCC to PUMP1& PUMP2.; 4Cx 10mm2 + 1Cx10mm2 Cu/XLPE/PVC FROM MCC-SPS to DB-SPS; 4Cx 10mm2 + 1Cx10mm2 Cu/XLPE/PVC FROM MCC-SPS to Penstok; 4Cx 10mm2 + 1Cx10mm2 Cu/XLPE/PVC FROM MCC-SPS to Odor Control Unit; 4Cx 6mm2 + 1Cx6mm2 Cu/XLPE/PVC FROM MCC-SPS to the mechanical bar screen; 3Cx 6mm2 Cu/XLPE/PVC FROM MCC-SPS to the two fuel pumps.; 3Cx 4mm2 Cu/XLPE/PVC to the AC.; MCC; Surge protection system study; Surge protection system; Local Control Panel, IP 65; Isolator/disconnect switches IP65; DB-SPS Panel; ELP Panel: phtocell , timer,40 Ampere, 3P, IP66,60Hz incomer MCCB & 5ways outgoing MCCB; Electrical Hand Hole 600mm x 600mm x 800mm concrete hand hole with hot dip galvanized heavy duty steel cover; Electrical Hand Hole 400mm x 400mm x 600mm concrete hand hole with hot dip galvanized heavy duty steel cover; Surfaced Mounted Light; 13A DOUBLE SWITCH SOCKET OUTLET (WEATHER PROOF); 20A SWITCH SOCKET OUTLET (FOR SPLIT UNIT), (WEATHER PROOF); Supply, install and test the following grounding and lightning system including ground wires, ground rods, inspection pits, terminations, bonding/clamping, civil works and all materials and accessories required to complete the work according to specificat; Supply and install telephone and fire alarm system including smoke detector, cabinet, control panel, cables, conduits, switches, and other accessories to complete as per drawings and specifications.; Supply, installation, testing and commissioning of all control, instrumentation( as shown on the P & ID drawings cable schedule) including all installation accessories such as termination kits, lugs, glands, cable containments, junction boxes , conduits,; Supply, installation, testing and commissioning of all field instruments such as hydrostatic level meter, level switches, flow switch, and all necessary instruments including all installation accessories, etc. all as per specifications and design drawings; DX wall mounted Split/AC; CO2 fire extinguishers; Powder fire extinguishers; Flood lights shall be high pole with 250 watt HPS luminaire; 1 - way duct - not exceeding 1.5m deep; 2 - way duct - not exceeding 1.5m deep; 8 - way duct - not exceeding 1.5m deep; Earth pits; Cable draw pit, 600x600mm; Supply, installation, testing and commissioning of PLC system |  |  | PRO-SPS7-LL-MSI-10 | DSN | DSS | Each | S | SL | PRO | PROC | MEP |  |  |  |  |  |
|  | CON | **Construction Works** |  | 2025-02-11 | 2027-09-16 |  |  |  |  |  |  |  |  |  |  |  |  |  |  |  |  |  |  |  |  |  |  |  |  |
|  | INF | **Infrastructure Networks** |  | 2025-02-11 | 2027-09-16 |  |  |  |  |  |  |  |  |  |  |  |  |  |  |  |  |  |  |  |  |  |  |  |  |
|  | 1 | **Phase 2 Block "J"** |  | 2025-02-11 | 2027-07-19 |  |  |  |  |  |  |  |  |  |  |  |  |  |  |  |  |  |  |  |  |  |  |  |  |
|  | SW | **Rising Main Network** |  | 2025-12-27 | 2026-12-13 |  |  |  |  |  |  |  |  |  |  |  |  |  |  |  |  |  |  |  |  |  |  |  |  |
|  | ML | **Main Line Sections** |  | 2025-12-27 | 2026-10-28 |  |  |  |  |  |  |  |  |  |  |  |  |  |  |  |  |  |  |  |  |  |  |  |  |
| CO-RM-SW-290 |  | Trench Excavation and Bedding Works for Main Lines of Rising Main Network | 21d | 2025-12-27 A | 2026-01-05 A | CO-R09.S01-SW-130 | 100% |  | 2025-09-01 | 2025-09-25 |  |  | Skilled Labor/Surveyor [1701.33 h]; Foreman [1701.33 h]; Excavator [288 h]; HDPE force main DN 800mm diameter, in trenches depth: 0- 1.5m [14.04]; HDPE force main DN 800mm diameter, in trenches depth: 1.51- 2.5m [317.99] | 484,618.88 | 484,618.88 | CO-RM-SW-290 | ML | Ex | LM | ML | SW | CON | SW | SW | 11 | 11 | EX | RM | S01 |
| CO-RM-SW-300 |  | Pipes Laying Works for Main Lines of Rising Main Network | 21d | 2026-02-25 A | 2026-10-13 A | CO-RM-SW-290 | 100% |  | 2025-09-27 | 2025-10-20 |  |  | Labor/Helper [2604.66 h]; Skilled Labor/Surveyor [93.02 h]; Foreman [131.78 h]; Plumber [1302.33 h]; Excavator [384 h]; HDPE force main DN 800mm diameter, in trenches depth: 0- 1.5m [50.16]; HDPE force main DN 800mm diameter, in trenches depth: 1.51- 2.5m [1111.47] | 1,695,390.53 | 1,695,390.53 | CO-RM-SW-300 | ML | PL | LM | ML | SW | CON | SW | SW | 11 | 11 | PIPE | RM | S01 |
| CO-RM-SW-310 |  | Trench Backfilling and Compaction Works for Main Lines of Rising Main Network | 21d | 2026-09-01 A | 2026-10-28 A | CO-RM-SW-300 | 100% |  | 2025-10-21 | 2025-11-13 |  |  | Skilled Labor/Surveyor [760.21 h]; Foreman [760.21 h]; Excavator [288 h]; HDPE force main DN 800mm diameter, in trenches depth: 0- 1.5m [7.02]; HDPE force main DN 800mm diameter, in trenches depth: 1.51- 2.5m [158.5] | 241,574.72 | 241,574.72 | CO-RM-SW-310 | ML | BF | LM | ML | SW | CON | SW | SW | 11 | 11 | BACK | RM | S01 |

| ID | WBS | Activity | Duration | Start | Finish | Predecessors | Complete | Remaining | Planned start | Planned finish | Total float | Free float | Resources | Cost | Actual cost | Activity ID N | Seq | New Seq | 01- Network | 07-Weightage System | 08 Stage | 09 Roads | 10 side Walk | Discipline | New Discipline | 02- Network-WBS | 03- Activity | 04-UOM | 05-Discipline |
| --- | --- | --- | --- | --- | --- | --- | --- | --- | --- | --- | --- | --- | --- | --- | --- | --- | --- | --- | --- | --- | --- | --- | --- | --- | --- | --- | --- | --- | --- |
|  | MH | **Manholes** |  | 2026-01-08 | 2026-11-09 |  |  |  |  |  |  |  |  |  |  |  |  |  |  |  |  |  |  |  |  |  |  |  |  |
| CO-RM-SW-320 |  | Excavation Works for Main Line Manholes of Rising Main Network | 1d | 2026-01-08 A | 2026-01-15 A | CO-RM-SW-290 SS, CO-RM-SW-300 SS | 100% |  | 2025-09-27 | 2025-09-27 |  |  | Labor/Helper [81.66 h]; Skilled Labor/Surveyor [40.83 h]; Excavator [8 h]; HDPE force main DN 800mm diameter, in trenches depth: 0- 1.5m [8.03]; HDPE force main DN 800mm diameter, in trenches depth: 1.51- 2.5m [190.6] | 289,900.7 | 289,900.7 | CO-RM-SW-320 | 11 | 11 | SW | EX | CON | RM | S01 | SW | SW |  |  |  |  |
| CO-RM-SW-330 |  | Installation RC Footing Works for Main Line Manholes of Rising Main Network | 3d | 2026-01-17 A | 2026-11-04 A | CO-RM-SW-320 | 100% |  | 2025-09-28 | 2025-09-30 |  |  | Cons. Carpenter [103.27 h]; Steel Fixer [103.27 h]; HDPE force main DN 800mm diameter, in trenches depth: 0- 1.5m [3.01]; HDPE force main DN 800mm diameter, in trenches depth: 1.51- 2.5m [64.2] | 98,089.73 | 95,147.03 | CO-RM-SW-330 | 11 | 11 | SW | RC F | CON | RM | S01 | SW | SW |  |  |  |  |
| CO-RM-SW-340 |  | Install Grp Liner Wall Works for Main Line Manholes of Rising Main Network | 6d | 2026-01-17 A | 2026-11-04 A | CO-RM-SW-330 FF, CO-RM-SW-330 SS | 100% |  | 2025-10-01 | 2025-10-07 |  |  | Labor/Helper [340.95 h]; Plumber [340.95 h]; HDPE force main DN 800mm diameter, in trenches depth: 0- 1.5m [21.07]; HDPE force main DN 800mm diameter, in trenches depth: 1.51- 2.5m [476.49] | 726,189.52 | 711,665.73 | CO-RM-SW-340 | 11 | 11 | SW | LP | CON | RM | S01 | SW | SW |  |  |  |  |
| CO-RM-SW-350 |  | Pouring Grp Liner Wall Works for Main Line Manholes of Rising Main Network | 3d | 2026-09-18 A | 2026-11-07 A | CO-RM-SW-340 FF, CO-RM-SW-340 SS | 100% |  | 2025-10-08 | 2025-10-11 |  |  | Cons. Carpenter [547.48 h]; Steel Fixer [547.48 h]; HDPE force main DN 800mm diameter, in trenches depth: 0- 1.5m [3.01]; HDPE force main DN 800mm diameter, in trenches depth: 1.51- 2.5m [64.2] | 98,089.73 | 88,280.75 | CO-RM-SW-350 | 11 | 11 | SW | (New) | CON | RM | S01 | SW | SW |  |  |  |  |
| CO-RM-SW-360 |  | Backfilling Works for Main Line Manholes of Rising Main Network | 5d | 2026-09-21 A | 2026-11-07 A | CO-RM-SW-350 FF, CO-RM-SW-350 SS | 100% |  | 2025-10-12 | 2025-10-16 |  |  | Labor/Helper [677.59 h]; Skilled Labor/Surveyor [338.8 h]; Excavator [40 h]; HDPE force main DN 800mm diameter, in trenches depth: 0- 1.5m [4.01]; HDPE force main DN 800mm diameter, in trenches depth: 1.51- 2.5m [95.3] | 144,951.37 | 115,961.1 | CO-RM-SW-360 | 11 | 11 | SW | BACK | CON | RM | S01 | SW | SW |  |  |  |  |
| CO-RM-SW-370 |  | Testing Works for Main Line Manholes of Rising Main Network | 1d | 2026-10-01 A | 2026-11-09 A | CO-RM-SW-360 FF, CO-RM-SW-360 SS | 100% |  | 2025-10-18 | 2025-10-18 |  |  | Labor/Helper [208.71 h]; Plumber [208.71 h]; HDPE force main DN 800mm diameter, in trenches depth: 0- 1.5m [4.01]; HDPE force main DN 800mm diameter, in trenches depth: 1.51- 2.5m [95.3] | 144,951.37 | 115,961.1 | CO-RM-SW-370 | 11 | 11 | SW | T&COV | CON | RM | S01 | SW | SW |  |  |  |  |
|  | VC | **Valves Chamber** |  | 2026-05-02 | 2026-12-13 |  |  |  |  |  |  |  |  |  |  |  |  |  |  |  |  |  |  |  |  |  |  |  |  |
| CO-RM-SW-380 |  | Excavation Works for Valve Chambers and Washout chamber of Rising Main Network | 1d | 2026-05-02 A | 2026-05-09 A | CO-RM-SW-300 SS | 100% |  | 2025-09-27 | 2025-09-27 |  |  | Labor/Helper [36.48 h]; Skilled Labor/Surveyor [18.24 h]; Excavator [32 h]; HDPE force main DN 800mm diameter, in trenches depth: 0- 1.5m [6.02]; HDPE force main DN 800mm diameter, in trenches depth: 1.51- 2.5m [126.39]; Washout valve 200mm, on 800mm dia. pipe [0.4]; Air release valve 110 mm dia, on 800mm dia. pipe [1]; Washout valve chamber [0.4]; Air release valve chamber [1] | 244,790.33 | 244,790.33 | CO-RM-SW-380 |  |  | SW | EX | CON | RM |  | SW | SW |  |  |  |  |
| CO-RM-SW-390 |  | RC Footing Works for Valve Chambers and Washout chamber of Rising Main Network | 6d | 2026-05-09 A | 2026-05-12 A | CO-RM-SW-380 | 100% |  | 2025-09-28 | 2025-10-04 |  |  | Cons. Carpenter [218.86 h]; Steel Fixer [218.86 h]; HDPE force main DN 800mm diameter, in trenches depth: 0- 1.5m [1]; HDPE force main DN 800mm diameter, in trenches depth: 1.51- 2.5m [31.1]; Washout valve 200mm, on 800mm dia. pipe [0.1]; Air release valve 110 mm dia, on 800mm dia. pipe [0.15]; Washout valve chamber [0.1]; Air release valve chamber [0.15] | 56,939.38 | 56,939.38 | CO-RM-SW-390 |  |  | SW | RC F | CON | RM |  | SW | SW |  |  |  |  |
| CO-RM-SW-400 |  | RC Wall Works for Valve Chambers and Washout chamber of Rising Main Network | 7d | 2026-05-14 A | 2026-11-24 | CO-RM-SW-390 | 70% | 0d | 2025-10-05 | 2025-10-12 | -30d | 0d | Cons. Carpenter [218.92 h]; Steel Fixer [252.47 h]; HDPE force main DN 800mm diameter, in trenches depth: 0- 1.5m [13.04]; HDPE force main DN 800mm diameter, in trenches depth: 1.51- 2.5m [284.89]; Washout valve 200mm, on 800mm dia. pipe [1]; Air release valve 110 mm dia, on 800mm dia. pipe [1]; Washout valve chamber [1]; Air release valve chamber [1] | 521,966.46 | 521,966.46 | CO-RM-SW-400 |  |  | SW | RC W | CON | RM |  | SW | SW |  |  |  |  |
| CO-RM-SW-410 |  | RC Slab Works for Valve Chambers and Washout chamber of Rising Main Network | 7d | 2026-11-24 | 2026-12-01 | CO-RM-SW-400 |  |  |  |  | -30d | 0d | Cons. Carpenter [56.31 h]; Steel Fixer [102.42 h]; HDPE force main DN 800mm diameter, in trenches depth: 0- 1.5m [1]; HDPE force main DN 800mm diameter, in trenches depth: 1.51- 2.5m [31.1]; Washout valve 200mm, on 800mm dia. pipe [0.1]; Air release valve 110 mm dia, on 800mm dia. pipe [0.15]; Washout valve chamber [0.1]; Air release valve chamber [0.15] | 56,939.38 |  | CO-RM-SW-410 |  |  | SW | RC S | CON | RM |  | SW | SW |  |  |  |  |
| CO-RM-SW-420 |  | Insulation Works for Valve Chambers and Washout chamber of Rising Main Network | 2d | 2026-12-02 | 2026-12-03 | CO-RM-SW-410 |  |  |  |  | -30d | 0d | Labor/Helper [12.07 h]; Plumber [17.32 h]; HDPE force main DN 800mm diameter, in trenches depth: 0- 1.5m [1]; HDPE force main DN 800mm diameter, in trenches depth: 1.51- 2.5m [31.1]; Washout valve 200mm, on 800mm dia. pipe [0.1]; Air release valve 110 mm dia, on 800mm dia. pipe [0.15]; Washout valve chamber [0.1]; Air release valve chamber [0.15] | 56,939.38 |  | CO-RM-SW-420 |  |  | SW | INSUL | CON | RM |  | SW | SW |  |  |  |  |
| CO-RM-SW-430 |  | Backfilling Works for Valve Chambers and Washout chamber of Rising Main Network | 5d | 2026-12-05 | 2026-12-09 | CO-RM-SW-420 |  |  |  |  | -30d | 0d | Labor/Helper [30.17 h]; Skilled Labor/Surveyor [38.11 h]; Excavator [80 h]; HDPE force main DN 800mm diameter, in trenches depth: 0- 1.5m [1]; HDPE force main DN 800mm diameter, in trenches depth: 1.51- 2.5m [31.1]; Washout valve 200mm, on 800mm dia. pipe [0.2]; Air release valve 110 mm dia, on 800mm dia. pipe [0.3]; Washout valve chamber [0.2]; Air release valve chamber [0.3] | 67,019.16 |  | CO-RM-SW-430 |  |  | SW | BACK | CON | RM |  | SW | SW |  |  |  |  |
| CO-RM-SW-440 |  | Testing and Covering Works for Valve Chambers and Washout chamber of Rising Main Network | 3d | 2026-12-10 | 2026-12-13 | CO-RM-SW-430 |  |  |  |  | -30d | 110d | Labor/Helper [18.1 h]; Plumber [25.98 h]; HDPE force main DN 800mm diameter, in trenches depth: 0- 1.5m [3.01]; HDPE force main DN 800mm diameter, in trenches depth: 1.51- 2.5m [64.2]; Washout valve 200mm, on 800mm dia. pipe [0.2]; Air release valve 110 mm dia, on 800mm dia. pipe [0.3]; Washout valve chamber [0.2]; Air release valve chamber [0.3] | 118,248.27 |  | CO-RM-SW-440 |  |  | SW | T&COVER | CON | RM |  | SW | SW |  |  |  |  |
|  | 2 | **Road 09 Local 2 ( 2278 LM )** |  | 2025-03-26 | 2027-07-19 |  |  |  |  |  |  |  |  |  |  |  |  |  |  |  |  |  |  |  |  |  |  |  |  |
|  | SW_1 | **SW_1** |  | 2025-03-26 | 2027-07-12 |  |  |  |  |  |  |  |  |  |  |  |  |  |  |  |  |  |  |  |  |  |  |  |  |
|  | EW | **Earthworks** |  | 2025-03-26 | 2025-05-31 |  |  |  |  |  |  |  |  |  |  |  |  |  |  |  |  |  |  |  |  |  |  |  |  |
|  | EW | **Earthworks** |  | 2025-03-26 | 2025-05-31 |  |  |  |  |  |  |  |  |  |  |  |  |  |  |  |  |  |  |  |  |  |  |  |  |
| CO-R09.S01-EW-110 |  | Embankments Works Upto Design Level for Earthworks-[Road 09] -[SW-1] | 10d | 2025-03-26 A | 2025-05-03 A | CO-R09.S01-EW-100, ENG-MS-RD-A-10, ENG-SH-RD-A-100 | 100% |  | 2025-06-28 | 2025-07-08 |  |  | Labor/Helper [1185.49 h]; Skilled Labor/Surveyor [148.19 h]; Foreman [148.19 h]; Water Tank [1560 h]; Dozer [1560 h]; Embankments to the ROW, with suitable material other than top soil or rock according to specifications [76067.6] | 629,180.17 | 629,180.17 | CO-R09.S01-EW-110 | 11 | 11 | EW |  | CON | R09 | S01 | EW | EW | EW | BF | Cub.m | EW |
| CO-R09.S01-EW-100 |  | Roadway Excavation Works Upto Design Level for Earthworks-[Road 09] -[SW-1] | 10d | 2025-05-25 A | 2025-05-31 A | MS-CF-MOB, MS-CF-EBL, MS-CF-ENG, ENG-MS-RD-A-10, ENG-SH-RD-A-100, CO-R10.S04-ES-EW-100 | 100% |  | 2025-06-16 | 2025-06-26 |  |  | Labor/Helper [1094.3 h]; Skilled Labor/Surveyor [136.79 h]; Foreman [136.79 h]; Water Tank [1152 h]; Dozer [1152 h]; Roadway Excavation for cuttings; on any type of material for all depths including trimming and Preparation of excavated surfaces and disposal. [45187.2] | 290,700.26 | 290,700.26 | CO-R09.S01-EW-100 | 11 | 11 | EW |  | CON | R09 | S01 | EW | EW | EW | Ex | Cub.m | EW |
|  | SW | **Sewage Network** |  | 2025-09-01 | 2026-10-13 |  |  |  |  |  |  |  |  |  |  |  |  |  |  |  |  |  |  |  |  |  |  |  |  |
|  | ML | **Main Line Sections** |  | 2025-09-01 | 2026-05-05 |  |  |  |  |  |  |  |  |  |  |  |  |  |  |  |  |  |  |  |  |  |  |  |  |
| CO-R09.S01-SW-100 |  | Trench Excavation and Bedding Works for Main Lines of Sewage Network-[Road 09] -[SW-1] | 10d | 2025-09-01 A | 2025-09-04 A | CO-R09.S01-EW-110, ENG-MS-SW-ML-A-110, ENG-SH-SW-ML-A-110, CO-R10.S04-ES-SW-100 | 100% |  | 2025-07-09 | 2025-07-20 |  |  | Skilled Labor/Surveyor [680.53 h]; Foreman [680.53 h]; Excavator [288 h]; Nominal bore : 160mm; Depth : 1.5m - 2.5m [57.18]; Nominal bore : 200mm; Depth : 0.0m - 1.5m [16.05]; Nominal bore : 200mm; Depth : 1.5m - 2.5m [42.13]; Nominal bore : 200mm; Depth : 2.5m - 3.5m [62.19]; Nominal bore : 200mm; Depth : 3.5m - 4.5m [72.23]; Nominal bore : 200mm; Depth : 4.5m -5.5m [35.11]; Nominal bore : 200mm; Depth : 5.5m - 6.5m [47.15]; Nominal bore : 250mm; Depth : 4.5m -5.5m [62.19]; Nominal bore : 250mm; Depth : 5.5m - 6.5m [51.16]; Nominal bore : 315mm; Depth : 4.5m -5.5m [51.16]; Nominal bore : 315mm; Depth : 6.5m - 7.5m [57.18]; Depth : 6.5 -7.5m [71.22]; Depth :more than 7.5m [170.53] | 513,210.09 | 513,210.09 | CO-R09.S01-SW-100 | 11 | 11 | SW | EX | CON | R09 | S01 | SW | SW | ML | Ex | LM | ML |
| CO-R09.S01-SW-120 |  | Pipes Laying Works for Main Lines of Sewage Network-[Road 09] -[SW-1] | 12d | 2025-09-06 A | 2025-09-15 A | PRO-SW-1DL-100, MS-CS-SW, CO-R09.S01-SW-100, PRO-R09-SW-DL-100 | 100% |  | 2025-07-21 | 2025-08-03 |  |  | Labor/Helper [3399.34 h]; Skilled Labor/Surveyor [172.62 h]; Foreman [172.62 h]; Plumber [1699.67 h]; Excavator [384 h]; Nominal bore : 160mm; Depth : 0.0m - 1.5m [1118.49]; Nominal bore : 160mm; Depth : 1.5m - 2.5m [170.53]; Nominal bore : 200mm; Depth : 0.0m - 1.5m [47.15]; Nominal bore : 200mm; Depth : 1.5m - 2.5m [127.4]; Nominal bore : 200mm; Depth : 2.5m - 3.5m [187.59]; Nominal bore : 200mm; Depth : 3.5m - 4.5m [216.68]; Nominal bore : 200mm; Depth : 4.5m -5.5m [108.34]; Nominal bore : 200mm; Depth : 5.5m - 6.5m [139.44]; Nominal bore : 250mm; Depth : 4.5m -5.5m [187.59]; Nominal bore : 250mm; Depth : 5.5m - 6.5m [153.48]; Nominal bore : 315mm; Depth : 4.5m -5.5m [153.48]; Nominal bore : 315mm; Depth : 6.5m - 7.5m [170.53]; Depth : 6.5 -7.5m [212.66]; Depth :more than 7.5m [510.59] | 1,717,162.49 | 1,717,162.49 | CO-R09.S01-SW-120 | 11 | 11 | SW | PIPE | CON | R09 | S01 | SW | SW | ML | PL | LM | ML |
| CO-R09.S01-SW-130 |  | Trench Backfilling and Compaction Works for Main Lines of Sewage Network-[Road 09] -[SW-1] | 12d | 2025-10-24 A | 2026-05-05 A | ENG-SH-SW-ML-A-110 FF, ENG-MS-SW-ML-A-110 FF, CO-R09.S01-SW-120, CO-R09.S01-SW-210 FF | 100% |  | 2025-08-04 | 2025-08-17 |  |  | Skilled Labor/Surveyor [680.53 h]; Foreman [680.53 h]; Excavator [288 h]; Nominal bore : 160mm; Depth : 1.5m - 2.5m [28.09]; Nominal bore : 200mm; Depth : 0.0m - 1.5m [7.02]; Nominal bore : 200mm; Depth : 1.5m - 2.5m [21.07]; Nominal bore : 200mm; Depth : 2.5m - 3.5m [31.1]; Nominal bore : 200mm; Depth : 3.5m - 4.5m [37.12]; Nominal bore : 200mm; Depth : 4.5m -5.5m [18.06]; Nominal bore : 200mm; Depth : 5.5m - 6.5m [23.07]; Nominal bore : 250mm; Depth : 4.5m -5.5m [31.1]; Nominal bore : 250mm; Depth : 5.5m - 6.5m [25.08]; Nominal bore : 315mm; Depth : 4.5m -5.5m [25.08]; Nominal bore : 315mm; Depth : 6.5m - 7.5m [28.09]; Depth : 6.5 -7.5m [35.11]; Depth :more than 7.5m [85.27] | 254,962.01 | 254,962.01 | CO-R09.S01-SW-130 | 11 | 11 | SW | BACK | CON | R09 | S01 | SW | SW | ML | BF | LM | ML |

| ID | WBS | Activity | Duration | Start | Finish | Predecessors | Complete | Remaining | Planned start | Planned finish | Total float | Free float | Resources | Cost | Actual cost | Activity ID N | Seq | New Seq | 01- Network | 07-Weightage System | 08 Stage | 09 Roads | 10 side Walk | Discipline | New Discipline | 02- Network-WBS | 03- Activity | 04-UOM | 05-Discipline |
| --- | --- | --- | --- | --- | --- | --- | --- | --- | --- | --- | --- | --- | --- | --- | --- | --- | --- | --- | --- | --- | --- | --- | --- | --- | --- | --- | --- | --- | --- |
|  | MH | **Manholes** |  | 2025-10-12 | 2026-10-13 |  |  |  |  |  |  |  |  |  |  |  |  |  |  |  |  |  |  |  |  |  |  |  |  |
| CO-R09.S01-SW-160 |  | Excavation Works for Main Line Manholes of Sewage Network-[Road 09] -[SW-1] | 1d | 2025-10-12 A | 2025-10-15 A | CO-R09.S01-SW-100 SS, CO-R09.S01-SW-120 SS, PRO-R09-SW-DL-110 | 100% |  | 2025-07-21 | 2025-07-21 |  |  | Labor/Helper [197.59 h]; Skilled Labor/Surveyor [74.63 h]; Excavator [8 h]; Depth: 1.5 - 2.5m [1]; Depth: 3.5 - 4.5m [0.15]; Depth: 4.5 - 5.5m [0.3]; Depth:6.5 - 7.5m [1]; Depth: more than 7.5m [0.3]; Depth: 2.5 - 3.5m [1]; Depth: 3.5 - 4.5m [0.45]; Depth: 5.5 - 6.5m [0.3] | 119,698.3 | 119,698.3 | CO-R09.S01-SW-160 | 11 | 11 | SW | EX | CON | R09 | S01 | SW | SW |  |  |  |  |
| CO-R09.S01-SW-170 |  | Installation RC Footing Works for Main Line Manholes of Sewage Network-[Road 09] -[SW-1] | 3d | 2025-10-13 A | 2025-10-16 A | CO-R09.S01-SW-160 | 100% |  | 2025-07-22 | 2025-07-24 |  |  | Cons. Carpenter [279.02 h]; Steel Fixer [279.02 h]; Depth: 1.5 - 2.5m [1]; Depth: 3.5 - 4.5m [0.1]; Depth: 4.5 - 5.5m [0.2]; Depth:6.5 - 7.5m [1]; Depth: more than 7.5m [0.2]; Depth: 2.5 - 3.5m [1]; Depth: 3.5 - 4.5m [0.3]; Depth: 5.5 - 6.5m [0.2] | 107,557.84 | 107,557.84 | CO-R09.S01-SW-170 | 11 | 11 | SW | RC F | CON | R09 | S01 | SW | SW |  |  |  |  |
| CO-R09.S01-SW-180 |  | Install Grp Liner Wall Works for Main Line Manholes of Sewage Network-[Road 09] -[SW-1] | 6d | 2025-10-13 A | 2025-10-16 A | CO-R09.S01-SW-170 | 100% |  | 2025-07-26 | 2025-07-31 |  |  | Labor/Helper [408.32 h]; Plumber [408.32 h]; Depth: 1.5 - 2.5m [3.01]; Depth: 3.5 - 4.5m [0.4]; Depth: 4.5 - 5.5m [1]; Depth:6.5 - 7.5m [3.01]; Depth: more than 7.5m [1]; Depth: 2.5 - 3.5m [3.01]; Depth: 3.5 - 4.5m [1]; Depth: 5.5 - 6.5m [1]; Depth:6.5 - 7.5m [4.01] | 396,138.19 | 396,138.19 | CO-R09.S01-SW-180 | 11 | 11 | SW | LP | CON | R09 | S01 | SW | SW |  |  |  |  |
| CO-R09.S01-SW-190 |  | Pouring Grp Liner Wall Works for Main Line Manholes of Sewage Network-[Road 09] -[SW-1] | 3d | 2025-10-14 A | 2025-10-18 A | CO-R09.S01-SW-180 | 100% |  | 2025-08-02 | 2025-08-04 |  |  | Cons. Carpenter [272.21 h]; Steel Fixer [272.21 h]; Depth: 1.5 - 2.5m [0.25]; Depth: 3.5 - 4.5m [0.05]; Depth: 4.5 - 5.5m [0.1]; Depth:6.5 - 7.5m [0.25]; Depth: more than 7.5m [0.1]; Depth: 2.5 - 3.5m [0.25]; Depth: 3.5 - 4.5m [0.15]; Depth: 5.5 - 6.5m [0.1]; Depth:6.5 - 7.5m [0.35] | 36,244.74 | 36,244.74 | CO-R09.S01-SW-190 | 11 | 11 | SW | (New) | CON | R09 | S01 | SW | SW |  |  |  |  |
| CO-R09.S01-SW-200 |  | Backfilling Works for Main Line Manholes of Sewage Network-[Road 09] -[SW-1] | 5d | 2025-10-15 A | 2025-10-20 A | CO-R09.S01-SW-190 | 100% |  | 2025-08-05 | 2025-08-10 |  |  | Labor/Helper [181.48 h]; Skilled Labor/Surveyor [90.74 h]; Excavator [40 h]; Depth: 1.5 - 2.5m [1]; Depth: 3.5 - 4.5m [0.15]; Depth: 4.5 - 5.5m [0.3]; Depth:6.5 - 7.5m [1]; Depth: more than 7.5m [0.3]; Depth: 2.5 - 3.5m [1]; Depth: 3.5 - 4.5m [0.45]; Depth: 5.5 - 6.5m [0.3] | 119,698.3 | 119,698.3 | CO-R09.S01-SW-200 | 11 | 11 | SW | BACK | CON | R09 | S01 | SW | SW |  |  |  |  |
| CO-R09.S01-SW-210 |  | Testing Works for Main Line Manholes of Sewage Network-[Road 09] -[SW-1] | 1d | 2026-10-13 A | 2026-10-13 A | CO-R09.S01-SW-200 | 100% |  | 2025-08-11 | 2025-08-11 |  |  | Labor/Helper; Plumber; Depth: 1.5 - 2.5m; Depth: 3.5 - 4.5m; Depth: 4.5 - 5.5m; Depth:6.5 - 7.5m; Depth: more than 7.5m; Depth: 2.5 - 3.5m; Depth: 5.5 - 6.5m | 36,244.74 | 36,244.74 | CO-R09.S01-SW-210 | 11 | 11 | SW | T&COV | CON | R09 | S01 | SW | SW |  |  |  |  |
|  | SD | **Storm Drainage Network** |  | 2025-10-16 | 2026-11-26 |  |  |  |  |  |  |  |  |  |  |  |  |  |  |  |  |  |  |  |  |  |  |  |  |
|  | ML | **Main Line Sections** |  | 2025-10-16 | 2026-03-11 |  |  |  |  |  |  |  |  |  |  |  |  |  |  |  |  |  |  |  |  |  |  |  |  |
| CO-R09.S01-SD-100 |  | Trench Excavation and Bedding Works for Main Lines of Storm Drainage Network-[Road 09] -[SW-1] | 10d | 2025-10-16 A | 2026-03-10 A | ENG-SH-SD-ML-A-110, CO-R09.S01-EW-110, CO-R09.S01-EW-100, MS-CS-PS, ENG-MS-SD-ML-A-110, CO-R09.S01-SW-130 SS+3d, CO-R09.S01-SW-130 FF+3d, CO-R10.S04-ES-SD-100 | 100% |  | 2025-09-08 | 2025-09-18 |  |  | Skilled Labor/Surveyor [340.27 h]; Foreman [340.27 h]; Excavator [160 h]; Pipe with diameter 400mm ; depth: 0.0m - 1.5m [27.08]; Pipe with diameter 600mm ; depth: 0.0m - 1.5m [14.04]; Pipe with diameter 700mm ; depth: 1.51m - 2.5m [28.09]; Pipe with diameter 700mm ; depth: 2.51m - 3.5m [14.04]; Pipe with diameter 800mm ; depth: 1.51m - 2.5m [16.05]; Pipe with diameter 1100mm ; depth: 1.51m - 2.5m [95.3]; Pipe with diameter 1100mm ; depth: 2.51 - 3.5m [24.08] | 145,466.03 | 145,466.03 | CO-R09.S01-SD-100 | 11 | 11 | SD | EX | CON | R09 | S01 | SD | SD | ML | Ex | LM | ML |
| CO-R09.S01-SD-120 |  | Pipes Laying Works for Main Lines of Storm Drainage Network-[Road 09] -[SW-1] | 10d | 2025-10-18 A | 2026-03-11 A | PRO-SD-1DL-110, CO-R09.S01-SD-100, CO-R09.S01-SW-120 | 100% |  | 2025-09-20 | 2025-10-01 |  |  | Labor/Helper [1267.48 h]; Skilled Labor/Surveyor [133.14 h]; Foreman [143.34 h]; Plumber [633.74 h]; Excavator [336 h]; Pipe with diameter 400mm ; depth: 0.0m - 1.5m [79.25]; Pipe with diameter 600mm ; depth: 0.0m - 1.5m [42.13]; Pipe with diameter 700mm ; depth: 1.51m - 2.5m [85.27]; Pipe with diameter 700mm ; depth: 2.51m - 3.5m [42.13]; Pipe with diameter 800mm ; depth: 1.51m - 2.5m [48.15]; Pipe with diameter 1000mm ; depth: 2.51 - 3.5m [503.57]; Pipe with diameter 1100mm ; depth: 1.51m - 2.5m [283.89]; Pipe with diameter 1100mm ; depth: 2.51 - 3.5m [74.23]; Pipe encasement dia 300 mm [64.2]; Pipe encasement dia 400 mm [33.1]; Pipe encasement dia 500 mm [24.08]; Pipe encasement dia 600 mm [11.03]; Pipe encasement dia 700 mm [21.07]; Pipe encasement dia 800 mm [10.03]; Pipe encasement dia 900 mm [7.02]; Pipe encasement dia 1000 mm [7.02]; Pipe encasement dia 1100 mm [7.02]; Pipe encasement dia 1200 mm [4.01]; Box Conduit with dimensions 1200*1200 mm ; depth: 0.0m - 1.5m [106.33]; Box Conduit with dimensions 1200*1200 mm ; depth: 2.51m - 3.5m [962]; Box Conduit with dimensions 1500*1200 mm ; depth: 2.51m - 3.5m [770.41]; Box Conduit with dimensions 1500*1500 mm ; depth: 2.51m - 3.5m [383.2]; Box Conduit with dimensions 2000*1200 mm ; depth: 2.51m - 3.5m [688.15] | 12,123,590.22 | 12,123,590.22 | CO-R09.S01-SD-120 | 11 | 11 | SD | PIPE | CON | R09 | S01 | SD | SD | ML | PL | LM | ML |
| CO-R09.S01-SD-130 |  | Trench Backfilling and Compaction Works for Main Lines of Storm Drainage Network-[Road 09] -[SW-1] | 20d | 2025-12-18 A | 2026-03-11 A | ENG-SH-SD-ML-A-110 FF, ENG-MS-SD-ML-A-110 FF, CO-R09.S01-SD-120, CO-R09.S01-SD-220 FF, CO-R09.S01-SW-130 | 100% |  | 2025-10-27 | 2025-11-18 |  |  | Skilled Labor/Surveyor [616.83 h]; Foreman [616.83 h]; Excavator [160 h]; Pipe with diameter 400mm ; depth: 0.0m - 1.5m [13.04]; Pipe with diameter 600mm ; depth: 0.0m - 1.5m [7.02]; Pipe with diameter 700mm ; depth: 1.51m - 2.5m [14.04]; Pipe with diameter 700mm ; depth: 2.51m - 3.5m [7.02]; Pipe with diameter 800mm ; depth: 1.51m - 2.5m [8.03]; Pipe with diameter 1100mm ; depth: 1.51m - 2.5m [47.15]; Pipe with diameter 1100mm ; depth: 2.51 - 3.5m [13.04] | 73,117.48 | 73,117.48 | CO-R09.S01-SD-130 | 11 | 11 | SD | BACK | CON | R09 | S01 | SD | SD | ML | BF | LM | ML |
|  | MH | **Manholes** |  | 2025-12-11 | 2026-11-21 |  |  |  |  |  |  |  |  |  |  |  |  |  |  |  |  |  |  |  |  |  |  |  |  |
| CO-R09.S01-SD-180 |  | Trench Excavation and Bedding Works for Manholes of Storm Drainage Network-[Road 09] -[SW-1] | 2d | 2025-12-11 A | 2025-12-15 A | CO-R09.S01-SD-120 SS, PRO-SD-1DL-100, MS-CS-SD, CO-R09.S01-SD-100 | 100% |  | 2025-09-20 | 2025-09-21 |  |  | Labor/Helper [54.71 h]; Skilled Labor/Surveyor [27.36 h]; Excavator [48 h]; MH ; depth: 0.0m - 1.5m [0.45]; MH ; depth: 1.51m - 2.5m [1]; MH ; depth: 2.51 - 3.5m [0.3]; MH ; depth: 0.0m - 1.5m [0.3]; MH ; depth: 2.51 - 3.5m [0.15]; MH ; depth: 2.51 - 3.5m [1] | 70,970 | 70,970 | CO-R09.S01-SD-180 | 11 | 11 | SD | EX | CON | R09 | S01 | SD | SD |  |  |  |  |
| CO-R09.S01-SD-190 |  | Install RC Footing Works for Manholes of Storm Drainage Network-[Road 09] -[SW-1] | 3d | 2025-12-11 A | 2025-12-15 A | CO-R09.S01-SD-180 | 100% |  | 2025-09-22 | 2025-09-25 |  |  | Cons. Carpenter [164.14 h]; Steel Fixer [164.14 h]; MH ; depth: 0.0m - 1.5m [0.15]; MH ; depth: 1.51m - 2.5m [0.4]; MH ; depth: 2.51 - 3.5m [0.1]; MH ; depth: 0.0m - 1.5m [0.1]; MH ; depth: 2.51 - 3.5m [0.05]; MH ; depth: 1.51m - 2.5m [0.2]; MH ; depth: 2.51 - 3.5m [0.2] | 19,602.02 | 19,602.02 | CO-R09.S01-SD-190 | 11 | 11 | SD | RC F | CON | R09 | S01 | SD | SD |  |  |  |  |
| CO-R09.S01-SD-200 |  | Install RC Wall Rings & Slab Works for Manholes of Storm Drainage Network-[Road 09] -[SW-1] | 7d | 2025-12-11 A | 2025-12-15 A | CO-R09.S01-SD-190 | 100% |  | 2025-09-27 | 2025-10-04 |  |  | Cons. Carpenter [255.34 h]; Steel Fixer [255.34 h]; MH ; depth: 0.0m - 1.5m [1]; MH ; depth: 1.51m - 2.5m [6.02]; MH ; depth: 2.51 - 3.5m [1]; MH ; depth: 2.51 - 3.5m [0.45]; MH ; depth: 1.51m - 2.5m [3.01]; MH ; depth: 2.51 - 3.5m [3.01] | 265,106.13 | 265,106.13 | CO-R09.S01-SD-200 | 11 | 11 | SD | RC W | CON | R09 | S01 | SD | SD |  |  |  |  |
| CO-R09.S01-SD-220 |  | Backfilling Works for Manholes of Storm Drainage Network-[Road 09] -[SW-1] | 7d | 2026-05-02 A | 2026-05-09 A | CO-R09.S01-SD-200 | 100% |  | 2025-10-07 | 2025-10-14 |  |  | Labor/Helper [127.67 h]; Skilled Labor/Surveyor [63.83 h]; Excavator [112 h]; MH ; depth: 0.0m - 1.5m [1]; MH ; depth: 1.51m - 2.5m [3.01]; MH ; depth: 2.51 - 3.5m [0.4]; MH ; depth: 0.0m - 1.5m [0.4]; MH ; depth: 2.51 - 3.5m [0.2]; MH ; depth: 1.51m - 2.5m [1]; MH ; depth: 2.51 - 3.5m [1] | 112,725.88 | 112,725.88 | CO-R09.S01-SD-220 | 11 | 11 | SD | BACK | CON | R09 | S01 | SD | SD |  |  |  |  |
| CO-R09.S01-SD-210 |  | Testing Works for Manholes of Storm Drainage Network-[Road 09] -[SW-1] | 2d | 2026-10-07 A | 2026-11-21 A | CO-R09.S01-SD-200 | 100% |  | 2025-10-05 | 2025-10-06 |  |  | Labor/Helper [54.47 h]; Plumber [54.47 h]; MH ; depth: 0.0m - 1.5m [0.3]; MH ; depth: 1.51m - 2.5m [1]; MH ; depth: 2.51 - 3.5m [0.2]; MH ; depth: 0.0m - 1.5m [0.2]; MH ; depth: 2.51 - 3.5m [0.1]; MH ; depth: 1.51m - 2.5m [0.4]; MH ; depth: 2.51 - 3.5m [0.4] | 42,635.1 | 17,054.04 | CO-R09.S01-SD-210 | 11 | 11 | SD | T&COV | CON | R09 | S01 | SD | SD |  |  |  |  |
|  | CB | **Catch Basin Sections** |  | 2026-06-14 | 2026-11-26 |  |  |  |  |  |  |  |  |  |  |  |  |  |  |  |  |  |  |  |  |  |  |  |  |
| CO-R09.S01-SD-160 |  | Testing Works for Catch Basins of Storm Drainage Network-[Road 09] -[SW-1] | 7d | 2026-06-14 A | 2026-11-26 | CO-R09.S01-SD-150 FF, CO-R09.S01-SD-120 SS+3d, CO-R09.S01-SD-120 FF+3d, PRO-SD-1DL-120 | 95% | 3d | 2025-10-30 | 2025-11-06 | -153d | 0d | Labor/Helper [127.11 h]; Skilled Labor/Surveyor [6.81 h]; Foreman [6.81 h]; Plumber [63.55 h]; Excavator [56 h]; Pipe with diameter 300mm ; depth: 0 - 1.5m [158.5]; Pipe with diameter 400mm ; depth: 0 - 1.5m [10.03] | 40,026.06 | 36,023.45 | CO-R09.S01-SD-160 | 11 | 11 | SD | TEST | CON | R09 | S01 | SD | SD | CB | PL | Each | CB |
| CO-R09.S01-SD-140 |  | Trench Excavation and Bedding Works for Catch Basins of Storm Drainage Network-[Road 09] -[SW-1] | 6d | 2026-06-27 A | 2026-11-24 | CO-R09.S01-EW-110, ENG-SH-SD-CB-A-110, ENG-MS-SD-CB-A-110, CO-R09.S01-SD-220 | 95% | 1d | 2025-10-15 | 2025-10-21 | -151d | 0d | Skilled Labor/Surveyor [49.68 h]; Foreman [53.44 h]; Excavator [80 h]; Pipe with diameter 300mm ; depth: 0 - 1.5m [239.75]; Pipe with diameter 400mm ; depth: 0 - 1.5m [14.04] | 60,189.71 | 54,170.74 | CO-R09.S01-SD-140 | 11 | 11 | SD | EX | CON | R09 | S01 | SD | SD | CB | Ex | Each | CB |
| CO-R09.S01-SD-150 |  | Installation and Pipes Laying Connection Works for Catch Basins of Storm Drainage Network-[Road 09] -[SW-1] | 7d | 2026-06-29 A | 2026-11-24 | CO-R09.S01-SD-140 FF, PRO-SD-1DL-130 | 95% | 1d | 2025-10-22 | 2025-10-29 | -151d | 2d | Labor/Helper [258.26 h]; Skilled Labor/Surveyor [48.72 h]; Foreman [52.4 h]; Excavator [80 h]; Pipe with diameter 300mm ; depth: 0 - 1.5m [718.24]; Pipe with diameter 400mm ; depth: 0 - 1.5m [44.14] | 180,967.37 | 162,870.63 | CO-R09.S01-SD-150 | 11 | 11 | SD | INSTALL | CON | R09 | S01 | SD | SD | CB | CB | Each | CB |
| CO-R09.S01-SD-170 |  | Trench Backfilling and Compaction Works for Catch Basins of Storm Drainage Network-[Road 09] -[SW-1] | 10d | 2026-08-03 A | 2026-11-26 | CO-R09.S01-SD-160 FF, CO-R09.S01-SD-160 SS | 95% | 1d | 2025-11-08 | 2025-11-18 | -153d | 34d | Skilled Labor/Surveyor [32.94 h]; Foreman [35.39 h]; Excavator [80 h]; Pipe with diameter 300mm ; depth: 0 - 1.5m [319]; Pipe with diameter 400mm ; depth: 0 - 1.5m [20.06] | 80,517.76 | 72,465.98 | CO-R09.S01-SD-170 | 11 | 11 | SD | BACK | CON | R09 | S01 | SD | SD | CB | BF | Each | CB |
|  | IR | **Irrigation Network** |  | 2025-11-29 | 2026-12-01 |  |  |  |  |  |  |  |  |  |  |  |  |  |  |  |  |  |  |  |  |  |  |  |  |
|  | ML | **Main Line Pipes** |  | 2025-11-29 | 2026-12-01 |  |  |  |  |  |  |  |  |  |  |  |  |  |  |  |  |  |  |  |  |  |  |  |  |
| CO-R09.S01-IR-100 |  | Trench Excavation and Bedding Works for Main Lines of Irrigation Network-[Road 09] -[SW-1] | 7d | 2025-11-29 A | 2025-12-01 A | ENG-SH-IR-ML-A-110, CO-R09.S01-EW-110, ENG-MS-IR-ML-A-110 | 100% |  | 2025-11-19 | 2025-11-26 |  |  | Skilled Labor/Surveyor [340.27 h]; Foreman [340.27 h]; Excavator [56 h]; 125 mm pipe; depth 0.0m - 1.5m [813.54] | 61,782.7 | 61,782.7 | CO-R09.S01-IR-100 | 11 | 11 | IR | EX | CON | R09 | S01 | IR | IR | ML | Ex | LM | ML |
| CO-R09.S01-IR-110 |  | Pipes Laying Works for Main Lines of Irrigation Network-[Road 09] -[SW-1] | 10d | 2025-11-30 A | 2026-04-04 A | CO-R09.S01-IR-100, PRO-IR-1DL-100, MS-CS-IR, CO-R09.S01-SD-120, PRO-R09-IR-DL-100 FF+3d | 100% |  | 2025-11-27 | 2025-12-08 |  |  | Labor/Helper [680.53 h]; Skilled Labor/Surveyor [34.03 h]; Foreman [34.03 h]; Plumber [373.19 h]; Excavator [80 h]; 125 mm pipe; depth 0.0m - 1.5m [11461.8]; 500. mm pipe; depth 1.5m - 3.0m [2066.45] | 1,707,146.02 | 1,707,146.02 | CO-R09.S01-IR-110 | 11 | 11 | IR | PIPE | CON | R09 | S01 | IR | IR | ML | PL | LM | ML |
| CO-R09.S01-IR-140 |  | Trench Backfilling and Compaction Works for Main Lines of Irrigation Network-[Road 09] -[SW-1] | 10d | 2026-04-09 A | 2026-04-19 A | CO-R09.S01-IR-110 | 100% |  | 2025-12-17 | 2025-12-28 |  |  | Skilled Labor/Surveyor [9.12 h]; Foreman [9.12 h]; Excavator [80 h]; 125 mm pipe; depth 0.0m - 1.5m [407.27] | 30,929.64 | 30,929.64 | CO-R09.S01-IR-140 | 11 | 11 | IR | BACK | CON | R09 | S01 | IR | IR | ML | BF | LM | ML |
| CO-R09.S01-IR-120 |  | Installation Works for Main Line Valves of Irrigation Network-[Road 09] -[SW-1] | 7d | 2026-11-24 | 2026-12-01 | CO-R09.S01-IR-110, PRO-IR-1DL-110, PRO-R09-IR-DL-110 FF+3d |  |  |  |  | -29d | 111d | Labor/Helper [687.94 h]; Skilled Labor/Surveyor [27.24 h]; Foreman [27.24 h]; Plumber [508.44 h]; Gate valves dia (90)mm on pipes with dia (125) mm. [31.1]; Wash out valve with dia (100)mm on pipes with dia (125) mm [3.01]; Wash out chamber; on 125 mm dia pipeline Depth 1.5 - 3m [3.01] | 178,429.81 |  | CO-R09.S01-IR-120 | 11 | 11 | IR | VALV | CON | R09 | S01 | IR | IR | ML | VI | Each | ML |

| ID | WBS | Activity | Duration | Start | Finish | Predecessors | Complete | Remaining | Planned start | Planned finish | Total float | Free float | Resources | Cost | Actual cost | Activity ID N | Seq | New Seq | 02- Network-WBS | 03- Activity | 04-UOM | 05-Discipline | 01- Network | 07-Weightage System | 08 Stage | 09 Roads | 10 side Walk | Discipline | New Discipline |
| --- | --- | --- | --- | --- | --- | --- | --- | --- | --- | --- | --- | --- | --- | --- | --- | --- | --- | --- | --- | --- | --- | --- | --- | --- | --- | --- | --- | --- | --- |
|  | SL | **Street Lighting Network** |  | 2026-11-24 | 2027-06-01 |  |  |  |  |  |  |  |  |  |  |  |  |  |  |  |  |  |  |  |  |  |  |  |  |
|  | LP | **Lighting Poles Works** |  | 2026-11-24 | 2027-02-10 |  |  |  |  |  |  |  |  |  |  |  |  |  |  |  |  |  |  |  |  |  |  |  |  |
| CO-R09.S01-SL-100 |  | Foundation Excavation Works for Lighting Poles of Street Lighting Network-[Road 09] -[SW-1] | 10d | 2026-11-24 | 2026-12-05 | CO-R09.S01-EW-110, ENG-SH-SL-A-110, CO-R09.S01-EW-100, PRO-SL-1DL-110, ENG-MS-SL-A-110, CO-R09.S01-IR-100 SS+3d, CO-R09.S01-IR-140 |  |  |  |  | -215.5d | 0d | Labor/Helper [108.61 h]; Skilled Labor/Surveyor [86.65 h]; Excavator [160 h]; Lighting poles with one arm, including the power distribution box, screws, cables, 12 meters in height. [3.01] | 5,849.15 |  | CO-R09.S01-SL-100 | 11 | 11 | LP | Ex | Each | POL | SL | EX | CON | R09 | S01 | SL | SL |
| CO-R09.S01-SL-110 |  | Installation Works for Lighting Poles Foundation of Street Lighting Network-[Road 09] -[SW-1] | 12d | 2026-12-06 | 2026-12-19 | PRO-SL-1DL-110, CO-R09.S01-SL-100, MS-CS-SL |  |  |  |  | -215.5d | 0d | Labor/Helper [215.34 h]; Skilled Labor/Surveyor [11.22 h]; Foreman [11.22 h]; Eq. Operator [11.22 h]; Loader [24 h]; Reinforced concrete foundation, for 12m high lighting columns With Drawpits [69.22] | 25,714.63 |  | CO-R09.S01-SL-110 | 11 | 11 | LP | LPF | Each | POL | SL | INSTALL | CON | R09 | S01 | SL | SL |
| CO-R09.S01-SL-120 |  | Installation Works for Lighting Poles of Street Lighting Network-[Road 09] -[SW-1] | 11d | 2027-01-10 | 2027-01-21 | PRO-SL-1DL-120, CO-R09.S01-SL-160, CO-R09.S01-SL-110 |  |  |  |  | -215.5d | 0d | Labor/Helper [98.7 h]; Electrician [98.7 h]; Lighting poles with one arm, including the power distribution box, screws, cables, 12 meters in height. [38.12] | 74,093.7 |  | CO-R09.S01-SL-120 | 11 | 11 | LP | LP | Each | POL | SL | POLES | CON | R09 | S01 | SL | SL |
| CO-R09.S01-SL-210 |  | Backfilling Works for Lighting Poles of Street Lighting Network-[Road 09] -[SW-1] | 12d | 2027-01-23 | 2027-02-04 | CO-R09.S01-SL-120, CO-R09.S01-SL-120 FF, CO-R10.S04-ES-SL-210 |  |  |  |  | -215.5d | 0d | Labor/Helper [107.67 h]; Skilled Labor/Surveyor [53.84 h]; Excavator [96 h]; Lighting poles with one arm, including the power distribution box, screws, cables, 12 meters in height. [14.04] | 27,297.41 |  | CO-R09.S01-SL-210 | 11 | 11 |  |  |  |  | SL | BACK | CON | R09 | S01 | SL | SL |
| CO-R09.S01-SL-130 |  | Installation Works for Lighting Fixtures With Drop Wire of Street Lighting Network-[Road 09] -[SW-1] | 12d | 2027-01-28 | 2027-02-10 | PRO-SL-1DL-140, CO-R09.S01-SL-120, CO-R09.S01-SL-200 FF |  |  |  |  | -192.5d | 23d | Labor/Helper [107.67 h]; Electrician [107.67 h]; Manlift [96 h]; Street Lighting( LED) Luminaire,(Type C) complete with control gear and lamp, ?.17000 Lumen [69.22] | 42,335.9 |  | CO-R09.S01-SL-130 | 11 | 11 | LP | LPA | Each | POL | SL | INSTALL | CON | R09 | S01 | SL | SL |
| CO-R09.S01-SL-200 |  | Testing Works for Lighting Poles of Street Lighting Network-[Road 09] -[SW-1] | 5d | 2027-02-06 | 2027-02-10 | CO-R09.S01-SL-210, CO-R09.S01-SL-120 |  |  |  |  | -192.5d | 0d | Labor/Helper [44.86 h]; Electrician [44.86 h]; Lighting poles with one arm, including the power distribution box, screws, cables, 12 meters in height. [14.04] | 27,297.41 |  | CO-R09.S01-SL-200 | 11 | 11 |  |  |  |  | SL | TESTING | CON | R09 | S01 | SL | SL |
|  | CW | **Cabling Works** |  | 2026-12-06 | 2027-01-09 |  |  |  |  |  |  |  |  |  |  |  |  |  |  |  |  |  |  |  |  |  |  |  |  |
| CO-R09.S01-SL-140 |  | Trench Excavation and Bedding Works for Street Lighting Network-[Road 09] -[SW-1] | 10d | 2026-12-06 | 2026-12-16 | ENG-SH-SL-A-110, CO-R09.S01-SL-110 SS, ENG-MS-SL-A-110 |  |  |  |  | -215.5d | 0d | Labor/Helper [89.73 h]; Skilled Labor/Surveyor [44.86 h]; Excavator [80 h] |  |  | CO-R09.S01-SL-140 | 11 | 11 | CW | Ex | LM | CB | SL | EXC | CON | R09 | S01 | SL | SL |
| CO-R09.S01-SL-150 |  | Cable Laying Works for Street Lighting Network-[Road 09] -[SW-1] | 10d | 2026-12-17 | 2026-12-28 | PRO-SL-1DL-100, CO-R09.S01-SL-140 |  |  |  |  | -215.5d | 0d | Labor/Helper [89.73 h]; Electrician [89.73 h]; Low Current Technician [89.73 h]; Supply, installation , test and operation of cables, Copper, (4Cx25mmï¿½,Cu/XLPE/SWA/PVC +1x16mmï¿½ PVC/PVC) [2654.29] | 127,119.01 |  | CO-R09.S01-SL-150 | 11 | 11 | CW | CL | LM | CB | SL | LAYING | CON | R09 | S01 | SL | SL |
| CO-R09.S01-SL-160 |  | Trench Backfilling and Compaction Works for Street Lighting Network-[Road 09] -[SW-1] | 10d | 2026-12-29 | 2027-01-09 | CO-R09.S01-SL-150, CO-R09.S01-IR-140 |  |  |  |  | -215.5d | 0d | Skilled Labor/Surveyor [8.97 h]; Foreman [8.97 h]; Excavator [80 h]; Water Tank [20 h]; Supply, installation , test and operation of cables, Copper, (4Cx25mmï¿½,Cu/XLPE/SWA/PVC +1x16mmï¿½ PVC/PVC) [204.64] | 9,801.01 |  | CO-R09.S01-SL-160 | 11 | 11 | CW | BF | LM | CB | SL | BACK | CON | R09 | S01 | SL | SL |
|  | DPB | **Distrubution Panel Boards** |  | 2027-04-12 | 2027-06-01 |  |  |  |  |  |  |  |  |  |  |  |  |  |  |  |  |  |  |  |  |  |  |  |  |
| CO-R09.S01-SL-170 |  | Foundation Excavation Works For Panel Boards of Street Lighting Network-[Road 09] -[SW-1] | 15d | 2027-04-12 | 2027-04-28 | CO-R09-SL-ES-100, CO-R09.S01-EW-110, ENG-SH-SL-A-110, ENG-MS-SL-A-110 |  |  |  |  | -215.5d | 0d | Labor/Helper [134.59 h]; Skilled Labor/Surveyor [67.29 h]; Excavator [120 h] |  |  | CO-R09.S01-SL-170 | 11 | 11 | DB | Ex | Each | DS | SL | EXC | CON | R09 | S01 | SL | SL |
| CO-R09.S01-SL-180 |  | Installation Works for Panel Board Concrete Foundations of Street Lighting Network-[Road 09] -[SW-1] | 12d | 2027-04-29 | 2027-05-12 | CO-R09.S01-SL-170 |  |  |  |  | -215.5d | 0d | Skilled Labor/Surveyor [11.22 h]; Foreman [11.22 h]; Excavator [96 h]; Water Tank [24 h] |  |  | CO-R09.S01-SL-180 | 11 | 11 | DB | PBF | Each | DS | SL | INSTALL | CON | R09 | S01 | SL | SL |
| CO-R09.S01-SL-190 |  | Installation Works for Lighting Panel Boards of Street Lighting Network-[Road 09] -[SW-1] | 12d | 2027-05-13 | 2027-06-01 | CO-R09.S01-SL-180, PRO-SL-1DL-160 |  |  |  |  | -215.5d | 0d | Labor/Helper [107.67 h]; Electrician [107.67 h] |  |  | CO-R09.S01-SL-190 | 11 | 11 | DB | PB | Each | DS | SL | INST BO | CON | R09 | S01 | SL | SL |
| CO-R09.S01-SL-220 |  | A wall of concrete blocks to install the KWH meter of Street Lighting Network-[Road 09] -[SW-1] | 12d | 2027-05-13 | 2027-06-01 | CO-R09.S01-SL-180 |  |  |  |  | -215.5d | 0d | Block Mason [107.67 h]; Road crossing ducts, 4 way (4 x 100mm PVC) [151.47]; Drawpit with medium duty steel cover, size 900x900x1200mm, Type 4 [14.04] | 55,829.39 |  | CO-R09.S01-SL-220 | 11 | 11 | DB |  | Each | DS | SL | wall | CON | R09 | S01 | SL | SL |
|  | MV | **Medium Voltage Network** |  | 2026-09-30 | 2027-01-09 |  |  |  |  |  |  |  |  |  |  |  |  |  |  |  |  |  |  |  |  |  |  |  |  |
|  | CW | **Cabling Works** |  | 2026-09-30 | 2027-01-09 |  |  |  |  |  |  |  |  |  |  |  |  |  |  |  |  |  |  |  |  |  |  |  |  |
| CO-R09.S01-MV-100 |  | Trench Excavation and Bedding Works for Medium Voltage Network-[Road 09] -[SW-1] | 4d | 2026-09-30 A | 2027-01-09 | ENG-SH-MV-A-110, CO-R09.S01-SD-170 SS+3d, CO-R09.S01-SD-170 FF+3d, CO-R09.S01-EW-110, ENG-MS-MV-A-110, CO-R09.S01-SL-160 FF | 88% | 1d | 2026-02-14 | 2026-02-17 | -187d | 0d | Skilled Labor/Surveyor [7.15 h]; Foreman [8.65 h]; Excavator [32 h]; Excavation for Trench size 40cm wide and 80cm deep ( Maximum 1 cable 33kv) [1694.29]; Excavation for Trench size 60cm wide and 80cm deep ( for Max two cables 33 kv) [96.3]; Excavation for Trench size 90cm wide and 80cm deep ( Maximum 3 cable 33kv) [430.34]; Excavation for Trench size 120cm wide and 80cm deep ( Maximum 4cable 33kv) [146.46]; Excavation for Trench size 150cm wide and 80cm deep ( Maximum 4cable 33kv) [540.69]; Duct bank for (2) 33 kv cables [58.18]; Duct bank for (4) 33 kv cables [384.2]; Duct bank for (6) 33 kv cables [174.55] | 200,688.86 | 160,551.09 | CO-R09.S01-MV-100 | 11 | 11 | CW | Ex | LM | CW | MV | EXC | CON | R09 | S01 | MV | MV |
| CO-R09.S01-MV-110 |  | Cable Laying Works for Medium Voltage Network-[Road 09] -[SW-1] | 5d | 2026-10-07 A | 2027-01-09 | PRO-MV-1DL-100, CO-R09.S01-MV-100 FF, PRO-R09-MV-DL-100 FF+3d | 88% | 14d | 2026-02-18 | 2026-02-23 | -187d | 0d | Labor/Helper [45.4 h]; Electrician [169.64 h]; Low Current Technician [45.85 h]; 33kv 3Cx400 mmï¿½ Al XLPE / LLDPE /PVC Cable [7974.91]; 33kv 3Cx400 mmï¿½ Al XLPE /LLDPE/PVC [23.07] | 1,080,991.51 | 864,793.21 | CO-R09.S01-MV-110 | 11 | 11 | CW | CL | LM | CW | MV | LAY | CON | R09 | S01 | MV | MV |
| CO-R09.S01-MV-120 |  | Trench Backfilling and Compaction Works for Medium Voltage Network-[Road 09] -[SW-1] | 7d | 2026-10-13 A | 2027-01-09 | CO-R09.S01-MV-110 FF, CO-R09.S01-MV-110 SS | 88% | 14d | 2026-02-24 | 2026-03-03 | -187d | 3d | Skilled Labor/Surveyor [6.81 h]; Foreman [6.81 h]; Excavator [56 h]; Water Tank [14 h]; 33kv 3Cx400 mmï¿½ Al XLPE / LLDPE /PVC Cable [3417.68]; 33kv 3Cx400 mmï¿½ Al XLPE /LLDPE/PVC [10.03] | 463,525.99 | 370,820.79 | CO-R09.S01-MV-120 | 11 | 11 | CW | BF | LM | CW | MV | BACK | CON | R09 | S01 | MV | MV |
|  | TE | **Telecom Network** |  | 2027-01-13 | 2027-02-27 |  |  |  |  |  |  |  |  |  |  |  |  |  |  |  |  |  |  |  |  |  |  |  |  |
|  | PD | **Ducts Works** |  | 2027-01-13 | 2027-01-26 |  |  |  |  |  |  |  |  |  |  |  |  |  |  |  |  |  |  |  |  |  |  |  |  |
| CO-R09.S01-TE-100 |  | Trench Excavation and Bedding Works for Ducts of Telecom Network-[Road 09] -[SW-1] | 2d | 2027-01-13 | 2027-01-14 | ENG-SH-TE-A-110, CO-R09.S01-IR-140 SS+3d, CO-R09.S01-IR-140 FF+3d, CO-R09.S01-SL-160 SS+5d, CO-R09.S01-SL-160 FF+5d, CO-R09.S01-EW-110, ENG-MS-TE-A-110, CO-R09.S01-MV-120, CO-R10.S04-ES-TE-100 |  |  |  |  | -190d | 0d | Skilled Labor/Surveyor [2.24 h]; Foreman [2.24 h]; Excavator [16 h]; 6-way ducts, 50mm dia. HDPE [126.39]; Road crossing ducts (6-way) [11.03] | 19,182.32 |  | CO-R09.S01-TE-100 | 11 | 11 | PD | Ex | LM | DC | TE | DUCTS | CON | R09 | S01 | TE | TE |
| CO-R09.S01-TE-110 |  | Pipes Laying Works for Ducts of Telecom Network-[Road 09] -[SW-1] | 4d | 2027-01-16 | 2027-01-19 | PRO-TE-1DL-100, CO-R09.S01-TE-100, MS-CS-TE |  |  |  |  | -176d | 0d | Labor/Helper [143.56 h]; Skilled Labor/Surveyor [7.85 h]; Foreman [7.85 h]; Plumber [71.78 h]; Excavator [64 h]; JCB [32 h]; Truck [64 h]; 6-way ducts, 50mm dia. HDPE [759.37]; Road crossing ducts (6-way) [64.2] | 114,889.7 |  | CO-R09.S01-TE-110 | 11 | 11 | PD | PL | LM | DC | TE | DUCTS | CON | R09 | S01 | TE | TE |
| CO-R09.S01-TE-120 |  | Pouring Plain Concrete Above Ducts of Telecom Network-[Road 09] -[SW-1] | 2d | 2027-01-20 | 2027-01-21 | CO-R09.S01-TE-110 |  |  |  |  | -176d | 0d | Skilled Labor/Surveyor [2.24 h]; Foreman [2.24 h]; Cons. Carpenter [35.89 h]; Block Mason [17.95 h]; 6-way ducts, 50mm dia. HDPE [126.39]; Road crossing ducts (6-way) [11.03] | 19,182.32 |  | CO-R09.S01-TE-120 | 11 | 11 | PD | PC | LM | DC | TE | DUCTS | CON | R09 | S01 | TE | TE |
| CO-R09.S01-TE-130 |  | Trench Backfilling and Compaction Works for Ducts of Telecom Network-[Road 09] -[SW-1] | 4d | 2027-01-23 | 2027-01-26 | CO-R09.S01-TE-120 |  |  |  |  | -176d | 0d | Skilled Labor/Surveyor [4.49 h]; Foreman [4.49 h]; Excavator [32 h]; 6-way ducts, 50mm dia. HDPE [252.79]; Road crossing ducts (6-way) [21.07] | 38,194.11 |  | CO-R09.S01-TE-130 | 11 | 11 | PD | BF | LM | DC | TE | DUCTS | CON | R09 | S01 | TE | TE |

| ID | WBS | Activity | Duration | Start | Finish | Predecessors | Complete | Remaining | Planned start | Planned finish | Total float | Free float | Resources | Cost | Actual cost | Activity ID N | Seq | New Seq | 02- Network-WBS | 03- Activity | 04-UOM | 05-Discipline | 01- Network | 07-Weightage System | 08 Stage | 09 Roads | 10 side Walk | Discipline | New Discipline |
| --- | --- | --- | --- | --- | --- | --- | --- | --- | --- | --- | --- | --- | --- | --- | --- | --- | --- | --- | --- | --- | --- | --- | --- | --- | --- | --- | --- | --- | --- |
|  | MH | **Manholes Works** |  | 2027-01-16 | 2027-02-27 |  |  |  |  |  |  |  |  |  |  |  |  |  |  |  |  |  |  |  |  |  |  |  |  |
| CO-R09.S01-TE-140 |  | Excavation Works for Manholes of Telecom Network-[Road 09] -[SW-1] | 12d | 2027-01-16 | 2027-01-28 | ENG-SH-TE-A-110, ENG-MS-TE-A-110, CO-R09.S01-TE-100 |  |  |  |  | -190d | 0d | Skilled Labor/Surveyor [11.22 h]; Foreman [11.22 h]; Excavator [96 h]; Manhole Type 1 (2000x1000x1000) [1]; Manhole Type 2 (2000x1000x1000) [1] | 6,410.79 |  | CO-R09.S01-TE-140 | 11 | 11 | MH | Ex | Each | MNH | TE | EXC | CON | R09 | S01 | TE | TE |
| CO-R09.S01-TE-150 |  | Installation Works for Manholes of Telecom Network-[Road 09] -[SW-1] | 12d | 2027-01-30 | 2027-02-11 | PRO-TE-1DL-110, CO-R09.S01-TE-140 |  |  |  |  | -190d | 0d | Skilled Labor/Surveyor [11.22 h]; Foreman [11.22 h]; Excavator [96 h]; Manhole Type 1 (2000x1000x1000) [3.01]; Manhole Type 2 (2000x1000x1000) [6.02] | 28,889.38 |  | CO-R09.S01-TE-150 | 11 | 11 | MH | HH | Each | MNH | TE | INSTALL-1 | CON | R09 | S01 | TE | TE |
| CO-R09.S01-TE-160 |  | Backfilling Works for Manholes of Telecom Network-[Road 09] -[SW-1] | 12d | 2027-02-13 | 2027-02-27 | CO-R09.S01-TE-150, CO-R09.S01-TE-130 |  |  |  |  | -190d | 0d | Skilled Labor/Surveyor [11.22 h]; Foreman [11.22 h]; Excavator [96 h]; Manhole Type 1 (2000x1000x1000) [1]; Manhole Type 2 (2000x1000x1000) [1] | 6,410.79 |  | CO-R09.S01-TE-160 | 11 | 11 | MH | BF | Each | MNH | TE | (New)-2 | CON | R09 | S01 | TE | TE |
|  | RD | **Road Works** |  | 2026-06-10 | 2027-07-12 |  |  |  |  |  |  |  |  |  |  |  |  |  |  |  |  |  |  |  |  |  |  |  |  |
|  | RD | **Pre-Bituminous Construction** |  | 2026-06-10 | 2027-03-07 |  |  |  |  |  |  |  |  |  |  |  |  |  |  |  |  |  |  |  |  |  |  |  |  |
| CO-R09.S01-RD-P-100 |  | Capping and Subgrade Layer for Road Works-[Road 09] -[SW-1] | 21d | 2026-06-10 A | 2027-02-27 | ENG-SH-RD-A-100, PRO-RD-1DL-100, CO-R09.S01-SD-130, CO-R09.S01-SW-130, CO-R09.S01-SL-160 FF+3d, ENG-MS-RD-A-10, CO-R09.S01-MV-120 SS+3d, CO-R09.S01-MV-120 FF+3d, CO-R09.S01-TE-130 FF, CO-R09.S01-TE-160 FF, CO-R09.S02-SW-130 FF | 65% | 14d | 2026-06-21 | 2026-07-14 | -169d | 0d | Labor/Helper [1996.5 h]; Skilled Labor/Surveyor [998.25 h]; Loader [672 h]; Grader [672 h]; Road Roller [672 h]; Water Tank [672 h]; 300mm capping layer underneath subgrade , CBR?15% [9596.98]; 300mm thick Subgrade, including subgrade preparation, CBR?25% [9596.98] | 760,477.73 | 456,286.64 | CO-R09.S01-RD-P-100 | 11 | 11 | AB | SG | Sq.m | BS | RD |  | CON | R09 | S01 | RD | RD |
| CO-R09.S01-RD-P-110 |  | Aggregate Base Course Layer for Road Works-[Road 09] -[SW-1] | 21d | 2026-11-04 A | 2027-03-07 | PRO-RD-1DL-110, CO-R09.S01-RD-P-100 SS+3d, CO-R09.S01-RD-P-100 FF+3d, CO-R09.S01-SD-170 SS+3d, CO-R09.S01-SD-170 FF+3d, MS-CS-RD | 10% | 21d | 2027-02-18 | 2027-03-18 | -58d | 157.5d | Labor/Helper [401.76 h]; Skilled Labor/Surveyor [200.88 h]; Foreman [200.88 h]; Loader [336 h]; Grader [336 h]; Road Roller [336 h]; Aggregate base course 200mm thick after compaction in two layers(Grading 1); CBR?80%; including watering, compaction and testing [6398.99] | 529,738.44 |  | CO-R09.S01-RD-P-110 | 11 | 11 | AB | BA | Sq.m | BS | RD |  | CON | R09 | S01 | RD | RD |
|  | LS | **Pavement Works** |  | 2026-08-25 | 2027-07-12 |  |  |  |  |  |  |  |  |  |  |  |  |  |  |  |  |  |  |  |  |  |  |  |  |
| CO-R09.S01-RD-P-120 |  | Fixing of Curbstone for Sidewalks Pavement-[Road 09] -[SW-1] | 18d | 2026-08-25 A | 2026-08-31 A | PRO-RD-1DL-150, ENG-SH-HS-A-110, ENG-MS-HS-A-10, ENG-MT-RD-A-150 | 100% |  | 2026-07-19 | 2026-08-08 |  |  | Labor/Helper [1701.33 h]; Block Mason [5103.99 h]; Precast Concrete Kerb, Type K1 [3541.06]; Precast Concrete Kerb, Type L1 [7024.94] | 433,737.99 | 433,737.99 | CO-R09.S01-RD-P-120 | 11 | 11 | LS | CR | LM | LAND | RD |  | CON | R09 | S01 | RD | RD |
| CO-R09.S01-RD-P-130 |  | Fixing of Interlock Tiles for Sidewalks Pavement-[Road 09] -[SW-1] | 12d | 2027-06-28 | 2027-07-12 | PRO-RD-1DL-140, CO-R09.S01-RD-P-120, CO-R09-PW-TF-100, CO-R09-PW-TF-110, CO-R09-PW-TF-120, CO-R09-SW-TF-100, CO-R09-SW-TF-110, CO-R09-SW-TF-120, CO-R09-SD-TF-120, CO-R09-SD-TF-100, CO-R09-SL-TF-100, CO-R09-SL-TF-110, CO-R09-SL-ES-100, CO-R09-SL-ES-110, CO-R09-IR-TF-100, CO-R09-MV-TF-100 |  |  |  |  | -209.5d | 0d | Labor/Helper [970.92 h]; Block Mason [2912.75 h]; Interlocking block pavers for sidewalk/footpath 60mm thick on and including 30mm Sand Bedding, 200mm Aggregate subbase, all in accordance with authority standards and complete as per specifications [6322.75]; Extraover for Pedestrian ramps [16.05] | 310,002.05 |  | CO-R09.S01-RD-P-130 | 11 | 11 | LS | IL | Sq.m | LAND | RD |  | CON | R09 | S01 | RD | RD |
|  | SW_2 | **SW_2** |  | 2025-04-17 | 2027-07-19 |  |  |  |  |  |  |  |  |  |  |  |  |  |  |  |  |  |  |  |  |  |  |  |  |
|  | EW | **Earthworks** |  | 2025-04-17 | 2025-05-03 |  |  |  |  |  |  |  |  |  |  |  |  |  |  |  |  |  |  |  |  |  |  |  |  |
|  | EW | **Earthworks** |  | 2025-04-17 | 2025-05-03 |  |  |  |  |  |  |  |  |  |  |  |  |  |  |  |  |  |  |  |  |  |  |  |  |
| CO-R09.S02-EW-110 |  | Roadway Excavation Works Upto Design Level for Earthworks-[Road 09]-[SW-2] | 10d | 2025-04-17 A | 2025-04-26 A | CO-R09.S01-EW-100, ENG-MS-RD-A-10, ENG-SH-RD-A-100, CO-R09.S01-EW-100 FF | 100% |  | 2025-06-28 | 2025-07-08 |  |  | Labor/Helper [729.53 h]; Skilled Labor/Surveyor [91.19 h]; Foreman [91.19 h]; Water Tank [1152 h]; Dozer [1152 h]; Roadway Excavation for cuttings; on any type of material for all depths including trimming and Preparation of excavated surfaces and disposal. [45187.2] | 290,700.26 | 290,700.26 | CO-R09.S02-EW-110 | 12 | 12 | EW | Ex | Cub.m | EW | EW |  | CON | R09 | S02 | EW | EW |
| CO-R09.S02-EW-120 |  | Embankments Works Upto Design Level for Earthworks-[Road 09]-[SW-2] | 10d | 2025-04-17 A | 2025-05-03 A | CO-R09.S02-EW-110, ENG-MS-RD-A-10, ENG-SH-RD-A-100 | 100% |  | 2025-07-09 | 2025-07-20 |  |  | Labor/Helper [1185.49 h]; Skilled Labor/Surveyor [148.19 h]; Foreman [148.19 h]; Water Tank [1248 h]; Dozer [1248 h]; Embankments to the ROW, with suitable material other than top soil or rock according to specifications [76067.6] | 629,180.17 | 629,180.17 | CO-R09.S02-EW-120 | 12 | 12 | EW | BF | Cub.m | EW | EW |  | CON | R09 | S02 | EW | EW |
|  | SW | **Sewage Network** |  | 2025-11-10 | 2026-11-24 |  |  |  |  |  |  |  |  |  |  |  |  |  |  |  |  |  |  |  |  |  |  |  |  |
|  | ML | **Main Line Sections** |  | 2025-11-10 | 2026-11-24 |  |  |  |  |  |  |  |  |  |  |  |  |  |  |  |  |  |  |  |  |  |  |  |  |
| CO-R09.S02-SW-100 |  | Trench Excavation and Bedding Works for Main Lines of Sewage Network-[Road 09]-[SW-2] | 12d | 2025-11-10 A | 2026-11-24 | CO-R09.S02-EW-120, ENG-MS-SW-ML-A-110, ENG-SH-SW-ML-A-110, CO-R09.S01-SW-100 | 98% | 1d | 2025-07-21 | 2025-08-03 | -196.5d | 0d | Skilled Labor/Surveyor [122.24 h]; Foreman [137.86 h]; Nominal bore : 200mm; Depth : 0.0m - 1.5m [16.05]; Nominal bore : 200mm; Depth : 1.5m - 2.5m [42.13]; Nominal bore : 200mm; Depth : 2.5m - 3.5m [62.19]; Nominal bore : 200mm; Depth : 3.5m - 4.5m [72.23]; Nominal bore : 200mm; Depth : 4.5m -5.5m [35.11]; Nominal bore : 200mm; Depth : 5.5m - 6.5m [41.13] | 82,516.15 | 80,865.83 | CO-R09.S01-SW-100 | 12 | 12 | ML | Ex | LM | ML | SW | EX | CON | R09 | S02 | SW | SW |
| CO-R09.S02-SW-120 |  | Pipes Laying Works for Main Lines of Sewage Network-[Road 09]-[SW-2] | 12d | 2026-02-15 A | 2026-11-24 | CO-R09.S02-SW-100 FF, CO-R09.S02-SW-100 SS | 98% | 1d | 2025-08-04 | 2025-08-17 | -196.5d | 0d | Labor/Helper [2222.66 h]; Skilled Labor/Surveyor [188.62 h]; Foreman [206 h]; Plumber [1312.49 h]; Nominal bore : 200mm; Depth : 0.0m - 1.5m [47.15]; Nominal bore : 200mm; Depth : 1.5m - 2.5m [127.4]; Nominal bore : 200mm; Depth : 2.5m - 3.5m [187.59]; Nominal bore : 200mm; Depth : 3.5m - 4.5m [216.68]; Nominal bore : 200mm; Depth : 4.5m -5.5m [108.34]; Nominal bore : 200mm; Depth : 5.5m - 6.5m [139.44] | 275,030.69 | 269,530.08 | CO-R09.S01-SW-120 | 12 | 12 | ML | PL | LM | ML | SW | PIPE | CON | R09 | S02 | SW | SW |
| CO-R09.S02-SW-130 |  | Trench Backfilling and Compaction Works for Main Lines of Sewage Network-[Road 09]-[SW-2] | 12d | 2026-05-02 A | 2026-11-24 | CO-R09.S02-SW-120 FF, CO-R09.S02-SW-210 FF, CO-R09.S02-SW-120 SS, CO-R09.S02-SW-210 SS | 98% | 1d | 2025-08-18 | 2025-08-31 | -196.5d | 0d | Skilled Labor/Surveyor [579.69 h]; Foreman [649.77 h]; Nominal bore : 200mm; Depth : 0.0m - 1.5m [8.03]; Nominal bore : 200mm; Depth : 1.5m - 2.5m [21.07]; Nominal bore : 200mm; Depth : 2.5m - 3.5m [31.1]; Nominal bore : 200mm; Depth : 3.5m - 4.5m [37.12]; Nominal bore : 200mm; Depth : 4.5m -5.5m [18.06]; Nominal bore : 200mm; Depth : 5.5m - 6.5m [41.13] | 41,718.1 | 40,883.74 | CO-R09.S01-SW-130 | 12 | 12 | ML | BF | LM | ML | SW | BACK | CON | R09 | S02 | SW | SW |
|  | MH | **Manholes** |  | 2026-05-02 | 2026-11-24 |  |  |  |  |  |  |  |  |  |  |  |  |  |  |  |  |  |  |  |  |  |  |  |  |
| CO-R09.S02-SW-160 |  | Excavation Works for Main Line Manholes of Sewage Network-[Road 09]-[SW-2] | 1d | 2026-05-02 A | 2026-05-10 A | CO-R09.S02-SW-100 SS, CO-R09.S02-SW-120 SS | 100% |  | 2025-08-04 | 2025-08-04 |  |  | Labor/Helper [410.45 h]; Skilled Labor/Surveyor [58.63 h]; Depth: 1.5 - 2.5m [0.45]; Depth: 3.5 - 4.5m [0.15]; Depth: 4.5 - 5.5m [0.15]; Depth:6.5 - 7.5m [0.3] | 15,492.9 | 15,492.9 | CO-R09.S01-SW-160 | 12 | 12 |  |  |  |  | SW | EX | CON | R09 | S02 | SW | SW |
| CO-R09.S02-SW-170 |  | Installation RC Footing Works for Main Line Manholes of Sewage Network-[Road 09]-[SW-2] | 3d | 2026-05-02 A | 2026-05-10 A | CO-R09.S02-SW-160 | 100% |  | 2025-08-05 | 2025-08-07 |  |  | Cons. Carpenter [437.04 h]; Steel Fixer [159.01 h]; Depth: 1.5 - 2.5m [0.3]; Depth: 3.5 - 4.5m [0.1]; Depth: 4.5 - 5.5m [0.1]; Depth:6.5 - 7.5m [0.2] | 10,327.92 | 10,327.92 | CO-R09.S01-SW-170 | 12 | 12 |  |  |  |  | SW | RC F | CON | R09 | S02 | SW | SW |
| CO-R09.S02-SW-180 |  | Install Grp Liner Wall Works for Main Line Manholes of Sewage Network-[Road 09]-[SW-2] | 6d | 2026-05-02 A | 2026-05-10 A | CO-R09.S02-SW-170 | 100% |  | 2025-08-09 | 2025-08-14 |  |  | Labor/Helper [410.45 h]; Plumber [364.26 h]; Depth: 1.5 - 2.5m [1]; Depth: 3.5 - 4.5m [0.4]; Depth: 4.5 - 5.5m [0.4]; Depth:6.5 - 7.5m [1] | 45,659.75 | 45,659.75 | CO-R09.S01-SW-180 | 12 | 12 |  |  |  |  | SW | LP | CON | R09 | S02 | SW | SW |
| CO-R09.S02-SW-190 |  | Pouring Grp Liner Wall Works for Main Line Manholes of Sewage Network-[Road 09]-[SW-2] | 3d | 2026-07-01 A | 2026-07-05 A | CO-R09.S02-SW-180 | 100% |  | 2025-08-16 | 2025-08-18 |  |  | Cons. Carpenter [282.79 h]; Steel Fixer [102.89 h]; Depth: 1.5 - 2.5m [0.15]; Depth: 3.5 - 4.5m [0.05]; Depth: 4.5 - 5.5m [0.05]; Depth:6.5 - 7.5m [0.1] | 5,164.98 | 5,164.98 | CO-R09.S01-SW-190 | 12 | 12 |  |  |  |  | SW | (New) | CON | R09 | S02 | SW | SW |
| CO-R09.S02-SW-200 |  | Backfilling Works for Main Line Manholes of Sewage Network-[Road 09]-[SW-2] | 5d | 2026-07-05 A | 2026-07-06 A | CO-R09.S02-SW-190 | 100% |  | 2025-08-19 | 2025-08-24 |  |  | Labor/Helper [256.53 h]; Skilled Labor/Surveyor [36.64 h]; Depth: 1.5 - 2.5m [0.45]; Depth: 3.5 - 4.5m [0.15]; Depth: 4.5 - 5.5m [0.15]; Depth:6.5 - 7.5m [0.3] | 15,492.9 | 15,492.9 | CO-R09.S01-SW-200 | 12 | 12 |  |  |  |  | SW | BACK | CON | R09 | S02 | SW | SW |
| CO-R09.S02-SW-210 |  | Testing Works for Main Line Manholes of Sewage Network-[Road 09]-[SW-2] | 1d | 2026-11-04 A | 2026-11-24 | CO-R09.S02-SW-200 | 50% | 1d | 2026-11-10 | 2026-11-10 | -196.5d | 0d | Labor/Helper [8.97 h]; Plumber [8.97 h]; Depth: 1.5 - 2.5m [0.15]; Depth: 3.5 - 4.5m [0.05]; Depth: 4.5 - 5.5m [0.05]; Depth:6.5 - 7.5m [0.1] | 5,164.98 |  | CO-R09.S01-SW-210 | 12 | 12 |  |  |  |  | SW | T&COV | CON | R09 | S02 | SW | SW |

| ID | WBS | Activity | Duration | Start | Finish | Predecessors | Complete | Remaining | Planned start | Planned finish | Total float | Free float | Resources | Cost | Actual cost | Activity ID N | Seq | New Seq | 02- Network-WBS | 03- Activity | 04-UOM | 05-Discipline | 01- Network | 07-Weightage System | 08 Stage | 09 Roads | 10 side Walk | Discipline | New Discipline |
| --- | --- | --- | --- | --- | --- | --- | --- | --- | --- | --- | --- | --- | --- | --- | --- | --- | --- | --- | --- | --- | --- | --- | --- | --- | --- | --- | --- | --- | --- |
|  | SD | **Storm Drainage Network** |  | 2025-12-25 | 2026-12-10 |  |  |  |  |  |  |  |  |  |  |  |  |  |  |  |  |  |  |  |  |  |  |  |  |
|  | ML | **Main Line Sections** |  | 2025-12-25 | 2026-10-07 |  |  |  |  |  |  |  |  |  |  |  |  |  |  |  |  |  |  |  |  |  |  |  |  |
| CO-R09.S02-SD-100 |  | Trench Excavation and Bedding Works for Main Lines of Storm Drainage Network-[Road 09]-[SW-2] | 10d | 2025-12-25 A | 2025-12-29 A | CO-R09.S02-EW-120, CO-R09.S02-EW-110, CO-R09.S02-SW-130 SS+3d, CO-R09.S01-SD-100 | 100% |  | 2025-09-20 | 2025-10-01 |  |  | Skilled Labor/Surveyor [476.37 h]; Foreman [476.37 h]; Excavator [112 h]; Pipe with diameter 400mm ; depth: 1.51m - 2.5m [27.08]; Pipe with diameter 1100mm ; depth: 1.51m - 2.5m [95.3]; Pipe with diameter 1100mm ; depth: 2.51 - 3.5m [24.08]; Pipe with diameter 1200mm ; depth: 1.51m - 2.5m [44.14] | 150,151.07 | 150,151.07 | CO-R09.S02-SD-100 | 12 | 12 | ML | Ex | LM | ML | SD | EX | CON | R09 | S02 | SD | SD |
| CO-R09.S02-SD-120 |  | Pipes Laying Works for Main Lines of Storm Drainage Network-[Road 09]-[SW-2] | 10d | 2025-12-27 A | 2025-12-29 A | PRO-R09-SD-DL-120 FF+3d, CO-R09.S02-SD-100, CO-R09.S01-SD-120 | 100% |  | 2025-10-02 | 2025-10-13 |  |  | Labor/Helper [2296.8 h]; Skilled Labor/Surveyor [114.84 h]; Foreman [114.84 h]; Plumber [1148.4 h]; Excavator [240 h]; Pipe with diameter 400mm ; depth: 1.51m - 2.5m [79.25]; Pipe with diameter 1100mm ; depth: 1.51m - 2.5m [283.89]; Pipe with diameter 1100mm ; depth: 2.51 - 3.5m [74.23]; Pipe with diameter 1200mm ; depth: 1.51m - 2.5m [132.41] | 450,092.74 | 450,092.74 | CO-R09.S02-SD-120 | 12 | 12 | ML | PL | LM | ML | SD | PIPE | CON | R09 | S02 | SD | SD |
| CO-R09.S02-SD-130 |  | Trench Backfilling and Compaction Works for Main Lines of Storm Drainage Network-[Road 09]-[SW-2] | 15d | 2026-01-22 A | 2026-10-07 A | CO-R09.S02-SD-120 | 100% |  | 2025-10-16 | 2025-11-02 |  |  | Skilled Labor/Surveyor [476.37 h]; Foreman [476.37 h]; Excavator [120 h]; Pipe with diameter 400mm ; depth: 1.51m - 2.5m [13.04]; Pipe with diameter 1100mm ; depth: 1.51m - 2.5m [47.15]; Pipe with diameter 1100mm ; depth: 2.51 - 3.5m [13.04]; Pipe with diameter 1200mm ; depth: 1.51m - 2.5m [23.07] | 76,383.12 | 76,383.12 | CO-R09.S02-SD-130 | 12 | 12 | ML | BF | LM | ML | SD | BACK | CON | R09 | S02 | SD | SD |
|  | MH | **Manholes** |  | 2026-03-01 | 2026-12-10 |  |  |  |  |  |  |  |  |  |  |  |  |  |  |  |  |  |  |  |  |  |  |  |  |
| CO-R09.S02-SD-180 |  | Trench Excavation and Bedding Works for Manholes of Storm Drainage Network-[Road 09]-[SW-2] | 1d | 2026-03-01 A | 2026-03-09 A | CO-R09.S02-SD-120 SS, PRO-SD-1DL-100, CO-R09.S01-SD-220 | 100% |  | 2025-10-15 | 2025-10-15 |  |  | Labor/Helper [45.37 h]; Skilled Labor/Surveyor [22.68 h]; Excavator [8 h]; MH ; depth: 0.0m - 1.5m [0.45]; MH ; depth: 1.51m - 2.5m [1]; MH ; depth: 2.51 - 3.5m [0.3]; MH ; depth: 0.0m - 1.5m [0.3]; MH ; depth: 2.51 - 3.5m [0.15]; MH ; depth: 2.51 - 3.5m [1] | 70,970 | 70,970 | CO-R09.S02-SD-180 | 12 | 12 |  |  |  |  | SD | EX | CON | R09 | S02 | SD | SD |
| CO-R09.S02-SD-190 |  | Install RC Footing Works for Manholes of Storm Drainage Network-[Road 09]-[SW-2] | 2d | 2026-03-01 A | 2026-03-09 A | CO-R09.S02-SD-180 | 100% |  | 2025-10-16 | 2025-10-18 |  |  | Cons. Carpenter [170.13 h]; Steel Fixer [170.13 h]; MH ; depth: 0.0m - 1.5m [0.15]; MH ; depth: 1.51m - 2.5m [0.4]; MH ; depth: 2.51 - 3.5m [0.1]; MH ; depth: 0.0m - 1.5m [0.1]; MH ; depth: 2.51 - 3.5m [0.05]; MH ; depth: 1.51m - 2.5m [0.2]; MH ; depth: 2.51 - 3.5m [0.2] | 19,602.02 | 19,602.02 | CO-R09.S02-SD-190 | 12 | 12 |  |  |  |  | SD | RC F | CON | R09 | S02 | SD | SD |
| CO-R09.S02-SD-200 |  | Install RC Wall Rings & Slab Works for Manholes of Storm Drainage Network-[Road 09]-[SW-2] | 4d | 2026-03-01 A | 2026-03-09 A | CO-R09.S02-SD-190 | 100% |  | 2025-10-19 | 2025-10-22 |  |  | Cons. Carpenter [136.11 h]; Steel Fixer [136.11 h]; MH ; depth: 0.0m - 1.5m [1]; MH ; depth: 1.51m - 2.5m [6.02]; MH ; depth: 2.51 - 3.5m [1]; MH ; depth: 2.51 - 3.5m [0.45]; MH ; depth: 1.51m - 2.5m [3.01]; MH ; depth: 2.51 - 3.5m [3.01] | 265,106.13 | 265,106.13 | CO-R09.S02-SD-200 | 12 | 12 |  |  |  |  | SD | RC W | CON | R09 | S02 | SD | SD |
| CO-R09.S02-SD-220 |  | Backfilling Works for Manholes of Storm Drainage Network-[Road 09]-[SW-2] | 7d | 2026-03-05 A | 2026-12-10 | CO-R09.S02-SD-210 FF, CO-R09.S02-SD-210 SS | 95% | 0d | 2025-10-26 | 2025-11-02 | -1d | 0d | Labor/Helper [108.41 h]; Skilled Labor/Surveyor [54.2 h]; Excavator [56 h]; MH ; depth: 0.0m - 1.5m [1]; MH ; depth: 1.51m - 2.5m [3.01]; MH ; depth: 2.51 - 3.5m [0.4]; MH ; depth: 0.0m - 1.5m [0.4]; MH ; depth: 2.51 - 3.5m [0.2]; MH ; depth: 1.51m - 2.5m [1]; MH ; depth: 2.51 - 3.5m [1] | 112,725.88 | 112,725.88 | CO-R09.S02-SD-220 | 12 | 12 |  |  |  |  | SD | BACK | CON | R09 | S02 | SD | SD |
| CO-R09.S02-SD-210 |  | Testing Works for Manholes of Storm Drainage Network-[Road 09]-[SW-2] | 2d | 2026-09-25 A | 2026-12-09 | CO-R09.S02-SD-200 | 95% | 14d | 2025-10-23 | 2025-10-25 | -1d | 0d | Labor/Helper [18.16 h]; Plumber [18.16 h]; MH ; depth: 0.0m - 1.5m [0.3]; MH ; depth: 1.51m - 2.5m [1]; MH ; depth: 2.51 - 3.5m [0.2]; MH ; depth: 0.0m - 1.5m [0.2]; MH ; depth: 2.51 - 3.5m [0.1]; MH ; depth: 1.51m - 2.5m [0.4]; MH ; depth: 2.51 - 3.5m [0.4] | 42,635.1 | 38,371.59 | CO-R09.S02-SD-210 | 12 | 12 |  |  |  |  | SD | T&COV | CON | R09 | S02 | SD | SD |
|  | CB | **Catch Basin Sections** |  | 2026-06-24 | 2026-12-10 |  |  |  |  |  |  |  |  |  |  |  |  |  |  |  |  |  |  |  |  |  |  |  |  |
| CO-R09.S02-SD-140 |  | Trench Excavation and Bedding Works for Catch Basins of Storm Drainage Network-[Road 09]-[SW-2] | 6d | 2026-06-24 A | 2026-12-10 | CO-R09.S02-EW-120, CO-R09.S02-SD-220 FF, CO-R09.S01-SD-140 FF | 95% | 1d | 2025-11-03 | 2025-11-09 | -1d | 0d | Skilled Labor/Surveyor [136.08 h]; Foreman [136.08 h]; Excavator [48 h]; Pipe with diameter 300mm ; depth: 0 - 1.5m [239.75]; Pipe with diameter 400mm ; depth: 0 - 1.5m [14.04] | 60,189.71 | 54,170.74 | CO-R09.S02-SD-140 | 12 | 12 | CB | Ex | Each | CB | SD | EX | CON | R09 | S02 | SD | SD |
| CO-R09.S02-SD-150 |  | Installation and Pipes Laying Connection Works for Catch Basins of Storm Drainage Network-[Road 09]-[SW-2] | 7d | 2026-06-25 A | 2026-12-09 | CO-R09.S02-SD-140 FF, PRO-R09-SD-DL-130 FF+3d, CO-R09.S02-SD-140 SS, PRO-R09-SD-DL-130 SS | 95% | 1d | 2025-11-30 | 2025-12-07 | -1d | 0d | Labor/Helper [576.2 h]; Skilled Labor/Surveyor [51.01 h]; Foreman [54.81 h]; Excavator [112 h]; Pipe with diameter 300mm ; depth: 0 - 1.5m [718.24]; Pipe with diameter 400mm ; depth: 0 - 1.5m [44.14] | 180,967.37 | 162,870.63 | CO-R09.S02-SD-150 | 12 | 12 | CB | CB | Each | CB | SD | INSTALL | CON | R09 | S02 | SD | SD |
| CO-R09.S02-SD-170 |  | Trench Backfilling and Compaction Works for Catch Basins of Storm Drainage Network-[Road 09]-[SW-2] | 7d | 2026-06-28 A | 2026-12-09 | CO-R09.S02-SD-160 FF, CO-R09.S02-SD-160 SS | 95% | 1d | 2025-12-13 | 2025-12-20 | -1d | 75d | Skilled Labor/Surveyor [136.19 h]; Foreman [136.19 h]; Excavator [56 h]; Pipe with diameter 300mm ; depth: 0 - 1.5m [319]; Pipe with diameter 400mm ; depth: 0 - 1.5m [20.06] | 80,517.76 | 72,465.98 | CO-R09.S02-SD-170 | 12 | 12 | CB | BF | Each | CB | SD | BACK | CON | R09 | S02 | SD | SD |
| CO-R09.S02-SD-160 |  | Testing Works for Catch Basins of Storm Drainage Network-[Road 09]-[SW-2] | 4d | 2026-07-17 A | 2026-12-09 | CO-R09.S02-SD-150 FF, CO-R09.S02-SD-120, PRO-R09-SD-DL-110 FF+3d | 95% | 2d | 2025-12-08 | 2025-12-11 | -1d | 0d | Labor/Helper [72.63 h]; Skilled Labor/Surveyor [4.54 h]; Foreman [4.54 h]; Plumber [36.32 h]; Excavator [32 h]; Pipe with diameter 300mm ; depth: 0 - 1.5m [158.5]; Pipe with diameter 400mm ; depth: 0 - 1.5m [10.03] | 40,026.06 | 36,023.45 | CO-R09.S02-SD-160 | 12 | 12 | CB | PL | Each | CB | SD | TEST | CON | R09 | S02 | SD | SD |
|  | PW | **Potable Water Network** |  | 2026-06-27 | 2026-12-13 |  |  |  |  |  |  |  |  |  |  |  |  |  |  |  |  |  |  |  |  |  |  |  |  |
|  | ML | **Main Line Sections** |  | 2026-06-27 | 2026-12-13 |  |  |  |  |  |  |  |  |  |  |  |  |  |  |  |  |  |  |  |  |  |  |  |  |
| CO-R09.S02-PW-100 |  | Trench Excavation and Bedding Works for Main Lines of Potable Water Network-[Road 09]-[SW-2] | 7d | 2026-06-27 A | 2026-11-24 | CO-R09.S02-EW-120, CO-R09.S02-EW-110, CO-R09.S02-SD-130 | 98% | 1d | 2025-11-03 | 2025-11-10 | -196.5d | 0d | Skilled Labor/Surveyor [474.62 h]; Foreman [474.62 h]; Excavator [56 h]; Pipe with diameter 160 mm; in depth 1.5m - 3.0m [14.04]; Pipe with diameter 200mm; in depth 0.0m - 1.5m [722.26]; Pipe with diameter 200mm; in depth 1.5m - 3.0m [28.09] | 113,638.79 | 107,956.85 | CO-R09.S02-PW-100 | 12 | 12 | ML | Ex | LM | ML | PW | EX | CON | R09 | S02 | PW | PW |
| CO-R09.S02-PW-110 |  | Pipes Laying and accessories for Main Lines of Potable Water Network-[Road 09]-[SW-2] | 8d | 2026-06-30 A | 2026-11-29 | CO-R09.S02-PW-100 FF, PRO-R09-PW-DL-100 FF+3d, PRO-R09-PW-DL-110 FF+3d, MS-CS-PW | 98% | 5d | 2025-12-10 | 2025-12-18 | -184.5d | 12d | Labor/Helper [1653.58 h]; Skilled Labor/Surveyor [83.97 h]; Foreman [83.97 h]; Plumber [826.79 h]; Excavator [128 h]; Pipe with diameter 160 mm; in depth 1.5m - 3.0m [35.11]; Pipe with diameter 200mm; in depth 0.0m - 1.5m [830.59]; Pipe with diameter 200mm; in depth 1.5m - 3.0m [71.22] | 139,503.53 | 125,553.18 | CO-R09.S02-PW-110 | 12 | 12 | ML | PL | LM | ML | PW | PIPE | CON | R09 | S02 | PW | PW |
| CO-R09.S02-PW-130 |  | Trench Backfilling and Compaction Works for Main Lines of Potable Water Network-[Road 09]-[SW-2] | 8d | 2026-07-01 A | 2026-12-13 | CO-R09.S02-PW-110 FF, CO-R09.S02-PW-160 FF, CO-R09.S02-PW-210 FF, CO-R09.S02-PW-110 SS | 98% | 2d | 2025-12-21 | 2025-12-29 | -196.5d | 0d | Skilled Labor/Surveyor [226.64 h]; Foreman [226.64 h]; Eq. Operator [226.64 h]; Loader [64 h]; Compactor [64 h]; Water Tank [16 h]; Pipe with diameter 160 mm; in depth 1.5m - 3.0m [35.11]; Pipe with diameter 200mm; in depth 0.0m - 1.5m [722.26]; Pipe with diameter 200mm; in depth 1.5m - 3.0m [28.09] | 116,247.83 | 104,623.05 | CO-R09.S02-PW-130 | 12 | 12 | ML | BF | LM | ML | PW | BACK | CON | R09 | S02 | PW | PW |
|  | VC | **Valve Chamber** |  | 2026-11-25 | 2026-12-01 |  |  |  |  |  |  |  |  |  |  |  |  |  |  |  |  |  |  |  |  |  |  |  |  |
| CO-R09.S02-PW-210 |  | Installation Works for Main Line Valves and Valve Chambers of Potable Water Network-[Road 09]-[SW-2] | 6d | 2026-11-25 | 2026-12-01 | CO-R09.S02-PW-100 |  |  |  |  | -186.5d | 10d | Labor/Helper [161.51 h]; Plumber [161.51 h]; Gate valves dia(200)mm on pipes with dia (200) mm. [31.1]; Wash out valve with dia (100)mm on pipes with dia (200) mm [1] | 89,903.16 |  | CO-R09.S02-PW-210 | 12 | 12 | ML | VI | Each | ML | PW | INSUL | CON | R09 | S02 | PW | PW |
|  | FH | **Fire Hydrant** |  | 2026-11-25 | 2026-12-13 |  |  |  |  |  |  |  |  |  |  |  |  |  |  |  |  |  |  |  |  |  |  |  |  |
| CO-R09.S02-PW-140 |  | Excavation Works for Fire Hydrants of Potable Water Network-[Road 09]-[SW-2] | 5d | 2026-11-25 | 2026-11-30 | CO-R09.S02-EW-120, CO-R09.S02-PW-100 |  |  |  |  | -196.5d | 0d | Skilled Labor/Surveyor [4.49 h]; Foreman [4.49 h]; Excavator [40 h]; 3-outlet fire hydrant (2 x 2.5 inch and 1 x 4 inch) in the form of a separate dry vacuum cylinder [3.01] | 23,276.12 |  | CO-R09.S02-PW-140 | 12 | 12 | FH | Ex | Each | FH | PW | EX | CON | R09 | S02 | PW | PW |
| CO-R09.S02-PW-150 |  | Installation Works for Fire Hydrant of Potable Water Network-[Road 09]-[SW-2] | 6d | 2026-12-01 | 2026-12-07 | CO-R09.S02-PW-140, PRO-R09-PW-DL-120 FF+3d |  |  |  |  | -196.5d | 0d | Labor/Helper [107.67 h]; Skilled Labor/Surveyor [5.61 h]; Foreman [5.61 h]; Plumber [107.67 h]; 3-outlet fire hydrant (2 x 2.5 inch and 1 x 4 inch) in the form of a separate dry vacuum cylinder [14.04] | 108,622.9 |  | CO-R09.S02-PW-150 | 12 | 12 | FH | FH | Each | FH | PW | INSTALL | CON | R09 | S02 | PW | PW |
| CO-R09.S02-PW-160 |  | Trench Backfilling and Compaction Works for Fire Hydrants of Potable Water Network-[Road 09]-[SW-2] | 5d | 2026-12-08 | 2026-12-13 | CO-R09.S02-PW-150 |  |  |  |  | -196.5d | 0d | Skilled Labor/Surveyor [4.49 h]; Foreman [4.49 h]; Excavator [40 h]; 3-outlet fire hydrant (2 x 2.5 inch and 1 x 4 inch) in the form of a separate dry vacuum cylinder [4.01] | 31,034.82 |  | CO-R09.S02-PW-160 | 12 | 12 | FH | BF | Each | FH | PW | BACK | CON | R09 | S02 | PW | PW |

| ID | WBS | Activity | Duration | Start | Finish | Predecessors | Total float | Free float | Resources | Cost | Activity ID N | Seq | New Seq | 02- Network-WBS | 03- Activity | 04-UOM | 05-Discipline | 01- Network | 07-Weightage System | 08 Stage | 09 Roads | 10 side Walk | Discipline | New Discipline |
| --- | --- | --- | --- | --- | --- | --- | --- | --- | --- | --- | --- | --- | --- | --- | --- | --- | --- | --- | --- | --- | --- | --- | --- | --- |
|  | SL | **Street Lighting Network** |  | 2026-12-14 | 2027-06-13 |  |  |  |  |  |  |  |  |  |  |  |  |  |  |  |  |  |  |  |
|  | LP | **Lighting Poles Works** |  | 2026-12-14 | 2027-03-14 |  |  |  |  |  |  |  |  |  |  |  |  |  |  |  |  |  |  |  |
| CO-R09.S02-SL-100 |  | Foundation Excavation Works for Lighting Poles of Street Lighting Network-[Road 09]-[SW-2] | 9d | 2026-12-14 | 2026-12-23 | CO-R09.S02-EW-120, CO-R09.S02-EW-110, CO-R09.S02-PW-130 | -196.5d | 0d | Labor/Helper [161.51 h]; Skilled Labor/Surveyor [80.75 h]; Excavator [144 h]; Lighting poles with one arm, including the power distribution box, screws, cables, 12 meters in height. [3.01] | 5,849.15 | CO-R09.S02-SL-100 | 12 | 12 | LP | Ex | Each | POL | SL | EX | CON | R09 | S02 | SL | SL |
| CO-R09.S02-SL-110 |  | Installation Works for Lighting Poles Foundation of Street Lighting Network-[Road 09]-[SW-2] | 9d | 2026-12-24 | 2027-01-03 | CO-R09.S02-SL-100, PRO-R09-SL-DL-110 FF+3d | -196.5d | 0d | Labor/Helper [161.51 h]; Skilled Labor/Surveyor [8.97 h]; Foreman [8.97 h]; Eq. Operator [8.97 h]; Loader [18 h]; Reinforced concrete foundation, for 12m high lighting columns With Drawpits [69.22] | 25,714.63 | CO-R09.S02-SL-110 | 12 | 12 | LP | LPF | Each | POL | SL | INSTALL | CON | R09 | S02 | SL | SL |
| CO-R09.S02-SL-120 |  | Installation Works for Lighting Poles of Street Lighting Network-[Road 09]-[SW-2] | 9d | 2027-01-04 | 2027-01-13 | CO-R09.S02-SL-110, PRO-R09-SL-DL-120 FF+3d | -196.5d | 0d | Labor/Helper [80.75 h]; Electrician [80.75 h]; Lighting poles with one arm, including the power distribution box, screws, cables, 12 meters in height. [38.12] | 74,093.7 | CO-R09.S02-SL-120 | 12 | 12 | LP | LP | Each | POL | SL | POLES | CON | R09 | S02 | SL | SL |
| CO-R09.S02-SL-210 |  | Backfilling Works for Lighting Poles of Street Lighting Network-[Road 09]-[SW-2] | 20d | 2027-02-06 | 2027-03-01 | CO-R09.S02-SL-120, CO-R09.S01-SL-210 | -215.5d | 0d | Labor/Helper [179.45 h]; Skilled Labor/Surveyor [89.73 h]; Excavator [160 h]; Lighting poles with one arm, including the power distribution box, screws, cables, 12 meters in height. [14.04] | 27,297.41 | CO-R09.S02-SL-210 | 12 | 12 |  |  |  |  | SL | BACK | CON | R09 | S02 | SL | SL |
| CO-R09.S02-SL-130 |  | Installation Works for Lighting Fixtures With Drop Wire of Street Lighting Network-[Road 09]-[SW-2] | 17d | 2027-02-18 | 2027-03-14 | CO-R09.S02-SL-120, PRO-R09-SL-DL-140 FF+3d, CO-R09.S02-SL-200 FF | -215.5d | 0d | Labor/Helper [152.53 h]; Electrician [143.56 h]; Manlift [136 h]; Street Lighting( LED) Luminaire,(Type C) complete with control gear and lamp, ?.17000 Lumen [69.22] | 42,335.9 | CO-R09.S02-SL-130 | 12 | 12 | LP | LPA | Each | POL | SL | INSTALL | CON | R09 | S02 | SL | SL |
| CO-R09.S02-SL-200 |  | Testing Works for Lighting Poles of Street Lighting Network-[Road 09]-[SW-2] | 8d | 2027-03-02 | 2027-03-14 | CO-R09.S02-SL-210, CO-R09.S02-SL-120 | -215.5d | 0d | Labor/Helper [143.56 h]; Electrician [143.56 h]; Lighting poles with one arm, including the power distribution box, screws, cables, 12 meters in height. [14.04] | 27,297.41 | CO-R09.S02-SL-200 | 12 | 12 |  |  |  |  | SL | TESTING | CON | R09 | S02 | SL | SL |
|  | CW | **Cabling Works** |  | 2027-01-14 | 2027-02-17 |  |  |  |  |  |  |  |  |  |  |  |  |  |  |  |  |  |  |  |
| CO-R09.S02-SL-140 |  | Trench Excavation and Bedding Works for Street Lighting Network-[Road 09]-[SW-2] | 10d | 2027-01-14 | 2027-01-25 | CO-R09.S02-EW-120, CO-R09.S02-SL-120, CO-R09.S02-SL-110 | -165d | 0d | Labor/Helper [89.73 h]; Skilled Labor/Surveyor [44.86 h]; Excavator [80 h] |  | CO-R09.S02-SL-140 | 12 | 12 | CW | Ex | LM | CB | SL | EXC | CON | R09 | S02 | SL | SL |
| CO-R09.S02-SL-150 |  | Cable Laying Works for Street Lighting Network-[Road 09]-[SW-2] | 10d | 2027-01-26 | 2027-02-06 | CO-R09.S02-SL-140, PRO-R09-SL-DL-100 FF+3d | -165d | 0d | Labor/Helper [89.73 h]; Electrician [89.73 h]; Low Current Technician [89.73 h]; Supply, installation , test and operation of cables, Copper, (4Cx25mmï¿½,Cu/XLPE/SWA/PVC +1x16mmï¿½ PVC/PVC) [2654.29] | 127,119.01 | CO-R09.S02-SL-150 | 12 | 12 | CW | CL | LM | CB | SL | LAYING | CON | R09 | S02 | SL | SL |
| CO-R09.S02-SL-160 |  | Trench Backfilling and Compaction Works for Street Lighting Network-[Road 09]-[SW-2] | 10d | 2027-02-07 | 2027-02-17 | CO-R09.S02-SL-150 | -165d | 25d | Skilled Labor/Surveyor [8.97 h]; Foreman [8.97 h]; Excavator [80 h]; Water Tank [20 h]; Supply, installation , test and operation of cables, Copper, (4Cx25mmï¿½,Cu/XLPE/SWA/PVC +1x16mmï¿½ PVC/PVC) [204.64] | 9,801.01 | CO-R09.S02-SL-160 | 12 | 12 | CW | BF | LM | CB | SL | BACK | CON | R09 | S02 | SL | SL |
|  | DPB | **Distrubution Panel Boards** |  | 2027-04-12 | 2027-06-13 |  |  |  |  |  |  |  |  |  |  |  |  |  |  |  |  |  |  |  |
| CO-R09.S02-SL-170 |  | Foundation Excavation Works For Panel Boards of Street Lighting Network-[Road 09]-[SW-2] | 10d | 2027-04-12 | 2027-04-22 | CO-R09.S02-EW-120, CO-R09.S02-SL-160 SS, CO-R09-SL-ES-100 | -196.25d | 0d | Labor/Helper [89.73 h]; Skilled Labor/Surveyor [44.86 h]; Reinforced concrete base With fence for Distribution substation in accordance with SEC Specifications [4.01] | 59,129.75 | CO-R09.S02-SL-170 | 12 | 12 | DB | Ex | Each | DS | SL | EXC | CON | R09 | S02 | SL | SL |
| CO-R09.S02-SL-180 |  | Installation Works for Panel Board Concrete Foundations of Street Lighting Network-[Road 09]-[SW-2] | 10d | 2027-04-24 | 2027-05-04 | CO-R09.S02-SL-170 | -196.25d | 0d | Skilled Labor/Surveyor [17.95 h]; Foreman [17.95 h]; Excavator [160 h]; Water Tank [40 h]; Package Substation 33000/400V, 500kVA with RMU [0.45] | 49,531.95 | CO-R09.S02-SL-180 | 12 | 12 | DB | PBF | Each | DS | SL | INSTALL | CON | R09 | S02 | SL | SL |
| CO-R09.S02-SL-190 |  | Installation Works for Lighting Panel Boards of Street Lighting Network-[Road 09]-[SW-2] | 10d | 2027-05-05 | 2027-05-22 | CO-R09.S02-SL-180, PRO-R09-SL-DL-160 FF+3d | -196.25d | 0d | Labor/Helper [179.45 h]; Electrician [143.56 h]; Package Substation 33000/400V, 500kVA with RMU [3.01] | 331,249.14 | CO-R09.S02-SL-190 | 12 | 12 | DB | PB | Each | DS | SL | INST BO | CON | R09 | S02 | SL | SL |
| CO-R09.S02-SL-220 |  | A wall of concrete blocks to install the KWH meter of Street Lighting Network-[Road 09]-[SW-2] | 18.25d | 2027-05-23 | 2027-06-13 | CO-R09.S02-SL-180, CO-R09.S02-SL-190 | -196.25d | 1.25d | Block Mason [161.51 h]; Road crossing ducts, 4 way (4 x 100mm PVC) [151.47]; Drawpit with medium duty steel cover, size 600x600x1000mm, Type 18 [4.01]; Drawpit with medium duty steel cover, size 900x900x1200mm, Type 4 [14.04]; Street Lighting Feeder pillars , Includes foundation and draw pits [4.01] | 97,140.06 | CO-R09.S02-SL-220 | 12 | 12 | DB |  | Each | DS | SL | wall | CON | R09 | S02 | SL | SL |
|  | TE | **Telecom Network** |  | 2027-01-27 | 2027-03-27 |  |  |  |  |  |  |  |  |  |  |  |  |  |  |  |  |  |  |  |
|  | PD | **Ducts Works** |  | 2027-01-27 | 2027-02-24 |  |  |  |  |  |  |  |  |  |  |  |  |  |  |  |  |  |  |  |
| CO-R09.S02-TE-100 |  | Trench Excavation and Bedding Works for Ducts of Telecom Network-[Road 09]-[SW-2] | 3d | 2027-01-27 | 2027-01-30 | CO-R09.S01-TE-130, CO-R09.S01-TE-100 | -167d | 0d | Skilled Labor/Surveyor [3.36 h]; Foreman [3.36 h]; Excavator [56 h]; 6-way ducts, 50mm dia. HDPE [126.39]; Road crossing ducts (6-way) [11.03] | 19,182.32 | CO-R09.S02-TE-100 | 12 | 12 | PD | Ex | LM | DC | TE | DUCTS | CON | R09 | S02 | TE | TE |
| CO-R09.S02-TE-110 |  | Pipes Laying Works for Ducts of Telecom Network-[Road 09]-[SW-2] | 7d | 2027-01-31 | 2027-02-07 | CO-R09.S02-TE-100, PRO-R09-TE-DL-100 FF+3d | -167d | 0d | Labor/Helper [125.62 h]; Skilled Labor/Surveyor [6.73 h]; Foreman [6.73 h]; Plumber [62.81 h]; Excavator [56 h]; JCB [28 h]; Truck [56 h]; 6-way ducts, 50mm dia. HDPE [759.37]; Road crossing ducts (6-way) [64.2] | 114,889.7 | CO-R09.S02-TE-110 | 12 | 12 | PD | PL | LM | DC | TE | DUCTS | CON | R09 | S02 | TE | TE |
| CO-R09.S02-TE-120 |  | Pouring Plain Concrete Above Ducts of Telecom Network-[Road 09]-[SW-2] | 7d | 2027-02-08 | 2027-02-15 | CO-R09.S02-TE-110 | -167d | 0d | Skilled Labor/Surveyor [6.73 h]; Foreman [6.73 h]; Cons. Carpenter [125.62 h]; Block Mason [62.81 h]; 6-way ducts, 50mm dia. HDPE [126.39]; Road crossing ducts (6-way) [11.03] | 19,182.32 | CO-R09.S02-TE-120 | 12 | 12 | PD | PC | LM | DC | TE | DUCTS | CON | R09 | S02 | TE | TE |
| CO-R09.S02-TE-130 |  | Trench Backfilling and Compaction Works for Ducts of Telecom Network-[Road 09]-[SW-2] | 7d | 2027-02-16 | 2027-02-24 | CO-R09.S02-TE-120 | -167d | 23d | Skilled Labor/Surveyor [6.73 h]; Foreman [6.73 h]; Excavator [56 h]; 6-way ducts, 50mm dia. HDPE [252.79]; Road crossing ducts (6-way) [21.07] | 38,194.11 | CO-R09.S02-TE-130 | 12 | 12 | PD | BF | LM | DC | TE | DUCTS | CON | R09 | S02 | TE | TE |
|  | MH | **Manholes Works** |  | 2027-02-28 | 2027-03-27 |  |  |  |  |  |  |  |  |  |  |  |  |  |  |  |  |  |  |  |
| CO-R09.S02-TE-140 |  | Excavation Works for Manholes of Telecom Network-[Road 09]-[SW-2] | 7d | 2027-02-28 | 2027-03-07 | CO-R09.S02-TE-100, CO-R09.S01-TE-140, CO-R09.S01-TE-160 | -190d | 0d | Skilled Labor/Surveyor [6.73 h]; Foreman [6.73 h]; Excavator [56 h]; Manhole Type 2 (2000x1000x1000) [1]; Manhole Type 3 (2000x1000x1000) [1] | 6,463.89 | CO-R09.S02-TE-140 | 12 | 12 | MH | Ex | Each | MNH | TE | EXC | CON | R09 | S02 | TE | TE |
| CO-R09.S02-TE-150 |  | Installation Works for Manholes of Telecom Network-[Road 09]-[SW-2] | 7d | 2027-03-08 | 2027-03-18 | CO-R09.S02-TE-140, PRO-R09-TE-DL-110 FF+3d | -190d | 0d | Skilled Labor/Surveyor [6.73 h]; Foreman [6.73 h]; Excavator [56 h]; Manhole Type 1 (2000x1000x1000) [1]; Manhole Type 2 (2000x1000x1000) [6.02]; Manhole Type 3 (2000x1000x1000) [3.01] | 32,241.82 | CO-R09.S02-TE-150 | 12 | 12 | MH | HH | Each | MNH | TE | INSTALL-1 | CON | R09 | S02 | TE | TE |
| CO-R09.S02-TE-160 |  | Backfilling Works for Manholes of Telecom Network-[Road 09]-[SW-2] | 7d | 2027-03-20 | 2027-03-27 | CO-R09.S02-TE-150 | -190d | 0d | Skilled Labor/Surveyor [6.73 h]; Foreman [6.73 h]; Excavator [56 h]; Manhole Type 2 (2000x1000x1000) [1]; Manhole Type 3 (2000x1000x1000) [1] | 6,463.89 | CO-R09.S02-TE-160 | 12 | 12 | MH | BF | Each | MNH | TE | (New)-2 | CON | R09 | S02 | TE | TE |

| ID | WBS | Activity | Duration | Start | Finish | Predecessors | Complete | Remaining | Planned start | Planned finish | Total float | Free float | Resources | Cost | Actual cost | Activity ID N | Seq | New Seq | 02- Network-WBS | 03- Activity | 04-UOM | 05-Discipline | 01- Network | 08 Stage | 09 Roads | 10 side Walk | Discipline | New Discipline | 07-Weightage System |
| --- | --- | --- | --- | --- | --- | --- | --- | --- | --- | --- | --- | --- | --- | --- | --- | --- | --- | --- | --- | --- | --- | --- | --- | --- | --- | --- | --- | --- | --- |
|  | RD | **Road Works** |  | 2026-06-10 | 2027-07-19 |  |  |  |  |  |  |  |  |  |  |  |  |  |  |  |  |  |  |  |  |  |  |  |  |
|  | RD | **Pre-Bituminous Construction** |  | 2026-06-10 | 2027-03-31 |  |  |  |  |  |  |  |  |  |  |  |  |  |  |  |  |  |  |  |  |  |  |  |  |
| CO-R09.S02-RD-P-100 |  | Capping and Subgrade Layer for Road Works-[Road 09]-[SW-2] | 12d | 2026-06-10 A | 2027-03-27 | CO-R09.S02-SD-130, CO-R09.S02-PW-130 FF, CO-R09.S02-PW-160 FF, CO-R09.S02-SL-160 FF+3d, PRO-R09-RD-DL-100 FF+3d, CO-R09.S02-TE-130 FF, CO-R09.S02-TE-160 FF | 60% | 14d | 2026-07-15 | 2026-07-28 | -190d | 0d | Labor/Helper [329.71 h]; Skilled Labor/Surveyor [394.94 h]; Loader [576 h]; Grader [576 h]; Road Roller [576 h]; Water Tank [576 h]; 300mm capping layer underneath subgrade , CBR?15% [9596.98]; 300mm thick Subgrade, including subgrade preparation, CBR?25% [9596.98] | 760,477.73 | 456,286.64 | CO-R09.S02-RD-P-100 | 12 | 12 | AB | SG | Sq.m | BS | RD | CON | R09 | S02 | RD | RD |  |
| CO-R09.S02-RD-P-110 |  | Aggregate Base Course Layer for Road Works-[Road 09]-[SW-2] | 18d | 2027-03-08 | 2027-03-31 | CO-R09.S02-RD-P-100 SS+3d, CO-R09.S02-RD-P-100 FF+3d, CO-R09.S02-SD-170 SS+3d, CO-R09.S02-SD-170 FF+3d, PRO-R09-RD-DL-110 FF+3d |  |  |  |  | -76d | 139.5d | Labor/Helper [646.03 h]; Skilled Labor/Surveyor [323.01 h]; Foreman [323.01 h]; Loader [288 h]; Grader [288 h]; Road Roller [288 h]; Aggregate base course 200mm thick after compaction in two layers(Grading 1); CBR?80%; including watering, compaction and testing [6398.99] | 529,738.44 |  | CO-R09.S02-RD-P-110 | 12 | 12 | AB | BA | Sq.m | BS | RD | CON | R09 | S02 | RD | RD |  |
|  | LS | **Pavement Works** |  | 2026-08-25 | 2027-07-19 |  |  |  |  |  |  |  |  |  |  |  |  |  |  |  |  |  |  |  |  |  |  |  |  |
| CO-R09.S02-RD-P-120 |  | Fixing of Curbstone for Sidewalks Pavement-[Road 09]-[SW-2] | 18d | 2026-08-25 A | 2026-08-31 A | PRO-R09-RD-DL-130 FF+3d, PRO-R09-RD-DL-130 SS | 100% |  | 2026-07-22 | 2026-08-11 |  |  | Labor/Helper [2722.13 h]; Block Mason [8166.39 h]; Precast Concrete Kerb, Type K1 [3541.06]; Precast Concrete Kerb, Type L1 [7024.94] | 433,737.99 | 433,737.99 | CO-R09.S02-RD-P-120 | 12 | 12 | LS | CR | LM | LAND | RD | CON | R09 | S02 | RD | RD |  |
| CO-R09.S02-RD-P-130 |  | Fixing of Interlock Tiles for Sidewalks Pavement-[Road 09]-[SW-2] | 18d | 2027-06-28 | 2027-07-19 | PRO-R09-RD-DL-120 FF+3d, CO-R09.S02-RD-P-120 SS+3d, CO-R09.S02-RD-P-120 FF+3d, CO-R09-PW-TF-110, CO-R09-PW-TF-120, CO-R09-SW-TF-100, CO-R09-SW-TF-110, CO-R09-SW-TF-120, CO-R09-SD-TF-100, CO-R09-SD-TF-120, CO-R09-SL-TF-100, CO-R09-SL-TF-110, CO-R09-SL-ES-100, CO-R09-SL-ES-110, CO-R09-IR-TF-100, CO-R09-MV-TF-100 |  |  |  |  | -215.5d | 0d | Labor/Helper [1453.02 h]; Block Mason [4205.26 h]; Interlocking block pavers for sidewalk/footpath 60mm thick on and including 30mm Sand Bedding, 200mm Aggregate subbase, all in accordance with authority standards and complete as per specifications [6322.75]; Extraover for Pedestrian ramps [16.05] | 310,002.05 |  | CO-R09.S02-RD-P-130 | 12 | 12 | LS | IL | Sq.m | LAND | RD | CON | R09 | S02 | RD | RD |  |
|  | 4 | **Road 10 Local 2 ( 2352 LM )** |  | 2025-03-15 | 2027-05-08 |  |  |  |  |  |  |  |  |  |  |  |  |  |  |  |  |  |  |  |  |  |  |  |  |
|  | 1 | **SW-3** |  | 2025-03-15 | 2027-05-05 |  |  |  |  |  |  |  |  |  |  |  |  |  |  |  |  |  |  |  |  |  |  |  |  |
|  | SW_3 | **SW_3-East** |  | 2025-03-15 | 2027-05-05 |  |  |  |  |  |  |  |  |  |  |  |  |  |  |  |  |  |  |  |  |  |  |  |  |
|  | EW | **Earthworks** |  | 2025-03-15 | 2025-03-24 |  |  |  |  |  |  |  |  |  |  |  |  |  |  |  |  |  |  |  |  |  |  |  |  |
|  | EW | **Earthworks** |  | 2025-03-15 | 2025-03-24 |  |  |  |  |  |  |  |  |  |  |  |  |  |  |  |  |  |  |  |  |  |  |  |  |
| CO-R10.S03-ES-EW-100 |  | Roadway Excavation Works Upto Design Level for Earthworks-[Road 10]-[SW-3] | 10d | 2025-03-15 A | 2025-03-22 A | ENG-MS-RD-A-10, ENG-SH-RD-A-100, CO-R15.S10-EW-100 | 100% |  | 2025-05-19 | 2025-05-29 |  |  | Labor/Helper [871.08 h]; Skilled Labor/Surveyor [108.89 h]; Foreman [108.89 h]; Water Tank [192 h]; Dozer [192 h]; Roadway Excavation for cuttings; on any type of material for all depths including trimming and Preparation of excavated surfaces and disposal. [22656.8] | 145,757.06 | 145,757.06 | CO-R10.S03-EW-100 | 9 | 9 | EW | Ex | Cub.m | EW | EW | CON | R10 | S03 | EW | EW |  |
| CO-R10.S03-ES-EW-110 |  | Embankments Works Upto Design Level for Earthworks-[Road 10]-[SW-3] | 12d | 2025-03-18 A | 2025-03-24 A | CO-R10.S03-ES-EW-100, ENG-MS-RD-A-10, ENG-SH-RD-A-100 | 100% |  | 2025-05-31 | 2025-06-17 |  |  | Labor/Helper [1361.06 h]; Skilled Labor/Surveyor [170.13 h]; Foreman [170.13 h]; Water Tank [720 h]; Dozer [720 h]; Embankments to the ROW, with suitable material other than top soil or rock according to specifications [38141.1] | 315,477.47 | 315,477.47 | CO-R10.S03-EW-110 | 9 | 9 | EW | BF | Cub.m | EW | EW | CON | R10 | S03 | EW | EW |  |
|  | SD | **Storm Drainage Network** |  | 2025-08-02 | 2026-10-10 |  |  |  |  |  |  |  |  |  |  |  |  |  |  |  |  |  |  |  |  |  |  |  |  |
|  | ML | **Main Line Sections** |  | 2025-08-02 | 2025-08-21 |  |  |  |  |  |  |  |  |  |  |  |  |  |  |  |  |  |  |  |  |  |  |  |  |
| CO-R10.S03-ES-SD-100 |  | Trench Excavation and Bedding Works for Main Lines of Storm Drainage Network-[Road 10]-[SW-3] | 10d | 2025-08-02 A | 2025-08-07 A | ENG-SH-SD-ML-A-110, CO-R10.S03-ES-EW-110, CO-R10.S03-ES-EW-100, ENG-MS-SD-ML-A-110, CO-R15.S10-SD-100 | 100% |  | 2025-08-16 | 2025-08-26 |  |  | Skilled Labor/Surveyor [13.68 h]; Foreman [13.68 h]; Excavator [112 h]; Pipe with diameter 500mm ; depth: 0.0m - 1.5m [7.02]; Pipe with diameter 600mm ; depth: 1.51m - 2.5m [28.09]; Pipe with diameter 600mm ; depth: 2.51m - 3.5m [24.08]; Pipe with diameter 700mm ; depth: 1.51m - 2.5m [79.25] | 65,066.72 | 65,066.72 | CO-R10.S03-SD-100 | 9 | 9 | ML | Ex | LM | ML | SD | CON | R10 | S03 | SD | SD | EX |
| CO-R10.S03-ES-SD-120 |  | Pipes Laying Works for Main Lines of Storm Drainage Network-[Road 10]-[SW-3] | 15d | 2025-08-09 A | 2025-08-14 A | CO-R10.S03-ES-SD-100, CO-R15.S10-SD-120 | 100% |  | 2025-09-02 | 2025-09-18 |  |  | Labor/Helper [273.57 h]; Skilled Labor/Surveyor [13.68 h]; Foreman [13.68 h]; Plumber [136.79 h]; Excavator [120 h]; Pipe with diameter 500mm ; depth: 0.0m - 1.5m [21.07]; Pipe with diameter 600mm ; depth: 1.51m - 2.5m [83.26]; Pipe with diameter 600mm ; depth: 2.51m - 3.5m [74.23]; Pipe with diameter 700mm ; depth: 1.51m - 2.5m [238.75] | 196,296.89 | 196,296.89 | CO-R10.S03-SD-120 | 9 | 9 | ML | PL | LM | ML | SD | CON | R10 | S03 | SD | SD | PIPE |
| CO-R10.S03-ES-SD-130 |  | Trench Backfilling and Compaction Works for Main Lines of Storm Drainage Network-[Road 10]-[SW-3] | 15d | 2025-08-16 A | 2025-08-21 A | ENG-SH-SD-ML-A-110 FF, ENG-MS-SD-ML-A-110 FF, CO-R10.S03-ES-SD-120, CO-R10.S03-ES-SD-220 FF | 100% |  | 2025-09-20 | 2025-10-07 |  |  | Skilled Labor/Surveyor [13.68 h]; Foreman [13.68 h]; Excavator [120 h]; Pipe with diameter 500mm ; depth: 0.0m - 1.5m [4.01]; Pipe with diameter 600mm ; depth: 1.51m - 2.5m [14.04]; Pipe with diameter 600mm ; depth: 2.51m - 3.5m [13.04]; Pipe with diameter 700mm ; depth: 1.51m - 2.5m [40.13] | 33,453.93 | 33,453.93 | CO-R10.S03-SD-130 | 9 | 9 | ML | BF | LM | ML | SD | CON | R10 | S03 | SD | SD | BACK |
|  | MH | **Manholes** |  | 2025-11-01 | 2026-10-07 |  |  |  |  |  |  |  |  |  |  |  |  |  |  |  |  |  |  |  |  |  |  |  |  |
| CO-R10.S03-ES-SD-180 |  | Trench Excavation and Bedding Works for Manholes of Storm Drainage Network-[Road 10]-[SW-3] | 1d | 2025-11-01 A | 2025-11-06 A | CO-R10.S03-ES-SD-120 SS, PRO-SD-1DL-100 | 100% |  | 2025-09-02 | 2025-09-02 |  |  | Labor/Helper [45.6 h]; Skilled Labor/Surveyor [22.8 h]; Excavator [40 h]; MH ; depth: 0.0m - 1.5m [0.23]; MH ; depth: 1.51m - 2.5m [1]; MH ; depth: 0.0m - 1.5m [0.15]; MH ; depth: 0.0m - 1.5m [0.07]; MH ; depth: 1.51m - 2.5m [0.23]; MH ; depth: 2.51 - 3.5m [0.3]; MH ; depth: 3.51 - 4.5m [0.15] | 37,990.9 | 37,990.9 | CO-R10.S03-SD-180 | 9 | 9 |  |  |  |  | SD | CON | R10 | S03 | SD | SD | EX |
| CO-R10.S03-ES-SD-190 |  | Install RC Footing Works for Manholes of Storm Drainage Network-[Road 10]-[SW-3] | 1d | 2025-11-05 A | 2025-11-13 A | CO-R10.S03-ES-SD-180 | 100% |  | 2025-09-03 | 2025-09-03 |  |  | Cons. Carpenter [91.19 h]; Steel Fixer [91.19 h]; MH ; depth: 0.0m - 1.5m [0.07]; MH ; depth: 1.51m - 2.5m [0.2]; MH ; depth: 0.0m - 1.5m [0.05]; MH ; depth: 0.0m - 1.5m [0.03]; MH ; depth: 1.51m - 2.5m [0.07]; MH ; depth: 2.51 - 3.5m [0.1]; MH ; depth: 3.51 - 4.5m [0.05] | 10,391.23 | 10,391.23 | CO-R10.S03-SD-190 | 9 | 9 |  |  |  |  | SD | CON | R10 | S03 | SD | SD | RC F |
| CO-R10.S03-ES-SD-200 |  | Install RC Wall Rings & Slab Works for Manholes of Storm Drainage Network-[Road 10]-[SW-3] | 4d | 2025-11-11 A | 2025-11-22 A | CO-R10.S03-ES-SD-190 | 100% |  | 2025-09-04 | 2025-09-08 |  |  | Cons. Carpenter [145.91 h]; Steel Fixer [145.91 h]; MH ; depth: 0.0m - 1.5m [1]; MH ; depth: 1.51m - 2.5m [3.01]; MH ; depth: 0.0m - 1.5m [0.45]; MH ; depth: 0.0m - 1.5m [0.23]; MH ; depth: 1.51m - 2.5m [1]; MH ; depth: 2.51 - 3.5m [1]; MH ; depth: 3.51 - 4.5m [0.45] | 124,044.32 | 124,044.32 | CO-R10.S03-SD-200 | 9 | 9 |  |  |  |  | SD | CON | R10 | S03 | SD | SD | RC W |
| CO-R10.S03-ES-SD-220 |  | Backfilling Works for Manholes of Storm Drainage Network-[Road 10]-[SW-3] | 7d | 2025-11-16 A | 2025-11-24 A | CO-R10.S03-ES-SD-210 | 100% |  | 2025-09-10 | 2025-09-17 |  |  | Labor/Helper [319.17 h]; Skilled Labor/Surveyor [159.58 h]; Excavator [280 h]; MH ; depth: 0.0m - 1.5m [0.3]; MH ; depth: 1.51m - 2.5m [1]; MH ; depth: 0.0m - 1.5m [0.2]; MH ; depth: 0.0m - 1.5m [0.1]; MH ; depth: 1.51m - 2.5m [0.3]; MH ; depth: 2.51 - 3.5m [0.4]; MH ; depth: 3.51 - 4.5m [0.2] | 44,999.06 | 44,999.06 | CO-R10.S03-SD-220 | 9 | 9 |  |  |  |  | SD | CON | R10 | S03 | SD | SD | BACK |
| CO-R10.S03-ES-SD-210 |  | Testing Works for Manholes of Storm Drainage Network-[Road 10]-[SW-3] | 1d | 2026-09-15 A | 2026-10-07 A | CO-R10.S03-ES-SD-200 | 100% |  | 2025-09-09 | 2025-09-09 |  |  | Labor/Helper [62.79 h]; Plumber [45.6 h]; MH ; depth: 0.0m - 1.5m [0.15]; MH ; depth: 1.51m - 2.5m [0.4]; MH ; depth: 0.0m - 1.5m [0.1]; MH ; depth: 0.0m - 1.5m [0.05]; MH ; depth: 1.51m - 2.5m [0.15]; MH ; depth: 2.51 - 3.5m [0.2]; MH ; depth: 3.51 - 4.5m [0.1] | 20,783.49 | 20,783.49 | CO-R10.S03-SD-210 | 9 | 9 |  |  |  |  | SD | CON | R10 | S03 | SD | SD | T&COV |

| ID | WBS | Activity | Duration | Start | Finish | Predecessors | Complete | Remaining | Planned start | Planned finish | Total float | Free float | Resources | Cost | Actual cost | Activity ID N | Seq | New Seq | 02- Network-WBS | 03- Activity | 04-UOM | 05-Discipline | 01- Network | 07-Weightage System | 08 Stage | 09 Roads | 10 side Walk | Discipline | New Discipline |
| --- | --- | --- | --- | --- | --- | --- | --- | --- | --- | --- | --- | --- | --- | --- | --- | --- | --- | --- | --- | --- | --- | --- | --- | --- | --- | --- | --- | --- | --- |
|  | CB | **Catch Basin Sections** |  | 2025-08-20 | 2026-10-10 |  |  |  |  |  |  |  |  |  |  |  |  |  |  |  |  |  |  |  |  |  |  |  |  |
| CO-R10.S03-ES-SD-140 |  | Trench Excavation and Bedding Works for Catch Basins of Storm Drainage Network-[Road 10]-[SW-3] | 6d | 2025-08-20 A | 2025-08-25 A | CO-R10.S03-ES-EW-110, ENG-SH-SD-CB-A-110, ENG-MS-SD-CB-A-110, CO-R10.S03-ES-SD-220, CO-R15.S10-SD-140 | 100% |  | 2025-09-18 | 2025-09-25 |  |  | Skilled Labor/Surveyor [5.7 h]; Foreman [5.7 h]; Excavator [48 h]; Pipe with diameter 300mm ; depth: 0 - 1.5m [120.38]; Pipe with diameter 400mm ; depth: 0 - 1.5m [7.02] | 30,211.77 | 30,211.77 | CO-R10.S03-SD-140 | 9 | 9 | CB | Ex | Each | CB | SD | EX | CON | R10 | S03 | SD | SD |
| CO-R10.S03-ES-SD-150 |  | Installation and Pipes Laying Connection Works for Catch Basins of Storm Drainage Network-[Road 10]-[SW-3] | 7d | 2025-08-26 A | 2025-08-28 A | CO-R10.S03-ES-SD-140, CO-R15.S10-SD-150 | 100% |  | 2025-09-27 | 2025-10-04 |  |  | Labor/Helper [255.34 h]; Skilled Labor/Surveyor [13.68 h]; Foreman [13.68 h]; Excavator [112 h]; Pipe with diameter 300mm ; depth: 0 - 1.5m [360.12]; Pipe with diameter 400mm ; depth: 0 - 1.5m [21.07] | 90,400.46 | 90,400.46 | CO-R10.S03-SD-150 | 9 | 9 | CB | CB | Each | CB | SD | INSTALL | CON | R10 | S03 | SD | SD |
| CO-R10.S03-ES-SD-170 |  | Trench Backfilling and Compaction Works for Catch Basins of Storm Drainage Network-[Road 10]-[SW-3] | 7d | 2025-08-30 A | 2025-09-02 A | CO-R10.S03-ES-SD-160 | 100% |  | 2025-10-16 | 2025-10-23 |  |  | Skilled Labor/Surveyor [6.84 h]; Foreman [6.84 h]; Excavator [56 h]; Pipe with diameter 300mm ; depth: 0 - 1.5m [160.5]; Pipe with diameter 400mm ; depth: 0 - 1.5m [10.03] | 40,492.72 | 40,492.72 | CO-R10.S03-SD-170 | 9 | 9 | CB | BF | Each | CB | SD | BACK | CON | R10 | S03 | SD | SD |
| CO-R10.S03-ES-SD-160 |  | Testing Works for Catch Basins of Storm Drainage Network-[Road 10]-[SW-3] | 10d | 2026-09-15 A | 2026-10-10 A | CO-R10.S03-ES-SD-150, CO-R10.S03-ES-SD-120 | 100% |  | 2025-10-05 | 2025-10-15 |  |  | Labor/Helper [182.38 h]; Skilled Labor/Surveyor [9.12 h]; Foreman [9.12 h]; Plumber [91.19 h]; Excavator [80 h]; Pipe with diameter 300mm ; depth: 0 - 1.5m [79.25]; Pipe with diameter 400mm ; depth: 0 - 1.5m [4.01] | 19,698 | 19,698 | CO-R10.S03-SD-160 | 9 | 9 | CB | PL | Each | CB | SD | TEST | CON | R10 | S03 | SD | SD |
|  | PW | **Potable Water Network** |  | 2025-07-07 | 2026-12-10 |  |  |  |  |  |  |  |  |  |  |  |  |  |  |  |  |  |  |  |  |  |  |  |  |
|  | ML | **Main Line Sections** |  | 2025-08-05 | 2025-08-16 |  |  |  |  |  |  |  |  |  |  |  |  |  |  |  |  |  |  |  |  |  |  |  |  |
| CO-R10.S03-ES-PW-100 |  | Trench Excavation and Bedding Works for Main Lines of Potable Water Network-[Road 10]-[SW-3] | 6d | 2025-08-05 A | 2025-08-07 A | ENG-SH-PW-ML-A-110, CO-R10.S03-ES-EW-110, CO-R10.S03-ES-EW-100, ENG-MS-PW-ML-A-110, ENG-SH-PW-FH-A-110, CO-R10.S03-ES-SD-130 | 100% |  | 2025-10-08 | 2025-10-14 |  |  | Skilled Labor/Surveyor [204.16 h]; Foreman [204.16 h]; Excavator [48 h]; Pipe with diameter 200mm; in depth 0.0m - 1.5m [362.13] | 53,763.6 | 53,763.6 | CO-R10.S03-PW-100 | 9 | 9 | ML | Ex | LM | ML | PW | EX | CON | R10 | S03 | PW | PW |
| CO-R10.S03-ES-PW-110 |  | Pipes Laying and accessories for Main Lines of Potable Water Network-[Road 10]-[SW-3] | 6d | 2025-08-09 A | 2025-08-12 A | CO-R10.S03-ES-PW-100 | 100% |  | 2025-10-15 | 2025-10-21 |  |  | Labor/Helper [551.5 h]; Skilled Labor/Surveyor [28.72 h]; Foreman [28.72 h]; Plumber [275.75 h]; Excavator [96 h]; Pipe with diameter 200mm; in depth 0.0m - 1.5m [905.83] | 134,484.57 | 134,484.57 | CO-R10.S03-PW-110 | 9 | 9 | ML | PL | LM | ML | PW | PIPE | CON | R10 | S03 | PW | PW |
| CO-R10.S03-ES-PW-130 |  | Trench Backfilling and Compaction Works for Main Lines of Potable Water Network-[Road 10]-[SW-3] | 6d | 2025-08-13 A | 2025-08-16 A | CO-R10.S03-ES-PW-110 SS+3d, CO-R10.S03-ES-PW-110 FF+3d, CO-R10.S03-ES-PW-220 FF | 100% |  | 2025-10-29 | 2025-11-04 |  |  | Skilled Labor/Surveyor [113.42 h]; Foreman [113.42 h]; Eq. Operator [113.42 h]; Loader [48 h]; Compactor [48 h]; Water Tank [12 h]; Pipe with diameter 200mm; in depth 0.0m - 1.5m [362.13] | 53,763.6 | 53,763.6 | CO-R10.S03-PW-130 | 9 | 9 | ML | BF | LM | ML | PW | BACK | CON | R10 | S03 | PW | PW |
|  | VC | **Valve Chamber** |  | 2025-07-07 | 2026-07-16 |  |  |  |  |  |  |  |  |  |  |  |  |  |  |  |  |  |  |  |  |  |  |  |  |
| CO-R10.S03-ES-PW-170 |  | Excavation Works for Main Line Valves and Valve Chambers of Potable Water Network-[Road 10]-[SW-3] | 1d | 2025-07-07 A | 2026-07-16 A | CO-R10.S03-ES-PW-100 | 100% |  | 2025-10-15 | 2025-10-15 |  |  | Labor/Helper [18.24 h]; Skilled Labor/Surveyor [9.12 h]; Excavator [16 h]; Air valve chamber; on 200 mm dia pipeline Depth 1.5 - 3 m [0.15] | 1,185.56 | 1,185.56 | CO-R10.S03-PW-170 | 9 | 9 | ML | VI | Each | ML | PW | EX | CON | R10 | S03 | PW | PW |
| CO-R10.S03-ES-PW-180 |  | RC Footing Works for Main Line Valves and Valve Chambers of Potable Water Network-[Road 10]-[SW-3] | 3d | 2025-07-07 A | 2026-07-16 A | CO-R10.S03-ES-PW-170 | 100% |  | 2025-10-16 | 2025-10-19 |  |  | Cons. Carpenter [54.71 h]; Steel Fixer [54.71 h]; Wash out chamber; on 200 mm dia pipeline Depth 1.5 - 3m [0.15]; Air valve chamber; on 200 mm dia pipeline Depth 1.5 - 3 m [0.23] | 6,666.07 | 6,666.07 | CO-R10.S03-PW-180 | 9 | 9 | ML | VI | Each | ML | PW | RC F | CON | R10 | S03 | PW | PW |
| CO-R10.S03-ES-PW-190 |  | RC Wall Works for Main Line Valves and Valve Chambers of Potable Water Network-[Road 10]-[SW-3] | 6d | 2025-07-07 A | 2026-07-16 A | CO-R10.S03-ES-PW-180 | 100% |  | 2025-10-20 | 2025-10-26 |  |  | Cons. Carpenter [109.43 h]; Steel Fixer [109.43 h]; Wash out chamber; on 200 mm dia pipeline Depth 1.5 - 3m [0.35]; Air valve chamber; on 200 mm dia pipeline Depth 1.5 - 3 m [1] | 19,334.47 | 19,334.47 | CO-R10.S03-PW-190 | 9 | 9 | ML | VI | Each | ML | PW | RC W | CON | R10 | S03 | PW | PW |
| CO-R10.S03-ES-PW-200 |  | RC Slab Works for Main Line Valves and Valve Chambers of Potable Water Network-[Road 10]-[SW-3] | 2d | 2025-07-07 A | 2026-07-16 A | CO-R10.S03-ES-PW-190 | 100% |  | 2025-10-27 | 2025-10-28 |  |  | Cons. Carpenter [72.95 h]; Steel Fixer [72.95 h]; Wash out chamber; on 200 mm dia pipeline Depth 1.5 - 3m [0.2]; Air valve chamber; on 200 mm dia pipeline Depth 1.5 - 3 m [0.3] | 8,889.12 | 8,889.12 | CO-R10.S03-PW-200 | 9 | 9 | ML | VI | Each | ML | PW | RC S | CON | R10 | S03 | PW | PW |
| CO-R10.S03-ES-PW-210 |  | Insulation Works for Main Line Valves and Valve Chambers of Potable Water Network-[Road 10]-[SW-3] | 1d | 2025-07-07 A | 2026-07-16 A | CO-R10.S03-ES-PW-200 | 100% |  | 2025-10-29 | 2025-10-29 |  |  | Labor/Helper [18.24 h]; Plumber [18.24 h]; Gate valves dia(200)mm on pipes with dia (200) mm. [16.05]; Wash out valve with dia (100)mm on pipes with dia (200) mm [1]; Air valves with dia (50mm) mm on pipes with dia(200)mm. [3.01] | 69,132.95 | 69,132.95 | CO-R10.S03-PW-210 | 9 | 9 | ML | VI | Each | ML | PW | INSUL | CON | R10 | S03 | PW | PW |
| CO-R10.S03-ES-PW-220 |  | Backfilling Works for Main Line Valves and Valve Chambers of Potable Water Network-[Road 10]-[SW-3] | 3d | 2025-07-07 A | 2026-07-16 A | CO-R10.S03-ES-PW-210 | 100% |  | 2025-10-30 | 2025-11-02 |  |  | Labor/Helper [27.36 h]; Skilled Labor/Surveyor [13.68 h]; Excavator [24 h]; Wash out chamber; on 200 mm dia pipeline Depth 1.5 - 3m [0.2]; Air valve chamber; on 200 mm dia pipeline Depth 1.5 - 3 m [0.3] | 8,889.12 | 8,889.12 | CO-R10.S03-PW-220 | 9 | 9 | ML | VI | Each | ML | PW | BACK | CON | R10 | S03 | PW | PW |
|  | FH | **Fire Hydrant** |  | 2026-11-24 | 2026-12-10 |  |  |  |  |  |  |  |  |  |  |  |  |  |  |  |  |  |  |  |  |  |  |  |  |
| CO-R10.S03-ES-PW-140 |  | Excavation Works for Fire Hydrants of Potable Water Network-[Road 10]-[SW-3] | 6d | 2026-11-24 | 2026-11-30 | CO-R10.S03-ES-PW-110 SS+3d, CO-R10.S03-ES-PW-110 FF+3d, CO-R10.S03-ES-EW-110 |  |  |  |  | -106d | 0d | Skilled Labor/Surveyor [5.61 h]; Foreman [5.61 h]; Excavator [48 h]; 3-outlet fire hydrant (2 x 2.5 inch and 1 x 4 inch) in the form of a separate dry vacuum cylinder [1] | 7,758.71 |  | CO-R10.S03-PW-140 | 9 | 9 | FH | Ex | Each | FH | PW | EX | CON | R10 | S03 | PW | PW |
| CO-R10.S03-ES-PW-150 |  | Installation Works for Fire Hydrant of Potable Water Network-[Road 10]-[SW-3] | 6d | 2026-12-01 | 2026-12-07 | CO-R10.S03-ES-PW-140 |  |  |  |  | -106d | 0d | Labor/Helper [107.67 h]; Skilled Labor/Surveyor [5.61 h]; Foreman [5.61 h]; Plumber [107.67 h]; 3-outlet fire hydrant (2 x 2.5 inch and 1 x 4 inch) in the form of a separate dry vacuum cylinder [7.02] | 54,311.96 |  | CO-R10.S03-PW-150 | 9 | 9 | FH | FH | Each | FH | PW | INSTALL | CON | R10 | S03 | PW | PW |
| CO-R10.S03-ES-PW-160 |  | Trench Backfilling and Compaction Works for Fire Hydrants of Potable Water Network-[Road 10]-[SW-3] | 6d | 2026-12-05 | 2026-12-10 | CO-R10.S03-ES-PW-150 SS+3d, CO-R10.S03-ES-PW-150 FF+3d |  |  |  |  | -106d | 26d | Skilled Labor/Surveyor [5.61 h]; Foreman [5.61 h]; Excavator [48 h]; 3-outlet fire hydrant (2 x 2.5 inch and 1 x 4 inch) in the form of a separate dry vacuum cylinder [3.01] | 23,276.12 |  | CO-R10.S03-PW-160 | 9 | 9 | FH | BF | Each | FH | PW | BACK | CON | R10 | S03 | PW | PW |
|  | IR | **Irrigation Network** |  | 2025-07-20 | 2026-11-25 |  |  |  |  |  |  |  |  |  |  |  |  |  |  |  |  |  |  |  |  |  |  |  |  |
|  | ML | **Main Line Pipes** |  | 2025-07-20 | 2026-11-25 |  |  |  |  |  |  |  |  |  |  |  |  |  |  |  |  |  |  |  |  |  |  |  |  |
| CO-R10.S03-ES-IR-100 |  | Trench Excavation and Bedding Works for Main Lines of Irrigation Network-[Road 10]-[SW-3] | 7d | 2025-07-20 A | 2025-07-24 A | ENG-SH-IR-ML-A-110, CO-R10.S03-ES-EW-110, CO-R10.S03-ES-PW-130, CO-R10.S03-ES-SD-170, ENG-MS-IR-ML-A-110 | 100% |  | 2025-11-05 | 2025-11-12 |  |  | Skilled Labor/Surveyor [88.47 h]; Foreman [88.47 h]; Excavator [56 h]; 355 mm pipe; depth 1.5m - 3.0m [141.44]; 400 mm pipe; depth 1.5m - 3.0m [141.44]; 500. mm pipe; depth 1.5m - 3.0m [397.24] | 342,968.89 | 342,968.89 | CO-R10.S03-IR-100 | 9 | 9 | ML | Ex | LM | ML | IR | EX | CON | R10 | S03 | IR | IR |
| CO-R10.S03-ES-IR-110 |  | Pipes Laying Works for Main Lines of Irrigation Network-[Road 10]-[SW-3] | 7d | 2025-07-26 A | 2025-07-31 A | CO-R10.S03-ES-IR-100, PRO-R19.2-IR-DL-100 FF+3d | 100% |  | 2025-11-13 | 2025-11-20 |  |  | Labor/Helper [211.72 h]; Skilled Labor/Surveyor [11.34 h]; Foreman [11.34 h]; Plumber [105.86 h]; Excavator [56 h]; 355 mm pipe; depth 1.5m - 3.0m [425.33]; 400 mm pipe; depth 1.5m - 3.0m [425.33] | 344,832.5 | 344,832.5 | CO-R10.S03-IR-110 | 9 | 9 | ML | PL | LM | ML | IR | PIPE | CON | R10 | S03 | IR | IR |
| CO-R10.S03-ES-IR-130 |  | Trench Backfilling and Compaction Works for Main Lines of Irrigation Network-[Road 10]-[SW-3] | 7d | 2025-08-20 A | 2025-08-21 A | CO-R10.S03-ES-IR-110 | 100% |  | 2025-11-24 | 2025-12-01 |  |  | Skilled Labor/Surveyor [68.05 h]; Foreman [68.05 h]; Excavator [56 h]; 355 mm pipe; depth 1.5m - 3.0m [71.22]; 400 mm pipe; depth 1.5m - 3.0m [71.22] | 57,743.03 | 57,743.03 | CO-R10.S03-IR-130 | 9 | 9 | ML | BF | LM | ML | IR | BACK | CON | R10 | S03 | IR | IR |
| CO-R10.S03-ES-IR-120 |  | Installation Works for Main Line Valves of Irrigation Network-[Road 10]-[SW-3] | 2d | 2026-11-17 A | 2026-11-25 | CO-R10.S03-ES-IR-110 | 10% | 2d | 2026-11-24 | 2026-11-25 | -24d | 116d | Labor/Helper [182.76 h]; Skilled Labor/Surveyor [11.42 h]; Foreman [11.42 h]; Plumber [182.76 h]; Butterfly valves with dia (355)mm on pipes with dia (355)mm. [1]; Butterfly valves with dia (400)mm on pipes with dia (400)mm. [1]; Butterfly valves with dia (500)mm on pipes with dia (500)mm. [4.01]; Wash out valve with dia (100)mm on pipes with dia (355) mm [1]; Wash out valve with dia (150)mm on pipes with dia (400) mm [1]; Wash out valve with dia (150)mm on pipes with dia (500) mm [4.01]; Air valves with dia (65mm) mm on pipes with dia(280)mm. [1]; Air valves with dia (65mm) mm on pipes with dia(400)mm. [1]; Air valves with dia (65mm) mm on pipes with dia(500)mm. [4.01]; Wash out chamber; on 355 mm dia pipeline Depth 1.5 - 3m [1]; Wash out chamber; on 400 mm dia pipeline Depth 1.5 - 3m [1]; Wash out chamber; on 500 mm dia pipeline Depth 1.5 - 3m [4.01] | 685,447.64 |  | CO-R10.S03-IR-120 | 9 | 9 | ML | VI | Each | ML | IR | VALV | CON | R10 | S03 | IR | IR |

| ID | WBS | Activity | Duration | Start | Finish | Predecessors | Complete | Remaining | Planned start | Planned finish | Total float | Free float | Resources | Cost | Activity ID N | Seq | New Seq | 02- Network-WBS | 03- Activity | 04-UOM | 05-Discipline | 01- Network | 07-Weightage System | 08 Stage | 09 Roads | 10 side Walk | Discipline | New Discipline |
| --- | --- | --- | --- | --- | --- | --- | --- | --- | --- | --- | --- | --- | --- | --- | --- | --- | --- | --- | --- | --- | --- | --- | --- | --- | --- | --- | --- | --- |
|  | SL | **Street Lighting Network** |  | 2026-11-10 | 2027-02-28 |  |  |  |  |  |  |  |  |  |  |  |  |  |  |  |  |  |  |  |  |  |  |  |
|  | LP | **Lighting Poles Works** |  | 2026-11-10 | 2026-12-26 |  |  |  |  |  |  |  |  |  |  |  |  |  |  |  |  |  |  |  |  |  |  |  |
| CO-R10.S03-ES-SL-100 |  | Foundation Excavation Works for Lighting Poles of Street Lighting Network-[Road 10]-[SW-3] | 12d | 2026-11-10 A | 2026-12-07 | CO-R10.S03-ES-EW-110, ENG-SH-SL-A-110, CO-R10.S03-ES-EW-100, ENG-MS-SL-A-110, CO-R10.S03-ES-IR-130 | 70% | 12d | 2026-11-10 | 2026-11-23 | -190.5d | 0d | Labor/Helper [215.34 h]; Skilled Labor/Surveyor [107.67 h]; Excavator [192 h]; Lighting poles with one arm, including the power distribution box, screws, cables, 12 meters in height. [1] | 1,949.38 | CO-R10.S03-SL-100 | 9 | 9 | LP | Ex | Each | POL | SL | EX | CON | R10 | S03 | SL | SL |
| CO-R10.S03-ES-SL-110 |  | Installation Works for Lighting Poles Foundation of Street Lighting Network-[Road 10]-[SW-3] | 12d | 2026-11-12 A | 2026-12-13 | CO-R10.S03-ES-SL-100 SS+5d, CO-R10.S03-ES-SL-100 FF+5d | 70% | 12d | 2026-11-16 | 2026-11-29 | -190.5d | 0d | Labor/Helper [244.38 h]; Skilled Labor/Surveyor [22.43 h]; Foreman [22.43 h]; Eq. Operator [22.43 h]; Loader [48 h]; Reinforced concrete foundation, for 12m high lighting columns With Drawpits [34.11] | 12,670.44 | CO-R10.S03-SL-110 | 9 | 9 | LP | LPF | Each | POL | SL | INSTALL | CON | R10 | S03 | SL | SL |
| CO-R10.S03-ES-SL-210 |  | Backfilling Works for Lighting Poles of Street Lighting Network-[Road 10]-[SW-3] | 12d | 2026-11-14 A | 2026-12-20 | CO-R10.S03-ES-SL-120 FF, CO-R15.S10-SL-210 | 70% | 12d | 2026-11-29 | 2026-12-12 | -190.5d | 0d | Labor/Helper [215.34 h]; Skilled Labor/Surveyor [69.77 h]; Excavator [192 h]; Lighting poles with one arm, including the power distribution box, screws, cables, 12 meters in height. [7.02] | 13,648.7 | CO-R10.S03-SL-210 | 9 | 9 |  |  |  |  | SL | BACK | CON | R10 | S03 | SL | SL |
| CO-R10.S03-ES-SL-120 |  | Installation Works for Lighting Poles of Street Lighting Network-[Road 10]-[SW-3] | 18d | 2026-11-30 | 2026-12-20 | CO-R10.S03-ES-SL-110 SS+5d, CO-R10.S03-ES-SL-110 FF+5d |  |  |  |  | -190.5d | 0d | Labor/Helper [161.51 h]; Electrician [89.28 h]; Lighting poles with one arm, including the power distribution box, screws, cables, 12 meters in height. [18.06] | 35,096.96 | CO-R10.S03-SL-120 | 9 | 9 | LP | LP | Each | POL | SL | POLES | CON | R10 | S03 | SL | SL |
| CO-R10.S03-ES-SL-130 |  | Installation Works for Lighting Fixtures With Drop Wire of Street Lighting Network-[Road 10]-[SW-3] | 18d | 2026-12-06 | 2026-12-26 | CO-R10.S03-ES-SL-120 SS+5d, CO-R10.S03-ES-SL-120 FF+5d, CO-R10.S03-ES-SL-200 FF |  |  |  |  | -182d | 9d | Labor/Helper [161.51 h]; Electrician [148.8 h]; Manlift [144 h]; Street Lighting( LED) Luminaire,(Type C) complete with control gear and lamp, ?.17000 Lumen [34.11] | 20,861.09 | CO-R10.S03-SL-130 | 9 | 9 | LP | LPA | Each | POL | SL | INSTALL | CON | R10 | S03 | SL | SL |
| CO-R10.S03-ES-SL-200 |  | Testing Works for Lighting Poles of Street Lighting Network-[Road 10]-[SW-3] | 5d | 2026-12-21 | 2026-12-26 | CO-R10.S03-ES-SL-210, CO-R10.S03-ES-SL-120 |  |  |  |  | -182d | 0d | Labor/Helper [26.78 h]; Electrician [26.78 h]; Lighting poles with one arm, including the power distribution box, screws, cables, 12 meters in height. [7.02] | 13,648.7 | CO-R10.S03-SL-200 | 9 | 9 |  |  |  |  | SL | TESTING | CON | R10 | S03 | SL | SL |
|  | CW | **Cabling Works** |  | 2026-11-11 | 2026-12-20 |  |  |  |  |  |  |  |  |  |  |  |  |  |  |  |  |  |  |  |  |  |  |  |
| CO-R10.S03-ES-SL-140 |  | Trench Excavation and Bedding Works for Street Lighting Network-[Road 10]-[SW-3] | 10d | 2026-11-11 A | 2026-12-20 | ENG-SH-SL-A-110, CO-R10.S03-ES-IR-130, CO-R10.S03-ES-EW-110, CO-R10.S03-ES-SL-120 FF, CO-R10.S03-ES-SL-110 FF, ENG-MS-SL-A-110 | 70% | 10d | 2026-12-13 | 2026-12-23 | -177d | 0d | Labor/Helper [89.73 h]; Skilled Labor/Surveyor [44.86 h]; Excavator [80 h] |  | CO-R10.S03-SL-140 | 9 | 9 | CW | Ex | LM | CB | SL | EXC | CON | R10 | S03 | SL | SL |
| CO-R10.S03-ES-SL-150 |  | Cable Laying Works for Street Lighting Network-[Road 10]-[SW-3] | 10d | 2026-11-12 A | 2026-12-20 | CO-R10.S03-ES-SL-140 FF, CO-R10.S03-ES-SL-140 SS | 70% | 10d | 2026-12-24 | 2027-01-04 | -177d | 0d | Labor/Helper [89.73 h]; Electrician [89.28 h]; Low Current Technician [89.28 h]; Supply, installation , test and operation of cables, Copper, (4Cx25mmï¿½,Cu/XLPE/SWA/PVC +1x16mmï¿½ PVC/PVC) [1331.16] | 63,751.48 | CO-R10.S03-SL-150 | 9 | 9 | CW | CL | LM | CB | SL | LAYING | CON | R10 | S03 | SL | SL |
| CO-R10.S03-ES-SL-160 |  | Trench Backfilling and Compaction Works for Street Lighting Network-[Road 10]-[SW-3] | 10d | 2026-11-14 A | 2026-12-20 | CO-R10.S03-ES-SL-150 FF, CO-R10.S03-ES-IR-130 | 70% | 10d | 2027-01-05 | 2027-01-16 | -177d | 0d | Skilled Labor/Surveyor [8.97 h]; Foreman [8.97 h]; Excavator [80 h]; Water Tank [20 h]; Supply, installation , test and operation of cables, Copper, (4Cx25mmï¿½,Cu/XLPE/SWA/PVC +1x16mmï¿½ PVC/PVC) [102.32] | 4,900.5 | CO-R10.S03-SL-160 | 9 | 9 | CW | BF | LM | CB | SL | BACK | CON | R10 | S03 | SL | SL |
|  | DPB | **Distrubution Panel Boards** |  | 2027-02-03 | 2027-02-28 |  |  |  |  |  |  |  |  |  |  |  |  |  |  |  |  |  |  |  |  |  |  |  |
| CO-R10.S03-ES-SL-170 |  | Foundation Excavation Works For Panel Boards of Street Lighting Network-[Road 10]-[SW-3] | 12d | 2027-02-03 | 2027-02-16 | CO-R10-SL-ES-140, CO-R10.S03-ES-EW-110, ENG-SH-SL-A-110, ENG-MS-SL-A-110 |  |  |  |  | -191d | 0d | Labor/Helper [107.67 h]; Skilled Labor/Surveyor [53.84 h]; Excavator [96 h]; Reinforced concrete base With fence for Distribution substation in accordance with SEC Specifications [3.01] | 44,347.57 | CO-R10.S03-SL-170 | 9 | 9 | DB | Ex | Each | DS | SL | EXC | CON | R10 | S03 | SL | SL |
| CO-R10.S03-ES-SL-180 |  | Installation Works for Panel Board Concrete Foundations of Street Lighting Network-[Road 10]-[SW-3] | 12d | 2027-02-10 | 2027-02-24 | CO-R10-SL-ES-150 SS+3d, CO-R10-SL-ES-150 FF+3d, CO-R10.S03-ES-SL-170 SS+3d, CO-R10.S03-ES-SL-170 FF+3d |  |  |  |  | -191d | 0d | Skilled Labor/Surveyor [11.22 h]; Foreman [11.22 h]; Excavator [96 h]; Water Tank [24 h]; Package Substation 33000/400V, 500kVA with RMU [0.45] | 49,531.95 | CO-R10.S03-SL-180 | 9 | 9 | DB | PBF | Each | DS | SL | INSTALL | CON | R10 | S03 | SL | SL |
| CO-R10.S03-ES-SL-220 |  | A wall of concrete blocks to install the KWH meter of Street Lighting Network-[Road 10]-[SW-3] | 12d | 2027-02-10 | 2027-02-24 | CO-R10.S03-ES-SL-180 SS, CO-R10.S03-ES-SL-180 FF |  |  |  |  | -188d | 3d | Block Mason [107.67 h]; Road crossing ducts, 4 way (4 x 100mm PVC) [76.24]; Drawpit with medium duty steel cover, size 600x600x1000mm, Type 18 [3.01]; Drawpit with medium duty steel cover, size 900x900x1200mm, Type 4 [7.02]; Street Lighting Feeder pillars , Includes foundation and draw pits [3.01] | 58,962.28 | CO-R10.S03-SL-220 | 9 | 9 | DB |  | Each | DS | SL | wall | CON | R10 | S03 | SL | SL |
| CO-R10.S03-ES-SL-190 |  | Installation Works for Lighting Panel Boards of Street Lighting Network-[Road 10]-[SW-3] | 12d | 2027-02-14 | 2027-02-28 | CO-R10.S03-ES-SL-180 SS+3d, CO-R10.S03-ES-SL-180 FF+3d |  |  |  |  | -191d | 0d | Labor/Helper [107.67 h]; Electrician [89.28 h]; Package Substation 33000/400V, 500kVA with RMU [3.01] | 331,249.14 | CO-R10.S03-SL-190 | 9 | 9 | DB | PB | Each | DS | SL | INST BO | CON | R10 | S03 | SL | SL |
|  | TE | **Telecom Network** |  | 2026-12-09 | 2027-01-10 |  |  |  |  |  |  |  |  |  |  |  |  |  |  |  |  |  |  |  |  |  |  |  |
|  | PD | **Ducts Works** |  | 2026-12-09 | 2027-01-10 |  |  |  |  |  |  |  |  |  |  |  |  |  |  |  |  |  |  |  |  |  |  |  |
| CO-R10.S03-ES-TE-100 |  | Trench Excavation and Bedding Works for Ducts of Telecom Network-[Road 10]-[SW-3] | 7d | 2026-12-09 | 2026-12-16 | CO-R10.S03-ES-IR-130, CO-R10.S03-ES-SL-160 SS, CO-R15.S10-TE-100 |  |  |  |  | -174d | 0d | Skilled Labor/Surveyor [6.73 h]; Foreman [6.73 h]; Excavator [56 h]; 6-way ducts, 50mm dia. HDPE [64.2]; Road crossing ducts (6-way) [6.02] | 9,814.28 | CO-R10.S03-TE-100 | 9 | 9 | PD | Ex | LM | DC | TE | DUCTS | CON | R10 | S03 | TE | TE |
| CO-R10.S03-ES-TE-110 |  | Pipes Laying Works for Ducts of Telecom Network-[Road 10]-[SW-3] | 7d | 2026-12-17 | 2026-12-24 | CO-R10.S03-ES-TE-100 |  |  |  |  | -132d | 0d | Labor/Helper [125.62 h]; Skilled Labor/Surveyor [6.73 h]; Foreman [6.73 h]; Plumber [62.81 h]; Excavator [56 h]; JCB [28 h]; Truck [56 h]; 6-way ducts, 50mm dia. HDPE [380.19]; Road crossing ducts (6-way) [33.1] | 57,684.82 | CO-R10.S03-TE-110 | 9 | 9 | PD | PL | LM | DC | TE | DUCTS | CON | R10 | S03 | TE | TE |
| CO-R10.S03-ES-TE-120 |  | Pouring Plain Concrete Above Ducts of Telecom Network-[Road 10]-[SW-3] | 7d | 2026-12-26 | 2027-01-02 | CO-R10.S03-ES-TE-110 |  |  |  |  | -132d | 0d | Skilled Labor/Surveyor [6.73 h]; Foreman [6.73 h]; Cons. Carpenter [125.62 h]; Block Mason [62.81 h]; 6-way ducts, 50mm dia. HDPE [64.2]; Road crossing ducts (6-way) [6.02] | 9,814.28 | CO-R10.S03-TE-120 | 9 | 9 | PD | PC | LM | DC | TE | DUCTS | CON | R10 | S03 | TE | TE |
| CO-R10.S03-ES-TE-130 |  | Trench Backfilling and Compaction Works for Ducts of Telecom Network-[Road 10]-[SW-3] | 7d | 2027-01-03 | 2027-01-10 | CO-R10.S03-ES-TE-120 |  |  |  |  | -132d | 0d | Skilled Labor/Surveyor [6.73 h]; Foreman [6.73 h]; Excavator [56 h]; 6-way ducts, 50mm dia. HDPE [126.39]; Road crossing ducts (6-way) [11.03] | 19,182.32 | CO-R10.S03-TE-130 | 9 | 9 | PD | BF | LM | DC | TE | DUCTS | CON | R10 | S03 | TE | TE |
|  | MH | **Manholes Works** |  | 2026-12-17 | 2027-01-10 |  |  |  |  |  |  |  |  |  |  |  |  |  |  |  |  |  |  |  |  |  |  |  |
| CO-R10.S03-ES-TE-140 |  | Excavation Works for Manholes of Telecom Network-[Road 10]-[SW-3] | 7d | 2026-12-17 | 2026-12-24 | CO-R10.S03-ES-TE-100 |  |  |  |  | -139d | 0d | Skilled Labor/Surveyor [6.73 h]; Foreman [6.73 h]; Excavator [56 h]; Manhole Type 2 (2000x1000x1000) [1] | 3,218.67 | CO-R10.S03-TE-140 | 9 | 9 | MH | Ex | Each | MNH | TE | EXC | CON | R10 | S03 | TE | TE |
| CO-R10.S03-ES-TE-150 |  | Installation Works for Manholes of Telecom Network-[Road 10]-[SW-3] | 7d | 2026-12-26 | 2027-01-02 | CO-R10.S03-ES-TE-140 |  |  |  |  | -132d | 0d | Skilled Labor/Surveyor [6.73 h]; Foreman [6.73 h]; Excavator [56 h]; Manhole Type 1 (2000x1000x1000) [1]; Manhole Type 2 (2000x1000x1000) [3.01] | 12,848.12 | CO-R10.S03-TE-150 | 9 | 9 | MH | HH | Each | MNH | TE | INSTALL-1 | CON | R10 | S03 | TE | TE |
| CO-R10.S03-ES-TE-160 |  | Backfilling Works for Manholes of Telecom Network-[Road 10]-[SW-3] | 7d | 2027-01-03 | 2027-01-10 | CO-R10.S03-ES-TE-150 |  |  |  |  | -132d | 0d | Skilled Labor/Surveyor [6.73 h]; Foreman [6.73 h]; Excavator [56 h]; Manhole Type 2 (2000x1000x1000) [1] | 3,218.67 | CO-R10.S03-TE-160 | 9 | 9 | MH | BF | Each | MNH | TE | (New)-2 | CON | R10 | S03 | TE | TE |

| ID | WBS | Activity | Duration | Start | Finish | Predecessors | Complete | Remaining | Planned start | Planned finish | Total float | Free float | Resources | Cost | Actual cost | Activity ID N | Seq | New Seq | 02- Network-WBS | 03- Activity | 04-UOM | 05-Discipline | 01- Network | 07-Weightage System | 08 Stage | 09 Roads | 10 side Walk | Discipline | New Discipline |
| --- | --- | --- | --- | --- | --- | --- | --- | --- | --- | --- | --- | --- | --- | --- | --- | --- | --- | --- | --- | --- | --- | --- | --- | --- | --- | --- | --- | --- | --- |
|  | MV | **Medium Voltage Network** |  | 2026-07-09 | 2026-10-12 |  |  |  |  |  |  |  |  |  |  |  |  |  |  |  |  |  |  |  |  |  |  |  |  |
|  | CW | **Cabling Works** |  | 2026-09-09 | 2026-10-12 |  |  |  |  |  |  |  |  |  |  |  |  |  |  |  |  |  |  |  |  |  |  |  |  |
| CO-R10.S03-ES-MV-100 |  | Trench Excavation and Bedding Works for Medium Voltage Network-[Road 10]-[SW-3] | 18d | 2026-09-09 A | 2026-10-08 A | ENG-SH-MV-A-110, CO-R10.S03-ES-SD-170 SS+3d, CO-R10.S03-ES-SD-170 FF+3d, CO-R10.S03-ES-EW-110, ENG-MS-MV-A-110 | 100% |  | 2026-02-24 | 2026-03-16 |  |  | Skilled Labor/Surveyor [17.1 h]; Foreman [17.1 h]; Excavator [144 h]; Excavation for Trench size 40cm wide and 80cm deep ( Maximum 1 cable 33kv) [282.88]; Excavation for Trench size 60cm wide and 80cm deep ( for Max two cables 33 kv) [16.05]; Excavation for Trench size 90cm wide and 80cm deep ( Maximum 3 cable 33kv) [72.23]; Excavation for Trench size 120cm wide and 80cm deep ( Maximum 4cable 33kv) [24.08]; Excavation for Trench size 150cm wide and 80cm deep ( Maximum 4cable 33kv) [91.29]; Duct bank for (2) 33 kv cables [10.03]; Duct bank for (4) 33 kv cables [64.2]; Duct bank for (6) 33 kv cables [30.09] | 33,879.75 | 33,879.75 | CO-R10.S03-MV-100 | 9 | 9 | CW | Ex | LM | CW | MV | EXC | CON | R10 | S03 | MV | MV |
| CO-R10.S03-ES-MV-110 |  | Cable Laying Works for Medium Voltage Network-[Road 10]-[SW-3] | 18d | 2026-09-13 A | 2026-10-10 A | CO-R10.S03-ES-MV-100 SS+3d, CO-R10.S03-ES-MV-100 FF+3d, PRO-R10-MV-DL-100 FF+3d | 100% |  | 2026-02-28 | 2026-03-19 |  |  | Labor/Helper [328.29 h]; Electrician [328.29 h]; Low Current Technician [328.29 h]; 33kv 3Cx400 mmï¿½ Al XLPE / LLDPE /PVC Cable [1331.16]; 33kv 3Cx400 mmï¿½ Al XLPE /LLDPE/PVC [4.01] | 180,732.5 | 180,732.5 | CO-R10.S03-MV-110 | 9 | 9 | CW | CL | LM | CW | MV | LAY | CON | R10 | S03 | MV | MV |
| CO-R10.S03-ES-MV-120 |  | Trench Backfilling and Compaction Works for Medium Voltage Network-[Road 10]-[SW-3] | 18d | 2026-09-16 A | 2026-10-12 A | CO-R10.S03-ES-MV-110 SS+3d, CO-R10.S03-ES-MV-110 FF+3d, CO-R10.S03-ES-PW-130 FF+3d | 100% |  | 2026-03-03 | 2026-03-26 |  |  | Skilled Labor/Surveyor [17.1 h]; Foreman [17.1 h]; Excavator [144 h]; Water Tank [36 h]; 33kv 3Cx400 mmï¿½ Al XLPE / LLDPE /PVC Cable [570.78]; 33kv 3Cx400 mmï¿½ Al XLPE /LLDPE/PVC [1] | 76,186.04 | 76,186.04 | CO-R10.S03-MV-120 | 9 | 9 | CW | BF | LM | CW | MV | BACK | CON | R10 | S03 | MV | MV |
|  | SS | **RMU Works** |  | 2026-07-09 | 2026-07-13 |  |  |  |  |  |  |  |  |  |  |  |  |  |  |  |  |  |  |  |  |  |  |  |  |
| CO-R10.S03-ES-MV-130 |  | Foundation Excavation Works for RMU of Medium Voltage Network-[Road 10]-[SW-3] | 12d | 2026-07-09 A | 2026-07-13 A | ENG-SH-MV-A-110, ENG-MS-MV-A-110, CO-R10.S03-ES-EW-100, CO-R10.S03-ES-EW-110, CO-R10.S03-ES-MV-120 | 100% |  | 2026-03-28 | 2026-04-09 |  |  | Supply & installation of (33) kv MV Switch (RMU) for Normally-open Points (NOP) according to the Saudi Electric Company specification [0.1] | 8,195.76 | 8,195.76 | CO-R11.S05-MV-130 | 9 | 9 | RMU | Ex | Each | RMU | MV | EXC | CON | R10 | S03 | MV | MV |
| CO-R10.S03-ES-MV-150 |  | Installation Works for RMU Concrete Foundations of Medium Voltage Network-[Road 10]-[SW-3] | 18d | 2026-07-09 A | 2026-07-13 A | CO-R10.S03-ES-MV-130, PRO-R10-MV-DL-120 | 100% |  | 2026-04-11 | 2026-04-30 |  |  | Supply & installation of (33) kv MV Switch (RMU) for Normally-open Points (NOP) according to the Saudi Electric Company specification [0.25] | 20,488.37 | 20,488.37 | CO-R11.S05-MV-150 | 9 | 9 | RMU | RMUF | Each | RMU | MV | INSTALL | CON | R10 | S03 | MV | MV |
| CO-R10.S03-ES-MV-170 |  | Installation Works for RMU of Medium Voltage Network-[Road 10]-[SW-3] | 6d | 2026-07-09 A | 2026-07-13 A | CO-R10.S03-ES-MV-150, ENG-SH-MV-A-110, ENG-MS-MV-A-110, PRO-MV-LL-SH/DL-10, PRO-R10-MV-LL-MSI-10 | 100% |  | 2026-05-02 | 2026-05-07 |  |  | Supply & installation of (33) kv MV Switch (RMU) for Normally-open Points (NOP) according to the Saudi Electric Company specification [0.45] | 36,879.89 | 36,879.89 | CO-R11.S05-MV-170 | 9 | 9 | RMU | RMU | Each | RMU | MV | INS RMU | CON | R10 | S03 | MV | MV |
| CO-R10.S03-ES-MV-180 |  | Termination Works for RMU of Medium Voltage Network-[Road 10]-[SW-3] | 5d | 2026-07-09 A | 2026-07-13 A | CO-R10.S03-ES-MV-170 | 100% |  | 2026-05-09 | 2026-05-13 |  |  | Supply & installation of (33) kv MV Switch (RMU) for Normally-open Points (NOP) according to the Saudi Electric Company specification [0.1] | 8,195.76 | 8,195.76 | CO-R11.S05-MV-SS-150 | 9 | 9 |  |  |  |  | MV | TER RMU | CON | R10 | S03 | MV | MV |
| CO-R10.S03-ES-MV-190 |  | Testing Works for RMU of Medium Voltage Network-[Road 10]-[SW-3] | 5d | 2026-07-09 A | 2026-07-13 A | CO-R10.S03-ES-MV-180 | 100% |  | 2026-05-14 | 2026-05-19 |  |  | Supply & installation of (33) kv MV Switch (RMU) for Normally-open Points (NOP) according to the Saudi Electric Company specification [0.1] | 8,195.76 | 8,195.76 | CO-R11.S05-MV-SS-160 | 9 | 9 |  |  |  |  | MV | BACK RM | CON | R10 | S03 | MV | MV |
|  | RD | **Road Works** |  | 2026-08-25 | 2027-05-05 |  |  |  |  |  |  |  |  |  |  |  |  |  |  |  |  |  |  |  |  |  |  |  |  |
|  | RD | **Pre-Bituminous Construction** |  | 2026-09-10 | 2027-01-14 |  |  |  |  |  |  |  |  |  |  |  |  |  |  |  |  |  |  |  |  |  |  |  |  |
| CO-R10.S03-ES-RD-100 |  | Capping and Subgrade Layer for Road Works-[Road 10]-[SW-3] | 18d | 2026-09-10 A | 2027-01-10 | ENG-SH-RD-A-100, CO-R10.S03-ES-SD-130, CO-R10.S03-ES-PW-130, CO-R10.S03-ES-PW-160 FF, CO-R10.S03-ES-SL-160 FF+3d, ENG-MS-RD-A-10, CO-R10.S03-ES-TE-130 FF, CO-R10.S03-ES-TE-160 FF, CO-R10.S03-ES-MV-120 SS+3d, CO-R10.S03-ES-MV-120 FF+3d | 98% | 14d | 2026-03-07 | 2026-03-30 | -132d | 0d | Labor/Helper [326.85 h]; Skilled Labor/Surveyor [94.13 h]; Loader [144 h]; Grader [144 h]; Road Roller [144 h]; Water Tank [144 h]; 300mm capping layer underneath subgrade , CBR?15% [4813.03]; 300mm thick Subgrade, including subgrade preparation, CBR?25% [4813.03] | 381,391.75 | 190,695.87 | CO-R10.S03-RD-P-100 | 9 | 9 | AB | SG | Sq.m | BS | RD |  | CON | R10 | S03 | RD | RD |
| CO-R10.S03-ES-RD-110 |  | Aggregate Base Course Layer for Road Works-[Road 10]-[SW-3] | 18d | 2026-10-28 A | 2027-01-14 | CO-R10.S03-ES-RD-100 SS+3d, CO-R10.S03-ES-RD-100 FF+3d, CO-R10.S03-ES-SD-170 SS+3d, CO-R10.S03-ES-SD-170 FF+3d | 60% | 18d | 2027-01-21 | 2027-02-10 | -15d | 200.5d | Labor/Helper [323.01 h]; Skilled Labor/Surveyor [161.51 h]; Foreman [161.51 h]; Loader [144 h]; Grader [144 h]; Road Roller [144 h]; Aggregate base course 200mm thick after compaction in two layers(Grading 1); CBR?80%; including watering, compaction and testing [3209.02] | 265,658.57 |  | CO-R10.S03-RD-P-110 | 9 | 9 | AB | BA | Sq.m | BS | RD |  | CON | R10 | S03 | RD | RD |
|  | LS | **Pavement Works** |  | 2026-08-25 | 2027-05-05 |  |  |  |  |  |  |  |  |  |  |  |  |  |  |  |  |  |  |  |  |  |  |  |  |
| CO-R10.S03-ES-RD-120 |  | Fixing of Curbstone for Sidewalks Pavement-[Road 10]-[SW-3] | 18d | 2026-08-25 A | 2026-08-31 A | CO-R10.S03-ES-PW-170 | 100% |  | 2026-03-14 | 2026-04-06 |  |  | Labor/Helper [328.29 h]; Block Mason [984.87 h]; Precast Concrete Kerb, Type K1 [1775.55]; Precast Concrete Kerb, Type L1 [3523] | 217,507.21 | 217,507.21 | CO-R10.S03-RD-P-120 | 9 | 9 | LS | CR | LM | LAND | RD |  | CON | R10 | S03 | RD | RD |
| CO-R10.S03-ES-RD-130 |  | Fixing of Interlock Tiles for Sidewalks Pavement-[Road 10]-[SW-3] | 10d | 2027-04-25 | 2027-05-05 | CO-R10.S03-ES-RD-120 SS+3d, CO-R10.S03-ES-RD-120 FF+3d, CO-R10-PW-TF-100, CO-R10-PW-TF-110, CO-R10-PW-TF-120, CO-R10-SW-TF-100, CO-R10-SW-TF-110, CO-R10-SW-TF-130, CO-R10-SD-TF-100, CO-R10-SL-TF-140, CO-R10-SL-TF-150, CO-R10-SL-ES-140, CO-R10-SL-ES-150, CO-R10-IR-TF-120, CO-R10-MV-TF-140 |  |  |  |  | -183d | 0d | Labor/Helper [482.11 h]; Block Mason [1254.94 h]; Interlocking block pavers for sidewalk/footpath 60mm thick on and including 30mm Sand Bedding, 200mm Aggregate subbase, all in accordance with authority standards and complete as per specifications [3170.9]; Extraover for Pedestrian ramps [8.03] | 155,456.97 |  | CO-R10.S03-RD-P-130 | 9 | 9 | LS | IL | Sq.m | LAND | RD |  | CON | R10 | S03 | RD | RD |
|  | SW_31 | **SW_3-West** |  | 2025-04-08 | 2027-05-05 |  |  |  |  |  |  |  |  |  |  |  |  |  |  |  |  |  |  |  |  |  |  |  |  |
|  | EW | **Earthworks** |  | 2025-04-08 | 2025-04-14 |  |  |  |  |  |  |  |  |  |  |  |  |  |  |  |  |  |  |  |  |  |  |  |  |
|  | EW | **Earthworks** |  | 2025-04-08 | 2025-04-14 |  |  |  |  |  |  |  |  |  |  |  |  |  |  |  |  |  |  |  |  |  |  |  |  |
| CO-R10.S03-WE-EW-100 |  | Roadway Excavation Works Upto Design Level for Earthworks-[Road 10]-[SW-3] | 12d | 2025-04-08 A | 2025-04-14 A | CO-R09.S02-EW-110, ENG-MS-RD-A-10, ENG-SH-RD-A-100, CO-R11.S06-EW-100 | 100% |  | 2025-09-01 | 2025-09-14 |  |  | Labor/Helper [218.86 h]; Skilled Labor/Surveyor [27.36 h]; Foreman [27.36 h]; Water Tank [192 h]; Dozer [192 h]; Roadway Excavation for cuttings; on any type of material for all depths including trimming and Preparation of excavated surfaces and disposal. [22656.8] | 145,757.06 | 145,757.06 | CO-R10.S03-EW-100 | 9 | 9 | EW | Ex | Cub.m | EW | EW |  | CON | R10 | S03 | EW | EW |
| CO-R10.S03-WE-EW-110 |  | Embankments Works Upto Design Level for Earthworks-[Road 10]-[SW-3] | 12d | 2025-04-08 A | 2025-04-14 A | CO-R10.S03-WE-EW-100, ENG-MS-RD-A-10, ENG-SH-RD-A-100 | 100% |  | 2025-09-15 | 2025-09-29 |  |  | Labor/Helper [820.72 h]; Skilled Labor/Surveyor [102.59 h]; Foreman [102.59 h]; Water Tank [720 h]; Dozer [720 h]; Embankments to the ROW, with suitable material other than top soil or rock according to specifications [38141.1] | 315,477.47 | 315,477.47 | CO-R10.S03-EW-110 | 9 | 9 | EW | BF | Cub.m | EW | EW |  | CON | R10 | S03 | EW | EW |
|  | SD | **Storm Drainage Network** |  | 2025-08-07 | 2026-10-10 |  |  |  |  |  |  |  |  |  |  |  |  |  |  |  |  |  |  |  |  |  |  |  |  |
|  | ML | **Main Line Sections** |  | 2025-08-07 | 2025-08-28 |  |  |  |  |  |  |  |  |  |  |  |  |  |  |  |  |  |  |  |  |  |  |  |  |
| CO-R10.S03-WE-SD-100 |  | Trench Excavation and Bedding Works for Main Lines of Storm Drainage Network-[Road 10]-[SW-3] | 10d | 2025-08-07 A | 2025-08-10 A | ENG-SH-SD-ML-A-110, CO-R10.S03-WE-EW-110, CO-R10.S03-WE-EW-100, ENG-MS-SD-ML-A-110, CO-R11.S06-SD-100 | 100% |  | 2025-11-18 | 2025-11-29 |  |  | Skilled Labor/Surveyor [13.68 h]; Foreman [13.68 h]; Excavator [112 h]; Pipe with diameter 500mm ; depth: 0.0m - 1.5m [7.02]; Pipe with diameter 600mm ; depth: 1.51m - 2.5m [28.09]; Pipe with diameter 600mm ; depth: 2.51m - 3.5m [24.08]; Pipe with diameter 700mm ; depth: 1.51m - 2.5m [79.25] | 65,066.72 | 65,066.72 | CO-R10.S03-SD-100 | 9 | 9 | ML | Ex | LM | ML | SD | EX | CON | R10 | S03 | SD | SD |
| CO-R10.S03-WE-SD-120 |  | Pipes Laying Works for Main Lines of Storm Drainage Network-[Road 10]-[SW-3] | 10d | 2025-08-11 A | 2025-08-14 A | CO-R10.S03-WE-SD-100, CO-R11.S06-SD-120 | 100% |  | 2025-11-30 | 2025-12-10 |  |  | Labor/Helper [273.57 h]; Skilled Labor/Surveyor [13.68 h]; Foreman [13.68 h]; Plumber [136.79 h]; Excavator [120 h]; Pipe with diameter 500mm ; depth: 0.0m - 1.5m [21.07]; Pipe with diameter 600mm ; depth: 1.51m - 2.5m [83.26]; Pipe with diameter 600mm ; depth: 2.51m - 3.5m [74.23]; Pipe with diameter 700mm ; depth: 1.51m - 2.5m [238.75] | 196,296.89 | 196,296.89 | CO-R10.S03-SD-120 | 9 | 9 | ML | PL | LM | ML | SD | PIPE | CON | R10 | S03 | SD | SD |
| CO-R10.S03-WE-SD-130 |  | Trench Backfilling and Compaction Works for Main Lines of Storm Drainage Network-[Road 10]-[SW-3] | 15d | 2025-08-19 A | 2025-08-28 A | ENG-SH-SD-ML-A-110 FF, ENG-MS-SD-ML-A-110 FF, CO-R10.S03-WE-SD-120, CO-R10.S03-WE-SD-220 FF | 100% |  | 2025-12-11 | 2025-12-28 |  |  | Skilled Labor/Surveyor [13.68 h]; Foreman [13.68 h]; Excavator [120 h]; Pipe with diameter 500mm ; depth: 0.0m - 1.5m [4.01]; Pipe with diameter 600mm ; depth: 1.51m - 2.5m [14.04]; Pipe with diameter 600mm ; depth: 2.51m - 3.5m [13.04]; Pipe with diameter 700mm ; depth: 1.51m - 2.5m [40.13] | 33,453.93 | 33,453.93 | CO-R10.S03-SD-130 | 9 | 9 | ML | BF | LM | ML | SD | BACK | CON | R10 | S03 | SD | SD |

| ID | WBS | Activity | Duration | Start | Finish | Predecessors | Complete | Planned start | Planned finish | Total float | Free float | Resources | Cost | Actual cost | Activity ID N | Seq | New Seq | 01- Network | 07-Weightage System | 08 Stage | 09 Roads | 10 side Walk | Discipline | New Discipline | 02- Network-WBS | 03- Activity | 04-UOM | 05-Discipline |
| --- | --- | --- | --- | --- | --- | --- | --- | --- | --- | --- | --- | --- | --- | --- | --- | --- | --- | --- | --- | --- | --- | --- | --- | --- | --- | --- | --- | --- |
|  | MH | **Manholes** |  | 2025-11-06 | 2026-10-10 |  |  |  |  |  |  |  |  |  |  |  |  |  |  |  |  |  |  |  |  |  |  |  |
| CO-R10.S03-WE-SD-180 |  | Trench Excavation and Bedding Works for Manholes of Storm Drainage Network-[Road 10]-[SW-3] | 1d | 2025-11-06 A | 2025-11-15 A | CO-R10.S03-WE-SD-120 SS, PRO-SD-1DL-100 | 100% | 2025-11-30 | 2025-11-30 |  |  | Labor/Helper [45.6 h]; Skilled Labor/Surveyor [22.8 h]; Excavator [40 h]; MH ; depth: 0.0m - 1.5m [0.23]; MH ; depth: 1.51m - 2.5m [1]; MH ; depth: 0.0m - 1.5m [0.15]; MH ; depth: 0.0m - 1.5m [0.07]; MH ; depth: 1.51m - 2.5m [0.23]; MH ; depth: 2.51 - 3.5m [0.3]; MH ; depth: 3.51 - 4.5m [0.3] | 44,707.01 | 44,707.01 | CO-R10.S03-SD-180 | 9 | 9 | SD | EX | CON | R10 | S03 | SD | SD |  |  |  |  |
| CO-R10.S03-WE-SD-190 |  | Install RC Footing Works for Manholes of Storm Drainage Network-[Road 10]-[SW-3] | 1d | 2025-11-08 A | 2025-11-16 A | CO-R10.S03-WE-SD-180 | 100% | 2025-12-01 | 2025-12-01 |  |  | Cons. Carpenter [91.19 h]; Steel Fixer [91.19 h]; MH ; depth: 0.0m - 1.5m [0.07]; MH ; depth: 1.51m - 2.5m [0.2]; MH ; depth: 0.0m - 1.5m [0.05]; MH ; depth: 0.0m - 1.5m [0.03]; MH ; depth: 1.51m - 2.5m [0.07]; MH ; depth: 2.51 - 3.5m [0.1]; MH ; depth: 3.51 - 4.5m [0.1] | 12,629.6 | 12,629.6 | CO-R10.S03-SD-190 | 9 | 9 | SD | RC F | CON | R10 | S03 | SD | SD |  |  |  |  |
| CO-R10.S03-WE-SD-200 |  | Install RC Wall Rings & Slab Works for Manholes of Storm Drainage Network-[Road 10]-[SW-3] | 4d | 2025-11-09 A | 2025-11-16 A | CO-R10.S03-WE-SD-190 | 100% | 2025-12-02 | 2025-12-06 |  |  | Cons. Carpenter [145.91 h]; Steel Fixer [145.91 h]; MH ; depth: 0.0m - 1.5m [1]; MH ; depth: 1.51m - 2.5m [3.01]; MH ; depth: 0.0m - 1.5m [0.45]; MH ; depth: 0.0m - 1.5m [0.23]; MH ; depth: 1.51m - 2.5m [1]; MH ; depth: 2.51 - 3.5m [1]; MH ; depth: 3.51 - 4.5m [1] | 148,813.36 | 148,813.36 | CO-R10.S03-SD-200 | 9 | 9 | SD | RC W | CON | R10 | S03 | SD | SD |  |  |  |  |
| CO-R10.S03-WE-SD-220 |  | Backfilling Works for Manholes of Storm Drainage Network-[Road 10]-[SW-3] | 7d | 2025-11-11 A | 2025-11-20 A | CO-R10.S03-WE-SD-210 | 100% | 2025-12-08 | 2025-12-15 |  |  | Labor/Helper [319.17 h]; Skilled Labor/Surveyor [159.58 h]; Excavator [280 h]; MH ; depth: 0.0m - 1.5m [0.3]; MH ; depth: 1.51m - 2.5m [1]; MH ; depth: 0.0m - 1.5m [0.2]; MH ; depth: 0.0m - 1.5m [0.1]; MH ; depth: 1.51m - 2.5m [0.3]; MH ; depth: 2.51 - 3.5m [0.4]; MH ; depth: 3.51 - 4.5m [0.4] | 53,955.58 | 53,955.58 | CO-R10.S03-SD-220 | 9 | 9 | SD | BACK | CON | R10 | S03 | SD | SD |  |  |  |  |
| CO-R10.S03-WE-SD-210 |  | Testing Works for Manholes of Storm Drainage Network-[Road 10]-[SW-3] | 1d | 2026-10-10 A | 2026-10-10 A | CO-R10.S03-WE-SD-200 | 100% | 2025-12-07 | 2025-12-07 |  |  | Labor/Helper [45.6 h]; Plumber [45.6 h]; MH ; depth: 0.0m - 1.5m [0.15]; MH ; depth: 1.51m - 2.5m [0.4]; MH ; depth: 0.0m - 1.5m [0.1]; MH ; depth: 0.0m - 1.5m [0.05]; MH ; depth: 1.51m - 2.5m [0.15]; MH ; depth: 2.51 - 3.5m [0.2]; MH ; depth: 3.51 - 4.5m [0.2] | 25,261.23 | 25,261.23 | CO-R10.S03-SD-210 | 9 | 9 | SD | T&COV | CON | R10 | S03 | SD | SD |  |  |  |  |
|  | CB | **Catch Basin Sections** |  | 2025-09-01 | 2026-10-10 |  |  |  |  |  |  |  |  |  |  |  |  |  |  |  |  |  |  |  |  |  |  |  |
| CO-R10.S03-WE-SD-140 |  | Trench Excavation and Bedding Works for Catch Basins of Storm Drainage Network-[Road 10]-[SW-3] | 6d | 2025-09-01 A | 2025-09-04 A | CO-R10.S03-WE-EW-110, ENG-SH-SD-CB-A-110, ENG-MS-SD-CB-A-110, CO-R10.S03-WE-SD-220 | 100% | 2025-12-16 | 2025-12-22 |  |  | Skilled Labor/Surveyor [5.7 h]; Foreman [5.7 h]; Excavator [48 h]; Pipe with diameter 300mm ; depth: 0 - 1.5m [120.38]; Pipe with diameter 400mm ; depth: 0 - 1.5m [7.02] | 30,211.77 | 30,211.77 | CO-R10.S03-SD-140 | 9 | 9 | SD | EX | CON | R10 | S03 | SD | SD | CB | Ex | Each | CB |
| CO-R10.S03-WE-SD-150 |  | Installation and Pipes Laying Connection Works for Catch Basins of Storm Drainage Network-[Road 10]-[SW-3] | 7d | 2025-09-06 A | 2025-09-07 A | CO-R10.S03-WE-SD-140 | 100% | 2025-12-23 | 2025-12-30 |  |  | Labor/Helper [255.34 h]; Skilled Labor/Surveyor [13.68 h]; Foreman [13.68 h]; Excavator [112 h]; Pipe with diameter 300mm ; depth: 0 - 1.5m [360.12]; Pipe with diameter 400mm ; depth: 0 - 1.5m [21.07] | 90,400.46 | 90,400.46 | CO-R10.S03-SD-150 | 9 | 9 | SD | INSTALL | CON | R10 | S03 | SD | SD | CB | CB | Each | CB |
| CO-R10.S03-WE-SD-170 |  | Trench Backfilling and Compaction Works for Catch Basins of Storm Drainage Network-[Road 10]-[SW-3] | 7d | 2025-09-08 A | 2025-09-09 A | CO-R10.S03-WE-SD-160 | 100% | 2026-01-12 | 2026-01-19 |  |  | Skilled Labor/Surveyor [6.84 h]; Foreman [6.84 h]; Excavator [56 h]; Pipe with diameter 300mm ; depth: 0 - 1.5m [160.5]; Pipe with diameter 400mm ; depth: 0 - 1.5m [10.03] | 40,492.72 | 40,492.72 | CO-R10.S03-SD-170 | 9 | 9 | SD | BACK | CON | R10 | S03 | SD | SD | CB | BF | Each | CB |
| CO-R10.S03-WE-SD-160 |  | Testing Works for Catch Basins of Storm Drainage Network-[Road 10]-[SW-3] | 10d | 2026-10-10 A | 2026-10-10 A | CO-R10.S03-WE-SD-150, CO-R10.S03-WE-SD-120 | 100% | 2025-12-31 | 2026-01-11 |  |  | Labor/Helper [182.38 h]; Skilled Labor/Surveyor [9.12 h]; Foreman [9.12 h]; Plumber [91.19 h]; Excavator [80 h]; Pipe with diameter 300mm ; depth: 0 - 1.5m [79.25]; Pipe with diameter 400mm ; depth: 0 - 1.5m [4.01] | 19,698 | 19,698 | CO-R10.S03-SD-160 | 9 | 9 | SD | TEST | CON | R10 | S03 | SD | SD | CB | PL | Each | CB |
|  | PW | **Potable Water Network** |  | 2025-08-05 | 2026-12-10 |  |  |  |  |  |  |  |  |  |  |  |  |  |  |  |  |  |  |  |  |  |  |  |
|  | ML | **Main Line Sections** |  | 2025-08-05 | 2025-08-16 |  |  |  |  |  |  |  |  |  |  |  |  |  |  |  |  |  |  |  |  |  |  |  |
| CO-R10.S03-WE-PW-100 |  | Trench Excavation and Bedding Works for Main Lines of Potable Water Network-[Road 10]-[SW-3] | 6d | 2025-08-05 A | 2025-08-07 A | ENG-SH-PW-ML-A-110, CO-R10.S03-WE-EW-110, CO-R10.S03-WE-EW-100, ENG-MS-PW-ML-A-110, ENG-SH-PW-FH-A-110, CO-R10.S03-WE-SD-130 | 100% | 2025-12-29 | 2026-01-04 |  |  | Skilled Labor/Surveyor [5.7 h]; Foreman [5.7 h]; Excavator [48 h]; Pipe with diameter 200mm; in depth 0.0m - 1.5m [362.13] | 53,763.6 | 53,763.6 | CO-R10.S03-PW-100 | 9 | 9 | PW | EX | CON | R10 | S03 | PW | PW | ML | Ex | LM | ML |
| CO-R10.S03-WE-PW-110 |  | Pipes Laying and accessories for Main Lines of Potable Water Network-[Road 10]-[SW-3] | 6d | 2025-08-09 A | 2025-08-12 A | CO-R10.S03-WE-PW-100 | 100% | 2026-01-05 | 2026-01-11 |  |  | Labor/Helper [218.86 h]; Skilled Labor/Surveyor [11.4 h]; Foreman [11.4 h]; Plumber [109.43 h]; Excavator [96 h]; Pipe with diameter 200mm; in depth 0.0m - 1.5m [905.83] | 134,484.57 | 134,484.57 | CO-R10.S03-PW-110 | 9 | 9 | PW | PIPE | CON | R10 | S03 | PW | PW | ML | PL | LM | ML |
| CO-R10.S03-WE-PW-130 |  | Trench Backfilling and Compaction Works for Main Lines of Potable Water Network-[Road 10]-[SW-3] | 6d | 2025-08-13 A | 2025-08-16 A | CO-R10.S03-WE-PW-110 SS+3d, CO-R10.S03-WE-PW-110 FF+3d, CO-R10.S03-WE-PW-220 FF | 100% | 2026-01-19 | 2026-01-25 |  |  | Skilled Labor/Surveyor [5.7 h]; Foreman [5.7 h]; Eq. Operator [5.7 h]; Loader [48 h]; Compactor [48 h]; Water Tank [12 h]; Pipe with diameter 200mm; in depth 0.0m - 1.5m [362.13] | 53,763.6 | 53,763.6 | CO-R10.S03-PW-130 | 9 | 9 | PW | BACK | CON | R10 | S03 | PW | PW | ML | BF | LM | ML |
|  | VC | **Valve Chamber** |  | 2026-07-07 | 2026-07-17 |  |  |  |  |  |  |  |  |  |  |  |  |  |  |  |  |  |  |  |  |  |  |  |
| CO-R10.S03-WE-PW-170 |  | Excavation Works for Main Line Valves and Valve Chambers of Potable Water Network-[Road 10]-[SW-3] | 1d | 2026-07-07 A | 2026-07-17 A | CO-R10.S03-WE-PW-100 | 100% | 2026-01-05 | 2026-01-05 |  |  | Labor/Helper [18.24 h]; Skilled Labor/Surveyor [9.12 h]; Excavator [16 h]; Wash out chamber; on 200 mm dia pipeline Depth 1.5 - 3m [0.1]; Air valve chamber; on 200 mm dia pipeline Depth 1.5 - 3 m [0.15] | 4,445.07 | 4,445.07 | CO-R10.S03-PW-170 | 9 | 9 | PW | EX | CON | R10 | S03 | PW | PW | ML | VI | Each | ML |
| CO-R10.S03-WE-PW-180 |  | RC Footing Works for Main Line Valves and Valve Chambers of Potable Water Network-[Road 10]-[SW-3] | 3d | 2026-07-07 A | 2026-07-17 A | CO-R10.S03-WE-PW-170 | 100% | 2026-01-06 | 2026-01-08 |  |  | Cons. Carpenter [54.71 h]; Steel Fixer [54.71 h]; Wash out chamber; on 200 mm dia pipeline Depth 1.5 - 3m [0.15]; Air valve chamber; on 200 mm dia pipeline Depth 1.5 - 3 m [0.23] | 6,666.07 | 6,666.07 | CO-R10.S03-PW-180 | 9 | 9 | PW | RC F | CON | R10 | S03 | PW | PW | ML | VI | Each | ML |
| CO-R10.S03-WE-PW-190 |  | RC Wall Works for Main Line Valves and Valve Chambers of Potable Water Network-[Road 10]-[SW-3] | 6d | 2026-07-07 A | 2026-07-17 A | CO-R10.S03-WE-PW-180 | 100% | 2026-01-10 | 2026-01-15 |  |  | Cons. Carpenter [109.43 h]; Steel Fixer [109.43 h]; Wash out chamber; on 200 mm dia pipeline Depth 1.5 - 3m [0.35]; Air valve chamber; on 200 mm dia pipeline Depth 1.5 - 3 m [1] | 19,334.47 | 19,334.47 | CO-R10.S03-PW-190 | 9 | 9 | PW | RC W | CON | R10 | S03 | PW | PW | ML | VI | Each | ML |
| CO-R10.S03-WE-PW-200 |  | RC Slab Works for Main Line Valves and Valve Chambers of Potable Water Network-[Road 10]-[SW-3] | 2d | 2026-07-07 A | 2026-07-17 A | CO-R10.S03-WE-PW-190 | 100% | 2026-01-17 | 2026-01-18 |  |  | Cons. Carpenter [72.95 h]; Steel Fixer [72.95 h]; Wash out chamber; on 200 mm dia pipeline Depth 1.5 - 3m [0.2]; Air valve chamber; on 200 mm dia pipeline Depth 1.5 - 3 m [0.3] | 8,889.12 | 8,889.12 | CO-R10.S03-PW-200 | 9 | 9 | PW | RC S | CON | R10 | S03 | PW | PW | ML | VI | Each | ML |
| CO-R10.S03-WE-PW-210 |  | Insulation Works for Main Line Valves and Valve Chambers of Potable Water Network-[Road 10]-[SW-3] | 1d | 2026-07-07 A | 2026-07-17 A | CO-R10.S03-WE-PW-200 | 100% | 2026-01-19 | 2026-01-19 |  |  | Labor/Helper [18.24 h]; Plumber [18.24 h]; Gate valves dia(200)mm on pipes with dia (200) mm. [16.05]; Wash out valve with dia (100)mm on pipes with dia (200) mm [1]; Air valves with dia (50mm) mm on pipes with dia(200)mm. [3.01] | 69,132.95 | 69,132.95 | CO-R10.S03-PW-210 | 9 | 9 | PW | INSUL | CON | R10 | S03 | PW | PW | ML | VI | Each | ML |
| CO-R10.S03-WE-PW-220 |  | Backfilling Works for Main Line Valves and Valve Chambers of Potable Water Network-[Road 10]-[SW-3] | 3d | 2026-07-07 A | 2026-07-17 A | CO-R10.S03-WE-PW-210 | 100% | 2026-01-20 | 2026-01-22 |  |  | Labor/Helper [27.36 h]; Skilled Labor/Surveyor [13.68 h]; Excavator [24 h]; Wash out chamber; on 200 mm dia pipeline Depth 1.5 - 3m [0.2]; Air valve chamber; on 200 mm dia pipeline Depth 1.5 - 3 m [0.3] | 8,889.12 | 8,889.12 | CO-R10.S03-PW-220 | 9 | 9 | PW | BACK | CON | R10 | S03 | PW | PW | ML | VI | Each | ML |
|  | FH | **Fire Hydrant** |  | 2026-11-24 | 2026-12-10 |  |  |  |  |  |  |  |  |  |  |  |  |  |  |  |  |  |  |  |  |  |  |  |
| CO-R10.S03-WE-PW-140 |  | Excavation Works for Fire Hydrants of Potable Water Network-[Road 10]-[SW-3] | 6d | 2026-11-24 | 2026-11-30 | CO-R10.S03-WE-PW-110 SS+3d, CO-R10.S03-WE-PW-110 FF+3d, CO-R10.S03-WE-EW-110 |  |  |  | -106d | 0d | Skilled Labor/Surveyor [5.61 h]; Foreman [5.61 h]; Excavator [48 h]; 3-outlet fire hydrant (2 x 2.5 inch and 1 x 4 inch) in the form of a separate dry vacuum cylinder [1] | 7,758.71 |  | CO-R10.S03-PW-140 | 9 | 9 | PW | EX | CON | R10 | S03 | PW | PW | FH | Ex | Each | FH |
| CO-R10.S03-WE-PW-150 |  | Installation Works for Fire Hydrant of Potable Water Network-[Road 10]-[SW-3] | 6d | 2026-12-01 | 2026-12-07 | CO-R10.S03-WE-PW-140 |  |  |  | -106d | 0d | Labor/Helper [107.67 h]; Skilled Labor/Surveyor [5.61 h]; Foreman [5.61 h]; Plumber [107.67 h]; 3-outlet fire hydrant (2 x 2.5 inch and 1 x 4 inch) in the form of a separate dry vacuum cylinder [7.02] | 54,311.96 |  | CO-R10.S03-PW-150 | 9 | 9 | PW | INSTALL | CON | R10 | S03 | PW | PW | FH | FH | Each | FH |
| CO-R10.S03-WE-PW-160 |  | Trench Backfilling and Compaction Works for Fire Hydrants of Potable Water Network-[Road 10]-[SW-3] | 6d | 2026-12-05 | 2026-12-10 | CO-R10.S03-WE-PW-150 SS+3d, CO-R10.S03-WE-PW-150 FF+3d |  |  |  | -106d | 22d | Skilled Labor/Surveyor [5.61 h]; Foreman [5.61 h]; Excavator [48 h]; 3-outlet fire hydrant (2 x 2.5 inch and 1 x 4 inch) in the form of a separate dry vacuum cylinder [3.01] | 23,276.12 |  | CO-R10.S03-PW-160 | 9 | 9 | PW | BACK | CON | R10 | S03 | PW | PW | FH | BF | Each | FH |

| ID | WBS | Activity | Duration | Start | Finish | Predecessors | Complete | Remaining | Planned start | Planned finish | Total float | Free float | Resources | Cost | Actual cost | Activity ID N | Seq | New Seq | 02- Network-WBS | 03- Activity | 04-UOM | 05-Discipline | 01- Network | 07-Weightage System | 08 Stage | 09 Roads | 10 side Walk | Discipline | New Discipline |
| --- | --- | --- | --- | --- | --- | --- | --- | --- | --- | --- | --- | --- | --- | --- | --- | --- | --- | --- | --- | --- | --- | --- | --- | --- | --- | --- | --- | --- | --- |
|  | IR | **Irrigation Network** |  | 2025-08-10 | 2026-11-25 |  |  |  |  |  |  |  |  |  |  |  |  |  |  |  |  |  |  |  |  |  |  |  |  |
|  | ML | **Main Line Pipes** |  | 2025-08-10 | 2026-11-25 |  |  |  |  |  |  |  |  |  |  |  |  |  |  |  |  |  |  |  |  |  |  |  |  |
| CO-R10.S03-WE-IR-100 |  | Trench Excavation and Bedding Works for Main Lines of Irrigation Network-[Road 10]-[SW-3] | 7d | 2025-08-10 A | 2025-08-14 A | ENG-SH-IR-ML-A-110, CO-R10.S03-WE-EW-110, CO-R10.S03-WE-PW-130, CO-R10.S03-WE-SD-170, ENG-MS-IR-ML-A-110 | 100% |  | 2026-01-26 | 2026-02-02 |  |  | Skilled Labor/Surveyor [6.84 h]; Foreman [6.84 h]; Excavator [56 h]; 355 mm pipe; depth 1.5m - 3.0m [141.44]; 400 mm pipe; depth 1.5m - 3.0m [141.44]; 500. mm pipe; depth 1.5m - 3.0m [397.24] | 342,968.89 | 342,968.89 | CO-R10.S03-IR-100 | 9 | 9 | ML | Ex | LM | ML | IR | EX | CON | R10 | S03 | IR | IR |
| CO-R10.S03-WE-IR-110 |  | Pipes Laying Works for Main Lines of Irrigation Network-[Road 10]-[SW-3] | 7d | 2025-08-16 A | 2025-08-19 A | CO-R10.S03-WE-IR-100, PRO-R19.2-IR-DL-100 FF+3d | 100% |  | 2026-02-03 | 2026-02-10 |  |  | Labor/Helper [127.67 h]; Skilled Labor/Surveyor [6.84 h]; Foreman [6.84 h]; Plumber [63.83 h]; Excavator [56 h]; 355 mm pipe; depth 1.5m - 3.0m [425.33]; 400 mm pipe; depth 1.5m - 3.0m [425.33] | 344,832.5 | 344,832.5 | CO-R10.S03-IR-110 | 9 | 9 | ML | PL | LM | ML | IR | PIPE | CON | R10 | S03 | IR | IR |
| CO-R10.S03-WE-IR-130 |  | Trench Backfilling and Compaction Works for Main Lines of Irrigation Network-[Road 10]-[SW-3] | 7d | 2025-08-20 A | 2025-08-24 A | CO-R10.S03-WE-IR-110 | 100% |  | 2026-02-14 | 2026-02-21 |  |  | Skilled Labor/Surveyor [6.84 h]; Foreman [6.84 h]; Excavator [56 h]; 355 mm pipe; depth 1.5m - 3.0m [71.22]; 400 mm pipe; depth 1.5m - 3.0m [71.22] | 57,743.03 | 57,743.03 | CO-R10.S03-IR-130 | 9 | 9 | ML | BF | LM | ML | IR | BACK | CON | R10 | S03 | IR | IR |
| CO-R10.S03-WE-IR-120 |  | Installation Works for Main Line Valves of Irrigation Network-[Road 10]-[SW-3] | 2d | 2026-11-24 | 2026-11-25 | CO-R10.S03-WE-IR-110 |  |  |  |  | -24d | 116d | Labor/Helper [71.78 h]; Skilled Labor/Surveyor [4.49 h]; Foreman [4.49 h]; Plumber [71.78 h]; Butterfly valves with dia (355)mm on pipes with dia (355)mm. [1]; Butterfly valves with dia (400)mm on pipes with dia (400)mm. [1]; Butterfly valves with dia (500)mm on pipes with dia (500)mm. [4.01]; Wash out valve with dia (150)mm on pipes with dia (400) mm [1]; Wash out valve with dia (150)mm on pipes with dia (500) mm [4.01]; Air valves with dia (65mm) mm on pipes with dia(500)mm. [4.01]; Wash out chamber; on 400 mm dia pipeline Depth 1.5 - 3m [1]; Wash out chamber; on 500 mm dia pipeline Depth 1.5 - 3m [3.01] | 578,578.05 |  | CO-R10.S03-IR-120 | 9 | 9 | ML | VI | Each | ML | IR | VALV | CON | R10 | S03 | IR | IR |
|  | SL | **Street Lighting Network** |  | 2026-11-10 | 2027-02-28 |  |  |  |  |  |  |  |  |  |  |  |  |  |  |  |  |  |  |  |  |  |  |  |  |
|  | LP | **Lighting Poles Works** |  | 2026-11-10 | 2026-12-26 |  |  |  |  |  |  |  |  |  |  |  |  |  |  |  |  |  |  |  |  |  |  |  |  |
| CO-R10.S03-WE-SL-100 |  | Foundation Excavation Works for Lighting Poles of Street Lighting Network-[Road 10]-[SW-3] | 12d | 2026-11-10 A | 2026-12-07 | CO-R10.S03-WE-EW-110, ENG-SH-SL-A-110, CO-R10.S03-WE-EW-100, ENG-MS-SL-A-110, CO-R10.S03-WE-IR-130 | 70% | 12d | 2026-11-10 | 2026-11-23 | -182d | 0d | Labor/Helper [215.34 h]; Skilled Labor/Surveyor [54.15 h]; Excavator [192 h]; Lighting poles with one arm, including the power distribution box, screws, cables, 12 meters in height. [1] | 1,949.38 |  | CO-R10.S03-SL-100 | 9 | 9 | LP | Ex | Each | POL | SL | EX | CON | R10 | S03 | SL | SL |
| CO-R10.S03-WE-SL-110 |  | Installation Works for Lighting Poles Foundation of Street Lighting Network-[Road 10]-[SW-3] | 12d | 2026-11-11 A | 2026-12-13 | CO-R10.S03-WE-SL-100 SS+5d, CO-R10.S03-WE-SL-100 FF+5d | 70% | 12d | 2026-11-16 | 2026-11-29 | -182d | 0d | Labor/Helper [430.68 h]; Skilled Labor/Surveyor [22.43 h]; Foreman [22.43 h]; Eq. Operator [22.43 h]; Loader [48 h]; Reinforced concrete foundation, for 12m high lighting columns With Drawpits [34.11] | 12,670.44 |  | CO-R10.S03-SL-110 | 9 | 9 | LP | LPF | Each | POL | SL | INSTALL | CON | R10 | S03 | SL | SL |
| CO-R10.S03-WE-SL-210 |  | Backfilling Works for Lighting Poles of Street Lighting Network-[Road 10]-[SW-3] | 12d | 2026-11-12 A | 2026-12-20 | CO-R10.S03-WE-SL-120 FF, CO-R10.S03-WE-SL-110 SS | 70% | 12d | 2026-11-29 | 2026-12-12 | -182d | 0d | Labor/Helper [108.61 h]; Skilled Labor/Surveyor [27.08 h]; Excavator [192 h]; Lighting poles with one arm, including the power distribution box, screws, cables, 12 meters in height. [7.02] | 13,648.7 |  | CO-R10.S03-SL-210 | 9 | 9 |  |  |  |  | SL | BACK | CON | R10 | S03 | SL | SL |
| CO-R10.S03-WE-SL-120 |  | Installation Works for Lighting Poles of Street Lighting Network-[Road 10]-[SW-3] | 18d | 2026-11-30 | 2026-12-20 | CO-R10.S03-WE-SL-110 SS+5d, CO-R10.S03-WE-SL-110 FF+5d |  |  |  |  | -182d | 0d | Labor/Helper [161.51 h]; Electrician [161.51 h]; Lighting poles with one arm, including the power distribution box, screws, cables, 12 meters in height. [18.06] | 35,096.96 |  | CO-R10.S03-SL-120 | 9 | 9 | LP | LP | Each | POL | SL | POLES | CON | R10 | S03 | SL | SL |
| CO-R10.S03-WE-SL-130 |  | Installation Works for Lighting Fixtures With Drop Wire of Street Lighting Network-[Road 10]-[SW-3] | 18d | 2026-12-06 | 2026-12-26 | CO-R10.S03-WE-SL-120 SS+5d, CO-R10.S03-WE-SL-120 FF+5d, CO-R10.S03-WE-SL-200 FF |  |  |  |  | -182d | 9d | Labor/Helper [161.51 h]; Electrician [161.51 h]; Manlift [144 h]; Street Lighting( LED) Luminaire,(Type C) complete with control gear and lamp, ?.17000 Lumen [34.11] | 20,861.09 |  | CO-R10.S03-SL-130 | 9 | 9 | LP | LPA | Each | POL | SL | INSTALL | CON | R10 | S03 | SL | SL |
| CO-R10.S03-WE-SL-200 |  | Testing Works for Lighting Poles of Street Lighting Network-[Road 10]-[SW-3] | 5d | 2026-12-21 | 2026-12-26 | CO-R10.S03-WE-SL-210, CO-R10.S03-WE-SL-120 |  |  |  |  | -182d | 0d | Labor/Helper [179.45 h]; Electrician [179.45 h]; Lighting poles with one arm, including the power distribution box, screws, cables, 12 meters in height. [7.02] | 13,648.7 |  | CO-R10.S03-SL-200 | 9 | 9 |  |  |  |  | SL | TESTING | CON | R10 | S03 | SL | SL |
|  | CW | **Cabling Works** |  | 2026-11-11 | 2026-12-20 |  |  |  |  |  |  |  |  |  |  |  |  |  |  |  |  |  |  |  |  |  |  |  |  |
| CO-R10.S03-WE-SL-140 |  | Trench Excavation and Bedding Works for Street Lighting Network-[Road 10]-[SW-3] | 10d | 2026-11-11 A | 2026-12-20 | ENG-SH-SL-A-110, CO-R10.S03-WE-IR-130, CO-R10.S03-WE-EW-110, CO-R10.S03-WE-SL-120 FF, CO-R10.S03-WE-SL-110 FF, ENG-MS-SL-A-110 | 70% | 10d | 2026-12-13 | 2026-12-23 | -177d | 0d | Labor/Helper [89.73 h]; Skilled Labor/Surveyor [44.86 h]; Excavator [80 h] |  |  | CO-R10.S03-SL-140 | 9 | 9 | CW | Ex | LM | CB | SL | EXC | CON | R10 | S03 | SL | SL |
| CO-R10.S03-WE-SL-160 |  | Trench Backfilling and Compaction Works for Street Lighting Network-[Road 10]-[SW-3] | 10d | 2026-11-12 A | 2026-12-20 | CO-R10.S03-WE-SL-150 FF, CO-R10.S03-WE-IR-130 | 70% | 10d | 2027-01-05 | 2027-01-16 | -177d | 0d | Skilled Labor/Surveyor [8.97 h]; Foreman [8.97 h]; Excavator [80 h]; Water Tank [20 h]; Supply, installation , test and operation of cables, Copper, (4Cx25mmï¿½,Cu/XLPE/SWA/PVC +1x16mmï¿½ PVC/PVC) [102.32] | 4,900.5 |  | CO-R10.S03-SL-160 | 9 | 9 | CW | BF | LM | CB | SL | BACK | CON | R10 | S03 | SL | SL |
| CO-R10.S03-WE-SL-150 |  | Cable Laying Works for Street Lighting Network-[Road 10]-[SW-3] | 10d | 2026-11-14 A | 2026-12-20 | CO-R10.S03-WE-SL-140 FF, CO-R10.S03-WE-SL-140 SS | 70% | 10d | 2026-12-24 | 2027-01-04 | -177d | 0d | Labor/Helper [89.73 h]; Electrician [89.73 h]; Low Current Technician [89.73 h]; Supply, installation , test and operation of cables, Copper, (4Cx25mmï¿½,Cu/XLPE/SWA/PVC +1x16mmï¿½ PVC/PVC) [1331.16] | 63,751.48 |  | CO-R10.S03-SL-150 | 9 | 9 | CW | CL | LM | CB | SL | LAYING | CON | R10 | S03 | SL | SL |
|  | DPB | **Distrubution Panel Boards** |  | 2027-02-03 | 2027-02-28 |  |  |  |  |  |  |  |  |  |  |  |  |  |  |  |  |  |  |  |  |  |  |  |  |
| CO-R10.S03-WE-SL-170 |  | Foundation Excavation Works For Panel Boards of Street Lighting Network-[Road 10]-[SW-3] | 12d | 2027-02-03 | 2027-02-16 | CO-R10-SL-ES-140, CO-R10.S03-WE-EW-110, ENG-SH-SL-A-110, ENG-MS-SL-A-110 |  |  |  |  | -191d | 0d | Labor/Helper [107.67 h]; Skilled Labor/Surveyor [53.84 h]; Excavator [96 h]; Reinforced concrete base With fence for Distribution substation in accordance with SEC Specifications [3.01] | 44,347.57 |  | CO-R10.S03-SL-170 | 9 | 9 | DB | Ex | Each | DS | SL | EXC | CON | R10 | S03 | SL | SL |
| CO-R10.S03-WE-SL-180 |  | Installation Works for Panel Board Concrete Foundations of Street Lighting Network-[Road 10]-[SW-3] | 12d | 2027-02-10 | 2027-02-24 | CO-R10-SL-ES-150 SS+3d, CO-R10-SL-ES-150 FF+3d, CO-R10.S03-WE-SL-170 SS+3d, CO-R10.S03-WE-SL-170 FF+3d |  |  |  |  | -191d | 0d | Skilled Labor/Surveyor [11.22 h]; Foreman [11.22 h]; Excavator [96 h]; Water Tank [24 h] |  |  | CO-R10.S03-SL-180 | 9 | 9 | DB | PBF | Each | DS | SL | INSTALL | CON | R10 | S03 | SL | SL |
| CO-R10.S03-WE-SL-220 |  | A wall of concrete blocks to install the KWH meter of Street Lighting Network-[Road 10]-[SW-3] | 12d | 2027-02-10 | 2027-02-24 | CO-R10.S03-WE-SL-180 SS, CO-R10.S03-WE-SL-180 FF |  |  |  |  | -188d | 3d | Block Mason [107.67 h]; Road crossing ducts, 4 way (4 x 100mm PVC) [76.24]; Drawpit with medium duty steel cover, size 600x600x1000mm, Type 18 [3.01]; Drawpit with medium duty steel cover, size 900x900x1200mm, Type 4 [7.02]; Street Lighting Feeder pillars , Includes foundation and draw pits [3.01] | 58,962.28 |  | CO-R10.S03-SL-220 | 9 | 9 | DB |  | Each | DS | SL | wall | CON | R10 | S03 | SL | SL |
| CO-R10.S03-WE-SL-190 |  | Installation Works for Lighting Panel Boards of Street Lighting Network-[Road 10]-[SW-3] | 12d | 2027-02-14 | 2027-02-28 | CO-R10.S03-WE-SL-180 SS+3d, CO-R10.S03-WE-SL-180 FF+3d |  |  |  |  | -191d | 0d | Labor/Helper [107.67 h]; Electrician [107.67 h] |  |  | CO-R10.S03-SL-190 | 9 | 9 | DB | PB | Each | DS | SL | INST BO | CON | R10 | S03 | SL | SL |
|  | TE | **Telecom Network** |  | 2026-12-09 | 2027-01-05 |  |  |  |  |  |  |  |  |  |  |  |  |  |  |  |  |  |  |  |  |  |  |  |  |
|  | PD | **Ducts Works** |  | 2026-12-09 | 2027-01-05 |  |  |  |  |  |  |  |  |  |  |  |  |  |  |  |  |  |  |  |  |  |  |  |  |
| CO-R10.S03-WE-TE-100 |  | Trench Excavation and Bedding Works for Ducts of Telecom Network-[Road 10]-[SW-3] | 3d | 2026-12-09 | 2026-12-12 | CO-R10.S03-WE-IR-130, CO-R10.S03-WE-SL-160 SS, CO-R11.S06-TE-100 |  |  |  |  | -135d | 0d | Skilled Labor/Surveyor [6.73 h]; Foreman [6.73 h]; Excavator [56 h]; 6-way ducts, 50mm dia. HDPE [64.2]; Road crossing ducts (6-way) [6.02] | 9,814.28 |  | CO-R10.S03-TE-100 | 9 | 9 | PD | Ex | LM | DC | TE | DUCTS | CON | R10 | S03 | TE | TE |
| CO-R10.S03-WE-TE-110 |  | Pipes Laying Works for Ducts of Telecom Network-[Road 10]-[SW-3] | 7d | 2026-12-13 | 2026-12-20 | CO-R10.S03-WE-TE-100 |  |  |  |  | -128d | 0d | Labor/Helper [125.62 h]; Skilled Labor/Surveyor [6.73 h]; Foreman [6.73 h]; Plumber [62.81 h]; Excavator [56 h]; JCB [28 h]; Truck [56 h]; 6-way ducts, 50mm dia. HDPE [380.19]; Road crossing ducts (6-way) [33.1] | 57,684.82 |  | CO-R10.S03-TE-110 | 9 | 9 | PD | PL | LM | DC | TE | DUCTS | CON | R10 | S03 | TE | TE |
| CO-R10.S03-WE-TE-120 |  | Pouring Plain Concrete Above Ducts of Telecom Network-[Road 10]-[SW-3] | 7d | 2026-12-21 | 2026-12-28 | CO-R10.S03-WE-TE-110 |  |  |  |  | -128d | 0d | Skilled Labor/Surveyor [6.73 h]; Foreman [6.73 h]; Cons. Carpenter [125.62 h]; Block Mason [62.81 h]; 6-way ducts, 50mm dia. HDPE [64.2]; Road crossing ducts (6-way) [6.02] | 9,814.28 |  | CO-R10.S03-TE-120 | 9 | 9 | PD | PC | LM | DC | TE | DUCTS | CON | R10 | S03 | TE | TE |
| CO-R10.S03-WE-TE-130 |  | Trench Backfilling and Compaction Works for Ducts of Telecom Network-[Road 10]-[SW-3] | 7d | 2026-12-29 | 2027-01-05 | CO-R10.S03-WE-TE-120 |  |  |  |  | -128d | 0d | Skilled Labor/Surveyor [6.73 h]; Foreman [6.73 h]; Excavator [56 h]; 6-way ducts, 50mm dia. HDPE [126.39]; Road crossing ducts (6-way) [11.03] | 19,182.32 |  | CO-R10.S03-TE-130 | 9 | 9 | PD | BF | LM | DC | TE | DUCTS | CON | R10 | S03 | TE | TE |

| ID | WBS | Activity | Duration | Start | Finish | Predecessors | Complete | Remaining | Planned start | Planned finish | Total float | Free float | Resources | Cost | Actual cost | Activity ID N | Seq | New Seq | 02- Network-WBS | 03- Activity | 04-UOM | 05-Discipline | 01- Network | 07-Weightage System | 08 Stage | 09 Roads | 10 side Walk | Discipline | New Discipline |
| --- | --- | --- | --- | --- | --- | --- | --- | --- | --- | --- | --- | --- | --- | --- | --- | --- | --- | --- | --- | --- | --- | --- | --- | --- | --- | --- | --- | --- | --- |
|  | MH | **Manholes Works** |  | 2026-12-13 | 2027-01-05 |  |  |  |  |  |  |  |  |  |  |  |  |  |  |  |  |  |  |  |  |  |  |  |  |
| CO-R10.S03-WE-TE-140 |  | Excavation Works for Manholes of Telecom Network-[Road 10]-[SW-3] | 7d | 2026-12-13 | 2026-12-20 | CO-R10.S03-WE-TE-100 |  |  |  |  | -135d | 0d | Skilled Labor/Surveyor [6.73 h]; Foreman [6.73 h]; Excavator [56 h]; Manhole Type 2 (2000x1000x1000) [1] | 3,218.67 |  | CO-R10.S03-TE-140 | 9 | 9 | MH | Ex | Each | MNH | TE | EXC | CON | R10 | S03 | TE | TE |
| CO-R10.S03-WE-TE-150 |  | Installation Works for Manholes of Telecom Network-[Road 10]-[SW-3] | 7d | 2026-12-21 | 2026-12-28 | CO-R10.S03-WE-TE-140 |  |  |  |  | -128d | 0d | Skilled Labor/Surveyor [6.73 h]; Foreman [6.73 h]; Excavator [56 h]; Manhole Type 1 (2000x1000x1000) [1]; Manhole Type 2 (2000x1000x1000) [3.01] | 12,848.12 |  | CO-R10.S03-TE-150 | 9 | 9 | MH | HH | Each | MNH | TE | INSTALL-1 | CON | R10 | S03 | TE | TE |
| CO-R10.S03-WE-TE-160 |  | Backfilling Works for Manholes of Telecom Network-[Road 10]-[SW-3] | 7d | 2026-12-29 | 2027-01-05 | CO-R10.S03-WE-TE-150 |  |  |  |  | -128d | 0d | Skilled Labor/Surveyor [6.73 h]; Foreman [6.73 h]; Excavator [56 h]; Manhole Type 2 (2000x1000x1000) [1] | 3,218.67 |  | CO-R10.S03-TE-160 | 9 | 9 | MH | BF | Each | MNH | TE | (New)-2 | CON | R10 | S03 | TE | TE |
|  | MV | **Medium Voltage Network** |  | 2026-07-09 | 2026-10-10 |  |  |  |  |  |  |  |  |  |  |  |  |  |  |  |  |  |  |  |  |  |  |  |  |
|  | CW | **Cabling Works** |  | 2026-09-22 | 2026-10-10 |  |  |  |  |  |  |  |  |  |  |  |  |  |  |  |  |  |  |  |  |  |  |  |  |
| CO-R10.S03-WE-MV-100 |  | Trench Excavation and Bedding Works for Medium Voltage Network-[Road 10]-[SW-3] | 10d | 2026-09-22 A | 2026-10-10 A | ENG-SH-MV-A-110, CO-R10.S03-WE-SD-170 SS+3d, CO-R10.S03-WE-SD-170 FF+3d, CO-R10.S03-WE-EW-110, ENG-MS-MV-A-110 | 100% |  | 2026-07-11 | 2026-07-21 |  |  | Skilled Labor/Surveyor [17.1 h]; Foreman [17.1 h]; Excavator [144 h]; Excavation for Trench size 40cm wide and 80cm deep ( Maximum 1 cable 33kv) [282.88]; Excavation for Trench size 60cm wide and 80cm deep ( for Max two cables 33 kv) [16.05]; Excavation for Trench size 90cm wide and 80cm deep ( Maximum 3 cable 33kv) [72.23]; Excavation for Trench size 120cm wide and 80cm deep ( Maximum 4cable 33kv) [24.08]; Excavation for Trench size 150cm wide and 80cm deep ( Maximum 4cable 33kv) [91.29]; Duct bank for (2) 33 kv cables [10.03]; Duct bank for (4) 33 kv cables [64.2]; Duct bank for (6) 33 kv cables [30.09] | 33,879.75 | 33,879.75 | CO-R10.S03-MV-100 | 9 | 9 | CW | Ex | LM | CW | MV | EXC | CON | R10 | S03 | MV | MV |
| CO-R10.S03-WE-MV-110 |  | Cable Laying Works for Medium Voltage Network-[Road 10]-[SW-3] | 10d | 2026-09-22 A | 2026-10-10 A | CO-R10.S03-WE-MV-100 SS+3d, CO-R10.S03-WE-MV-100 FF+3d, PRO-R10-MV-DL-100 FF+3d | 100% |  | 2026-07-14 | 2026-07-25 |  |  | Labor/Helper [91.19 h]; Electrician [638.96 h]; Low Current Technician [91.19 h]; 33kv 3Cx400 mmï¿½ Al XLPE / LLDPE /PVC Cable [1331.16]; 33kv 3Cx400 mmï¿½ Al XLPE /LLDPE/PVC [4.01] | 180,732.5 | 180,732.5 | CO-R10.S03-MV-110 | 9 | 9 | CW | CL | LM | CW | MV | LAY | CON | R10 | S03 | MV | MV |
| CO-R10.S03-WE-MV-120 |  | Trench Backfilling and Compaction Works for Medium Voltage Network-[Road 10]-[SW-3] | 10d | 2026-09-22 A | 2026-10-10 A | CO-R10.S03-WE-MV-110 SS+3d, CO-R10.S03-WE-MV-110 FF+3d, CO-R10.S03-WE-PW-130 FF+3d | 100% |  | 2026-07-18 | 2026-07-28 |  |  | Skilled Labor/Surveyor [17.1 h]; Foreman [17.1 h]; Excavator [144 h]; Water Tank [36 h]; 33kv 3Cx400 mmï¿½ Al XLPE / LLDPE /PVC Cable [570.78]; 33kv 3Cx400 mmï¿½ Al XLPE /LLDPE/PVC [1] | 76,186.04 | 76,186.04 | CO-R10.S03-MV-120 | 9 | 9 | CW | BF | LM | CW | MV | BACK | CON | R10 | S03 | MV | MV |
|  | SS | **RMU Works** |  | 2026-07-09 | 2026-07-13 |  |  |  |  |  |  |  |  |  |  |  |  |  |  |  |  |  |  |  |  |  |  |  |  |
| CO-R10.S03-WE-MV-130 |  | Foundation Excavation Works for RMU of Medium Voltage Network-[Road 10]-[SW-3] | 10d | 2026-07-09 A | 2026-07-13 A | ENG-SH-MV-A-110, ENG-MS-MV-A-110, CO-R10.S03-WE-EW-100, CO-R10.S03-WE-EW-110, CO-R10.S03-WE-MV-120 | 100% |  | 2026-07-29 | 2026-08-09 |  |  | Supply & installation of (33) kv MV Switch (RMU) for Normally-open Points (NOP) according to the Saudi Electric Company specification [0.1] | 8,195.76 | 8,195.76 | CO-R11.S05-MV-130 | 9 | 9 | RMU | Ex | Each | RMU | MV | EXC | CON | R10 | S03 | MV | MV |
| CO-R10.S03-WE-MV-150 |  | Installation Works for RMU Concrete Foundations of Medium Voltage Network-[Road 10]-[SW-3] | 10d | 2026-07-09 A | 2026-07-13 A | CO-R10.S03-WE-MV-130, PRO-R10-MV-DL-120 | 100% |  | 2026-08-10 | 2026-08-20 |  |  | Supply & installation of (33) kv MV Switch (RMU) for Normally-open Points (NOP) according to the Saudi Electric Company specification [0.25] | 20,488.37 | 20,488.37 | CO-R11.S05-MV-150 | 9 | 9 | RMU | RMUF | Each | RMU | MV | INSTALL | CON | R10 | S03 | MV | MV |
| CO-R10.S03-WE-MV-170 |  | Installation Works for RMU of Medium Voltage Network-[Road 10]-[SW-3] | 6d | 2026-07-09 A | 2026-07-13 A | CO-R10.S03-WE-MV-150, ENG-SH-MV-A-110, ENG-MS-MV-A-110, PRO-MV-LL-SH/DL-10, PRO-R10-MV-LL-MSI-10 | 100% |  | 2026-08-22 | 2026-08-27 |  |  | Supply & installation of (33) kv MV Switch (RMU) for Normally-open Points (NOP) according to the Saudi Electric Company specification [0.45] | 36,879.89 | 36,879.89 | CO-R11.S05-MV-170 | 9 | 9 | RMU | RMU | Each | RMU | MV | INS RMU | CON | R10 | S03 | MV | MV |
| CO-R10.S03-WE-MV-180 |  | Termination Works for RMU of Medium Voltage Network-[Road 10]-[SW-3] | 5d | 2026-07-09 A | 2026-07-13 A | CO-R10.S03-WE-MV-170 | 100% |  | 2026-08-29 | 2026-09-02 |  |  | Supply & installation of (33) kv MV Switch (RMU) for Normally-open Points (NOP) according to the Saudi Electric Company specification [0.1] | 8,195.76 | 8,195.76 | CO-R11.S05-MV-SS-150 | 9 | 9 |  |  |  |  | MV | TER RMU | CON | R10 | S03 | MV | MV |
| CO-R10.S03-WE-MV-190 |  | Testing Works for RMU of Medium Voltage Network-[Road 10]-[SW-3] | 5d | 2026-07-09 A | 2026-07-13 A | CO-R10.S03-WE-MV-180 | 100% |  | 2026-09-03 | 2026-09-08 |  |  | Supply & installation of (33) kv MV Switch (RMU) for Normally-open Points (NOP) according to the Saudi Electric Company specification [0.1] | 8,195.76 | 8,195.76 | CO-R11.S05-MV-SS-160 | 9 | 9 |  |  |  |  | MV | BACK RM | CON | R10 | S03 | MV | MV |
|  | RD | **Road Works** |  | 2026-08-22 | 2027-05-05 |  |  |  |  |  |  |  |  |  |  |  |  |  |  |  |  |  |  |  |  |  |  |  |  |
|  | RD | **Pre-Bituminous Construction** |  | 2026-08-22 | 2027-01-10 |  |  |  |  |  |  |  |  |  |  |  |  |  |  |  |  |  |  |  |  |  |  |  |  |
| CO-R10.S03-WE-RD-100 |  | Capping and Subgrade Layer for Road Works-[Road 10]-[SW-3] | 12d | 2026-08-22 A | 2027-01-05 | ENG-SH-RD-A-100, CO-R10.S03-WE-SD-130, CO-R10.S03-WE-PW-130, CO-R10.S03-WE-PW-160 FF, CO-R10.S03-WE-SL-160 FF+3d, ENG-MS-RD-A-10, CO-R10.S03-WE-TE-130 FF, CO-R10.S03-WE-TE-160 FF, CO-R10.S03-WE-MV-120 SS+3d, CO-R10.S03-WE-MV-120 FF+3d | 90% | 14d | 2026-07-21 | 2026-08-03 | -128d | 0d | Labor/Helper [326.85 h]; Skilled Labor/Surveyor [136.99 h]; Loader [144 h]; Grader [144 h]; Road Roller [144 h]; Water Tank [144 h]; 300mm capping layer underneath subgrade , CBR?15% [4813.03]; 300mm thick Subgrade, including subgrade preparation, CBR?25% [4813.03] | 381,391.75 | 38,139.17 | CO-R10.S03-RD-P-100 | 9 | 9 | AB | SG | Sq.m | BS | RD |  | CON | R10 | S03 | RD | RD |
| CO-R10.S03-WE-RD-110 |  | Aggregate Base Course Layer for Road Works-[Road 10]-[SW-3] | 18d | 2026-11-12 A | 2027-01-10 | CO-R10.S03-WE-RD-100 SS+3d, CO-R10.S03-WE-RD-100 FF+3d, CO-R10.S03-WE-SD-170 SS+3d, CO-R10.S03-WE-SD-170 FF+3d | 50% | 18d | 2027-01-17 | 2027-02-06 | -11d | 204.5d | Labor/Helper [323.01 h]; Skilled Labor/Surveyor [135.38 h]; Foreman [161.51 h]; Loader [144 h]; Grader [144 h]; Road Roller [144 h]; Aggregate base course 200mm thick after compaction in two layers(Grading 1); CBR?80%; including watering, compaction and testing [3209.02] | 265,658.57 |  | CO-R10.S03-RD-P-110 | 9 | 9 | AB | BA | Sq.m | BS | RD |  | CON | R10 | S03 | RD | RD |
|  | LS | **Pavement Works** |  | 2026-08-25 | 2027-05-05 |  |  |  |  |  |  |  |  |  |  |  |  |  |  |  |  |  |  |  |  |  |  |  |  |
| CO-R10.S03-WE-RD-120 |  | Fixing of Curbstone for Sidewalks Pavement-[Road 10]-[SW-3] | 18d | 2026-08-25 A | 2026-08-31 A | CO-R10.S03-WE-PW-170 | 100% |  | 2026-07-28 | 2026-08-17 |  |  | Labor/Helper [612.48 h]; Block Mason [1837.44 h]; Precast Concrete Kerb, Type K1 [1775.55]; Precast Concrete Kerb, Type L1 [3523] | 217,507.21 | 217,507.21 | CO-R10.S03-RD-P-120 | 9 | 9 | LS | CR | LM | LAND | RD |  | CON | R10 | S03 | RD | RD |
| CO-R10.S03-WE-RD-130 |  | Fixing of Interlock Tiles for Sidewalks Pavement-[Road 10]-[SW-3] | 10d | 2027-04-25 | 2027-05-05 | CO-R10.S03-WE-RD-120 SS+3d, CO-R10.S03-WE-RD-120 FF+3d, CO-R10-PW-TF-100, CO-R10-PW-TF-110, CO-R10-PW-TF-120, CO-R10-SW-TF-100, CO-R10-SW-TF-110, CO-R10-SW-TF-130, CO-R10-SD-TF-100, CO-R10-SL-TF-140, CO-R10-SL-TF-150, CO-R10-SL-ES-140, CO-R10-SL-ES-150, CO-R10-IR-TF-120, CO-R10-MV-TF-140 |  |  |  |  | -183d | 0d | Labor/Helper [844.9 h]; Block Mason [2534.69 h]; Interlocking block pavers for sidewalk/footpath 60mm thick on and including 30mm Sand Bedding, 200mm Aggregate subbase, all in accordance with authority standards and complete as per specifications [3170.9]; Extraover for Pedestrian ramps [8.03] | 155,456.97 |  | CO-R10.S03-RD-P-130 | 9 | 9 | LS | IL | Sq.m | LAND | RD |  | CON | R10 | S03 | RD | RD |
|  | 2 | **SW-4** |  | 2025-04-01 | 2027-05-08 |  |  |  |  |  |  |  |  |  |  |  |  |  |  |  |  |  |  |  |  |  |  |  |  |
|  | SW_4 | **SW_4-East** |  | 2025-04-01 | 2027-05-05 |  |  |  |  |  |  |  |  |  |  |  |  |  |  |  |  |  |  |  |  |  |  |  |  |
|  | EW | **Earthworks** |  | 2025-04-01 | 2025-04-13 |  |  |  |  |  |  |  |  |  |  |  |  |  |  |  |  |  |  |  |  |  |  |  |  |
|  | EW | **Earthworks** |  | 2025-04-01 | 2025-04-13 |  |  |  |  |  |  |  |  |  |  |  |  |  |  |  |  |  |  |  |  |  |  |  |  |
| CO-R10.S04-ES-EW-100 |  | Roadway Excavation Works Upto Design Level for Earthworks-[Road 10]-[SW-4] | 10d | 2025-04-01 A | 2025-04-12 A | ENG-MS-RD-A-10, ENG-SH-RD-A-100, CO-R10.S03-ES-EW-100 | 100% |  | 2025-05-31 | 2025-06-15 |  |  | Labor/Helper [218.86 h]; Skilled Labor/Surveyor [27.36 h]; Foreman [27.36 h]; Water Tank [192 h]; Dozer [192 h]; Roadway Excavation for cuttings; on any type of material for all depths including trimming and Preparation of excavated surfaces and disposal. [22656.8] | 145,757.06 | 145,757.06 | CO-R10.S04-EW-100 | 10 | 10 | EW | Ex | Cub.m | EW | EW |  | CON | R10 | S04 | EW | EW |
| CO-R10.S04-ES-EW-110 |  | Embankments Works Upto Design Level for Earthworks-[Road 10]-[SW-4] | 10d | 2025-04-01 A | 2025-04-13 A | CO-R10.S04-ES-EW-100, ENG-MS-RD-A-10, ENG-SH-RD-A-100 | 100% |  | 2025-06-16 | 2025-06-26 |  |  | Labor/Helper [547.15 h]; Skilled Labor/Surveyor [68.39 h]; Foreman [68.39 h]; Water Tank [480 h]; Dozer [480 h]; Embankments to the ROW, with suitable material other than top soil or rock according to specifications [38141.1] | 315,477.47 | 315,477.47 | CO-R10.S04-EW-110 | 10 | 10 | EW | BF | Cub.m | EW | EW |  | CON | R10 | S04 | EW | EW |

| ID | WBS | Activity | Duration | Start | Finish | Predecessors | Complete | Planned start | Planned finish | Resources | Cost | Actual cost | Activity ID N | Seq | New Seq | 02- Network-WBS | 03- Activity | 04-UOM | 05-Discipline | 01- Network | 07-Weightage System | 08 Stage | 09 Roads | 10 side Walk | Discipline | New Discipline |
| --- | --- | --- | --- | --- | --- | --- | --- | --- | --- | --- | --- | --- | --- | --- | --- | --- | --- | --- | --- | --- | --- | --- | --- | --- | --- | --- |
|  | SW | **Sewage Network** |  | 2025-08-17 | 2025-11-21 |  |  |  |  |  |  |  |  |  |  |  |  |  |  |  |  |  |  |  |  |  |
|  | ML | **Main Line Sections** |  | 2025-08-17 | 2025-08-28 |  |  |  |  |  |  |  |  |  |  |  |  |  |  |  |  |  |  |  |  |  |
| CO-R10.S04-ES-SW-100 |  | Trench Excavation and Bedding Works for Main Lines of Sewage Network-[Road 10]-[SW-4] | 10d | 2025-08-17 A | 2025-08-20 A | CO-R10.S04-ES-EW-110, ENG-MS-SW-ML-A-110, ENG-SH-SW-ML-A-110 | 100% | 2025-06-28 | 2025-07-08 | Labor/Helper [109.43 h]; Foreman [109.43 h]; Excavator [96 h]; Depth : 1.5 - 2.5m [21.07]; Depth : 2.5 - 3.5m [13.04]; Depth : 3.5 - 4.5m [13.04]; Depth : 5.5 - 6.5m [71.22]; Depth : 6.5 -7.5m [57.18]; Depth : 6.5 -7.5m [21.07]; Depth :more than 7.5m [14.04] | 168,096.78 | 168,096.78 | CO-R10.S04-SW-100 | 10 | 10 | ML | Ex | LM | ML | SW | EX | CON | R10 | S04 | SW | SW |
| CO-R10.S04-ES-SW-120 |  | Pipes Laying Works for Main Lines of Sewage Network-[Road 10]-[SW-4] | 12d | 2025-08-21 A | 2025-08-24 A | PRO-R10-SW-DL-100 FF+3d, CO-R10.S04-ES-SW-100 | 100% | 2025-07-09 | 2025-07-22 | Labor/Helper [218.86 h]; Skilled Labor/Surveyor [11.4 h]; Foreman [11.4 h]; Plumber [109.43 h]; Excavator [96 h]; Depth : 1.5 - 2.5m [64.2]; Depth : 2.5 - 3.5m [38.12]; Depth : 3.5 - 4.5m [38.12]; Depth : 5.5 - 6.5m [212.66]; Depth : 6.5 -7.5m [170.53]; Depth : 6.5 -7.5m [64.2]; Depth :more than 7.5m [42.13] | 503,044.53 | 503,044.53 | CO-R10.S04-SW-120 | 10 | 10 | ML | PL | LM | ML | SW | PIPE | CON | R10 | S04 | SW | SW |
| CO-R10.S04-ES-SW-130 |  | Trench Backfilling and Compaction Works for Main Lines of Sewage Network-[Road 10]-[SW-4] | 12d | 2025-08-25 A | 2025-08-28 A | CO-R10.S04-ES-SW-120, CO-R10.S04-ES-SW-210 FF | 100% | 2025-07-23 | 2025-08-05 | Skilled Labor/Surveyor [11.4 h]; Foreman [11.4 h]; Excavator [96 h]; Depth : 1.5 - 2.5m [11.03]; Depth : 2.5 - 3.5m [6.02]; Depth : 3.5 - 4.5m [6.02]; Depth : 5.5 - 6.5m [35.11]; Depth : 6.5 -7.5m [28.09]; Depth : 6.5 -7.5m [11.03]; Depth :more than 7.5m [7.02] | 83,423.96 | 83,423.96 | CO-R10.S04-SW-130 | 10 | 10 | ML | BF | LM | ML | SW | BACK | CON | R10 | S04 | SW | SW |
|  | 1 | **Manholes** |  | 2025-11-06 | 2025-11-21 |  |  |  |  |  |  |  |  |  |  |  |  |  |  |  |  |  |  |  |  |  |
| CO-R10.S04-ES-SW-160 |  | Excavation Works for Main Line Manholes of Sewage Network-[Road 10]-[SW-4] | 1d | 2025-11-06 A | 2025-11-13 A | CO-R10.S04-ES-SW-120 SS | 100% | 2025-07-09 | 2025-07-09 | Labor/Helper [23.13 h]; Skilled Labor/Surveyor [9.12 h]; Excavator [16 h]; Depth: 1.5 - 2.5m [0.3]; Depth: 2.5 - 3.5m [1]; Depth: 3.5 - 4.5m [0.07]; Depth: 4.5 - 5.5m [0.15]; Depth: 5.5 - 6.5m [0.23]; Depth:6.5 - 7.5m [0.3] | 29,491.86 | 29,491.86 | CO-R10.S04-SW-160 | 10 | 10 |  |  |  |  | SW | EX | CON | R10 | S04 | SW | SW |
| CO-R10.S04-ES-SW-170 |  | Installation RC Footing Works for Main Line Manholes of Sewage Network-[Road 10]-[SW-4] | 2d | 2025-11-06 A | 2025-11-16 A | CO-R10.S04-ES-SW-160, PRO-R10-SW-DL-110 FF+3d | 100% | 2025-07-10 | 2025-07-12 | Cons. Carpenter [72.95 h]; Steel Fixer [72.95 h]; Depth: 1.5 - 2.5m [0.2]; Depth: 2.5 - 3.5m [1]; Depth: 3.5 - 4.5m [0.05]; Depth: 4.5 - 5.5m [0.1]; Depth: 5.5 - 6.5m [0.15]; Depth:6.5 - 7.5m [0.2] | 22,953.43 | 22,953.43 | CO-R10.S04-SW-170 | 10 | 10 |  |  |  |  | SW | RC F | CON | R10 | S04 | SW | SW |
| CO-R10.S04-ES-SW-180 |  | Install Grp Liner Wall Works for Main Line Manholes of Sewage Network-[Road 10]-[SW-4] | 4d | 2025-11-06 A | 2025-11-17 A | CO-R10.S04-ES-SW-170 | 100% | 2025-07-13 | 2025-07-16 | Labor/Helper [72.95 h]; Plumber [72.95 h]; Depth: 1.5 - 2.5m [1]; Depth: 2.5 - 3.5m [3.01]; Depth: 3.5 - 4.5m [0.2]; Depth: 4.5 - 5.5m [0.4]; Depth: 5.5 - 6.5m [1]; Depth:6.5 - 7.5m [1] | 100,109.56 | 100,109.56 | CO-R10.S04-SW-180 | 10 | 10 |  |  |  |  | SW | LP | CON | R10 | S04 | SW | SW |
| CO-R10.S04-ES-SW-190 |  | Pouring Grp Liner Wall Works for Main Line Manholes of Sewage Network-[Road 10]-[SW-4] | 1d | 2025-11-06 A | 2025-11-20 A | CO-R10.S04-ES-SW-180 | 100% | 2025-07-17 | 2025-07-17 | Cons. Carpenter [36.48 h]; Steel Fixer [36.48 h]; Depth: 1.5 - 2.5m [0.1]; Depth: 2.5 - 3.5m [0.25]; Depth: 3.5 - 4.5m [0.03]; Depth: 4.5 - 5.5m [0.05]; Depth: 5.5 - 6.5m [0.07]; Depth:6.5 - 7.5m [0.1] | 8,999.4 | 8,999.4 | CO-R10.S04-SW-190 | 10 | 10 |  |  |  |  | SW | (New) | CON | R10 | S04 | SW | SW |
| CO-R10.S04-ES-SW-200 |  | Backfilling Works for Main Line Manholes of Sewage Network-[Road 10]-[SW-4] | 4d | 2025-11-06 A | 2025-11-21 A | CO-R10.S04-ES-SW-190 | 100% | 2025-07-19 | 2025-07-22 | Labor/Helper [72.95 h]; Skilled Labor/Surveyor [36.48 h]; Excavator [64 h]; Depth: 1.5 - 2.5m [0.3]; Depth: 2.5 - 3.5m [1]; Depth: 3.5 - 4.5m [0.07]; Depth: 4.5 - 5.5m [0.15]; Depth: 5.5 - 6.5m [0.23]; Depth:6.5 - 7.5m [0.3] | 29,491.86 | 29,491.86 | CO-R10.S04-SW-200 | 10 | 10 |  |  |  |  | SW | BACK | CON | R10 | S04 | SW | SW |
| CO-R10.S04-ES-SW-210 |  | Testing Works for Main Line Manholes of Sewage Network-[Road 10]-[SW-4] | 1d | 2025-11-06 A | 2025-11-21 A | CO-R10.S04-ES-SW-200 | 100% | 2025-07-23 | 2025-07-23 | Labor/Helper [18.24 h]; Plumber [18.24 h]; Depth: 1.5 - 2.5m [0.1]; Depth: 2.5 - 3.5m [0.25]; Depth: 3.5 - 4.5m [0.03]; Depth: 4.5 - 5.5m [0.05]; Depth: 5.5 - 6.5m [0.07]; Depth:6.5 - 7.5m [0.1] | 8,999.4 | 8,999.4 | CO-R10.S04-SW-210 | 10 | 10 |  |  |  |  | SW | T&COV | CON | R10 | S04 | SW | SW |
|  | SD | **Storm Drainage Network** |  | 2025-08-25 | 2026-10-13 |  |  |  |  |  |  |  |  |  |  |  |  |  |  |  |  |  |  |  |  |  |
|  | ML | **Main Line Sections** |  | 2025-08-25 | 2025-09-07 |  |  |  |  |  |  |  |  |  |  |  |  |  |  |  |  |  |  |  |  |  |
| CO-R10.S04-ES-SD-100 |  | Trench Excavation and Bedding Works for Main Lines of Storm Drainage Network-[Road 10]-[SW-4] | 10d | 2025-08-25 A | 2025-08-28 A | CO-R10.S04-ES-EW-110, CO-R10.S04-ES-EW-100, CO-R10.S04-ES-SW-130 SS+3d, CO-R10.S04-ES-SW-130 FF+3d, CO-R10.S03-ES-SD-100 | 100% | 2025-08-27 | 2025-09-07 | Skilled Labor/Surveyor [13.68 h]; Foreman [13.68 h]; Excavator [120 h]; Pipe with diameter 400mm ; depth: 0.0m - 1.5m [62.19]; Pipe with diameter 400mm ; depth: 1.51m - 2.5m [79.25]; Pipe with diameter 500mm ; depth: 1.51m - 2.5m [34.11]; Pipe with diameter 600mm ; depth: 1.51m - 2.5m [28.09]; Pipe with diameter 700mm ; depth: 0.0m - 1.5m [7.02]; Pipe with diameter 700mm ; depth: 1.51m - 2.5m [51.16]; Pipe with diameter 800mm ; depth: 1.51m - 2.5m [64.2]; Pipe with diameter 900mm ; depth: 1.51m - 2.5m [33.1]; Pipe with diameter 1000mm ; depth: 0.0m - 1.5m [7.02]; Pipe with diameter 1100mm ; depth: 0.0m - 1.5m [7.02] | 158,436.69 | 158,436.69 | CO-R10.S04-SD-100 | 10 | 10 | ML | Ex | LM | ML | SD | EX | CON | R10 | S04 | SD | SD |
| CO-R10.S04-ES-SD-120 |  | Pipes Laying Works for Main Lines of Storm Drainage Network-[Road 10]-[SW-4] | 10d | 2025-08-30 A | 2025-09-03 A | PRO-R10-SD-DL-120 FF+3d, CO-R10.S04-ES-SD-100, CO-R10.S03-ES-SD-120, CO-R10.S03-WE-SD-120 | 100% | 2025-12-11 | 2025-12-22 | Labor/Helper [273.57 h]; Skilled Labor/Surveyor [13.68 h]; Foreman [13.68 h]; Plumber [136.79 h]; Excavator [120 h]; Pipe with diameter 400mm ; depth: 0.0m - 1.5m [185.58]; Pipe with diameter 400mm ; depth: 1.51m - 2.5m [238.75]; Pipe with diameter 500mm ; depth: 1.51m - 2.5m [103.32]; Pipe with diameter 600mm ; depth: 1.51m - 2.5m [83.26]; Pipe with diameter 700mm ; depth: 0.0m - 1.5m [21.07]; Pipe with diameter 700mm ; depth: 1.51m - 2.5m [153.48]; Pipe with diameter 800mm ; depth: 1.51m - 2.5m [191.6]; Pipe with diameter 900mm ; depth: 1.51m - 2.5m [99.31]; Pipe with diameter 1000mm ; depth: 0.0m - 1.5m [21.07]; Pipe with diameter 1100mm ; depth: 0.0m - 1.5m [21.07] | 474,683.08 | 474,683.08 | CO-R10.S04-SD-120 | 10 | 10 | ML | PL | LM | ML | SD | PIPE | CON | R10 | S04 | SD | SD |
| CO-R10.S04-ES-SD-130 |  | Trench Backfilling and Compaction Works for Main Lines of Storm Drainage Network-[Road 10]-[SW-4] | 10d | 2025-09-04 A | 2025-09-07 A | CO-R10.S04-ES-SD-120 SS+3d, CO-R10.S04-ES-SD-120 FF+3d, CO-R10.S04-ES-SD-120, CO-R10.S04-ES-SD-220 FF | 100% | 2025-12-23 | 2026-01-03 | Skilled Labor/Surveyor [13.68 h]; Foreman [13.68 h]; Excavator [120 h]; Pipe with diameter 400mm ; depth: 0.0m - 1.5m [31.1]; Pipe with diameter 400mm ; depth: 1.51m - 2.5m [40.13]; Pipe with diameter 500mm ; depth: 1.51m - 2.5m [17.05]; Pipe with diameter 600mm ; depth: 1.51m - 2.5m [14.04]; Pipe with diameter 700mm ; depth: 0.0m - 1.5m [4.01]; Pipe with diameter 700mm ; depth: 1.51m - 2.5m [25.08]; Pipe with diameter 800mm ; depth: 1.51m - 2.5m [33.1]; Pipe with diameter 900mm ; depth: 1.51m - 2.5m [17.05]; Pipe with diameter 1000mm ; depth: 0.0m - 1.5m [4.01]; Pipe with diameter 1100mm ; depth: 0.0m - 1.5m [4.01] | 80,990.55 | 80,990.55 | CO-R10.S04-SD-130 | 10 | 10 | ML | BF | LM | ML | SD | BACK | CON | R10 | S04 | SD | SD |
|  | MH | **Manholes** |  | 2026-03-17 | 2026-10-13 |  |  |  |  |  |  |  |  |  |  |  |  |  |  |  |  |  |  |  |  |  |
| CO-R10.S04-ES-SD-180 |  | Trench Excavation and Bedding Works for Manholes of Storm Drainage Network-[Road 10]-[SW-4] | 1d | 2026-03-17 A | 2026-03-17 A | CO-R10.S04-ES-SD-120 SS, PRO-SD-1DL-100 | 100% | 2025-12-11 | 2025-12-11 | Labor/Helper [27.36 h]; Skilled Labor/Surveyor [13.68 h]; Excavator [24 h]; MH ; depth: 0.0m - 1.5m [0.23]; MH ; depth: 1.51m - 2.5m [1]; MH ; depth: 0.0m - 1.5m [0.15]; MH ; depth: 0.0m - 1.5m [0.07]; MH ; depth: 1.51m - 2.5m [0.23]; MH ; depth: 2.51 - 3.5m [0.3]; MH ; depth: 3.51 - 4.5m [0.15] | 37,990.9 | 37,990.9 | CO-R10.S04-SD-180 | 10 | 10 |  |  |  |  | SD | EX | CON | R10 | S04 | SD | SD |
| CO-R10.S04-ES-SD-190 |  | Install RC Footing Works for Manholes of Storm Drainage Network-[Road 10]-[SW-4] | 1d | 2026-03-18 A | 2026-03-18 A | CO-R10.S04-ES-SD-180 | 100% | 2025-12-13 | 2025-12-13 | Cons. Carpenter [54.71 h]; Steel Fixer [54.71 h]; MH ; depth: 0.0m - 1.5m [0.07]; MH ; depth: 1.51m - 2.5m [0.2]; MH ; depth: 0.0m - 1.5m [0.05]; MH ; depth: 0.0m - 1.5m [0.03]; MH ; depth: 1.51m - 2.5m [0.07]; MH ; depth: 2.51 - 3.5m [0.1]; MH ; depth: 3.51 - 4.5m [0.05] | 10,391.23 | 10,391.23 | CO-R10.S04-SD-190 | 10 | 10 |  |  |  |  | SD | RC F | CON | R10 | S04 | SD | SD |
| CO-R10.S04-ES-SD-200 |  | Install RC Wall Rings & Slab Works for Manholes of Storm Drainage Network-[Road 10]-[SW-4] | 4d | 2026-03-19 A | 2026-03-26 A | CO-R10.S04-ES-SD-190 | 100% | 2025-12-14 | 2025-12-17 | Cons. Carpenter [218.86 h]; Steel Fixer [218.86 h]; MH ; depth: 0.0m - 1.5m [1]; MH ; depth: 1.51m - 2.5m [3.01]; MH ; depth: 0.0m - 1.5m [0.45]; MH ; depth: 0.0m - 1.5m [0.23]; MH ; depth: 1.51m - 2.5m [1]; MH ; depth: 2.51 - 3.5m [1]; MH ; depth: 3.51 - 4.5m [0.45] | 124,044.32 | 124,044.32 | CO-R10.S04-SD-200 | 10 | 10 |  |  |  |  | SD | RC W | CON | R10 | S04 | SD | SD |
| CO-R10.S04-ES-SD-220 |  | Backfilling Works for Manholes of Storm Drainage Network-[Road 10]-[SW-4] | 7d | 2026-03-28 A | 2026-04-04 A | CO-R10.S04-ES-SD-210 | 100% | 2025-12-20 | 2025-12-27 | Labor/Helper [127.67 h]; Skilled Labor/Surveyor [63.83 h]; Excavator [112 h]; MH ; depth: 0.0m - 1.5m [0.3]; MH ; depth: 1.51m - 2.5m [1]; MH ; depth: 0.0m - 1.5m [0.2]; MH ; depth: 0.0m - 1.5m [0.1]; MH ; depth: 1.51m - 2.5m [0.3]; MH ; depth: 2.51 - 3.5m [0.4]; MH ; depth: 3.51 - 4.5m [0.2] | 44,999.06 | 44,999.06 | CO-R10.S04-SD-220 | 10 | 10 |  |  |  |  | SD | BACK | CON | R10 | S04 | SD | SD |
| CO-R10.S04-ES-SD-210 |  | Testing Works for Manholes of Storm Drainage Network-[Road 10]-[SW-4] | 1d | 2026-10-13 A | 2026-10-13 A | CO-R10.S04-ES-SD-200 | 100% | 2025-12-18 | 2025-12-18 | Labor/Helper [27.36 h]; Plumber [27.36 h]; MH ; depth: 0.0m - 1.5m [0.15]; MH ; depth: 1.51m - 2.5m [0.4]; MH ; depth: 0.0m - 1.5m [0.1]; MH ; depth: 0.0m - 1.5m [0.05]; MH ; depth: 1.51m - 2.5m [0.15]; MH ; depth: 2.51 - 3.5m [0.2]; MH ; depth: 3.51 - 4.5m [0.1] | 20,783.49 | 20,783.49 | CO-R10.S04-SD-210 | 10 | 10 |  |  |  |  | SD | T&COV | CON | R10 | S04 | SD | SD |
|  | CB | **Catch Basin Sections** |  | 2025-09-06 | 2026-10-13 |  |  |  |  |  |  |  |  |  |  |  |  |  |  |  |  |  |  |  |  |  |
| CO-R10.S04-ES-SD-140 |  | Trench Excavation and Bedding Works for Catch Basins of Storm Drainage Network-[Road 10]-[SW-4] | 6d | 2025-09-06 A | 2025-09-08 A | CO-R10.S04-ES-EW-110, CO-R10.S04-ES-SD-220 | 100% | 2025-12-28 | 2026-01-03 | Skilled Labor/Surveyor [5.7 h]; Foreman [5.7 h]; Excavator [48 h]; Pipe with diameter 300mm ; depth: 0 - 1.5m [120.38]; Pipe with diameter 400mm ; depth: 0 - 1.5m [7.02] | 30,211.77 | 30,211.77 | CO-R10.S04-SD-140 | 10 | 10 | CB | Ex | Each | CB | SD | EX | CON | R10 | S04 | SD | SD |
| CO-R10.S04-ES-SD-150 |  | Installation and Pipes Laying Connection Works for Catch Basins of Storm Drainage Network-[Road 10]-[SW-4] | 7d | 2025-09-09 A | 2025-09-11 A | CO-R10.S04-ES-SD-140, PRO-R10-SD-DL-130 FF+3d | 100% | 2026-01-04 | 2026-01-11 | Labor/Helper [255.34 h]; Skilled Labor/Surveyor [13.68 h]; Foreman [13.68 h]; Excavator [112 h]; Pipe with diameter 300mm ; depth: 0 - 1.5m [360.12]; Pipe with diameter 400mm ; depth: 0 - 1.5m [21.07] | 90,400.46 | 90,400.46 | CO-R10.S04-SD-150 | 10 | 10 | CB | CB | Each | CB | SD | INSTALL | CON | R10 | S04 | SD | SD |
| CO-R10.S04-ES-SD-170 |  | Trench Backfilling and Compaction Works for Catch Basins of Storm Drainage Network-[Road 10]-[SW-4] | 7d | 2025-09-13 A | 2025-09-15 A | CO-R10.S04-ES-SD-160 SS+3d, CO-R10.S04-ES-SD-160 FF+3d | 100% | 2026-01-19 | 2026-01-26 | Skilled Labor/Surveyor [6.84 h]; Foreman [6.84 h]; Excavator [56 h]; Pipe with diameter 300mm ; depth: 0 - 1.5m [160.5]; Pipe with diameter 400mm ; depth: 0 - 1.5m [10.03] | 40,492.72 | 40,492.72 | CO-R10.S04-SD-170 | 10 | 10 | CB | BF | Each | CB | SD | BACK | CON | R10 | S04 | SD | SD |
| CO-R10.S04-ES-SD-160 |  | Testing Works for Catch Basins of Storm Drainage Network-[Road 10]-[SW-4] | 10d | 2026-10-13 A | 2026-10-13 A | CO-R10.S04-ES-SD-150, CO-R10.S04-ES-SD-120, PRO-R10-SD-DL-110 FF+3d | 100% | 2026-01-12 | 2026-01-22 | Labor/Helper [182.38 h]; Skilled Labor/Surveyor [9.12 h]; Foreman [9.12 h]; Plumber [91.19 h]; Excavator [80 h]; Pipe with diameter 300mm ; depth: 0 - 1.5m [79.25]; Pipe with diameter 400mm ; depth: 0 - 1.5m [4.01] | 19,698 | 19,698 | CO-R10.S04-SD-160 | 10 | 10 | CB | PL | Each | CB | SD | TEST | CON | R10 | S04 | SD | SD |

| ID | WBS | Activity | Duration | Start | Finish | Predecessors | Complete | Remaining | Planned start | Planned finish | Total float | Free float | Resources | Cost | Actual cost | Activity ID N | Seq | New Seq | 02- Network-WBS | 03- Activity | 04-UOM | 05-Discipline | 01- Network | 07-Weightage System | 08 Stage | 09 Roads | 10 side Walk | Discipline | New Discipline |
| --- | --- | --- | --- | --- | --- | --- | --- | --- | --- | --- | --- | --- | --- | --- | --- | --- | --- | --- | --- | --- | --- | --- | --- | --- | --- | --- | --- | --- | --- |
|  | PW | **Potable Water Network** |  | 2025-10-01 | 2026-12-17 |  |  |  |  |  |  |  |  |  |  |  |  |  |  |  |  |  |  |  |  |  |  |  |  |
|  | ML | **Main Line Sections** |  | 2025-10-01 | 2025-10-07 |  |  |  |  |  |  |  |  |  |  |  |  |  |  |  |  |  |  |  |  |  |  |  |  |
| CO-R10.S04-ES-PW-100 |  | Trench Excavation and Bedding Works for Main Lines of Potable Water Network-[Road 10]-[SW-4] | 10d | 2025-10-01 A | 2025-10-07 A | CO-R10.S04-ES-EW-110, CO-R10.S04-ES-EW-100, CO-R10.S04-ES-SD-130 | 100% |  | 2026-01-04 | 2026-01-14 |  |  | Skilled Labor/Surveyor [9.12 h]; Foreman [9.12 h]; Excavator [80 h]; Pipe with diameter 560mm; in depth 1.5m - 3.0m [170.53]; Pipe with diameter 630mm; in depth 1.5m - 3.0m [296.93] | 381,367.24 | 381,367.24 | CO-R10.S04-PW-100 | 10 | 10 | ML | Ex | LM | ML | PW | EX | CON | R10 | S04 | PW | PW |
| CO-R10.S04-ES-PW-110 |  | Pipes Laying and accessories for Main Lines of Potable Water Network-[Road 10]-[SW-4] | 10d | 2025-10-02 A | 2025-10-07 A | CO-R10.S04-ES-PW-100, PRO-R10-PW-DL-100 FF+3d | 100% |  | 2026-01-15 | 2026-01-26 |  |  | Labor/Helper [182.38 h]; Skilled Labor/Surveyor [9.12 h]; Foreman [9.12 h]; Plumber [91.19 h]; Excavator [80 h]; Pipe with diameter 560mm; in depth 1.5m - 3.0m [425.33]; Pipe with diameter 630mm; in depth 1.5m - 3.0m [742.32] | 952,709.41 | 952,709.41 | CO-R10.S04-PW-110 | 10 | 10 | ML | PL | LM | ML | PW | PIPE | CON | R10 | S04 | PW | PW |
| CO-R10.S04-ES-PW-130 |  | Trench Backfilling and Compaction Works for Main Lines of Potable Water Network-[Road 10]-[SW-4] | 7d | 2025-10-04 A | 2025-10-07 A | CO-R10.S04-ES-PW-110, CO-R10.S04-ES-PW-220 FF | 100% |  | 2026-02-04 | 2026-02-11 |  |  | Skilled Labor/Surveyor [9.12 h]; Foreman [9.12 h]; Eq. Operator [9.12 h]; Loader [80 h]; Compactor [80 h]; Water Tank [20 h]; Pipe with diameter 560mm; in depth 1.5m - 3.0m [170.53]; Pipe with diameter 630mm; in depth 1.5m - 3.0m [296.93] | 381,367.24 | 381,367.24 | CO-R10.S04-PW-130 | 10 | 10 | ML | BF | LM | ML | PW | BACK | CON | R10 | S04 | PW | PW |
|  | VC | **Valve Chamber** |  | 2026-07-07 | 2026-07-16 |  |  |  |  |  |  |  |  |  |  |  |  |  |  |  |  |  |  |  |  |  |  |  |  |
| CO-R10.S04-ES-PW-170 |  | Excavation Works for Main Line Valves and Valve Chambers of Potable Water Network-[Road 10]-[SW-4] | 1d | 2026-07-07 A | 2026-07-16 A | CO-R10.S04-ES-PW-100 | 100% |  | 2026-01-15 | 2026-01-15 |  |  | Labor/Helper [9.12 h]; Skilled Labor/Surveyor [4.56 h]; Excavator [8 h]; Wash out chamber; on 200 mm dia pipeline Depth 1.5 - 3m [0.1]; Wash out chamber; on 560 mm dia pipeline Depth 1.5 - 3m [0.05]; Wash out chamber; on 630 mm dia pipeline Depth 1.5 - 3m [0.2]; Air valve chamber on 560 mm dia pipeline Depth 1.5 - 3 m [0.1]; Air valve chamber on 630 mm dia pipeline Depth 1.5 - 3 m [0.2] | 16,450.74 | 16,450.74 | CO-R10.S04-PW-170 | 10 | 10 | ML | VI | Each | ML | PW | EX | CON | R10 | S04 | PW | PW |
| CO-R10.S04-ES-PW-180 |  | RC Footing Works for Main Line Valves and Valve Chambers of Potable Water Network-[Road 10]-[SW-4] | 3d | 2026-07-07 A | 2026-07-16 A | CO-R10.S04-ES-PW-170 | 100% |  | 2026-01-17 | 2026-01-19 |  |  | Cons. Carpenter [54.71 h]; Steel Fixer [54.71 h]; Wash out chamber; on 560 mm dia pipeline Depth 1.5 - 3m [0.07]; Wash out chamber; on 630 mm dia pipeline Depth 1.5 - 3m [0.3]; Air valve chamber on 560 mm dia pipeline Depth 1.5 - 3 m [0.15]; Air valve chamber on 630 mm dia pipeline Depth 1.5 - 3 m [0.3] | 19,786.84 | 19,786.84 | CO-R10.S04-PW-180 | 10 | 10 | ML | VI | Each | ML | PW | RC F | CON | R10 | S04 | PW | PW |
| CO-R10.S04-ES-PW-190 |  | RC Wall Works for Main Line Valves and Valve Chambers of Potable Water Network-[Road 10]-[SW-4] | 6d | 2026-07-07 A | 2026-07-16 A | CO-R10.S04-ES-PW-180 | 100% |  | 2026-01-20 | 2026-01-26 |  |  | Cons. Carpenter [109.43 h]; Steel Fixer [109.43 h]; Wash out chamber; on 560 mm dia pipeline Depth 1.5 - 3m [0.17]; Wash out chamber; on 630 mm dia pipeline Depth 1.5 - 3m [1]; Air valve chamber on 560 mm dia pipeline Depth 1.5 - 3 m [0.35]; Air valve chamber on 630 mm dia pipeline Depth 1.5 - 3 m [1] | 61,682.63 | 61,682.63 | CO-R10.S04-PW-190 | 10 | 10 | ML | VI | Each | ML | PW | RC W | CON | R10 | S04 | PW | PW |
| CO-R10.S04-ES-PW-200 |  | RC Slab Works for Main Line Valves and Valve Chambers of Potable Water Network-[Road 10]-[SW-4] | 2d | 2026-07-07 A | 2026-07-16 A | CO-R10.S04-ES-PW-190 | 100% |  | 2026-01-27 | 2026-01-28 |  |  | Cons. Carpenter [36.48 h]; Steel Fixer [36.48 h]; Wash out chamber; on 560 mm dia pipeline Depth 1.5 - 3m [0.1]; Wash out chamber; on 630 mm dia pipeline Depth 1.5 - 3m [0.4]; Air valve chamber on 560 mm dia pipeline Depth 1.5 - 3 m [0.2]; Air valve chamber on 630 mm dia pipeline Depth 1.5 - 3 m [0.4] | 26,381.44 | 26,381.44 | CO-R10.S04-PW-200 | 10 | 10 | ML | VI | Each | ML | PW | RC S | CON | R10 | S04 | PW | PW |
| CO-R10.S04-ES-PW-210 |  | Insulation Works for Main Line Valves and Valve Chambers of Potable Water Network-[Road 10]-[SW-4] | 1d | 2026-07-07 A | 2026-07-16 A | CO-R10.S04-ES-PW-200 | 100% |  | 2026-01-29 | 2026-01-29 |  |  | Labor/Helper [3.65 h]; Plumber [3.65 h]; Butterfly valves with dia (560)mm on pipes with dia (560)mm. [0.4]; Butterfly valves with dia (630)mm on pipes with dia (630)mm. [1.61]; Wash out valve with dia (150)mm on pipes with dia (560) mm [0.4]; Wash out valve with dia (150)mm on pipes with dia (630) mm [1.2]; Air valves with dia (65mm) mm on pipes with dia(560)mm. [0.4]; Air valves with dia (65mm) mm on pipes with dia(630)mm. [1.2] | 493,951.17 | 493,951.17 | CO-R10.S04-PW-210 | 10 | 10 | ML | VI | Each | ML | PW | INSUL | CON | R10 | S04 | PW | PW |
| CO-R10.S04-ES-PW-220 |  | Backfilling Works for Main Line Valves and Valve Chambers of Potable Water Network-[Road 10]-[SW-4] | 3d | 2026-07-07 A | 2026-07-16 A | CO-R10.S04-ES-PW-210 | 100% |  | 2026-01-31 | 2026-02-02 |  |  | Labor/Helper [27.36 h]; Skilled Labor/Surveyor [13.68 h]; Excavator [24 h]; Wash out chamber; on 560 mm dia pipeline Depth 1.5 - 3m [0.1]; Wash out chamber; on 630 mm dia pipeline Depth 1.5 - 3m [0.4]; Air valve chamber on 560 mm dia pipeline Depth 1.5 - 3 m [0.2]; Air valve chamber on 630 mm dia pipeline Depth 1.5 - 3 m [0.4] | 26,381.44 | 26,381.44 | CO-R10.S04-PW-220 | 10 | 10 | ML | VI | Each | ML | PW | BACK | CON | R10 | S04 | PW | PW |
|  | FH | **Fire Hydrant** |  | 2026-11-24 | 2026-12-17 |  |  |  |  |  |  |  |  |  |  |  |  |  |  |  |  |  |  |  |  |  |  |  |  |
| CO-R10.S04-ES-PW-140 |  | Excavation Works for Fire Hydrants of Potable Water Network-[Road 10]-[SW-4] | 7d | 2026-11-24 | 2026-12-01 | CO-R10.S04-ES-PW-110 SS+3d, CO-R10.S04-ES-EW-110, CO-R10.S04-ES-SW-130 SS+3d, CO-R10.S04-ES-SW-130 FF+3d, CO-R10.S04-ES-PW-170 |  |  |  |  | -112d | 0d | Skilled Labor/Surveyor [6.73 h]; Foreman [6.73 h]; Excavator [56 h] |  |  | CO-R10.S04-PW-140 | 10 | 10 | FH | Ex | Each | FH | PW | EX | CON | R10 | S04 | PW | PW |
| CO-R10.S04-ES-PW-150 |  | Installation Works for Fire Hydrant of Potable Water Network-[Road 10]-[SW-4] | 7d | 2026-12-02 | 2026-12-09 | CO-R10.S04-ES-PW-140, PRO-R10-PW-DL-120 FF+3d |  |  |  |  | -112d | 0d | Labor/Helper [125.62 h]; Skilled Labor/Surveyor [6.73 h]; Foreman [6.73 h]; Plumber [125.62 h] |  |  | CO-R10.S04-PW-150 | 10 | 10 | FH | FH | Each | FH | PW | INSTALL | CON | R10 | S04 | PW | PW |
| CO-R10.S04-ES-PW-160 |  | Trench Backfilling and Compaction Works for Fire Hydrants of Potable Water Network-[Road 10]-[SW-4] | 7d | 2026-12-10 | 2026-12-17 | CO-R10.S04-ES-PW-150 |  |  |  |  | -112d | 27d | Skilled Labor/Surveyor [6.73 h]; Foreman [6.73 h]; Excavator [56 h] |  |  | CO-R10.S04-PW-160 | 10 | 10 | FH | BF | Each | FH | PW | BACK | CON | R10 | S04 | PW | PW |
|  | IR | **Irrigation Network** |  | 2026-06-10 | 2026-11-28 |  |  |  |  |  |  |  |  |  |  |  |  |  |  |  |  |  |  |  |  |  |  |  |  |
|  | ML | **Main Line Pipes** |  | 2026-06-10 | 2026-11-28 |  |  |  |  |  |  |  |  |  |  |  |  |  |  |  |  |  |  |  |  |  |  |  |  |
| CO-R10.S04-ES-IR-100 |  | Trench Excavation and Bedding Works for Main Lines of Irrigation Network-[Road 10]-[SW-4] | 6d | 2026-06-10 A | 2026-06-20 A | CO-R10.S04-ES-EW-110, CO-R10.S04-ES-PW-130, CO-R10.S04-ES-SD-170 | 100% |  | 2026-02-12 | 2026-02-18 |  |  | Skilled Labor/Surveyor [5.7 h]; Foreman [5.7 h]; Excavator [48 h]; 125 mm pipe; depth 0.0m - 1.5m [407.27] | 30,929.64 | 30,929.64 | CO-R10.S04-IR-100 | 10 | 10 | ML | Ex | LM | ML | IR | EX | CON | R10 | S04 | IR | IR |
| CO-R10.S04-ES-IR-110 |  | Pipes Laying Works for Main Lines of Irrigation Network-[Road 10]-[SW-4] | 7d | 2026-06-10 A | 2026-06-20 A | CO-R10.S04-ES-IR-100, PRO-R19.2-IR-DL-100 FF+3d | 100% |  | 2026-02-19 | 2026-02-26 |  |  | Labor/Helper [127.67 h]; Skilled Labor/Surveyor [6.84 h]; Foreman [6.84 h]; Plumber [63.83 h]; Excavator [56 h]; 125 mm pipe; depth 0.0m - 1.5m [1223.82] | 92,941.08 | 92,941.08 | CO-R10.S04-IR-110 | 10 | 10 | ML | PL | LM | ML | IR | PIPE | CON | R10 | S04 | IR | IR |
| CO-R10.S04-ES-IR-130 |  | Trench Backfilling and Compaction Works for Main Lines of Irrigation Network-[Road 10]-[SW-4] | 5d | 2026-06-10 A | 2026-06-20 A | CO-R10.S04-ES-IR-110 | 100% |  | 2026-03-04 | 2026-03-09 |  |  | Skilled Labor/Surveyor [4.56 h]; Foreman [4.56 h]; Excavator [40 h]; 125 mm pipe; depth 0.0m - 1.5m [204.64] | 15,540.9 | 15,540.9 | CO-R10.S04-IR-130 | 10 | 10 | ML | BF | LM | ML | IR | BACK | CON | R10 | S04 | IR | IR |
| CO-R10.S04-ES-IR-120 |  | Installation Works for Main Line Valves of Irrigation Network-[Road 10]-[SW-4] | 4d | 2026-11-24 | 2026-11-28 | CO-R10.S04-ES-IR-110, PRO-R19.2-IR-DL-110 FF+3d |  |  |  |  | -26d | 114d | Labor/Helper [143.56 h]; Skilled Labor/Surveyor [7.85 h]; Foreman [7.85 h]; Plumber [143.56 h]; Gate valves dia (90)mm on pipes with dia (125) mm. [16.05]; Air valve chamber on 280 mm dia pipeline Depth 1.5 - 3 m [1] | 41,006.36 |  | CO-R10.S04-IR-120 | 10 | 10 | ML | VI | Each | ML | IR | VALV | CON | R10 | S04 | IR | IR |
|  | SL | **Street Lighting Network** |  | 2026-11-11 | 2027-01-27 |  |  |  |  |  |  |  |  |  |  |  |  |  |  |  |  |  |  |  |  |  |  |  |  |
|  | LP | **Lighting Poles Works** |  | 2026-11-11 | 2026-12-31 |  |  |  |  |  |  |  |  |  |  |  |  |  |  |  |  |  |  |  |  |  |  |  |  |
| CO-R10.S04-ES-SL-100 |  | Foundation Excavation Works for Lighting Poles of Street Lighting Network-[Road 10]-[SW-4] | 7d | 2026-11-11 A | 2026-12-01 | CO-R10.S04-ES-EW-110, CO-R10.S04-ES-EW-100, CO-R10.S04-ES-IR-130 | 70% | 7d | 2026-11-10 | 2026-11-17 | -181.5d | 0d | Labor/Helper [29.29 h]; Skilled Labor/Surveyor [23.26 h]; Excavator [112 h]; Lighting poles with one arm, including the power distribution box, screws, cables, 12 meters in height. [1] | 1,949.38 |  | CO-R10.S04-SL-100 | 10 | 10 | LP | Ex | Each | POL | SL | EX | CON | R10 | S04 | SL | SL |
| CO-R10.S04-ES-SL-110 |  | Installation Works for Lighting Poles Foundation of Street Lighting Network-[Road 10]-[SW-4] | 7d | 2026-11-11 A | 2026-12-07 | CO-R10.S04-ES-SL-100 SS+5d, CO-R10.S04-ES-SL-100 FF+5d, PRO-R10-SL-DL-110 FF+3d | 70% | 7d | 2026-11-16 | 2026-11-23 | -181.5d | 0d | Labor/Helper [115.82 h]; Skilled Labor/Surveyor [6.03 h]; Foreman [6.03 h]; Eq. Operator [6.03 h]; Loader [24 h]; Reinforced concrete foundation, for 12m high lighting columns With Drawpits [34.11] | 12,670.44 |  | CO-R10.S04-SL-110 | 10 | 10 | LP | LPF | Each | POL | SL | INSTALL | CON | R10 | S04 | SL | SL |
| CO-R10.S04-ES-SL-210 |  | Backfilling Works for Lighting Poles of Street Lighting Network-[Road 10]-[SW-4] | 15d | 2026-11-12 A | 2026-12-23 | CO-R10.S04-ES-SL-120 FF, CO-R10.S03-ES-SL-210 FF, CO-R10.S03-ES-SL-210 SS | 70% | 15d | 2026-12-13 | 2026-12-29 | -190.5d | 0d | Labor/Helper [17.86 h]; Skilled Labor/Surveyor [8.93 h]; Excavator [240 h]; Lighting poles with one arm, including the power distribution box, screws, cables, 12 meters in height. [7.02] | 13,648.7 |  | CO-R10.S04-SL-210 | 10 | 10 |  |  |  |  | SL | BACK | CON | R10 | S04 | SL | SL |
| CO-R10.S04-ES-SL-120 |  | Installation Works for Lighting Poles of Street Lighting Network-[Road 10]-[SW-4] | 7d | 2026-12-06 | 2026-12-13 | CO-R10.S04-ES-SL-110 SS+5d, CO-R10.S04-ES-SL-110 FF+5d, PRO-R10-SL-DL-120 FF+3d |  |  |  |  | -181.5d | 0d | Labor/Helper [81.46 h]; Electrician [29.76 h]; Lighting poles with one arm, including the power distribution box, screws, cables, 12 meters in height. [18.06] | 35,096.96 |  | CO-R10.S04-SL-120 | 10 | 10 | LP | LP | Each | POL | SL | POLES | CON | R10 | S04 | SL | SL |
| CO-R10.S04-ES-SL-130 |  | Installation Works for Lighting Fixtures With Drop Wire of Street Lighting Network-[Road 10]-[SW-4] | 18d | 2026-12-12 | 2026-12-31 | CO-R10.S04-ES-SL-120 SS+5d, CO-R10.S04-ES-SL-120 FF+5d, PRO-R10-SL-DL-140 FF+3d, CO-R10.S04-ES-SL-200 FF |  |  |  |  | -101.5d | 0d | Labor/Helper [133.66 h]; Electrician [134.18 h]; Manlift [261 h]; Street Lighting( LED) Luminaire,(Type C) complete with control gear and lamp, ?.17000 Lumen [34.11] | 20,861.09 |  | CO-R10.S04-SL-130 | 10 | 10 | LP | LPA | Each | POL | SL | INSTALL | CON | R10 | S04 | SL | SL |
| CO-R10.S04-ES-SL-200 |  | Testing Works for Lighting Poles of Street Lighting Network-[Road 10]-[SW-4] | 7d | 2026-12-24 | 2026-12-31 | CO-R10.S04-ES-SL-210, CO-R10.S04-ES-SL-120 |  |  |  |  | -101.5d | 0d | Labor/Helper [87.05 h]; Electrician [87.05 h]; Lighting poles with one arm, including the power distribution box, screws, cables, 12 meters in height. [7.02] | 13,648.7 |  | CO-R10.S04-SL-200 | 10 | 10 |  |  |  |  | SL | TESTING | CON | R10 | S04 | SL | SL |

| ID | WBS | Activity | Duration | Start | Finish | Predecessors | Complete | Remaining | Planned start | Planned finish | Total float | Free float | Resources | Cost | Actual cost | Activity ID N | Seq | New Seq | 02- Network-WBS | 03- Activity | 04-UOM | 05-Discipline | 01- Network | 07-Weightage System | 08 Stage | 09 Roads | 10 side Walk | Discipline | New Discipline |
| --- | --- | --- | --- | --- | --- | --- | --- | --- | --- | --- | --- | --- | --- | --- | --- | --- | --- | --- | --- | --- | --- | --- | --- | --- | --- | --- | --- | --- | --- |
|  | CW | **Cabling Works** |  | 2026-11-11 | 2026-12-13 |  |  |  |  |  |  |  |  |  |  |  |  |  |  |  |  |  |  |  |  |  |  |  |  |
| CO-R10.S04-ES-SL-140 |  | Trench Excavation and Bedding Works for Street Lighting Network-[Road 10]-[SW-4] | 7d | 2026-11-11 A | 2026-12-13 | CO-R10.S04-ES-IR-130, CO-R10.S04-ES-EW-110, CO-R10.S04-ES-SL-120 FF, CO-R10.S04-ES-SL-110 FF | 70% | 7d | 2026-11-30 | 2026-12-07 | -174d | 0d | Labor/Helper [17.86 h]; Skilled Labor/Surveyor [8.93 h]; Excavator [80 h] |  |  | CO-R10.S04-SL-140 | 10 | 10 | CW | Ex | LM | CB | SL | EXC | CON | R10 | S04 | SL | SL |
| CO-R10.S04-ES-SL-150 |  | Cable Laying Works for Street Lighting Network-[Road 10]-[SW-4] | 7d | 2026-11-12 A | 2026-12-13 | CO-R10.S04-ES-SL-140 FF, PRO-R10-SL-DL-100 FF+3d, CO-R10.S04-ES-SL-140 SS, PRO-R10-SL-DL-100 SS | 70% | 7d | 2026-12-08 | 2026-12-15 | -174d | 0d | Labor/Helper [44.64 h]; Electrician [44.64 h]; Low Current Technician [44.64 h]; Supply, installation , test and operation of cables, Copper, (4Cx25mmï¿½,Cu/XLPE/SWA/PVC +1x16mmï¿½ PVC/PVC) [1331.16] | 63,751.48 |  | CO-R10.S04-SL-150 | 10 | 10 | CW | CL | LM | CB | SL | LAYING | CON | R10 | S04 | SL | SL |
| CO-R10.S04-ES-SL-160 |  | Trench Backfilling and Compaction Works for Street Lighting Network-[Road 10]-[SW-4] | 7d | 2026-11-14 A | 2026-12-13 | CO-R10.S04-ES-SL-150 FF, CO-R10.S04-ES-IR-130 | 70% | 7d | 2026-12-16 | 2026-12-23 | -174d | 0d | Skilled Labor/Surveyor [8.97 h]; Foreman [8.97 h]; Excavator [80 h]; Water Tank [20 h]; Supply, installation , test and operation of cables, Copper, (4Cx25mmï¿½,Cu/XLPE/SWA/PVC +1x16mmï¿½ PVC/PVC) [102.32] | 4,900.5 |  | CO-R10.S04-SL-160 | 10 | 10 | CW | BF | LM | CB | SL | BACK | CON | R10 | S04 | SL | SL |
|  | DPB | **Distrubution Panel Boards** |  | 2026-12-14 | 2027-01-27 |  |  |  |  |  |  |  |  |  |  |  |  |  |  |  |  |  |  |  |  |  |  |  |  |
| CO-R10.S04-ES-SL-170 |  | Foundation Excavation Works For Panel Boards of Street Lighting Network-[Road 10]-[SW-4] | 18d | 2026-12-14 | 2027-01-03 | CO-R10.S04-ES-EW-110, CO-R10.S04-ES-SL-160 |  |  |  |  | -174d | 0d | Labor/Helper [17.86 h]; Skilled Labor/Surveyor [8.93 h]; Excavator [144 h] |  |  | CO-R10.S04-SL-170 | 10 | 10 | DB | Ex | Each | DS | SL | EXC | CON | R10 | S04 | SL | SL |
| CO-R10.S04-ES-SL-180 |  | Installation Works for Panel Board Concrete Foundations of Street Lighting Network-[Road 10]-[SW-4] | 12d | 2026-12-24 | 2027-01-06 | CO-R10.S04-ES-SL-170 SS+3d, CO-R10.S04-ES-SL-170 FF+3d |  |  |  |  | -165d | 0d | Skilled Labor/Surveyor [6.7 h]; Foreman [6.7 h]; Excavator [96 h]; Water Tank [24 h] |  |  | CO-R10.S04-SL-180 | 10 | 10 | DB | PBF | Each | DS | SL | INSTALL | CON | R10 | S04 | SL | SL |
| CO-R10.S04-ES-SL-190 |  | Installation Works for Lighting Panel Boards of Street Lighting Network-[Road 10]-[SW-4] | 12d | 2027-01-07 | 2027-01-20 | CO-R10.S04-ES-SL-180, PRO-R10-SL-DL-160 FF+3d |  |  |  |  | -165d | 15d | Labor/Helper [33.48 h]; Electrician [33.48 h] |  |  | CO-R10.S04-SL-190 | 10 | 10 | DB | PB | Each | DS | SL | INST BO | CON | R10 | S04 | SL | SL |
| CO-R10.S04-ES-SL-220 |  | A wall of concrete blocks to install the KWH meter of Street Lighting Network-[Road 10]-[SW-4] | 18d | 2027-01-07 | 2027-01-27 | CO-R10.S04-ES-SL-180 |  |  |  |  | -165d | 26d | Block Mason [13.39 h]; Road crossing ducts, 4 way (4 x 100mm PVC) [76.24]; Drawpit with medium duty steel cover, size 900x900x1200mm, Type 4 [7.02] | 27,979.54 |  | CO-R10.S04-SL-220 | 10 | 10 | DB |  | Each | DS | SL | wall | CON | R10 | S04 | SL | SL |
|  | TE | **Telecom Network** |  | 2026-12-17 | 2027-01-18 |  |  |  |  |  |  |  |  |  |  |  |  |  |  |  |  |  |  |  |  |  |  |  |  |
|  | PD | **Ducts Works** |  | 2026-12-17 | 2027-01-18 |  |  |  |  |  |  |  |  |  |  |  |  |  |  |  |  |  |  |  |  |  |  |  |  |
| CO-R10.S04-ES-TE-100 |  | Trench Excavation and Bedding Works for Ducts of Telecom Network-[Road 10]-[SW-4] | 7d | 2026-12-17 | 2026-12-24 | CO-R10.S04-ES-IR-130 SS+3d, CO-R10.S04-ES-IR-130 FF+3d, CO-R10.S04-ES-SL-160 SS+5d, CO-R10.S04-ES-SL-160 FF+5d, CO-R10.S04-ES-EW-110, CO-R10.S03-ES-TE-100 |  |  |  |  | -174d | 0d | Skilled Labor/Surveyor [6.73 h]; Foreman [6.73 h]; Excavator [56 h]; 6-way ducts, 50mm dia. HDPE [64.2]; Road crossing ducts (6-way) [6.02] | 9,814.28 |  | CO-R10.S04-TE-100 | 10 | 10 | PD | Ex | LM | DC | TE | DUCTS | CON | R10 | S04 | TE | TE |
| CO-R10.S04-ES-TE-110 |  | Pipes Laying Works for Ducts of Telecom Network-[Road 10]-[SW-4] | 7d | 2026-12-26 | 2027-01-02 | CO-R10.S04-ES-TE-100, PRO-R10-TE-DL-100 FF+3d |  |  |  |  | -139d | 0d | Labor/Helper [244.38 h]; Skilled Labor/Surveyor [13.46 h]; Foreman [13.46 h]; Plumber [125.62 h]; Excavator [56 h]; JCB [28 h]; Truck [56 h]; 6-way ducts, 50mm dia. HDPE [380.19]; Road crossing ducts (6-way) [33.1] | 57,684.82 |  | CO-R10.S04-TE-110 | 10 | 10 | PD | PL | LM | DC | TE | DUCTS | CON | R10 | S04 | TE | TE |
| CO-R10.S04-ES-TE-120 |  | Pouring Plain Concrete Above Ducts of Telecom Network-[Road 10]-[SW-4] | 7d | 2027-01-03 | 2027-01-10 | CO-R10.S04-ES-TE-110 |  |  |  |  | -139d | 0d | Skilled Labor/Surveyor [6.73 h]; Foreman [6.73 h]; Cons. Carpenter [125.62 h]; Block Mason [62.81 h]; 6-way ducts, 50mm dia. HDPE [64.2]; Road crossing ducts (6-way) [6.02] | 9,814.28 |  | CO-R10.S04-TE-120 | 10 | 10 | PD | PC | LM | DC | TE | DUCTS | CON | R10 | S04 | TE | TE |
| CO-R10.S04-ES-TE-130 |  | Trench Backfilling and Compaction Works for Ducts of Telecom Network-[Road 10]-[SW-4] | 7d | 2027-01-11 | 2027-01-18 | CO-R10.S04-ES-TE-120 |  |  |  |  | -139d | 0d | Skilled Labor/Surveyor [6.73 h]; Foreman [6.73 h]; Excavator [56 h]; 6-way ducts, 50mm dia. HDPE [126.39]; Road crossing ducts (6-way) [11.03] | 19,182.32 |  | CO-R10.S04-TE-130 | 10 | 10 | PD | BF | LM | DC | TE | DUCTS | CON | R10 | S04 | TE | TE |
|  | MH | **Manholes Works** |  | 2026-12-26 | 2027-01-18 |  |  |  |  |  |  |  |  |  |  |  |  |  |  |  |  |  |  |  |  |  |  |  |  |
| CO-R10.S04-ES-TE-140 |  | Excavation Works for Manholes of Telecom Network-[Road 10]-[SW-4] | 7d | 2026-12-26 | 2027-01-02 | CO-R10.S03-ES-TE-140, CO-R10.S04-ES-TE-100, CO-R10.S03-WE-TE-140 |  |  |  |  | -139d | 0d | Skilled Labor/Surveyor [6.73 h]; Foreman [6.73 h]; Excavator [56 h]; Manhole Type 2 (2000x1000x1000) [1] | 3,218.67 |  | CO-R10.S04-TE-140 | 10 | 10 | MH | Ex | Each | MNH | TE | EXC | CON | R10 | S04 | TE | TE |
| CO-R10.S04-ES-TE-150 |  | Installation Works for Manholes of Telecom Network-[Road 10]-[SW-4] | 7d | 2027-01-03 | 2027-01-10 | CO-R10.S04-ES-TE-140, PRO-R10-TE-DL-110 FF+3d |  |  |  |  | -139d | 0d | Skilled Labor/Surveyor [6.73 h]; Foreman [6.73 h]; Excavator [56 h]; Manhole Type 1 (2000x1000x1000) [1]; Manhole Type 2 (2000x1000x1000) [3.01] | 12,848.12 |  | CO-R10.S04-TE-150 | 10 | 10 | MH | HH | Each | MNH | TE | INSTALL-1 | CON | R10 | S04 | TE | TE |
| CO-R10.S04-ES-TE-160 |  | Backfilling Works for Manholes of Telecom Network-[Road 10]-[SW-4] | 7d | 2027-01-11 | 2027-01-18 | CO-R10.S04-ES-TE-150 |  |  |  |  | -139d | 0d | Skilled Labor/Surveyor [6.73 h]; Foreman [6.73 h]; Excavator [56 h]; Manhole Type 2 (2000x1000x1000) [1] | 3,218.67 |  | CO-R10.S04-TE-160 | 10 | 10 | MH | BF | Each | MNH | TE | (New)-2 | CON | R10 | S04 | TE | TE |
|  | RD | **Road Works** |  | 2026-08-25 | 2027-05-05 |  |  |  |  |  |  |  |  |  |  |  |  |  |  |  |  |  |  |  |  |  |  |  |  |
|  | RD | **Pre-Bituminous Construction** |  | 2026-09-20 | 2027-01-21 |  |  |  |  |  |  |  |  |  |  |  |  |  |  |  |  |  |  |  |  |  |  |  |  |
| CO-R10.S04-ES-RD-100 |  | Capping and Subgrade Layer for Road Works-[Road 10]-[SW-4] | 14d | 2026-09-20 A | 2027-01-18 | CO-R10.S04-ES-SD-130, CO-R10.S04-ES-SW-130, CO-R10.S04-ES-PW-130, CO-R10.S04-ES-PW-160 FF, CO-R10.S04-ES-SL-160 FF+3d, PRO-R10-RD-DL-100 FF+3d, CO-R10.S04-ES-TE-130 FF, CO-R10.S04-ES-TE-160 FF | 95% | 14d | 2026-07-23 | 2026-08-08 | -139d | 0d | Labor/Helper [164.85 h]; Skilled Labor/Surveyor [47.06 h]; Loader [144 h]; Grader [144 h]; Road Roller [144 h]; Water Tank [144 h]; 300mm capping layer underneath subgrade , CBR?15% [4813.03]; 300mm thick Subgrade, including subgrade preparation, CBR?25% [4813.03] | 381,391.75 | 266,974.22 | CO-R10.S04-RD-P-100 | 10 | 10 | AB | SG | Sq.m | BS | RD |  | CON | R10 | S04 | RD | RD |
| CO-R10.S04-ES-RD-110 |  | Aggregate Base Course Layer for Road Works-[Road 10]-[SW-4] | 12d | 2026-11-11 A | 2027-01-21 | CO-R10.S04-ES-RD-100 SS+3d, CO-R10.S04-ES-RD-100 FF+3d, CO-R10.S04-ES-SD-170 SS+3d, CO-R10.S04-ES-SD-170 FF+3d, PRO-R10-RD-DL-110 FF+3d | 55% | 12d | 2027-02-04 | 2027-02-17 | -21d | 194.5d | Labor/Helper [407.3 h]; Skilled Labor/Surveyor [116.28 h]; Foreman [168.85 h]; Loader [144 h]; Grader [144 h]; Road Roller [144 h]; Aggregate base course 200mm thick after compaction in two layers(Grading 1); CBR?80%; including watering, compaction and testing [3209.02] | 265,658.57 |  | CO-R10.S04-RD-P-110 | 10 | 10 | AB | BA | Sq.m | BS | RD |  | CON | R10 | S04 | RD | RD |
|  | LS | **Pavement Works** |  | 2026-08-25 | 2027-05-05 |  |  |  |  |  |  |  |  |  |  |  |  |  |  |  |  |  |  |  |  |  |  |  |  |
| CO-R10.S04-ES-RD-120 |  | Fixing of Curbstone for Sidewalks Pavement-[Road 10]-[SW-4] | 12d | 2026-08-25 A | 2026-08-31 A | PRO-R10-RD-DL-130 FF+3d, PRO-R10-RD-DL-130 SS | 100% |  | 2026-08-02 | 2026-08-15 |  |  | Labor/Helper [1531.2 h]; Block Mason [4593.59 h]; Precast Concrete Kerb, Type K1 [1775.55]; Precast Concrete Kerb, Type L1 [3523] | 217,507.21 | 217,507.21 | CO-R10.S04-RD-P-120 | 10 | 10 | LS | CR | LM | LAND | RD |  | CON | R10 | S04 | RD | RD |
| CO-R10.S04-ES-RD-130 |  | Fixing of Interlock Tiles for Sidewalks Pavement-[Road 10]-[SW-4] | 10d | 2027-04-25 | 2027-05-05 | PRO-R10-RD-DL-120 FF+3d, CO-R10.S04-ES-RD-120 SS+3d, CO-R10.S04-ES-RD-120 FF+3d, CO-R10-PW-TF-100, CO-R10-PW-TF-110, CO-R10-PW-TF-120, CO-R10-SW-TF-100, CO-R10-SW-TF-110, CO-R10-SW-TF-130, CO-R10-SD-TF-100, CO-R10-SD-TF-120, CO-R10-SL-TF-140, CO-R10-SL-TF-150, CO-R10-SL-ES-140, CO-R10-SL-ES-150, CO-R10-IR-TF-120, CO-R10-MV-TF-140, CO-R10-SL-TF-380 |  |  |  |  | -181d | 2d | Labor/Helper [794.55 h]; Block Mason [1867.06 h]; Interlocking block pavers for sidewalk/footpath 60mm thick on and including 30mm Sand Bedding, 200mm Aggregate subbase, all in accordance with authority standards and complete as per specifications [3170.9]; Extraover for Pedestrian ramps [8.03] | 155,456.97 |  | CO-R10.S04-RD-P-130 | 10 | 10 | LS | IL | Sq.m | LAND | RD |  | CON | R10 | S04 | RD | RD |

| ID | WBS | Activity | Duration | Start | Finish | Predecessors | Complete | Planned start | Planned finish | Resources | Cost | Actual cost | Activity ID N | Seq | New Seq | 02- Network-WBS | 03- Activity | 04-UOM | 05-Discipline | 01- Network | 08 Stage | 09 Roads | 10 side Walk | Discipline | New Discipline | 07-Weightage System |
| --- | --- | --- | --- | --- | --- | --- | --- | --- | --- | --- | --- | --- | --- | --- | --- | --- | --- | --- | --- | --- | --- | --- | --- | --- | --- | --- |
|  | SW_41 | **SW_4-West** |  | 2025-04-08 | 2027-05-08 |  |  |  |  |  |  |  |  |  |  |  |  |  |  |  |  |  |  |  |  |  |
|  | EW | **Earthworks** |  | 2025-04-08 | 2025-04-12 |  |  |  |  |  |  |  |  |  |  |  |  |  |  |  |  |  |  |  |  |  |
|  | EW | **Earthworks** |  | 2025-04-08 | 2025-04-12 |  |  |  |  |  |  |  |  |  |  |  |  |  |  |  |  |  |  |  |  |  |
| CO-R10.S04-WE-EW-100 |  | Roadway Excavation Works Upto Design Level for Earthworks-[Road 10]-[SW-4] | 12d | 2025-04-08 A | 2025-04-12 A | ENG-MS-RD-A-10, ENG-SH-RD-A-100, CO-R10.S03-WE-EW-100 | 100% | 2025-09-15 | 2025-09-29 | Labor/Helper [1313.15 h]; Skilled Labor/Surveyor [164.14 h]; Foreman [164.14 h]; Water Tank [192 h]; Dozer [192 h]; Roadway Excavation for cuttings; on any type of material for all depths including trimming and Preparation of excavated surfaces and disposal. [22656.8] | 145,757.06 | 145,757.06 | CO-R10.S04-EW-100 | 10 | 10 | EW | Ex | Cub.m | EW | EW | CON | R10 | S04 | EW | EW |  |
| CO-R10.S04-WE-EW-110 |  | Embankments Works Upto Design Level for Earthworks-[Road 10]-[SW-4] | 12d | 2025-04-08 A | 2025-04-12 A | CO-R10.S04-WE-EW-100, ENG-MS-RD-A-10, ENG-SH-RD-A-100 | 100% | 2025-09-30 | 2025-10-13 | Labor/Helper [1422.58 h]; Skilled Labor/Surveyor [177.82 h]; Foreman [177.82 h]; Water Tank [480 h]; Dozer [480 h]; Embankments to the ROW, with suitable material other than top soil or rock according to specifications [38141.1] | 315,477.47 | 315,477.47 | CO-R10.S04-EW-110 | 10 | 10 | EW | BF | Cub.m | EW | EW | CON | R10 | S04 | EW | EW |  |
|  | SW | **Sewage Network** |  | 2025-08-16 | 2026-07-04 |  |  |  |  |  |  |  |  |  |  |  |  |  |  |  |  |  |  |  |  |  |
|  | ML | **Main Line Sections** |  | 2025-08-16 | 2025-08-25 |  |  |  |  |  |  |  |  |  |  |  |  |  |  |  |  |  |  |  |  |  |
| CO-R10.S04-WE-SW-100 |  | Trench Excavation and Bedding Works for Main Lines of Sewage Network-[Road 10]-[SW-4] | 12d | 2025-08-16 A | 2025-08-18 A | CO-R10.S04-WE-EW-110, ENG-MS-SW-ML-A-110, ENG-SH-SW-ML-A-110, CO-R11.S06-SW-100 | 100% | 2025-10-14 | 2025-10-27 | Labor/Helper [109.43 h]; Foreman [109.43 h]; Excavator [96 h]; Depth : 1.5 - 2.5m [21.07]; Depth : 2.5 - 3.5m [13.04]; Depth : 3.5 - 4.5m [13.04]; Depth : 5.5 - 6.5m [71.22]; Depth : 6.5 -7.5m [57.18]; Depth : 6.5 -7.5m [21.07]; Depth :more than 7.5m [14.04] | 168,096.78 | 168,096.78 | CO-R10.S04-SW-100 | 10 | 10 | ML | Ex | LM | ML | SW | CON | R10 | S04 | SW | SW | EX |
| CO-R10.S04-WE-SW-120 |  | Pipes Laying Works for Main Lines of Sewage Network-[Road 10]-[SW-4] | 12d | 2025-08-19 A | 2025-08-21 A | PRO-R10-SW-DL-100 FF+3d, CO-R10.S04-WE-SW-100 | 100% | 2025-10-28 | 2025-11-10 | Labor/Helper [875.44 h]; Skilled Labor/Surveyor [44.46 h]; Foreman [44.46 h]; Plumber [437.72 h]; Excavator [96 h]; Depth : 1.5 - 2.5m [64.2]; Depth : 2.5 - 3.5m [38.12]; Depth : 3.5 - 4.5m [38.12]; Depth : 5.5 - 6.5m [212.66]; Depth : 6.5 -7.5m [170.53]; Depth : 6.5 -7.5m [64.2]; Depth :more than 7.5m [42.13] | 503,044.53 | 503,044.53 | CO-R10.S04-SW-120 | 10 | 10 | ML | PL | LM | ML | SW | CON | R10 | S04 | SW | SW | PIPE |
| CO-R10.S04-WE-SW-130 |  | Trench Backfilling and Compaction Works for Main Lines of Sewage Network-[Road 10]-[SW-4] | 12d | 2025-08-23 A | 2025-08-25 A | CO-R10.S04-WE-SW-120, CO-R10.S04-WE-SW-210 FF | 100% | 2025-11-11 | 2025-11-24 | Skilled Labor/Surveyor [11.4 h]; Foreman [11.4 h]; Excavator [96 h]; Depth : 1.5 - 2.5m [11.03]; Depth : 2.5 - 3.5m [6.02]; Depth : 3.5 - 4.5m [6.02]; Depth : 5.5 - 6.5m [35.11]; Depth : 6.5 -7.5m [28.09]; Depth : 6.5 -7.5m [11.03]; Depth :more than 7.5m [7.02] | 83,423.96 | 83,423.96 | CO-R10.S04-SW-130 | 10 | 10 | ML | BF | LM | ML | SW | CON | R10 | S04 | SW | SW | BACK |
|  | 1 | **Manholes** |  | 2026-06-27 | 2026-07-04 |  |  |  |  |  |  |  |  |  |  |  |  |  |  |  |  |  |  |  |  |  |
| CO-R10.S04-WE-SW-160 |  | Excavation Works for Main Line Manholes of Sewage Network-[Road 10]-[SW-4] | 1d | 2026-06-27 A | 2026-07-04 A | CO-R10.S04-WE-SW-120 SS | 100% | 2025-10-28 | 2025-10-28 | Labor/Helper [30.85 h]; Skilled Labor/Surveyor [9.12 h]; Excavator [16 h]; Depth: 1.5 - 2.5m [0.3]; Depth: 2.5 - 3.5m [1]; Depth: 3.5 - 4.5m [0.07]; Depth: 4.5 - 5.5m [0.15]; Depth: 5.5 - 6.5m [0.23]; Depth:6.5 - 7.5m [0.3]; Depth: more than 7.5m [0.15] | 33,936.93 | 33,936.93 | CO-R10.S04-SW-160 | 10 | 10 |  |  |  |  | SW | CON | R10 | S04 | SW | SW | EX |
| CO-R10.S04-WE-SW-170 |  | Installation RC Footing Works for Main Line Manholes of Sewage Network-[Road 10]-[SW-4] | 2d | 2026-06-27 A | 2026-07-04 A | CO-R10.S04-WE-SW-160, PRO-R10-SW-DL-110 FF+3d | 100% | 2025-10-29 | 2025-10-30 | Cons. Carpenter [72.95 h]; Steel Fixer [72.95 h]; Depth: 1.5 - 2.5m [0.2]; Depth: 2.5 - 3.5m [1]; Depth: 3.5 - 4.5m [0.05]; Depth: 4.5 - 5.5m [0.1]; Depth: 5.5 - 6.5m [0.15]; Depth:6.5 - 7.5m [0.2]; Depth: more than 7.5m [0.1] | 25,916.81 | 25,916.81 | CO-R10.S04-SW-170 | 10 | 10 |  |  |  |  | SW | CON | R10 | S04 | SW | SW | RC F |
| CO-R10.S04-WE-SW-180 |  | Install Grp Liner Wall Works for Main Line Manholes of Sewage Network-[Road 10]-[SW-4] | 4d | 2026-06-27 A | 2026-07-04 A | CO-R10.S04-WE-SW-170 | 100% | 2025-11-01 | 2025-11-04 | Labor/Helper [72.95 h]; Plumber [72.95 h]; Depth: 1.5 - 2.5m [1]; Depth: 2.5 - 3.5m [3.01]; Depth: 3.5 - 4.5m [0.2]; Depth: 4.5 - 5.5m [0.4]; Depth: 5.5 - 6.5m [1]; Depth:6.5 - 7.5m [1]; Depth: more than 7.5m [0.4] | 111,963.08 | 111,963.08 | CO-R10.S04-SW-180 | 10 | 10 |  |  |  |  | SW | CON | R10 | S04 | SW | SW | LP |
| CO-R10.S04-WE-SW-190 |  | Pouring Grp Liner Wall Works for Main Line Manholes of Sewage Network-[Road 10]-[SW-4] | 1d | 2026-06-27 A | 2026-07-04 A | CO-R10.S04-WE-SW-180 | 100% | 2025-11-05 | 2025-11-05 | Cons. Carpenter [36.48 h]; Steel Fixer [36.48 h]; Depth: 1.5 - 2.5m [0.1]; Depth: 2.5 - 3.5m [0.25]; Depth: 3.5 - 4.5m [0.03]; Depth: 4.5 - 5.5m [0.05]; Depth: 5.5 - 6.5m [0.07]; Depth:6.5 - 7.5m [0.1]; Depth: more than 7.5m [0.05] | 10,481.09 | 10,481.09 | CO-R10.S04-SW-190 | 10 | 10 |  |  |  |  | SW | CON | R10 | S04 | SW | SW | (New) |
| CO-R10.S04-WE-SW-200 |  | Backfilling Works for Main Line Manholes of Sewage Network-[Road 10]-[SW-4] | 4d | 2026-06-27 A | 2026-07-04 A | CO-R10.S04-WE-SW-190 | 100% | 2025-11-06 | 2025-11-10 | Labor/Helper [72.95 h]; Skilled Labor/Surveyor [36.48 h]; Excavator [64 h]; Depth: 1.5 - 2.5m [0.3]; Depth: 2.5 - 3.5m [1]; Depth: 3.5 - 4.5m [0.07]; Depth: 4.5 - 5.5m [0.15]; Depth: 5.5 - 6.5m [0.23]; Depth:6.5 - 7.5m [0.3]; Depth: more than 7.5m [0.15] | 33,936.93 | 33,936.93 | CO-R10.S04-SW-200 | 10 | 10 |  |  |  |  | SW | CON | R10 | S04 | SW | SW | BACK |
| CO-R10.S04-WE-SW-210 |  | Testing Works for Main Line Manholes of Sewage Network-[Road 10]-[SW-4] | 1d | 2026-06-27 A | 2026-07-04 A | CO-R10.S04-WE-SW-200 | 100% | 2025-11-11 | 2025-11-11 | Labor/Helper [18.24 h]; Plumber [18.24 h]; Depth: 1.5 - 2.5m [0.1]; Depth: 2.5 - 3.5m [0.25]; Depth: 3.5 - 4.5m [0.03]; Depth: 4.5 - 5.5m [0.05]; Depth: 5.5 - 6.5m [0.07]; Depth:6.5 - 7.5m [0.1]; Depth: more than 7.5m [0.05] | 10,481.09 | 10,481.09 | CO-R10.S04-SW-210 | 10 | 10 |  |  |  |  | SW | CON | R10 | S04 | SW | SW | T&COV |
|  | SD | **Storm Drainage Network** |  | 2025-08-23 | 2026-10-19 |  |  |  |  |  |  |  |  |  |  |  |  |  |  |  |  |  |  |  |  |  |
|  | ML | **Main Line Sections** |  | 2025-08-23 | 2025-09-02 |  |  |  |  |  |  |  |  |  |  |  |  |  |  |  |  |  |  |  |  |  |
| CO-R10.S04-WE-SD-100 |  | Trench Excavation and Bedding Works for Main Lines of Storm Drainage Network-[Road 10]-[SW-4] | 10d | 2025-08-23 A | 2025-08-25 A | CO-R10.S04-WE-EW-110, CO-R10.S04-WE-EW-100, CO-R10.S04-WE-SW-130 SS+3d, CO-R10.S04-WE-SW-130 FF+3d, CO-R10.S03-WE-SD-100 | 100% | 2025-11-30 | 2025-12-10 | Skilled Labor/Surveyor [13.68 h]; Foreman [13.68 h]; Excavator [120 h]; Pipe with diameter 400mm ; depth: 0.0m - 1.5m [62.19]; Pipe with diameter 400mm ; depth: 1.51m - 2.5m [79.25]; Pipe with diameter 500mm ; depth: 1.51m - 2.5m [34.11]; Pipe with diameter 600mm ; depth: 1.51m - 2.5m [28.09]; Pipe with diameter 700mm ; depth: 0.0m - 1.5m [7.02]; Pipe with diameter 700mm ; depth: 1.51m - 2.5m [51.16]; Pipe with diameter 800mm ; depth: 1.51m - 2.5m [64.2]; Pipe with diameter 900mm ; depth: 1.51m - 2.5m [33.1]; Pipe with diameter 1000mm ; depth: 0.0m - 1.5m [7.02]; Pipe with diameter 1100mm ; depth: 0.0m - 1.5m [7.02] | 158,436.69 | 158,436.69 | CO-R10.S04-SD-100 | 10 | 10 | ML | Ex | LM | ML | SD | CON | R10 | S04 | SD | SD | EX |
| CO-R10.S04-WE-SD-120 |  | Pipes Laying Works for Main Lines of Storm Drainage Network-[Road 10]-[SW-4] | 10d | 2025-08-26 A | 2025-08-28 A | PRO-R10-SD-DL-120 FF+3d, CO-R10.S04-WE-SD-100 | 100% | 2025-12-11 | 2025-12-22 | Labor/Helper [273.57 h]; Skilled Labor/Surveyor [13.68 h]; Foreman [13.68 h]; Plumber [136.79 h]; Excavator [120 h]; Pipe with diameter 400mm ; depth: 0.0m - 1.5m [185.58]; Pipe with diameter 400mm ; depth: 1.51m - 2.5m [238.75]; Pipe with diameter 500mm ; depth: 1.51m - 2.5m [103.32]; Pipe with diameter 600mm ; depth: 1.51m - 2.5m [83.26]; Pipe with diameter 700mm ; depth: 0.0m - 1.5m [21.07]; Pipe with diameter 700mm ; depth: 1.51m - 2.5m [153.48]; Pipe with diameter 800mm ; depth: 1.51m - 2.5m [191.6]; Pipe with diameter 900mm ; depth: 1.51m - 2.5m [99.31]; Pipe with diameter 1000mm ; depth: 0.0m - 1.5m [21.07]; Pipe with diameter 1100mm ; depth: 0.0m - 1.5m [21.07] | 474,683.08 | 474,683.08 | CO-R10.S04-SD-120 | 10 | 10 | ML | PL | LM | ML | SD | CON | R10 | S04 | SD | SD | PIPE |
| CO-R10.S04-WE-SD-130 |  | Trench Backfilling and Compaction Works for Main Lines of Storm Drainage Network-[Road 10]-[SW-4] | 10d | 2025-08-30 A | 2025-09-02 A | CO-R10.S04-WE-SD-120 SS+3d, CO-R10.S04-WE-SD-120 FF+3d, CO-R10.S04-WE-SD-120, CO-R10.S04-WE-SD-220 FF | 100% | 2025-12-23 | 2026-01-03 | Skilled Labor/Surveyor [13.68 h]; Foreman [13.68 h]; Excavator [120 h]; Pipe with diameter 400mm ; depth: 0.0m - 1.5m [31.1]; Pipe with diameter 400mm ; depth: 1.51m - 2.5m [40.13]; Pipe with diameter 500mm ; depth: 1.51m - 2.5m [17.05]; Pipe with diameter 600mm ; depth: 1.51m - 2.5m [14.04]; Pipe with diameter 700mm ; depth: 0.0m - 1.5m [4.01]; Pipe with diameter 700mm ; depth: 1.51m - 2.5m [25.08]; Pipe with diameter 800mm ; depth: 1.51m - 2.5m [33.1]; Pipe with diameter 900mm ; depth: 1.51m - 2.5m [17.05]; Pipe with diameter 1000mm ; depth: 0.0m - 1.5m [4.01]; Pipe with diameter 1100mm ; depth: 0.0m - 1.5m [4.01] | 80,990.55 | 80,990.55 | CO-R10.S04-SD-130 | 10 | 10 | ML | BF | LM | ML | SD | CON | R10 | S04 | SD | SD | BACK |
|  | MH | **Manholes** |  | 2025-11-09 | 2026-10-14 |  |  |  |  |  |  |  |  |  |  |  |  |  |  |  |  |  |  |  |  |  |
| CO-R10.S04-WE-SD-180 |  | Trench Excavation and Bedding Works for Manholes of Storm Drainage Network-[Road 10]-[SW-4] | 1d | 2025-11-09 A | 2025-11-15 A | CO-R10.S04-WE-SD-120 SS, PRO-SD-1DL-100 | 100% | 2025-12-11 | 2025-12-11 | Labor/Helper [27.36 h]; Skilled Labor/Surveyor [13.68 h]; Excavator [24 h]; MH ; depth: 0.0m - 1.5m [0.23]; MH ; depth: 1.51m - 2.5m [1]; MH ; depth: 0.0m - 1.5m [0.15]; MH ; depth: 1.51m - 2.5m with back drop less than 1.0 m [0.15]; MH ; depth: 0.0m - 1.5m [0.07]; MH ; depth: 1.51m - 2.5m [0.23]; MH ; depth: 2.51 - 3.5m [0.3]; MH ; depth: 3.51 - 4.5m [0.15] | 40,573.39 | 40,573.39 | CO-R10.S04-SD-180 | 10 | 10 |  |  |  |  | SD | CON | R10 | S04 | SD | SD | EX |
| CO-R10.S04-WE-SD-190 |  | Install RC Footing Works for Manholes of Storm Drainage Network-[Road 10]-[SW-4] | 1d | 2025-11-10 A | 2025-11-17 A | CO-R10.S04-WE-SD-180 | 100% | 2025-12-13 | 2025-12-13 | Cons. Carpenter [54.71 h]; Steel Fixer [54.71 h]; MH ; depth: 0.0m - 1.5m [0.07]; MH ; depth: 1.51m - 2.5m [0.2]; MH ; depth: 0.0m - 1.5m [0.05]; MH ; depth: 1.51m - 2.5m with back drop less than 1.0 m [0.05]; MH ; depth: 0.0m - 1.5m [0.03]; MH ; depth: 1.51m - 2.5m [0.07]; MH ; depth: 2.51 - 3.5m [0.1]; MH ; depth: 3.51 - 4.5m [0.05] | 11,252.06 | 11,252.06 | CO-R10.S04-SD-190 | 10 | 10 |  |  |  |  | SD | CON | R10 | S04 | SD | SD | RC F |
| CO-R10.S04-WE-SD-200 |  | Install RC Wall Rings & Slab Works for Manholes of Storm Drainage Network-[Road 10]-[SW-4] | 4d | 2025-11-11 A | 2025-11-18 A | CO-R10.S04-WE-SD-190 | 100% | 2025-12-14 | 2025-12-17 | Cons. Carpenter [218.86 h]; Steel Fixer [218.86 h]; MH ; depth: 0.0m - 1.5m [1]; MH ; depth: 1.51m - 2.5m [3.01]; MH ; depth: 0.0m - 1.5m [0.45]; MH ; depth: 1.51m - 2.5m with back drop less than 1.0 m [0.45]; MH ; depth: 0.0m - 1.5m [0.23]; MH ; depth: 1.51m - 2.5m [1]; MH ; depth: 2.51 - 3.5m [1]; MH ; depth: 3.51 - 4.5m [0.45] | 131,790.77 | 131,790.77 | CO-R10.S04-SD-200 | 10 | 10 |  |  |  |  | SD | CON | R10 | S04 | SD | SD | RC W |
| CO-R10.S04-WE-SD-210 |  | Testing Works for Manholes of Storm Drainage Network-[Road 10]-[SW-4] | 1d | 2026-10-13 A | 2026-10-13 A | CO-R10.S04-WE-SD-200 | 100% | 2025-12-18 | 2025-12-18 | Labor/Helper [27.36 h]; Plumber [27.36 h]; MH ; depth: 0.0m - 1.5m [0.15]; MH ; depth: 1.51m - 2.5m [0.4]; MH ; depth: 0.0m - 1.5m [0.1]; MH ; depth: 1.51m - 2.5m with back drop less than 1.0 m [0.1]; MH ; depth: 0.0m - 1.5m [0.05]; MH ; depth: 1.51m - 2.5m [0.15]; MH ; depth: 2.51 - 3.5m [0.2]; MH ; depth: 3.51 - 4.5m [0.1] | 22,505.15 | 22,505.15 | CO-R10.S04-SD-210 | 10 | 10 |  |  |  |  | SD | CON | R10 | S04 | SD | SD | T&COV |
| CO-R10.S04-WE-SD-220 |  | Backfilling Works for Manholes of Storm Drainage Network-[Road 10]-[SW-4] | 7d | 2026-10-14 A | 2026-10-14 A | CO-R10.S04-WE-SD-210 | 100% | 2025-12-20 | 2025-12-27 | Labor/Helper [145.42 h]; Skilled Labor/Surveyor [63.83 h]; Excavator [112 h]; MH ; depth: 0.0m - 1.5m [0.3]; MH ; depth: 1.51m - 2.5m [1]; MH ; depth: 0.0m - 1.5m [0.2]; MH ; depth: 1.51m - 2.5m with back drop less than 1.0 m [0.2]; MH ; depth: 0.0m - 1.5m [0.1]; MH ; depth: 1.51m - 2.5m [0.3]; MH ; depth: 2.51 - 3.5m [0.4]; MH ; depth: 3.51 - 4.5m [0.2] | 48,442.38 | 48,442.38 | CO-R10.S04-SD-220 | 10 | 10 |  |  |  |  | SD | CON | R10 | S04 | SD | SD | BACK |

| ID | WBS | Activity | Duration | Start | Finish | Predecessors | Complete | Remaining | Planned start | Planned finish | Total float | Free float | Resources | Cost | Actual cost | Activity ID N | Seq | New Seq | 02- Network-WBS | 03- Activity | 04-UOM | 05-Discipline | 01- Network | 07-Weightage System | 08 Stage | 09 Roads | 10 side Walk | Discipline | New Discipline |
| --- | --- | --- | --- | --- | --- | --- | --- | --- | --- | --- | --- | --- | --- | --- | --- | --- | --- | --- | --- | --- | --- | --- | --- | --- | --- | --- | --- | --- | --- |
|  | CB | **Catch Basin Sections** |  | 2026-06-17 | 2026-10-19 |  |  |  |  |  |  |  |  |  |  |  |  |  |  |  |  |  |  |  |  |  |  |  |  |
| CO-R10.S04-WE-SD-140 |  | Trench Excavation and Bedding Works for Catch Basins of Storm Drainage Network-[Road 10]-[SW-4] | 6d | 2026-06-17 A | 2026-10-14 A | CO-R10.S04-WE-EW-110, CO-R10.S04-WE-SD-220, CO-R10.S03-ES-SD-140 | 100% |  | 2025-12-28 | 2026-01-03 |  |  | Skilled Labor/Surveyor [33.47 h]; Foreman [36.01 h]; Excavator [48 h]; Pipe with diameter 300mm ; depth: 0 - 1.5m [120.38]; Pipe with diameter 400mm ; depth: 0 - 1.5m [7.02] | 30,211.77 | 30,211.77 | CO-R10.S04-SD-140 | 10 | 10 | CB | Ex | Each | CB | SD | EX | CON | R10 | S04 | SD | SD |
| CO-R10.S04-WE-SD-150 |  | Installation and Pipes Laying Connection Works for Catch Basins of Storm Drainage Network-[Road 10]-[SW-4] | 7d | 2026-06-20 A | 2026-10-15 A | CO-R10.S04-WE-SD-140, PRO-R10-SD-DL-130 FF+3d | 100% |  | 2026-01-04 | 2026-01-11 |  |  | Labor/Helper [508.44 h]; Skilled Labor/Surveyor [35.79 h]; Foreman [38.28 h]; Excavator [112 h]; Pipe with diameter 300mm ; depth: 0 - 1.5m [360.12]; Pipe with diameter 400mm ; depth: 0 - 1.5m [21.07] | 90,400.46 | 90,400.46 | CO-R10.S04-SD-150 | 10 | 10 | CB | CB | Each | CB | SD | INSTALL | CON | R10 | S04 | SD | SD |
| CO-R10.S04-WE-SD-160 |  | Testing Works for Catch Basins of Storm Drainage Network-[Road 10]-[SW-4] | 10d | 2026-06-23 A | 2026-10-17 A | CO-R10.S04-WE-SD-150, CO-R10.S04-WE-SD-120, PRO-R10-SD-DL-110 FF+3d | 100% |  | 2026-01-12 | 2026-01-22 |  |  | Labor/Helper [473.34 h]; Skilled Labor/Surveyor [33.45 h]; Foreman [35.87 h]; Plumber [196.99 h]; Excavator [80 h]; Pipe with diameter 300mm ; depth: 0 - 1.5m [79.25]; Pipe with diameter 400mm ; depth: 0 - 1.5m [4.01] | 19,698 | 19,698 | CO-R10.S04-SD-160 | 10 | 10 | CB | PL | Each | CB | SD | TEST | CON | R10 | S04 | SD | SD |
| CO-R10.S04-WE-SD-170 |  | Trench Backfilling and Compaction Works for Catch Basins of Storm Drainage Network-[Road 10]-[SW-4] | 7d | 2026-10-13 A | 2026-10-19 A | CO-R10.S04-WE-SD-160 SS+3d, CO-R10.S04-WE-SD-160 FF+3d | 100% |  | 2026-01-19 | 2026-01-26 |  |  | Skilled Labor/Surveyor [6.84 h]; Foreman [6.84 h]; Excavator [56 h]; Pipe with diameter 300mm ; depth: 0 - 1.5m [160.5]; Pipe with diameter 400mm ; depth: 0 - 1.5m [10.03] | 40,492.72 | 40,492.72 | CO-R10.S04-SD-170 | 10 | 10 | CB | BF | Each | CB | SD | BACK | CON | R10 | S04 | SD | SD |
|  | PW | **Potable Water Network** |  | 2025-10-01 | 2026-12-19 |  |  |  |  |  |  |  |  |  |  |  |  |  |  |  |  |  |  |  |  |  |  |  |  |
|  | ML | **Main Line Sections** |  | 2025-10-01 | 2026-06-24 |  |  |  |  |  |  |  |  |  |  |  |  |  |  |  |  |  |  |  |  |  |  |  |  |
| CO-R10.S04-WE-PW-100 |  | Trench Excavation and Bedding Works for Main Lines of Potable Water Network-[Road 10]-[SW-4] | 10d | 2025-10-01 A | 2025-10-07 A | CO-R10.S04-WE-EW-110, CO-R10.S04-WE-EW-100, CO-R10.S04-WE-SD-130 | 100% |  | 2026-01-04 | 2026-01-14 |  |  | Skilled Labor/Surveyor [9.12 h]; Foreman [9.12 h]; Excavator [80 h]; Pipe with diameter 560mm; in depth 1.5m - 3.0m [170.53]; Pipe with diameter 630mm; in depth 1.5m - 3.0m [296.93] | 381,367.24 | 381,367.24 | CO-R10.S04-PW-100 | 10 | 10 | ML | Ex | LM | ML | PW | EX | CON | R10 | S04 | PW | PW |
| CO-R10.S04-WE-PW-110 |  | Pipes Laying and accessories for Main Lines of Potable Water Network-[Road 10]-[SW-4] | 10d | 2025-10-02 A | 2026-06-18 A | CO-R10.S04-WE-PW-100, PRO-R10-PW-DL-100 FF+3d | 100% |  | 2026-01-15 | 2026-01-26 |  |  | Labor/Helper [947.41 h]; Skilled Labor/Surveyor [69.51 h]; Foreman [74.98 h]; Plumber [383.91 h]; Excavator [80 h]; Pipe with diameter 560mm; in depth 1.5m - 3.0m [425.33]; Pipe with diameter 630mm; in depth 1.5m - 3.0m [742.32] | 952,709.41 | 952,709.41 | CO-R10.S04-PW-110 | 10 | 10 | ML | PL | LM | ML | PW | PIPE | CON | R10 | S04 | PW | PW |
| CO-R10.S04-WE-PW-130 |  | Trench Backfilling and Compaction Works for Main Lines of Potable Water Network-[Road 10]-[SW-4] | 10d | 2026-06-11 A | 2026-06-24 A | CO-R10.S04-WE-PW-110 | 100% |  | 2026-02-01 | 2026-02-11 |  |  | Skilled Labor/Surveyor [9.12 h]; Foreman [9.12 h]; Eq. Operator [10.75 h]; Loader [80 h]; Compactor [80 h]; Water Tank [20 h]; Pipe with diameter 560mm; in depth 1.5m - 3.0m [170.53]; Pipe with diameter 630mm; in depth 1.5m - 3.0m [296.93] | 381,367.24 | 381,367.24 | CO-R10.S04-PW-130 | 10 | 10 | ML | BF | LM | ML | PW | BACK | CON | R10 | S04 | PW | PW |
|  | VC | **Valve Chamber** |  | 2026-06-21 | 2026-12-10 |  |  |  |  |  |  |  |  |  |  |  |  |  |  |  |  |  |  |  |  |  |  |  |  |
| CO-R10.S04-WE-PW-210 |  | Insulation Works for Main Line Valves and Valve Chambers of Potable Water Network-[Road 10]-[SW-4] | 1d | 2026-06-21 A | 2026-12-07 | CO-R10.S04-WE-PW-200 FF, CO-R10.S04-WE-PW-100 SS | 60% | 1d | 2026-01-29 | 2026-01-29 | -19d | 0d | Labor/Helper [3.63 h]; Plumber [3.63 h]; Butterfly valves with dia (560)mm on pipes with dia (560)mm. [0.4]; Butterfly valves with dia (630)mm on pipes with dia (630)mm. [1.61]; Wash out valve with dia (150)mm on pipes with dia (560) mm [0.4]; Wash out valve with dia (150)mm on pipes with dia (630) mm [1.2]; Air valves with dia (65mm) mm on pipes with dia(560)mm. [0.4]; Air valves with dia (65mm) mm on pipes with dia(630)mm. [1.2] | 493,951.18 | 296,370.71 | CO-R10.S04-PW-210 | 10 | 10 | ML | VI | Each | ML | PW | INSUL | CON | R10 | S04 | PW | PW |
| CO-R10.S04-WE-PW-170 |  | Excavation Works for Main Line Valves and Valve Chambers of Potable Water Network-[Road 10]-[SW-4] | 1d | 2026-11-24 | 2026-11-24 | CO-R10.S04-WE-PW-100 |  |  |  |  | -113d | 0d | Labor/Helper [8.97 h]; Skilled Labor/Surveyor [4.49 h]; Excavator [8 h]; Wash out chamber; on 560 mm dia pipeline Depth 1.5 - 3m [0.05]; Wash out chamber; on 630 mm dia pipeline Depth 1.5 - 3m [0.1]; Air valve chamber on 560 mm dia pipeline Depth 1.5 - 3 m [0.1]; Air valve chamber on 630 mm dia pipeline Depth 1.5 - 3 m [0.2] | 8,862.57 |  | CO-R10.S04-PW-170 | 10 | 10 | ML | VI | Each | ML | PW | EX | CON | R10 | S04 | PW | PW |
| CO-R10.S04-WE-PW-180 |  | RC Footing Works for Main Line Valves and Valve Chambers of Potable Water Network-[Road 10]-[SW-4] | 3d | 2026-11-25 | 2026-11-28 | CO-R10.S04-WE-PW-170 |  |  |  |  | -19d | 0d | Cons. Carpenter [53.84 h]; Steel Fixer [53.84 h]; Wash out chamber; on 560 mm dia pipeline Depth 1.5 - 3m [0.07]; Wash out chamber; on 630 mm dia pipeline Depth 1.5 - 3m [0.15]; Air valve chamber on 560 mm dia pipeline Depth 1.5 - 3 m [0.15]; Air valve chamber on 630 mm dia pipeline Depth 1.5 - 3 m [0.3] | 13,294.37 |  | CO-R10.S04-PW-180 | 10 | 10 | ML | VI | Each | ML | PW | RC F | CON | R10 | S04 | PW | PW |
| CO-R10.S04-WE-PW-190 |  | RC Wall Works for Main Line Valves and Valve Chambers of Potable Water Network-[Road 10]-[SW-4] | 6d | 2026-11-29 | 2026-12-05 | CO-R10.S04-WE-PW-180 |  |  |  |  | -19d | 0d | Cons. Carpenter [107.67 h]; Steel Fixer [107.67 h]; Wash out chamber; on 560 mm dia pipeline Depth 1.5 - 3m [0.17]; Wash out chamber; on 630 mm dia pipeline Depth 1.5 - 3m [0.35]; Air valve chamber on 560 mm dia pipeline Depth 1.5 - 3 m [0.35]; Air valve chamber on 630 mm dia pipeline Depth 1.5 - 3 m [1] | 33,415.13 |  | CO-R10.S04-PW-190 | 10 | 10 | ML | VI | Each | ML | PW | RC W | CON | R10 | S04 | PW | PW |
| CO-R10.S04-WE-PW-200 |  | RC Slab Works for Main Line Valves and Valve Chambers of Potable Water Network-[Road 10]-[SW-4] | 2d | 2026-12-06 | 2026-12-07 | CO-R10.S04-WE-PW-190 |  |  |  |  | -19d | 0d | Cons. Carpenter [35.89 h]; Steel Fixer [35.89 h]; Wash out chamber; on 560 mm dia pipeline Depth 1.5 - 3m [0.1]; Wash out chamber; on 630 mm dia pipeline Depth 1.5 - 3m [0.2]; Air valve chamber on 560 mm dia pipeline Depth 1.5 - 3 m [0.2]; Air valve chamber on 630 mm dia pipeline Depth 1.5 - 3 m [0.4] | 17,726.16 |  | CO-R10.S04-PW-200 | 10 | 10 | ML | VI | Each | ML | PW | RC S | CON | R10 | S04 | PW | PW |
| CO-R10.S04-WE-PW-220 |  | Backfilling Works for Main Line Valves and Valve Chambers of Potable Water Network-[Road 10]-[SW-4] | 3d | 2026-12-08 | 2026-12-10 | CO-R10.S04-WE-PW-210 |  |  |  |  | -19d | 171d | Labor/Helper [26.92 h]; Skilled Labor/Surveyor [13.46 h]; Excavator [24 h]; Wash out chamber; on 560 mm dia pipeline Depth 1.5 - 3m [0.1]; Wash out chamber; on 630 mm dia pipeline Depth 1.5 - 3m [0.2]; Air valve chamber on 560 mm dia pipeline Depth 1.5 - 3 m [0.2]; Air valve chamber on 630 mm dia pipeline Depth 1.5 - 3 m [0.4] | 17,726.16 |  | CO-R10.S04-PW-220 | 10 | 10 | ML | VI | Each | ML | PW | BACK | CON | R10 | S04 | PW | PW |
|  | FH | **Fire Hydrant** |  | 2026-11-25 | 2026-12-19 |  |  |  |  |  |  |  |  |  |  |  |  |  |  |  |  |  |  |  |  |  |  |  |  |
| CO-R10.S04-WE-PW-140 |  | Excavation Works for Fire Hydrants of Potable Water Network-[Road 10]-[SW-4] | 7d | 2026-11-25 | 2026-12-02 | CO-R10.S04-WE-PW-110 SS+3d, CO-R10.S04-WE-EW-110, CO-R10.S04-WE-SW-130 SS+3d, CO-R10.S04-WE-SW-130 FF+3d, CO-R10.S04-WE-PW-170 |  |  |  |  | -113d | 0d | Skilled Labor/Surveyor [6.73 h]; Foreman [6.73 h]; Excavator [56 h] |  |  | CO-R10.S04-PW-140 | 10 | 10 | FH | Ex | Each | FH | PW | EX | CON | R10 | S04 | PW | PW |
| CO-R10.S04-WE-PW-150 |  | Installation Works for Fire Hydrant of Potable Water Network-[Road 10]-[SW-4] | 7d | 2026-12-03 | 2026-12-10 | CO-R10.S04-WE-PW-140, PRO-R10-PW-DL-120 FF+3d |  |  |  |  | -113d | 0d | Labor/Helper [125.62 h]; Skilled Labor/Surveyor [6.73 h]; Foreman [6.73 h]; Plumber [125.62 h] |  |  | CO-R10.S04-PW-150 | 10 | 10 | FH | FH | Each | FH | PW | INSTALL | CON | R10 | S04 | PW | PW |
| CO-R10.S04-WE-PW-160 |  | Trench Backfilling and Compaction Works for Fire Hydrants of Potable Water Network-[Road 10]-[SW-4] | 7d | 2026-12-12 | 2026-12-19 | CO-R10.S04-WE-PW-150 |  |  |  |  | -113d | 27d | Skilled Labor/Surveyor [6.73 h]; Foreman [6.73 h]; Excavator [56 h] |  |  | CO-R10.S04-PW-160 | 10 | 10 | FH | BF | Each | FH | PW | BACK | CON | R10 | S04 | PW | PW |
|  | IR | **Irrigation Network** |  | 2026-10-13 | 2026-11-29 |  |  |  |  |  |  |  |  |  |  |  |  |  |  |  |  |  |  |  |  |  |  |  |  |
|  | ML | **Main Line Pipes** |  | 2026-10-13 | 2026-11-29 |  |  |  |  |  |  |  |  |  |  |  |  |  |  |  |  |  |  |  |  |  |  |  |  |
| CO-R10.S04-WE-IR-100 |  | Trench Excavation and Bedding Works for Main Lines of Irrigation Network-[Road 10]-[SW-4] | 6d | 2026-10-13 A | 2026-11-25 | CO-R10.S04-WE-EW-110, CO-R10.S04-WE-PW-130, CO-R10.S04-WE-SD-170 | 70% | 2d | 2026-02-12 | 2026-02-18 | -175d | 0d | Skilled Labor/Surveyor [5.67 h]; Foreman [5.67 h]; Excavator [48 h]; 125 mm pipe; depth 0.0m - 1.5m [407.27] | 30,929.64 | 21,650.75 | CO-R10.S04-IR-100 | 10 | 10 | ML | Ex | LM | ML | IR | EX | CON | R10 | S04 | IR | IR |
| CO-R10.S04-WE-IR-110 |  | Pipes Laying Works for Main Lines of Irrigation Network-[Road 10]-[SW-4] | 7d | 2026-10-15 A | 2026-11-25 | CO-R10.S04-WE-IR-100 FF, PRO-R19.2-IR-DL-100 FF+3d, CO-R10.S04-WE-IR-100 SS, PRO-R19.2-IR-DL-100 SS | 70% | 2d | 2026-02-19 | 2026-02-26 | -175d | 0d | Labor/Helper [127.11 h]; Skilled Labor/Surveyor [6.81 h]; Foreman [6.81 h]; Plumber [63.55 h]; Excavator [56 h]; 125 mm pipe; depth 0.0m - 1.5m [1223.82] | 92,941.08 | 65,058.76 | CO-R10.S04-IR-110 | 10 | 10 | ML | PL | LM | ML | IR | PIPE | CON | R10 | S04 | IR | IR |
| CO-R10.S04-WE-IR-130 |  | Trench Backfilling and Compaction Works for Main Lines of Irrigation Network-[Road 10]-[SW-4] | 5d | 2026-10-17 A | 2026-11-29 | CO-R10.S04-WE-IR-120 FF, CO-R10.S04-WE-IR-110 FF, CO-R10.S04-WE-IR-110 SS | 70% | 2d | 2026-03-03 | 2026-03-08 | -175d | 5d | Skilled Labor/Surveyor [4.54 h]; Foreman [4.54 h]; Excavator [40 h]; 125 mm pipe; depth 0.0m - 1.5m [204.64] | 15,540.9 | 10,878.63 | CO-R10.S04-IR-130 | 10 | 10 | ML | BF | LM | ML | IR | BACK | CON | R10 | S04 | IR | IR |
| CO-R10.S04-WE-IR-120 |  | Installation Works for Main Line Valves of Irrigation Network-[Road 10]-[SW-4] | 3d | 2026-11-26 | 2026-11-29 | CO-R10.S04-WE-IR-110, PRO-R19.2-IR-DL-110 FF+3d |  |  |  |  | -175d | 0d | Labor/Helper [143.56 h]; Skilled Labor/Surveyor [7.85 h]; Foreman [7.85 h]; Plumber [143.56 h]; Gate valves dia (90)mm on pipes with dia (125) mm. [16.05] | 32,668.66 |  | CO-R10.S04-IR-120 | 10 | 10 | ML | VI | Each | ML | IR | VALV | CON | R10 | S04 | IR | IR |

| ID | WBS | Activity | Duration | Start | Finish | Predecessors | Complete | Remaining | Planned start | Planned finish | Total float | Free float | Resources | Cost | Activity ID N | Seq | New Seq | 02- Network-WBS | 03- Activity | 04-UOM | 05-Discipline | 01- Network | 07-Weightage System | 08 Stage | 09 Roads | 10 side Walk | Discipline | New Discipline |
| --- | --- | --- | --- | --- | --- | --- | --- | --- | --- | --- | --- | --- | --- | --- | --- | --- | --- | --- | --- | --- | --- | --- | --- | --- | --- | --- | --- | --- |
|  | SL | **Street Lighting Network** |  | 2026-11-11 | 2027-02-03 |  |  |  |  |  |  |  |  |  |  |  |  |  |  |  |  |  |  |  |  |  |  |  |
|  | LP | **Lighting Poles Works** |  | 2026-11-11 | 2026-12-31 |  |  |  |  |  |  |  |  |  |  |  |  |  |  |  |  |  |  |  |  |  |  |  |
| CO-R10.S04-WE-SL-100 |  | Foundation Excavation Works for Lighting Poles of Street Lighting Network-[Road 10]-[SW-4] | 10d | 2026-11-11 A | 2026-12-05 | CO-R10.S04-WE-EW-110, CO-R10.S04-WE-EW-100, CO-R10.S04-WE-IR-130 FF | 70% | 10d | 2026-11-16 | 2026-11-26 | -180d | 0d | Labor/Helper [323.01 h]; Skilled Labor/Surveyor [81.23 h]; Excavator [288 h]; Lighting poles with one arm, including the power distribution box, screws, cables, 12 meters in height. [1] | 1,949.38 | CO-R10.S04-SL-100 | 10 | 10 | LP | Ex | Each | POL | SL | EX | CON | R10 | S04 | SL | SL |
| CO-R10.S04-WE-SL-110 |  | Installation Works for Lighting Poles Foundation of Street Lighting Network-[Road 10]-[SW-4] | 10d | 2026-11-12 A | 2026-12-10 | CO-R10.S04-WE-SL-100 SS+5d, CO-R10.S04-WE-SL-100 FF+5d, PRO-R10-SL-DL-110 FF+3d | 70% | 10d | 2026-11-22 | 2026-12-02 | -180d | 0d | Labor/Helper [215.34 h]; Skilled Labor/Surveyor [11.22 h]; Foreman [11.22 h]; Eq. Operator [11.22 h]; Loader [24 h]; Reinforced concrete foundation, for 12m high lighting columns With Drawpits [34.11] | 12,670.44 | CO-R10.S04-SL-110 | 10 | 10 | LP | LPF | Each | POL | SL | INSTALL | CON | R10 | S04 | SL | SL |
| CO-R10.S04-WE-SL-210 |  | Backfilling Works for Lighting Poles of Street Lighting Network-[Road 10]-[SW-4] | 15d | 2026-11-12 A | 2026-12-23 | CO-R10.S04-WE-SL-120 FF, CO-R10.S03-WE-SL-210 FF, CO-R10.S03-WE-SL-210 SS | 70% | 15d | 2026-12-13 | 2026-12-29 | -101.5d | 0d | Labor/Helper [269.18 h]; Skilled Labor/Surveyor [134.59 h]; Excavator [240 h]; Lighting poles with one arm, including the power distribution box, screws, cables, 12 meters in height. [7.02] | 13,648.7 | CO-R10.S04-SL-210 | 10 | 10 |  |  |  |  | SL | BACK | CON | R10 | S04 | SL | SL |
| CO-R10.S04-WE-SL-120 |  | Installation Works for Lighting Poles of Street Lighting Network-[Road 10]-[SW-4] | 18d | 2026-11-30 | 2026-12-20 | CO-R10.S04-WE-SL-110 SS+5d, CO-R10.S04-WE-SL-110 FF+5d, PRO-R10-SL-DL-120 FF+3d |  |  |  |  | -180d | 0d | Labor/Helper [161.51 h]; Electrician [161.51 h]; Lighting poles with one arm, including the power distribution box, screws, cables, 12 meters in height. [18.06] | 35,096.96 | CO-R10.S04-SL-120 | 10 | 10 | LP | LP | Each | POL | SL | POLES | CON | R10 | S04 | SL | SL |
| CO-R10.S04-WE-SL-130 |  | Installation Works for Lighting Fixtures With Drop Wire of Street Lighting Network-[Road 10]-[SW-4] | 18d | 2026-12-12 | 2026-12-31 | CO-R10.S04-WE-SL-120 SS+5d, CO-R10.S04-WE-SL-120 FF+5d, PRO-R10-SL-DL-140 FF+3d, CO-R10.S04-WE-SL-200 FF |  |  |  |  | -101.5d | 0d | Labor/Helper [323.01 h]; Electrician [323.01 h]; Manlift [288 h]; Street Lighting( LED) Luminaire,(Type C) complete with control gear and lamp, ?.17000 Lumen [34.11] | 20,861.09 | CO-R10.S04-SL-130 | 10 | 10 | LP | LPA | Each | POL | SL | INSTALL | CON | R10 | S04 | SL | SL |
| CO-R10.S04-WE-SL-200 |  | Testing Works for Lighting Poles of Street Lighting Network-[Road 10]-[SW-4] | 7d | 2026-12-24 | 2026-12-31 | CO-R10.S04-WE-SL-210, CO-R10.S04-WE-SL-120 |  |  |  |  | -101.5d | 0d | Labor/Helper [188.42 h]; Electrician [188.42 h]; Lighting poles with one arm, including the power distribution box, screws, cables, 12 meters in height. [7.02] | 13,648.7 | CO-R10.S04-SL-200 | 10 | 10 |  |  |  |  | SL | TESTING | CON | R10 | S04 | SL | SL |
|  | CW | **Cabling Works** |  | 2026-11-11 | 2026-12-20 |  |  |  |  |  |  |  |  |  |  |  |  |  |  |  |  |  |  |  |  |  |  |  |
| CO-R10.S04-WE-SL-140 |  | Trench Excavation and Bedding Works for Street Lighting Network-[Road 10]-[SW-4] | 10d | 2026-11-11 A | 2026-12-20 | CO-R10.S04-WE-IR-130 FF, CO-R10.S04-WE-EW-110, CO-R10.S04-WE-SL-120 FF, CO-R10.S04-WE-SL-110 FF | 70% | 10d | 2026-12-19 | 2026-12-29 | -180d | 0d | Labor/Helper [89.73 h]; Skilled Labor/Surveyor [44.86 h]; Excavator [80 h] |  | CO-R10.S04-SL-140 | 10 | 10 | CW | Ex | LM | CB | SL | EXC | CON | R10 | S04 | SL | SL |
| CO-R10.S04-WE-SL-160 |  | Trench Backfilling and Compaction Works for Street Lighting Network-[Road 10]-[SW-4] | 10d | 2026-11-12 A | 2026-12-20 | CO-R10.S04-WE-SL-150 FF, CO-R10.S04-WE-IR-130 FF, CO-R10.S04-WE-SL-150 SS, CO-R10.S04-WE-IR-130 SS | 70% | 10d | 2027-01-11 | 2027-01-21 | -180d | 0d | Skilled Labor/Surveyor [8.97 h]; Foreman [8.97 h]; Excavator [80 h]; Water Tank [20 h]; Supply, installation , test and operation of cables, Copper, (4Cx25mmï¿½,Cu/XLPE/SWA/PVC +1x16mmï¿½ PVC/PVC) [102.32] | 4,900.5 | CO-R10.S04-SL-160 | 10 | 10 | CW | BF | LM | CB | SL | BACK | CON | R10 | S04 | SL | SL |
| CO-R10.S04-WE-SL-150 |  | Cable Laying Works for Street Lighting Network-[Road 10]-[SW-4] | 10d | 2026-11-14 A | 2026-12-20 | CO-R10.S04-WE-SL-140 FF, PRO-R10-SL-DL-100 FF+3d, CO-R10.S04-WE-SL-140 SS, PRO-R10-SL-DL-100 SS | 70% | 10d | 2026-12-30 | 2027-01-10 | -180d | 0d | Labor/Helper [89.73 h]; Electrician [89.73 h]; Low Current Technician [89.73 h]; Supply, installation , test and operation of cables, Copper, (4Cx25mmï¿½,Cu/XLPE/SWA/PVC +1x16mmï¿½ PVC/PVC) [1331.16] | 63,751.48 | CO-R10.S04-SL-150 | 10 | 10 | CW | CL | LM | CB | SL | LAYING | CON | R10 | S04 | SL | SL |
|  | DPB | **Distrubution Panel Boards** |  | 2026-12-21 | 2027-02-03 |  |  |  |  |  |  |  |  |  |  |  |  |  |  |  |  |  |  |  |  |  |  |  |
| CO-R10.S04-WE-SL-170 |  | Foundation Excavation Works For Panel Boards of Street Lighting Network-[Road 10]-[SW-4] | 18d | 2026-12-21 | 2027-01-10 | CO-R10.S04-WE-EW-110, CO-R10.S04-WE-SL-160 |  |  |  |  | -180d | 0d | Labor/Helper [161.51 h]; Skilled Labor/Surveyor [80.75 h]; Excavator [144 h] |  | CO-R10.S04-SL-170 | 10 | 10 | DB | Ex | Each | DS | SL | EXC | CON | R10 | S04 | SL | SL |
| CO-R10.S04-WE-SL-180 |  | Installation Works for Panel Board Concrete Foundations of Street Lighting Network-[Road 10]-[SW-4] | 12d | 2026-12-31 | 2027-01-13 | CO-R10.S04-WE-SL-170 SS+3d, CO-R10.S04-WE-SL-170 FF+3d |  |  |  |  | -171d | 0d | Skilled Labor/Surveyor [11.22 h]; Foreman [11.22 h]; Excavator [96 h]; Water Tank [24 h] |  | CO-R10.S04-SL-180 | 10 | 10 | DB | PBF | Each | DS | SL | INSTALL | CON | R10 | S04 | SL | SL |
| CO-R10.S04-WE-SL-190 |  | Installation Works for Lighting Panel Boards of Street Lighting Network-[Road 10]-[SW-4] | 12d | 2027-01-14 | 2027-01-27 | CO-R10.S04-WE-SL-180, PRO-R10-SL-DL-160 FF+3d |  |  |  |  | -171d | 9d | Labor/Helper [107.67 h]; Electrician [107.67 h] |  | CO-R10.S04-SL-190 | 10 | 10 | DB | PB | Each | DS | SL | INST BO | CON | R10 | S04 | SL | SL |
| CO-R10.S04-WE-SL-220 |  | A wall of concrete blocks to install the KWH meter of Street Lighting Network-[Road 10]-[SW-4] | 18d | 2027-01-14 | 2027-02-03 | CO-R10.S04-WE-SL-180 |  |  |  |  | -171d | 20d | Block Mason [161.51 h]; Road crossing ducts, 4 way (4 x 100mm PVC) [76.24]; Drawpit with medium duty steel cover, size 900x900x1200mm, Type 4 [7.02] | 27,979.54 | CO-R10.S04-SL-220 | 10 | 10 | DB |  | Each | DS | SL | wall | CON | R10 | S04 | SL | SL |
|  | TE | **Telecom Network** |  | 2026-12-19 | 2027-01-19 |  |  |  |  |  |  |  |  |  |  |  |  |  |  |  |  |  |  |  |  |  |  |  |
|  | PD | **Ducts Works** |  | 2026-12-19 | 2027-01-19 |  |  |  |  |  |  |  |  |  |  |  |  |  |  |  |  |  |  |  |  |  |  |  |
| CO-R10.S04-WE-TE-100 |  | Trench Excavation and Bedding Works for Ducts of Telecom Network-[Road 10]-[SW-4] | 7d | 2026-12-19 | 2026-12-26 | CO-R10.S04-WE-IR-130 SS+3d, CO-R10.S04-WE-IR-130 FF+3d, CO-R10.S04-WE-SL-160 SS+5d, CO-R10.S04-WE-SL-160 FF+5d, CO-R10.S04-WE-EW-110, CO-R10.S03-WE-TE-100 |  |  |  |  | -140d | 0d | Skilled Labor/Surveyor [6.73 h]; Foreman [6.73 h]; Excavator [56 h]; 6-way ducts, 50mm dia. HDPE [64.2]; Road crossing ducts (6-way) [6.02] | 9,814.28 | CO-R10.S04-TE-100 | 10 | 10 | PD | Ex | LM | DC | TE | DUCTS | CON | R10 | S04 | TE | TE |
| CO-R10.S04-WE-TE-110 |  | Pipes Laying Works for Ducts of Telecom Network-[Road 10]-[SW-4] | 7d | 2026-12-27 | 2027-01-03 | CO-R10.S04-WE-TE-100, PRO-R10-TE-DL-100 FF+3d |  |  |  |  | -140d | 0d | Labor/Helper [125.62 h]; Skilled Labor/Surveyor [6.73 h]; Foreman [6.73 h]; Plumber [62.81 h]; Excavator [56 h]; JCB [28 h]; Truck [56 h]; 6-way ducts, 50mm dia. HDPE [380.19]; Road crossing ducts (6-way) [33.1] | 57,684.82 | CO-R10.S04-TE-110 | 10 | 10 | PD | PL | LM | DC | TE | DUCTS | CON | R10 | S04 | TE | TE |
| CO-R10.S04-WE-TE-120 |  | Pouring Plain Concrete Above Ducts of Telecom Network-[Road 10]-[SW-4] | 7d | 2027-01-04 | 2027-01-11 | CO-R10.S04-WE-TE-110 |  |  |  |  | -140d | 0d | Skilled Labor/Surveyor [6.73 h]; Foreman [6.73 h]; Cons. Carpenter [125.62 h]; Block Mason [62.81 h]; 6-way ducts, 50mm dia. HDPE [64.2]; Road crossing ducts (6-way) [6.02] | 9,814.28 | CO-R10.S04-TE-120 | 10 | 10 | PD | PC | LM | DC | TE | DUCTS | CON | R10 | S04 | TE | TE |
| CO-R10.S04-WE-TE-130 |  | Trench Backfilling and Compaction Works for Ducts of Telecom Network-[Road 10]-[SW-4] | 7d | 2027-01-12 | 2027-01-19 | CO-R10.S04-WE-TE-120 |  |  |  |  | -140d | 0d | Skilled Labor/Surveyor [6.73 h]; Foreman [6.73 h]; Excavator [56 h]; 6-way ducts, 50mm dia. HDPE [126.39]; Road crossing ducts (6-way) [11.03] | 19,182.32 | CO-R10.S04-TE-130 | 10 | 10 | PD | BF | LM | DC | TE | DUCTS | CON | R10 | S04 | TE | TE |
|  | MH | **Manholes Works** |  | 2026-12-27 | 2027-01-19 |  |  |  |  |  |  |  |  |  |  |  |  |  |  |  |  |  |  |  |  |  |  |  |
| CO-R10.S04-WE-TE-140 |  | Excavation Works for Manholes of Telecom Network-[Road 10]-[SW-4] | 7d | 2026-12-27 | 2027-01-03 | CO-R10.S03-ES-TE-140, CO-R10.S04-WE-TE-100, CO-R10.S03-WE-TE-140 |  |  |  |  | -140d | 0d | Skilled Labor/Surveyor [6.73 h]; Foreman [6.73 h]; Excavator [56 h]; Manhole Type 2 (2000x1000x1000) [1] | 3,218.67 | CO-R10.S04-TE-140 | 10 | 10 | MH | Ex | Each | MNH | TE | EXC | CON | R10 | S04 | TE | TE |
| CO-R10.S04-WE-TE-150 |  | Installation Works for Manholes of Telecom Network-[Road 10]-[SW-4] | 7d | 2027-01-04 | 2027-01-11 | CO-R10.S04-WE-TE-140, PRO-R10-TE-DL-110 FF+3d |  |  |  |  | -140d | 0d | Skilled Labor/Surveyor [6.73 h]; Foreman [6.73 h]; Excavator [56 h]; Manhole Type 1 (2000x1000x1000) [1]; Manhole Type 2 (2000x1000x1000) [3.01] | 12,848.12 | CO-R10.S04-TE-150 | 10 | 10 | MH | HH | Each | MNH | TE | INSTALL-1 | CON | R10 | S04 | TE | TE |
| CO-R10.S04-WE-TE-160 |  | Backfilling Works for Manholes of Telecom Network-[Road 10]-[SW-4] | 7d | 2027-01-12 | 2027-01-19 | CO-R10.S04-WE-TE-150 |  |  |  |  | -140d | 0d | Skilled Labor/Surveyor [6.73 h]; Foreman [6.73 h]; Excavator [56 h]; Manhole Type 2 (2000x1000x1000) [1] | 3,218.67 | CO-R10.S04-TE-160 | 10 | 10 | MH | BF | Each | MNH | TE | (New)-2 | CON | R10 | S04 | TE | TE |

| ID | WBS | Activity | Duration | Start | Finish | Predecessors | Complete | Remaining | Planned start | Planned finish | Total float | Free float | Resources | Cost | Actual cost | Activity ID N | Seq | New Seq | 02- Network-WBS | 03- Activity | 04-UOM | 05-Discipline | 01- Network | 08 Stage | 09 Roads | 10 side Walk | Discipline | New Discipline | 07-Weightage System |
| --- | --- | --- | --- | --- | --- | --- | --- | --- | --- | --- | --- | --- | --- | --- | --- | --- | --- | --- | --- | --- | --- | --- | --- | --- | --- | --- | --- | --- | --- |
|  | RD | **Road Works** |  | 2026-07-30 | 2027-05-08 |  |  |  |  |  |  |  |  |  |  |  |  |  |  |  |  |  |  |  |  |  |  |  |  |
|  | RD | **Pre-Bituminous Construction** |  | 2026-07-30 | 2027-01-27 |  |  |  |  |  |  |  |  |  |  |  |  |  |  |  |  |  |  |  |  |  |  |  |  |
| CO-R10.S04-WE-RD-100 |  | Capping and Subgrade Layer for Road Works-[Road 10]-[SW-4] | 12d | 2026-07-30 A | 2027-01-19 | CO-R10.S04-WE-SD-130, CO-R10.S04-WE-SW-130, CO-R10.S04-WE-PW-130, CO-R10.S04-WE-PW-160 FF, CO-R10.S04-WE-SL-160 FF+3d, PRO-R10-RD-DL-100 FF+3d, CO-R10.S04-WE-TE-130 FF, CO-R10.S04-WE-TE-160 FF | 95% | 5d | 2026-07-23 | 2026-08-05 | -140d | 0d | Labor/Helper [219.8 h]; Skilled Labor/Surveyor [54.8 h]; Loader [144 h]; Grader [144 h]; Road Roller [144 h]; Water Tank [144 h]; 300mm capping layer underneath subgrade , CBR?15% [4813.03]; 300mm thick Subgrade, including subgrade preparation, CBR?25% [4813.03] | 381,391.75 | 228,835.05 | CO-R10.S04-RD-P-100 | 10 | 10 | AB | SG | Sq.m | BS | RD | CON | R10 | S04 | RD | RD |  |
| CO-R10.S04-WE-RD-110 |  | Aggregate Base Course Layer for Road Works-[Road 10]-[SW-4] | 12d | 2026-11-04 A | 2027-01-27 | CO-R10.S04-WE-RD-100 SS+3d, CO-R10.S04-WE-RD-100 FF+3d, CO-R10.S04-WE-SD-170 SS+3d, CO-R10.S04-WE-SD-170 FF+3d, PRO-R10-RD-DL-110 FF+3d | 50% | 12d | 2027-02-16 | 2027-03-02 | -26d | 189.5d | Labor/Helper [323.01 h]; Skilled Labor/Surveyor [161.51 h]; Foreman [161.51 h]; Loader [144 h]; Grader [144 h]; Road Roller [144 h]; Aggregate base course 200mm thick after compaction in two layers(Grading 1); CBR?80%; including watering, compaction and testing [3209.02] | 265,658.57 |  | CO-R10.S04-RD-P-110 | 10 | 10 | AB | BA | Sq.m | BS | RD | CON | R10 | S04 | RD | RD |  |
|  | LS | **Pavement Works** |  | 2026-08-25 | 2027-05-08 |  |  |  |  |  |  |  |  |  |  |  |  |  |  |  |  |  |  |  |  |  |  |  |  |
| CO-R10.S04-WE-RD-120 |  | Fixing of Curbstone for Sidewalks Pavement-[Road 10]-[SW-4] | 12d | 2026-08-25 A | 2026-08-31 A | PRO-R10-RD-DL-130 FF+3d, PRO-R10-RD-DL-130 SS | 100% |  | 2026-07-30 | 2026-08-12 |  |  | Labor/Helper [875.44 h]; Block Mason [2626.31 h]; Precast Concrete Kerb, Type K1 [1775.55]; Precast Concrete Kerb, Type L1 [3523] | 217,507.21 | 217,507.21 | CO-R10.S04-RD-P-120 | 10 | 10 | LS | CR | LM | LAND | RD | CON | R10 | S04 | RD | RD |  |
| CO-R10.S04-WE-RD-130 |  | Fixing of Interlock Tiles for Sidewalks Pavement-[Road 10]-[SW-4] | 12d | 2027-04-25 | 2027-05-08 | PRO-R10-RD-DL-120 FF+3d, CO-R10.S04-WE-RD-120 SS+3d, CO-R10.S04-WE-RD-120 FF+3d, CO-R10-PW-TF-100, CO-R10-PW-TF-110, CO-R10-PW-TF-120, CO-R10-SW-TF-100, CO-R10-SW-TF-110, CO-R10-SW-TF-130, CO-R10-SD-TF-100, CO-R10-SD-TF-120, CO-R10-SL-TF-140, CO-R10-SL-TF-150, CO-R10-SL-ES-140, CO-R10-SL-ES-150, CO-R10-IR-TF-120, CO-R10-MV-TF-140, CO-R10-SL-TF-380 |  |  |  |  | -183d | 0d | Labor/Helper [970.92 h]; Block Mason [2912.75 h]; Interlocking block pavers for sidewalk/footpath 60mm thick on and including 30mm Sand Bedding, 200mm Aggregate subbase, all in accordance with authority standards and complete as per specifications [3170.9]; Extraover for Pedestrian ramps [8.03] | 155,456.97 |  | CO-R10.S04-RD-P-130 | 10 | 10 | LS | IL | Sq.m | LAND | RD | CON | R10 | S04 | RD | RD |  |
|  | 5 | **Road 11 Local 1 ( 670 LM )** |  | 2025-04-23 | 2027-02-21 |  |  |  |  |  |  |  |  |  |  |  |  |  |  |  |  |  |  |  |  |  |  |  |  |
|  | SW_5 | **SW_5** |  | 2025-04-26 | 2027-01-18 |  |  |  |  |  |  |  |  |  |  |  |  |  |  |  |  |  |  |  |  |  |  |  |  |
|  | EW | **Earthworks** |  | 2025-04-26 | 2025-05-03 |  |  |  |  |  |  |  |  |  |  |  |  |  |  |  |  |  |  |  |  |  |  |  |  |
|  | EW | **Earthworks** |  | 2025-04-26 | 2025-05-03 |  |  |  |  |  |  |  |  |  |  |  |  |  |  |  |  |  |  |  |  |  |  |  |  |
| CO-R11.S05-EW-100 |  | Roadway Excavation Works Upto Design Level for Earthworks-[Road 11]-[SW-5] | 12d | 2025-04-26 A | 2025-04-27 A | ENG-MS-RD-A-10, ENG-SH-RD-A-100, CO-R14.S08-EW-100 | 100% |  | 2025-08-04 | 2025-08-17 |  |  | Labor/Helper [218.86 h]; Skilled Labor/Surveyor [27.36 h]; Foreman [27.36 h]; Water Tank [192 h]; Dozer [192 h]; Roadway Excavation for cuttings; on any type of material for all depths including trimming and Preparation of excavated surfaces and disposal. [13223.3] | 85,069.03 | 85,069.03 | CO-R11.S05-EW-100 | 15 | 15 | EW | Ex | Cub.m | EW | EW | CON | R11 | S05 | EW | EW |  |
| CO-R11.S05-EW-110 |  | Embankments Works Upto Design Level for Earthworks-[Road 11]-[SW-5] | 12d | 2025-04-26 A | 2025-05-03 A | CO-R11.S05-EW-100, ENG-MS-RD-A-10, ENG-SH-RD-A-100 | 100% |  | 2025-08-18 | 2025-08-31 |  |  | Labor/Helper [820.72 h]; Skilled Labor/Surveyor [102.59 h]; Foreman [102.59 h]; Water Tank [720 h]; Dozer [720 h]; Embankments to the ROW, with suitable material other than top soil or rock according to specifications [22259.5] | 184,115.58 | 184,115.58 | CO-R11.S05-EW-110 | 15 | 15 | EW | BF | Cub.m | EW | EW | CON | R11 | S05 | EW | EW |  |
|  | SW | **Sewage Network** |  | 2025-08-12 | 2026-08-31 |  |  |  |  |  |  |  |  |  |  |  |  |  |  |  |  |  |  |  |  |  |  |  |  |
|  | ML | **Main Line Sections** |  | 2025-08-12 | 2026-04-06 |  |  |  |  |  |  |  |  |  |  |  |  |  |  |  |  |  |  |  |  |  |  |  |  |
| CO-R11.S05-SW-100 |  | Trench Excavation and Bedding Works for Main Lines of Sewage Network-[Road 11]-[SW-5] | 12d | 2025-08-12 A | 2025-08-14 A | CO-R11.S05-EW-110, ENG-MS-SW-ML-A-110, ENG-SH-SW-ML-A-110, CO-R14.S08-SW-100 | 100% |  | 2025-09-01 | 2025-09-14 |  |  | Labor/Helper [612.48 h]; Foreman [612.48 h]; Excavator [192 h]; Nominal bore : 160mm; Depth : 1.5m - 2.5m [42.13]; Depth : 1.5 - 2.5m [14.04]; Depth : 2.5 - 3.5m [17.05]; Depth : 3.5 - 4.5m [17.05]; Depth : 4.5 - 5.5m [28.09]; Depth : 5.5 - 6.5m [28.09]; Depth : 6.5 -7.5m [85.27]; Depth : 6.5 -7.5m [99.31]; Depth :more than 7.5m [198.62] | 458,448.82 | 458,448.82 | CO-R11.S05-SW-100 | 15 | 15 | ML | Ex | LM | ML | SW | CON | R11 | S05 | SW | SW | EX |
| CO-R11.S05-SW-120 |  | Pipes Laying Works for Main Lines of Sewage Network-[Road 11]-[SW-5] | 12d | 2025-09-16 A | 2026-04-05 A | CO-R11.S05-SW-100, PRO-R11-SW-DL-100 FF+3d | 100% |  | 2025-09-15 | 2025-09-29 |  |  | Labor/Helper [932.37 h]; Skilled Labor/Surveyor [133.17 h]; Foreman [148.6 h]; Plumber [827.45 h]; Excavator [192 h]; Nominal bore : 160mm; Depth : 1.5m - 2.5m [127.4]; Depth : 1.5 - 2.5m [42.13]; Depth : 2.5 - 3.5m [52.16]; Depth : 3.5 - 4.5m [52.16]; Depth : 4.5 - 5.5m [85.27]; Depth : 5.5 - 6.5m [85.27]; Depth : 6.5 -7.5m [255.8]; Depth : 6.5 -7.5m [297.93]; Depth :more than 7.5m [595.86] | 1,377,799.28 | 1,377,799.28 | CO-R11.S05-SW-120 | 15 | 15 | ML | PL | LM | ML | SW | CON | R11 | S05 | SW | SW | PIPE |
| CO-R11.S05-SW-130 |  | Trench Backfilling and Compaction Works for Main Lines of Sewage Network-[Road 11]-[SW-5] | 12d | 2025-09-18 A | 2026-04-06 A | ENG-SH-SW-ML-A-110 FF, ENG-MS-SW-ML-A-110 FF, CO-R11.S05-SW-120, CO-R11.S05-SW-210 FF | 100% |  | 2025-09-30 | 2025-10-13 |  |  | Skilled Labor/Surveyor [321.63 h]; Foreman [358.9 h]; Excavator [192 h]; Nominal bore : 160mm; Depth : 1.5m - 2.5m [21.07]; Depth : 1.5 - 2.5m [7.02]; Depth : 2.5 - 3.5m [8.03]; Depth : 3.5 - 4.5m [8.03]; Depth : 4.5 - 5.5m [14.04]; Depth : 5.5 - 6.5m [14.04]; Depth : 6.5 -7.5m [42.13]; Depth : 6.5 -7.5m [50.16]; Depth :more than 7.5m [99.31] | 228,864.46 | 228,864.46 | CO-R11.S05-SW-130 | 15 | 15 | ML | BF | LM | ML | SW | CON | R11 | S05 | SW | SW | BACK |
|  | 1 | **Manholes** |  | 2026-08-20 | 2026-08-31 |  |  |  |  |  |  |  |  |  |  |  |  |  |  |  |  |  |  |  |  |  |  |  |  |
| CO-R11.S05-SW-160 |  | Excavation Works for Main Line Manholes of Sewage Network-[Road 11]-[SW-5] | 1d | 2026-08-20 A | 2026-08-20 A | CO-R11.S05-SW-120 SS | 100% |  | 2025-09-15 | 2025-09-15 |  |  | Labor/Helper [27.36 h]; Skilled Labor/Surveyor [13.68 h]; Excavator [24 h]; Depth: not exceeding 1.5m [0.15]; Depth: 1.5 - 2.5m [0.45]; Depth: 3.5 - 4.5m [0.15]; Depth: 4.5 - 5.5m [0.15]; Depth:6.5 - 7.5m [0.3] | 16,470.15 | 16,470.15 | CO-R11.S05-SW-160 | 15 | 15 |  |  |  |  | SW | CON | R11 | S05 | SW | SW | EX |
| CO-R11.S05-SW-170 |  | Installation RC Footing Works for Main Line Manholes of Sewage Network-[Road 11]-[SW-5] | 2d | 2026-08-22 A | 2026-08-23 A | CO-R11.S05-SW-160, PRO-R11-SW-DL-110 FF+3d | 100% |  | 2025-09-16 | 2025-09-17 |  |  | Cons. Carpenter [109.43 h]; Steel Fixer [109.43 h]; Depth: not exceeding 1.5m [0.1]; Depth: 1.5 - 2.5m [0.3]; Depth: 3.5 - 4.5m [0.1]; Depth: 4.5 - 5.5m [0.1]; Depth:6.5 - 7.5m [0.2] | 10,979.42 | 10,979.42 | CO-R11.S05-SW-170 | 15 | 15 |  |  |  |  | SW | CON | R11 | S05 | SW | SW | RC F |
| CO-R11.S05-SW-180 |  | Install Grp Liner Wall Works for Main Line Manholes of Sewage Network-[Road 11]-[SW-5] | 4d | 2026-08-24 A | 2026-08-27 A | CO-R11.S05-SW-170 | 100% |  | 2025-09-18 | 2025-09-22 |  |  | Labor/Helper [109.43 h]; Plumber [109.43 h]; Depth: not exceeding 1.5m [0.4]; Depth: 1.5 - 2.5m [1]; Depth: 3.5 - 4.5m [0.4]; Depth: 4.5 - 5.5m [0.4]; Depth:6.5 - 7.5m [1] | 48,266.75 | 48,266.75 | CO-R11.S05-SW-180 | 15 | 15 |  |  |  |  | SW | CON | R11 | S05 | SW | SW | LP |
| CO-R11.S05-SW-190 |  | Pouring Grp Liner Wall Works for Main Line Manholes of Sewage Network-[Road 11]-[SW-5] | 1d | 2026-08-28 A | 2026-08-28 A | CO-R11.S05-SW-180 | 100% |  | 2025-09-24 | 2025-09-24 |  |  | Cons. Carpenter [54.71 h]; Steel Fixer [54.71 h]; Depth: not exceeding 1.5m [0.05]; Depth: 1.5 - 2.5m [0.15]; Depth: 3.5 - 4.5m [0.05]; Depth: 4.5 - 5.5m [0.05]; Depth:6.5 - 7.5m [0.1] | 5,490.73 | 5,490.73 | CO-R11.S05-SW-190 | 15 | 15 |  |  |  |  | SW | CON | R11 | S05 | SW | SW | (New) |
| CO-R11.S05-SW-200 |  | Backfilling Works for Main Line Manholes of Sewage Network-[Road 11]-[SW-5] | 4d | 2026-08-29 A | 2026-08-30 A | CO-R11.S05-SW-190 | 100% |  | 2025-09-25 | 2025-09-29 |  |  | Labor/Helper [109.43 h]; Skilled Labor/Surveyor [54.71 h]; Excavator [96 h]; Depth: not exceeding 1.5m [0.15]; Depth: 1.5 - 2.5m [0.45]; Depth: 3.5 - 4.5m [0.15]; Depth: 4.5 - 5.5m [0.15]; Depth:6.5 - 7.5m [0.3] | 16,470.15 | 16,470.15 | CO-R11.S05-SW-200 | 15 | 15 |  |  |  |  | SW | CON | R11 | S05 | SW | SW | BACK |
| CO-R11.S05-SW-210 |  | Testing Works for Main Line Manholes of Sewage Network-[Road 11]-[SW-5] | 1d | 2026-08-30 A | 2026-08-31 A | CO-R11.S05-SW-200 | 100% |  | 2025-09-30 | 2025-09-30 |  |  | Labor/Helper [27.36 h]; Plumber [27.36 h]; Depth: not exceeding 1.5m [0.05]; Depth: 1.5 - 2.5m [0.15]; Depth: 3.5 - 4.5m [0.05]; Depth: 4.5 - 5.5m [0.05]; Depth:6.5 - 7.5m [0.1] | 5,490.73 | 5,490.73 | CO-R11.S05-SW-210 | 15 | 15 |  |  |  |  | SW | CON | R11 | S05 | SW | SW | T&COV |

| ID | WBS | Activity | Duration | Start | Finish | Predecessors | Complete | Remaining | Planned start | Planned finish | Total float | Free float | Resources | Cost | Actual cost | Activity ID N | Seq | New Seq | 02- Network-WBS | 03- Activity | 04-UOM | 05-Discipline | 01- Network | 07-Weightage System | 08 Stage | 09 Roads | 10 side Walk | Discipline | New Discipline |
| --- | --- | --- | --- | --- | --- | --- | --- | --- | --- | --- | --- | --- | --- | --- | --- | --- | --- | --- | --- | --- | --- | --- | --- | --- | --- | --- | --- | --- | --- |
|  | SD | **Storm Drainage Network** |  | 2025-07-29 | 2026-04-30 |  |  |  |  |  |  |  |  |  |  |  |  |  |  |  |  |  |  |  |  |  |  |  |  |
|  | ML | **Main Line Sections** |  | 2025-07-29 | 2025-08-20 |  |  |  |  |  |  |  |  |  |  |  |  |  |  |  |  |  |  |  |  |  |  |  |  |
| CO-R11.S05-SD-100 |  | Trench Excavation and Bedding Works for Main Lines of Storm Drainage Network-[Road 11]-[SW-5] | 10d | 2025-07-29 A | 2025-08-03 A | ENG-SH-SD-ML-A-110, CO-R11.S05-EW-110, CO-R11.S05-EW-100, CO-R11.S05-SW-130 SS+3d, CO-R11.S05-SW-130 FF+3d, ENG-MS-SD-ML-A-110, CO-R14.S08-SD-100 | 100% |  | 2025-10-26 | 2025-11-05 |  |  | Skilled Labor/Surveyor [238.19 h]; Foreman [238.19 h]; Excavator [112 h]; Pipe with diameter 600mm ; depth: 1.51m - 2.5m [44.14]; Pipe with diameter 700mm ; depth: 1.51m - 2.5m [30.09]; Pipe with diameter 800mm ; depth: 0.0m - 1.5m [14.04]; Pipe with diameter 800mm ; depth: 1.51m - 2.5m [58.18]; Pipe with diameter 800mm ; depth: 2.51m - 3.5m [20.06]; Pipe with diameter 900mm ; depth: 0.0m - 1.5m [14.04]; Pipe with diameter 900mm ; depth: 1.51m - 2.5m [48.15] | 125,895.67 | 125,895.67 | CO-R11.S05-SD-100 | 15 | 15 | ML | Ex | LM | ML | SD | EX | CON | R11 | S05 | SD | SD |
| CO-R11.S05-SD-120 |  | Pipes Laying Works for Main Lines of Storm Drainage Network-[Road 11]-[SW-5] | 10d | 2025-08-12 A | 2025-08-14 A | CO-R11.S05-SD-100, CO-R14.S08-SD-120 | 100% |  | 2025-11-06 | 2025-11-17 |  |  | Labor/Helper [723.07 h]; Skilled Labor/Surveyor [36.15 h]; Foreman [36.15 h]; Plumber [361.53 h]; Excavator [120 h]; Pipe with diameter 600mm ; depth: 1.51m - 2.5m [133.42]; Pipe with diameter 700mm ; depth: 1.51m - 2.5m [89.28]; Pipe with diameter 800mm ; depth: 0.0m - 1.5m [42.13]; Pipe with diameter 800mm ; depth: 1.51m - 2.5m [174.55]; Pipe with diameter 800mm ; depth: 2.51m - 3.5m [59.18]; Pipe with diameter 900mm ; depth: 0.0m - 1.5m [42.13]; Pipe with diameter 900mm ; depth: 1.51m - 2.5m [143.45] | 376,313.56 | 376,313.56 | CO-R11.S05-SD-120 | 15 | 15 | ML | PL | LM | ML | SD | PIPE | CON | R11 | S05 | SD | SD |
| CO-R11.S05-SD-130 |  | Trench Backfilling and Compaction Works for Main Lines of Storm Drainage Network-[Road 11]-[SW-5] | 15d | 2025-08-13 A | 2025-08-20 A | CO-R11.S05-SD-120 SS+3d, CO-R11.S05-SD-120 FF+3d, ENG-SH-SD-ML-A-110 FF, CO-R10.S03-ES-SD-130, ENG-MS-SD-ML-A-110 FF, CO-R11.S05-SD-120, CO-R11.S05-SD-220 FF, CO-R10.S03-WE-SD-130 | 100% |  | 2025-12-29 | 2026-01-14 |  |  | Skilled Labor/Surveyor [306.24 h]; Foreman [306.24 h]; Excavator [120 h]; Pipe with diameter 600mm ; depth: 1.51m - 2.5m [23.07]; Pipe with diameter 700mm ; depth: 1.51m - 2.5m [16.05]; Pipe with diameter 800mm ; depth: 0.0m - 1.5m [7.02]; Pipe with diameter 800mm ; depth: 1.51m - 2.5m [30.09]; Pipe with diameter 800mm ; depth: 2.51m - 3.5m [10.03]; Pipe with diameter 900mm ; depth: 0.0m - 1.5m [7.02]; Pipe with diameter 900mm ; depth: 1.51m - 2.5m [24.08] | 64,421.36 | 64,421.36 | CO-R11.S05-SD-130 | 15 | 15 | ML | BF | LM | ML | SD | BACK | CON | R11 | S05 | SD | SD |
|  | MH | **Manholes** |  | 2026-03-22 | 2026-04-07 |  |  |  |  |  |  |  |  |  |  |  |  |  |  |  |  |  |  |  |  |  |  |  |  |
| CO-R11.S05-SD-180 |  | Trench Excavation and Bedding Works for Manholes of Storm Drainage Network-[Road 11]-[SW-5] | 1d | 2026-03-22 A | 2026-03-31 A | CO-R11.S05-SD-120 SS, PRO-SD-1DL-100 | 100% |  | 2025-11-06 | 2025-11-06 |  |  | Labor/Helper [27.36 h]; Skilled Labor/Surveyor [13.68 h]; Excavator [24 h]; MH ; depth: 0.0m - 1.5m [0.15]; MH ; depth: 1.51m - 2.5m [0.45]; MH ; depth: 2.51 - 3.5m [0.15]; MH ; depth: 1.51m - 2.5m [0.3]; MH ; depth: 2.51 - 3.5m [0.45]; MH ; depth: 2.51 - 3.5m [0.3] | 38,810.89 | 38,810.89 | CO-R11.S05-SD-180 | 15 | 15 |  |  |  |  | SD | EX | CON | R11 | S05 | SD | SD |
| CO-R11.S05-SD-190 |  | Install RC Footing Works for Manholes of Storm Drainage Network-[Road 11]-[SW-5] | 1d | 2026-04-01 A | 2026-04-01 A | CO-R11.S05-SD-180 | 100% |  | 2025-11-08 | 2025-11-08 |  |  | Cons. Carpenter [54.71 h]; Steel Fixer [54.71 h]; MH ; depth: 0.0m - 1.5m [0.05]; MH ; depth: 1.51m - 2.5m [0.15]; MH ; depth: 2.51 - 3.5m [0.05]; MH ; depth: 1.51m - 2.5m [0.1]; MH ; depth: 2.51 - 3.5m [0.15]; MH ; depth: 2.51 - 3.5m [0.1] | 12,936.96 | 12,936.96 | CO-R11.S05-SD-190 | 15 | 15 |  |  |  |  | SD | RC F | CON | R11 | S05 | SD | SD |
| CO-R11.S05-SD-200 |  | Install RC Wall Rings & Slab Works for Manholes of Storm Drainage Network-[Road 11]-[SW-5] | 4d | 2026-04-02 A | 2026-04-04 A | CO-R11.S05-SD-190 | 100% |  | 2025-11-09 | 2025-11-12 |  |  | Cons. Carpenter [218.86 h]; Steel Fixer [218.86 h]; MH ; depth: 0.0m - 1.5m [0.45]; MH ; depth: 1.51m - 2.5m [1]; MH ; depth: 2.51 - 3.5m [0.45]; MH ; depth: 2.51 - 3.5m [1] | 109,277.46 | 109,277.46 | CO-R11.S05-SD-200 | 15 | 15 |  |  |  |  | SD | RC W | CON | R11 | S05 | SD | SD |
| CO-R11.S05-SD-210 |  | Testing Works for Manholes of Storm Drainage Network-[Road 11]-[SW-5] | 1d | 2026-04-05 A | 2026-04-06 A | CO-R11.S05-SD-200 | 100% |  | 2025-11-13 | 2025-11-13 |  |  | Labor/Helper [27.36 h]; Plumber [27.36 h]; MH ; depth: 0.0m - 1.5m [0.1]; MH ; depth: 1.51m - 2.5m [0.3]; MH ; depth: 2.51 - 3.5m [0.1]; MH ; depth: 1.51m - 2.5m [0.2]; MH ; depth: 2.51 - 3.5m [0.3]; MH ; depth: 2.51 - 3.5m [0.2] | 25,874.95 | 25,874.95 | CO-R11.S05-SD-210 | 15 | 15 |  |  |  |  | SD | T&COV | CON | R11 | S05 | SD | SD |
| CO-R11.S05-SD-220 |  | Backfilling Works for Manholes of Storm Drainage Network-[Road 11]-[SW-5] | 7d | 2026-04-06 A | 2026-04-07 A | CO-R11.S05-SD-210 | 100% |  | 2025-11-15 | 2025-11-22 |  |  | Labor/Helper [191.5 h]; Skilled Labor/Surveyor [95.75 h]; Excavator [168 h]; MH ; depth: 0.0m - 1.5m [0.2]; MH ; depth: 1.51m - 2.5m [1]; MH ; depth: 2.51 - 3.5m [0.2]; MH ; depth: 1.51m - 2.5m [0.4]; MH ; depth: 2.51 - 3.5m [1]; MH ; depth: 2.51 - 3.5m [0.4] | 67,031.42 | 67,031.42 | CO-R11.S05-SD-220 | 15 | 15 |  |  |  |  | SD | BACK | CON | R11 | S05 | SD | SD |
|  | CB | **Catch Basin Sections** |  | 2026-04-25 | 2026-04-30 |  |  |  |  |  |  |  |  |  |  |  |  |  |  |  |  |  |  |  |  |  |  |  |  |
| CO-R11.S05-SD-140 |  | Trench Excavation and Bedding Works for Catch Basins of Storm Drainage Network-[Road 11]-[SW-5] | 6d | 2026-04-25 A | 2026-04-30 A | CO-R11.S05-EW-110, ENG-SH-SD-CB-A-110, ENG-MS-SD-CB-A-110, CO-R11.S05-SD-220, CO-R14.S08-SD-140 | 100% |  | 2025-11-24 | 2025-11-30 |  |  | Skilled Labor/Surveyor [5.7 h]; Foreman [5.7 h]; Excavator [48 h]; Pipe with diameter 300mm ; depth: 0 - 1.5m [69.22]; Pipe with diameter 400mm ; depth: 0 - 1.5m [4.01] | 17,363.65 | 17,363.65 | CO-R11.S05-SD-140 | 15 | 15 | CB | Ex | Each | CB | SD | EX | CON | R11 | S05 | SD | SD |
| CO-R11.S05-SD-150 |  | Installation and Pipes Laying Connection Works for Catch Basins of Storm Drainage Network-[Road 11]-[SW-5] | 7d | 2026-04-25 A | 2026-04-30 A | CO-R11.S05-SD-140 | 100% |  | 2025-12-01 | 2025-12-08 |  |  | Labor/Helper [255.34 h]; Skilled Labor/Surveyor [13.68 h]; Foreman [13.68 h]; Excavator [112 h]; Pipe with diameter 300mm ; depth: 0 - 1.5m [209.65]; Pipe with diameter 400mm ; depth: 0 - 1.5m [13.04] | 52,873.16 | 52,873.16 | CO-R11.S05-SD-150 | 15 | 15 | CB | CB | Each | CB | SD | INSTALL | CON | R11 | S05 | SD | SD |
| CO-R11.S05-SD-160 |  | Testing Works for Catch Basins of Storm Drainage Network-[Road 11]-[SW-5] | 10d | 2026-04-25 A | 2026-04-30 A | CO-R11.S05-SD-150, CO-R11.S05-SD-120 | 100% |  | 2025-12-09 | 2025-12-20 |  |  | Labor/Helper [182.38 h]; Skilled Labor/Surveyor [9.12 h]; Foreman [9.12 h]; Plumber [91.19 h]; Excavator [80 h]; Pipe with diameter 300mm ; depth: 0 - 1.5m [47.15]; Pipe with diameter 400mm ; depth: 0 - 1.5m [3.01] | 11,913.77 | 11,913.77 | CO-R11.S05-SD-160 | 15 | 15 | CB | PL | Each | CB | SD | TEST | CON | R11 | S05 | SD | SD |
| CO-R11.S05-SD-170 |  | Trench Backfilling and Compaction Works for Catch Basins of Storm Drainage Network-[Road 11]-[SW-5] | 7d | 2026-04-25 A | 2026-04-30 A | CO-R11.S05-SD-160 | 100% |  | 2025-12-21 | 2025-12-28 |  |  | Skilled Labor/Surveyor [6.84 h]; Foreman [6.84 h]; Excavator [56 h]; Pipe with diameter 300mm ; depth: 0 - 1.5m [93.29]; Pipe with diameter 400mm ; depth: 0 - 1.5m [6.02] | 23,595.74 | 23,595.74 | CO-R11.S05-SD-170 | 15 | 15 | CB | BF | Each | CB | SD | BACK | CON | R11 | S05 | SD | SD |
|  | IR | **Irrigation Network** |  | 2026-04-25 | 2026-12-07 |  |  |  |  |  |  |  |  |  |  |  |  |  |  |  |  |  |  |  |  |  |  |  |  |
|  | ML | **Main Line Pipes** |  | 2026-04-25 | 2026-12-07 |  |  |  |  |  |  |  |  |  |  |  |  |  |  |  |  |  |  |  |  |  |  |  |  |
| CO-R11.S05-IR-100 |  | Trench Excavation and Bedding Works for Main Lines of Irrigation Network-[Road 11]-[SW-5] | 4d | 2026-04-25 A | 2026-04-30 A | ENG-SH-IR-ML-A-110, CO-R11.S05-EW-110, CO-R11.S05-SD-170, ENG-MS-IR-ML-A-110 | 100% |  | 2025-12-29 | 2026-01-01 |  |  | Skilled Labor/Surveyor [4.56 h]; Foreman [4.56 h]; Excavator [32 h]; 125 mm pipe; depth 0.0m - 1.5m [238.75] | 18,131.56 | 18,131.56 | CO-R11.S05-IR-100 | 15 | 15 | ML | Ex | LM | ML | IR | EX | CON | R11 | S05 | IR | IR |
| CO-R11.S05-IR-110 |  | Pipes Laying Works for Main Lines of Irrigation Network-[Road 11]-[SW-5] | 7d | 2026-04-25 A | 2026-11-25 | CO-R11.S05-IR-100, PRO-R11-IR-DL-140 FF+3d | 70% | 2d | 2026-01-03 | 2026-01-10 | -84d | 0d | Labor/Helper [764.95 h]; Skilled Labor/Surveyor [19.46 h]; Foreman [25.36 h]; Plumber [523.95 h]; Excavator [56 h]; 125 mm pipe; depth 0.0m - 1.5m [714.23] | 54,240.48 | 37,968.34 | CO-R11.S05-IR-110 | 15 | 15 | ML | PL | LM | ML | IR | PIPE | CON | R11 | S05 | IR | IR |
| CO-R11.S05-IR-120 |  | Installation Works for Main Line Valves of Irrigation Network-[Road 11]-[SW-5] | 3d | 2026-11-26 | 2026-11-29 | CO-R11.S05-IR-110, PRO-R11-IR-DL-150 FF+3d |  |  |  |  | -84d | 0d | Labor/Helper [107.67 h]; Skilled Labor/Surveyor [5.61 h]; Foreman [5.61 h]; Plumber [107.67 h]; Gate valves dia (90)mm on pipes with dia (125) mm. [10.03]; Air valves with dia (50mm) mm on pipes with dia(125)mm. [3.01]; Air valve chamber; on 125 mm dia pipeline Depth 1.5 - 3 m [3.01] | 64,050.68 |  | CO-R11.S05-IR-120 | 15 | 15 | ML | VI | Each | ML | IR | VALV | CON | R11 | S05 | IR | IR |
| CO-R11.S05-IR-130 |  | Trench Backfilling and Compaction Works for Main Lines of Irrigation Network-[Road 11]-[SW-5] | 7d | 2026-11-30 | 2026-12-07 | CO-R11.S05-IR-120, CO-R11.S05-IR-110 |  |  |  |  | -84d | 47d | Skilled Labor/Surveyor [6.73 h]; Foreman [6.73 h]; Excavator [56 h]; 125 mm pipe; depth 0.0m - 1.5m [119.37] | 9,065.78 |  | CO-R11.S05-IR-130 | 15 | 15 | ML | BF | LM | ML | IR | BACK | CON | R11 | S05 | IR | IR |
|  | TE | **Telecom Network** |  | 2026-07-08 | 2027-01-18 |  |  |  |  |  |  |  |  |  |  |  |  |  |  |  |  |  |  |  |  |  |  |  |  |
|  | PD | **Ducts Works** |  | 2026-07-08 | 2026-07-13 |  |  |  |  |  |  |  |  |  |  |  |  |  |  |  |  |  |  |  |  |  |  |  |  |
| CO-R11.S05-TE-100 |  | Trench Excavation and Bedding Works for Ducts of Telecom Network-[Road 11]-[SW-5] | 3d | 2026-07-08 A | 2026-07-13 A | CO-R11.S05-EW-110 | 100% |  | 2026-06-10 | 2026-06-13 |  |  | Skilled Labor/Surveyor [6.84 h]; Foreman [6.84 h]; Excavator [56 h]; 6-way ducts, 50mm dia. HDPE [37.12]; Road crossing ducts (6-way) [3.01] | 5,593.87 | 5,593.87 | CO-R11.S05-TE-100 | 15 | 15 | PD | Ex | LM | DC | TE | DUCTS | CON | R11 | S05 | TE | TE |
| CO-R11.S05-TE-110 |  | Pipes Laying Works for Ducts of Telecom Network-[Road 11]-[SW-5] | 7d | 2026-07-08 A | 2026-07-13 A | CO-R11.S05-TE-100 | 100% |  | 2026-06-29 | 2026-07-06 |  |  | Labor/Helper [127.67 h]; Skilled Labor/Surveyor [6.84 h]; Foreman [6.84 h]; Plumber [63.83 h]; Excavator [56 h]; JCB [28 h]; Truck [56 h]; 6-way ducts, 50mm dia. HDPE [221.69]; Road crossing ducts (6-way) [18.06] | 33,423.29 | 33,423.29 | CO-R11.S05-TE-110 | 15 | 15 | PD | PL | LM | DC | TE | DUCTS | CON | R11 | S05 | TE | TE |
| CO-R11.S05-TE-120 |  | Pouring Plain Concrete Above Ducts of Telecom Network-[Road 11]-[SW-5] | 7d | 2026-07-08 A | 2026-07-13 A | CO-R11.S05-TE-110 | 100% |  | 2026-07-07 | 2026-07-14 |  |  | Skilled Labor/Surveyor [6.84 h]; Foreman [6.84 h]; Cons. Carpenter [127.67 h]; Block Mason [63.83 h]; 6-way ducts, 50mm dia. HDPE [37.12]; Road crossing ducts (6-way) [3.01] | 5,593.87 | 5,593.87 | CO-R11.S05-TE-120 | 15 | 15 | PD | PC | LM | DC | TE | DUCTS | CON | R11 | S05 | TE | TE |
| CO-R11.S05-TE-130 |  | Trench Backfilling and Compaction Works for Ducts of Telecom Network-[Road 11]-[SW-5] | 7d | 2026-07-08 A | 2026-07-13 A | CO-R11.S05-TE-120, CO-R11.S05-TE-120 FF+3d | 100% |  | 2026-07-15 | 2026-07-22 |  |  | Skilled Labor/Surveyor [6.84 h]; Foreman [6.84 h]; Excavator [56 h]; 6-way ducts, 50mm dia. HDPE [74.23]; Road crossing ducts (6-way) [6.02] | 11,186.71 | 11,186.71 | CO-R11.S05-TE-130 | 15 | 15 | PD | BF | LM | DC | TE | DUCTS | CON | R11 | S05 | TE | TE |

| ID | WBS | Activity | Duration | Start | Finish | Predecessors | Complete | Planned start | Planned finish | Total float | Free float | Resources | Cost | Actual cost | Activity ID N | Seq | New Seq | 02- Network-WBS | 03- Activity | 04-UOM | 05-Discipline | 01- Network | 07-Weightage System | 08 Stage | 09 Roads | 10 side Walk | Discipline | New Discipline |
| --- | --- | --- | --- | --- | --- | --- | --- | --- | --- | --- | --- | --- | --- | --- | --- | --- | --- | --- | --- | --- | --- | --- | --- | --- | --- | --- | --- | --- |
|  | MH | **Manholes Works** |  | 2026-12-26 | 2027-01-18 |  |  |  |  |  |  |  |  |  |  |  |  |  |  |  |  |  |  |  |  |  |  |  |
| CO-R11.S05-TE-140 |  | Excavation Works for Manholes of Telecom Network-[Road 11]-[SW-5] | 7d | 2026-12-26 | 2027-01-02 | CO-R10.S03-ES-TE-140, CO-R11.S05-TE-100, CO-R10.S03-WE-TE-140 |  |  |  | -132d | 0d | Skilled Labor/Surveyor [6.73 h]; Foreman [6.73 h]; Excavator [56 h]; Manhole Type 2 (2000x1000x1000) [0.4] | 1,283.59 |  | CO-R11.S05-TE-140 | 15 | 15 | MH | Ex | Each | MNH | TE | EXC | CON | R11 | S05 | TE | TE |
| CO-R11.S05-TE-150 |  | Installation Works for Manholes of Telecom Network-[Road 11]-[SW-5] | 7d | 2027-01-03 | 2027-01-10 | CO-R11.S05-TE-140, CO-R10.S03-ES-TE-150, CO-R10.S03-WE-TE-150 |  |  |  | -125d | 0d | Skilled Labor/Surveyor [6.73 h]; Foreman [6.73 h]; Excavator [56 h]; Manhole Type 1 (2000x1000x1000) [1]; Manhole Type 2 (2000x1000x1000) [1] | 6,410.79 |  | CO-R11.S05-TE-150 | 15 | 15 | MH | HH | Each | MNH | TE | INSTALL-1 | CON | R11 | S05 | TE | TE |
| CO-R11.S05-TE-160 |  | Backfilling Works for Manholes of Telecom Network-[Road 11]-[SW-5] | 7d | 2027-01-11 | 2027-01-18 | CO-R11.S05-TE-150, CO-R10.S03-ES-TE-160, CO-R10.S03-WE-TE-160 |  |  |  | -125d | 27d | Skilled Labor/Surveyor [6.73 h]; Foreman [6.73 h]; Excavator [56 h]; Manhole Type 2 (2000x1000x1000) [0.4] | 1,283.59 |  | CO-R11.S05-TE-160 | 15 | 15 | MH | BF | Each | MNH | TE | (New)-2 | CON | R11 | S05 | TE | TE |
|  | MV | **Medium Voltage Network** |  | 2026-07-08 | 2026-07-13 |  |  |  |  |  |  |  |  |  |  |  |  |  |  |  |  |  |  |  |  |  |  |  |
|  | CW | **Cabling Works** |  | 2026-07-08 | 2026-07-13 |  |  |  |  |  |  |  |  |  |  |  |  |  |  |  |  |  |  |  |  |  |  |  |
| CO-R11.S05-MV-100 |  | Trench Excavation and Bedding Works for Medium Voltage Network-[Road 11]-[SW-5] | 18d | 2026-07-08 A | 2026-07-13 A | ENG-SH-MV-A-110, CO-R11.S05-SD-170 SS+3d, CO-R11.S05-SD-170 FF+3d, CO-R10.S03-ES-MV-100, ENG-MS-MV-A-110, CO-R10.S03-WE-MV-100 | 100% | 2026-07-22 | 2026-08-11 |  |  | Skilled Labor/Surveyor [17.1 h]; Foreman [17.1 h]; Excavator [144 h]; Excavation for Trench size 40cm wide and 80cm deep ( Maximum 1 cable 33kv) [164.51]; Excavation for Trench size 60cm wide and 80cm deep ( for Max two cables 33 kv) [10.03]; Excavation for Trench size 90cm wide and 80cm deep ( Maximum 3 cable 33kv) [41.13]; Excavation for Trench size 120cm wide and 80cm deep ( Maximum 4cable 33kv) [14.04]; Excavation for Trench size 150cm wide and 80cm deep ( Maximum 4cable 33kv) [52.16]; Duct bank for (2) 33 kv cables [6.02]; Duct bank for (4) 33 kv cables [37.12]; Duct bank for (6) 33 kv cables [17.05] | 19,507.05 | 19,507.05 | CO-R11.S05-MV-100 | 15 | 15 | CW | Ex | LM | CW | MV | EXC | CON | R11 | S05 | MV | MV |
| CO-R11.S05-MV-110 |  | Cable Laying Works for Medium Voltage Network-[Road 11]-[SW-5] | 18d | 2026-07-08 A | 2026-07-13 A | CO-R11.S05-MV-100 SS+3d, CO-R11.S05-MV-100 FF+3d, CO-R10.S03-ES-MV-110, CO-R10.S03-WE-MV-110 | 100% | 2026-07-26 | 2026-08-15 |  |  | Labor/Helper [328.29 h]; Electrician [328.29 h]; Low Current Technician [328.29 h]; 33kv 3Cx400 mmï¿½ Al XLPE / LLDPE /PVC Cable [777.43]; 33kv 3Cx400 mmï¿½ Al XLPE /LLDPE/PVC [3.01] | 106,767.47 | 106,767.47 | CO-R11.S05-MV-110 | 15 | 15 | CW | CL | LM | CW | MV | LAY | CON | R11 | S05 | MV | MV |
| CO-R11.S05-MV-120 |  | Trench Backfilling and Compaction Works for Medium Voltage Network-[Road 11]-[SW-5] | 18d | 2026-07-08 A | 2026-07-13 A | CO-R11.S05-MV-110 SS+3d, CO-R11.S05-MV-110 FF+3d, CO-R10.S03-ES-MV-120, CO-R10.S03-WE-MV-120 | 100% | 2026-07-29 | 2026-08-18 |  |  | Skilled Labor/Surveyor [17.1 h]; Foreman [17.1 h]; Excavator [144 h]; Water Tank [36 h]; 33kv 3Cx400 mmï¿½ Al XLPE / LLDPE /PVC Cable [333.04]; 33kv 3Cx400 mmï¿½ Al XLPE /LLDPE/PVC [1] | 45,215.55 | 45,215.55 | CO-R11.S05-MV-120 | 15 | 15 | CW | BF | LM | CW | MV | BACK | CON | R11 | S05 | MV | MV |
|  | RD | **Road Works** |  | 2026-03-29 | 2026-09-10 |  |  |  |  |  |  |  |  |  |  |  |  |  |  |  |  |  |  |  |  |  |  |  |
|  | RD | **Pre-Bituminous Construction** |  | 2026-03-29 | 2026-04-21 |  |  |  |  |  |  |  |  |  |  |  |  |  |  |  |  |  |  |  |  |  |  |  |
| CO-R11.S05-RD-P-100 |  | Capping and Subgrade Layer for Road Works-[Road 11]-[SW-5] | 18d | 2026-03-29 A | 2026-04-04 A | ENG-SH-RD-A-100, CO-R11.S05-SD-130, CO-R11.S05-SW-130, ENG-MS-RD-A-10, CO-R11.S05-TE-130, CO-R11.S05-MV-120 SS+3d, CO-R11.S05-MV-120 FF+3d | 100% | 2026-08-02 | 2026-08-22 |  |  | Labor/Helper [328.29 h]; Skilled Labor/Surveyor [164.14 h]; Loader [144 h]; Grader [144 h]; Road Roller [144 h]; Water Tank [144 h]; 300mm capping layer underneath subgrade , CBR?15% [2808.77]; 300mm thick Subgrade, including subgrade preparation, CBR?25% [2808.77] | 222,571.1 | 222,571.1 | CO-R11.S05-RD-P-100 | 15 | 15 | AB | SG | Sq.m | BS | RD |  | CON | R11 | S05 | RD | RD |
| CO-R11.S05-RD-P-110 |  | Aggregate Base Course Layer for Road Works-[Road 11]-[SW-5] | 18d | 2026-04-09 A | 2026-04-21 A | CO-R11.S05-RD-P-100 SS+3d, CO-R11.S05-RD-P-100 FF+3d, CO-R11.S05-SD-170 SS+3d, CO-R11.S05-SD-170 FF+3d | 100% | 2026-08-15 | 2026-09-03 |  |  | Labor/Helper [328.29 h]; Skilled Labor/Surveyor [164.14 h]; Foreman [164.14 h]; Loader [144 h]; Grader [144 h]; Road Roller [144 h]; Aggregate base course 200mm thick after compaction in two layers(Grading 1); CBR?80%; including watering, compaction and testing [1871.85] | 154,960.69 | 154,960.69 | CO-R11.S05-RD-P-110 | 15 | 15 | AB | BA | Sq.m | BS | RD |  | CON | R11 | S05 | RD | RD |
|  | LS | **Pavement Works** |  | 2026-08-25 | 2026-09-10 |  |  |  |  |  |  |  |  |  |  |  |  |  |  |  |  |  |  |  |  |  |  |  |
| CO-R11.S05-RD-P-120 |  | Fixing of Curbstone for Sidewalks Pavement-[Road 11]-[SW-5] | 18d | 2026-08-25 A | 2026-08-31 A | CO-R10.S03-ES-RD-120, CO-R11.S05-RD-P-110 SS+3d, CO-R11.S05-RD-P-110 FF+3d, CO-R10.S03-WE-RD-120 | 100% | 2026-08-18 | 2026-09-07 |  |  | Labor/Helper [340.27 h]; Block Mason [1020.8 h]; Precast Concrete Kerb, Type K1 [1036.24]; Precast Concrete Kerb, Type L1 [2056.42] | 126,954.6 | 126,954.6 | CO-R11.S05-RD-P-120 | 15 | 15 | LS | CR | LM | LAND | RD |  | CON | R11 | S05 | RD | RD |
| CO-R11.S05-RD-P-130 |  | Fixing of Interlock Tiles for Sidewalks Pavement-[Road 11]-[SW-5] | 10d | 2026-08-25 A | 2026-09-10 A | CO-R11.S05-RD-P-120 SS+3d, CO-R11.S05-RD-P-120 FF+3d, CO-R11-SW-TF-100, CO-R11-SD-TF-100 | 100% | 2026-09-30 | 2026-10-11 |  |  | Labor/Helper [602.57 h]; Block Mason [1139.59 h]; Interlocking block pavers for sidewalk/footpath 60mm thick on and including 30mm Sand Bedding, 200mm Aggregate subbase, all in accordance with authority standards and complete as per specifications [1850.78]; Extraover for Pedestrian ramps [4.01] | 90,436.2 | 90,436.2 | CO-R11.S05-RD-P-130 | 15 | 15 | LS | IL | Sq.m | LAND | RD |  | CON | R11 | S05 | RD | RD |
|  | SW_6 | **SW_6** |  | 2025-04-23 | 2027-02-21 |  |  |  |  |  |  |  |  |  |  |  |  |  |  |  |  |  |  |  |  |  |  |  |
|  | EW | **Earthworks** |  | 2025-04-23 | 2025-05-03 |  |  |  |  |  |  |  |  |  |  |  |  |  |  |  |  |  |  |  |  |  |  |  |
|  | EW | **Earthworks** |  | 2025-04-23 | 2025-05-03 |  |  |  |  |  |  |  |  |  |  |  |  |  |  |  |  |  |  |  |  |  |  |  |
| CO-R11.S06-EW-100 |  | Roadway Excavation Works Upto Design Level for Earthworks-[Road 11]-[SW-6] | 12d | 2025-04-23 A | 2025-04-27 A | ENG-MS-RD-A-10, ENG-SH-RD-A-100, CO-R11.S05-EW-100 | 100% | 2025-08-18 | 2025-08-31 |  |  | Labor/Helper [218.86 h]; Skilled Labor/Surveyor [27.36 h]; Foreman [27.36 h]; Water Tank [192 h]; Dozer [192 h]; Roadway Excavation for cuttings; on any type of material for all depths including trimming and Preparation of excavated surfaces and disposal. [13223.3] | 85,069.03 | 85,069.03 | CO-R11.S06-EW-100 | 16 | 16 | EW | Ex | Cub.m | EW | EW |  | CON | R11 | S06 | EW | EW |
| CO-R11.S06-EW-110 |  | Embankments Works Upto Design Level for Earthworks-[Road 11]-[SW-6] | 12d | 2025-04-26 A | 2025-05-03 A | CO-R11.S06-EW-100, ENG-MS-RD-A-10, ENG-SH-RD-A-100 | 100% | 2025-09-01 | 2025-09-14 |  |  | Labor/Helper [547.15 h]; Skilled Labor/Surveyor [68.39 h]; Foreman [68.39 h]; Water Tank [480 h]; Dozer [480 h]; Embankments to the ROW, with suitable material other than top soil or rock according to specifications [22259.5] | 184,115.58 | 184,115.58 | CO-R11.S06-EW-110 | 16 | 16 | EW | BF | Cub.m | EW | EW |  | CON | R11 | S06 | EW | EW |
|  | SW | **Sewage Network** |  | 2025-09-16 | 2026-07-09 |  |  |  |  |  |  |  |  |  |  |  |  |  |  |  |  |  |  |  |  |  |  |  |
|  | ML | **Main Line Sections** |  | 2025-09-16 | 2026-07-05 |  |  |  |  |  |  |  |  |  |  |  |  |  |  |  |  |  |  |  |  |  |  |  |
| CO-R11.S06-SW-100 |  | Trench Excavation and Bedding Works for Main Lines of Sewage Network-[Road 11]-[SW-6] | 12d | 2025-09-16 A | 2026-07-01 A | CO-R11.S06-EW-110, ENG-MS-SW-ML-A-110, ENG-SH-SW-ML-A-110, CO-R11.S05-SW-100 | 100% | 2025-09-15 | 2025-09-29 |  |  | Nominal bore : 200mm; Depth : 0.0m - 1.5m [18.06]; Nominal bore : 200mm; Depth : 1.5m - 2.5m [28.09]; Nominal bore : 200mm; Depth : 2.5m - 3.5m [21.07]; Nominal bore : 200mm; Depth : 3.5m - 4.5m [55.17]; Nominal bore : 200mm; Depth : 4.5m -5.5m [21.07]; Nominal bore : 200mm; Depth : 5.5m - 6.5m [44.14] | 66,003.12 | 66,003.12 | CO-R11.S05-SW-100 | 16 | 16 | ML | Ex | LM | ML | SW | EX | CON | R11 | S06 | SW | SW |
| CO-R11.S06-SW-120 |  | Pipes Laying Works for Main Lines of Sewage Network-[Road 11]-[SW-6] | 12d | 2025-09-20 A | 2026-06-30 A | CO-R11.S06-SW-100, PRO-R11-SW-DL-100 FF+3d | 100% | 2025-09-30 | 2025-10-13 |  |  | Nominal bore : 200mm; Depth : 0.0m - 1.5m [57.18]; Nominal bore : 200mm; Depth : 1.5m - 2.5m [83.26]; Nominal bore : 200mm; Depth : 2.5m - 3.5m [65.2]; Nominal bore : 200mm; Depth : 3.5m - 4.5m [167.52]; Nominal bore : 200mm; Depth : 4.5m -5.5m [62.19]; Nominal bore : 200mm; Depth : 5.5m - 6.5m [132.41] | 199,232.7 | 199,232.7 | CO-R11.S05-SW-120 | 16 | 16 | ML | PL | LM | ML | SW | PIPE | CON | R11 | S06 | SW | SW |
| CO-R11.S06-SW-130 |  | Trench Backfilling and Compaction Works for Main Lines of Sewage Network-[Road 11]-[SW-6] | 10d | 2025-09-29 A | 2026-07-05 A | CO-R11.S06-SW-120, CO-R11.S06-SW-210 FF | 100% | 2025-10-14 | 2025-10-25 |  |  | Nominal bore : 200mm; Depth : 0.0m - 1.5m [10.03]; Nominal bore : 200mm; Depth : 1.5m - 2.5m [14.04]; Nominal bore : 200mm; Depth : 2.5m - 3.5m [11.03]; Nominal bore : 200mm; Depth : 3.5m - 4.5m [28.09]; Nominal bore : 200mm; Depth : 4.5m -5.5m [10.03]; Nominal bore : 200mm; Depth : 5.5m - 6.5m [23.07] | 33,957.36 | 33,957.36 | CO-R11.S05-SW-130 | 16 | 16 | ML | BF | LM | ML | SW | BACK | CON | R11 | S06 | SW | SW |

| ID | WBS | Activity | Duration | Start | Finish | Predecessors | Complete | Planned start | Planned finish | Resources | Cost | Actual cost | Activity ID N | Seq | New Seq | 01- Network | 07-Weightage System | 08 Stage | 09 Roads | 10 side Walk | Discipline | New Discipline | 02- Network-WBS | 03- Activity | 04-UOM | 05-Discipline |
| --- | --- | --- | --- | --- | --- | --- | --- | --- | --- | --- | --- | --- | --- | --- | --- | --- | --- | --- | --- | --- | --- | --- | --- | --- | --- | --- |
|  | 1 | **Manholes** |  | 2026-04-01 | 2026-07-09 |  |  |  |  |  |  |  |  |  |  |  |  |  |  |  |  |  |  |  |  |  |
| CO-R11.S06-SW-160 |  | Excavation Works for Main Line Manholes of Sewage Network-[Road 11]-[SW-6] | 1d | 2026-04-01 A | 2026-04-05 A | CO-R11.S06-SW-120 SS | 100% | 2025-09-30 | 2025-09-30 | Depth: not exceeding 1.5m [0.15]; Depth: 1.5 - 2.5m [0.45]; Depth: 2.5 - 3.5m [0.3]; Depth: 5.5 - 6.5m [1]; Depth:6.5 - 7.5m [0.15] | 38,618.91 | 38,618.91 | CO-R11.S05-SW-160 | 16 | 16 | SW | EX | CON | R11 | S06 | SW | SW |  |  |  |  |
| CO-R11.S06-SW-170 |  | Installation RC Footing Works for Main Line Manholes of Sewage Network-[Road 11]-[SW-6] | 2d | 2026-04-01 A | 2026-04-06 A | CO-R11.S06-SW-160, PRO-R11-SW-DL-110 FF+3d | 100% | 2025-10-01 | 2025-10-02 | Depth: not exceeding 1.5m [0.1]; Depth: 1.5 - 2.5m [0.3]; Depth: 2.5 - 3.5m [0.2]; Depth: 5.5 - 6.5m [0.4]; Depth:6.5 - 7.5m [0.1] | 18,478.75 | 18,478.75 | CO-R11.S05-SW-170 | 16 | 16 | SW | RC F | CON | R11 | S06 | SW | SW |  |  |  |  |
| CO-R11.S06-SW-180 |  | Install Grp Liner Wall Works for Main Line Manholes of Sewage Network-[Road 11]-[SW-6] | 4d | 2026-04-02 A | 2026-07-01 A | CO-R11.S06-SW-170 | 100% | 2025-10-04 | 2025-10-07 | Depth: not exceeding 1.5m [0.4]; Depth: 1.5 - 2.5m [1]; Depth: 2.5 - 3.5m [1]; Depth: 5.5 - 6.5m [3.01]; Depth:6.5 - 7.5m [0.4] | 112,585.99 | 112,585.99 | CO-R11.S05-SW-180 | 16 | 16 | SW | LP | CON | R11 | S06 | SW | SW |  |  |  |  |
| CO-R11.S06-SW-190 |  | Pouring Grp Liner Wall Works for Main Line Manholes of Sewage Network-[Road 11]-[SW-6] | 1d | 2026-07-01 A | 2026-07-06 A | CO-R11.S06-SW-180 | 100% | 2025-10-08 | 2025-10-08 | Depth: not exceeding 1.5m [0.05]; Depth: 1.5 - 2.5m [0.15]; Depth: 2.5 - 3.5m [0.1]; Depth: 5.5 - 6.5m [0.2]; Depth:6.5 - 7.5m [0.05] | 9,240.4 | 9,240.4 | CO-R11.S05-SW-190 | 16 | 16 | SW | (New) | CON | R11 | S06 | SW | SW |  |  |  |  |
| CO-R11.S06-SW-200 |  | Backfilling Works for Main Line Manholes of Sewage Network-[Road 11]-[SW-6] | 4d | 2026-07-01 A | 2026-07-09 A | CO-R11.S06-SW-190 | 100% | 2025-10-09 | 2025-10-13 | Depth: not exceeding 1.5m [0.15]; Depth: 1.5 - 2.5m [0.45]; Depth: 2.5 - 3.5m [0.3]; Depth: 5.5 - 6.5m [1]; Depth:6.5 - 7.5m [0.15] | 38,618.91 | 38,618.91 | CO-R11.S05-SW-200 | 16 | 16 | SW | BACK | CON | R11 | S06 | SW | SW |  |  |  |  |
| CO-R11.S06-SW-210 |  | Testing Works for Main Line Manholes of Sewage Network-[Road 11]-[SW-6] | 1d | 2026-07-01 A | 2026-07-09 A | CO-R11.S06-SW-200 | 100% | 2025-10-14 | 2025-10-14 | Depth: not exceeding 1.5m [0.05]; Depth: 1.5 - 2.5m [0.15]; Depth: 2.5 - 3.5m [0.1]; Depth: 5.5 - 6.5m [0.2]; Depth:6.5 - 7.5m [0.05] | 9,240.4 | 9,240.4 | CO-R11.S05-SW-210 | 16 | 16 | SW | T&COV | CON | R11 | S06 | SW | SW |  |  |  |  |
|  | SD | **Storm Drainage Network** |  | 2025-08-05 | 2026-07-07 |  |  |  |  |  |  |  |  |  |  |  |  |  |  |  |  |  |  |  |  |  |
|  | ML | **Main Line Sections** |  | 2025-08-05 | 2025-08-14 |  |  |  |  |  |  |  |  |  |  |  |  |  |  |  |  |  |  |  |  |  |
| CO-R11.S06-SD-100 |  | Trench Excavation and Bedding Works for Main Lines of Storm Drainage Network-[Road 11]-[SW-6] | 10d | 2025-08-05 A | 2025-08-06 A | CO-R11.S06-EW-110, CO-R11.S06-EW-100, CO-R11.S06-SW-130 SS+3d, CO-R11.S06-SW-130 FF+3d, CO-R11.S05-SD-100 | 100% | 2025-11-06 | 2025-11-17 | Skilled Labor/Surveyor [13.68 h]; Foreman [13.68 h]; Excavator [112 h]; Pipe with diameter 500mm ; depth: 1.51m - 2.5m [181.57]; Pipe with diameter 600mm ; depth: 1.51m - 2.5m [16.05]; Pipe with diameter 700mm ; depth: 1.51m - 2.5m [30.09]; Pipe with diameter 800mm ; depth: 1.51m - 2.5m [58.18]; Pipe with diameter 1000mm ; depth: 1.51m - 2.5m [50.16]; Pipe with diameter 1000mm ; depth: 2.51 - 3.5m [50.16] | 194,309.73 | 194,309.73 | CO-R11.S06-SD-100 | 16 | 16 | SD | EX | CON | R11 | S06 | SD | SD | ML | Ex | LM | ML |
| CO-R11.S06-SD-120 |  | Pipes Laying Works for Main Lines of Storm Drainage Network-[Road 11]-[SW-6] | 10d | 2025-08-07 A | 2025-08-09 A | PRO-R11-SD-DL-120 FF+3d, CO-R11.S06-SD-100, CO-R11.S05-SD-120 | 100% | 2025-11-18 | 2025-11-29 | Labor/Helper [273.57 h]; Skilled Labor/Surveyor [13.68 h]; Foreman [13.68 h]; Plumber [136.79 h]; Excavator [120 h]; Pipe with diameter 500mm ; depth: 1.51m - 2.5m [544.7]; Pipe with diameter 600mm ; depth: 1.51m - 2.5m [48.15]; Pipe with diameter 700mm ; depth: 1.51m - 2.5m [89.28]; Pipe with diameter 800mm ; depth: 1.51m - 2.5m [174.55]; Pipe with diameter 1000mm ; depth: 1.51m - 2.5m [150.47]; Pipe with diameter 1000mm ; depth: 2.51 - 3.5m [150.47] | 582,438 | 582,438 | CO-R11.S06-SD-120 | 16 | 16 | SD | PIPE | CON | R11 | S06 | SD | SD | ML | PL | LM | ML |
| CO-R11.S06-SD-130 |  | Trench Backfilling and Compaction Works for Main Lines of Storm Drainage Network-[Road 11]-[SW-6] | 15d | 2025-08-10 A | 2025-08-14 A | CO-R11.S06-SD-120 SS+3d, CO-R11.S06-SD-120 FF+3d, CO-R10.S04-ES-SD-130, CO-R11.S06-SD-120, CO-R11.S06-SD-220 FF, CO-R10.S04-WE-SD-130 | 100% | 2026-01-04 | 2026-01-20 | Skilled Labor/Surveyor [13.68 h]; Foreman [13.68 h]; Excavator [120 h]; Pipe with diameter 500mm ; depth: 1.51m - 2.5m [91.29]; Pipe with diameter 600mm ; depth: 1.51m - 2.5m [8.03]; Pipe with diameter 700mm ; depth: 1.51m - 2.5m [16.05]; Pipe with diameter 800mm ; depth: 1.51m - 2.5m [30.09]; Pipe with diameter 1000mm ; depth: 1.51m - 2.5m [25.08]; Pipe with diameter 1000mm ; depth: 2.51 - 3.5m [25.08] | 98,382.8 | 98,382.8 | CO-R11.S06-SD-130 | 16 | 16 | SD | BACK | CON | R11 | S06 | SD | SD | ML | BF | LM | ML |
|  | MH | **Manholes** |  | 2026-03-31 | 2026-04-06 |  |  |  |  |  |  |  |  |  |  |  |  |  |  |  |  |  |  |  |  |  |
| CO-R11.S06-SD-180 |  | Trench Excavation and Bedding Works for Manholes of Storm Drainage Network-[Road 11]-[SW-6] | 1d | 2026-03-31 A | 2026-03-31 A | CO-R11.S06-SD-120 SS, PRO-SD-1DL-100 | 100% | 2025-11-18 | 2025-11-18 | Labor/Helper [27.36 h]; Skilled Labor/Surveyor [13.68 h]; Excavator [24 h]; MH ; depth: 0.0m - 1.5m [0.15]; MH ; depth: 1.51m - 2.5m [0.45]; MH ; depth: 2.51 - 3.5m [0.15]; MH ; depth: 1.51m - 2.5m [0.3]; MH ; depth: 2.51 - 3.5m [0.3] | 35,659.62 | 35,659.62 | CO-R11.S06-SD-180 | 16 | 16 | SD | EX | CON | R11 | S06 | SD | SD |  |  |  |  |
| CO-R11.S06-SD-190 |  | Install RC Footing Works for Manholes of Storm Drainage Network-[Road 11]-[SW-6] | 1d | 2026-04-01 A | 2026-04-01 A | CO-R11.S06-SD-180 | 100% | 2025-11-19 | 2025-11-19 | Cons. Carpenter [54.71 h]; Steel Fixer [54.71 h]; MH ; depth: 0.0m - 1.5m [0.05]; MH ; depth: 1.51m - 2.5m [0.15]; MH ; depth: 2.51 - 3.5m [0.05]; MH ; depth: 1.51m - 2.5m [0.1]; MH ; depth: 2.51 - 3.5m [0.1] | 11,887.22 | 11,887.22 | CO-R11.S06-SD-190 | 16 | 16 | SD | RC F | CON | R11 | S06 | SD | SD |  |  |  |  |
| CO-R11.S06-SD-200 |  | Install RC Wall Rings & Slab Works for Manholes of Storm Drainage Network-[Road 11]-[SW-6] | 4d | 2026-04-02 A | 2026-04-05 A | CO-R11.S06-SD-190 | 100% | 2025-11-20 | 2025-11-24 | Cons. Carpenter [145.91 h]; Steel Fixer [145.91 h]; MH ; depth: 0.0m - 1.5m [0.45]; MH ; depth: 1.51m - 2.5m [1]; MH ; depth: 2.51 - 3.5m [0.45]; MH ; depth: 2.51 - 3.5m [1] | 109,277.46 | 109,277.46 | CO-R11.S06-SD-200 | 16 | 16 | SD | RC W | CON | R11 | S06 | SD | SD |  |  |  |  |
| CO-R11.S06-SD-210 |  | Testing Works for Manholes of Storm Drainage Network-[Road 11]-[SW-6] | 1d | 2026-04-05 A | 2026-04-06 A | CO-R11.S06-SD-200 | 100% | 2025-11-25 | 2025-11-25 | Labor/Helper [27.36 h]; Plumber [27.36 h]; MH ; depth: 0.0m - 1.5m [0.1]; MH ; depth: 1.51m - 2.5m [0.3]; MH ; depth: 2.51 - 3.5m [0.1]; MH ; depth: 1.51m - 2.5m [0.2]; MH ; depth: 2.51 - 3.5m [0.2] | 23,775.46 | 23,775.46 | CO-R11.S06-SD-210 | 16 | 16 | SD | T&COV | CON | R11 | S06 | SD | SD |  |  |  |  |
| CO-R11.S06-SD-220 |  | Backfilling Works for Manholes of Storm Drainage Network-[Road 11]-[SW-6] | 7d | 2026-04-05 A | 2026-04-06 A | CO-R11.S06-SD-210 | 100% | 2025-11-26 | 2025-12-03 | Labor/Helper [127.67 h]; Skilled Labor/Surveyor [63.83 h]; Excavator [112 h]; MH ; depth: 0.0m - 1.5m [0.2]; MH ; depth: 1.51m - 2.5m [1]; MH ; depth: 2.51 - 3.5m [0.2]; MH ; depth: 1.51m - 2.5m [0.4]; MH ; depth: 2.51 - 3.5m [0.4] | 54,363.02 | 54,363.02 | CO-R11.S06-SD-220 | 16 | 16 | SD | BACK | CON | R11 | S06 | SD | SD |  |  |  |  |
|  | CB | **Catch Basin Sections** |  | 2026-06-14 | 2026-07-07 |  |  |  |  |  |  |  |  |  |  |  |  |  |  |  |  |  |  |  |  |  |
| CO-R11.S06-SD-160 |  | Testing Works for Catch Basins of Storm Drainage Network-[Road 11]-[SW-6] | 6d | 2026-06-14 A | 2026-06-20 A | CO-R11.S06-SD-150, CO-R11.S06-SD-120, PRO-R11-SD-DL-110 FF+3d | 100% | 2026-01-07 | 2026-01-13 | Labor/Helper [109.43 h]; Skilled Labor/Surveyor [5.7 h]; Foreman [5.7 h]; Plumber [54.71 h]; Excavator [48 h]; Pipe with diameter 300mm ; depth: 0 - 1.5m [47.15]; Pipe with diameter 400mm ; depth: 0 - 1.5m [3.01] | 11,913.77 | 11,913.77 | CO-R11.S06-SD-160 | 16 | 16 | SD | TEST | CON | R11 | S06 | SD | SD | CB | PL | Each | CB |
| CO-R11.S06-SD-140 |  | Trench Excavation and Bedding Works for Catch Basins of Storm Drainage Network-[Road 11]-[SW-6] | 7d | 2026-06-24 A | 2026-07-01 A | CO-R11.S06-EW-110, CO-R11.S06-SD-220, CO-R11.S05-SD-140 | 100% | 2025-12-04 | 2025-12-11 | Skilled Labor/Surveyor [6.84 h]; Foreman [6.84 h]; Excavator [56 h]; Pipe with diameter 300mm ; depth: 0 - 1.5m [69.22]; Pipe with diameter 400mm ; depth: 0 - 1.5m [4.01] | 17,363.65 | 17,363.65 | CO-R11.S06-SD-140 | 16 | 16 | SD | EX | CON | R11 | S06 | SD | SD | CB | Ex | Each | CB |
| CO-R11.S06-SD-150 |  | Installation and Pipes Laying Connection Works for Catch Basins of Storm Drainage Network-[Road 11]-[SW-6] | 7d | 2026-06-27 A | 2026-07-01 A | CO-R11.S06-SD-140, PRO-R11-SD-DL-130 FF+3d | 100% | 2025-12-30 | 2026-01-06 | Labor/Helper [182.38 h]; Skilled Labor/Surveyor [9.12 h]; Foreman [9.12 h]; Excavator [80 h]; Pipe with diameter 300mm ; depth: 0 - 1.5m [209.65]; Pipe with diameter 400mm ; depth: 0 - 1.5m [13.04] | 52,873.16 | 52,873.16 | CO-R11.S06-SD-150 | 16 | 16 | SD | INSTALL | CON | R11 | S06 | SD | SD | CB | CB | Each | CB |
| CO-R11.S06-SD-170 |  | Trench Backfilling and Compaction Works for Catch Basins of Storm Drainage Network-[Road 11]-[SW-6] | 7d | 2026-06-30 A | 2026-07-07 A | CO-R11.S06-SD-160 | 100% | 2026-01-14 | 2026-01-21 | Skilled Labor/Surveyor [6.84 h]; Foreman [6.84 h]; Excavator [56 h]; Pipe with diameter 300mm ; depth: 0 - 1.5m [93.29]; Pipe with diameter 400mm ; depth: 0 - 1.5m [6.02] | 23,595.74 | 23,595.74 | CO-R11.S06-SD-170 | 16 | 16 | SD | BACK | CON | R11 | S06 | SD | SD | CB | BF | Each | CB |
|  | PW | **Potable Water Network** |  | 2025-08-14 | 2026-12-17 |  |  |  |  |  |  |  |  |  |  |  |  |  |  |  |  |  |  |  |  |  |
|  | ML | **Main Line Sections** |  | 2025-08-14 | 2025-08-21 |  |  |  |  |  |  |  |  |  |  |  |  |  |  |  |  |  |  |  |  |  |
| CO-R11.S06-PW-100 |  | Trench Excavation and Bedding Works for Main Lines of Potable Water Network-[Road 11]-[SW-6] | 6d | 2025-08-14 A | 2025-08-16 A | CO-R11.S06-EW-110, CO-R11.S06-EW-100, CO-R11.S06-SD-130 | 100% | 2026-01-21 | 2026-01-27 | Skilled Labor/Surveyor [5.7 h]; Foreman [5.7 h]; Excavator [48 h]; Pipe with diameter 200mm; in depth 0.0m - 1.5m [226.71] | 33,658.16 | 33,658.16 | CO-R11.S06-PW-100 | 16 | 16 | PW | EX | CON | R11 | S06 | PW | PW | ML | Ex | LM | ML |
| CO-R11.S06-PW-110 |  | Pipes Laying and accessories for Main Lines of Potable Water Network-[Road 11]-[SW-6] | 10d | 2025-08-17 A | 2025-08-18 A | CO-R11.S06-PW-100, CO-R10.S04-ES-PW-110 SS, PRO-R11-PW-DL-100 FF+3d, CO-R10.S04-WE-PW-110 SS | 100% | 2026-01-28 | 2026-02-08 | Labor/Helper [182.38 h]; Skilled Labor/Surveyor [9.12 h]; Foreman [9.12 h]; Plumber [91.19 h]; Excavator [80 h]; Pipe with diameter 200mm; in depth 0.0m - 1.5m [567.77] | 84,295 | 84,295 | CO-R11.S06-PW-110 | 16 | 16 | PW | PIPE | CON | R11 | S06 | PW | PW | ML | PL | LM | ML |
| CO-R11.S06-PW-130 |  | Trench Backfilling and Compaction Works for Main Lines of Potable Water Network-[Road 11]-[SW-6] | 10d | 2025-08-19 A | 2025-08-21 A | CO-R11.S06-PW-110, CO-R10.S04-ES-PW-130, CO-R10.S04-WE-PW-130 | 100% | 2026-02-17 | 2026-02-28 | Skilled Labor/Surveyor [9.12 h]; Foreman [9.12 h]; Eq. Operator [9.12 h]; Loader [80 h]; Compactor [80 h]; Water Tank [20 h]; Pipe with diameter 200mm; in depth 0.0m - 1.5m [226.71] | 33,658.16 | 33,658.16 | CO-R11.S06-PW-130 | 16 | 16 | PW | BACK | CON | R11 | S06 | PW | PW | ML | BF | LM | ML |

| ID | WBS | Activity | Duration | Start | Finish | Predecessors | Complete | Planned start | Planned finish | Total float | Free float | Resources | Cost | Actual cost | Activity ID N | Seq | New Seq | 02- Network-WBS | 03- Activity | 04-UOM | 05-Discipline | 01- Network | 07-Weightage System | 08 Stage | 09 Roads | 10 side Walk | Discipline | New Discipline |
| --- | --- | --- | --- | --- | --- | --- | --- | --- | --- | --- | --- | --- | --- | --- | --- | --- | --- | --- | --- | --- | --- | --- | --- | --- | --- | --- | --- | --- |
|  | VC | **Valve Chamber** |  | 2026-11-24 | 2026-11-30 |  |  |  |  |  |  |  |  |  |  |  |  |  |  |  |  |  |  |  |  |  |  |  |
| CO-R11.S06-PW-210 |  | Installation Works for Main Line Valves and Valve Chambers of Potable Water Network-[Road 11]-[SW-6] | 6d | 2026-11-24 | 2026-11-30 | CO-R11.S06-PW-100 |  |  |  | -10d | 180d | Labor/Helper [8.97 h]; Plumber [8.97 h]; Gate valves dia(200)mm on pipes with dia (200) mm. [8.03] | 21,698.44 |  | CO-R11.S06-PW-210 | 16 | 16 | ML | VI | Each | ML | PW | INSUL | CON | R11 | S06 | PW | PW |
|  | FH | **Fire Hydrant** |  | 2026-11-24 | 2026-12-17 |  |  |  |  |  |  |  |  |  |  |  |  |  |  |  |  |  |  |  |  |  |  |  |
| CO-R11.S06-PW-140 |  | Excavation Works for Fire Hydrants of Potable Water Network-[Road 11]-[SW-6] | 7d | 2026-11-24 | 2026-12-01 | CO-R11.S06-PW-110 SS+3d, CO-R11.S06-PW-110 FF+3d, CO-R11.S06-EW-110 |  |  |  | -25d | 0d | Skilled Labor/Surveyor [6.73 h]; Foreman [6.73 h]; Excavator [56 h]; 3-outlet fire hydrant (2 x 2.5 inch and 1 x 4 inch) in the form of a separate dry vacuum cylinder [1] | 7,758.71 |  | CO-R11.S06-PW-140 | 16 | 16 | FH | Ex | Each | FH | PW | EX | CON | R11 | S06 | PW | PW |
| CO-R11.S06-PW-150 |  | Installation Works for Fire Hydrant of Potable Water Network-[Road 11]-[SW-6] | 7d | 2026-12-02 | 2026-12-09 | CO-R11.S06-PW-140, PRO-R11-PW-DL-120 FF+3d |  |  |  | -25d | 0d | Labor/Helper [125.62 h]; Skilled Labor/Surveyor [6.73 h]; Foreman [6.73 h]; Plumber [125.62 h]; 3-outlet fire hydrant (2 x 2.5 inch and 1 x 4 inch) in the form of a separate dry vacuum cylinder [4.01] | 31,034.82 |  | CO-R11.S06-PW-150 | 16 | 16 | FH | FH | Each | FH | PW | INSTALL | CON | R11 | S06 | PW | PW |
| CO-R11.S06-PW-160 |  | Trench Backfilling and Compaction Works for Fire Hydrants of Potable Water Network-[Road 11]-[SW-6] | 7d | 2026-12-10 | 2026-12-17 | CO-R11.S06-PW-150 |  |  |  | -25d | 165d | Skilled Labor/Surveyor [6.73 h]; Foreman [6.73 h]; Excavator [56 h]; 3-outlet fire hydrant (2 x 2.5 inch and 1 x 4 inch) in the form of a separate dry vacuum cylinder [1] | 7,758.71 |  | CO-R11.S06-PW-160 | 16 | 16 | FH | BF | Each | FH | PW | BACK | CON | R11 | S06 | PW | PW |
|  | SL | **Street Lighting Network** |  | 2026-07-07 | 2027-02-21 |  |  |  |  |  |  |  |  |  |  |  |  |  |  |  |  |  |  |  |  |  |  |  |
|  | LP | **Lighting Poles Works** |  | 2026-07-07 | 2027-01-21 |  |  |  |  |  |  |  |  |  |  |  |  |  |  |  |  |  |  |  |  |  |  |  |
| CO-R11.S06-SL-100 |  | Foundation Excavation Works for Lighting Poles of Street Lighting Network-[Road 11]-[SW-6] | 12d | 2026-07-07 A | 2026-07-13 A | CO-R11.S06-EW-110, CO-R11.S06-EW-100, CO-R11.S06-PW-130 | 100% | 2026-03-01 | 2026-03-14 |  |  | Labor/Helper [328.29 h]; Skilled Labor/Surveyor [164.14 h]; Excavator [288 h]; Lighting poles with one arm, including the power distribution box, screws, cables, 12 meters in height. [1] | 1,949.38 | 1,949.38 | CO-R11.S06-SL-100 | 16 | 16 | LP | Ex | Each | POL | SL | EX | CON | R11 | S06 | SL | SL |
| CO-R11.S06-SL-110 |  | Installation Works for Lighting Poles Foundation of Street Lighting Network-[Road 11]-[SW-6] | 10d | 2026-07-07 A | 2026-07-13 A | CO-R11.S06-SL-100, PRO-R11-SL-DL-110 FF+3d | 100% | 2026-03-30 | 2026-04-09 |  |  | Labor/Helper [437.72 h]; Skilled Labor/Surveyor [22.8 h]; Foreman [22.8 h]; Eq. Operator [22.8 h]; Loader [48 h]; Reinforced concrete foundation, for 12m high lighting columns With Drawpits [40.13] | 14,906.76 | 14,906.76 | CO-R11.S06-SL-110 | 16 | 16 | LP | LPF | Each | POL | SL | INSTALL | CON | R11 | S06 | SL | SL |
| CO-R11.S06-SL-120 |  | Installation Works for Lighting Poles of Street Lighting Network-[Road 11]-[SW-6] | 18d | 2026-07-07 A | 2026-07-13 A | CO-R11.S06-SL-110 SS+5d, CO-R11.S06-SL-110 FF+5d, PRO-R11-SL-DL-120 FF+3d | 100% | 2026-04-05 | 2026-04-25 |  |  | Labor/Helper [164.14 h]; Electrician [204.47 h]; Lighting poles with one arm, including the power distribution box, screws, cables, 12 meters in height. [21.07] | 40,946.11 | 40,946.11 | CO-R11.S06-SL-120 | 16 | 16 | LP | LP | Each | POL | SL | POLES | CON | R11 | S06 | SL | SL |
| CO-R11.S06-SL-210 |  | Backfilling Works for Lighting Poles of Street Lighting Network-[Road 11]-[SW-6] | 15d | 2026-07-14 A | 2026-07-20 A | CO-R11.S06-SL-120 SS, CO-R11.S06-SL-120 FF, CO-R14.S08-SL-210 | 100% | 2026-11-17 | 2026-12-03 |  |  | Labor/Helper [269.18 h]; Skilled Labor/Surveyor [134.59 h]; Excavator [240 h]; Lighting poles with one arm, including the power distribution box, screws, cables, 12 meters in height. [8.03] | 15,598.08 |  | CO-R11.S06-SL-210 | 16 | 16 |  |  |  |  | SL | BACK | CON | R11 | S06 | SL | SL |
| CO-R11.S06-SL-200 |  | Testing Works for Lighting Poles of Street Lighting Network-[Road 11]-[SW-6] | 7d | 2026-11-24 | 2026-12-01 | CO-R11.S06-SL-210, CO-R11.S06-SL-120 |  |  |  | -57.5d | 44d | Labor/Helper [188.42 h]; Electrician [188.42 h]; Lighting poles with one arm, including the power distribution box, screws, cables, 12 meters in height. [8.03] | 15,598.08 |  | CO-R11.S06-SL-200 | 16 | 16 |  |  |  |  | SL | TESTING | CON | R11 | S06 | SL | SL |
| CO-R11.S06-SL-130 |  | Installation Works for Lighting Fixtures With Drop Wire of Street Lighting Network-[Road 11]-[SW-6] | 18d | 2027-01-02 | 2027-01-21 | CO-R11.S06-SL-120, CO-R10.S04-ES-SL-130, PRO-R11-SL-DL-140 FF+3d, CO-R11.S06-SL-200 FF, CO-R10.S04-WE-SL-130 |  |  |  | -101.5d | 0d | Labor/Helper [323.01 h]; Electrician [323.01 h]; Manlift [288 h]; Street Lighting( LED) Luminaire,(Type C) complete with control gear and lamp, ?.17000 Lumen [40.13] | 24,542.34 |  | CO-R11.S06-SL-130 | 16 | 16 | LP | LPA | Each | POL | SL | INSTALL | CON | R11 | S06 | SL | SL |
|  | CW | **Cabling Works** |  | 2026-07-09 | 2026-12-05 |  |  |  |  |  |  |  |  |  |  |  |  |  |  |  |  |  |  |  |  |  |  |  |
| CO-R11.S06-SL-140 |  | Trench Excavation and Bedding Works for Street Lighting Network-[Road 11]-[SW-6] | 10d | 2026-07-09 A | 2026-07-13 A | CO-R11.S06-EW-110, CO-R11.S06-SL-120, CO-R11.S06-SL-110 | 100% | 2026-04-26 | 2026-05-06 |  |  | Labor/Helper [91.19 h]; Skilled Labor/Surveyor [45.6 h]; Excavator [80 h] |  |  | CO-R11.S06-SL-140 | 16 | 16 | CW | Ex | LM | CB | SL | EXC | CON | R11 | S06 | SL | SL |
| CO-R11.S06-SL-150 |  | Cable Laying Works for Street Lighting Network-[Road 11]-[SW-6] | 10d | 2026-07-09 A | 2026-07-13 A | CO-R11.S06-SL-140, PRO-R11-SL-DL-100 FF+3d | 100% | 2026-05-07 | 2026-05-18 |  |  | Labor/Helper [91.19 h]; Electrician [136.31 h]; Low Current Technician [91.19 h]; Supply, installation , test and operation of cables, Copper, (4Cx25mmï¿½,Cu/XLPE/SWA/PVC +1x16mmï¿½ PVC/PVC) [1569.9] | 75,185.31 | 75,185.31 | CO-R11.S06-SL-150 | 16 | 16 | CW | CL | LM | CB | SL | LAYING | CON | R11 | S06 | SL | SL |
| CO-R11.S06-SL-160 |  | Trench Backfilling and Compaction Works for Street Lighting Network-[Road 11]-[SW-6] | 10d | 2026-11-24 | 2026-12-05 | CO-R11.S06-SL-150 |  |  |  | -43d | 166.5d | Skilled Labor/Surveyor [8.97 h]; Foreman [8.97 h]; Excavator [80 h]; Water Tank [20 h]; Supply, installation , test and operation of cables, Copper, (4Cx25mmï¿½,Cu/XLPE/SWA/PVC +1x16mmï¿½ PVC/PVC) [120.38] | 5,765.42 |  | CO-R11.S06-SL-160 | 16 | 16 | CW | BF | LM | CB | SL | BACK | CON | R11 | S06 | SL | SL |
|  | DPB | **Distrubution Panel Boards** |  | 2027-01-11 | 2027-02-21 |  |  |  |  |  |  |  |  |  |  |  |  |  |  |  |  |  |  |  |  |  |  |  |
| CO-R11.S06-SL-170 |  | Foundation Excavation Works For Panel Boards of Street Lighting Network-[Road 11]-[SW-6] | 12d | 2027-01-11 | 2027-01-24 | CO-R11.S06-EW-110, CO-R10.S04-ES-SL-170, CO-R10.S04-WE-SL-170 |  |  |  | -180d | 0d | Labor/Helper [107.67 h]; Skilled Labor/Surveyor [53.84 h]; Excavator [96 h] |  |  | CO-R11.S06-SL-170 | 16 | 16 | DB | Ex | Each | DS | SL | EXC | CON | R11 | S06 | SL | SL |
| CO-R11.S06-SL-180 |  | Installation Works for Panel Board Concrete Foundations of Street Lighting Network-[Road 11]-[SW-6] | 12d | 2027-01-25 | 2027-02-07 | CO-R11.S06-SL-170, CO-R10.S04-ES-SL-180, CO-R10.S04-WE-SL-180 |  |  |  | -180d | 0d | Skilled Labor/Surveyor [11.22 h]; Foreman [11.22 h]; Excavator [96 h]; Water Tank [24 h] |  |  | CO-R11.S06-SL-180 | 16 | 16 | DB | PBF | Each | DS | SL | INSTALL | CON | R11 | S06 | SL | SL |
| CO-R11.S06-SL-190 |  | Installation Works for Lighting Panel Boards of Street Lighting Network-[Road 11]-[SW-6] | 12d | 2027-02-08 | 2027-02-21 | CO-R11.S06-SL-180, CO-R10.S04-ES-SL-190, CO-R10.S04-WE-SL-190 |  |  |  | -180d | 0d | Labor/Helper [107.67 h]; Electrician [107.67 h] |  |  | CO-R11.S06-SL-190 | 16 | 16 | DB | PB | Each | DS | SL | INST BO | CON | R11 | S06 | SL | SL |
| CO-R11.S06-SL-220 |  | A wall of concrete blocks to install the KWH meter of Street Lighting Network-[Road 11]-[SW-6] | 12d | 2027-02-08 | 2027-02-21 | CO-R11.S06-SL-180 |  |  |  | -174d | 17d | Block Mason [323.01 h]; Road crossing ducts, 4 way (4 x 100mm PVC) [88.28]; Drawpit with medium duty steel cover, size 900x900x1200mm, Type 4 [6.02] | 26,947.15 |  | CO-R11.S06-SL-220 | 16 | 16 | DB |  | Each | DS | SL | wall | CON | R11 | S06 | SL | SL |
|  | TE | **Telecom Network** |  | 2026-07-09 | 2027-01-27 |  |  |  |  |  |  |  |  |  |  |  |  |  |  |  |  |  |  |  |  |  |  |  |
|  | PD | **Ducts Works** |  | 2026-07-09 | 2026-07-12 |  |  |  |  |  |  |  |  |  |  |  |  |  |  |  |  |  |  |  |  |  |  |  |
| CO-R11.S06-TE-100 |  | Trench Excavation and Bedding Works for Ducts of Telecom Network-[Road 11]-[SW-6] | 3d | 2026-07-09 A | 2026-07-12 A | CO-R11.S06-EW-110, CO-R11.S05-TE-100 | 100% | 2026-06-14 | 2026-06-16 |  |  | Skilled Labor/Surveyor [6.84 h]; Foreman [6.84 h]; Excavator [56 h]; 6-way ducts, 50mm dia. HDPE [37.12]; Road crossing ducts (6-way) [3.01] | 5,593.87 | 5,593.87 | CO-R11.S06-TE-100 | 16 | 16 | PD | Ex | LM | DC | TE | DUCTS | CON | R11 | S06 | TE | TE |
| CO-R11.S06-TE-110 |  | Pipes Laying Works for Ducts of Telecom Network-[Road 11]-[SW-6] | 7d | 2026-07-09 A | 2026-07-12 A | CO-R11.S06-TE-100, PRO-R11-TE-DL-100 FF+3d | 100% | 2026-07-07 | 2026-07-14 |  |  | Labor/Helper [255.34 h]; Skilled Labor/Surveyor [13.68 h]; Foreman [13.68 h]; Plumber [127.67 h]; Excavator [112 h]; JCB [56 h]; Truck [112 h]; 6-way ducts, 50mm dia. HDPE [221.69]; Road crossing ducts (6-way) [18.06] | 33,423.29 | 33,423.29 | CO-R11.S06-TE-110 | 16 | 16 | PD | PL | LM | DC | TE | DUCTS | CON | R11 | S06 | TE | TE |
| CO-R11.S06-TE-120 |  | Pouring Plain Concrete Above Ducts of Telecom Network-[Road 11]-[SW-6] | 7d | 2026-07-09 A | 2026-07-12 A | CO-R11.S06-TE-110 | 100% | 2026-07-15 | 2026-07-22 |  |  | Skilled Labor/Surveyor [6.84 h]; Foreman [6.84 h]; Cons. Carpenter [127.67 h]; Block Mason [63.83 h]; 6-way ducts, 50mm dia. HDPE [37.12]; Road crossing ducts (6-way) [3.01] | 5,593.87 | 5,593.87 | CO-R11.S06-TE-120 | 16 | 16 | PD | PC | LM | DC | TE | DUCTS | CON | R11 | S06 | TE | TE |
| CO-R11.S06-TE-130 |  | Trench Backfilling and Compaction Works for Ducts of Telecom Network-[Road 11]-[SW-6] | 7d | 2026-07-09 A | 2026-07-12 A | CO-R11.S06-TE-120 | 100% | 2026-07-23 | 2026-07-30 |  |  | Skilled Labor/Surveyor [6.84 h]; Foreman [6.84 h]; Excavator [56 h]; 6-way ducts, 50mm dia. HDPE [74.23]; Road crossing ducts (6-way) [6.02] | 11,186.71 | 11,186.71 | CO-R11.S06-TE-130 | 16 | 16 | PD | BF | LM | DC | TE | DUCTS | CON | R11 | S06 | TE | TE |

| ID | WBS | Activity | Duration | Start | Finish | Predecessors | Complete | Planned start | Planned finish | Total float | Free float | Resources | Cost | Actual cost | Activity ID N | Seq | New Seq | 02- Network-WBS | 03- Activity | 04-UOM | 05-Discipline | 01- Network | 07-Weightage System | 08 Stage | 09 Roads | 10 side Walk | Discipline | New Discipline |
| --- | --- | --- | --- | --- | --- | --- | --- | --- | --- | --- | --- | --- | --- | --- | --- | --- | --- | --- | --- | --- | --- | --- | --- | --- | --- | --- | --- | --- |
|  | MH | **Manholes Works** |  | 2027-01-04 | 2027-01-27 |  |  |  |  |  |  |  |  |  |  |  |  |  |  |  |  |  |  |  |  |  |  |  |
| CO-R11.S06-TE-140 |  | Excavation Works for Manholes of Telecom Network-[Road 11]-[SW-6] | 7d | 2027-01-04 | 2027-01-11 | CO-R10.S04-ES-TE-140, CO-R11.S05-TE-140 SS, CO-R11.S06-TE-100 SS+6d, CO-R11.S06-TE-100 FF+6d, CO-R10.S04-WE-TE-140 |  |  |  | -133d | 0d | Skilled Labor/Surveyor [6.73 h]; Foreman [6.73 h]; Excavator [56 h]; Manhole Type 2 (2000x1000x1000) [0.4] | 1,283.59 |  | CO-R11.S06-TE-140 | 16 | 16 | MH | Ex | Each | MNH | TE | EXC | CON | R11 | S06 | TE | TE |
| CO-R11.S06-TE-150 |  | Installation Works for Manholes of Telecom Network-[Road 11]-[SW-6] | 7d | 2027-01-12 | 2027-01-19 | CO-R11.S06-TE-140, CO-R10.S04-ES-TE-150, PRO-R11-TE-DL-110 FF+3d, CO-R10.S04-WE-TE-150 |  |  |  | -133d | 0d | Skilled Labor/Surveyor [6.73 h]; Foreman [6.73 h]; Excavator [56 h]; Manhole Type 1 (2000x1000x1000) [1]; Manhole Type 2 (2000x1000x1000) [1] | 6,410.79 |  | CO-R11.S06-TE-150 | 16 | 16 | MH | HH | Each | MNH | TE | INSTALL-1 | CON | R11 | S06 | TE | TE |
| CO-R11.S06-TE-160 |  | Backfilling Works for Manholes of Telecom Network-[Road 11]-[SW-6] | 7d | 2027-01-20 | 2027-01-27 | CO-R11.S06-TE-150, CO-R10.S04-ES-TE-160, CO-R10.S04-WE-TE-160 |  |  |  | -133d | 26d | Skilled Labor/Surveyor [6.73 h]; Foreman [6.73 h]; Excavator [56 h]; Manhole Type 2 (2000x1000x1000) [0.4] | 1,283.59 |  | CO-R11.S06-TE-160 | 16 | 16 | MH | BF | Each | MNH | TE | (New)-2 | CON | R11 | S06 | TE | TE |
|  | MV | **Medium Voltage Network** |  | 2026-07-08 | 2026-07-13 |  |  |  |  |  |  |  |  |  |  |  |  |  |  |  |  |  |  |  |  |  |  |  |
|  | CW | **Cabling Works** |  | 2026-07-08 | 2026-07-13 |  |  |  |  |  |  |  |  |  |  |  |  |  |  |  |  |  |  |  |  |  |  |  |
| CO-R11.S06-MV-100 |  | Trench Excavation and Bedding Works for Medium Voltage Network-[Road 11]-[SW-6] | 12d | 2026-07-08 A | 2026-07-13 A | CO-R11.S06-SD-170 SS+3d, CO-R11.S06-SD-170 FF+3d, CO-R11.S06-EW-110, CO-R11.S06-TE-130 SS+3d, CO-R11.S06-TE-130 FF+3d, CO-R11.S05-MV-100 SS | 100% | 2026-07-27 | 2026-08-09 |  |  | Skilled Labor/Surveyor [17.1 h]; Foreman [17.1 h]; Excavator [144 h]; Excavation for Trench size 40cm wide and 80cm deep ( Maximum 1 cable 33kv) [164.51]; Excavation for Trench size 60cm wide and 80cm deep ( for Max two cables 33 kv) [10.03]; Excavation for Trench size 90cm wide and 80cm deep ( Maximum 3 cable 33kv) [41.13]; Excavation for Trench size 120cm wide and 80cm deep ( Maximum 4cable 33kv) [14.04]; Excavation for Trench size 150cm wide and 80cm deep ( Maximum 4cable 33kv) [52.16]; Duct bank for (2) 33 kv cables [6.02]; Duct bank for (4) 33 kv cables [38.12]; Duct bank for (6) 33 kv cables [17.05] | 19,721.49 | 19,721.49 | CO-R11.S06-MV-100 | 16 | 16 | CW | Ex | LM | CW | MV | EXC | CON | R11 | S06 | MV | MV |
| CO-R11.S06-MV-110 |  | Cable Laying Works for Medium Voltage Network-[Road 11]-[SW-6] | 12d | 2026-07-08 A | 2026-07-13 A | CO-R11.S06-MV-100 SS+3d, CO-R11.S06-MV-100 FF+3d, PRO-R11-MV-DL-100 FF+3d | 100% | 2026-07-30 | 2026-08-12 |  |  | Labor/Helper [328.29 h]; Electrician [328.29 h]; Low Current Technician [328.29 h]; 33kv 3Cx400 mmï¿½ Al XLPE / LLDPE /PVC Cable [777.43]; 33kv 3Cx400 mmï¿½ Al XLPE /LLDPE/PVC [3.01] | 106,767.47 | 106,767.47 | CO-R11.S06-MV-110 | 16 | 16 | CW | CL | LM | CW | MV | LAY | CON | R11 | S06 | MV | MV |
| CO-R11.S06-MV-120 |  | Trench Backfilling and Compaction Works for Medium Voltage Network-[Road 11]-[SW-6] | 12d | 2026-07-08 A | 2026-07-13 A | CO-R11.S06-MV-110 SS+3d, CO-R11.S06-MV-110 FF+3d, CO-R11.S06-PW-130 FF+3d | 100% | 2026-08-03 | 2026-08-16 |  |  | Skilled Labor/Surveyor [17.1 h]; Foreman [17.1 h]; Excavator [144 h]; Water Tank [36 h]; 33kv 3Cx400 mmï¿½ Al XLPE / LLDPE /PVC Cable [333.04]; 33kv 3Cx400 mmï¿½ Al XLPE /LLDPE/PVC [1] | 45,215.55 | 45,215.55 | CO-R11.S06-MV-120 | 16 | 16 | CW | BF | LM | CW | MV | BACK | CON | R11 | S06 | MV | MV |
|  | RD | **Road Works** |  | 2026-04-01 | 2026-09-10 |  |  |  |  |  |  |  |  |  |  |  |  |  |  |  |  |  |  |  |  |  |  |  |
|  | RD | **Pre-Bituminous Construction** |  | 2026-04-01 | 2026-04-16 |  |  |  |  |  |  |  |  |  |  |  |  |  |  |  |  |  |  |  |  |  |  |  |
| CO-R11.S06-RD-P-100 |  | Capping and Subgrade Layer for Road Works-[Road 11]-[SW-6] | 12d | 2026-04-01 A | 2026-04-07 A | CO-R11.S06-SD-130, CO-R11.S06-PW-130, PRO-R11-RD-DL-100 FF+3d, CO-R11.S06-TE-130, CO-R11.S06-MV-120 SS+3d, CO-R11.S06-MV-120 FF+3d, CO-R11.S06-SW-130 | 100% | 2026-08-06 | 2026-08-19 |  |  | Labor/Helper [328.29 h]; Skilled Labor/Surveyor [164.14 h]; Loader [144 h]; Grader [144 h]; Road Roller [144 h]; Water Tank [144 h]; 300mm capping layer underneath subgrade , CBR?15% [2808.77]; 300mm thick Subgrade, including subgrade preparation, CBR?25% [2808.77] | 222,571.1 | 222,571.1 | CO-R11.S06-RD-P-100 | 16 | 16 | AB | SG | Sq.m | BS | RD |  | CON | R11 | S06 | RD | RD |
| CO-R11.S06-RD-P-110 |  | Aggregate Base Course Layer for Road Works-[Road 11]-[SW-6] | 18d | 2026-04-08 A | 2026-04-16 A | CO-R11.S06-RD-P-100 SS+3d, CO-R11.S06-RD-P-100 FF+3d, CO-R11.S06-SD-170 SS+3d, CO-R11.S06-SD-170 FF+3d, PRO-R11-RD-DL-110 FF+3d | 100% | 2026-08-12 | 2026-09-01 |  |  | Labor/Helper [328.29 h]; Skilled Labor/Surveyor [164.14 h]; Foreman [164.14 h]; Loader [144 h]; Grader [144 h]; Road Roller [144 h]; Aggregate base course 200mm thick after compaction in two layers(Grading 1); CBR?80%; including watering, compaction and testing [1871.85] | 154,960.69 | 154,960.69 | CO-R11.S06-RD-P-110 | 16 | 16 | AB | BA | Sq.m | BS | RD |  | CON | R11 | S06 | RD | RD |
|  | LS | **Pavement Works** |  | 2026-06-01 | 2026-09-10 |  |  |  |  |  |  |  |  |  |  |  |  |  |  |  |  |  |  |  |  |  |  |  |
| CO-R11.S06-RD-P-120 |  | Fixing of Curbstone for Sidewalks Pavement-[Road 11]-[SW-6] | 18d | 2026-06-01 A | 2026-08-31 A | PRO-R11-RD-DL-130 FF+3d, CO-R10.S04-ES-RD-120, CO-R11.S06-RD-P-110 SS+3d, CO-R11.S06-RD-P-110 FF+3d, CO-R10.S04-WE-RD-120 | 100% | 2026-08-16 | 2026-09-05 |  |  | Labor/Helper [672.37 h]; Block Mason [1709.49 h]; Precast Concrete Kerb, Type K1 [1036.24]; Precast Concrete Kerb, Type L1 [2056.42] | 126,954.6 | 126,954.6 | CO-R11.S06-RD-P-120 | 16 | 16 | LS | CR | LM | LAND | RD |  | CON | R11 | S06 | RD | RD |
| CO-R11.S06-RD-P-130 |  | Fixing of Interlock Tiles for Sidewalks Pavement-[Road 11]-[SW-6] | 10d | 2026-08-25 A | 2026-09-10 A | PRO-R11-RD-DL-120 FF+3d, CO-R11.S06-RD-P-120 SS+3d, CO-R11.S06-RD-P-120 FF+3d, CO-R11-SW-TF-100, CO-R11-SD-TF-100 | 100% | 2026-10-03 | 2026-10-13 |  |  | Labor/Helper [435.25 h]; Block Mason [1129.97 h]; Interlocking block pavers for sidewalk/footpath 60mm thick on and including 30mm Sand Bedding, 200mm Aggregate subbase, all in accordance with authority standards and complete as per specifications [1850.78]; Extraover for Pedestrian ramps [4.01] | 90,436.2 | 90,436.2 | CO-R11.S06-RD-P-130 | 16 | 16 | LS | IL | Sq.m | LAND | RD |  | CON | R11 | S06 | RD | RD |
|  | 6 | **Road 14 Local 1 ( 584 LM )** |  | 2025-04-17 | 2027-06-10 |  |  |  |  |  |  |  |  |  |  |  |  |  |  |  |  |  |  |  |  |  |  |  |
|  | SW_7 | **SW_7** |  | 2025-04-17 | 2027-06-10 |  |  |  |  |  |  |  |  |  |  |  |  |  |  |  |  |  |  |  |  |  |  |  |
|  | EW | **Earthworks** |  | 2025-04-17 | 2025-05-03 |  |  |  |  |  |  |  |  |  |  |  |  |  |  |  |  |  |  |  |  |  |  |  |
|  | EW | **Earthworks** |  | 2025-04-17 | 2025-05-03 |  |  |  |  |  |  |  |  |  |  |  |  |  |  |  |  |  |  |  |  |  |  |  |
| CO-R14.S07-EW-100 |  | Roadway Excavation Works Upto Design Level for Earthworks-[Road 14]-[SW-7] | 10d | 2025-04-17 A | 2025-04-27 A | ENG-MS-RD-A-10, ENG-SH-RD-A-100, CO-R09.S02-EW-110 | 100% | 2025-07-09 | 2025-07-20 |  |  | Labor/Helper [4134.92 h]; Skilled Labor/Surveyor [610.98 h]; Foreman [610.98 h]; Roadway Excavation for cuttings; on any type of material for all depths including trimming and Preparation of excavated surfaces and disposal. [19513] | 125,532.14 | 125,532.14 | CO-R11.S07-EW-100 | 13 | 13 | EW | Ex | Cub.m | EW | EW |  | CON | R14 | S07 | EW | EW |
| CO-R14.S07-EW-110 |  | Embankments Works Upto Design Level for Earthworks-[Road 14]-[SW-7] | 10d | 2025-04-19 A | 2025-05-03 A | CO-R14.S07-EW-100 SS+2d, CO-R14.S07-EW-100 FF+2d, CO-R14.S07-EW-100, ENG-MS-RD-A-10, ENG-SH-RD-A-100 | 100% | 2025-07-21 | 2025-07-31 |  |  | Labor/Helper [4125.79 h]; Skilled Labor/Surveyor [403.6 h]; Foreman [540.44 h]; Embankments to the ROW, with suitable material other than top soil or rock according to specifications [32848.6] | 271,701.74 | 271,701.74 | CO-R11.S07-EW-110 | 13 | 13 | EW | BF | Cub.m | EW | EW |  | CON | R14 | S07 | EW | EW |
|  | SW | **Sewage Network** |  | 2025-08-10 | 2026-10-28 |  |  |  |  |  |  |  |  |  |  |  |  |  |  |  |  |  |  |  |  |  |  |  |
|  | ML | **Main Line Sections** |  | 2025-08-10 | 2025-08-21 |  |  |  |  |  |  |  |  |  |  |  |  |  |  |  |  |  |  |  |  |  |  |  |
| CO-R14.S07-SW-100 |  | Trench Excavation and Bedding Works for Main Lines of Sewage Network-[Road 14]-[SW-7] | 12d | 2025-08-10 A | 2025-08-14 A | CO-R14.S07-EW-110, ENG-MS-SW-ML-A-110, ENG-SH-SW-ML-A-110 | 100% | 2025-08-04 | 2025-08-17 |  |  | Nominal bore : 160mm; Depth : 0.0m - 1.5m [10.03]; Nominal bore : 200mm; Depth : 0.0m - 1.5m [17.05]; Nominal bore : 200mm; Depth : 1.5m - 2.5m [17.05]; Nominal bore : 200mm; Depth : 2.5m - 3.5m [28.09]; Nominal bore : 200mm; Depth : 3.5m - 4.5m [28.09]; Nominal bore : 200mm; Depth : 4.5m -5.5m [17.05]; Nominal bore : 200mm; Depth : 5.5m - 6.5m [24.08] | 45,205.34 | 45,205.34 | CO-R11.S07-SW-100 | 13 | 13 | ML | Ex | LM | ML | SW | EX | CON | R14 | S07 | SW | SW |
| CO-R14.S07-SW-120 |  | Pipes Laying Works for Main Lines of Sewage Network-[Road 14]-[SW-7] | 12d | 2025-08-16 A | 2025-08-18 A | CO-R14.S07-SW-100, PRO-R14-SW-DL-100 FF+3d | 100% | 2025-08-18 | 2025-08-31 |  |  | Nominal bore : 160mm; Depth : 0.0m - 1.5m [31.1]; Nominal bore : 200mm; Depth : 0.0m - 1.5m [50.16]; Nominal bore : 200mm; Depth : 1.5m - 2.5m [51.16]; Nominal bore : 200mm; Depth : 2.5m - 3.5m [85.27]; Nominal bore : 200mm; Depth : 3.5m - 4.5m [83.26]; Nominal bore : 200mm; Depth : 4.5m -5.5m [52.16]; Nominal bore : 200mm; Depth : 5.5m - 6.5m [71.22] | 135,264.73 | 135,264.73 | CO-R11.S07-SW-120 | 13 | 13 | ML | PL | LM | ML | SW | PIPE | CON | R14 | S07 | SW | SW |
| CO-R14.S07-SW-130 |  | Trench Backfilling and Compaction Works for Main Lines of Sewage Network-[Road 14]-[SW-7] | 12d | 2025-08-19 A | 2025-08-21 A | ENG-SH-SW-ML-A-110 FF, ENG-MS-SW-ML-A-110 FF, CO-R14.S07-SW-120, CO-R14.S07-SW-210 FF | 100% | 2025-09-01 | 2025-09-14 |  |  | Nominal bore : 160mm; Depth : 0.0m - 1.5m [6.02]; Nominal bore : 200mm; Depth : 0.0m - 1.5m [8.03]; Nominal bore : 200mm; Depth : 1.5m - 2.5m [8.03]; Nominal bore : 200mm; Depth : 2.5m - 3.5m [14.04]; Nominal bore : 200mm; Depth : 3.5m - 4.5m [14.04]; Nominal bore : 200mm; Depth : 4.5m -5.5m [8.03]; Nominal bore : 200mm; Depth : 5.5m - 6.5m [11.03] | 21,785.24 | 21,785.24 | CO-R11.S07-SW-130 | 13 | 13 | ML | BF | LM | ML | SW | BACK | CON | R14 | S07 | SW | SW |

| ID | WBS | Activity | Duration | Start | Finish | Predecessors | Complete | Planned start | Planned finish | Total float | Free float | Resources | Cost | Actual cost | Activity ID N | Seq | New Seq | 01- Network | 07-Weightage System | 08 Stage | 09 Roads | 10 side Walk | Discipline | New Discipline | 02- Network-WBS | 03- Activity | 04-UOM | 05-Discipline |
| --- | --- | --- | --- | --- | --- | --- | --- | --- | --- | --- | --- | --- | --- | --- | --- | --- | --- | --- | --- | --- | --- | --- | --- | --- | --- | --- | --- | --- |
|  | 1 | **Manholes** |  | 2025-08-19 | 2026-10-28 |  |  |  |  |  |  |  |  |  |  |  |  |  |  |  |  |  |  |  |  |  |  |  |
| CO-R14.S07-SW-160 |  | Excavation Works for Main Line Manholes of Sewage Network-[Road 14]-[SW-7] | 1d | 2025-08-19 A | 2025-08-21 A | CO-R14.S07-SW-120 SS | 100% | 2025-08-18 | 2025-08-18 |  |  | Depth: not exceeding 1.5m [0.3]; Depth: 1.5 - 2.5m [0.45]; Depth: 3.5 - 4.5m [0.15]; Depth: 5.5 - 6.5m [0.3]; Depth:6.5 - 7.5m [0.15] | 19,360 | 19,360 | CO-R11.S07-SW-160 | 13 | 13 | SW | EX | CON | R14 | S07 | SW | SW |  |  |  |  |
| CO-R14.S07-SW-170 |  | Installation RC Footing Works for Main Line Manholes of Sewage Network-[Road 14]-[SW-7] | 2d | 2025-08-23 A | 2025-08-25 A | CO-R14.S07-SW-160, PRO-R14-SW-DL-110 FF+3d | 100% | 2025-08-19 | 2025-08-20 |  |  | Depth: not exceeding 1.5m [0.2]; Depth: 1.5 - 2.5m [0.3]; Depth: 3.5 - 4.5m [0.1]; Depth: 5.5 - 6.5m [0.2]; Depth:6.5 - 7.5m [0.1] | 12,906.33 | 12,906.33 | CO-R11.S07-SW-170 | 13 | 13 | SW | RC F | CON | R14 | S07 | SW | SW |  |  |  |  |
| CO-R14.S07-SW-180 |  | Install Grp Liner Wall Works for Main Line Manholes of Sewage Network-[Road 14]-[SW-7] | 4d | 2025-08-26 A | 2025-08-28 A | CO-R14.S07-SW-170 | 100% | 2025-08-21 | 2025-08-25 |  |  | Depth: not exceeding 1.5m [1]; Depth: 1.5 - 2.5m [1]; Depth: 3.5 - 4.5m [0.4]; Depth: 5.5 - 6.5m [1]; Depth:6.5 - 7.5m [0.4] | 57,000.65 | 57,000.65 | CO-R11.S07-SW-180 | 13 | 13 | SW | LP | CON | R14 | S07 | SW | SW |  |  |  |  |
| CO-R14.S07-SW-200 |  | Backfilling Works for Main Line Manholes of Sewage Network-[Road 14]-[SW-7] | 4d | 2025-08-30 A | 2025-08-31 A | CO-R14.S07-SW-190 | 100% | 2025-08-27 | 2025-08-31 |  |  | Depth: not exceeding 1.5m [0.3]; Depth: 1.5 - 2.5m [0.45]; Depth: 3.5 - 4.5m [0.15]; Depth: 5.5 - 6.5m [0.3]; Depth:6.5 - 7.5m [0.15] | 19,360 | 19,360 | CO-R11.S07-SW-200 | 13 | 13 | SW | BACK | CON | R14 | S07 | SW | SW |  |  |  |  |
| CO-R14.S07-SW-190 |  | Pouring Grp Liner Wall Works for Main Line Manholes of Sewage Network-[Road 14]-[SW-7] | 1d | 2026-07-01 A | 2026-07-07 A | CO-R14.S07-SW-180 | 100% | 2025-08-26 | 2025-08-26 |  |  | Depth: not exceeding 1.5m [0.1]; Depth: 1.5 - 2.5m [0.15]; Depth: 3.5 - 4.5m [0.05]; Depth: 5.5 - 6.5m [0.1]; Depth:6.5 - 7.5m [0.05] | 6,453.67 | 6,453.67 | CO-R11.S07-SW-190 | 13 | 13 | SW | (New) | CON | R14 | S07 | SW | SW |  |  |  |  |
| CO-R14.S07-SW-210 |  | Testing Works for Main Line Manholes of Sewage Network-[Road 14]-[SW-7] | 1d | 2026-10-28 A | 2026-10-28 A | CO-R14.S07-SW-200 | 100% |  |  |  |  | Depth: not exceeding 1.5m [0.1]; Depth: 1.5 - 2.5m [0.15]; Depth: 3.5 - 4.5m [0.05]; Depth: 5.5 - 6.5m [0.1]; Depth:6.5 - 7.5m [0.05] | 6,453.67 | 6,453.67 | CO-R11.S07-SW-210 | 13 | 13 | SW | T&COV | CON | R14 | S07 | SW | SW |  |  |  |  |
|  | SD | **Storm Drainage Network** |  | 2025-08-10 | 2026-06-04 |  |  |  |  |  |  |  |  |  |  |  |  |  |  |  |  |  |  |  |  |  |  |  |
|  | ML | **Main Line Sections** |  | 2025-08-10 | 2025-08-28 |  |  |  |  |  |  |  |  |  |  |  |  |  |  |  |  |  |  |  |  |  |  |  |
| CO-R14.S07-SD-100 |  | Trench Excavation and Bedding Works for Main Lines of Storm Drainage Network-[Road 14]-[SW-7] | 10d | 2025-08-10 A | 2025-08-14 A | ENG-SH-SD-ML-A-110, CO-R14.S07-EW-110, CO-R14.S07-EW-100, CO-R14.S07-SW-130 SS+3d, CO-R14.S07-SW-130 FF+3d, ENG-MS-SD-ML-A-110, CO-R09.S02-SD-100 | 100% | 2025-10-02 | 2025-10-13 |  |  | Pipe with diameter 600mm ; depth: 1.51m - 2.5m [34.11]; Pipe with diameter 700mm ; depth: 1.51m - 2.5m [44.14]; Pipe with diameter 1200mm ; depth: 2.51 - 3.5m [137.43] | 177,417.85 | 177,417.85 | CO-R11.S07-SD-100 | 13 | 13 | SD | EX | CON | R14 | S07 | SD | SD | ML | Ex | LM | ML |
| CO-R14.S07-SD-120 |  | Pipes Laying Works for Main Lines of Storm Drainage Network-[Road 14]-[SW-7] | 10d | 2025-08-16 A | 2025-08-18 A | CO-R14.S07-SD-100, CO-R09.S02-SD-120 | 100% | 2025-10-14 | 2025-10-25 |  |  | Pipe with diameter 600mm ; depth: 1.51m - 2.5m [102.32]; Pipe with diameter 700mm ; depth: 1.51m - 2.5m [132.41]; Pipe with diameter 1200mm ; depth: 2.51 - 3.5m [411.28] | 531,220.13 | 531,220.13 | CO-R11.S07-SD-120 | 13 | 13 | SD | PIPE | CON | R14 | S07 | SD | SD | ML | PL | LM | ML |
| CO-R14.S07-SD-130 |  | Trench Backfilling and Compaction Works for Main Lines of Storm Drainage Network-[Road 14]-[SW-7] | 15d | 2025-08-27 A | 2025-08-28 A | CO-R14.S07-SD-120 SS+3d, CO-R14.S07-SD-120 FF+3d, ENG-SH-SD-ML-A-110 FF, CO-R11.S05-SD-130, ENG-MS-SD-ML-A-110 FF, CO-R14.S07-SD-120, CO-R14.S07-SD-220 FF | 100% | 2026-01-15 | 2026-02-01 |  |  | Pipe with diameter 600mm ; depth: 1.51m - 2.5m [17.05]; Pipe with diameter 700mm ; depth: 1.51m - 2.5m [23.07]; Pipe with diameter 1200mm ; depth: 2.51 - 3.5m [68.21] | 88,683.9 | 88,683.9 | CO-R11.S07-SD-130 | 13 | 13 | SD | BACK | CON | R14 | S07 | SD | SD | ML | BF | LM | ML |
|  | MH | **Manholes** |  | 2025-08-16 | 2026-06-04 |  |  |  |  |  |  |  |  |  |  |  |  |  |  |  |  |  |  |  |  |  |  |  |
| CO-R14.S07-SD-180 |  | Trench Excavation and Bedding Works for Manholes of Storm Drainage Network-[Road 14]-[SW-7] | 1d | 2025-08-16 A | 2025-08-17 A | PRO-SD-1DL-100, CO-R14.S07-SD-100 | 100% | 2025-10-14 | 2025-10-14 |  |  | MH ; depth: 0.0m - 1.5m [0.3]; MH ; depth: 1.51m - 2.5m [1]; MH ; depth: 1.51m - 2.5m [0.15] | 26,518.27 | 26,518.27 | CO-R11.S07-SD-180 | 13 | 13 | SD | EX | CON | R14 | S07 | SD | SD |  |  |  |  |
| CO-R14.S07-SD-190 |  | Install RC Footing Works for Manholes of Storm Drainage Network-[Road 14]-[SW-7] | 1d | 2025-08-18 A | 2025-08-20 A | CO-R14.S07-SD-180 | 100% | 2025-10-15 | 2025-10-15 |  |  | MH ; depth: 0.0m - 1.5m [0.1]; MH ; depth: 1.51m - 2.5m [0.2]; MH ; depth: 1.51m - 2.5m [0.05] | 6,567.02 | 6,567.02 | CO-R11.S07-SD-190 | 13 | 13 | SD | RC F | CON | R14 | S07 | SD | SD |  |  |  |  |
| CO-R14.S07-SD-200 |  | Install RC Wall Rings & Slab Works for Manholes of Storm Drainage Network-[Road 14]-[SW-7] | 4d | 2025-08-21 A | 2025-08-23 A | CO-R14.S07-SD-190 | 100% | 2025-10-16 | 2025-10-20 |  |  | MH ; depth: 0.0m - 1.5m [1]; MH ; depth: 1.51m - 2.5m [3.01]; MH ; depth: 1.51m - 2.5m [0.45] | 81,940.22 | 81,940.22 | CO-R11.S07-SD-200 | 13 | 13 | SD | RC W | CON | R14 | S07 | SD | SD |  |  |  |  |
| CO-R14.S07-SD-220 |  | Backfilling Works for Manholes of Storm Drainage Network-[Road 14]-[SW-7] | 7d | 2025-08-24 A | 2025-08-26 A | CO-R14.S07-SD-210 | 100% | 2025-10-22 | 2025-10-29 |  |  | MH ; depth: 0.0m - 1.5m [0.4]; MH ; depth: 1.51m - 2.5m [1]; MH ; depth: 1.51m - 2.5m [0.2] | 29,703.24 | 29,703.24 | CO-R11.S07-SD-220 | 13 | 13 | SD | BACK | CON | R14 | S07 | SD | SD |  |  |  |  |
| CO-R14.S07-SD-210 |  | Testing Works for Manholes of Storm Drainage Network-[Road 14]-[SW-7] | 1d | 2026-06-04 A | 2026-06-04 A | CO-R14.S07-SD-200 | 100% | 2025-10-21 | 2025-10-21 |  |  | MH ; depth: 0.0m - 1.5m [0.2]; MH ; depth: 1.51m - 2.5m [0.4]; MH ; depth: 1.51m - 2.5m [0.1] | 13,134.04 | 13,134.04 | CO-R11.S07-SD-210 | 13 | 13 | SD | T&COV | CON | R14 | S07 | SD | SD |  |  |  |  |
|  | CB | **Catch Basin Sections** |  | 2025-12-01 | 2025-12-08 |  |  |  |  |  |  |  |  |  |  |  |  |  |  |  |  |  |  |  |  |  |  |  |
| CO-R14.S07-SD-140 |  | Trench Excavation and Bedding Works for Catch Basins of Storm Drainage Network-[Road 14]-[SW-7] | 6d | 2025-12-01 A | 2025-12-08 A | CO-R14.S07-EW-110, ENG-SH-SD-CB-A-110, ENG-MS-SD-CB-A-110, CO-R14.S07-SD-220 | 100% | 2025-11-10 | 2025-11-16 |  |  | Pipe with diameter 300mm ; depth: 0 - 1.5m [103.32]; Pipe with diameter 400mm ; depth: 0 - 1.5m [6.02] | 25,929.07 | 25,929.07 | CO-R11.S07-SD-140 | 13 | 13 | SD | EX | CON | R14 | S07 | SD | SD | CB | Ex | Each | CB |
| CO-R14.S07-SD-150 |  | Installation and Pipes Laying Connection Works for Catch Basins of Storm Drainage Network-[Road 14]-[SW-7] | 7d | 2025-12-01 A | 2025-12-08 A | CO-R14.S07-SD-140 | 100% | 2025-11-17 | 2025-11-24 |  |  | Pipe with diameter 300mm ; depth: 0 - 1.5m [308.97]; Pipe with diameter 400mm ; depth: 0 - 1.5m [18.06] | 77,553.36 | 77,553.36 | CO-R11.S07-SD-150 | 13 | 13 | SD | INSTALL | CON | R14 | S07 | SD | SD | CB | CB | Each | CB |
| CO-R14.S07-SD-160 |  | Testing Works for Catch Basins of Storm Drainage Network-[Road 14]-[SW-7] | 4d | 2025-12-01 A | 2025-12-08 A | CO-R14.S07-SD-150 FS+3d, CO-R14.S07-SD-120 | 100% | 2025-11-29 | 2025-12-02 |  |  | Pipe with diameter 300mm ; depth: 0 - 1.5m [69.22]; Pipe with diameter 400mm ; depth: 0 - 1.5m [4.01] | 17,363.65 | 17,363.65 | CO-R11.S07-SD-160 | 13 | 13 | SD | TEST | CON | R14 | S07 | SD | SD | CB | PL | Each | CB |
| CO-R14.S07-SD-170 |  | Trench Backfilling and Compaction Works for Catch Basins of Storm Drainage Network-[Road 14]-[SW-7] | 7d | 2025-12-01 A | 2025-12-08 A | CO-R14.S07-SD-160 | 100% | 2025-12-03 | 2025-12-10 |  |  | Pipe with diameter 300mm ; depth: 0 - 1.5m [137.43]; Pipe with diameter 400mm ; depth: 0 - 1.5m [8.03] | 34,493.46 | 34,493.46 | CO-R11.S07-SD-170 | 13 | 13 | SD | BACK | CON | R14 | S07 | SD | SD | CB | BF | Each | CB |
|  | IR | **Irrigation Network** |  | 2025-10-11 | 2026-12-01 |  |  |  |  |  |  |  |  |  |  |  |  |  |  |  |  |  |  |  |  |  |  |  |
|  | ML | **Main Line Pipes** |  | 2025-10-11 | 2026-12-01 |  |  |  |  |  |  |  |  |  |  |  |  |  |  |  |  |  |  |  |  |  |  |  |
| CO-R14.S07-IR-130 |  | Trench Backfilling and Compaction Works for Main Lines of Irrigation Network-[Road 14]-[SW-7] | 10d | 2025-10-11 A | 2025-10-12 A | CO-R14.S07-IR-110 | 100% | 2026-01-08 | 2026-01-19 |  |  | 125 mm pipe; depth 0.0m - 1.5m [175.55]; 280 mm pipe; depth 0.0m - 1.5m [68.21]; 280 mm pipe; depth 1.5m - 3.0m [7.02] | 35,548.31 | 35,548.31 | CO-R11.S07-IR-130 | 13 | 13 | IR | BACK | CON | R14 | S07 | IR | IR | ML | BF | LM | ML |
| CO-R14.S07-IR-100 |  | Trench Excavation and Bedding Works for Main Lines of Irrigation Network-[Road 14]-[SW-7] | 7d | 2025-10-13 A | 2025-10-13 A | ENG-SH-IR-ML-A-110, CO-R14.S07-EW-110, CO-R14.S07-SD-170, ENG-MS-IR-ML-A-110 | 100% | 2025-12-11 | 2025-12-18 |  |  | 125 mm pipe; depth 0.0m - 1.5m [350.09]; 280 mm pipe; depth 0.0m - 1.5m [134.42]; 280 mm pipe; depth 1.5m - 3.0m [14.04] | 70,430.83 | 70,430.83 | CO-R11.S07-IR-100 | 13 | 13 | IR | EX | CON | R14 | S07 | IR | IR | ML | Ex | LM | ML |
| CO-R14.S07-IR-110 |  | Pipes Laying Works for Main Lines of Irrigation Network-[Road 14]-[SW-7] | 10d | 2025-10-13 A | 2025-10-13 A | CO-R14.S07-IR-100, CO-R14.S07-IR-100 FF+3d, PRO-R11-IR-DL-140 FF+3d, PRO-R14-IR-DL-100 FS+3d | 100% | 2025-12-20 | 2025-12-30 |  |  | 125 mm pipe; depth 0.0m - 1.5m [1053.29]; 280 mm pipe; depth 0.0m - 1.5m [404.26]; 280 mm pipe; depth 1.5m - 3.0m [42.13] | 211,817.36 | 211,817.36 | CO-R11.S07-IR-110 | 13 | 13 | IR | PIPE | CON | R14 | S07 | IR | IR | ML | PL | LM | ML |
| CO-R14.S07-IR-120 |  | Installation Works for Main Line Valves of Irrigation Network-[Road 14]-[SW-7] | 7d | 2026-11-24 | 2026-12-01 | CO-R14.S07-IR-110, PRO-R11-IR-DL-150 FF+3d, PRO-R14-IR-DL-110 |  |  |  | -29d | 111d | Gate valves dia (90)mm on pipes with dia (125) mm. [13.04]; Gate valves dia (200)mm on pipes with dia (280) mm. [11.03]; Air valves with dia (50mm) mm on pipes with dia(125)mm. [1]; Air valve chamber; on 125 mm dia pipeline Depth 1.5 - 3 m [1] | 74,779.91 |  | CO-R11.S07-IR-120 | 13 | 13 | IR | VALV | CON | R14 | S07 | IR | IR | ML | VI | Each | ML |

| ID | WBS | Activity | Duration | Start | Finish | Predecessors | Complete | Planned start | Planned finish | Total float | Free float | Resources | Cost | Actual cost | Activity ID N | Seq | New Seq | 02- Network-WBS | 03- Activity | 04-UOM | 05-Discipline | 01- Network | 07-Weightage System | 08 Stage | 09 Roads | 10 side Walk | Discipline | New Discipline |
| --- | --- | --- | --- | --- | --- | --- | --- | --- | --- | --- | --- | --- | --- | --- | --- | --- | --- | --- | --- | --- | --- | --- | --- | --- | --- | --- | --- | --- |
|  | SL | **Street Lighting Network** |  | 2026-09-29 | 2026-12-21 |  |  |  |  |  |  |  |  |  |  |  |  |  |  |  |  |  |  |  |  |  |  |  |
|  | LP | **Lighting Poles Works** |  | 2026-10-06 | 2026-12-14 |  |  |  |  |  |  |  |  |  |  |  |  |  |  |  |  |  |  |  |  |  |  |  |
| CO-R14.S07-SL-100 |  | Foundation Excavation Works for Lighting Poles of Street Lighting Network-[Road 14]-[SW-7] | 12d | 2026-10-06 A | 2026-10-12 A | CO-R14.S07-EW-110, ENG-SH-SL-A-110, CO-R14.S07-EW-100, ENG-MS-SL-A-110, CO-R14.S07-IR-130 | 100% | 2026-01-20 | 2026-02-02 |  |  | Lighting poles complete with two arms, including the power distribution box, screws, cables, 12 meters in height. [0.2] | 429.9 | 429.9 | CO-R11.S07-SL-100 | 13 | 13 | LP | Ex | Each | POL | SL | EX | CON | R14 | S07 | SL | SL |
| CO-R14.S07-SL-110 |  | Installation Works for Lighting Poles Foundation of Street Lighting Network-[Road 14]-[SW-7] | 12d | 2026-10-06 A | 2026-10-12 A | CO-R14.S07-SL-100 | 100% | 2026-02-03 | 2026-02-16 |  |  | Lighting poles complete with two arms, including the power distribution box, screws, cables, 12 meters in height. [1]; Reinforced concrete foundation, for 12m high lighting columns With Drawpits [6.02] | 4,395.03 | 4,395.03 | CO-R11.S07-SL-110 | 13 | 13 | LP | LPF | Each | POL | SL | INSTALL | CON | R14 | S07 | SL | SL |
| CO-R14.S07-SL-120 |  | Installation Works for Lighting Poles of Street Lighting Network-[Road 14]-[SW-7] | 17.5d | 2026-10-06 A | 2026-10-12 A | CO-R14.S07-SL-110 | 100% | 2026-02-17 | 2026-03-09 |  |  | Lighting poles complete with two arms, including the power distribution box, screws, cables, 12 meters in height. [3.01] | 6,475.12 | 6,475.12 | CO-R11.S07-SL-120 | 13 | 13 | LP | LP | Each | POL | SL | POLES | CON | R14 | S07 | SL | SL |
| CO-R14.S07-SL-210 |  | Backfilling Works for Lighting Poles of Street Lighting Network-[Road 14]-[SW-7] | 12d | 2026-10-06 A | 2026-10-12 A | CO-R14.S07-SL-120 SS, CO-R14.S07-SL-120 FF | 100% | 2026-05-19 | 2026-06-06 |  |  | Lighting poles complete with two arms, including the power distribution box, screws, cables, 12 meters in height. [0.4] | 860.83 | 860.83 | CO-R11.S07-SL-210 | 13 | 13 |  |  |  |  | SL | BACK | CON | R14 | S07 | SL | SL |
| CO-R14.S07-SL-130 |  | Installation Works for Lighting Fixtures With Drop Wire of Street Lighting Network-[Road 14]-[SW-7] | 18d | 2026-11-24 | 2026-12-14 | CO-R14.S07-SL-120 SS+5d, CO-R14.S07-SL-120 FF+5d, CO-R14.S07-SL-200 FF |  |  |  | -99d | 64d | Street Lighting( LED) Luminaire,(Type B) complete with control gear and lamp, ?.40600 Lumen [11.03] | 10,864.03 |  | CO-R11.S07-SL-130 | 13 | 13 | LP | LPA | Each | POL | SL | INSTALL | CON | R14 | S07 | SL | SL |
| CO-R14.S07-SL-200 |  | Testing Works for Lighting Poles of Street Lighting Network-[Road 14]-[SW-7] | 5d | 2026-11-24 | 2026-11-29 | CO-R14.S07-SL-210, CO-R14.S07-SL-120 |  |  |  | -86d | 13d | Lighting poles complete with two arms, including the power distribution box, screws, cables, 12 meters in height. [1] | 2,158.71 |  | CO-R11.S07-SL-200 | 13 | 13 |  |  |  |  | SL | TESTING | CON | R14 | S07 | SL | SL |
|  | CW | **Cabling Works** |  | 2026-09-29 | 2026-10-04 |  |  |  |  |  |  |  |  |  |  |  |  |  |  |  |  |  |  |  |  |  |  |  |
| CO-R14.S07-SL-140 |  | Trench Excavation and Bedding Works for Street Lighting Network-[Road 14]-[SW-7] | 10d | 2026-09-29 A | 2026-10-04 A | ENG-SH-SL-A-110, CO-R14.S07-IR-130, CO-R14.S07-EW-110, CO-R14.S07-SL-120, CO-R14.S07-SL-110, ENG-MS-SL-A-110 | 100% | 2026-03-09 | 2026-03-24 |  |  |  |  |  | CO-R11.S07-SL-140 | 13 | 13 | CW | Ex | LM | CB | SL | EXC | CON | R14 | S07 | SL | SL |
| CO-R14.S07-SL-150 |  | Cable Laying Works for Street Lighting Network-[Road 14]-[SW-7] | 10d | 2026-09-29 A | 2026-10-04 A | CO-R14.S07-SL-140 | 100% | 2026-03-24 | 2026-04-05 |  |  |  |  |  | CO-R11.S07-SL-150 | 13 | 13 | CW | CL | LM | CB | SL | LAYING | CON | R14 | S07 | SL | SL |
| CO-R14.S07-SL-160 |  | Trench Backfilling and Compaction Works for Street Lighting Network-[Road 14]-[SW-7] | 10d | 2026-09-29 A | 2026-10-04 A | CO-R14.S07-SL-150, CO-R14.S07-IR-130 | 100% | 2026-04-05 | 2026-04-16 |  |  |  |  |  | CO-R11.S07-SL-160 | 13 | 13 | CW | BF | LM | CB | SL | BACK | CON | R14 | S07 | SL | SL |
|  | DPB | **Distrubution Panel Boards** |  | 2026-11-24 | 2026-12-21 |  |  |  |  |  |  |  |  |  |  |  |  |  |  |  |  |  |  |  |  |  |  |  |
| CO-R14.S07-SL-170 |  | Foundation Excavation Works For Panel Boards of Street Lighting Network-[Road 14]-[SW-7] | 18d | 2026-11-24 | 2026-12-14 | CO-R14.S07-EW-110, ENG-SH-SL-A-110, ENG-MS-SL-A-110 |  |  |  | -109d | 0d |  |  |  | CO-R11.S07-SL-170 | 13 | 13 | DB | Ex | Each | DS | SL | EXC | CON | R14 | S07 | SL | SL |
| CO-R14.S07-SL-180 |  | Installation Works for Panel Board Concrete Foundations of Street Lighting Network-[Road 14]-[SW-7] | 18d | 2026-11-28 | 2026-12-17 | CO-R14.S07-SL-170 SS+3d, CO-R14.S07-SL-170 FF+3d |  |  |  | -109d | 0d |  |  |  | CO-R11.S07-SL-180 | 13 | 13 | DB | PBF | Each | DS | SL | INSTALL | CON | R14 | S07 | SL | SL |
| CO-R14.S07-SL-220 |  | A wall of concrete blocks to install the KWH meter of Street Lighting Network-[Road 14]-[SW-7] | 18d | 2026-11-28 | 2026-12-17 | CO-R14.S07-SL-180 SS, CO-R14.S07-SL-180 FF |  |  |  | -106d | 85d |  |  |  | CO-R11.S07-SL-220 | 13 | 13 | DB |  | Each | DS | SL | wall | CON | R14 | S07 | SL | SL |
| CO-R14.S07-SL-190 |  | Installation Works for Lighting Panel Boards of Street Lighting Network-[Road 14]-[SW-7] | 18d | 2026-12-01 | 2026-12-21 | CO-R14.S07-SL-180 SS+3d, CO-R14.S07-SL-180 FF+3d |  |  |  | -109d | 82d |  |  |  | CO-R11.S07-SL-190 | 13 | 13 | DB | PB | Each | DS | SL | INST BO | CON | R14 | S07 | SL | SL |
|  | TE | **Telecom Network** |  | 2027-01-31 | 2027-02-28 |  |  |  |  |  |  |  |  |  |  |  |  |  |  |  |  |  |  |  |  |  |  |  |
|  | PD | **Ducts Works** |  | 2027-01-31 | 2027-02-28 |  |  |  |  |  |  |  |  |  |  |  |  |  |  |  |  |  |  |  |  |  |  |  |
| CO-R14.S07-TE-100 |  | Trench Excavation and Bedding Works for Ducts of Telecom Network-[Road 14]-[SW-7] | 3d | 2027-01-31 | 2027-02-02 | CO-R14.S07-IR-130 SS+3d, CO-R14.S07-IR-130 FF+3d, CO-R14.S07-SL-160 SS+5d, CO-R14.S07-SL-160 FF+5d, CO-R14.S07-EW-110, CO-R09.S02-TE-100 |  |  |  | -159d | 0d | 6-way ducts, 50mm dia. HDPE [54.17]; Road crossing ducts (6-way) [4.01] | 8,098.75 |  | CO-R11.S07-TE-100 | 13 | 13 | PD | Ex | LM | DC | TE | DUCTS | CON | R14 | S07 | TE | TE |
| CO-R14.S07-TE-110 |  | Pipes Laying Works for Ducts of Telecom Network-[Road 14]-[SW-7] | 7d | 2027-02-03 | 2027-02-10 | CO-R14.S07-TE-100, CO-R11.S05-TE-110 |  |  |  | -152d | 0d | 6-way ducts, 50mm dia. HDPE [328.02]; Road crossing ducts (6-way) [28.09] | 49,689.21 |  | CO-R11.S07-TE-110 | 13 | 13 | PD | PL | LM | DC | TE | DUCTS | CON | R14 | S07 | TE | TE |
| CO-R14.S07-TE-120 |  | Pouring Plain Concrete Above Ducts of Telecom Network-[Road 14]-[SW-7] | 7d | 2027-02-11 | 2027-02-18 | CO-R14.S07-TE-110, CO-R11.S05-TE-120 |  |  |  | -152d | 0d | 6-way ducts, 50mm dia. HDPE [54.17]; Road crossing ducts (6-way) [4.01] | 8,098.75 |  | CO-R11.S07-TE-120 | 13 | 13 | PD | PC | LM | DC | TE | DUCTS | CON | R14 | S07 | TE | TE |
| CO-R14.S07-TE-130 |  | Trench Backfilling and Compaction Works for Ducts of Telecom Network-[Road 14]-[SW-7] | 7d | 2027-02-20 | 2027-02-28 | CO-R14.S07-TE-120, CO-R11.S05-TE-130 |  |  |  | -152d | 20d | 6-way ducts, 50mm dia. HDPE [109.34]; Road crossing ducts (6-way) [10.03] | 16,677.44 |  | CO-R11.S07-TE-130 | 13 | 13 | PD | BF | LM | DC | TE | DUCTS | CON | R14 | S07 | TE | TE |
|  | MH | **Manholes Works** |  | 2027-02-03 | 2027-02-28 |  |  |  |  |  |  |  |  |  |  |  |  |  |  |  |  |  |  |  |  |  |  |  |
| CO-R14.S07-TE-140 |  | Excavation Works for Manholes of Telecom Network-[Road 14]-[SW-7] | 7d | 2027-02-03 | 2027-02-10 | CO-R11.S05-TE-140, CO-R14.S07-TE-100 |  |  |  | -159d | 0d | Manhole Type 2 (2000x1000x1000) [1] | 3,218.67 |  | CO-R11.S07-TE-140 | 13 | 13 | MH | Ex | Each | MNH | TE | EXC | CON | R14 | S07 | TE | TE |
| CO-R14.S07-TE-150 |  | Installation Works for Manholes of Telecom Network-[Road 14]-[SW-7] | 7d | 2027-02-11 | 2027-02-18 | CO-R14.S07-TE-140, CO-R11.S05-TE-150 |  |  |  | -152d | 0d | Manhole Type 1 (2000x1000x1000) [1]; Manhole Type 2 (2000x1000x1000) [3.01] | 12,848.12 |  | CO-R11.S07-TE-150 | 13 | 13 | MH | HH | Each | MNH | TE | INSTALL-1 | CON | R14 | S07 | TE | TE |
| CO-R14.S07-TE-160 |  | Backfilling Works for Manholes of Telecom Network-[Road 14]-[SW-7] | 7d | 2027-02-20 | 2027-02-28 | CO-R14.S07-TE-150, CO-R11.S05-TE-160 |  |  |  | -152d | 20d | Manhole Type 2 (2000x1000x1000) [1] | 3,218.67 |  | CO-R11.S07-TE-160 | 13 | 13 | MH | BF | Each | MNH | TE | (New)-2 | CON | R14 | S07 | TE | TE |

| ID | WBS | Activity | Duration | Start | Finish | Predecessors | Complete | Planned start | Planned finish | Total float | Free float | Resources | Cost | Actual cost | Activity ID N | Seq | New Seq | 02- Network-WBS | 03- Activity | 04-UOM | 05-Discipline | 01- Network | 08 Stage | 09 Roads | 10 side Walk | Discipline | New Discipline | 07-Weightage System |
| --- | --- | --- | --- | --- | --- | --- | --- | --- | --- | --- | --- | --- | --- | --- | --- | --- | --- | --- | --- | --- | --- | --- | --- | --- | --- | --- | --- | --- |
|  | RD | **Road Works** |  | 2026-08-18 | 2027-06-10 |  |  |  |  |  |  |  |  |  |  |  |  |  |  |  |  |  |  |  |  |  |  |  |
|  | RD | **Pre-Bituminous Construction** |  | 2026-08-18 | 2026-09-09 |  |  |  |  |  |  |  |  |  |  |  |  |  |  |  |  |  |  |  |  |  |  |  |
| CO-R14.S07-RD-P-100 |  | Capping and Subgrade Layer for Road Works-[Road 14]-[SW-7] | 18d | 2026-08-18 A | 2026-08-23 A | ENG-SH-RD-A-100, CO-R14.S07-SD-130, CO-R14.S07-SW-130, CO-R14.S07-SL-160 SS+3d, CO-R14.S07-SL-160 FF+3d, ENG-MS-RD-A-10 | 100% | 2026-08-01 | 2026-08-20 |  |  | 300mm capping layer underneath subgrade , CBR?15% [4143.94]; 300mm thick Subgrade, including subgrade preparation, CBR?25% [4143.94] | 328,371.54 | 328,371.54 | CO-R11.S07-RD-P-100 | 13 | 13 | AB | SG | Sq.m | BS | RD | CON | R14 | S07 | RD | RD |  |
| CO-R14.S07-RD-P-110 |  | Aggregate Base Course Layer for Road Works-[Road 14]-[SW-7] | 18d | 2026-09-05 A | 2026-09-09 A | CO-R14.S07-RD-P-100 SS+3d, CO-R14.S07-RD-P-100 FF+3d, CO-R14.S07-SD-170 SS+3d, CO-R14.S07-SD-170 FF+3d, CO-R11.S05-RD-P-110 | 100% | 2026-09-05 | 2026-09-26 |  |  | Aggregate base course 200mm thick after compaction in two layers(Grading 1); CBR?80%; including watering, compaction and testing [2763.63] | 228,786.85 | 228,786.85 | CO-R11.S07-RD-P-110 | 13 | 13 | AB | BA | Sq.m | BS | RD | CON | R14 | S07 | RD | RD |  |
|  | LS | **Pavement Works** |  | 2026-08-25 | 2027-06-10 |  |  |  |  |  |  |  |  |  |  |  |  |  |  |  |  |  |  |  |  |  |  |  |
| CO-R14.S07-RD-P-120 |  | Fixing of Curbstone for Sidewalks Pavement-[Road 14]-[SW-7] | 18d | 2026-08-25 A | 2026-08-31 A | CO-R11.S05-RD-P-120, CO-R14.S07-RD-P-110 SS+3d, CO-R14.S07-RD-P-110 FF+3d | 100% | 2026-09-08 | 2026-09-29 |  |  | Skilled Labor/Surveyor [164.14 h]; Block Mason [1313.15 h]; Precast Concrete Kerb, Type K1 [1528.78]; Precast Concrete Kerb, Type L1 [3034.48] | 187,323.01 | 187,323.01 | CO-R11.S07-RD-P-120 | 13 | 13 | LS | CR | LM | LAND | RD | CON | R14 | S07 | RD | RD |  |
| CO-R14.S07-RD-P-130 |  | Fixing of Interlock Tiles for Sidewalks Pavement-[Road 14]-[SW-7] | 12d | 2027-05-29 | 2027-06-10 | CO-R14.S07-RD-P-120 SS+3d, CO-R14.S07-RD-P-120 FF+3d, CO-R11.S05-RD-P-130, CO-R14-PW-TF-100, CO-R14-PW-TF-110, CO-R14-PW-TF-120, CO-R14-SW-TF-100, CO-R14-SW-TF-110, CO-R14-SW-TF-130, CO-R11-SL-TF-180, CO-R11-SL-TF-190, CO-R11-IR-TF-140, CO-R11-MV-TF-180 |  |  |  | -187d | 0d | Interlocking block pavers for sidewalk/footpath 60mm thick on and including 30mm Sand Bedding, 200mm Aggregate subbase, all in accordance with authority standards and complete as per specifications [2730.53]; Extraover for Pedestrian ramps [7.02] | 133,917.83 |  | CO-R11.S07-RD-P-130 | 13 | 13 | LS | IL | Sq.m | LAND | RD | CON | R14 | S07 | RD | RD |  |
|  | SW_8 | **SW_8** |  | 2025-04-23 | 2027-06-10 |  |  |  |  |  |  |  |  |  |  |  |  |  |  |  |  |  |  |  |  |  |  |  |
|  | EW | **Earthworks** |  | 2025-04-23 | 2025-05-03 |  |  |  |  |  |  |  |  |  |  |  |  |  |  |  |  |  |  |  |  |  |  |  |
|  | EW | **Earthworks** |  | 2025-04-23 | 2025-05-03 |  |  |  |  |  |  |  |  |  |  |  |  |  |  |  |  |  |  |  |  |  |  |  |
| CO-R14.S08-EW-100 |  | Roadway Excavation Works Upto Design Level for Earthworks-[Road 14]-[SW-8] | 12d | 2025-04-23 A | 2025-04-27 A | ENG-MS-RD-A-10, ENG-SH-RD-A-100, CO-R14.S07-EW-100 | 100% | 2025-07-21 | 2025-08-03 |  |  | Roadway Excavation for cuttings; on any type of material for all depths including trimming and Preparation of excavated surfaces and disposal. [19513] | 125,532.14 | 125,532.14 | CO-R11.S08-EW-100 | 14 | 14 | EW | Ex | Cub.m | EW | EW | CON | R14 | S08 | EW | EW |  |
| CO-R14.S08-EW-110 |  | Embankments Works Upto Design Level for Earthworks-[Road 14]-[SW-8] | 12d | 2025-04-26 A | 2025-05-03 A | CO-R14.S08-EW-100, ENG-MS-RD-A-10, ENG-SH-RD-A-100 | 100% | 2025-08-04 | 2025-08-17 |  |  | Embankments to the ROW, with suitable material other than top soil or rock according to specifications [32848.6] | 271,701.74 | 271,701.74 | CO-R11.S08-EW-110 | 14 | 14 | EW | BF | Cub.m | EW | EW | CON | R14 | S08 | EW | EW |  |
|  | SW | **Sewage Network** |  | 2025-08-02 | 2026-10-28 |  |  |  |  |  |  |  |  |  |  |  |  |  |  |  |  |  |  |  |  |  |  |  |
|  | ML | **Main Line Sections** |  | 2025-08-02 | 2025-08-06 |  |  |  |  |  |  |  |  |  |  |  |  |  |  |  |  |  |  |  |  |  |  |  |
| CO-R14.S08-SW-100 |  | Trench Excavation and Bedding Works for Main Lines of Sewage Network-[Road 14]-[SW-8] | 12d | 2025-08-02 A | 2025-08-03 A | CO-R14.S08-EW-110, ENG-MS-SW-ML-A-110, ENG-SH-SW-ML-A-110, CO-R14.S07-SW-100 | 100% | 2025-08-18 | 2025-08-31 |  |  | Nominal bore : 160mm; Depth : 0.0m - 1.5m [10.03]; Nominal bore : 200mm; Depth : 0.0m - 1.5m [17.05]; Nominal bore : 200mm; Depth : 1.5m - 2.5m [17.05]; Nominal bore : 200mm; Depth : 2.5m - 3.5m [28.09]; Nominal bore : 200mm; Depth : 3.5m - 4.5m [28.09]; Nominal bore : 200mm; Depth : 4.5m -5.5m [17.05]; Nominal bore : 200mm; Depth : 5.5m - 6.5m [24.08] | 45,205.34 | 45,205.34 | CO-R11.S07-SW-100 | 14 | 14 | ML | Ex | LM | ML | SW | CON | R14 | S08 | SW | SW | EX |
| CO-R14.S08-SW-120 |  | Pipes Laying Works for Main Lines of Sewage Network-[Road 14]-[SW-8] | 12d | 2025-08-04 A | 2025-08-05 A | CO-R14.S08-SW-100, PRO-R14-SW-DL-100 FF+3d | 100% | 2025-09-01 | 2025-09-14 |  |  | Nominal bore : 160mm; Depth : 0.0m - 1.5m [31.1]; Nominal bore : 200mm; Depth : 0.0m - 1.5m [50.16]; Nominal bore : 200mm; Depth : 1.5m - 2.5m [51.16]; Nominal bore : 200mm; Depth : 2.5m - 3.5m [85.27]; Nominal bore : 200mm; Depth : 3.5m - 4.5m [83.26]; Nominal bore : 200mm; Depth : 4.5m -5.5m [52.16]; Nominal bore : 200mm; Depth : 5.5m - 6.5m [71.22] | 135,264.73 | 135,264.73 | CO-R11.S07-SW-120 | 14 | 14 | ML | PL | LM | ML | SW | CON | R14 | S08 | SW | SW | PIPE |
| CO-R14.S08-SW-130 |  | Trench Backfilling and Compaction Works for Main Lines of Sewage Network-[Road 14]-[SW-8] | 12d | 2025-08-06 A | 2025-08-06 A | CO-R14.S08-SW-120, CO-R14.S08-SW-210 FF | 100% | 2025-09-15 | 2025-09-29 |  |  | Nominal bore : 160mm; Depth : 0.0m - 1.5m [6.02]; Nominal bore : 200mm; Depth : 0.0m - 1.5m [8.03]; Nominal bore : 200mm; Depth : 1.5m - 2.5m [8.03]; Nominal bore : 200mm; Depth : 2.5m - 3.5m [14.04]; Nominal bore : 200mm; Depth : 3.5m - 4.5m [14.04]; Nominal bore : 200mm; Depth : 4.5m -5.5m [8.03]; Nominal bore : 200mm; Depth : 5.5m - 6.5m [11.03] | 21,785.24 | 21,785.24 | CO-R11.S07-SW-130 | 14 | 14 | ML | BF | LM | ML | SW | CON | R14 | S08 | SW | SW | BACK |
|  | 1 | **Manholes** |  | 2025-08-10 | 2026-10-28 |  |  |  |  |  |  |  |  |  |  |  |  |  |  |  |  |  |  |  |  |  |  |  |
| CO-R14.S08-SW-160 |  | Excavation Works for Main Line Manholes of Sewage Network-[Road 14]-[SW-8] | 1d | 2025-08-10 A | 2025-08-13 A | CO-R14.S08-SW-120 SS | 100% | 2025-09-01 | 2025-09-01 |  |  | Depth: not exceeding 1.5m [0.3]; Depth: 1.5 - 2.5m [0.45]; Depth: 4.5 - 5.5m [0.15] | 7,174.61 | 7,174.61 | CO-R11.S07-SW-160 | 14 | 14 |  |  |  |  | SW | CON | R14 | S08 | SW | SW | EX |
| CO-R14.S08-SW-170 |  | Installation RC Footing Works for Main Line Manholes of Sewage Network-[Road 14]-[SW-8] | 2d | 2025-08-14 A | 2025-08-17 A | CO-R14.S08-SW-160, PRO-R14-SW-DL-110 FF+3d | 100% | 2025-09-02 | 2025-09-03 |  |  | Depth: not exceeding 1.5m [0.2]; Depth: 1.5 - 2.5m [0.3]; Depth: 4.5 - 5.5m [0.1] | 4,782.05 | 4,782.05 | CO-R11.S07-SW-170 | 14 | 14 |  |  |  |  | SW | CON | R14 | S08 | SW | SW | RC F |
| CO-R14.S08-SW-180 |  | Install Grp Liner Wall Works for Main Line Manholes of Sewage Network-[Road 14]-[SW-8] | 4d | 2025-08-18 A | 2025-08-19 A | CO-R14.S08-SW-170 | 100% | 2025-09-04 | 2025-09-08 |  |  | Depth: not exceeding 1.5m [1]; Depth: 1.5 - 2.5m [1]; Depth: 4.5 - 5.5m [0.4] | 19,014.85 | 19,014.85 | CO-R11.S07-SW-180 | 14 | 14 |  |  |  |  | SW | CON | R14 | S08 | SW | SW | LP |
| CO-R14.S08-SW-200 |  | Backfilling Works for Main Line Manholes of Sewage Network-[Road 14]-[SW-8] | 4d | 2025-08-20 A | 2025-08-21 A | CO-R14.S08-SW-190 | 100% | 2025-09-10 | 2025-09-14 |  |  | Depth: not exceeding 1.5m [0.3]; Depth: 1.5 - 2.5m [0.45]; Depth: 4.5 - 5.5m [0.15] | 7,174.61 | 7,174.61 | CO-R11.S07-SW-200 | 14 | 14 |  |  |  |  | SW | CON | R14 | S08 | SW | SW | BACK |
| CO-R14.S08-SW-190 |  | Pouring Grp Liner Wall Works for Main Line Manholes of Sewage Network-[Road 14]-[SW-8] | 1d | 2026-07-01 A | 2026-07-04 A | CO-R14.S08-SW-180 | 100% | 2025-09-09 | 2025-09-09 |  |  | Depth: not exceeding 1.5m [0.1]; Depth: 1.5 - 2.5m [0.15]; Depth: 4.5 - 5.5m [0.05] | 2,391.54 | 2,391.54 | CO-R11.S07-SW-190 | 14 | 14 |  |  |  |  | SW | CON | R14 | S08 | SW | SW | (New) |
| CO-R14.S08-SW-210 |  | Testing Works for Main Line Manholes of Sewage Network-[Road 14]-[SW-8] | 1d | 2026-10-28 A | 2026-10-28 A | CO-R14.S08-SW-200 | 100% |  |  |  |  | Depth: not exceeding 1.5m [0.1]; Depth: 1.5 - 2.5m [0.15]; Depth: 4.5 - 5.5m [0.05] | 2,391.54 | 2,391.54 | CO-R11.S07-SW-210 | 14 | 14 |  |  |  |  | SW | CON | R14 | S08 | SW | SW | T&COV |

| ID | WBS | Activity | Duration | Start | Finish | Predecessors | Complete | Planned start | Planned finish | Resources | Cost | Actual cost | Activity ID N | Seq | New Seq | 02- Network-WBS | 03- Activity | 04-UOM | 05-Discipline | 01- Network | 07-Weightage System | 08 Stage | 09 Roads | 10 side Walk | Discipline | New Discipline |
| --- | --- | --- | --- | --- | --- | --- | --- | --- | --- | --- | --- | --- | --- | --- | --- | --- | --- | --- | --- | --- | --- | --- | --- | --- | --- | --- |
|  | SD | **Storm Drainage Network** |  | 2025-08-06 | 2026-07-13 |  |  |  |  |  |  |  |  |  |  |  |  |  |  |  |  |  |  |  |  |  |
|  | ML | **Main Line Sections** |  | 2025-08-06 | 2025-08-08 |  |  |  |  |  |  |  |  |  |  |  |  |  |  |  |  |  |  |  |  |  |
| CO-R14.S08-SD-100 |  | Trench Excavation and Bedding Works for Main Lines of Storm Drainage Network-[Road 14]-[SW-8] | 10d | 2025-08-06 A | 2025-08-06 A | CO-R14.S08-EW-110, CO-R14.S08-EW-100, CO-R14.S08-SW-130 SS+3d, CO-R14.S08-SW-130 FF+3d, CO-R14.S07-SD-100 | 100% | 2025-10-14 | 2025-10-25 | Pipe with diameter 400mm ; depth: 0.0m - 1.5m [72.23]; Pipe with diameter 400mm ; depth: 1.51m - 2.5m [74.23]; Pipe with diameter 400mm ; depth: 2.51m - 3.5m [14.04]; Pipe with diameter 500mm ; depth: 1.51m - 2.5m [185.58]; Pipe with diameter 600mm ; depth: 1.51m - 2.5m [34.11]; Pipe with diameter 700mm ; depth: 1.51m - 2.5m [44.14] | 144,312.13 | 144,312.13 | CO-R11.S08-SD-100 | 14 | 14 | ML | Ex | LM | ML | SD | EX | CON | R14 | S08 | SD | SD |
| CO-R14.S08-SD-120 |  | Pipes Laying Works for Main Lines of Storm Drainage Network-[Road 14]-[SW-8] | 10d | 2025-08-07 A | 2025-08-07 A | PRO-R14-SD-DL-120 FF+3d, CO-R14.S08-SD-100, CO-R14.S07-SD-120 | 100% | 2025-10-26 | 2025-11-05 | Pipe with diameter 400mm ; depth: 0.0m - 1.5m [216.68]; Pipe with diameter 400mm ; depth: 1.51m - 2.5m [221.69]; Pipe with diameter 400mm ; depth: 2.51m - 3.5m [42.13]; Pipe with diameter 500mm ; depth: 1.51m - 2.5m [556.74]; Pipe with diameter 600mm ; depth: 1.51m - 2.5m [102.32]; Pipe with diameter 700mm ; depth: 1.51m - 2.5m [132.41] | 432,657.61 | 432,657.61 | CO-R11.S08-SD-120 | 14 | 14 | ML | PL | LM | ML | SD | PIPE | CON | R14 | S08 | SD | SD |
| CO-R14.S08-SD-130 |  | Trench Backfilling and Compaction Works for Main Lines of Storm Drainage Network-[Road 14]-[SW-8] | 15d | 2025-08-08 A | 2025-08-08 A | CO-R14.S08-SD-120 SS+3d, CO-R14.S08-SD-120 FF+3d, CO-R11.S06-SD-130, CO-R14.S08-SD-120, CO-R14.S08-SD-220 FF | 100% | 2026-01-21 | 2026-02-07 | Pipe with diameter 400mm ; depth: 0.0m - 1.5m [37.12]; Pipe with diameter 400mm ; depth: 1.51m - 2.5m [37.12]; Pipe with diameter 400mm ; depth: 2.51m - 3.5m [7.02]; Pipe with diameter 500mm ; depth: 1.51m - 2.5m [92.29]; Pipe with diameter 600mm ; depth: 1.51m - 2.5m [17.05]; Pipe with diameter 700mm ; depth: 1.51m - 2.5m [23.07] | 72,747.82 | 72,747.82 | CO-R11.S08-SD-130 | 14 | 14 | ML | BF | LM | ML | SD | BACK | CON | R14 | S08 | SD | SD |
|  | MH | **Manholes** |  | 2025-10-09 | 2026-06-04 |  |  |  |  |  |  |  |  |  |  |  |  |  |  |  |  |  |  |  |  |  |
| CO-R14.S08-SD-180 |  | Trench Excavation and Bedding Works for Manholes of Storm Drainage Network-[Road 14]-[SW-8] | 1d | 2025-10-09 A | 2025-10-11 A | CO-R14.S08-SD-120 SS, PRO-SD-1DL-100 | 100% | 2025-10-26 | 2025-10-26 | MH ; depth: 0.0m - 1.5m [0.3]; MH ; depth: 1.51m - 2.5m [1]; MH ; depth: 2.51 - 3.5m [0.15]; MH ; depth: 2.51 - 3.5m [0.3]; MH ; depth: 2.51 - 3.5m with back drop less than 1.0 m [0.15]; MH ; depth: 1.51m - 2.5m [0.15] | 41,482.22 | 41,482.22 | CO-R11.S08-SD-180 | 14 | 14 |  |  |  |  | SD | EX | CON | R14 | S08 | SD | SD |
| CO-R14.S08-SD-190 |  | Install RC Footing Works for Manholes of Storm Drainage Network-[Road 14]-[SW-8] | 1d | 2025-10-11 A | 2025-10-12 A | CO-R14.S08-SD-180 | 100% | 2025-10-27 | 2025-10-27 | MH ; depth: 0.0m - 1.5m [0.1]; MH ; depth: 1.51m - 2.5m [0.2]; MH ; depth: 2.51 - 3.5m [0.05]; MH ; depth: 2.51 - 3.5m [0.1]; MH ; depth: 2.51 - 3.5m with back drop less than 1.0 m [0.05]; MH ; depth: 1.51m - 2.5m [0.05] | 11,555.35 | 11,555.35 | CO-R11.S08-SD-190 | 14 | 14 |  |  |  |  | SD | RC F | CON | R14 | S08 | SD | SD |
| CO-R14.S08-SD-200 |  | Install RC Wall Rings & Slab Works for Manholes of Storm Drainage Network-[Road 14]-[SW-8] | 4d | 2025-10-12 A | 2025-10-13 A | CO-R14.S08-SD-190 | 100% | 2025-10-28 | 2025-11-01 | MH ; depth: 0.0m - 1.5m [1]; MH ; depth: 1.51m - 2.5m [3.01]; MH ; depth: 2.51 - 3.5m [0.45]; MH ; depth: 2.51 - 3.5m [1]; MH ; depth: 2.51 - 3.5m with back drop less than 1.0 m [0.45]; MH ; depth: 1.51m - 2.5m [0.45] | 130,345.85 | 130,345.85 | CO-R11.S08-SD-200 | 14 | 14 |  |  |  |  | SD | RC W | CON | R14 | S08 | SD | SD |
| CO-R14.S08-SD-220 |  | Backfilling Works for Manholes of Storm Drainage Network-[Road 14]-[SW-8] | 7d | 2025-10-14 A | 2025-10-14 A | CO-R14.S08-SD-210 | 100% | 2025-11-03 | 2025-11-10 | MH ; depth: 0.0m - 1.5m [0.4]; MH ; depth: 1.51m - 2.5m [1]; MH ; depth: 2.51 - 3.5m [0.2]; MH ; depth: 2.51 - 3.5m [0.4]; MH ; depth: 2.51 - 3.5m with back drop less than 1.0 m [0.2]; MH ; depth: 1.51m - 2.5m [0.2] | 49,657.55 | 49,657.55 | CO-R11.S08-SD-220 | 14 | 14 |  |  |  |  | SD | BACK | CON | R14 | S08 | SD | SD |
| CO-R14.S08-SD-210 |  | Testing Works for Manholes of Storm Drainage Network-[Road 14]-[SW-8] | 1d | 2026-06-04 A | 2026-06-04 A | CO-R14.S08-SD-200 | 100% | 2025-11-02 | 2025-11-02 | MH ; depth: 0.0m - 1.5m [0.2]; MH ; depth: 1.51m - 2.5m [0.4]; MH ; depth: 2.51 - 3.5m [0.1]; MH ; depth: 2.51 - 3.5m [0.2]; MH ; depth: 2.51 - 3.5m with back drop less than 1.0 m [0.1]; MH ; depth: 1.51m - 2.5m [0.1] | 23,110.69 | 23,110.69 | CO-R11.S08-SD-210 | 14 | 14 |  |  |  |  | SD | T&COV | CON | R14 | S08 | SD | SD |
|  | CB | **Catch Basin Sections** |  | 2026-06-04 | 2026-07-13 |  |  |  |  |  |  |  |  |  |  |  |  |  |  |  |  |  |  |  |  |  |
| CO-R14.S08-SD-140 |  | Trench Excavation and Bedding Works for Catch Basins of Storm Drainage Network-[Road 14]-[SW-8] | 6d | 2026-06-04 A | 2026-07-13 A | CO-R14.S08-EW-110, CO-R14.S08-SD-220, CO-R14.S07-SD-140 | 100% | 2025-11-17 | 2025-11-23 | Pipe with diameter 300mm ; depth: 0 - 1.5m [103.32]; Pipe with diameter 400mm ; depth: 0 - 1.5m [6.02] | 25,929.07 | 25,929.07 | CO-R11.S08-SD-140 | 14 | 14 | CB | Ex | Each | CB | SD | EX | CON | R14 | S08 | SD | SD |
| CO-R14.S08-SD-150 |  | Installation and Pipes Laying Connection Works for Catch Basins of Storm Drainage Network-[Road 14]-[SW-8] | 7d | 2026-06-04 A | 2026-07-13 A | CO-R14.S08-SD-140, PRO-R14-SD-DL-130 FF+3d | 100% | 2025-11-24 | 2025-12-01 | Pipe with diameter 300mm ; depth: 0 - 1.5m [308.97]; Pipe with diameter 400mm ; depth: 0 - 1.5m [18.06] | 77,553.36 | 77,553.36 | CO-R11.S08-SD-150 | 14 | 14 | CB | CB | Each | CB | SD | INSTALL | CON | R14 | S08 | SD | SD |
| CO-R14.S08-SD-160 |  | Testing Works for Catch Basins of Storm Drainage Network-[Road 14]-[SW-8] | 4d | 2026-06-04 A | 2026-07-13 A | CO-R14.S08-SD-150, CO-R14.S08-SD-120, PRO-R14-SD-DL-110 FF+3d | 100% | 2025-12-02 | 2025-12-06 | Pipe with diameter 300mm ; depth: 0 - 1.5m [69.22]; Pipe with diameter 400mm ; depth: 0 - 1.5m [4.01] | 17,363.65 | 17,363.65 | CO-R11.S08-SD-160 | 14 | 14 | CB | PL | Each | CB | SD | TEST | CON | R14 | S08 | SD | SD |
| CO-R14.S08-SD-170 |  | Trench Backfilling and Compaction Works for Catch Basins of Storm Drainage Network-[Road 14]-[SW-8] | 7d | 2026-06-04 A | 2026-07-13 A | CO-R14.S08-SD-160 | 100% | 2025-12-07 | 2025-12-14 | Pipe with diameter 300mm ; depth: 0 - 1.5m [137.43]; Pipe with diameter 400mm ; depth: 0 - 1.5m [8.03] | 34,493.46 | 34,493.46 | CO-R11.S08-SD-170 | 14 | 14 | CB | BF | Each | CB | SD | BACK | CON | R14 | S08 | SD | SD |
|  | PW | **Potable Water Network** |  | 2025-08-09 | 2026-12-17 |  |  |  |  |  |  |  |  |  |  |  |  |  |  |  |  |  |  |  |  |  |
|  | ML | **Main Line Sections** |  | 2025-08-09 | 2025-08-11 |  |  |  |  |  |  |  |  |  |  |  |  |  |  |  |  |  |  |  |  |  |
| CO-R14.S08-PW-100 |  | Trench Excavation and Bedding Works for Main Lines of Potable Water Network-[Road 14]-[SW-8] | 10d | 2025-08-09 A | 2025-08-09 A | CO-R14.S08-EW-110, CO-R14.S08-EW-100, CO-R14.S08-SD-130 | 100% | 2026-02-08 | 2026-02-18 | Pipe with diameter 355mm; in depth 0.0m - 1.5m [397.24]; Pipe with diameter 355mm; in depth 1.5m - 3.0m [28.09] | 128,692.6 | 128,692.6 | CO-R11.S08-PW-100 | 14 | 14 | ML | Ex | LM | ML | PW | EX | CON | R14 | S08 | PW | PW |
| CO-R14.S08-PW-110 |  | Pipes Laying and accessories for Main Lines of Potable Water Network-[Road 14]-[SW-8] | 10d | 2025-08-10 A | 2025-08-10 A | CO-R14.S08-PW-100, CO-R11.S06-PW-110, PRO-R14-PW-DL-100 FF+3d | 100% | 2026-02-19 | 2026-03-02 | Pipe with diameter 355mm; in depth 0.0m - 1.5m [993.1]; Pipe with diameter 355mm; in depth 1.5m - 3.0m [71.22] | 322,056.74 | 322,056.74 | CO-R11.S08-PW-110 | 14 | 14 | ML | PL | LM | ML | PW | PIPE | CON | R14 | S08 | PW | PW |
| CO-R14.S08-PW-130 |  | Trench Backfilling and Compaction Works for Main Lines of Potable Water Network-[Road 14]-[SW-8] | 10d | 2025-08-11 A | 2025-08-11 A | CO-R14.S08-PW-110, CO-R11.S06-PW-130, CO-R14.S08-PW-220 FF | 100% | 2026-03-11 | 2026-03-25 | Pipe with diameter 355mm; in depth 0.0m - 1.5m [397.24]; Pipe with diameter 355mm; in depth 1.5m - 3.0m [28.09] | 128,692.6 | 128,692.6 | CO-R11.S08-PW-130 | 14 | 14 | ML | BF | LM | ML | PW | BACK | CON | R14 | S08 | PW | PW |
|  | VC | **Valve Chamber** |  | 2026-06-07 | 2026-06-17 |  |  |  |  |  |  |  |  |  |  |  |  |  |  |  |  |  |  |  |  |  |
| CO-R14.S08-PW-170 |  | Excavation Works for Main Line Valves and Valve Chambers of Potable Water Network-[Road 14]-[SW-8] | 1d | 2026-06-07 A | 2026-06-17 A | CO-R14.S08-PW-110 | 100% | 2026-03-03 | 2026-03-03 | In-situ, reinforced single concrete valve chambers on the pipeline, as defined and shown on the drawingss, and all necessary works and equipment (valve measured elsewhere), and supplies construction, cut and installation of pipe cutting, backfilling, in [3.01]; Air valve chamber on 355 mm dia pipeline Depth 1.5 - 3 m [0.1] | 116,149.8 | 116,149.8 | CO-R11.S08-PW-170 | 14 | 14 | ML | VI | Each | ML | PW | EX | CON | R14 | S08 | PW | PW |
| CO-R14.S08-PW-180 |  | RC Footing Works for Main Line Valves and Valve Chambers of Potable Water Network-[Road 14]-[SW-8] | 3d | 2026-06-07 A | 2026-06-17 A | CO-R14.S08-PW-170 | 100% | 2026-03-04 | 2026-03-07 | In-situ, reinforced single concrete valve chambers on the pipeline, as defined and shown on the drawingss, and all necessary works and equipment (valve measured elsewhere), and supplies construction, cut and installation of pipe cutting, backfilling, in [4.01]; Air valve chamber on 355 mm dia pipeline Depth 1.5 - 3 m [0.15] | 155,027.07 | 155,027.07 | CO-R11.S08-PW-180 | 14 | 14 | ML | VI | Each | ML | PW | RC F | CON | R14 | S08 | PW | PW |
| CO-R14.S08-PW-190 |  | RC Wall Works for Main Line Valves and Valve Chambers of Potable Water Network-[Road 14]-[SW-8] | 6d | 2026-06-07 A | 2026-06-17 A | CO-R14.S08-PW-180 | 100% | 2026-03-08 | 2026-03-14 | In-situ, reinforced single concrete valve chambers on the pipeline, as defined and shown on the drawingss, and all necessary works and equipment (valve measured elsewhere), and supplies construction, cut and installation of pipe cutting, backfilling, in [8.03]; Air valve chamber on 355 mm dia pipeline Depth 1.5 - 3 m [0.35] | 310,533.05 | 310,533.05 | CO-R11.S08-PW-190 | 14 | 14 | ML | VI | Each | ML | PW | RC W | CON | R14 | S08 | PW | PW |
| CO-R14.S08-PW-200 |  | RC Slab Works for Main Line Valves and Valve Chambers of Potable Water Network-[Road 14]-[SW-8] | 2d | 2026-06-07 A | 2026-06-17 A | CO-R14.S08-PW-190 | 100% | 2026-03-15 | 2026-03-16 | In-situ, reinforced single concrete valve chambers on the pipeline, as defined and shown on the drawingss, and all necessary works and equipment (valve measured elsewhere), and supplies construction, cut and installation of pipe cutting, backfilling, in [6.02]; Air valve chamber on 355 mm dia pipeline Depth 1.5 - 3 m [0.2] | 232,301.65 | 232,301.65 | CO-R11.S08-PW-200 | 14 | 14 | ML | VI | Each | ML | PW | RC S | CON | R14 | S08 | PW | PW |
| CO-R14.S08-PW-210 |  | Insulation Works for Main Line Valves and Valve Chambers of Potable Water Network-[Road 14]-[SW-8] | 1d | 2026-06-07 A | 2026-06-17 A | CO-R14.S08-PW-200 | 100% | 2026-03-17 | 2026-03-17 | Butterfly valves with dia (355)mm on pipes with dia (355)mm. [18.06]; Air valves with dia (65mm) mm on pipes with dia(355)mm. [1] | 501,809.96 | 501,809.96 | CO-R11.S08-PW-210 | 14 | 14 | ML | VI | Each | ML | PW | INSUL | CON | R14 | S08 | PW | PW |
| CO-R14.S08-PW-220 |  | Backfilling Works for Main Line Valves and Valve Chambers of Potable Water Network-[Road 14]-[SW-8] | 3d | 2026-06-07 A | 2026-06-17 A | CO-R14.S08-PW-210 | 100% | 2026-03-18 | 2026-03-24 | In-situ, reinforced single concrete valve chambers on the pipeline, as defined and shown on the drawingss, and all necessary works and equipment (valve measured elsewhere), and supplies construction, cut and installation of pipe cutting, backfilling, in [6.02]; Air valve chamber on 355 mm dia pipeline Depth 1.5 - 3 m [0.2] | 232,301.65 | 232,301.65 | CO-R11.S08-PW-220 | 14 | 14 | ML | VI | Each | ML | PW | BACK | CON | R14 | S08 | PW | PW |

| ID | WBS | Activity | Duration | Start | Finish | Predecessors | Complete | Planned start | Planned finish | Total float | Free float | Resources | Cost | Actual cost | Activity ID N | Seq | New Seq | 02- Network-WBS | 03- Activity | 04-UOM | 05-Discipline | 01- Network | 07-Weightage System | 08 Stage | 09 Roads | 10 side Walk | Discipline | New Discipline |
| --- | --- | --- | --- | --- | --- | --- | --- | --- | --- | --- | --- | --- | --- | --- | --- | --- | --- | --- | --- | --- | --- | --- | --- | --- | --- | --- | --- | --- |
|  | FH | **Fire Hydrant** |  | 2026-11-24 | 2026-12-17 |  |  |  |  |  |  |  |  |  |  |  |  |  |  |  |  |  |  |  |  |  |  |  |
| CO-R14.S08-PW-140 |  | Excavation Works for Fire Hydrants of Potable Water Network-[Road 14]-[SW-8] | 7d | 2026-11-24 | 2026-12-01 | CO-R14.S08-PW-110 SS+3d, CO-R14.S08-PW-110 FF+3d, CO-R14.S08-EW-110 |  |  |  | -25d | 0d | 3-outlet fire hydrant (2 x 2.5 inch and 1 x 4 inch) in the form of a separate dry vacuum cylinder [1] | 7,758.71 |  | CO-R11.S08-PW-140 | 14 | 14 | FH | Ex | Each | FH | PW | EX | CON | R14 | S08 | PW | PW |
| CO-R14.S08-PW-150 |  | Installation Works for Fire Hydrant of Potable Water Network-[Road 14]-[SW-8] | 7d | 2026-12-02 | 2026-12-09 | CO-R14.S08-PW-140, PRO-R14-PW-DL-120 FF+3d |  |  |  | -25d | 0d | 3-outlet fire hydrant (2 x 2.5 inch and 1 x 4 inch) in the form of a separate dry vacuum cylinder [7.02] | 54,311.96 |  | CO-R11.S08-PW-150 | 14 | 14 | FH | FH | Each | FH | PW | INSTALL | CON | R14 | S08 | PW | PW |
| CO-R14.S08-PW-160 |  | Trench Backfilling and Compaction Works for Fire Hydrants of Potable Water Network-[Road 14]-[SW-8] | 7d | 2026-12-10 | 2026-12-17 | CO-R14.S08-PW-150 |  |  |  | -25d | 165d | 3-outlet fire hydrant (2 x 2.5 inch and 1 x 4 inch) in the form of a separate dry vacuum cylinder [1] | 7,758.71 |  | CO-R11.S08-PW-160 | 14 | 14 | FH | BF | Each | FH | PW | BACK | CON | R14 | S08 | PW | PW |
|  | SL | **Street Lighting Network** |  | 2026-08-09 | 2027-03-18 |  |  |  |  |  |  |  |  |  |  |  |  |  |  |  |  |  |  |  |  |  |  |  |
|  | LP | **Lighting Poles Works** |  | 2026-09-01 | 2027-02-11 |  |  |  |  |  |  |  |  |  |  |  |  |  |  |  |  |  |  |  |  |  |  |  |
| CO-R14.S08-SL-210 |  | Backfilling Works for Lighting Poles of Street Lighting Network-[Road 14]-[SW-8] | 15d | 2026-09-01 A | 2026-09-08 A | CO-R14.S08-SL-840 SS, CO-R14.S08-SL-840 FF, CO-R14.S07-SL-210 | 100% | 2026-06-07 | 2026-06-23 |  |  | Lighting poles with one arm, including the power distribution box, screws, cables, 12 meters in height. [11.03] | 21,448.26 | 21,448.26 | CO-R11.S08-SL-210 | 14 | 14 |  |  |  |  | SL | BACK | CON | R14 | S08 | SL | SL |
| CO-R14.S08-SL-820 |  | Foundation Excavation Works for Lighting Poles of Street Lighting Network-[Road 14]-[SW-8] | 12d | 2026-09-01 A | 2026-09-08 A | CO-R14.S08-EW-110, CO-R14.S08-EW-100, CO-R14.S08-PW-130 | 100% | 2026-03-26 | 2026-04-08 |  |  | Lighting poles with one arm, including the power distribution box, screws, cables, 12 meters in height. [3.01] | 5,849.15 | 5,849.15 | CO-R11.S08-SL-820 | 14 | 14 | LP | Ex | Each | POL | SL | EX | CON | R14 | S08 | SL | SL |
| CO-R14.S08-SL-830 |  | Installation Works for Lighting Poles Foundation of Street Lighting Network-[Road 14]-[SW-8] | 10d | 2026-09-01 A | 2026-09-08 A | CO-R14.S08-SL-820 SS+5d, CO-R14.S08-SL-820 FF+5d, CO-R11.S06-SL-110, PRO-R14-SL-DL-110 FF+3d | 100% | 2026-04-11 | 2026-04-21 |  |  | Reinforced concrete foundation, for 12m high lighting columns With Drawpits [59.18] | 21,987.42 | 21,987.42 | CO-R11.S08-SL-830 | 14 | 14 | LP | LPF | Each | POL | SL | INSTALL | CON | R14 | S08 | SL | SL |
| CO-R14.S08-SL-840 |  | Installation Works for Lighting Poles of Street Lighting Network-[Road 14]-[SW-8] | 10d | 2026-09-01 A | 2026-09-08 A | CO-R14.S08-SL-830 SS+5d, CO-R14.S08-SL-830 FF+5d, PRO-R14-SL-DL-120 FF+3d | 100% | 2026-04-16 | 2026-04-27 |  |  | Lighting poles with one arm, including the power distribution box, screws, cables, 12 meters in height. [33.1] | 64,343.75 | 64,343.75 | CO-R11.S08-SL-840 | 14 | 14 | LP | LP | Each | POL | SL | POLES | CON | R14 | S08 | SL | SL |
| CO-R14.S08-SL-200 |  | Testing Works for Lighting Poles of Street Lighting Network-[Road 14]-[SW-8] | 7d | 2026-11-24 | 2026-12-01 | CO-R14.S08-SL-210, CO-R14.S08-SL-840 |  |  |  | -40d | 61.5d | Lighting poles with one arm, including the power distribution box, screws, cables, 12 meters in height. [11.03] | 21,448.26 |  | CO-R11.S08-SL-200 | 14 | 14 |  |  |  |  | SL | TESTING | CON | R14 | S08 | SL | SL |
| CO-R14.S08-SL-850 |  | Installation Works for Lighting Fixtures With Drop Wire of Street Lighting Network-[Road 14]-[SW-8] | 17.5d | 2027-01-23 | 2027-02-11 | CO-R14.S08-SL-840 SS+5d, CO-R14.S08-SL-840 FF+5d, CO-R11.S06-SL-130, PRO-R14-SL-DL-140 FF+3d, CO-R14.S08-SL-200 FF |  |  |  | -101.5d | 108d | Street Lighting( LED) Luminaire,(Type C) complete with control gear and lamp, ?.17000 Lumen [59.18] | 36,200.83 |  | CO-R11.S08-SL-850 | 14 | 14 | LP | LPA | Each | POL | SL | INSTALL | CON | R14 | S08 | SL | SL |
|  | CW | **Cabling Works** |  | 2026-08-09 | 2026-09-17 |  |  |  |  |  |  |  |  |  |  |  |  |  |  |  |  |  |  |  |  |  |  |  |
| CO-R14.S08-SL-640 |  | Trench Excavation and Bedding Works for Street Lighting Network-[Road 14]-[SW-8] | 10d | 2026-08-09 A | 2026-09-17 A | CO-R14.S08-EW-110, CO-R14.S08-SL-840, CO-R14.S08-SL-830 | 100% | 2026-04-28 | 2026-05-09 |  |  |  |  |  | CO-R11.S08-SL-640 | 14 | 14 | CW | Ex | LM | CB | SL | EXC | CON | R14 | S08 | SL | SL |
| CO-R14.S08-SL-650 |  | Cable Laying Works for Street Lighting Network-[Road 14]-[SW-8] | 10d | 2026-08-09 A | 2026-09-17 A | CO-R14.S08-SL-640, PRO-R14-SL-DL-100 FF+3d | 100% | 2026-05-10 | 2026-05-20 |  |  | Supply, installation , test and operation of cables, Copper, (4Cx25mmï¿½,Cu/XLPE/SWA/PVC +1x16mmï¿½ PVC/PVC) [2286.14] | 109,487.81 | 109,487.81 | CO-R11.S08-SL-650 | 14 | 14 | CW | CL | LM | CB | SL | LAYING | CON | R14 | S08 | SL | SL |
| CO-R14.S08-SL-660 |  | Trench Backfilling and Compaction Works for Street Lighting Network-[Road 14]-[SW-8] | 10d | 2026-08-09 A | 2026-09-17 A | CO-R14.S08-SL-650 | 100% | 2026-05-21 | 2026-06-06 |  |  | Supply, installation , test and operation of cables, Copper, (4Cx25mmï¿½,Cu/XLPE/SWA/PVC +1x16mmï¿½ PVC/PVC) [175.55] | 8,407.14 | 8,407.14 | CO-R11.S08-SL-660 | 14 | 14 | CW | BF | LM | CB | SL | BACK | CON | R14 | S08 | SL | SL |
|  | DPB | **Distrubution Panel Boards** |  | 2027-01-25 | 2027-03-18 |  |  |  |  |  |  |  |  |  |  |  |  |  |  |  |  |  |  |  |  |  |  |  |
| CO-R14.S08-SL-DB-640 |  | Foundation Excavation Works For Panel Boards of Street Lighting Network-[Road 14]-[SW-8] | 18d | 2027-01-25 | 2027-02-14 | CO-R14.S08-EW-110, CO-R11.S06-SL-170 |  |  |  | -166d | 9d |  |  |  | CO-R11.S08-SL-DB-640 | 14 | 14 | DB | Ex | Each | DS | SL | EXC | CON | R14 | S08 | SL | SL |
| CO-R14.S08-SL-220 |  | A wall of concrete blocks to install the KWH meter of Street Lighting Network-[Road 14]-[SW-8] | 25d | 2027-02-08 | 2027-03-13 | CO-R14.S08-SL-DB-650 SS, CO-R14.S08-SL-DB-650 FF |  |  |  | -175d | 16d | Road crossing ducts, 4 way (4 x 100mm PVC) [130.41]; Drawpit with medium duty steel cover, size 900x900x1200mm, Type 4 [8.03] | 37,572.23 |  | CO-R11.S08-SL-220 | 14 | 14 | DB |  | Each | DS | SL | wall | CON | R14 | S08 | SL | SL |
| CO-R14.S08-SL-DB-650 |  | Installation Works for Panel Board Concrete Foundations of Street Lighting Network-[Road 14]-[SW-8] | 18d | 2027-02-08 | 2027-03-01 | CO-R14.S08-SL-DB-640 SS+3d, CO-R14.S08-SL-DB-640 FF+3d, CO-R11.S06-SL-180 |  |  |  | -175d | 0d |  |  |  | CO-R11.S08-SL-DB-650 | 14 | 14 | DB | PBF | Each | DS | SL | INSTALL | CON | R14 | S08 | SL | SL |
| CO-R14.S08-SL-DB-660 |  | Installation Works for Lighting Panel Boards of Street Lighting Network-[Road 14]-[SW-8] | 18d | 2027-02-23 | 2027-03-18 | CO-R14.S08-SL-DB-650 SS+3d, CO-R14.S08-SL-DB-650 FF+3d, CO-R11.S06-SL-190 |  |  |  | -180d | 11d |  |  |  | CO-R11.S08-SL-DB-660 | 14 | 14 | DB | PB | Each | DS | SL | INST BO | CON | R14 | S08 | SL | SL |
|  | TE | **Telecom Network** |  | 2027-02-03 | 2027-03-08 |  |  |  |  |  |  |  |  |  |  |  |  |  |  |  |  |  |  |  |  |  |  |  |
|  | PD | **Ducts Works** |  | 2027-02-03 | 2027-03-03 |  |  |  |  |  |  |  |  |  |  |  |  |  |  |  |  |  |  |  |  |  |  |  |
| CO-R14.S08-TE-100 |  | Trench Excavation and Bedding Works for Ducts of Telecom Network-[Road 14]-[SW-8] | 3d | 2027-02-03 | 2027-02-06 | CO-R14.S08-SL-660, CO-R14.S07-TE-100 |  |  |  | -155d | 0d | 6-way ducts, 50mm dia. HDPE [54.17]; Road crossing ducts (6-way) [4.01] | 8,098.75 |  | CO-R11.S08-TE-100 | 14 | 14 | PD | Ex | LM | DC | TE | DUCTS | CON | R14 | S08 | TE | TE |
| CO-R14.S08-TE-110 |  | Pipes Laying Works for Ducts of Telecom Network-[Road 14]-[SW-8] | 7d | 2027-02-07 | 2027-02-14 | CO-R14.S08-TE-100, CO-R11.S06-TE-110, PRO-R14-TE-DL-100 FF+3d |  |  |  | -155d | 0d | 6-way ducts, 50mm dia. HDPE [328.02]; Road crossing ducts (6-way) [28.09] | 49,689.21 |  | CO-R11.S08-TE-110 | 14 | 14 | PD | PL | LM | DC | TE | DUCTS | CON | R14 | S08 | TE | TE |
| CO-R14.S08-TE-120 |  | Pouring Plain Concrete Above Ducts of Telecom Network-[Road 14]-[SW-8] | 7d | 2027-02-15 | 2027-02-23 | CO-R14.S08-TE-110, CO-R11.S06-TE-120 |  |  |  | -155d | 0d | 6-way ducts, 50mm dia. HDPE [54.17]; Road crossing ducts (6-way) [4.01] | 8,098.75 |  | CO-R11.S08-TE-120 | 14 | 14 | PD | PC | LM | DC | TE | DUCTS | CON | R14 | S08 | TE | TE |
| CO-R14.S08-TE-130 |  | Trench Backfilling and Compaction Works for Ducts of Telecom Network-[Road 14]-[SW-8] | 7d | 2027-02-24 | 2027-03-03 | CO-R14.S08-TE-120, CO-R11.S06-TE-130 |  |  |  | -155d | 17d | 6-way ducts, 50mm dia. HDPE [109.34]; Road crossing ducts (6-way) [10.03] | 16,677.44 |  | CO-R11.S08-TE-130 | 14 | 14 | PD | BF | LM | DC | TE | DUCTS | CON | R14 | S08 | TE | TE |

| ID | WBS | Activity | Duration | Start | Finish | Predecessors | Complete | Planned start | Planned finish | Total float | Free float | Resources | Cost | Actual cost | Activity ID N | Seq | New Seq | 02- Network-WBS | 03- Activity | 04-UOM | 05-Discipline | 01- Network | 07-Weightage System | 08 Stage | 09 Roads | 10 side Walk | Discipline | New Discipline |
| --- | --- | --- | --- | --- | --- | --- | --- | --- | --- | --- | --- | --- | --- | --- | --- | --- | --- | --- | --- | --- | --- | --- | --- | --- | --- | --- | --- | --- |
|  | MH | **Manholes Works** |  | 2027-02-11 | 2027-03-08 |  |  |  |  |  |  |  |  |  |  |  |  |  |  |  |  |  |  |  |  |  |  |  |
| CO-R14.S08-TE-140 |  | Excavation Works for Manholes of Telecom Network-[Road 14]-[SW-8] | 7d | 2027-02-11 | 2027-02-18 | CO-R11.S06-TE-140, CO-R14.S08-TE-100, CO-R14.S07-TE-140 |  |  |  | -159d | 0d | Manhole Type 2 (2000x1000x1000) [1] | 3,218.67 |  | CO-R11.S08-TE-140 | 14 | 14 | MH | Ex | Each | MNH | TE | EXC | CON | R14 | S08 | TE | TE |
| CO-R14.S08-TE-150 |  | Installation Works for Manholes of Telecom Network-[Road 14]-[SW-8] | 7d | 2027-02-20 | 2027-02-28 | CO-R14.S08-TE-140, CO-R11.S06-TE-150, PRO-R14-TE-DL-110 FF+3d |  |  |  | -159d | 0d | Manhole Type 1 (2000x1000x1000) [1]; Manhole Type 2 (2000x1000x1000) [3.01] | 12,848.12 |  | CO-R11.S08-TE-150 | 14 | 14 | MH | HH | Each | MNH | TE | INSTALL-1 | CON | R14 | S08 | TE | TE |
| CO-R14.S08-TE-160 |  | Backfilling Works for Manholes of Telecom Network-[Road 14]-[SW-8] | 7d | 2027-03-01 | 2027-03-08 | CO-R14.S08-TE-150, CO-R11.S06-TE-160 |  |  |  | -159d | 13d | Manhole Type 2 (2000x1000x1000) [1] | 3,218.67 |  | CO-R11.S08-TE-160 | 14 | 14 | MH | BF | Each | MNH | TE | (New)-2 | CON | R14 | S08 | TE | TE |
|  | MV | **Medium Voltage Network** |  | 2025-09-01 | 2025-09-07 |  |  |  |  |  |  |  |  |  |  |  |  |  |  |  |  |  |  |  |  |  |  |  |
|  | CW | **Cabling Works** |  | 2025-09-01 | 2025-09-07 |  |  |  |  |  |  |  |  |  |  |  |  |  |  |  |  |  |  |  |  |  |  |  |
| CO-R14.S08-MV-ML-640 |  | Trench Excavation and Bedding Works for Medium Voltage Network-[Road 14]-[SW-8] | 10d | 2025-09-01 A | 2025-09-03 A | CO-R14.S08-SD-170 SS+3d, CO-R14.S08-SD-170 FF+3d, CO-R14.S08-EW-110, CO-R11.S06-MV-100 | 100% | 2026-08-10 | 2026-08-20 |  |  | Excavation for Trench size 40cm wide and 80cm deep ( Maximum 1 cable 33kv) [486.52]; Excavation for Trench size 60cm wide and 80cm deep ( for Max two cables 33 kv) [28.09]; Excavation for Trench size 90cm wide and 80cm deep ( Maximum 3 cable 33kv) [123.39]; Excavation for Trench size 120cm wide and 80cm deep ( Maximum 4cable 33kv) [42.13]; Excavation for Trench size 150cm wide and 80cm deep ( Maximum 4cable 33kv) [156.49]; Duct bank for (2) 33 kv cables [17.05]; Duct bank for (4) 33 kv cables [110.34]; Duct bank for (6) 33 kv cables [51.16] | 58,035.08 | 58,035.08 | CO-R11.S08-MV-ML-640 | 14 | 14 | CW | Ex | LM | CW | MV | EXC | CON | R14 | S08 | MV | MV |
| CO-R14.S08-MV-ML-650 |  | Cable Laying Works for Medium Voltage Network-[Road 14]-[SW-8] | 10d | 2025-09-02 A | 2025-09-04 A | CO-R14.S08-MV-ML-640 SS+3d, CO-R14.S08-MV-ML-640 FF+3d, CO-R11.S06-MV-110, PRO-R14-MV-DL-100 FF+3d | 100% | 2026-08-13 | 2026-08-24 |  |  | 33kv 3Cx400 mmï¿½ Al XLPE / LLDPE /PVC Cable [2293.16]; 33kv 3Cx400 mmï¿½ Al XLPE /LLDPE/PVC [7.02] | 311,543.99 | 311,543.99 | CO-R11.S08-MV-ML-650 | 14 | 14 | CW | CL | LM | CW | MV | LAY | CON | R14 | S08 | MV | MV |
| CO-R14.S08-MV-ML-660 |  | Trench Backfilling and Compaction Works for Medium Voltage Network-[Road 14]-[SW-8] | 10d | 2025-09-06 A | 2025-09-07 A | CO-R14.S08-MV-ML-650 SS+3d, CO-R14.S08-MV-ML-650 FF+3d, CO-R14.S08-PW-130 FF+3d, CO-R11.S06-MV-120 | 100% | 2026-08-17 | 2026-08-27 |  |  | 33kv 3Cx400 mmï¿½ Al XLPE / LLDPE /PVC Cable [983.07]; 33kv 3Cx400 mmï¿½ Al XLPE /LLDPE/PVC [3.01] | 133,555.32 | 133,555.32 | CO-R11.S08-MV-ML-660 | 14 | 14 | CW | BF | LM | CW | MV | BACK | CON | R14 | S08 | MV | MV |
|  | RD | **Road Works** |  | 2026-08-17 | 2027-06-10 |  |  |  |  |  |  |  |  |  |  |  |  |  |  |  |  |  |  |  |  |  |  |  |
|  | RD | **Pre-Bituminous Construction** |  | 2026-08-17 | 2026-09-09 |  |  |  |  |  |  |  |  |  |  |  |  |  |  |  |  |  |  |  |  |  |  |  |
| CO-R14.S08-RD-P-100 |  | Capping and Subgrade Layer for Road Works-[Road 14]-[SW-8] | 10d | 2026-08-17 A | 2026-08-22 A | CO-R14.S08-SD-130, CO-R14.S08-PW-130, CO-R14.S08-SL-660 SS+3d, CO-R14.S08-SL-660 FF+3d, PRO-R14-RD-DL-100 FF+3d, CO-R14.S08-MV-ML-660 SS+3d, CO-R14.S08-MV-ML-660 FF+3d, CO-R14.S08-SW-130 | 100% | 2026-08-20 | 2026-08-31 |  |  | 300mm capping layer underneath subgrade , CBR?15% [4143.94]; 300mm thick Subgrade, including subgrade preparation, CBR?25% [4143.94] | 328,371.54 | 328,371.54 | CO-R11.S08-RD-P-100 | 14 | 14 | AB | SG | Sq.m | BS | RD |  | CON | R14 | S08 | RD | RD |
| CO-R14.S08-RD-P-110 |  | Aggregate Base Course Layer for Road Works-[Road 14]-[SW-8] | 18d | 2026-09-05 A | 2026-09-09 A | CO-R14.S08-RD-P-100 SS+3d, CO-R14.S08-RD-P-100 FF+3d, CO-R14.S08-SD-170 SS+3d, CO-R14.S08-SD-170 FF+3d, CO-R11.S06-RD-P-110, PRO-R14-RD-DL-110 FF+3d | 100% | 2026-09-02 | 2026-09-22 |  |  | Aggregate base course 200mm thick after compaction in two layers(Grading 1); CBR?80%; including watering, compaction and testing [2763.63] | 228,786.85 | 228,786.85 | CO-R11.S08-RD-P-110 | 14 | 14 | AB | BA | Sq.m | BS | RD |  | CON | R14 | S08 | RD | RD |
|  | LS | **Pavement Works** |  | 2026-08-25 | 2027-06-10 |  |  |  |  |  |  |  |  |  |  |  |  |  |  |  |  |  |  |  |  |  |  |  |
| CO-R14.S08-RD-P-120 |  | Fixing of Curbstone for Sidewalks Pavement-[Road 14]-[SW-8] | 18d | 2026-08-25 A | 2026-08-31 A | PRO-R14-RD-DL-130 FF+3d, CO-R11.S06-RD-P-120, CO-R14.S08-RD-P-110 SS+3d, CO-R14.S08-RD-P-110 FF+3d | 100% | 2026-09-06 | 2026-09-27 |  |  | Precast Concrete Kerb, Type K1 [1528.78]; Precast Concrete Kerb, Type L1 [3034.48] | 187,323.01 | 187,323.01 | CO-R11.S08-RD-P-120 | 14 | 14 | LS | CR | LM | LAND | RD |  | CON | R14 | S08 | RD | RD |
| CO-R14.S08-RD-P-130 |  | Fixing of Interlock Tiles for Sidewalks Pavement-[Road 14]-[SW-8] | 12d | 2027-05-29 | 2027-06-10 | PRO-R14-RD-DL-120 FF+3d, CO-R14.S08-RD-P-120 SS+3d, CO-R14.S08-RD-P-120 FF+3d, CO-R11.S06-RD-P-130, CO-R14-PW-TF-100, CO-R14-PW-TF-110, CO-R14-PW-TF-120, CO-R14-SW-TF-100, CO-R14-SW-TF-110, CO-R14-SW-TF-130, CO-R14-SD-TF-120, CO-R11-SL-TF-180, CO-R11-SL-TF-190, CO-R11-IR-TF-140, CO-R11-MV-TF-180 |  |  |  | -185d | 0d | Labor/Helper [6537.35 h]; Block Mason [6591.55 h]; Interlocking block pavers for sidewalk/footpath 60mm thick on and including 30mm Sand Bedding, 200mm Aggregate subbase, all in accordance with authority standards and complete as per specifications [2730.53]; Extraover for Pedestrian ramps [7.02] | 133,917.83 |  | CO-R11.S08-RD-P-130 | 14 | 14 | LS | IL | Sq.m | LAND | RD |  | CON | R14 | S08 | RD | RD |
|  | 7 | **Road 15 Local 1 ( 556 LM )** |  | 2025-04-13 | 2026-12-21 |  |  |  |  |  |  |  |  |  |  |  |  |  |  |  |  |  |  |  |  |  |  |  |
|  | SW_9 | **SW_9** |  | 2025-04-13 | 2026-12-19 |  |  |  |  |  |  |  |  |  |  |  |  |  |  |  |  |  |  |  |  |  |  |  |
|  | EW | **Earthworks** |  | 2025-04-13 | 2025-04-23 |  |  |  |  |  |  |  |  |  |  |  |  |  |  |  |  |  |  |  |  |  |  |  |
|  | EW | **Earthworks** |  | 2025-04-13 | 2025-04-23 |  |  |  |  |  |  |  |  |  |  |  |  |  |  |  |  |  |  |  |  |  |  |  |
| CO-R15.S09-EW-110 |  | Embankments Works Upto Design Level for Earthworks-[Road 15]-[SW-9] | 12d | 2025-04-13 A | 2025-04-16 A | CO-R15.S09-EW-200, ENG-MS-RD-A-10, ENG-SH-RD-A-100 | 100% | 2025-05-07 | 2025-05-20 |  |  | Labor/Helper [437.72 h]; Skilled Labor/Surveyor [54.71 h]; Foreman [54.71 h]; Water Tank [384 h]; Dozer [384 h]; Embankments to the ROW, with suitable material other than top soil or rock according to specifications [18735.5] | 154,967.84 | 154,967.84 | CO-R15.S09-EW-110 | 7 | 7 | EW | BF | Cub.m | EW | EW |  | CON | R15 | S09 | EW | EW |
| CO-R15.S09-EW-200 |  | Roadway Excavation Works Upto Design Level for Earthworks-[Road 15]-[SW-9] | 10d | 2025-04-16 A | 2025-04-23 A | ENG-MS-RD-A-10, ENG-SH-RD-A-100, CO-R16.S12-EW-100 | 100% | 2025-04-26 | 2025-05-06 |  |  | Labor/Helper [218.86 h]; Skilled Labor/Surveyor [27.36 h]; Foreman [27.36 h]; Water Tank [192 h]; Dozer [192 h]; Roadway Excavation for cuttings; on any type of material for all depths including trimming and Preparation of excavated surfaces and disposal. [11129.8] | 71,601.07 | 71,601.07 | CO-R15.S09-EW-200 | 7 | 7 | EW | Ex | Cub.m | EW | EW |  | CON | R15 | S09 | EW | EW |
|  | SW | **Sewage Network** |  | 2025-04-29 | 2025-09-21 |  |  |  |  |  |  |  |  |  |  |  |  |  |  |  |  |  |  |  |  |  |  |  |
|  | ML | **Main Line Sections** |  | 2025-04-29 | 2025-07-14 |  |  |  |  |  |  |  |  |  |  |  |  |  |  |  |  |  |  |  |  |  |  |  |
| CO-R15.S09-SW-100 |  | Trench Excavation and Bedding Works for Main Lines of Sewage Network-[Road 15]-[SW-9] | 12d | 2025-04-29 A | 2025-05-08 A | CO-R15.S09-EW-110, ENG-MS-SW-ML-A-110, ENG-SH-SW-ML-A-110 | 100% | 2025-05-21 | 2025-06-03 |  |  | Labor/Helper [109.43 h]; Foreman [109.43 h]; Excavator [96 h]; Nominal bore : 160mm; Depth : 0.0m - 1.5m [13.04]; Nominal bore : 200mm; Depth : 0.0m - 1.5m [4.01]; Nominal bore : 200mm; Depth : 1.5m - 2.5m [10.03]; Nominal bore : 200mm; Depth : 2.5m - 3.5m [23.07]; Nominal bore : 200mm; Depth : 3.5m - 4.5m [21.07]; Nominal bore : 200mm; Depth : 4.5m -5.5m [16.05]; Nominal bore : 200mm; Depth : 5.5m - 6.5m [11.03] | 29,826.8 | 29,826.8 | CO-R15.S09-SW-100 | 7 | 7 | ML | Ex | LM | ML | SW | EX | CON | R15 | S09 | SW | SW |
| CO-R15.S09-SW-120 |  | Pipes Laying Works for Main Lines of Sewage Network-[Road 15]-[SW-9] | 12d | 2025-05-09 A | 2025-05-31 A | CO-R15.S09-SW-100, PRO-R15-SW-DL-100 FF+3d | 100% | 2025-06-04 | 2025-06-22 |  |  | Labor/Helper [437.72 h]; Skilled Labor/Surveyor [22.8 h]; Foreman [22.8 h]; Plumber [218.86 h]; Excavator [192 h]; Nominal bore : 160mm; Depth : 0.0m - 1.5m [40.13]; Nominal bore : 200mm; Depth : 0.0m - 1.5m [11.03]; Nominal bore : 200mm; Depth : 1.5m - 2.5m [30.09]; Nominal bore : 200mm; Depth : 2.5m - 3.5m [68.21]; Nominal bore : 200mm; Depth : 3.5m - 4.5m [64.2]; Nominal bore : 200mm; Depth : 4.5m -5.5m [47.15]; Nominal bore : 200mm; Depth : 5.5m - 6.5m [34.11] | 89,795.94 | 89,795.94 | CO-R15.S09-SW-120 | 7 | 7 | ML | PL | LM | ML | SW | PIPE | CON | R15 | S09 | SW | SW |
| CO-R15.S09-SW-130 |  | Trench Backfilling and Compaction Works for Main Lines of Sewage Network-[Road 15]-[SW-9] | 10d | 2025-07-11 A | 2025-07-14 A | ENG-SH-SW-ML-A-110 FF, ENG-MS-SW-ML-A-110 FF, CO-R15.S09-SW-120, CO-R15.S09-SW-210 FF, CO-R16.S12-SW-130 | 100% | 2025-07-20 | 2025-07-30 |  |  | Skilled Labor/Surveyor [11.4 h]; Foreman [11.4 h]; Excavator [96 h]; Nominal bore : 160mm; Depth : 0.0m - 1.5m [7.02]; Nominal bore : 200mm; Depth : 0.0m - 1.5m [1]; Nominal bore : 200mm; Depth : 1.5m - 2.5m [6.02]; Nominal bore : 200mm; Depth : 2.5m - 3.5m [11.03]; Nominal bore : 200mm; Depth : 3.5m - 4.5m [11.03]; Nominal bore : 200mm; Depth : 4.5m -5.5m [8.03]; Nominal bore : 200mm; Depth : 5.5m - 6.5m [6.02] | 15,328.5 | 15,328.5 | CO-R15.S09-SW-130 | 7 | 7 | ML | BF | LM | ML | SW | BACK | CON | R15 | S09 | SW | SW |

| ID | WBS | Activity | Duration | Start | Finish | Predecessors | Complete | Planned start | Planned finish | Total float | Free float | Resources | Cost | Actual cost | Activity ID N | Seq | New Seq | 01- Network | 07-Weightage System | 08 Stage | 09 Roads | 10 side Walk | Discipline | New Discipline | 02- Network-WBS | 03- Activity | 04-UOM | 05-Discipline |
| --- | --- | --- | --- | --- | --- | --- | --- | --- | --- | --- | --- | --- | --- | --- | --- | --- | --- | --- | --- | --- | --- | --- | --- | --- | --- | --- | --- | --- |
|  | 1 | **Manholes** |  | 2025-05-10 | 2025-09-21 |  |  |  |  |  |  |  |  |  |  |  |  |  |  |  |  |  |  |  |  |  |  |  |
| CO-R15.S09-SW-160 |  | Excavation Works for Main Line Manholes of Sewage Network-[Road 15]-[SW-9] | 1d | 2025-05-10 A | 2025-05-15 A | CO-R15.S09-SW-120 SS | 100% | 2025-06-04 | 2025-06-04 |  |  | Labor/Helper [18.24 h]; Skilled Labor/Surveyor [9.12 h]; Excavator [16 h]; Depth: not exceeding 1.5m [0.3]; Depth: 1.5 - 2.5m [1]; Depth: 5.5 - 6.5m [0.45]; Depth:6.5 - 7.5m [0.3] | 30,007.54 | 30,007.54 | CO-R15.S09-SW-160 | 7 | 7 | SW | EX | CON | R15 | S09 | SW | SW |  |  |  |  |
| CO-R15.S09-SW-170 |  | Installation RC Footing Works for Main Line Manholes of Sewage Network-[Road 15]-[SW-9] | 2d | 2025-06-15 A | 2025-06-30 A | CO-R15.S09-SW-160, PRO-R15-SW-DL-110 FF+3d | 100% | 2025-06-10 | 2025-06-11 |  |  | Cons. Carpenter [44.99 h]; Steel Fixer [36.48 h]; Depth: not exceeding 1.5m [0.2]; Depth: 1.5 - 2.5m [1]; Depth: 5.5 - 6.5m [0.3]; Depth:6.5 - 7.5m [0.2] | 22,451.03 | 22,451.03 | CO-R15.S09-SW-170 | 7 | 7 | SW | RC F | CON | R15 | S09 | SW | SW |  |  |  |  |
| CO-R15.S09-SW-180 |  | Install Grp Liner Wall Works for Main Line Manholes of Sewage Network-[Road 15]-[SW-9] | 4d | 2025-07-01 A | 2025-07-05 A | CO-R15.S09-SW-170 | 100% | 2025-06-12 | 2025-06-16 |  |  | Labor/Helper [36.48 h]; Plumber [36.48 h]; Depth: not exceeding 1.5m [1]; Depth: 1.5 - 2.5m [3.01]; Depth: 5.5 - 6.5m [1]; Depth:6.5 - 7.5m [1] | 84,251.09 | 84,251.09 | CO-R15.S09-SW-180 | 7 | 7 | SW | LP | CON | R15 | S09 | SW | SW |  |  |  |  |
| CO-R15.S09-SW-190 |  | Pouring Grp Liner Wall Works for Main Line Manholes of Sewage Network-[Road 15]-[SW-9] | 1d | 2025-09-16 A | 2025-09-16 A | CO-R15.S09-SW-180 | 100% | 2025-06-17 | 2025-06-17 |  |  | Cons. Carpenter [36.48 h]; Steel Fixer [36.48 h]; Depth: not exceeding 1.5m [0.1]; Depth: 1.5 - 2.5m [0.25]; Depth: 5.5 - 6.5m [0.15]; Depth:6.5 - 7.5m [0.1] | 9,385.4 | 9,385.4 | CO-R15.S09-SW-190 | 7 | 7 | SW | (New) | CON | R15 | S09 | SW | SW |  |  |  |  |
| CO-R15.S09-SW-200 |  | Backfilling Works for Main Line Manholes of Sewage Network-[Road 15]-[SW-9] | 4d | 2025-09-16 A | 2025-09-20 A | CO-R15.S09-SW-190 | 100% | 2025-06-18 | 2025-06-22 |  |  | Labor/Helper [36.48 h]; Skilled Labor/Surveyor [18.24 h]; Excavator [32 h]; Depth: not exceeding 1.5m [0.3]; Depth: 1.5 - 2.5m [1]; Depth: 5.5 - 6.5m [0.45]; Depth:6.5 - 7.5m [0.3] | 30,007.54 | 30,007.54 | CO-R15.S09-SW-200 | 7 | 7 | SW | BACK | CON | R15 | S09 | SW | SW |  |  |  |  |
| CO-R15.S09-SW-210 |  | Testing Works for Main Line Manholes of Sewage Network-[Road 15]-[SW-9] | 1d | 2025-09-21 A | 2025-09-21 A | CO-R15.S09-SW-200 | 100% | 2025-06-23 | 2025-06-23 |  |  | Labor/Helper [18.24 h]; Plumber [18.24 h]; Depth: not exceeding 1.5m [0.1]; Depth: 1.5 - 2.5m [0.25]; Depth: 5.5 - 6.5m [0.15]; Depth:6.5 - 7.5m [0.1] | 9,385.4 | 9,385.4 | CO-R15.S09-SW-210 | 7 | 7 | SW | T&COV | CON | R15 | S09 | SW | SW |  |  |  |  |
|  | SD | **Storm Drainage Network** |  | 2025-06-17 | 2026-07-13 |  |  |  |  |  |  |  |  |  |  |  |  |  |  |  |  |  |  |  |  |  |  |  |
|  | ML | **Main Line Sections** |  | 2025-07-11 | 2025-07-17 |  |  |  |  |  |  |  |  |  |  |  |  |  |  |  |  |  |  |  |  |  |  |  |
| CO-R15.S09-SD-100 |  | Trench Excavation and Bedding Works for Main Lines of Storm Drainage Network-[Road 15]-[SW-9] | 10d | 2025-07-11 A | 2025-07-14 A | ENG-SH-SD-ML-A-110, CO-R15.S09-EW-110, CO-R15.S09-EW-200, CO-R15.S09-SW-130 SS+3d, CO-R15.S09-SW-130 FF+3d, ENG-MS-SD-ML-A-110 | 100% | 2025-07-23 | 2025-08-03 |  |  | Skilled Labor/Surveyor [13.68 h]; Foreman [13.68 h]; Excavator [112 h]; Pipe with diameter 600mm ; depth: 1.51m - 2.5m [14.04]; Pipe with diameter 700mm ; depth: 1.51m - 2.5m [54.17]; Pipe with diameter 1000mm ; depth: 1.51m - 2.5m [20.06]; Pipe with diameter 1000mm ; depth: 2.51 - 3.5m [42.13] | 82,071.95 | 82,071.95 | CO-R15.S09-SD-100 | 7 | 7 | SD | EX | CON | R15 | S09 | SD | SD | ML | Ex | LM | ML |
| CO-R15.S09-SD-120 |  | Pipes Laying Works for Main Lines of Storm Drainage Network-[Road 15]-[SW-9] | 15d | 2025-07-15 A | 2025-07-16 A | CO-R15.S09-SD-100 | 100% | 2025-08-04 | 2025-08-20 |  |  | Labor/Helper [273.57 h]; Skilled Labor/Surveyor [13.68 h]; Foreman [13.68 h]; Plumber [136.79 h]; Excavator [120 h]; Pipe with diameter 600mm ; depth: 1.51m - 2.5m [41.13]; Pipe with diameter 700mm ; depth: 1.51m - 2.5m [160.5]; Pipe with diameter 1000mm ; depth: 1.51m - 2.5m [59.18]; Pipe with diameter 1000mm ; depth: 2.51 - 3.5m [127.4] | 244,915.93 | 244,915.93 | CO-R15.S09-SD-120 | 7 | 7 | SD | PIPE | CON | R15 | S09 | SD | SD | ML | PL | LM | ML |
| CO-R15.S09-SD-130 |  | Trench Backfilling and Compaction Works for Main Lines of Storm Drainage Network-[Road 15]-[SW-9] | 16d | 2025-07-17 A | 2025-07-17 A | CO-R15.S09-SD-120 SS+3d, CO-R15.S09-SD-120 FF+3d, ENG-SH-SD-ML-A-110 FF, CO-R14.S07-SD-130, ENG-MS-SD-ML-A-110 FF, CO-R15.S09-SD-120, CO-R15.S09-SD-220 FF | 100% | 2026-02-02 | 2026-02-19 |  |  | Skilled Labor/Surveyor [14.82 h]; Foreman [14.82 h]; Excavator [128 h]; Pipe with diameter 600mm ; depth: 1.51m - 2.5m [7.02]; Pipe with diameter 700mm ; depth: 1.51m - 2.5m [27.08]; Pipe with diameter 1000mm ; depth: 1.51m - 2.5m [10.03]; Pipe with diameter 1000mm ; depth: 2.51 - 3.5m [21.07] | 41,037 | 41,037 | CO-R15.S09-SD-130 | 7 | 7 | SD | BACK | CON | R15 | S09 | SD | SD | ML | BF | LM | ML |
|  | MH | **Manholes** |  | 2025-06-17 | 2026-07-13 |  |  |  |  |  |  |  |  |  |  |  |  |  |  |  |  |  |  |  |  |  |  |  |
| CO-R15.S09-SD-190 |  | Install RC Footing Works for Manholes of Storm Drainage Network-[Road 15]-[SW-9] | 1d | 2025-06-17 A | 2025-07-17 A | CO-R15.S09-SD-180 | 100% | 2025-08-05 | 2025-08-05 |  |  | Cons. Carpenter [173.53 h]; Steel Fixer [55.24 h]; MH ; depth: 0.0m - 1.5m [0.05]; MH ; depth: 1.51m - 2.5m [0.1]; MH ; depth: 1.51m - 2.5m [0.15]; MH ; depth: 1.51m - 2.5m [0.05] | 3,381.03 | 3,381.03 | CO-R15.S09-SD-190 | 7 | 7 | SD | RC F | CON | R15 | S09 | SD | SD |  |  |  |  |
| CO-R15.S09-SD-180 |  | Trench Excavation and Bedding Works for Manholes of Storm Drainage Network-[Road 15]-[SW-9] | 1d | 2025-07-15 A | 2025-07-16 A | CO-R15.S09-SD-120 SS, PRO-SD-1DL-100 | 100% | 2025-08-04 | 2025-08-04 |  |  | Labor/Helper [27.36 h]; Skilled Labor/Surveyor [13.68 h]; Excavator [24 h]; MH ; depth: 0.0m - 1.5m [0.15]; MH ; depth: 1.51m - 2.5m [0.3]; MH ; depth: 1.51m - 2.5m [0.45]; MH ; depth: 1.51m - 2.5m [0.15] | 10,144.11 | 10,144.11 | CO-R15.S09-SD-180 | 7 | 7 | SD | EX | CON | R15 | S09 | SD | SD |  |  |  |  |
| CO-R15.S09-SD-200 |  | Install RC Wall Rings & Slab Works for Manholes of Storm Drainage Network-[Road 15]-[SW-9] | 4d | 2025-07-18 A | 2025-07-18 A | CO-R15.S09-SD-190 | 100% | 2025-08-06 | 2025-08-10 |  |  | Cons. Carpenter [218.86 h]; Steel Fixer [218.86 h]; MH ; depth: 0.0m - 1.5m [0.45]; MH ; depth: 1.51m - 2.5m [1]; MH ; depth: 1.51m - 2.5m [0.45] | 27,802.88 | 27,802.88 | CO-R15.S09-SD-200 | 7 | 7 | SD | RC W | CON | R15 | S09 | SD | SD |  |  |  |  |
| CO-R15.S09-SD-220 |  | Backfilling Works for Manholes of Storm Drainage Network-[Road 15]-[SW-9] | 7d | 2025-07-19 A | 2025-07-19 A | CO-R15.S09-SD-210 | 100% | 2025-08-12 | 2025-08-19 |  |  | Labor/Helper [191.5 h]; Skilled Labor/Surveyor [95.75 h]; Excavator [168 h]; MH ; depth: 0.0m - 1.5m [0.2]; MH ; depth: 1.51m - 2.5m [0.4]; MH ; depth: 1.51m - 2.5m [1]; MH ; depth: 1.51m - 2.5m [0.2] | 17,443.3 | 17,443.3 | CO-R15.S09-SD-220 | 7 | 7 | SD | BACK | CON | R15 | S09 | SD | SD |  |  |  |  |
| CO-R15.S09-SD-210 |  | Testing Works for Manholes of Storm Drainage Network-[Road 15]-[SW-9] | 1d | 2026-06-04 A | 2026-07-13 A | CO-R15.S09-SD-200 | 100% | 2025-08-11 | 2025-08-11 |  |  | Labor/Helper [93.17 h]; Plumber [30.36 h]; MH ; depth: 0.0m - 1.5m [0.1]; MH ; depth: 1.51m - 2.5m [0.2]; MH ; depth: 1.51m - 2.5m [0.3]; MH ; depth: 1.51m - 2.5m [0.1] | 6,763.08 | 6,763.08 | CO-R15.S09-SD-210 | 7 | 7 | SD | T&COV | CON | R15 | S09 | SD | SD |  |  |  |  |
|  | CB | **Catch Basin Sections** |  | 2025-06-19 | 2026-07-13 |  |  |  |  |  |  |  |  |  |  |  |  |  |  |  |  |  |  |  |  |  |  |  |
| CO-R15.S09-SD-140 |  | Trench Excavation and Bedding Works for Catch Basins of Storm Drainage Network-[Road 15]-[SW-9] | 7d | 2025-06-19 A | 2025-06-23 A | CO-R15.S09-EW-110, ENG-SH-SD-CB-A-110, ENG-MS-SD-CB-A-110, CO-R15.S09-SD-220 | 100% | 2025-08-20 | 2025-08-27 |  |  | Skilled Labor/Surveyor [6.84 h]; Foreman [6.84 h]; Excavator [56 h]; Pipe with diameter 300mm ; depth: 0 - 1.5m [59.18]; Pipe with diameter 400mm ; depth: 0 - 1.5m [4.01] | 15,030.32 | 15,030.32 | CO-R15.S09-SD-140 | 7 | 7 | SD | EX | CON | R15 | S09 | SD | SD | CB | Ex | Each | CB |
| CO-R15.S09-SD-150 |  | Installation and Pipes Laying Connection Works for Catch Basins of Storm Drainage Network-[Road 15]-[SW-9] | 7d | 2025-08-03 A | 2025-08-05 A | CO-R15.S09-SD-140 | 100% | 2025-08-28 | 2025-09-04 |  |  | Labor/Helper [182.38 h]; Skilled Labor/Surveyor [9.12 h]; Foreman [9.12 h]; Excavator [80 h]; Pipe with diameter 300mm ; depth: 0 - 1.5m [177.55]; Pipe with diameter 400mm ; depth: 0 - 1.5m [11.03] | 44,775.43 | 44,775.43 | CO-R15.S09-SD-150 | 7 | 7 | SD | INSTALL | CON | R15 | S09 | SD | SD | CB | CB | Each | CB |
| CO-R15.S09-SD-170 |  | Trench Backfilling and Compaction Works for Catch Basins of Storm Drainage Network-[Road 15]-[SW-9] | 10d | 2025-08-06 A | 2025-08-07 A | CO-R15.S09-SD-160 | 100% | 2025-09-14 | 2025-09-25 |  |  | Skilled Labor/Surveyor [9.12 h]; Foreman [9.12 h]; Excavator [80 h]; Pipe with diameter 300mm ; depth: 0 - 1.5m [78.24]; Pipe with diameter 400mm ; depth: 0 - 1.5m [4.01] | 19,464.16 | 19,464.16 | CO-R15.S09-SD-170 | 7 | 7 | SD | BACK | CON | R15 | S09 | SD | SD | CB | BF | Each | CB |
| CO-R15.S09-SD-160 |  | Testing Works for Catch Basins of Storm Drainage Network-[Road 15]-[SW-9] | 7d | 2026-06-04 A | 2026-07-13 A | CO-R15.S09-SD-150, CO-R15.S09-SD-120 | 100% | 2025-09-06 | 2025-09-13 |  |  | Labor/Helper [127.67 h]; Skilled Labor/Surveyor [18.23 h]; Foreman [19.63 h]; Plumber [63.83 h]; Excavator [56 h]; Pipe with diameter 300mm ; depth: 0 - 1.5m [40.13]; Pipe with diameter 400mm ; depth: 0 - 1.5m [3.01] | 10,280.95 | 10,280.95 | CO-R15.S09-SD-160 | 7 | 7 | SD | TEST | CON | R15 | S09 | SD | SD | CB | PL | Each | CB |
|  | IR | **Irrigation Network** |  | 2025-04-28 | 2026-12-19 |  |  |  |  |  |  |  |  |  |  |  |  |  |  |  |  |  |  |  |  |  |  |  |
|  | ML | **Main Line Pipes** |  | 2025-04-28 | 2026-12-19 |  |  |  |  |  |  |  |  |  |  |  |  |  |  |  |  |  |  |  |  |  |  |  |
| CO-R15.S09-IR-100 |  | Trench Excavation and Bedding Works for Main Lines of Irrigation Network-[Road 15]-[SW-9] | 7d | 2025-04-28 A | 2025-05-05 A | ENG-SH-IR-ML-A-110, CO-R15.S09-EW-110, CO-R15.S09-SD-170, ENG-MS-IR-ML-A-110 | 100% | 2025-09-27 | 2025-10-04 |  |  | Skilled Labor/Surveyor [6.84 h]; Foreman [6.84 h]; Excavator [56 h]; 125 mm pipe; depth 0.0m - 1.5m [199.62] | 15,160.01 | 15,160.01 | CO-R15.S09-IR-100 | 7 | 7 | IR | EX | CON | R15 | S09 | IR | IR | ML | Ex | LM | ML |
| CO-R15.S09-IR-110 |  | Pipes Laying Works for Main Lines of Irrigation Network-[Road 15]-[SW-9] | 10d | 2025-05-06 A | 2025-05-31 A | CO-R15.S09-IR-100, PRO-R15-IR-DL-100 FF+3d | 100% | 2025-10-05 | 2025-10-15 |  |  | Labor/Helper [182.38 h]; Skilled Labor/Surveyor [9.12 h]; Foreman [9.12 h]; Plumber [91.19 h]; Excavator [80 h]; 125 mm pipe; depth 0.0m - 1.5m [599.87] | 45,556.61 | 45,556.61 | CO-R15.S09-IR-110 | 7 | 7 | IR | PIPE | CON | R15 | S09 | IR | IR | ML | PL | LM | ML |
| CO-R15.S09-IR-130 |  | Trench Backfilling and Compaction Works for Main Lines of Irrigation Network-[Road 15]-[SW-9] | 10d | 2025-06-01 A | 2025-06-12 A | CO-R15.S09-IR-110 | 100% | 2025-10-25 | 2025-11-04 |  |  | Skilled Labor/Surveyor [9.12 h]; Foreman [9.12 h]; Excavator [80 h]; 125 mm pipe; depth 0.0m - 1.5m [100.31] | 7,617.79 | 7,617.79 | CO-R15.S09-IR-130 | 7 | 7 | IR | BACK | CON | R15 | S09 | IR | IR | ML | BF | LM | ML |
| CO-R15.S09-IR-120 |  | Installation Works for Main Line Valves of Irrigation Network-[Road 15]-[SW-9] | 7d | 2026-12-12 | 2026-12-19 | CO-R15.S09-IR-110, PRO-R15-IR-DL-110 FF+3d |  |  |  | -44d | 96d | Labor/Helper [125.62 h]; Skilled Labor/Surveyor [6.73 h]; Foreman [6.73 h]; Plumber [125.62 h]; Gate valves dia (90)mm on pipes with dia (125) mm. [8.03] | 16,334.33 |  | CO-R15.S09-IR-120 | 7 | 7 | IR | VALV | CON | R15 | S09 | IR | IR | ML | VI | Each | ML |

| ID | WBS | Activity | Duration | Start | Finish | Predecessors | Complete | Planned start | Planned finish | Resources | Cost | Actual cost | Activity ID N | Seq | New Seq | 02- Network-WBS | 03- Activity | 04-UOM | 05-Discipline | 01- Network | 07-Weightage System | 08 Stage | 09 Roads | 10 side Walk | Discipline | New Discipline |
| --- | --- | --- | --- | --- | --- | --- | --- | --- | --- | --- | --- | --- | --- | --- | --- | --- | --- | --- | --- | --- | --- | --- | --- | --- | --- | --- |
|  | TE | **Telecom Network** |  | 2025-08-02 | 2025-08-28 |  |  |  |  |  |  |  |  |  |  |  |  |  |  |  |  |  |  |  |  |  |
|  | PD | **Ducts Works** |  | 2025-08-02 | 2025-08-19 |  |  |  |  |  |  |  |  |  |  |  |  |  |  |  |  |  |  |  |  |  |
| CO-R15.S09-TE-100 |  | Trench Excavation and Bedding Works for Ducts of Telecom Network-[Road 15]-[SW-9] | 7d | 2025-08-02 A | 2025-08-05 A | CO-R15.S09-IR-130, CO-R16.S12-TE-100 | 100% | 2025-12-16 | 2025-12-23 | Skilled Labor/Surveyor [6.84 h]; Foreman [6.84 h]; Excavator [56 h]; 6-way ducts, 50mm dia. HDPE [31.1]; Road crossing ducts (6-way) [3.01] | 4,769.8 | 4,769.8 | CO-R15.S09-TE-100 | 7 | 7 | PD | Ex | LM | DC | TE | DUCTS | CON | R15 | S09 | TE | TE |
| CO-R15.S09-TE-110 |  | Pipes Laying Works for Ducts of Telecom Network-[Road 15]-[SW-9] | 7d | 2025-08-06 A | 2025-08-09 A | CO-R15.S09-TE-100 | 100% | 2026-07-15 | 2026-07-22 | Labor/Helper [127.67 h]; Skilled Labor/Surveyor [6.84 h]; Foreman [6.84 h]; Plumber [63.83 h]; Excavator [56 h]; JCB [28 h]; Truck [56 h]; 6-way ducts, 50mm dia. HDPE [187.59]; Road crossing ducts (6-way) [16.05] | 28,413.53 | 28,413.53 | CO-R15.S09-TE-110 | 7 | 7 | PD | PL | LM | DC | TE | DUCTS | CON | R15 | S09 | TE | TE |
| CO-R15.S09-TE-120 |  | Pouring Plain Concrete Above Ducts of Telecom Network-[Road 15]-[SW-9] | 7d | 2025-08-10 A | 2025-08-13 A | CO-R15.S09-TE-110 | 100% | 2026-07-23 | 2026-07-30 | Skilled Labor/Surveyor [6.84 h]; Foreman [6.84 h]; Cons. Carpenter [127.67 h]; Block Mason [63.83 h]; 6-way ducts, 50mm dia. HDPE [31.1]; Road crossing ducts (6-way) [3.01] | 4,769.8 | 4,769.8 | CO-R15.S09-TE-120 | 7 | 7 | PD | PC | LM | DC | TE | DUCTS | CON | R15 | S09 | TE | TE |
| CO-R15.S09-TE-130 |  | Trench Backfilling and Compaction Works for Ducts of Telecom Network-[Road 15]-[SW-9] | 7d | 2025-08-16 A | 2025-08-19 A | CO-R15.S09-TE-120 | 100% | 2026-08-01 | 2026-08-08 | Skilled Labor/Surveyor [6.84 h]; Foreman [6.84 h]; Excavator [56 h]; 6-way ducts, 50mm dia. HDPE [62.19]; Road crossing ducts (6-way) [6.02] | 9,539.59 | 9,539.59 | CO-R15.S09-TE-130 | 7 | 7 | PD | BF | LM | DC | TE | DUCTS | CON | R15 | S09 | TE | TE |
|  | MH | **Manholes Works** |  | 2025-08-26 | 2025-08-28 |  |  |  |  |  |  |  |  |  |  |  |  |  |  |  |  |  |  |  |  |  |
| CO-R15.S09-TE-140 |  | Excavation Works for Manholes of Telecom Network-[Road 15]-[SW-9] | 7d | 2025-08-26 A | 2025-08-26 A | CO-R15.S09-TE-100 | 100% | 2026-07-15 | 2026-07-22 | Skilled Labor/Surveyor [6.84 h]; Foreman [6.84 h]; Excavator [56 h]; Manhole Type 2 (2000x1000x1000) [0.4] | 1,283.59 | 1,283.59 | CO-R15.S09-TE-140 | 7 | 7 | MH | Ex | Each | MNH | TE | EXC | CON | R15 | S09 | TE | TE |
| CO-R15.S09-TE-150 |  | Installation Works for Manholes of Telecom Network-[Road 15]-[SW-9] | 7d | 2025-08-27 A | 2025-08-27 A | CO-R15.S09-TE-140 | 100% | 2026-07-23 | 2026-07-30 | Skilled Labor/Surveyor [6.84 h]; Foreman [6.84 h]; Excavator [56 h]; Manhole Type 1 (2000x1000x1000) [1]; Manhole Type 2 (2000x1000x1000) [1] | 6,410.79 | 6,410.79 | CO-R15.S09-TE-150 | 7 | 7 | MH | HH | Each | MNH | TE | INSTALL-1 | CON | R15 | S09 | TE | TE |
| CO-R15.S09-TE-160 |  | Backfilling Works for Manholes of Telecom Network-[Road 15]-[SW-9] | 7d | 2025-08-28 A | 2025-08-28 A | CO-R15.S09-TE-150 | 100% | 2026-08-01 | 2026-08-08 | Skilled Labor/Surveyor [6.84 h]; Foreman [6.84 h]; Excavator [56 h]; Manhole Type 2 (2000x1000x1000) [0.4] | 1,283.59 | 1,283.59 | CO-R15.S09-TE-160 | 7 | 7 | MH | BF | Each | MNH | TE | (New)-2 | CON | R15 | S09 | TE | TE |
|  | MV | **Medium Voltage Network** |  | 2025-08-08 | 2025-08-10 |  |  |  |  |  |  |  |  |  |  |  |  |  |  |  |  |  |  |  |  |  |
|  | CW | **Cabling Works** |  | 2025-08-08 | 2025-08-10 |  |  |  |  |  |  |  |  |  |  |  |  |  |  |  |  |  |  |  |  |  |
| CO-R15.S09-MV-ML-250 |  | Trench Excavation and Bedding Works for Medium Voltage Network-[Road 15]-[SW-9] | 18d | 2025-08-08 A | 2025-08-08 A | ENG-SH-MV-A-110, CO-R15.S09-SD-170 SS+3d, CO-R15.S09-SD-170 FF+3d, CO-R15.S09-EW-110, CO-R15.S09-TE-130 SS+3d, CO-R15.S09-TE-130 FF+3d, ENG-MS-MV-A-110, CO-R15.S10-SL-160 | 100% | 2026-08-04 | 2026-08-24 | Skilled Labor/Surveyor [17.1 h]; Foreman [17.1 h]; Excavator [144 h]; Excavation for Trench size 40cm wide and 80cm deep ( Maximum 1 cable 33kv) [277.87]; Excavation for Trench size 60cm wide and 80cm deep ( for Max two cables 33 kv) [16.05]; Excavation for Trench size 90cm wide and 80cm deep ( Maximum 3 cable 33kv) [71.22]; Excavation for Trench size 120cm wide and 80cm deep ( Maximum 4cable 33kv) [24.08]; Excavation for Trench size 150cm wide and 80cm deep ( Maximum 4cable 33kv) [88.28]; Duct bank for (2) 33 kv cables [10.03]; Duct bank for (4) 33 kv cables [64.2]; Duct bank for (6) 33 kv cables [28.09] | 33,057.72 | 33,057.72 | CO-R15.S09-MV-ML-250 | 7 | 7 | CW | Ex | LM | CW | MV | EXC | CON | R15 | S09 | MV | MV |
| CO-R15.S09-MV-ML-260 |  | Cable Laying Works for Medium Voltage Network-[Road 15]-[SW-9] | 18d | 2025-08-09 A | 2025-08-09 A | CO-R15.S09-MV-ML-250 SS+3d, CO-R15.S09-MV-ML-250 FF+3d, PRO-R15-MV-DL-100 FF+3d | 100% | 2026-08-08 | 2026-08-27 | Labor/Helper [164.14 h]; Electrician [164.14 h]; Low Current Technician [164.14 h]; 33kv 3Cx400 mmï¿½ Al XLPE / LLDPE /PVC Cable [1308.09]; 33kv 3Cx400 mmï¿½ Al XLPE /LLDPE/PVC [4.01] | 177,727.25 | 177,727.25 | CO-R15.S09-MV-ML-260 | 7 | 7 | CW | CL | LM | CW | MV | LAY | CON | R15 | S09 | MV | MV |
| CO-R15.S09-MV-ML-270 |  | Trench Backfilling and Compaction Works for Medium Voltage Network-[Road 15]-[SW-9] | 18d | 2025-08-09 A | 2025-08-10 A | CO-R15.S09-MV-ML-260 SS+3d, CO-R15.S09-MV-ML-260 FF+3d | 100% | 2026-08-11 | 2026-08-31 | Skilled Labor/Surveyor [17.1 h]; Foreman [17.1 h]; Excavator [144 h]; Water Tank [36 h]; 33kv 3Cx400 mmï¿½ Al XLPE / LLDPE /PVC Cable [560.75]; 33kv 3Cx400 mmï¿½ Al XLPE /LLDPE/PVC [1] | 74,878.96 | 74,878.96 | CO-R15.S09-MV-ML-270 | 7 | 7 | CW | BF | LM | CW | MV | BACK | CON | R15 | S09 | MV | MV |
|  | RD | **Road Works** |  | 2025-07-22 | 2026-10-12 |  |  |  |  |  |  |  |  |  |  |  |  |  |  |  |  |  |  |  |  |  |
|  | RD | **Pre-Bituminous Construction** |  | 2025-07-22 | 2025-10-07 |  |  |  |  |  |  |  |  |  |  |  |  |  |  |  |  |  |  |  |  |  |
| CO-R15.S09-RD-P-100 |  | Capping and Subgrade Layer for Road Works-[Road 15]-[SW-9] | 18d | 2025-07-22 A | 2025-07-27 A | ENG-SH-RD-A-100, CO-R15.S09-SD-130, CO-R15.S09-SW-130, ENG-MS-RD-A-10, CO-R15.S09-TE-130, CO-R15.S09-TE-160, CO-R15.S09-MV-ML-270 SS+3d, CO-R15.S09-MV-ML-270 FF+3d | 100% | 2026-08-15 | 2026-09-03 | Labor/Helper [328.29 h]; Skilled Labor/Surveyor [164.14 h]; Loader [144 h]; Grader [144 h]; Road Roller [144 h]; Water Tank [144 h]; 300mm capping layer underneath subgrade , CBR?15% [2364.39]; 300mm thick Subgrade, including subgrade preparation, CBR?25% [2364.39] | 187,356.71 | 187,356.71 | CO-R15.S09-RD-P-100 | 7 | 7 | AB | SG | Sq.m | BS | RD |  | CON | R15 | S09 | RD | RD |
| CO-R15.S09-RD-P-110 |  | Aggregate Base Course Layer for Road Works-[Road 15]-[SW-9] | 18d | 2025-10-01 A | 2025-10-07 A | CO-R15.S09-RD-P-100 SS+3d, CO-R15.S09-RD-P-100 FF+3d, CO-R15.S09-SD-170 SS+3d, CO-R15.S09-SD-170 FF+3d, CO-R14.S07-RD-P-110 | 100% | 2026-09-27 | 2026-10-17 | Labor/Helper [328.29 h]; Skilled Labor/Surveyor [164.14 h]; Foreman [164.14 h]; Loader [144 h]; Grader [144 h]; Road Roller [144 h]; Aggregate base course 200mm thick after compaction in two layers(Grading 1); CBR?80%; including watering, compaction and testing [1576.93] | 130,544.97 | 130,544.97 | CO-R15.S09-RD-P-110 | 7 | 7 | AB | BA | Sq.m | BS | RD |  | CON | R15 | S09 | RD | RD |
|  | LS | **Pavement Works** |  | 2026-08-25 | 2026-10-12 |  |  |  |  |  |  |  |  |  |  |  |  |  |  |  |  |  |  |  |  |  |
| CO-R15.S09-RD-P-120 |  | Fixing of Curbstone for Sidewalks Pavement-[Road 15]-[SW-9] | 18d | 2026-08-25 A | 2026-08-31 A | CO-R14.S07-RD-P-120, CO-R15.S09-RD-P-110 SS+3d, CO-R15.S09-RD-P-110 FF+3d | 100% | 2026-09-30 | 2026-10-20 | Labor/Helper [328.29 h]; Block Mason [984.87 h]; Precast Concrete Kerb, Type K1 [872.73]; Precast Concrete Kerb, Type L1 [1730.41] | 106,859.37 | 106,859.37 | CO-R15.S09-RD-P-120 | 7 | 7 | LS | CR | LM | LAND | RD |  | CON | R15 | S09 | RD | RD |
| CO-R15.S09-RD-P-130 |  | Fixing of Interlock Tiles for Sidewalks Pavement-[Road 15]-[SW-9] | 12d | 2026-08-25 A | 2026-10-12 A | CO-R15.S09-RD-P-120 SS+3d, CO-R15.S09-RD-P-120 FF+3d, CO-R15-SW-TF-100, CO-R15-SD-TF-100 | 100% | 2026-10-26 | 2026-11-08 | Labor/Helper [318.71 h]; Block Mason [724.49 h]; Interlocking block pavers for sidewalk/footpath 60mm thick on and including 30mm Sand Bedding, 200mm Aggregate subbase, all in accordance with authority standards and complete as per specifications [1556.86]; Extraover for Pedestrian ramps [4.01] | 76,359.63 | 76,359.63 | CO-R15.S09-RD-P-130 | 7 | 7 | LS | IL | Sq.m | LAND | RD |  | CON | R15 | S09 | RD | RD |
|  | SW_10 | **SW_10** |  | 2025-04-24 | 2026-12-21 |  |  |  |  |  |  |  |  |  |  |  |  |  |  |  |  |  |  |  |  |  |
|  | EW | **Earthworks** |  | 2025-04-24 | 2025-04-30 |  |  |  |  |  |  |  |  |  |  |  |  |  |  |  |  |  |  |  |  |  |
|  | EW | **Earthworks** |  | 2025-04-24 | 2025-04-30 |  |  |  |  |  |  |  |  |  |  |  |  |  |  |  |  |  |  |  |  |  |
| CO-R15.S10-EW-100 |  | Roadway Excavation Works Upto Design Level for Earthworks-[Road 15]-[SW-10] | 10d | 2025-04-24 A | 2025-04-26 A | ENG-MS-RD-A-10, ENG-SH-RD-A-100, CO-R15.S09-EW-200 | 100% | 2025-05-07 | 2025-05-18 | Labor/Helper [455.96 h]; Skilled Labor/Surveyor [56.99 h]; Foreman [56.99 h]; Dump Truck [800 h]; Water Tank [400 h]; Dozer [400 h]; Roadway Excavation for cuttings; on any type of material for all depths including trimming and Preparation of excavated surfaces and disposal. [11129.8] | 71,601.07 | 71,601.07 | CO-R15.S10-EW-100 | 8 | 8 | EW | Ex | Cub.m | EW | EW |  | CON | R15 | S10 | EW | EW |
| CO-R15.S10-EW-110 |  | Embankments Works Upto Design Level for Earthworks-[Road 15]-[SW-10] | 12d | 2025-04-27 A | 2025-04-30 A | CO-R15.S10-EW-100, ENG-MS-RD-A-10, ENG-SH-RD-A-100 | 100% | 2025-05-19 | 2025-06-01 | Labor/Helper [437.72 h]; Skilled Labor/Surveyor [54.71 h]; Foreman [54.71 h]; Dump Truck [768 h]; Water Tank [384 h]; Dozer [384 h]; Embankments to the ROW, with suitable material other than top soil or rock according to specifications [18735.5] | 154,967.84 | 154,967.84 | CO-R15.S10-EW-110 | 8 | 8 | EW | BF | Cub.m | EW | EW |  | CON | R15 | S10 | EW | EW |

| ID | WBS | Activity | Duration | Start | Finish | Predecessors | Complete | Planned start | Planned finish | Resources | Cost | Actual cost | Activity ID N | Seq | New Seq | 02- Network-WBS | 03- Activity | 04-UOM | 05-Discipline | 01- Network | 07-Weightage System | 08 Stage | 09 Roads | 10 side Walk | Discipline | New Discipline |
| --- | --- | --- | --- | --- | --- | --- | --- | --- | --- | --- | --- | --- | --- | --- | --- | --- | --- | --- | --- | --- | --- | --- | --- | --- | --- | --- |
|  | SW | **Sewage Network** |  | 2025-05-01 | 2026-07-07 |  |  |  |  |  |  |  |  |  |  |  |  |  |  |  |  |  |  |  |  |  |
|  | ML | **Main Line Sections** |  | 2025-05-01 | 2025-07-16 |  |  |  |  |  |  |  |  |  |  |  |  |  |  |  |  |  |  |  |  |  |
| CO-R15.S10-SW-100 |  | Trench Excavation and Bedding Works for Main Lines of Sewage Network-[Road 15]-[SW-10] | 12d | 2025-05-01 A | 2025-06-12 A | CO-R15.S10-EW-110, ENG-MS-SW-ML-A-110, ENG-SH-SW-ML-A-110 | 100% | 2025-06-02 | 2025-06-19 | Labor/Helper [109.43 h]; Foreman [109.43 h]; Excavator [96 h]; Nominal bore : 160mm; Depth : 0.0m - 1.5m [13.04]; Nominal bore : 200mm; Depth : 0.0m - 1.5m [4.01]; Nominal bore : 200mm; Depth : 1.5m - 2.5m [10.03]; Nominal bore : 200mm; Depth : 2.5m - 3.5m [23.07]; Nominal bore : 200mm; Depth : 3.5m - 4.5m [21.07]; Nominal bore : 200mm; Depth : 4.5m -5.5m [16.05]; Nominal bore : 200mm; Depth : 5.5m - 6.5m [11.03] | 29,826.8 | 29,826.8 | CO-R15.S10-SW-100 | 8 | 8 | ML | Ex | LM | ML | SW | EX | CON | R15 | S10 | SW | SW |
| CO-R15.S10-SW-120 |  | Pipes Laying Works for Main Lines of Sewage Network-[Road 15]-[SW-10] | 12d | 2025-05-13 A | 2025-05-30 A | PRO-R15-SW-DL-100 FF+3d, CO-R15.S10-SW-100 | 100% | 2025-06-21 | 2025-07-03 | Labor/Helper [437.72 h]; Skilled Labor/Surveyor [22.8 h]; Foreman [22.8 h]; Plumber [218.86 h]; Excavator [192 h]; Nominal bore : 160mm; Depth : 0.0m - 1.5m [40.13]; Nominal bore : 200mm; Depth : 0.0m - 1.5m [11.03]; Nominal bore : 200mm; Depth : 1.5m - 2.5m [30.09]; Nominal bore : 200mm; Depth : 2.5m - 3.5m [68.21]; Nominal bore : 200mm; Depth : 3.5m - 4.5m [64.2]; Nominal bore : 200mm; Depth : 4.5m -5.5m [47.15]; Nominal bore : 200mm; Depth : 5.5m - 6.5m [34.11] | 89,795.94 | 89,795.94 | CO-R15.S10-SW-120 | 8 | 8 | ML | PL | LM | ML | SW | PIPE | CON | R15 | S10 | SW | SW |
| CO-R15.S10-SW-130 |  | Trench Backfilling and Compaction Works for Main Lines of Sewage Network-[Road 15]-[SW-10] | 10d | 2025-07-15 A | 2025-07-16 A | CO-R15.S10-SW-120, CO-R15.S10-SW-210 FF, CO-R15.S09-SW-130 | 100% | 2025-07-31 | 2025-08-11 | Skilled Labor/Surveyor [11.4 h]; Foreman [11.4 h]; Excavator [96 h]; Nominal bore : 160mm; Depth : 0.0m - 1.5m [7.02]; Nominal bore : 200mm; Depth : 0.0m - 1.5m [1]; Nominal bore : 200mm; Depth : 1.5m - 2.5m [6.02]; Nominal bore : 200mm; Depth : 2.5m - 3.5m [11.03]; Nominal bore : 200mm; Depth : 3.5m - 4.5m [11.03]; Nominal bore : 200mm; Depth : 4.5m -5.5m [8.03]; Nominal bore : 200mm; Depth : 5.5m - 6.5m [6.02] | 15,328.5 | 15,328.5 | CO-R15.S10-SW-130 | 8 | 8 | ML | BF | LM | ML | SW | BACK | CON | R15 | S10 | SW | SW |
|  | 1 | **Manholes** |  | 2025-06-01 | 2026-07-07 |  |  |  |  |  |  |  |  |  |  |  |  |  |  |  |  |  |  |  |  |  |
| CO-R15.S10-SW-160 |  | Excavation Works for Main Line Manholes of Sewage Network-[Road 15]-[SW-10] | 1d | 2025-06-01 A | 2025-06-01 A | CO-R15.S10-SW-120 SS | 100% | 2025-06-21 | 2025-06-21 | Labor/Helper [9.12 h]; Skilled Labor/Surveyor [4.56 h]; Excavator [8 h]; Depth: not exceeding 1.5m [0.3]; Depth: 1.5 - 2.5m [0.3]; Depth: 2.5 - 3.5m [0.3]; Depth: 3.5 - 4.5m [0.15] | 8,831.94 | 8,831.94 | CO-R15.S10-SW-160 | 8 | 8 |  |  |  |  | SW | EX | CON | R15 | S10 | SW | SW |
| CO-R15.S10-SW-170 |  | Installation RC Footing Works for Main Line Manholes of Sewage Network-[Road 15]-[SW-10] | 2.25d | 2025-06-25 A | 2025-06-30 A | CO-R15.S10-SW-160, PRO-R15-SW-DL-110 FF+3d | 100% | 2025-06-22 | 2025-06-24 | Cons. Carpenter [41.04 h]; Steel Fixer [41.04 h]; Depth: not exceeding 1.5m [0.2]; Depth: 1.5 - 2.5m [0.2]; Depth: 2.5 - 3.5m [0.2]; Depth: 3.5 - 4.5m [0.1] | 5,886.94 | 5,886.94 | CO-R15.S10-SW-170 | 8 | 8 |  |  |  |  | SW | RC F | CON | R15 | S10 | SW | SW |
| CO-R15.S10-SW-180 |  | Install Grp Liner Wall Works for Main Line Manholes of Sewage Network-[Road 15]-[SW-10] | 4d | 2025-07-01 A | 2025-07-08 A | CO-R15.S10-SW-170 | 100% | 2025-06-24 | 2025-06-29 | Labor/Helper [36.48 h]; Plumber [36.48 h]; Depth: not exceeding 1.5m [1]; Depth: 1.5 - 2.5m [1]; Depth: 2.5 - 3.5m [1]; Depth: 3.5 - 4.5m [0.4] | 28,360.43 | 28,360.43 | CO-R15.S10-SW-180 | 8 | 8 |  |  |  |  | SW | LP | CON | R15 | S10 | SW | SW |
| CO-R15.S10-SW-200 |  | Backfilling Works for Main Line Manholes of Sewage Network-[Road 15]-[SW-10] | 4d | 2025-07-09 A | 2025-07-12 A | CO-R15.S10-SW-190 | 100% | 2025-06-30 | 2025-07-05 | Labor/Helper [36.48 h]; Skilled Labor/Surveyor [18.24 h]; Excavator [32 h]; Depth: not exceeding 1.5m [0.3]; Depth: 1.5 - 2.5m [0.3]; Depth: 2.5 - 3.5m [0.3]; Depth: 3.5 - 4.5m [0.15] | 8,831.94 | 8,831.94 | CO-R15.S10-SW-200 | 8 | 8 |  |  |  |  | SW | BACK | CON | R15 | S10 | SW | SW |
| CO-R15.S10-SW-210 |  | Testing Works for Main Line Manholes of Sewage Network-[Road 15]-[SW-10] | 1d | 2025-07-09 A | 2025-07-12 A | CO-R15.S10-SW-200 | 100% | 2025-07-05 | 2025-07-06 | Labor/Helper [9.12 h]; Plumber [9.12 h]; Depth: not exceeding 1.5m [0.1]; Depth: 1.5 - 2.5m [0.1]; Depth: 2.5 - 3.5m [0.1]; Depth: 3.5 - 4.5m [0.05] | 2,942.96 | 2,942.96 | CO-R15.S10-SW-210 | 8 | 8 |  |  |  |  | SW | T&COV | CON | R15 | S10 | SW | SW |
| CO-R15.S10-SW-190 |  | Pouring Grp Liner Wall Works for Main Line Manholes of Sewage Network-[Road 15]-[SW-10] | 1d | 2026-07-01 A | 2026-07-07 A | CO-R15.S10-SW-180 | 100% | 2025-06-29 | 2025-06-30 | Cons. Carpenter [19.28 h]; Steel Fixer [18.24 h]; Depth: not exceeding 1.5m [0.1]; Depth: 1.5 - 2.5m [0.1]; Depth: 2.5 - 3.5m [0.1]; Depth: 3.5 - 4.5m [0.05] | 2,942.96 | 2,942.96 | CO-R15.S10-SW-190 | 8 | 8 |  |  |  |  | SW | (New) | CON | R15 | S10 | SW | SW |
|  | SD | **Storm Drainage Network** |  | 2025-07-15 | 2026-07-13 |  |  |  |  |  |  |  |  |  |  |  |  |  |  |  |  |  |  |  |  |  |
|  | ML | **Main Line Sections** |  | 2025-07-15 | 2025-07-19 |  |  |  |  |  |  |  |  |  |  |  |  |  |  |  |  |  |  |  |  |  |
| CO-R15.S10-SD-100 |  | Trench Excavation and Bedding Works for Main Lines of Storm Drainage Network-[Road 15]-[SW-10] | 10d | 2025-07-15 A | 2025-07-16 A | CO-R15.S10-EW-110, CO-R15.S10-EW-100, CO-R15.S10-SW-130 SS+3d, CO-R15.S10-SW-130 FF+3d | 100% | 2025-08-04 | 2025-08-14 | Skilled Labor/Surveyor [13.68 h]; Foreman [13.68 h]; Excavator [112 h]; Pipe with diameter 400mm ; depth: 0.0m - 1.5m [57.18]; Pipe with diameter 400mm ; depth: 1.51m - 2.5m [123.39]; Pipe with diameter 500mm ; depth: 1.51m - 2.5m [113.35]; Pipe with diameter 600mm ; depth: 1.51m - 2.5m [14.04]; Pipe with diameter 700mm ; depth: 1.51m - 2.5m [54.17]; Pipe with diameter 800mm ; depth: 1.51m - 2.5m [42.13]; Pipe with diameter 900mm ; depth: 1.51m - 2.5m [45.14] | 173,392.47 | 173,392.47 | CO-R15.S10-SD-100 | 8 | 8 | ML | Ex | LM | ML | SD | EX | CON | R15 | S10 | SD | SD |
| CO-R15.S10-SD-120 |  | Pipes Laying Works for Main Lines of Storm Drainage Network-[Road 15]-[SW-10] | 15d | 2025-07-17 A | 2025-07-17 A | PRO-R15-SD-DL-120 FF+3d, CO-R15.S10-SD-100 | 100% | 2025-08-16 | 2025-09-01 | Labor/Helper [273.57 h]; Skilled Labor/Surveyor [13.68 h]; Foreman [13.68 h]; Plumber [136.79 h]; Excavator [120 h]; Pipe with diameter 400mm ; depth: 0.0m - 1.5m [168.53]; Pipe with diameter 400mm ; depth: 1.51m - 2.5m [372.16]; Pipe with diameter 500mm ; depth: 1.51m - 2.5m [342.07]; Pipe with diameter 600mm ; depth: 1.51m - 2.5m [41.13]; Pipe with diameter 700mm ; depth: 1.51m - 2.5m [160.5]; Pipe with diameter 800mm ; depth: 1.51m - 2.5m [127.4]; Pipe with diameter 900mm ; depth: 1.51m - 2.5m [134.42] | 519,142.98 | 519,142.98 | CO-R15.S10-SD-120 | 8 | 8 | ML | PL | LM | ML | SD | PIPE | CON | R15 | S10 | SD | SD |
| CO-R15.S10-SD-130 |  | Trench Backfilling and Compaction Works for Main Lines of Storm Drainage Network-[Road 15]-[SW-10] | 15d | 2025-07-18 A | 2025-07-19 A | CO-R15.S10-SD-120 SS+3d, CO-R15.S10-SD-120 FF+3d, CO-R14.S08-SD-130, CO-R15.S10-SD-120, CO-R15.S10-SD-220 FF | 100% | 2026-02-08 | 2026-02-24 | Skilled Labor/Surveyor [13.68 h]; Foreman [13.68 h]; Excavator [120 h]; Pipe with diameter 400mm ; depth: 0.0m - 1.5m [28.09]; Pipe with diameter 400mm ; depth: 1.51m - 2.5m [99.31]; Pipe with diameter 600mm ; depth: 1.51m - 2.5m [7.02]; Pipe with diameter 700mm ; depth: 1.51m - 2.5m [27.08]; Pipe with diameter 800mm ; depth: 1.51m - 2.5m [21.07]; Pipe with diameter 900mm ; depth: 1.51m - 2.5m [23.07] | 78,185.45 | 78,185.45 | CO-R15.S10-SD-130 | 8 | 8 | ML | BF | LM | ML | SD | BACK | CON | R15 | S10 | SD | SD |
|  | MH | **Manholes** |  | 2025-07-18 | 2026-07-13 |  |  |  |  |  |  |  |  |  |  |  |  |  |  |  |  |  |  |  |  |  |
| CO-R15.S10-SD-180 |  | Trench Excavation and Bedding Works for Manholes of Storm Drainage Network-[Road 15]-[SW-10] | 1d | 2025-07-18 A | 2025-07-18 A | CO-R15.S10-SD-120 SS, PRO-SD-1DL-100 | 100% | 2025-08-16 | 2025-08-16 | Labor/Helper [45.6 h]; Skilled Labor/Surveyor [22.8 h]; Excavator [40 h]; MH ; depth: 0.0m - 1.5m [0.15]; MH ; depth: 1.51m - 2.5m [0.3]; MH ; depth: 1.51m - 2.5m [0.45]; MH ; depth: 2.51 - 3.5m [0.15]; MH ; depth: 1.51m - 2.5m [0.15]; MH ; depth: 2.51 - 3.5m [0.3] | 18,399.1 | 18,399.1 | CO-R15.S10-SD-180 | 8 | 8 |  |  |  |  | SD | EX | CON | R15 | S10 | SD | SD |
| CO-R15.S10-SD-190 |  | Install RC Footing Works for Manholes of Storm Drainage Network-[Road 15]-[SW-10] | 1d | 2025-07-18 A | 2025-07-18 A | CO-R15.S10-SD-180 | 100% | 2025-08-17 | 2025-08-17 | Cons. Carpenter [91.19 h]; Steel Fixer [91.19 h]; MH ; depth: 0.0m - 1.5m [0.05]; MH ; depth: 1.51m - 2.5m [0.1]; MH ; depth: 1.51m - 2.5m [0.15]; MH ; depth: 2.51 - 3.5m [0.05]; MH ; depth: 1.51m - 2.5m [0.05]; MH ; depth: 2.51 - 3.5m [0.1] | 6,133.03 | 6,133.03 | CO-R15.S10-SD-190 | 8 | 8 |  |  |  |  | SD | RC F | CON | R15 | S10 | SD | SD |
| CO-R15.S10-SD-200 |  | Install RC Wall Rings & Slab Works for Manholes of Storm Drainage Network-[Road 15]-[SW-10] | 4d | 2025-07-19 A | 2025-07-20 A | CO-R15.S10-SD-190 | 100% | 2025-08-18 | 2025-08-21 | Cons. Carpenter [145.91 h]; Steel Fixer [145.91 h]; MH ; depth: 0.0m - 1.5m [0.45]; MH ; depth: 1.51m - 2.5m [1]; MH ; depth: 2.51 - 3.5m [0.45]; MH ; depth: 1.51m - 2.5m [0.45]; MH ; depth: 2.51 - 3.5m [1] | 54,734.72 | 54,734.72 | CO-R15.S10-SD-200 | 8 | 8 |  |  |  |  | SD | RC W | CON | R15 | S10 | SD | SD |
| CO-R15.S10-SD-220 |  | Backfilling Works for Manholes of Storm Drainage Network-[Road 15]-[SW-10] | 7d | 2025-07-21 A | 2025-07-21 A | CO-R15.S10-SD-210 | 100% | 2025-08-24 | 2025-08-31 | Labor/Helper [127.67 h]; Skilled Labor/Surveyor [63.83 h]; Excavator [112 h]; MH ; depth: 0.0m - 1.5m [0.2]; MH ; depth: 1.51m - 2.5m [0.4]; MH ; depth: 1.51m - 2.5m [1]; MH ; depth: 2.51 - 3.5m [0.2]; MH ; depth: 1.51m - 2.5m [0.2]; MH ; depth: 2.51 - 3.5m [0.4] | 28,449.27 | 28,449.27 | CO-R15.S10-SD-220 | 8 | 8 |  |  |  |  | SD | BACK | CON | R15 | S10 | SD | SD |
| CO-R15.S10-SD-210 |  | Testing Works for Manholes of Storm Drainage Network-[Road 15]-[SW-10] | 1d | 2026-06-04 A | 2026-07-13 A | CO-R15.S10-SD-200 | 100% | 2025-08-23 | 2025-08-23 | Labor/Helper [93.17 h]; Plumber [45.6 h]; MH ; depth: 0.0m - 1.5m [0.1]; MH ; depth: 1.51m - 2.5m [0.2]; MH ; depth: 1.51m - 2.5m [0.3]; MH ; depth: 2.51 - 3.5m [0.1]; MH ; depth: 1.51m - 2.5m [0.1]; MH ; depth: 2.51 - 3.5m [0.2] | 12,267.09 | 12,267.09 | CO-R15.S10-SD-210 | 8 | 8 |  |  |  |  | SD | T&COV | CON | R15 | S10 | SD | SD |
|  | CB | **Catch Basin Sections** |  | 2025-08-02 | 2026-07-13 |  |  |  |  |  |  |  |  |  |  |  |  |  |  |  |  |  |  |  |  |  |
| CO-R15.S10-SD-140 |  | Trench Excavation and Bedding Works for Catch Basins of Storm Drainage Network-[Road 15]-[SW-10] | 7d | 2025-08-02 A | 2025-08-04 A | CO-R15.S10-EW-110, CO-R15.S10-SD-220 | 100% | 2025-09-01 | 2025-09-08 | Skilled Labor/Surveyor [6.84 h]; Foreman [6.84 h]; Excavator [56 h]; Pipe with diameter 300mm ; depth: 0 - 1.5m [59.18]; Pipe with diameter 400mm ; depth: 0 - 1.5m [4.01] | 15,030.32 | 15,030.32 | CO-R15.S10-SD-140 | 8 | 8 | CB | Ex | Each | CB | SD | EX | CON | R15 | S10 | SD | SD |
| CO-R15.S10-SD-150 |  | Installation and Pipes Laying Connection Works for Catch Basins of Storm Drainage Network-[Road 15]-[SW-10] | 7d | 2025-08-05 A | 2025-08-09 A | CO-R15.S10-SD-140, PRO-R15-SD-DL-130 FF+3d | 100% | 2025-09-09 | 2025-09-16 | Labor/Helper [182.38 h]; Skilled Labor/Surveyor [9.12 h]; Foreman [9.12 h]; Excavator [80 h]; Pipe with diameter 300mm ; depth: 0 - 1.5m [177.55]; Pipe with diameter 400mm ; depth: 0 - 1.5m [11.03] | 44,775.43 | 44,775.43 | CO-R15.S10-SD-150 | 8 | 8 | CB | CB | Each | CB | SD | INSTALL | CON | R15 | S10 | SD | SD |
| CO-R15.S10-SD-170 |  | Trench Backfilling and Compaction Works for Catch Basins of Storm Drainage Network-[Road 15]-[SW-10] | 10d | 2025-08-10 A | 2025-08-13 A | CO-R15.S10-SD-160 SS+3d, CO-R15.S10-SD-160 FF+3d | 100% | 2025-09-21 | 2025-10-02 | Skilled Labor/Surveyor [9.12 h]; Foreman [9.12 h]; Excavator [80 h]; Pipe with diameter 300mm ; depth: 0 - 1.5m [78.24]; Pipe with diameter 400mm ; depth: 0 - 1.5m [4.01] | 19,464.16 | 19,464.16 | CO-R15.S10-SD-170 | 8 | 8 | CB | BF | Each | CB | SD | BACK | CON | R15 | S10 | SD | SD |
| CO-R15.S10-SD-160 |  | Testing Works for Catch Basins of Storm Drainage Network-[Road 15]-[SW-10] | 4d | 2026-06-04 A | 2026-07-13 A | CO-R15.S10-SD-150, CO-R15.S10-SD-120, PRO-R15-SD-DL-110 FF+3d | 100% | 2025-09-17 | 2025-09-21 | Labor/Helper [93.17 h]; Skilled Labor/Surveyor [18.23 h]; Foreman [19.63 h]; Plumber [36.48 h]; Excavator [32 h]; Pipe with diameter 300mm ; depth: 0 - 1.5m [40.13]; Pipe with diameter 400mm ; depth: 0 - 1.5m [3.01] | 10,280.95 | 10,280.95 | CO-R15.S10-SD-160 | 8 | 8 | CB | PL | Each | CB | SD | TEST | CON | R15 | S10 | SD | SD |

| ID | WBS | Activity | Duration | Start | Finish | Predecessors | Complete | Planned start | Planned finish | Total float | Free float | Resources | Cost | Actual cost | Activity ID N | Seq | New Seq | 02- Network-WBS | 03- Activity | 04-UOM | 05-Discipline | 01- Network | 07-Weightage System | 08 Stage | 09 Roads | 10 side Walk | Discipline | New Discipline |
| --- | --- | --- | --- | --- | --- | --- | --- | --- | --- | --- | --- | --- | --- | --- | --- | --- | --- | --- | --- | --- | --- | --- | --- | --- | --- | --- | --- | --- |
|  | SL | **Street Lighting Network** |  | 2025-08-05 | 2026-12-21 |  |  |  |  |  |  |  |  |  |  |  |  |  |  |  |  |  |  |  |  |  |  |  |
|  | LP | **Lighting Poles Works** |  | 2025-08-05 | 2026-12-14 |  |  |  |  |  |  |  |  |  |  |  |  |  |  |  |  |  |  |  |  |  |  |  |
| CO-R15.S10-SL-100 |  | Foundation Excavation Works for Lighting Poles of Street Lighting Network-[Road 15]-[SW-10] | 12d | 2025-08-05 A | 2025-08-06 A | CO-R15.S10-EW-100, CO-R15.S10-EW-110, CO-R15.S09-IR-100 SS+3d, CO-R15.S09-IR-130, ENG-MS-SL-A-110, ENG-SH-SL-A-110, PRO-SL-1DL-110 | 100% | 2025-11-05 | 2025-11-18 |  |  | Lighting poles with one arm, including the power distribution box, screws, cables, 12 meters in height. [1] | 1,949.38 | 1,949.38 | CO-R11.S07-SL-100 | 8 | 8 | LP | Ex | Each | POL | SL | EX | CON | R15 | S10 | SL | SL |
| CO-R15.S10-SL-110 |  | Installation Works for Lighting Poles Foundation of Street Lighting Network-[Road 15]-[SW-10] | 12d | 2025-08-07 A | 2025-08-07 A | CO-R15.S10-SL-100, PRO-R15-SL-DL-110 FF+3d | 100% | 2025-11-19 | 2025-12-02 |  |  | Reinforced concrete foundation, for 12m high lighting columns With Drawpits [35.11] | 13,043.16 | 13,043.16 | CO-R11.S07-SL-110 | 8 | 8 | LP | LPF | Each | POL | SL | INSTALL | CON | R15 | S10 | SL | SL |
| CO-R15.S10-SL-120 |  | Installation Works for Lighting Poles of Street Lighting Network-[Road 15]-[SW-10] | 17.5d | 2025-09-14 A | 2025-09-14 A | CO-R15.S10-SL-110, CO-R15.S10-SL-160, PRO-R15-SL-DL-120 FF+3d | 100% | 2026-01-07 | 2026-01-27 |  |  | Lighting poles with one arm, including the power distribution box, screws, cables, 12 meters in height. [20.06] | 38,996.74 | 38,996.74 | CO-R11.S07-SL-120 | 8 | 8 | LP | LP | Each | POL | SL | POLES | CON | R15 | S10 | SL | SL |
| CO-R15.S10-SL-210 |  | Backfilling Works for Lighting Poles of Street Lighting Network-[Road 15]-[SW-10] | 12d | 2026-07-07 A | 2026-07-13 A | CO-R15.S10-SL-120 SS, CO-R15.S10-SL-120 FF, CO-R17.S14-SL-210 | 100% | 2026-01-13 | 2026-01-27 |  |  | Lighting poles with one arm, including the power distribution box, screws, cables, 12 meters in height. [7.02] | 13,648.7 | 13,648.7 | CO-R11.S07-SL-210 | 8 | 8 |  |  |  |  | SL | BACK | CON | R15 | S10 | SL | SL |
| CO-R15.S10-SL-130 |  | Installation Works for Lighting Fixtures With Drop Wire of Street Lighting Network-[Road 15]-[SW-10] | 18d | 2026-11-24 | 2026-12-14 | CO-R15.S10-SL-120 SS+5d, CO-R15.S10-SL-120 FF+5d, CO-R15.S10-SL-200 FF, PRO-R15-SL-DL-140 FF+3d |  |  |  | -172d | 19d | Street Lighting( LED) Luminaire,(Type C) complete with control gear and lamp, ?.17000 Lumen [35.11] | 21,474.81 |  | CO-R11.S07-SL-130 | 8 | 8 | LP | LPA | Each | POL | SL | INSTALL | CON | R15 | S10 | SL | SL |
| CO-R15.S10-SL-200 |  | Testing Works for Lighting Poles of Street Lighting Network-[Road 15]-[SW-10] | 5d | 2026-11-24 | 2026-11-29 | CO-R15.S10-SL-210, CO-R15.S10-SL-120 |  |  |  | -159d | 13d | Lighting poles with one arm, including the power distribution box, screws, cables, 12 meters in height. [7.02] | 13,648.7 |  | CO-R11.S07-SL-200 | 8 | 8 |  |  |  |  | SL | TESTING | CON | R15 | S10 | SL | SL |
|  | CW | **Cabling Works** |  | 2025-08-08 | 2025-08-11 |  |  |  |  |  |  |  |  |  |  |  |  |  |  |  |  |  |  |  |  |  |  |  |
| CO-R15.S10-SL-140 |  | Trench Excavation and Bedding Works for Street Lighting Network-[Road 15]-[SW-10] | 10d | 2025-08-08 A | 2025-08-08 A | CO-R15.S10-SL-110 | 100% | 2025-12-03 | 2025-12-14 |  |  |  |  |  | CO-R11.S07-SL-140 | 8 | 8 | CW | Ex | LM | CB | SL | EXC | CON | R15 | S10 | SL | SL |
| CO-R15.S10-SL-150 |  | Cable Laying Works for Street Lighting Network-[Road 15]-[SW-10] | 10d | 2025-08-10 A | 2025-08-10 A | CO-R15.S10-SL-140, PRO-R15-SL-DL-100 FF+3d | 100% | 2025-12-15 | 2025-12-25 |  |  | Supply, installation , test and operation of cables, Copper, (4Cx25mmï¿½,Cu/XLPE/SWA/PVC +1x16mmï¿½ PVC/PVC) [1317.11] | 63,079.56 | 63,079.56 | CO-R11.S07-SL-150 | 8 | 8 | CW | CL | LM | CB | SL | LAYING | CON | R15 | S10 | SL | SL |
| CO-R15.S10-SL-160 |  | Trench Backfilling and Compaction Works for Street Lighting Network-[Road 15]-[SW-10] | 10d | 2025-08-11 A | 2025-08-11 A | CO-R15.S10-SL-150 | 100% | 2025-12-27 | 2026-01-06 |  |  | Supply, installation , test and operation of cables, Copper, (4Cx25mmï¿½,Cu/XLPE/SWA/PVC +1x16mmï¿½ PVC/PVC) [100.31] | 4,804.52 | 4,804.52 | CO-R11.S07-SL-160 | 8 | 8 | CW | BF | LM | CB | SL | BACK | CON | R15 | S10 | SL | SL |
|  | DPB | **Distrubution Panel Boards** |  | 2026-11-24 | 2026-12-21 |  |  |  |  |  |  |  |  |  |  |  |  |  |  |  |  |  |  |  |  |  |  |  |
| CO-R15.S10-SL-170 |  | Foundation Excavation Works For Panel Boards of Street Lighting Network-[Road 15]-[SW-10] | 18d | 2026-11-24 | 2026-12-14 | CO-R15.S10-EW-110, ENG-MS-SL-A-110, ENG-SH-SL-A-110 |  |  |  | -95d | 0d |  |  |  | CO-R11.S07-SL-170 | 8 | 8 | DB | Ex | Each | DS | SL | EXC | CON | R15 | S10 | SL | SL |
| CO-R15.S10-SL-180 |  | Installation Works for Panel Board Concrete Foundations of Street Lighting Network-[Road 15]-[SW-10] | 18d | 2026-11-28 | 2026-12-17 | CO-R15.S10-SL-170 SS+3d, CO-R15.S10-SL-170 FF+3d |  |  |  | -95d | 0d |  |  |  | CO-R11.S07-SL-180 | 8 | 8 | DB | PBF | Each | DS | SL | INSTALL | CON | R15 | S10 | SL | SL |
| CO-R15.S10-SL-220 |  | A wall of concrete blocks to install the KWH meter of Street Lighting Network-[Road 15]-[SW-10] | 18d | 2026-11-28 | 2026-12-17 | CO-R15.S10-SL-180 SS, CO-R15.S10-SL-180 FF |  |  |  | -92d | 99d | Road crossing ducts, 4 way (4 x 100mm PVC) [75.24]; Drawpit with medium duty steel cover, size 900x900x1200mm, Type 4 [6.02] | 25,261.23 |  | CO-R11.S07-SL-220 | 8 | 8 | DB |  | Each | DS | SL | wall | CON | R15 | S10 | SL | SL |
| CO-R15.S10-SL-190 |  | Installation Works for Lighting Panel Boards of Street Lighting Network-[Road 15]-[SW-10] | 18d | 2026-12-01 | 2026-12-21 | CO-R15.S10-SL-180 SS+3d, CO-R15.S10-SL-180 FF+3d |  |  |  | -95d | 96d |  |  |  | CO-R11.S07-SL-190 | 8 | 8 | DB | PB | Each | DS | SL | INST BO | CON | R15 | S10 | SL | SL |
|  | PW | **Potable Water Network** |  | 2025-07-01 | 2026-12-14 |  |  |  |  |  |  |  |  |  |  |  |  |  |  |  |  |  |  |  |  |  |  |  |
|  | ML | **Main Line Sections** |  | 2025-07-01 | 2025-07-17 |  |  |  |  |  |  |  |  |  |  |  |  |  |  |  |  |  |  |  |  |  |  |  |
| CO-R15.S10-PW-100 |  | Trench Excavation and Bedding Works for Main Lines of Potable Water Network-[Road 15]-[SW-10] | 6d | 2025-07-01 A | 2025-07-06 A | CO-R15.S10-EW-110, CO-R15.S10-EW-100, CO-R15.S10-SW-130, CO-R15.S10-SD-130 | 100% | 2026-02-25 | 2026-03-03 |  |  | Skilled Labor/Surveyor [5.7 h]; Foreman [5.7 h]; Excavator [48 h]; Pipe with diameter 200mm; in depth 0.0m - 1.5m [192.6] | 28,594.27 | 28,594.27 | CO-R15.S10-PW-100 | 8 | 8 | ML | Ex | LM | ML | PW | EX | CON | R15 | S10 | PW | PW |
| CO-R15.S10-PW-110 |  | Pipes Laying and accessories for Main Lines of Potable Water Network-[Road 15]-[SW-10] | 6d | 2025-07-07 A | 2025-07-12 A | CO-R15.S10-PW-100, CO-R14.S08-PW-110 SS, PRO-R15-PW-DL-100 FF+3d | 100% | 2026-03-04 | 2026-03-10 |  |  | Labor/Helper [109.43 h]; Skilled Labor/Surveyor [5.7 h]; Foreman [5.7 h]; Plumber [54.71 h]; Excavator [48 h]; Pipe with diameter 200mm; in depth 0.0m - 1.5m [481.5] | 71,486.7 | 71,486.7 | CO-R15.S10-PW-110 | 8 | 8 | ML | PL | LM | ML | PW | PIPE | CON | R15 | S10 | PW | PW |
| CO-R15.S10-PW-130 |  | Trench Backfilling and Compaction Works for Main Lines of Potable Water Network-[Road 15]-[SW-10] | 6d | 2025-07-13 A | 2025-07-17 A | CO-R15.S10-PW-110, CO-R14.S08-PW-130 SS | 100% | 2026-03-25 | 2026-03-31 |  |  | Skilled Labor/Surveyor [5.7 h]; Foreman [5.7 h]; Eq. Operator [5.7 h]; Loader [48 h]; Compactor [48 h]; Water Tank [12 h]; Pipe with diameter 200mm; in depth 0.0m - 1.5m [192.6] | 28,594.27 | 28,594.27 | CO-R15.S10-PW-130 | 8 | 8 | ML | BF | LM | ML | PW | BACK | CON | R15 | S10 | PW | PW |
|  | VC | **Valve Chamber** |  | 2026-11-24 | 2026-11-30 |  |  |  |  |  |  |  |  |  |  |  |  |  |  |  |  |  |  |  |  |  |  |  |
| CO-R15.S10-PW-210 |  | Installation Works for Main Line Valves and Valve Chambers of Potable Water Network-[Road 15]-[SW-10] | 6d | 2026-11-24 | 2026-11-30 | CO-R15.S10-PW-110 |  |  |  | -10d | 180d | Labor/Helper [9.76 h]; Plumber [8.97 h]; Gate valves dia(200)mm on pipes with dia (200) mm. [8.03] | 21,698.44 |  | CO-R15.S10-PW-210 | 8 | 8 | ML | VI | Each | ML | PW | INSUL | CON | R15 | S10 | PW | PW |

| ID | WBS | Activity | Duration | Start | Finish | Predecessors | Complete | Planned start | Planned finish | Total float | Free float | Resources | Cost | Actual cost | Activity ID N | Seq | New Seq | 02- Network-WBS | 03- Activity | 04-UOM | 05-Discipline | 01- Network | 07-Weightage System | 08 Stage | 09 Roads | 10 side Walk | Discipline | New Discipline |
| --- | --- | --- | --- | --- | --- | --- | --- | --- | --- | --- | --- | --- | --- | --- | --- | --- | --- | --- | --- | --- | --- | --- | --- | --- | --- | --- | --- | --- |
|  | FH | **Fire Hydrant** |  | 2026-11-24 | 2026-12-14 |  |  |  |  |  |  |  |  |  |  |  |  |  |  |  |  |  |  |  |  |  |  |  |
| CO-R15.S10-PW-140 |  | Excavation Works for Fire Hydrants of Potable Water Network-[Road 15]-[SW-10] | 6d | 2026-11-24 | 2026-11-30 | CO-R15.S10-PW-110 SS+3d, CO-R15.S10-PW-110 FF+3d, CO-R15.S10-EW-110, CO-R15.S10-SW-130 SS+3d, CO-R15.S10-SW-130 FF+3d |  |  |  | -34d | 0d | Skilled Labor/Surveyor [5.61 h]; Foreman [5.61 h]; Excavator [48 h]; 3-outlet fire hydrant (2 x 2.5 inch and 1 x 4 inch) in the form of a separate dry vacuum cylinder [1] | 7,758.71 |  | CO-R15.S10-PW-140 | 8 | 8 | FH | Ex | Each | FH | PW | EX | CON | R15 | S10 | PW | PW |
| CO-R15.S10-PW-150 |  | Installation Works for Fire Hydrant of Potable Water Network-[Road 15]-[SW-10] | 6d | 2026-12-01 | 2026-12-07 | CO-R15.S10-PW-140, PRO-R15-PW-DL-120 FF+3d |  |  |  | -34d | 0d | Labor/Helper [107.67 h]; Skilled Labor/Surveyor [5.61 h]; Foreman [5.61 h]; Plumber [107.67 h]; 3-outlet fire hydrant (2 x 2.5 inch and 1 x 4 inch) in the form of a separate dry vacuum cylinder [4.01] | 31,034.82 |  | CO-R15.S10-PW-150 | 8 | 8 | FH | FH | Each | FH | PW | INSTALL | CON | R15 | S10 | PW | PW |
| CO-R15.S10-PW-160 |  | Trench Backfilling and Compaction Works for Fire Hydrants of Potable Water Network-[Road 15]-[SW-10] | 6d | 2026-12-08 | 2026-12-14 | CO-R15.S10-PW-150 |  |  |  | -34d | 0d | Skilled Labor/Surveyor [5.61 h]; Foreman [5.61 h]; Excavator [48 h]; 3-outlet fire hydrant (2 x 2.5 inch and 1 x 4 inch) in the form of a separate dry vacuum cylinder [1] | 7,758.71 |  | CO-R15.S10-PW-160 | 8 | 8 | FH | BF | Each | FH | PW | BACK | CON | R15 | S10 | PW | PW |
|  | TE | **Telecom Network** |  | 2025-08-08 | 2025-08-28 |  |  |  |  |  |  |  |  |  |  |  |  |  |  |  |  |  |  |  |  |  |  |  |
|  | PD | **Ducts Works** |  | 2025-08-08 | 2025-08-11 |  |  |  |  |  |  |  |  |  |  |  |  |  |  |  |  |  |  |  |  |  |  |  |
| CO-R15.S10-TE-100 |  | Trench Excavation and Bedding Works for Ducts of Telecom Network-[Road 15]-[SW-10] | 7d | 2025-08-08 A | 2025-08-08 A | CO-R15.S10-SL-160 SS+5d, CO-R15.S10-SL-160 FF+5d | 100% | 2026-01-05 | 2026-01-12 |  |  | Skilled Labor/Surveyor [6.84 h]; Foreman [6.84 h]; Excavator [56 h]; 6-way ducts, 50mm dia. HDPE [31.1]; Road crossing ducts (6-way) [3.01] | 4,769.8 | 4,769.8 | CO-R15.S10-TE-100 | 8 | 8 | PD | Ex | LM | DC | TE | DUCTS | CON | R15 | S10 | TE | TE |
| CO-R15.S10-TE-110 |  | Pipes Laying Works for Ducts of Telecom Network-[Road 15]-[SW-10] | 7d | 2025-08-09 A | 2025-08-09 A | CO-R15.S10-TE-100, PRO-R15-TE-DL-100 FF+3d | 100% | 2026-07-23 | 2026-07-30 |  |  | Labor/Helper [127.67 h]; Skilled Labor/Surveyor [6.84 h]; Foreman [6.84 h]; Plumber [63.83 h]; Excavator [56 h]; JCB [28 h]; Truck [56 h]; 6-way ducts, 50mm dia. HDPE [187.59]; Road crossing ducts (6-way) [16.05] | 28,413.53 | 28,413.53 | CO-R15.S10-TE-110 | 8 | 8 | PD | PL | LM | DC | TE | DUCTS | CON | R15 | S10 | TE | TE |
| CO-R15.S10-TE-120 |  | Pouring Plain Concrete Above Ducts of Telecom Network-[Road 15]-[SW-10] | 7d | 2025-08-10 A | 2025-08-10 A | CO-R15.S10-TE-110 | 100% | 2026-08-01 | 2026-08-08 |  |  | Skilled Labor/Surveyor [6.84 h]; Foreman [6.84 h]; Cons. Carpenter [127.67 h]; Block Mason [63.83 h]; 6-way ducts, 50mm dia. HDPE [31.1]; Road crossing ducts (6-way) [3.01] | 4,769.8 | 4,769.8 | CO-R15.S10-TE-120 | 8 | 8 | PD | PC | LM | DC | TE | DUCTS | CON | R15 | S10 | TE | TE |
| CO-R15.S10-TE-130 |  | Trench Backfilling and Compaction Works for Ducts of Telecom Network-[Road 15]-[SW-10] | 7d | 2025-08-11 A | 2025-08-11 A | CO-R15.S10-TE-120 | 100% | 2026-08-09 | 2026-08-16 |  |  | Skilled Labor/Surveyor [6.84 h]; Foreman [6.84 h]; Excavator [56 h]; 6-way ducts, 50mm dia. HDPE [62.19]; Road crossing ducts (6-way) [6.02] | 9,539.59 | 9,539.59 | CO-R15.S10-TE-130 | 8 | 8 | PD | BF | LM | DC | TE | DUCTS | CON | R15 | S10 | TE | TE |
|  | MH | **Manholes Works** |  | 2025-08-26 | 2025-08-28 |  |  |  |  |  |  |  |  |  |  |  |  |  |  |  |  |  |  |  |  |  |  |  |
| CO-R15.S10-TE-140 |  | Excavation Works for Manholes of Telecom Network-[Road 15]-[SW-10] | 7d | 2025-08-26 A | 2025-08-26 A | CO-R15.S09-TE-140 SS, CO-R15.S10-TE-100 SS+6d, CO-R15.S10-TE-100 FF+6d | 100% | 2026-07-23 | 2026-07-30 |  |  | Skilled Labor/Surveyor [6.84 h]; Foreman [6.84 h]; Excavator [56 h]; Manhole Type 2 (2000x1000x1000) [0.4] | 1,283.59 | 1,283.59 | CO-R15.S10-TE-140 | 8 | 8 | MH | Ex | Each | MNH | TE | EXC | CON | R15 | S10 | TE | TE |
| CO-R15.S10-TE-150 |  | Installation Works for Manholes of Telecom Network-[Road 15]-[SW-10] | 7d | 2025-08-27 A | 2025-08-27 A | CO-R15.S10-TE-140, PRO-R15-TE-DL-110 FF+3d | 100% | 2026-08-01 | 2026-08-08 |  |  | Skilled Labor/Surveyor [6.84 h]; Foreman [6.84 h]; Excavator [56 h]; Manhole Type 1 (2000x1000x1000) [1]; Manhole Type 2 (2000x1000x1000) [1] | 6,410.79 | 6,410.79 | CO-R15.S10-TE-150 | 8 | 8 | MH | HH | Each | MNH | TE | INSTALL-1 | CON | R15 | S10 | TE | TE |
| CO-R15.S10-TE-160 |  | Backfilling Works for Manholes of Telecom Network-[Road 15]-[SW-10] | 7d | 2025-08-28 A | 2025-08-28 A | CO-R15.S10-TE-150 | 100% | 2026-08-09 | 2026-08-16 |  |  | Skilled Labor/Surveyor [6.84 h]; Foreman [6.84 h]; Excavator [56 h]; Manhole Type 2 (2000x1000x1000) [0.4] | 1,283.59 | 1,283.59 | CO-R15.S10-TE-160 | 8 | 8 | MH | BF | Each | MNH | TE | (New)-2 | CON | R15 | S10 | TE | TE |
|  | RD | **Road Works** |  | 2025-07-22 | 2026-10-12 |  |  |  |  |  |  |  |  |  |  |  |  |  |  |  |  |  |  |  |  |  |  |  |
|  | RD | **Pre-Bituminous Construction** |  | 2025-07-22 | 2026-08-09 |  |  |  |  |  |  |  |  |  |  |  |  |  |  |  |  |  |  |  |  |  |  |  |
| CO-R15.S10-RD-P-100 |  | Capping and Subgrade Layer for Road Works-[Road 15]-[SW-10] | 18d | 2025-07-22 A | 2025-07-27 A | CO-R15.S10-SD-130, CO-R15.S10-SW-130, CO-R15.S10-PW-130, PRO-R15-RD-DL-100 FF+3d, CO-R15.S10-TE-130, CO-R15.S10-TE-160, CO-R15.S10-SL-160 SS+3d, CO-R15.S10-SL-160 FF+3d | 100% | 2026-08-17 | 2026-09-06 |  |  | Labor/Helper [328.29 h]; Skilled Labor/Surveyor [164.14 h]; Loader [144 h]; Grader [144 h]; Road Roller [144 h]; Water Tank [144 h]; 300mm capping layer underneath subgrade , CBR?15% [2364.39]; 300mm thick Subgrade, including subgrade preparation, CBR?25% [2364.39] | 187,356.71 | 187,356.71 | CO-R15.S10-RD-P-100 | 8 | 8 | AB | SG | Sq.m | BS | RD |  | CON | R15 | S10 | RD | RD |
| CO-R15.S10-RD-P-110 |  | Aggregate Base Course Layer for Road Works-[Road 15]-[SW-10] | 18d | 2026-08-01 A | 2026-08-09 A | CO-R15.S10-RD-P-100 SS+3d, CO-R15.S10-RD-P-100 FF+3d, CO-R15.S10-SD-170 SS+3d, CO-R15.S10-SD-170 FF+3d, CO-R14.S08-RD-P-110, PRO-R15-RD-DL-110 FF+3d | 100% | 2026-09-24 | 2026-10-14 |  |  | Labor/Helper [328.29 h]; Skilled Labor/Surveyor [164.14 h]; Foreman [164.14 h]; Loader [144 h]; Grader [144 h]; Road Roller [144 h]; Aggregate base course 200mm thick after compaction in two layers(Grading 1); CBR?80%; including watering, compaction and testing [1576.93] | 130,544.97 | 130,544.97 | CO-R15.S10-RD-P-110 | 8 | 8 | AB | BA | Sq.m | BS | RD |  | CON | R15 | S10 | RD | RD |
|  | LS | **Pavement Works** |  | 2026-08-25 | 2026-10-12 |  |  |  |  |  |  |  |  |  |  |  |  |  |  |  |  |  |  |  |  |  |  |  |
| CO-R15.S10-RD-P-120 |  | Fixing of Curbstone for Sidewalks Pavement-[Road 15]-[SW-10] | 18d | 2026-08-25 A | 2026-08-31 A | CO-R14.S08-RD-P-120, PRO-R15-RD-DL-130 FF+3d, CO-R15.S10-RD-P-110 SS+3d, CO-R15.S10-RD-P-110 FF+3d | 100% | 2026-09-28 | 2026-10-18 |  |  | Labor/Helper [328.29 h]; Block Mason [984.87 h]; Precast Concrete Kerb, Type K1 [872.73]; Precast Concrete Kerb, Type L1 [1730.41] | 106,859.37 | 106,859.37 | CO-R15.S10-RD-P-120 | 8 | 8 | LS | CR | LM | LAND | RD |  | CON | R15 | S10 | RD | RD |
| CO-R15.S10-RD-P-130 |  | Fixing of Interlock Tiles for Sidewalks Pavement-[Road 15]-[SW-10] | 10d | 2026-08-25 A | 2026-10-12 A | CO-R15.S10-RD-P-120 SS+3d, CO-R15.S10-RD-P-120 FF+3d, PRO-R15-RD-DL-120 FF+3d, CO-R15-SW-TF-100, CO-R15-SD-TF-100, CO-R15-SD-TF-120 | 100% | 2026-10-28 | 2026-11-08 |  |  | Labor/Helper [257.95 h]; Block Mason [700.69 h]; Interlocking block pavers for sidewalk/footpath 60mm thick on and including 30mm Sand Bedding, 200mm Aggregate subbase, all in accordance with authority standards and complete as per specifications [1556.86]; Extraover for Pedestrian ramps [4.01] | 76,359.63 | 76,359.63 | CO-R15.S10-RD-P-130 | 8 | 8 | LS | IL | Sq.m | LAND | RD |  | CON | R15 | S10 | RD | RD |
|  | 8 | **Road 16 Local 1 ( 527 LM )** |  | 2025-03-13 | 2027-02-07 |  |  |  |  |  |  |  |  |  |  |  |  |  |  |  |  |  |  |  |  |  |  |  |
|  | SW_13 | **SW_11** |  | 2025-03-27 | 2026-12-17 |  |  |  |  |  |  |  |  |  |  |  |  |  |  |  |  |  |  |  |  |  |  |  |
|  | EW | **Earthworks** |  | 2025-03-27 | 2025-04-19 |  |  |  |  |  |  |  |  |  |  |  |  |  |  |  |  |  |  |  |  |  |  |  |
|  | EW | **Earthworks** |  | 2025-03-27 | 2025-04-19 |  |  |  |  |  |  |  |  |  |  |  |  |  |  |  |  |  |  |  |  |  |  |  |
| CO-R16.S11-EW-100 |  | Roadway Excavation Works Upto Design Level for Earthworks-[Road 16]-[SW-11] | 10d | 2025-03-27 A | 2025-04-12 A | ENG-MS-RD-A-10, ENG-SH-RD-A-100, CO-R17.S14-EW-100 | 100% | 2025-03-29 | 2025-04-13 |  |  | Labor/Helper [273.57 h]; Skilled Labor/Surveyor [34.2 h]; Foreman [34.2 h]; Water Tank [240 h]; Dozer [240 h]; Roadway Excavation for cuttings; on any type of material for all depths including trimming and Preparation of excavated surfaces and disposal. [10607.1] | 68,238.42 | 68,238.42 | CO-R16.S11-EW-100 | 5 | 5 | EW | Ex | Cub.m | EW | EW |  | CON | R16 | S11 | EW | EW |
| CO-R16.S11-EW-110 |  | Embankments Works Upto Design Level for Earthworks-[Road 16]-[SW-11] | 12d | 2025-04-13 A | 2025-04-19 A | CO-R16.S11-EW-100, ENG-MS-RD-A-10, ENG-SH-RD-A-100, CO-R17.S14-EW-110 | 100% | 2025-04-16 | 2025-04-29 |  |  | Labor/Helper [437.72 h]; Skilled Labor/Surveyor [54.71 h]; Foreman [54.71 h]; Dump Truck [768 h]; Water Tank [384 h]; Dozer [384 h]; Embankments to the ROW, with suitable material other than top soil or rock according to specifications [17856.8] | 147,699.29 | 147,699.29 | CO-R16.S11-EW-110 | 5 | 5 | EW | BF | Cub.m | EW | EW |  | CON | R16 | S11 | EW | EW |

| ID | WBS | Activity | Duration | Start | Finish | Predecessors | Complete | Planned start | Planned finish | Resources | Cost | Actual cost | Activity ID N | Seq | New Seq | 02- Network-WBS | 03- Activity | 04-UOM | 05-Discipline | 01- Network | 07-Weightage System | 08 Stage | 09 Roads | 10 side Walk | Discipline | New Discipline |
| --- | --- | --- | --- | --- | --- | --- | --- | --- | --- | --- | --- | --- | --- | --- | --- | --- | --- | --- | --- | --- | --- | --- | --- | --- | --- | --- |
|  | SW | **Sewage Network** |  | 2025-06-05 | 2025-09-17 |  |  |  |  |  |  |  |  |  |  |  |  |  |  |  |  |  |  |  |  |  |
|  | ML | **Main Line Sections** |  | 2025-06-05 | 2025-07-08 |  |  |  |  |  |  |  |  |  |  |  |  |  |  |  |  |  |  |  |  |  |
| CO-R16.S11-SW-100 |  | Trench Excavation and Bedding Works for Main Lines of Sewage Network-[Road 16]-[SW-11] | 12d | 2025-06-05 A | 2025-06-15 A | CO-R16.S11-EW-110, ENG-MS-SW-ML-A-110, ENG-SH-SW-ML-A-110, CO-R17.S14-SW-100 | 100% | 2025-05-07 | 2025-05-20 | Labor/Helper [109.43 h]; Foreman [109.43 h]; Excavator [96 h]; Nominal bore : 200mm; Depth : 0.0m - 1.5m [4.01]; Nominal bore : 200mm; Depth : 1.5m - 2.5m [10.03]; Nominal bore : 200mm; Depth : 2.5m - 3.5m [14.04]; Nominal bore : 200mm; Depth : 3.5m - 4.5m [18.06]; Nominal bore : 200mm; Depth : 4.5m -5.5m [8.03]; Nominal bore : 200mm; Depth : 5.5m - 6.5m [8.03] | 19,770.51 | 19,770.51 | CO-R16.S11-SW-100 | 5 | 5 | ML | Ex | LM | ML | SW | EX | CON | R16 | S11 | SW | SW |
| CO-R16.S11-SW-120 |  | Pipes Laying Works for Main Lines of Sewage Network-[Road 16]-[SW-11] | 12d | 2025-06-16 A | 2025-06-21 A | CO-R16.S11-SW-100, PRO-R16-SW-DL-100 FF+3d | 100% | 2025-05-21 | 2025-06-03 | Labor/Helper [437.72 h]; Skilled Labor/Surveyor [22.8 h]; Foreman [22.8 h]; Plumber [218.86 h]; Excavator [192 h]; Nominal bore : 200mm; Depth : 0.0m - 1.5m [13.04]; Nominal bore : 200mm; Depth : 1.5m - 2.5m [28.09]; Nominal bore : 200mm; Depth : 2.5m - 3.5m [41.13]; Nominal bore : 200mm; Depth : 3.5m - 4.5m [54.17]; Nominal bore : 200mm; Depth : 4.5m -5.5m [24.08]; Nominal bore : 200mm; Depth : 5.5m - 6.5m [27.08] | 60,724.79 | 60,724.79 | CO-R16.S11-SW-120 | 5 | 5 | ML | PL | LM | ML | SW | PIPE | CON | R16 | S11 | SW | SW |
| CO-R16.S11-SW-130 |  | Trench Backfilling and Compaction Works for Main Lines of Sewage Network-[Road 16]-[SW-11] | 10d | 2025-07-06 A | 2025-07-08 A | CO-R16.S11-SW-120 SS+3d, CO-R16.S11-SW-120 FF+3d, ENG-SH-SW-ML-A-110 FF, ENG-MS-SW-ML-A-110 FF, CO-R16.S11-SW-120, CO-R16.S11-SW-210 FF, CO-R17.S14-SW-130 | 100% | 2025-06-26 | 2025-07-07 | Skilled Labor/Surveyor [11.4 h]; Foreman [11.4 h]; Excavator [96 h]; Nominal bore : 200mm; Depth : 0.0m - 1.5m [1]; Nominal bore : 200mm; Depth : 1.5m - 2.5m [4.01]; Nominal bore : 200mm; Depth : 2.5m - 3.5m [7.02]; Nominal bore : 200mm; Depth : 3.5m - 4.5m [8.03]; Nominal bore : 200mm; Depth : 4.5m -5.5m [4.01]; Nominal bore : 200mm; Depth : 5.5m - 6.5m [4.01] | 9,206.7 | 9,206.7 | CO-R16.S11-SW-130 | 5 | 5 | ML | BF | LM | ML | SW | BACK | CON | R16 | S11 | SW | SW |
|  | 1 | **Manholes** |  | 2025-06-17 | 2025-09-17 |  |  |  |  |  |  |  |  |  |  |  |  |  |  |  |  |  |  |  |  |  |
| CO-R16.S11-SW-160 |  | Excavation Works for Main Line Manholes of Sewage Network-[Road 16]-[SW-11] | 1d | 2025-06-17 A | 2025-06-17 A | CO-R16.S11-SW-120 SS, CO-R17.S14-SW-160 | 100% | 2025-05-21 | 2025-05-21 | Labor/Helper [27.36 h]; Skilled Labor/Surveyor [13.68 h]; Excavator [24 h]; Depth: not exceeding 1.5m [0.15]; Depth: 1.5 - 2.5m [1]; Depth:6.5 - 7.5m [0.3] | 16,862.27 | 16,862.27 | CO-R16.S11-SW-160 | 5 | 5 |  |  |  |  | SW | EX | CON | R16 | S11 | SW | SW |
| CO-R16.S11-SW-170 |  | Installation RC Footing Works for Main Line Manholes of Sewage Network-[Road 16]-[SW-11] | 2d | 2025-06-18 A | 2025-06-25 A | CO-R16.S11-SW-160, PRO-R16-SW-DL-110 FF+3d | 100% | 2025-05-22 | 2025-05-24 | Cons. Carpenter [109.43 h]; Steel Fixer [109.43 h]; Depth: not exceeding 1.5m [0.1]; Depth: 1.5 - 2.5m [0.4]; Depth:6.5 - 7.5m [0.2] | 9,275.11 | 9,275.11 | CO-R16.S11-SW-170 | 5 | 5 |  |  |  |  | SW | RC F | CON | R16 | S11 | SW | SW |
| CO-R16.S11-SW-180 |  | Install Grp Liner Wall Works for Main Line Manholes of Sewage Network-[Road 16]-[SW-11] | 4d | 2025-06-26 A | 2025-07-02 A | CO-R16.S11-SW-170 | 100% | 2025-05-25 | 2025-05-28 | Labor/Helper [109.43 h]; Plumber [109.43 h]; Depth: not exceeding 1.5m [0.4]; Depth: 1.5 - 2.5m [3.01]; Depth:6.5 - 7.5m [1] | 53,197.88 | 53,197.88 | CO-R16.S11-SW-180 | 5 | 5 |  |  |  |  | SW | LP | CON | R16 | S11 | SW | SW |
| CO-R16.S11-SW-200 |  | Backfilling Works for Main Line Manholes of Sewage Network-[Road 16]-[SW-11] | 4d | 2025-07-22 A | 2025-07-24 A | CO-R16.S11-SW-190 | 100% | 2025-05-31 | 2025-06-03 | Labor/Helper [72.95 h]; Skilled Labor/Surveyor [36.48 h]; Excavator [64 h]; Depth: not exceeding 1.5m [0.15]; Depth: 1.5 - 2.5m [1]; Depth:6.5 - 7.5m [0.3] | 16,862.27 | 16,862.27 | CO-R16.S11-SW-200 | 5 | 5 |  |  |  |  | SW | BACK | CON | R16 | S11 | SW | SW |
| CO-R16.S11-SW-190 |  | Pouring Grp Liner Wall Works for Main Line Manholes of Sewage Network-[Road 16]-[SW-11] | 1d | 2025-09-16 A | 2025-09-16 A | CO-R16.S11-SW-180 | 100% | 2025-05-29 | 2025-05-29 | Cons. Carpenter [54.71 h]; Steel Fixer [54.71 h]; Depth: not exceeding 1.5m [0.05]; Depth: 1.5 - 2.5m [0.2]; Depth:6.5 - 7.5m [0.1] | 4,638.07 | 4,638.07 | CO-R16.S11-SW-190 | 5 | 5 |  |  |  |  | SW | (New) | CON | R16 | S11 | SW | SW |
| CO-R16.S11-SW-210 |  | Testing Works for Main Line Manholes of Sewage Network-[Road 16]-[SW-11] | 1d | 2025-09-17 A | 2025-09-17 A | CO-R16.S11-SW-200 | 100% | 2025-06-04 | 2025-06-04 | Labor/Helper [45.6 h]; Plumber [45.6 h]; Depth: not exceeding 1.5m [0.05]; Depth: 1.5 - 2.5m [0.2]; Depth:6.5 - 7.5m [0.1] | 4,638.07 | 4,638.07 | CO-R16.S11-SW-210 | 5 | 5 |  |  |  |  | SW | T&COV | CON | R16 | S11 | SW | SW |
|  | SD | **Storm Drainage Network** |  | 2025-07-07 | 2026-07-13 |  |  |  |  |  |  |  |  |  |  |  |  |  |  |  |  |  |  |  |  |  |
|  | ML | **Main Line Sections** |  | 2025-07-07 | 2025-07-13 |  |  |  |  |  |  |  |  |  |  |  |  |  |  |  |  |  |  |  |  |  |
| CO-R16.S11-SD-100 |  | Trench Excavation and Bedding Works for Main Lines of Storm Drainage Network-[Road 16]-[SW-11] | 10d | 2025-07-07 A | 2025-07-09 A | ENG-SH-SD-ML-A-110, CO-R16.S11-EW-110, CO-R16.S11-EW-100, CO-R16.S11-SW-130 SS+3d, CO-R16.S11-SW-130 FF+3d, ENG-MS-SD-ML-A-110 | 100% | 2025-06-30 | 2025-07-10 | Skilled Labor/Surveyor [13.68 h]; Foreman [13.68 h]; Excavator [112 h]; Pipe with diameter 600mm ; depth: 1.51m - 2.5m [41.13]; Pipe with diameter 700mm ; depth: 1.51m - 2.5m [50.16]; Pipe with diameter 1000mm ; depth: 1.51m - 2.5m [17.05]; Pipe with diameter 1000mm ; depth: 2.51 - 3.5m [17.05] | 68,322.15 | 68,322.15 | CO-R16.S11-SD-100 | 5 | 5 | ML | Ex | LM | ML | SD | EX | CON | R16 | S11 | SD | SD |
| CO-R16.S11-SD-120 |  | Pipes Laying Works for Main Lines of Storm Drainage Network-[Road 16]-[SW-11] | 15d | 2025-07-10 A | 2025-07-12 A | CO-R16.S11-SD-100 | 100% | 2025-07-12 | 2025-07-28 | Labor/Helper [273.57 h]; Skilled Labor/Surveyor [13.68 h]; Foreman [13.68 h]; Plumber [136.79 h]; Excavator [120 h]; Pipe with diameter 600mm ; depth: 1.51m - 2.5m [125.39]; Pipe with diameter 700mm ; depth: 1.51m - 2.5m [147.46]; Pipe with diameter 1000mm ; depth: 1.51m - 2.5m [52.16]; Pipe with diameter 1000mm ; depth: 2.51 - 3.5m [52.16] | 205,888.56 | 205,888.56 | CO-R16.S11-SD-120 | 5 | 5 | ML | PL | LM | ML | SD | PIPE | CON | R16 | S11 | SD | SD |
| CO-R16.S11-SD-130 |  | Trench Backfilling and Compaction Works for Main Lines of Storm Drainage Network-[Road 16]-[SW-11] | 15d | 2025-07-13 A | 2025-07-13 A | CO-R16.S11-SD-120 SS+3d, CO-R16.S11-SD-120 FF+3d, ENG-SH-SD-ML-A-110 FF, CO-R15.S09-SD-130, ENG-MS-SD-ML-A-110 FF, CO-R16.S11-SD-120, CO-R16.S11-SD-220 FF | 100% | 2026-02-21 | 2026-03-09 | Skilled Labor/Surveyor [13.68 h]; Foreman [13.68 h]; Excavator [120 h]; Pipe with diameter 600mm ; depth: 1.51m - 2.5m [21.07]; Pipe with diameter 700mm ; depth: 1.51m - 2.5m [24.08]; Pipe with diameter 1000mm ; depth: 1.51m - 2.5m [8.03]; Pipe with diameter 1000mm ; depth: 2.51 - 3.5m [8.03] | 33,092.44 | 33,092.44 | CO-R16.S11-SD-130 | 5 | 5 | ML | BF | LM | ML | SD | BACK | CON | R16 | S11 | SD | SD |
|  | MH | **Manholes** |  | 2025-07-11 | 2026-07-13 |  |  |  |  |  |  |  |  |  |  |  |  |  |  |  |  |  |  |  |  |  |
| CO-R16.S11-SD-180 |  | Trench Excavation and Bedding Works for Manholes of Storm Drainage Network-[Road 16]-[SW-11] | 1d | 2025-07-11 A | 2025-07-12 A | CO-R16.S11-SD-120 SS, PRO-SD-1DL-100 | 100% | 2025-07-12 | 2025-07-12 | Labor/Helper [45.6 h]; Skilled Labor/Surveyor [22.8 h]; Excavator [40 h]; MH ; depth: 0.0m - 1.5m [0.15]; MH ; depth: 1.51m - 2.5m [0.3]; MH ; depth: 1.51m - 2.5m [0.15] | 8,686.93 | 8,686.93 | CO-R16.S11-SD-180 | 5 | 5 |  |  |  |  | SD | EX | CON | R16 | S11 | SD | SD |
| CO-R16.S11-SD-190 |  | Install RC Footing Works for Manholes of Storm Drainage Network-[Road 16]-[SW-11] | 1d | 2025-07-13 A | 2025-07-13 A | CO-R16.S11-SD-180 | 100% |  |  | Cons. Carpenter [91.19 h]; Steel Fixer [91.19 h]; MH ; depth: 0.0m - 1.5m [0.05]; MH ; depth: 1.51m - 2.5m [0.1]; MH ; depth: 1.51m - 2.5m [0.05] | 2,895.98 | 2,895.98 | CO-R16.S11-SD-190 | 5 | 5 |  |  |  |  | SD | RC F | CON | R16 | S11 | SD | SD |
| CO-R16.S11-SD-200 |  | Install RC Wall Rings & Slab Works for Manholes of Storm Drainage Network-[Road 16]-[SW-11] | 4d | 2025-07-14 A | 2025-07-15 A | CO-R16.S11-SD-190 | 100% | 2025-07-14 | 2025-07-17 | Cons. Carpenter [145.91 h]; Steel Fixer [145.91 h]; MH ; depth: 0.0m - 1.5m [0.45]; MH ; depth: 1.51m - 2.5m [1]; MH ; depth: 1.51m - 2.5m [0.45] | 27,802.88 | 27,802.88 | CO-R16.S11-SD-200 | 5 | 5 |  |  |  |  | SD | RC W | CON | R16 | S11 | SD | SD |
| CO-R16.S11-SD-220 |  | Backfilling Works for Manholes of Storm Drainage Network-[Road 16]-[SW-11] | 7d | 2025-07-16 A | 2025-07-16 A | CO-R16.S11-SD-210 | 100% | 2025-07-20 | 2025-07-27 | Labor/Helper [127.67 h]; Skilled Labor/Surveyor [63.83 h]; Excavator [112 h]; MH ; depth: 0.0m - 1.5m [0.2]; MH ; depth: 1.51m - 2.5m [0.4]; MH ; depth: 1.51m - 2.5m [0.2] | 11,582.92 | 11,582.92 | CO-R16.S11-SD-220 | 5 | 5 |  |  |  |  | SD | BACK | CON | R16 | S11 | SD | SD |
| CO-R16.S11-SD-210 |  | Testing Works for Manholes of Storm Drainage Network-[Road 16]-[SW-11] | 1d | 2026-06-04 A | 2026-07-13 A | CO-R16.S11-SD-200 | 100% | 2025-07-19 | 2025-07-19 | Labor/Helper [93.17 h]; Plumber [45.6 h]; MH ; depth: 0.0m - 1.5m [0.1]; MH ; depth: 1.51m - 2.5m [0.2]; MH ; depth: 1.51m - 2.5m [0.1] | 5,790.95 | 5,790.95 | CO-R16.S11-SD-210 | 5 | 5 |  |  |  |  | SD | T&COV | CON | R16 | S11 | SD | SD |
|  | CB | **Catch Basin Sections** |  | 2025-07-17 | 2026-07-13 |  |  |  |  |  |  |  |  |  |  |  |  |  |  |  |  |  |  |  |  |  |
| CO-R16.S11-SD-140 |  | Trench Excavation and Bedding Works for Catch Basins of Storm Drainage Network-[Road 16]-[SW-11] | 7d | 2025-07-17 A | 2025-07-17 A | CO-R16.S11-EW-110, ENG-SH-SD-CB-A-110, ENG-MS-SD-CB-A-110, CO-R16.S11-SD-220 | 100% | 2025-07-28 | 2025-08-04 | Skilled Labor/Surveyor [6.84 h]; Foreman [6.84 h]; Excavator [56 h]; Pipe with diameter 300mm ; depth: 0 - 1.5m [57.18]; Pipe with diameter 400mm ; depth: 0 - 1.5m [3.01] | 14,247.1 | 14,247.1 | CO-R16.S11-SD-140 | 5 | 5 | CB | Ex | Each | CB | SD | EX | CON | R16 | S11 | SD | SD |
| CO-R16.S11-SD-150 |  | Installation and Pipes Laying Connection Works for Catch Basins of Storm Drainage Network-[Road 16]-[SW-11] | 7d | 2025-07-18 A | 2025-07-18 A | CO-R16.S11-SD-140, CO-R17.S14-SD-150 | 100% | 2025-08-05 | 2025-08-12 | Labor/Helper [182.38 h]; Skilled Labor/Surveyor [9.12 h]; Foreman [9.12 h]; Excavator [80 h]; Pipe with diameter 300mm ; depth: 0 - 1.5m [168.53]; Pipe with diameter 400mm ; depth: 0 - 1.5m [10.03] | 42,359.39 | 42,359.39 | CO-R16.S11-SD-150 | 5 | 5 | CB | CB | Each | CB | SD | INSTALL | CON | R16 | S11 | SD | SD |
| CO-R16.S11-SD-170 |  | Trench Backfilling and Compaction Works for Catch Basins of Storm Drainage Network-[Road 16]-[SW-11] | 10d | 2025-07-19 A | 2025-07-19 A | CO-R16.S11-SD-160 | 100% | 2025-08-18 | 2025-08-28 | Skilled Labor/Surveyor [9.12 h]; Foreman [9.12 h]; Excavator [80 h]; Pipe with diameter 300mm ; depth: 0 - 1.5m [75.24]; Pipe with diameter 400mm ; depth: 0 - 1.5m [4.01] | 18,764.67 | 18,764.67 | CO-R16.S11-SD-170 | 5 | 5 | CB | BF | Each | CB | SD | BACK | CON | R16 | S11 | SD | SD |
| CO-R16.S11-SD-160 |  | Testing Works for Catch Basins of Storm Drainage Network-[Road 16]-[SW-11] | 4d | 2026-06-04 A | 2026-07-13 A | CO-R16.S11-SD-150, CO-R16.S11-SD-120 | 100% | 2025-08-13 | 2025-08-17 | Labor/Helper [93.17 h]; Skilled Labor/Surveyor [18.23 h]; Foreman [19.63 h]; Plumber [36.48 h]; Excavator [32 h]; Pipe with diameter 300mm ; depth: 0 - 1.5m [37.12]; Pipe with diameter 400mm ; depth: 0 - 1.5m [3.01] | 9,580.44 | 9,580.44 | CO-R16.S11-SD-160 | 5 | 5 | CB | PL | Each | CB | SD | TEST | CON | R16 | S11 | SD | SD |

| ID | WBS | Activity | Duration | Start | Finish | Predecessors | Complete | Planned start | Planned finish | Total float | Free float | Resources | Cost | Actual cost | Activity ID N | Seq | New Seq | 02- Network-WBS | 03- Activity | 04-UOM | 05-Discipline | 01- Network | 07-Weightage System | 08 Stage | 09 Roads | 10 side Walk | Discipline | New Discipline |
| --- | --- | --- | --- | --- | --- | --- | --- | --- | --- | --- | --- | --- | --- | --- | --- | --- | --- | --- | --- | --- | --- | --- | --- | --- | --- | --- | --- | --- |
|  | IR | **Irrigation Network** |  | 2025-07-19 | 2026-12-17 |  |  |  |  |  |  |  |  |  |  |  |  |  |  |  |  |  |  |  |  |  |  |  |
|  | ML | **Main Line Pipes** |  | 2025-07-19 | 2026-12-17 |  |  |  |  |  |  |  |  |  |  |  |  |  |  |  |  |  |  |  |  |  |  |  |
| CO-R16.S11-IR-100 |  | Trench Excavation and Bedding Works for Main Lines of Irrigation Network-[Road 16]-[SW-11] | 7d | 2025-07-19 A | 2025-07-21 A | ENG-SH-IR-ML-A-110, CO-R16.S11-EW-110, CO-R16.S11-SD-170, ENG-MS-IR-ML-A-110 | 100% | 2025-08-30 | 2025-09-06 |  |  | Skilled Labor/Surveyor [6.84 h]; Foreman [6.84 h]; Excavator [56 h]; 125 mm pipe; depth 0.0m - 1.5m [191.6] | 14,550.38 | 14,550.38 | CO-R16.S11-IR-100 | 5 | 5 | ML | Ex | LM | ML | IR | EX | CON | R16 | S11 | IR | IR |
| CO-R16.S11-IR-110 |  | Pipes Laying Works for Main Lines of Irrigation Network-[Road 16]-[SW-11] | 10d | 2025-07-22 A | 2025-07-25 A | CO-R16.S11-IR-100, PRO-R16-IR-DL-100 FF+3d | 100% | 2025-09-07 | 2025-09-17 |  |  | Labor/Helper [182.38 h]; Skilled Labor/Surveyor [9.12 h]; Foreman [9.12 h]; Plumber [91.19 h]; Excavator [80 h]; 125 mm pipe; depth 0.0m - 1.5m [573.79] | 43,575.58 | 43,575.58 | CO-R16.S11-IR-110 | 5 | 5 | ML | PL | LM | ML | IR | PIPE | CON | R16 | S11 | IR | IR |
| CO-R16.S11-IR-130 |  | Trench Backfilling and Compaction Works for Main Lines of Irrigation Network-[Road 16]-[SW-11] | 10d | 2025-07-26 A | 2025-07-27 A | CO-R16.S11-IR-110 | 100% | 2025-09-28 | 2025-10-08 |  |  | Skilled Labor/Surveyor [9.12 h]; Foreman [9.12 h]; Excavator [80 h]; 125 mm pipe; depth 0.0m - 1.5m [95.3] | 7,236.9 | 7,236.9 | CO-R16.S11-IR-130 | 5 | 5 | ML | BF | LM | ML | IR | BACK | CON | R16 | S11 | IR | IR |
| CO-R16.S11-IR-120 |  | Installation Works for Main Line Valves of Irrigation Network-[Road 16]-[SW-11] | 7d | 2026-12-10 | 2026-12-17 | CO-R16.S11-IR-110, PRO-R16-IR-DL-110 FF+3d |  |  |  | -43d | 97d | Labor/Helper [125.62 h]; Skilled Labor/Surveyor [6.73 h]; Foreman [6.73 h]; Plumber [125.62 h]; Gate valves dia (90)mm on pipes with dia (125) mm. [8.03]; Air valves with dia (50mm) mm on pipes with dia(125)mm. [1]; Air valve chamber; on 125 mm dia pipeline Depth 1.5 - 3 m [1] | 30,878.59 |  | CO-R16.S11-IR-120 | 5 | 5 | ML | VI | Each | ML | IR | VALV | CON | R16 | S11 | IR | IR |
|  | TE | **Telecom Network** |  | 2025-08-04 | 2025-08-30 |  |  |  |  |  |  |  |  |  |  |  |  |  |  |  |  |  |  |  |  |  |  |  |
|  | PD | **Ducts Works** |  | 2025-08-04 | 2025-08-21 |  |  |  |  |  |  |  |  |  |  |  |  |  |  |  |  |  |  |  |  |  |  |  |
| CO-R16.S11-TE-100 |  | Trench Excavation and Bedding Works for Ducts of Telecom Network-[Road 16]-[SW-11] | 12d | 2025-08-04 A | 2025-08-07 A | CO-R16.S11-IR-130 SS+3d, CO-R16.S11-IR-130 FF+3d, CO-R17.S14-TE-100 | 100% | 2025-11-24 | 2025-12-07 |  |  | Skilled Labor/Surveyor [11.4 h]; Foreman [11.4 h]; Excavator [96 h]; 6-way ducts, 50mm dia. HDPE [30.09]; Road crossing ducts (6-way) [3.01] | 4,632.96 | 4,632.96 | CO-R16.S11-TE-100 | 5 | 5 | PD | Ex | LM | DC | TE | DUCTS | CON | R16 | S11 | TE | TE |
| CO-R16.S11-TE-110 |  | Pipes Laying Works for Ducts of Telecom Network-[Road 16]-[SW-11] | 7d | 2025-08-10 A | 2025-08-14 A | CO-R16.S11-TE-100, CO-R15.S09-TE-110 | 100% | 2026-07-23 | 2026-07-30 |  |  | Labor/Helper [127.67 h]; Skilled Labor/Surveyor [6.84 h]; Foreman [6.84 h]; Plumber [63.83 h]; Excavator [56 h]; JCB [28 h]; Truck [56 h]; 6-way ducts, 50mm dia. HDPE [178.56]; Road crossing ducts (6-way) [16.05] | 27,177.93 | 27,177.93 | CO-R16.S11-TE-110 | 5 | 5 | PD | PL | LM | DC | TE | DUCTS | CON | R16 | S11 | TE | TE |
| CO-R16.S11-TE-120 |  | Pouring Plain Concrete Above Ducts of Telecom Network-[Road 16]-[SW-11] | 7d | 2025-08-16 A | 2025-08-19 A | CO-R16.S11-TE-110, CO-R15.S09-TE-120 | 100% | 2026-08-01 | 2026-08-08 |  |  | Skilled Labor/Surveyor [6.84 h]; Foreman [6.84 h]; Cons. Carpenter [127.67 h]; Block Mason [63.83 h]; 6-way ducts, 50mm dia. HDPE [30.09]; Road crossing ducts (6-way) [3.01] | 4,632.96 | 4,632.96 | CO-R16.S11-TE-120 | 5 | 5 | PD | PC | LM | DC | TE | DUCTS | CON | R16 | S11 | TE | TE |
| CO-R16.S11-TE-130 |  | Trench Backfilling and Compaction Works for Ducts of Telecom Network-[Road 16]-[SW-11] | 7d | 2025-08-20 A | 2025-08-21 A | CO-R16.S11-TE-120, CO-R15.S09-TE-130 | 100% | 2026-08-09 | 2026-08-16 |  |  | Skilled Labor/Surveyor [6.84 h]; Foreman [6.84 h]; Excavator [56 h]; 6-way ducts, 50mm dia. HDPE [59.18]; Road crossing ducts (6-way) [6.02] | 9,128.07 | 9,128.07 | CO-R16.S11-TE-130 | 5 | 5 | PD | BF | LM | DC | TE | DUCTS | CON | R16 | S11 | TE | TE |
|  | MH | **Manholes Works** |  | 2025-08-27 | 2025-08-30 |  |  |  |  |  |  |  |  |  |  |  |  |  |  |  |  |  |  |  |  |  |  |  |
| CO-R16.S11-TE-140 |  | Excavation Works for Manholes of Telecom Network-[Road 16]-[SW-11] | 7d | 2025-08-27 A | 2025-08-27 A | CO-R15.S09-TE-140, CO-R16.S11-TE-100 | 100% | 2026-07-23 | 2026-07-30 |  |  | Skilled Labor/Surveyor [6.84 h]; Foreman [6.84 h]; Excavator [56 h]; Manhole Type 2 (2000x1000x1000) [0.4] | 1,283.59 | 1,283.59 | CO-R16.S11-TE-140 | 5 | 5 | MH | Ex | Each | MNH | TE | EXC | CON | R16 | S11 | TE | TE |
| CO-R16.S11-TE-150 |  | Installation Works for Manholes of Telecom Network-[Road 16]-[SW-11] | 7d | 2025-08-28 A | 2025-08-28 A | CO-R16.S11-TE-140, CO-R15.S09-TE-150 | 100% | 2026-08-01 | 2026-08-08 |  |  | Skilled Labor/Surveyor [6.84 h]; Foreman [6.84 h]; Excavator [56 h]; Manhole Type 1 (2000x1000x1000) [1]; Manhole Type 2 (2000x1000x1000) [1] | 6,410.79 | 6,410.79 | CO-R16.S11-TE-150 | 5 | 5 | MH | HH | Each | MNH | TE | INSTALL-1 | CON | R16 | S11 | TE | TE |
| CO-R16.S11-TE-160 |  | Backfilling Works for Manholes of Telecom Network-[Road 16]-[SW-11] | 7d | 2025-08-30 A | 2025-08-30 A | CO-R16.S11-TE-150, CO-R15.S09-TE-160 | 100% | 2026-08-09 | 2026-08-16 |  |  | Skilled Labor/Surveyor [6.84 h]; Foreman [6.84 h]; Excavator [56 h]; Manhole Type 2 (2000x1000x1000) [0.4] | 1,283.59 | 1,283.59 | CO-R16.S11-TE-160 | 5 | 5 | MH | BF | Each | MNH | TE | (New)-2 | CON | R16 | S11 | TE | TE |
|  | MV | **Medium Voltage Network** |  | 2025-08-11 | 2025-08-19 |  |  |  |  |  |  |  |  |  |  |  |  |  |  |  |  |  |  |  |  |  |  |  |
|  | CW | **Cabling Works** |  | 2025-08-11 | 2025-08-19 |  |  |  |  |  |  |  |  |  |  |  |  |  |  |  |  |  |  |  |  |  |  |  |
| CO-R16.S11-MV-ML-280 |  | Trench Excavation and Bedding Works for Medium Voltage Network-[Road 16]-[SW-11] | 18d | 2025-08-11 A | 2025-08-14 A | ENG-SH-MV-A-110, CO-R16.S11-SD-170 SS+3d, CO-R16.S11-SD-170 FF+3d, CO-R16.S11-EW-110, CO-R16.S11-TE-130 SS+3d, CO-R16.S11-TE-130 FF+3d, CO-R15.S09-MV-ML-250, ENG-MS-MV-A-110 | 100% | 2026-08-25 | 2026-09-14 |  |  | Skilled Labor/Surveyor [17.1 h]; Foreman [17.1 h]; Excavator [144 h]; Excavation for Trench size 40cm wide and 80cm deep ( Maximum 1 cable 33kv) [265.83]; Excavation for Trench size 60cm wide and 80cm deep ( for Max two cables 33 kv) [16.05]; Excavation for Trench size 90cm wide and 80cm deep ( Maximum 3 cable 33kv) [66.21]; Excavation for Trench size 120cm wide and 80cm deep ( Maximum 4cable 33kv) [23.07]; Excavation for Trench size 150cm wide and 80cm deep ( Maximum 4cable 33kv) [85.27]; Duct bank for (2) 33 kv cables [8.03]; Duct bank for (4) 33 kv cables [59.18]; Duct bank for (6) 33 kv cables [27.08] | 31,042.99 | 31,042.99 | CO-R16.S11-MV-ML-280 | 5 | 5 | CW | Ex | LM | CW | MV | EXC | CON | R16 | S11 | MV | MV |
| CO-R16.S11-MV-ML-290 |  | Cable Laying Works for Medium Voltage Network-[Road 16]-[SW-11] | 18d | 2025-08-12 A | 2025-08-17 A | CO-R16.S11-MV-ML-280 SS+3d, CO-R16.S11-MV-ML-280 FF+3d, CO-R15.S09-MV-ML-260, PRO-R16-MV-DL-100 FF+3d | 100% | 2026-08-29 | 2026-09-17 |  |  | Labor/Helper [164.14 h]; Electrician [170.39 h]; Low Current Technician [164.14 h]; 33kv 3Cx400 mmï¿½ Al XLPE / LLDPE /PVC Cable [1247.9]; 33kv 3Cx400 mmï¿½ Al XLPE /LLDPE/PVC [4.01] | 169,885.84 | 169,885.84 | CO-R16.S11-MV-ML-290 | 5 | 5 | CW | CL | LM | CW | MV | LAY | CON | R16 | S11 | MV | MV |
| CO-R16.S11-MV-ML-300 |  | Trench Backfilling and Compaction Works for Medium Voltage Network-[Road 16]-[SW-11] | 18d | 2025-08-16 A | 2025-08-19 A | CO-R16.S11-MV-ML-290 SS+3d, CO-R16.S11-MV-ML-290 FF+3d, CO-R15.S09-MV-ML-270 | 100% | 2026-09-01 | 2026-09-21 |  |  | Skilled Labor/Surveyor [17.1 h]; Foreman [17.1 h]; Excavator [144 h]; Water Tank [36 h]; 33kv 3Cx400 mmï¿½ Al XLPE / LLDPE /PVC Cable [534.67]; 33kv 3Cx400 mmï¿½ Al XLPE /LLDPE/PVC [1] | 71,481.59 | 71,481.59 | CO-R16.S11-MV-ML-300 | 5 | 5 | CW | BF | LM | CW | MV | BACK | CON | R16 | S11 | MV | MV |
|  | RD | **Road Works** |  | 2025-08-04 | 2026-10-12 |  |  |  |  |  |  |  |  |  |  |  |  |  |  |  |  |  |  |  |  |  |  |  |
|  | RD | **Pre-Bituminous Construction** |  | 2025-08-04 | 2025-10-20 |  |  |  |  |  |  |  |  |  |  |  |  |  |  |  |  |  |  |  |  |  |  |  |
| CO-R16.S11-RD-P-100 |  | Capping and Subgrade Layer for Road Works-[Road 16]-[SW-11] | 18d | 2025-08-04 A | 2025-08-11 A | ENG-SH-RD-A-100, CO-R16.S11-SD-130, CO-R16.S11-SW-130, ENG-MS-RD-A-10, CO-R16.S11-TE-130, CO-R16.S11-TE-160, CO-R16.S11-MV-ML-300 SS+3d, CO-R16.S11-MV-ML-300 FF+3d | 100% | 2026-09-05 | 2026-09-26 |  |  | Labor/Helper [328.29 h]; Skilled Labor/Surveyor [164.14 h]; Loader [144 h]; Grader [144 h]; Road Roller [144 h]; Water Tank [144 h]; 300mm capping layer underneath subgrade , CBR?15% [2252.03]; 300mm thick Subgrade, including subgrade preparation, CBR?25% [2252.03] | 178,454.31 | 178,454.31 | CO-R16.S11-RD-P-100 | 5 | 5 | AB | SG | Sq.m | BS | RD |  | CON | R16 | S11 | RD | RD |
| CO-R16.S11-RD-P-110 |  | Aggregate Base Course Layer for Road Works-[Road 16]-[SW-11] | 18d | 2025-09-17 A | 2025-10-20 A | CO-R16.S11-RD-P-100 SS+3d, CO-R16.S11-RD-P-100 FF+3d, CO-R16.S11-SD-170 SS+3d, CO-R16.S11-SD-170 FF+3d, CO-R15.S09-RD-P-110 | 100% | 2026-10-18 | 2026-11-07 |  |  | Labor/Helper [318.71 h]; Skilled Labor/Surveyor [159.35 h]; Foreman [159.35 h]; Loader [144 h]; Grader [144 h]; Road Roller [144 h]; Aggregate base course 200mm thick after compaction in two layers(Grading 1); CBR?80%; including watering, compaction and testing [1501.69] | 124,316.97 | 124,316.97 | CO-R16.S11-RD-P-110 | 5 | 5 | AB | BA | Sq.m | BS | RD |  | CON | R16 | S11 | RD | RD |

| ID | WBS | Activity | Duration | Start | Finish | Predecessors | Complete | Planned start | Planned finish | Resources | Cost | Actual cost | Activity ID N | Seq | New Seq | 02- Network-WBS | 03- Activity | 04-UOM | 05-Discipline | 01- Network | 08 Stage | 09 Roads | 10 side Walk | Discipline | New Discipline | 07-Weightage System |
| --- | --- | --- | --- | --- | --- | --- | --- | --- | --- | --- | --- | --- | --- | --- | --- | --- | --- | --- | --- | --- | --- | --- | --- | --- | --- | --- |
|  | LS | **Pavement Works** |  | 2026-08-25 | 2026-10-12 |  |  |  |  |  |  |  |  |  |  |  |  |  |  |  |  |  |  |  |  |  |
| CO-R16.S11-RD-P-120 |  | Fixing of Curbstone for Sidewalks Pavement-[Road 16]-[SW-11] | 18d | 2026-08-25 A | 2026-08-31 A | CO-R15.S09-RD-P-120, CO-R16.S11-RD-P-110 SS+3d, CO-R16.S11-RD-P-110 FF+3d | 100% | 2026-10-21 | 2026-11-10 | Labor/Helper [318.71 h]; Block Mason [956.12 h]; Precast Concrete Kerb, Type K1 [831.6]; Precast Concrete Kerb, Type L1 [1649.15] | 101,835.31 | 101,835.31 | CO-R16.S11-RD-P-120 | 5 | 5 | LS | CR | LM | LAND | RD | CON | R16 | S11 | RD | RD |  |
| CO-R16.S11-RD-P-130 |  | Fixing of Interlock Tiles for Sidewalks Pavement-[Road 16]-[SW-11] | 10d | 2026-08-25 A | 2026-10-12 A | CO-R16.S11-RD-P-120 SS+3d, CO-R16.S11-RD-P-120 FF+3d, CO-R15.S09-RD-P-130 SS, CO-R16-SW-TF-100 | 100% | 2026-11-05 | 2026-11-16 | Labor/Helper [196.09 h]; Block Mason [439.23 h]; Interlocking block pavers for sidewalk/footpath 60mm thick on and including 30mm Sand Bedding, 200mm Aggregate subbase, all in accordance with authority standards and complete as per specifications [1484.64]; Extraover for Pedestrian ramps [4.01] | 72,899.97 | 72,899.97 | CO-R16.S11-RD-P-130 | 5 | 5 | LS | IL | Sq.m | LAND | RD | CON | R16 | S11 | RD | RD |  |
|  | SW_14 | **SW_12** |  | 2025-03-13 | 2027-02-07 |  |  |  |  |  |  |  |  |  |  |  |  |  |  |  |  |  |  |  |  |  |
|  | EW | **Earthworks** |  | 2025-03-13 | 2025-04-20 |  |  |  |  |  |  |  |  |  |  |  |  |  |  |  |  |  |  |  |  |  |
|  | EW | **Earthworks** |  | 2025-03-13 | 2025-04-20 |  |  |  |  |  |  |  |  |  |  |  |  |  |  |  |  |  |  |  |  |  |
| CO-R16.S12-EW-100 |  | Roadway Excavation Works Upto Design Level for Earthworks-[Road 16]-[SW-12] | 10d | 2025-03-13 A | 2025-04-15 A | ENG-MS-RD-A-10, ENG-SH-RD-A-100, CO-R16.S11-EW-100 | 100% | 2025-04-14 | 2025-04-24 | Labor/Helper [228.2 h]; Skilled Labor/Surveyor [27.36 h]; Foreman [29.89 h]; Dump Truck [384 h]; Water Tank [192 h]; Dozer [192 h]; Roadway Excavation for cuttings; on any type of material for all depths including trimming and Preparation of excavated surfaces and disposal. [10607.1] | 68,238.42 | 68,238.42 | CO-R16.S12-EW-100 | 6 | 6 | EW | Ex | Cub.m | EW | EW | CON | R16 | S12 | EW | EW |  |
| CO-R16.S12-EW-110 |  | Embankments Works Upto Design Level for Earthworks-[Road 16]-[SW-12] | 12d | 2025-04-16 A | 2025-04-20 A | CO-R16.S12-EW-100, ENG-MS-RD-A-10, ENG-SH-RD-A-100 | 100% | 2025-04-26 | 2025-05-08 | Labor/Helper [437.72 h]; Skilled Labor/Surveyor [54.71 h]; Foreman [54.71 h]; Dump Truck [384 h]; Water Tank [384 h]; Dozer [384 h]; Embankments to the ROW, with suitable material other than top soil or rock according to specifications [17856.8] | 147,699.29 | 147,699.29 | CO-R16.S12-EW-110 | 6 | 6 | EW | BF | Cub.m | EW | EW | CON | R16 | S12 | EW | EW |  |
|  | SW | **Sewage Network** |  | 2025-06-16 | 2025-09-17 |  |  |  |  |  |  |  |  |  |  |  |  |  |  |  |  |  |  |  |  |  |
|  | ML | **Main Line Sections** |  | 2025-06-16 | 2025-07-10 |  |  |  |  |  |  |  |  |  |  |  |  |  |  |  |  |  |  |  |  |  |
| CO-R16.S12-SW-100 |  | Trench Excavation and Bedding Works for Main Lines of Sewage Network-[Road 16]-[SW-12] | 12d | 2025-06-16 A | 2025-06-23 A | CO-R16.S12-EW-110, ENG-MS-SW-ML-A-110, ENG-SH-SW-ML-A-110, CO-R16.S11-SW-100 | 100% | 2025-05-21 | 2025-06-03 | Labor/Helper [109.43 h]; Foreman [109.43 h]; Excavator [96 h]; Nominal bore : 160mm; Depth : 0.0m - 1.5m [18.06]; Nominal bore : 200mm; Depth : 0.0m - 1.5m [4.01]; Nominal bore : 200mm; Depth : 1.5m - 2.5m [10.03]; Nominal bore : 200mm; Depth : 2.5m - 3.5m [14.04]; Nominal bore : 200mm; Depth : 3.5m - 4.5m [18.06]; Nominal bore : 200mm; Depth : 4.5m -5.5m [8.03]; Nominal bore : 200mm; Depth : 5.5m - 6.5m [8.03] | 22,685.89 | 22,685.89 | CO-R16.S12-SW-100 | 6 | 6 | ML | Ex | LM | ML | SW | CON | R16 | S12 | SW | SW | EX |
| CO-R16.S12-SW-120 |  | Pipes Laying Works for Main Lines of Sewage Network-[Road 16]-[SW-12] | 12d | 2025-06-24 A | 2025-06-27 A | PRO-R16-SW-DL-100 FF+3d, CO-R16.S12-SW-100 | 100% | 2025-06-04 | 2025-06-22 | Labor/Helper [437.72 h]; Skilled Labor/Surveyor [22.8 h]; Foreman [22.8 h]; Plumber [218.86 h]; Excavator [192 h]; Nominal bore : 160mm; Depth : 0.0m - 1.5m [55.17]; Nominal bore : 200mm; Depth : 0.0m - 1.5m [13.04]; Nominal bore : 200mm; Depth : 1.5m - 2.5m [28.09]; Nominal bore : 200mm; Depth : 2.5m - 3.5m [41.13]; Nominal bore : 200mm; Depth : 3.5m - 4.5m [54.17]; Nominal bore : 200mm; Depth : 4.5m -5.5m [24.08]; Nominal bore : 200mm; Depth : 5.5m - 6.5m [27.08] | 69,633.31 | 69,633.31 | CO-R16.S12-SW-120 | 6 | 6 | ML | PL | LM | ML | SW | CON | R16 | S12 | SW | SW | PIPE |
| CO-R16.S12-SW-130 |  | Trench Backfilling and Compaction Works for Main Lines of Sewage Network-[Road 16]-[SW-12] | 10d | 2025-07-09 A | 2025-07-10 A | CO-R16.S12-SW-120, CO-R16.S12-SW-210 FF, CO-R16.S11-SW-130 | 100% | 2025-07-08 | 2025-07-19 | Skilled Labor/Surveyor [11.4 h]; Foreman [11.4 h]; Excavator [96 h]; Nominal bore : 160mm; Depth : 0.0m - 1.5m [10.03]; Nominal bore : 200mm; Depth : 0.0m - 1.5m [1]; Nominal bore : 200mm; Depth : 1.5m - 2.5m [4.01]; Nominal bore : 200mm; Depth : 2.5m - 3.5m [7.02]; Nominal bore : 200mm; Depth : 3.5m - 4.5m [8.03]; Nominal bore : 200mm; Depth : 4.5m -5.5m [4.01]; Nominal bore : 200mm; Depth : 5.5m - 6.5m [4.01] | 10,826.24 | 10,826.24 | CO-R16.S12-SW-130 | 6 | 6 | ML | BF | LM | ML | SW | CON | R16 | S12 | SW | SW | BACK |
|  | 1 | **Manholes** |  | 2025-06-28 | 2025-09-17 |  |  |  |  |  |  |  |  |  |  |  |  |  |  |  |  |  |  |  |  |  |
| CO-R16.S12-SW-160 |  | Excavation Works for Main Line Manholes of Sewage Network-[Road 16]-[SW-12] | 1d | 2025-06-28 A | 2025-06-30 A | CO-R16.S12-SW-120 SS | 100% | 2025-06-04 | 2025-06-04 | Labor/Helper [45.6 h]; Skilled Labor/Surveyor [22.8 h]; Excavator [40 h]; Depth: not exceeding 1.5m [0.15]; Depth: 1.5 - 2.5m [0.15]; Depth: 2.5 - 3.5m [0.15]; Depth: 5.5 - 6.5m [0.15] | 7,607.58 | 7,607.58 | CO-R16.S12-SW-160 | 6 | 6 |  |  |  |  | SW | CON | R16 | S12 | SW | SW | EX |
| CO-R16.S12-SW-170 |  | Installation RC Footing Works for Main Line Manholes of Sewage Network-[Road 16]-[SW-12] | 2d | 2025-07-20 A | 2025-07-22 A | CO-R16.S12-SW-160, PRO-R16-SW-DL-110 FF+3d | 100% | 2025-06-10 | 2025-06-11 | Cons. Carpenter [182.38 h]; Steel Fixer [182.38 h]; Depth: not exceeding 1.5m [0.1]; Depth: 1.5 - 2.5m [0.1]; Depth: 2.5 - 3.5m [0.1]; Depth: 5.5 - 6.5m [0.1] | 5,071.04 | 5,071.04 | CO-R16.S12-SW-170 | 6 | 6 |  |  |  |  | SW | CON | R16 | S12 | SW | SW | RC F |
| CO-R16.S12-SW-180 |  | Install Grp Liner Wall Works for Main Line Manholes of Sewage Network-[Road 16]-[SW-12] | 4d | 2025-07-23 A | 2025-07-24 A | CO-R16.S12-SW-170 | 100% | 2025-06-12 | 2025-06-16 | Labor/Helper [109.43 h]; Plumber [109.43 h]; Depth: not exceeding 1.5m [0.4]; Depth: 1.5 - 2.5m [0.4]; Depth: 2.5 - 3.5m [0.4]; Depth: 5.5 - 6.5m [0.4] | 20,287.21 | 20,287.21 | CO-R16.S12-SW-180 | 6 | 6 |  |  |  |  | SW | CON | R16 | S12 | SW | SW | LP |
| CO-R16.S12-SW-200 |  | Backfilling Works for Main Line Manholes of Sewage Network-[Road 16]-[SW-12] | 4d | 2025-07-26 A | 2025-07-27 A | CO-R16.S12-SW-190 | 100% | 2025-06-18 | 2025-06-22 | Labor/Helper [182.38 h]; Skilled Labor/Surveyor [91.19 h]; Excavator [160 h]; Depth: not exceeding 1.5m [0.15]; Depth: 1.5 - 2.5m [0.15]; Depth: 2.5 - 3.5m [0.15]; Depth: 5.5 - 6.5m [0.15] | 7,607.58 | 7,607.58 | CO-R16.S12-SW-200 | 6 | 6 |  |  |  |  | SW | CON | R16 | S12 | SW | SW | BACK |
| CO-R16.S12-SW-190 |  | Pouring Grp Liner Wall Works for Main Line Manholes of Sewage Network-[Road 16]-[SW-12] | 1d | 2025-09-16 A | 2025-09-16 A | CO-R16.S12-SW-180 | 100% | 2025-06-17 | 2025-06-17 | Cons. Carpenter [91.19 h]; Steel Fixer [91.19 h]; Depth: not exceeding 1.5m [0.05]; Depth: 1.5 - 2.5m [0.05]; Depth: 2.5 - 3.5m [0.05]; Depth: 5.5 - 6.5m [0.05] | 2,535.52 | 2,535.52 | CO-R16.S12-SW-190 | 6 | 6 |  |  |  |  | SW | CON | R16 | S12 | SW | SW | (New) |
| CO-R16.S12-SW-210 |  | Testing Works for Main Line Manholes of Sewage Network-[Road 16]-[SW-12] | 1d | 2025-09-17 A | 2025-09-17 A | CO-R16.S12-SW-200 | 100% | 2025-06-23 | 2025-06-23 | Labor/Helper [45.6 h]; Plumber [45.6 h]; Depth: not exceeding 1.5m [0.05]; Depth: 1.5 - 2.5m [0.05]; Depth: 2.5 - 3.5m [0.05]; Depth: 5.5 - 6.5m [0.05] | 2,535.52 | 2,535.52 | CO-R16.S12-SW-210 | 6 | 6 |  |  |  |  | SW | CON | R16 | S12 | SW | SW | T&COV |
|  | SD | **Storm Drainage Network** |  | 2025-07-10 | 2026-07-13 |  |  |  |  |  |  |  |  |  |  |  |  |  |  |  |  |  |  |  |  |  |
|  | ML | **Main Line Sections** |  | 2025-07-10 | 2025-07-19 |  |  |  |  |  |  |  |  |  |  |  |  |  |  |  |  |  |  |  |  |  |
| CO-R16.S12-SD-100 |  | Trench Excavation and Bedding Works for Main Lines of Storm Drainage Network-[Road 16]-[SW-12] | 10d | 2025-07-10 A | 2025-07-11 A | CO-R16.S12-EW-110, CO-R16.S12-EW-100, CO-R16.S12-SW-130 SS+3d, CO-R16.S12-SW-130 FF+3d | 100% | 2025-07-12 | 2025-07-22 | Skilled Labor/Surveyor [13.68 h]; Foreman [13.68 h]; Excavator [112 h]; Pipe with diameter 400mm ; depth: 0.0m - 1.5m [61.19]; Pipe with diameter 400mm ; depth: 1.51m - 2.5m [57.18]; Pipe with diameter 500mm ; depth: 1.51m - 2.5m [82.26]; Pipe with diameter 600mm ; depth: 1.51m - 2.5m [13.04]; Pipe with diameter 700mm ; depth: 1.51m - 2.5m [52.16]; Pipe with diameter 800mm ; depth: 1.51m - 2.5m [45.14]; Pipe with diameter 900mm ; depth: 1.51m - 2.5m [7.02] | 121,370.95 | 121,370.95 | CO-R16.S12-SD-100 | 6 | 6 | ML | Ex | LM | ML | SD | CON | R16 | S12 | SD | SD | EX |
| CO-R16.S12-SD-120 |  | Pipes Laying Works for Main Lines of Storm Drainage Network-[Road 16]-[SW-12] | 15d | 2025-07-12 A | 2025-07-13 A | PRO-R16-SD-DL-120 FF+3d, CO-R16.S12-SD-100 | 100% | 2025-07-23 | 2025-08-09 | Labor/Helper [273.57 h]; Skilled Labor/Surveyor [13.68 h]; Foreman [13.68 h]; Plumber [136.79 h]; Excavator [120 h]; Pipe with diameter 400mm ; depth: 0.0m - 1.5m [184.58]; Pipe with diameter 400mm ; depth: 1.51m - 2.5m [168.53]; Pipe with diameter 500mm ; depth: 1.51m - 2.5m [248.78]; Pipe with diameter 600mm ; depth: 1.51m - 2.5m [40.13]; Pipe with diameter 700mm ; depth: 1.51m - 2.5m [157.49]; Pipe with diameter 800mm ; depth: 1.51m - 2.5m [136.43]; Pipe with diameter 900mm ; depth: 1.51m - 2.5m [20.06] | 365,054.35 | 365,054.35 | CO-R16.S12-SD-120 | 6 | 6 | ML | PL | LM | ML | SD | CON | R16 | S12 | SD | SD | PIPE |
| CO-R16.S12-SD-130 |  | Trench Backfilling and Compaction Works for Main Lines of Storm Drainage Network-[Road 16]-[SW-12] | 15d | 2025-07-19 A | 2025-07-19 A | CO-R16.S12-SD-120 SS+3d, CO-R16.S12-SD-120 FF+3d, CO-R15.S10-SD-130, CO-R16.S12-SD-120, CO-R16.S12-SD-220 FF | 100% | 2026-02-25 | 2026-03-14 | Skilled Labor/Surveyor [13.68 h]; Foreman [13.68 h]; Excavator [120 h]; Pipe with diameter 400mm ; depth: 0.0m - 1.5m [31.1]; Pipe with diameter 400mm ; depth: 1.51m - 2.5m [28.09]; Pipe with diameter 500mm ; depth: 1.51m - 2.5m [41.13]; Pipe with diameter 600mm ; depth: 1.51m - 2.5m [7.02]; Pipe with diameter 700mm ; depth: 1.51m - 2.5m [25.08]; Pipe with diameter 800mm ; depth: 1.51m - 2.5m [23.07]; Pipe with diameter 900mm ; depth: 1.51m - 2.5m [3.01] | 60,359.22 | 60,359.22 | CO-R16.S12-SD-130 | 6 | 6 | ML | BF | LM | ML | SD | CON | R16 | S12 | SD | SD | BACK |

| ID | WBS | Activity | Duration | Start | Finish | Predecessors | Complete | Planned start | Planned finish | Total float | Free float | Resources | Cost | Actual cost | Activity ID N | Seq | New Seq | 01- Network | 07-Weightage System | 08 Stage | 09 Roads | 10 side Walk | Discipline | New Discipline | 02- Network-WBS | 03- Activity | 04-UOM | 05-Discipline |
| --- | --- | --- | --- | --- | --- | --- | --- | --- | --- | --- | --- | --- | --- | --- | --- | --- | --- | --- | --- | --- | --- | --- | --- | --- | --- | --- | --- | --- |
|  | MH | **Manholes** |  | 2025-07-14 | 2026-07-13 |  |  |  |  |  |  |  |  |  |  |  |  |  |  |  |  |  |  |  |  |  |  |  |
| CO-R16.S12-SD-180 |  | Trench Excavation and Bedding Works for Manholes of Storm Drainage Network-[Road 16]-[SW-12] | 1d | 2025-07-14 A | 2025-07-15 A | CO-R16.S12-SD-120 SS, PRO-SD-1DL-100 | 100% | 2025-07-23 | 2025-07-23 |  |  | Labor/Helper [27.36 h]; Skilled Labor/Surveyor [13.68 h]; Excavator [24 h]; MH ; depth: 0.0m - 1.5m [0.15]; MH ; depth: 1.51m - 2.5m [0.3]; MH ; depth: 1.51m - 2.5m [0.15] | 8,686.93 | 8,686.93 | CO-R16.S12-SD-180 | 6 | 6 | SD | EX | CON | R16 | S12 | SD | SD |  |  |  |  |
| CO-R16.S12-SD-190 |  | Install RC Footing Works for Manholes of Storm Drainage Network-[Road 16]-[SW-12] | 1d | 2025-07-16 A | 2025-07-16 A | CO-R16.S12-SD-180 | 100% | 2025-07-24 | 2025-07-24 |  |  | Cons. Carpenter [54.71 h]; Steel Fixer [54.71 h]; MH ; depth: 0.0m - 1.5m [0.05]; MH ; depth: 1.51m - 2.5m [0.1]; MH ; depth: 1.51m - 2.5m [0.05] | 2,895.98 | 2,895.98 | CO-R16.S12-SD-190 | 6 | 6 | SD | RC F | CON | R16 | S12 | SD | SD |  |  |  |  |
| CO-R16.S12-SD-200 |  | Install RC Wall Rings & Slab Works for Manholes of Storm Drainage Network-[Road 16]-[SW-12] | 4d | 2025-07-17 A | 2025-07-17 A | CO-R16.S12-SD-190 | 100% | 2025-07-26 | 2025-07-29 |  |  | Cons. Carpenter [218.86 h]; Steel Fixer [218.86 h]; MH ; depth: 0.0m - 1.5m [0.45]; MH ; depth: 1.51m - 2.5m [1]; MH ; depth: 1.51m - 2.5m [0.45] | 27,802.88 | 27,802.88 | CO-R16.S12-SD-200 | 6 | 6 | SD | RC W | CON | R16 | S12 | SD | SD |  |  |  |  |
| CO-R16.S12-SD-220 |  | Backfilling Works for Manholes of Storm Drainage Network-[Road 16]-[SW-12] | 7d | 2025-07-18 A | 2025-07-18 A | CO-R16.S12-SD-210 | 100% | 2025-07-31 | 2025-08-07 |  |  | Labor/Helper [191.5 h]; Skilled Labor/Surveyor [95.75 h]; Excavator [168 h]; MH ; depth: 0.0m - 1.5m [0.2]; MH ; depth: 1.51m - 2.5m [0.4]; MH ; depth: 1.51m - 2.5m [0.2] | 11,582.92 | 11,582.92 | CO-R16.S12-SD-220 | 6 | 6 | SD | BACK | CON | R16 | S12 | SD | SD |  |  |  |  |
| CO-R16.S12-SD-210 |  | Testing Works for Manholes of Storm Drainage Network-[Road 16]-[SW-12] | 1d | 2026-06-04 A | 2026-07-13 A | CO-R16.S12-SD-200 | 100% | 2025-07-30 | 2025-07-30 |  |  | Labor/Helper [93.17 h]; Plumber [30.36 h]; MH ; depth: 0.0m - 1.5m [0.1]; MH ; depth: 1.51m - 2.5m [0.2]; MH ; depth: 1.51m - 2.5m [0.1] | 5,790.95 | 5,790.95 | CO-R16.S12-SD-210 | 6 | 6 | SD | T&COV | CON | R16 | S12 | SD | SD |  |  |  |  |
|  | CB | **Catch Basin Sections** |  | 2025-07-19 | 2026-07-13 |  |  |  |  |  |  |  |  |  |  |  |  |  |  |  |  |  |  |  |  |  |  |  |
| CO-R16.S12-SD-140 |  | Trench Excavation and Bedding Works for Catch Basins of Storm Drainage Network-[Road 16]-[SW-12] | 7d | 2025-07-19 A | 2025-07-19 A | CO-R16.S12-EW-110, CO-R16.S12-SD-220 | 100% | 2025-08-09 | 2025-08-16 |  |  | Skilled Labor/Surveyor [6.84 h]; Foreman [6.84 h]; Excavator [56 h]; Pipe with diameter 300mm ; depth: 0 - 1.5m [57.18]; Pipe with diameter 400mm ; depth: 0 - 1.5m [3.01] | 14,247.1 | 14,247.1 | CO-R16.S12-SD-140 | 6 | 6 | SD | EX | CON | R16 | S12 | SD | SD | CB | Ex | Each | CB |
| CO-R16.S12-SD-150 |  | Installation and Pipes Laying Connection Works for Catch Basins of Storm Drainage Network-[Road 16]-[SW-12] | 7d | 2025-07-20 A | 2025-07-20 A | CO-R16.S12-SD-140, PRO-R16-SD-DL-130 FF+3d | 100% | 2025-08-17 | 2025-08-24 |  |  | Labor/Helper [182.38 h]; Skilled Labor/Surveyor [9.12 h]; Foreman [9.12 h]; Excavator [80 h]; Pipe with diameter 300mm ; depth: 0 - 1.5m [168.53]; Pipe with diameter 400mm ; depth: 0 - 1.5m [10.03] | 42,359.39 | 42,359.39 | CO-R16.S12-SD-150 | 6 | 6 | SD | INSTALL | CON | R16 | S12 | SD | SD | CB | CB | Each | CB |
| CO-R16.S12-SD-170 |  | Trench Backfilling and Compaction Works for Catch Basins of Storm Drainage Network-[Road 16]-[SW-12] | 10d | 2025-07-21 A | 2025-07-21 A | CO-R16.S12-SD-160 | 100% | 2025-08-30 | 2025-09-09 |  |  | Skilled Labor/Surveyor [9.12 h]; Foreman [9.12 h]; Excavator [80 h]; Pipe with diameter 300mm ; depth: 0 - 1.5m [75.24]; Pipe with diameter 400mm ; depth: 0 - 1.5m [4.01] | 18,764.67 | 18,764.67 | CO-R16.S12-SD-170 | 6 | 6 | SD | BACK | CON | R16 | S12 | SD | SD | CB | BF | Each | CB |
| CO-R16.S12-SD-160 |  | Testing Works for Catch Basins of Storm Drainage Network-[Road 16]-[SW-12] | 4d | 2026-06-04 A | 2026-07-13 A | CO-R16.S12-SD-150, CO-R16.S12-SD-120, PRO-R16-SD-DL-110 FF+3d | 100% | 2025-08-25 | 2025-08-28 |  |  | Labor/Helper [93.17 h]; Skilled Labor/Surveyor [18.23 h]; Foreman [19.63 h]; Plumber [36.48 h]; Excavator [32 h]; Pipe with diameter 300mm ; depth: 0 - 1.5m [37.12]; Pipe with diameter 400mm ; depth: 0 - 1.5m [3.01] | 9,580.44 | 9,580.44 | CO-R16.S12-SD-160 | 6 | 6 | SD | TEST | CON | R16 | S12 | SD | SD | CB | PL | Each | CB |
|  | PW | **Potable Water Network** |  | 2025-04-21 | 2027-02-07 |  |  |  |  |  |  |  |  |  |  |  |  |  |  |  |  |  |  |  |  |  |  |  |
|  | ML | **Main Line Sections** |  | 2025-04-21 | 2025-06-10 |  |  |  |  |  |  |  |  |  |  |  |  |  |  |  |  |  |  |  |  |  |  |  |
| CO-R16.S12-PW-100 |  | Trench Excavation and Bedding Works for Main Lines of Potable Water Network-[Road 16]-[SW-12] | 6d | 2025-04-21 A | 2025-04-26 A | CO-R16.S12-EW-110, CO-R16.S12-EW-100, CO-R16.S12-SW-130, CO-R16.S12-SD-130 | 100% | 2026-03-15 | 2026-03-24 |  |  | Skilled Labor/Surveyor [5.7 h]; Foreman [5.7 h]; Excavator [48 h]; Pipe with diameter 200mm; in depth 0.0m - 1.5m [184.58] | 27,403.61 | 27,403.61 | CO-R16.S12-PW-100 | 6 | 6 | PW | EX | CON | R16 | S12 | PW | PW | ML | Ex | LM | ML |
| CO-R16.S12-PW-110 |  | Pipes Laying and accessories for Main Lines of Potable Water Network-[Road 16]-[SW-12] | 6d | 2025-04-29 A | 2025-05-30 A | CO-R16.S12-PW-100, CO-R15.S10-PW-110, PRO-R16-PW-DL-100 FF+3d | 100% | 2026-03-25 | 2026-03-31 |  |  | Labor/Helper [109.43 h]; Skilled Labor/Surveyor [5.7 h]; Foreman [5.7 h]; Plumber [75 h]; Excavator [48 h]; Pipe with diameter 200mm; in depth 0.0m - 1.5m [461.44] | 68,508 | 68,508 | CO-R16.S12-PW-110 | 6 | 6 | PW | PIPE | CON | R16 | S12 | PW | PW | ML | PL | LM | ML |
| CO-R16.S12-PW-130 |  | Trench Backfilling and Compaction Works for Main Lines of Potable Water Network-[Road 16]-[SW-12] | 5.75d | 2025-06-01 A | 2025-06-10 A | CO-R16.S12-PW-110, CO-R15.S10-PW-130 | 100% | 2026-04-01 | 2026-04-07 |  |  | Skilled Labor/Surveyor [5.7 h]; Foreman [5.7 h]; Eq. Operator [5.7 h]; Loader [46 h]; Compactor [46 h]; Water Tank [12 h]; Pipe with diameter 200mm; in depth 0.0m - 1.5m [184.58] | 27,403.61 | 27,403.61 | CO-R16.S12-PW-130 | 6 | 6 | PW | BACK | CON | R16 | S12 | PW | PW | ML | BF | LM | ML |
|  | VC | **Valve Chamber** |  | 2027-02-01 | 2027-02-07 |  |  |  |  |  |  |  |  |  |  |  |  |  |  |  |  |  |  |  |  |  |  |  |
| CO-R16.S12-PW-210 |  | Installation Works for Main Line Valves and Valve Chambers of Potable Water Network-[Road 16]-[SW-12] | 6d | 2027-02-01 | 2027-02-07 | CO-R16.S12-PW-110, PRO-R11-PW-DL-110 |  |  |  | -69d | 121d | Labor/Helper [44.86 h]; Plumber [44.86 h]; Gate valves dia(200)mm on pipes with dia (200) mm. [7.02] | 18,986.26 |  | CO-R16.S12-PW-210 | 6 | 6 | PW | INSUL | CON | R16 | S12 | PW | PW | ML | VI | Each | ML |
|  | FH | **Fire Hydrant** |  | 2026-11-24 | 2026-12-21 |  |  |  |  |  |  |  |  |  |  |  |  |  |  |  |  |  |  |  |  |  |  |  |
| CO-R16.S12-PW-140 |  | Excavation Works for Fire Hydrants of Potable Water Network-[Road 16]-[SW-12] | 6d | 2026-11-24 | 2026-11-30 | CO-R16.S12-PW-110 SS+3d, CO-R16.S12-PW-110 FF+3d, CO-R16.S12-EW-110, CO-R16.S12-SW-130 SS+3d, CO-R16.S12-SW-130 FF+3d |  |  |  | -28d | 6d | Skilled Labor/Surveyor [5.61 h]; Foreman [5.61 h]; Excavator [48 h]; 3-outlet fire hydrant (2 x 2.5 inch and 1 x 4 inch) in the form of a separate dry vacuum cylinder [1] | 7,758.71 |  | CO-R16.S12-PW-140 | 6 | 6 | PW | EX | CON | R16 | S12 | PW | PW | FH | Ex | Each | FH |
| CO-R16.S12-PW-150 |  | Installation Works for Fire Hydrant of Potable Water Network-[Road 16]-[SW-12] | 6d | 2026-12-08 | 2026-12-14 | CO-R16.S12-PW-140, CO-R15.S10-PW-150, PRO-R16-PW-DL-120 FF+3d |  |  |  | -34d | 0d | Labor/Helper [107.67 h]; Skilled Labor/Surveyor [5.61 h]; Foreman [5.61 h]; Plumber [107.67 h]; 3-outlet fire hydrant (2 x 2.5 inch and 1 x 4 inch) in the form of a separate dry vacuum cylinder [4.01] | 31,034.82 |  | CO-R16.S12-PW-150 | 6 | 6 | PW | INSTALL | CON | R16 | S12 | PW | PW | FH | FH | Each | FH |
| CO-R16.S12-PW-160 |  | Trench Backfilling and Compaction Works for Fire Hydrants of Potable Water Network-[Road 16]-[SW-12] | 6d | 2026-12-15 | 2026-12-21 | CO-R16.S12-PW-150, CO-R15.S10-PW-160 |  |  |  | -34d | 0d | Skilled Labor/Surveyor [5.61 h]; Foreman [5.61 h]; Excavator [48 h]; 3-outlet fire hydrant (2 x 2.5 inch and 1 x 4 inch) in the form of a separate dry vacuum cylinder [1] | 7,758.71 |  | CO-R16.S12-PW-160 | 6 | 6 | PW | BACK | CON | R16 | S12 | PW | PW | FH | BF | Each | FH |
|  | TE | **Telecom Network** |  | 2025-08-20 | 2025-09-01 |  |  |  |  |  |  |  |  |  |  |  |  |  |  |  |  |  |  |  |  |  |  |  |
|  | PD | **Ducts Works** |  | 2025-08-20 | 2025-09-01 |  |  |  |  |  |  |  |  |  |  |  |  |  |  |  |  |  |  |  |  |  |  |  |
| CO-R16.S12-TE-100 |  | Trench Excavation and Bedding Works for Ducts of Telecom Network-[Road 16]-[SW-12] | 7d | 2025-08-20 A | 2025-08-23 A | CO-R16.S11-TE-100 | 100% | 2025-12-08 | 2025-12-15 |  |  | Skilled Labor/Surveyor [6.84 h]; Foreman [6.84 h]; Excavator [56 h]; 6-way ducts, 50mm dia. HDPE [30.09]; Road crossing ducts (6-way) [3.01] | 4,632.96 | 4,632.96 | CO-R16.S12-TE-100 | 6 | 6 | TE | DUCTS | CON | R16 | S12 | TE | TE | PD | Ex | LM | DC |
| CO-R16.S12-TE-110 |  | Pipes Laying Works for Ducts of Telecom Network-[Road 16]-[SW-12] | 7d | 2025-08-24 A | 2025-08-26 A | CO-R16.S12-TE-100, CO-R15.S10-TE-110, PRO-R16-TE-DL-100 FF+3d | 100% | 2026-08-01 | 2026-08-08 |  |  | Labor/Helper [127.67 h]; Skilled Labor/Surveyor [6.84 h]; Foreman [6.84 h]; Plumber [63.83 h]; Excavator [56 h]; JCB [28 h]; Truck [56 h]; 6-way ducts, 50mm dia. HDPE [178.56]; Road crossing ducts (6-way) [16.05] | 27,177.93 | 27,177.93 | CO-R16.S12-TE-110 | 6 | 6 | TE | DUCTS | CON | R16 | S12 | TE | TE | PD | PL | LM | DC |
| CO-R16.S12-TE-120 |  | Pouring Plain Concrete Above Ducts of Telecom Network-[Road 16]-[SW-12] | 7d | 2025-08-27 A | 2025-08-30 A | CO-R16.S12-TE-110, CO-R15.S10-TE-120 | 100% | 2026-08-09 | 2026-08-16 |  |  | Skilled Labor/Surveyor [6.84 h]; Foreman [6.84 h]; Cons. Carpenter [127.67 h]; Block Mason [63.83 h]; 6-way ducts, 50mm dia. HDPE [30.09]; Road crossing ducts (6-way) [3.01] | 4,632.96 | 4,632.96 | CO-R16.S12-TE-120 | 6 | 6 | TE | DUCTS | CON | R16 | S12 | TE | TE | PD | PC | LM | DC |
| CO-R16.S12-TE-130 |  | Trench Backfilling and Compaction Works for Ducts of Telecom Network-[Road 16]-[SW-12] | 7d | 2025-08-31 A | 2025-09-01 A | CO-R16.S12-TE-120, CO-R15.S10-TE-130 | 100% | 2026-08-17 | 2026-08-24 |  |  | Skilled Labor/Surveyor [6.84 h]; Foreman [6.84 h]; Excavator [56 h]; 6-way ducts, 50mm dia. HDPE [59.18]; Road crossing ducts (6-way) [6.02] | 9,128.07 | 9,128.07 | CO-R16.S12-TE-130 | 6 | 6 | TE | DUCTS | CON | R16 | S12 | TE | TE | PD | BF | LM | DC |

| ID | WBS | Activity | Duration | Start | Finish | Predecessors | Complete | Planned start | Planned finish | Resources | Cost | Actual cost | Activity ID N | Seq | New Seq | 02- Network-WBS | 03- Activity | 04-UOM | 05-Discipline | 01- Network | 07-Weightage System | 08 Stage | 09 Roads | 10 side Walk | Discipline | New Discipline |
| --- | --- | --- | --- | --- | --- | --- | --- | --- | --- | --- | --- | --- | --- | --- | --- | --- | --- | --- | --- | --- | --- | --- | --- | --- | --- | --- |
|  | MH | **Manholes Works** |  | 2025-08-27 | 2025-08-30 |  |  |  |  |  |  |  |  |  |  |  |  |  |  |  |  |  |  |  |  |  |
| CO-R16.S12-TE-140 |  | Excavation Works for Manholes of Telecom Network-[Road 16]-[SW-12] | 7d | 2025-08-27 A | 2025-08-27 A | CO-R15.S10-TE-140, CO-R16.S11-TE-140, CO-R16.S12-TE-100 | 100% | 2026-08-01 | 2026-08-08 | Skilled Labor/Surveyor [6.84 h]; Foreman [6.84 h]; Excavator [56 h]; Manhole Type 2 (2000x1000x1000) [0.4] | 1,283.59 | 1,283.59 | CO-R16.S12-TE-140 | 6 | 6 | MH | Ex | Each | MNH | TE | EXC | CON | R16 | S12 | TE | TE |
| CO-R16.S12-TE-150 |  | Installation Works for Manholes of Telecom Network-[Road 16]-[SW-12] | 7d | 2025-08-28 A | 2025-08-28 A | CO-R16.S12-TE-140, CO-R15.S10-TE-150, PRO-R16-TE-DL-110 FF+3d | 100% | 2026-08-09 | 2026-08-16 | Skilled Labor/Surveyor [6.84 h]; Foreman [6.84 h]; Excavator [56 h]; Manhole Type 1 (2000x1000x1000) [1]; Manhole Type 2 (2000x1000x1000) [1] | 6,410.79 | 6,410.79 | CO-R16.S12-TE-150 | 6 | 6 | MH | HH | Each | MNH | TE | INSTALL-1 | CON | R16 | S12 | TE | TE |
| CO-R16.S12-TE-160 |  | Backfilling Works for Manholes of Telecom Network-[Road 16]-[SW-12] | 7d | 2025-08-30 A | 2025-08-30 A | CO-R16.S12-TE-150, CO-R15.S10-TE-160 | 100% | 2026-08-17 | 2026-08-24 | Skilled Labor/Surveyor [6.84 h]; Foreman [6.84 h]; Excavator [56 h]; Manhole Type 2 (2000x1000x1000) [0.4] | 1,283.59 | 1,283.59 | CO-R16.S12-TE-160 | 6 | 6 | MH | BF | Each | MNH | TE | (New)-2 | CON | R16 | S12 | TE | TE |
|  | RD | **Road Works** |  | 2025-08-04 | 2026-10-12 |  |  |  |  |  |  |  |  |  |  |  |  |  |  |  |  |  |  |  |  |  |
|  | RD | **Pre-Bituminous Construction** |  | 2025-08-04 | 2025-10-20 |  |  |  |  |  |  |  |  |  |  |  |  |  |  |  |  |  |  |  |  |  |
| CO-R16.S12-RD-P-100 |  | Capping and Subgrade Layer for Road Works-[Road 16]-[SW-12] | 18d | 2025-08-04 A | 2025-08-11 A | CO-R16.S12-SD-130, CO-R16.S12-SW-130, CO-R16.S12-PW-130, PRO-R16-RD-DL-100 FF+3d, CO-R16.S12-TE-130, CO-R16.S12-TE-160 | 100% | 2026-08-25 | 2026-09-14 | Labor/Helper [907.38 h]; Skilled Labor/Surveyor [453.69 h]; Loader [144 h]; Grader [144 h]; Road Roller [144 h]; Water Tank [144 h]; 300mm capping layer underneath subgrade , CBR?15% [2252.03]; 300mm thick Subgrade, including subgrade preparation, CBR?25% [2252.03] | 178,454.31 | 178,454.31 | CO-R16.S12-RD-P-100 | 6 | 6 | AB | SG | Sq.m | BS | RD |  | CON | R16 | S12 | RD | RD |
| CO-R16.S12-RD-P-110 |  | Aggregate Base Course Layer for Road Works-[Road 16]-[SW-12] | 18d | 2025-09-17 A | 2025-10-20 A | CO-R16.S12-RD-P-100 SS+3d, CO-R16.S12-RD-P-100 FF+3d, CO-R16.S12-SD-170 SS+3d, CO-R16.S12-SD-170 FF+3d, CO-R15.S10-RD-P-110, PRO-R16-RD-DL-110 FF+3d | 100% | 2026-10-15 | 2026-11-04 | Labor/Helper [660.67 h]; Skilled Labor/Surveyor [330.34 h]; Foreman [330.34 h]; Loader [144 h]; Grader [144 h]; Road Roller [144 h]; Aggregate base course 200mm thick after compaction in two layers(Grading 1); CBR?80%; including watering, compaction and testing [1501.69] | 124,316.97 | 124,316.97 | CO-R16.S12-RD-P-110 | 6 | 6 | AB | BA | Sq.m | BS | RD |  | CON | R16 | S12 | RD | RD |
|  | LS | **Pavement Works** |  | 2026-08-25 | 2026-10-12 |  |  |  |  |  |  |  |  |  |  |  |  |  |  |  |  |  |  |  |  |  |
| CO-R16.S12-RD-P-120 |  | Fixing of Curbstone for Sidewalks Pavement-[Road 16]-[SW-12] | 18d | 2026-08-25 A | 2026-08-31 A | CO-R15.S10-RD-P-120, PRO-R16-RD-DL-130 FF+3d, CO-R16.S12-RD-P-110 SS+3d, CO-R16.S12-RD-P-110 FF+3d | 100% | 2026-10-19 | 2026-11-08 | Labor/Helper [318.71 h]; Block Mason [956.12 h]; Precast Concrete Kerb, Type K1 [831.6]; Precast Concrete Kerb, Type L1 [1649.15] | 101,835.31 | 101,835.31 | CO-R16.S12-RD-P-120 | 6 | 6 | LS | CR | LM | LAND | RD |  | CON | R16 | S12 | RD | RD |
| CO-R16.S12-RD-P-130 |  | Fixing of Interlock Tiles for Sidewalks Pavement-[Road 16]-[SW-12] | 10d | 2026-08-25 A | 2026-10-12 A | CO-R16.S12-RD-P-120 SS+3d, CO-R16.S12-RD-P-120 FF+3d, CO-R15.S10-RD-P-130, PRO-R16-RD-DL-120 FF+3d, CO-R16-SW-TF-100, CO-R16-SD-TF-120 | 100% | 2026-11-09 | 2026-11-19 | Labor/Helper [196.09 h]; Block Mason [588.28 h]; Interlocking block pavers for sidewalk/footpath 60mm thick on and including 30mm Sand Bedding, 200mm Aggregate subbase, all in accordance with authority standards and complete as per specifications [1484.64]; Extraover for Pedestrian ramps [4.01] | 72,899.97 | 72,899.97 | CO-R16.S12-RD-P-130 | 6 | 6 | LS | IL | Sq.m | LAND | RD |  | CON | R16 | S12 | RD | RD |
|  | 9 | **Road 17 Local 1 ( 500 LM )** |  | 2025-02-27 | 2026-12-28 |  |  |  |  |  |  |  |  |  |  |  |  |  |  |  |  |  |  |  |  |  |
|  | SW_15 | **SW_13** |  | 2025-02-27 | 2026-12-16 |  |  |  |  |  |  |  |  |  |  |  |  |  |  |  |  |  |  |  |  |  |
|  | EW | **Earthworks** |  | 2025-02-27 | 2025-03-07 |  |  |  |  |  |  |  |  |  |  |  |  |  |  |  |  |  |  |  |  |  |
|  | EW | **Earthworks** |  | 2025-02-27 | 2025-03-07 |  |  |  |  |  |  |  |  |  |  |  |  |  |  |  |  |  |  |  |  |  |
| CO-R17.S13-EW-100 |  | Roadway Excavation Works Upto Design Level for Earthworks-[Road 17]-[SW-13] | 10d | 2025-02-27 A | 2025-03-03 A | ENG-MS-RD-A-10, ENG-SH-RD-A-100, CO-R18.S16-EW-120 | 100% | 2025-03-05 | 2025-03-16 | Labor/Helper [273.57 h]; Skilled Labor/Surveyor [34.2 h]; Foreman [34.2 h]; Dump Truck [480 h]; Water Tank [240 h]; Dozer [240 h]; Roadway Excavation for cuttings; on any type of material for all depths including trimming and Preparation of excavated surfaces and disposal. [10085.5] | 64,882.92 | 64,882.92 | CO-R17.S13-EW-100 | 3 | 3 | EW | Ex | Cub.m | EW | EW |  | CON | R17 | S13 | EW | EW |
| CO-R17.S13-EW-110 |  | Embankments Works Upto Design Level for Earthworks-[Road 17]-[SW-13] | 12d | 2025-03-04 A | 2025-03-07 A | CO-R17.S13-EW-100, ENG-MS-RD-A-10, ENG-SH-RD-A-100 | 100% | 2025-03-17 | 2025-04-03 | Labor/Helper [547.15 h]; Skilled Labor/Surveyor [68.39 h]; Foreman [68.39 h]; Dump Truck [960 h]; Water Tank [480 h]; Dozer [480 h]; Embankments to the ROW, with suitable material other than top soil or rock according to specifications [16978] | 140,430.73 | 140,430.73 | CO-R17.S13-EW-110 | 3 | 3 | EW | BF | Cub.m | EW | EW |  | CON | R17 | S13 | EW | EW |
|  | SW | **Sewage Network** |  | 2025-05-20 | 2025-09-17 |  |  |  |  |  |  |  |  |  |  |  |  |  |  |  |  |  |  |  |  |  |
|  | ML | **Main Line Sections** |  | 2025-05-20 | 2025-06-21 |  |  |  |  |  |  |  |  |  |  |  |  |  |  |  |  |  |  |  |  |  |
| CO-R17.S13-SW-100 |  | Trench Excavation and Bedding Works for Main Lines of Sewage Network-[Road 17]-[SW-13] | 12d | 2025-05-20 A | 2025-05-22 A | CO-R17.S13-EW-110, ENG-MS-SW-ML-A-110, ENG-SH-SW-ML-A-110, CO-R18.S16-SW-220 | 100% | 2025-04-09 | 2025-04-22 | Labor/Helper [109.43 h]; Foreman [109.43 h]; Excavator [96 h]; Nominal bore : 160mm; Depth : 1.5m - 2.5m [35.11]; Nominal bore : 200mm; Depth : 0.0m - 1.5m [3.01]; Nominal bore : 200mm; Depth : 1.5m - 2.5m [7.02]; Nominal bore : 200mm; Depth : 2.5m - 3.5m [16.05]; Nominal bore : 200mm; Depth : 3.5m - 4.5m [11.03]; Nominal bore : 200mm; Depth : 4.5m -5.5m [6.02]; Nominal bore : 200mm; Depth : 5.5m - 6.5m [8.03] | 22,818.64 | 22,818.64 | CO-R17.S13-SW-100 | 3 | 3 | ML | Ex | LM | ML | SW | EX | CON | R17 | S13 | SW | SW |
| CO-R17.S13-SW-120 |  | Pipes Laying Works for Main Lines of Sewage Network-[Road 17]-[SW-13] | 12d | 2025-06-08 A | 2025-06-14 A | CO-R17.S13-SW-100, PRO-R17-SW-DL-100 FF+3d | 100% | 2025-04-30 | 2025-05-13 | Labor/Helper [218.86 h]; Skilled Labor/Surveyor [11.4 h]; Foreman [11.4 h]; Plumber [109.43 h]; Excavator [96 h]; Nominal bore : 160mm; Depth : 1.5m - 2.5m [108.34]; Nominal bore : 200mm; Depth : 0.0m - 1.5m [10.03]; Nominal bore : 200mm; Depth : 1.5m - 2.5m [20.06]; Nominal bore : 200mm; Depth : 2.5m - 3.5m [48.15]; Nominal bore : 200mm; Depth : 3.5m - 4.5m [35.11]; Nominal bore : 200mm; Depth : 4.5m -5.5m [18.06]; Nominal bore : 200mm; Depth : 5.5m - 6.5m [24.08] | 69,568.98 | 69,568.98 | CO-R17.S13-SW-120 | 3 | 3 | ML | PL | LM | ML | SW | PIPE | CON | R17 | S13 | SW | SW |
| CO-R17.S13-SW-130 |  | Trench Backfilling and Compaction Works for Main Lines of Sewage Network-[Road 17]-[SW-13] | 10d | 2025-06-15 A | 2025-06-21 A | ENG-SH-SW-ML-A-110 FF, ENG-MS-SW-ML-A-110 FF, CO-R17.S13-SW-120, CO-R17.S13-SW-210 FF, CO-R18.S16-SW-240 | 100% | 2025-05-29 | 2025-06-14 | Skilled Labor/Surveyor [11.4 h]; Foreman [11.4 h]; Excavator [96 h]; Nominal bore : 160mm; Depth : 1.5m - 2.5m [18.06]; Nominal bore : 200mm; Depth : 0.0m - 1.5m [1]; Nominal bore : 200mm; Depth : 1.5m - 2.5m [3.01]; Nominal bore : 200mm; Depth : 2.5m - 3.5m [8.03]; Nominal bore : 200mm; Depth : 3.5m - 4.5m [6.02]; Nominal bore : 200mm; Depth : 4.5m -5.5m [3.01]; Nominal bore : 200mm; Depth : 5.5m - 6.5m [4.01] | 11,459.36 | 11,459.36 | CO-R17.S13-SW-130 | 3 | 3 | ML | BF | LM | ML | SW | BACK | CON | R17 | S13 | SW | SW |
|  | 1 | **Manholes** |  | 2025-06-11 | 2025-09-17 |  |  |  |  |  |  |  |  |  |  |  |  |  |  |  |  |  |  |  |  |  |
| CO-R17.S13-SW-160 |  | Excavation Works for Main Line Manholes of Sewage Network-[Road 17]-[SW-13] | 1d | 2025-06-11 A | 2025-06-14 A | CO-R17.S13-SW-120 SS | 100% | 2025-04-30 | 2025-04-30 | Labor/Helper [45.6 h]; Skilled Labor/Surveyor [22.8 h]; Excavator [40 h]; Depth: not exceeding 1.5m [0.15]; Depth: 1.5 - 2.5m [0.45]; Depth: 2.5 - 3.5m [0.3]; Depth: 5.5 - 6.5m [0.15]; Depth:6.5 - 7.5m [0.15] | 15,552.13 | 15,552.13 | CO-R17.S13-SW-160 | 3 | 3 |  |  |  |  | SW | EX | CON | R17 | S13 | SW | SW |
| CO-R17.S13-SW-170 |  | Installation RC Footing Works for Main Line Manholes of Sewage Network-[Road 17]-[SW-13] | 2.25d | 2025-06-15 A | 2025-06-16 A | CO-R17.S13-SW-160, PRO-R17-SW-DL-110 FF+3d | 100% | 2025-05-01 | 2025-05-04 | Cons. Carpenter [205.18 h]; Steel Fixer [205.18 h]; Depth: not exceeding 1.5m [0.1]; Depth: 1.5 - 2.5m [0.3]; Depth: 2.5 - 3.5m [0.2]; Depth: 5.5 - 6.5m [0.1]; Depth:6.5 - 7.5m [0.1] | 10,367.75 | 10,367.75 | CO-R17.S13-SW-170 | 3 | 3 |  |  |  |  | SW | RC F | CON | R17 | S13 | SW | SW |
| CO-R17.S13-SW-180 |  | Install Grp Liner Wall Works for Main Line Manholes of Sewage Network-[Road 17]-[SW-13] | 4d | 2025-06-17 A | 2025-06-18 A | CO-R17.S13-SW-170 | 100% | 2025-05-04 | 2025-05-08 | Labor/Helper [72.95 h]; Plumber [72.95 h]; Depth: not exceeding 1.5m [0.4]; Depth: 1.5 - 2.5m [1]; Depth: 2.5 - 3.5m [1]; Depth: 5.5 - 6.5m [0.4]; Depth:6.5 - 7.5m [0.4] | 42,031.6 | 42,031.6 | CO-R17.S13-SW-180 | 3 | 3 |  |  |  |  | SW | LP | CON | R17 | S13 | SW | SW |
| CO-R17.S13-SW-200 |  | Backfilling Works for Main Line Manholes of Sewage Network-[Road 17]-[SW-13] | 4d | 2025-06-19 A | 2025-06-21 A | CO-R17.S13-SW-190 | 100% | 2025-05-10 | 2025-05-14 | Labor/Helper [72.95 h]; Skilled Labor/Surveyor [36.48 h]; Excavator [64 h]; Depth: not exceeding 1.5m [0.15]; Depth: 1.5 - 2.5m [0.45]; Depth: 2.5 - 3.5m [0.3]; Depth: 5.5 - 6.5m [0.15]; Depth:6.5 - 7.5m [0.15] | 15,552.13 | 15,552.13 | CO-R17.S13-SW-200 | 3 | 3 |  |  |  |  | SW | BACK | CON | R17 | S13 | SW | SW |
| CO-R17.S13-SW-190 |  | Pouring Grp Liner Wall Works for Main Line Manholes of Sewage Network-[Road 17]-[SW-13] | 1d | 2025-09-16 A | 2025-09-16 A | CO-R17.S13-SW-180 | 100% | 2025-05-08 | 2025-05-10 | Cons. Carpenter [91.19 h]; Steel Fixer [91.19 h]; Depth: not exceeding 1.5m [0.05]; Depth: 1.5 - 2.5m [0.15]; Depth: 2.5 - 3.5m [0.1]; Depth: 5.5 - 6.5m [0.05]; Depth:6.5 - 7.5m [0.05] | 5,184.38 | 5,184.38 | CO-R17.S13-SW-190 | 3 | 3 |  |  |  |  | SW | (New) | CON | R17 | S13 | SW | SW |
| CO-R17.S13-SW-210 |  | Testing Works for Main Line Manholes of Sewage Network-[Road 17]-[SW-13] | 1d | 2025-09-17 A | 2025-09-17 A | CO-R17.S13-SW-200 | 100% | 2025-05-14 | 2025-05-15 | Labor/Helper [45.6 h]; Plumber [45.6 h]; Depth: not exceeding 1.5m [0.05]; Depth: 1.5 - 2.5m [0.15]; Depth: 2.5 - 3.5m [0.1]; Depth: 5.5 - 6.5m [0.05]; Depth:6.5 - 7.5m [0.05] | 5,184.38 | 5,184.38 | CO-R17.S13-SW-210 | 3 | 3 |  |  |  |  | SW | T&COV | CON | R17 | S13 | SW | SW |

| ID | WBS | Activity | Duration | Start | Finish | Predecessors | Complete | Planned start | Planned finish | Total float | Free float | Resources | Cost | Actual cost | Activity ID N | Seq | New Seq | 02- Network-WBS | 03- Activity | 04-UOM | 05-Discipline | 01- Network | 07-Weightage System | 08 Stage | 09 Roads | 10 side Walk | Discipline | New Discipline |
| --- | --- | --- | --- | --- | --- | --- | --- | --- | --- | --- | --- | --- | --- | --- | --- | --- | --- | --- | --- | --- | --- | --- | --- | --- | --- | --- | --- | --- |
|  | SD | **Storm Drainage Network** |  | 2025-06-03 | 2026-07-13 |  |  |  |  |  |  |  |  |  |  |  |  |  |  |  |  |  |  |  |  |  |  |  |
|  | ML | **Main Line Sections** |  | 2025-06-22 | 2025-06-30 |  |  |  |  |  |  |  |  |  |  |  |  |  |  |  |  |  |  |  |  |  |  |  |
| CO-R17.S13-SD-100 |  | Trench Excavation and Bedding Works for Main Lines of Storm Drainage Network-[Road 17]-[SW-13] | 10d | 2025-06-22 A | 2025-06-23 A | ENG-SH-SD-ML-A-110, CO-R17.S13-EW-110, CO-R17.S13-EW-100, CO-R17.S13-SW-130 SS+3d, CO-R17.S13-SW-130 FF+3d, ENG-MS-SD-ML-A-110 | 100% | 2025-06-02 | 2025-06-17 |  |  | Skilled Labor/Surveyor [13.68 h]; Foreman [13.68 h]; Excavator [112 h]; Pipe with diameter 600mm ; depth: 1.51m - 2.5m [13.04]; Pipe with diameter 700mm ; depth: 1.51m - 2.5m [27.08]; Pipe with diameter 1000mm ; depth: 1.51m - 2.5m [20.06]; Pipe with diameter 1000mm ; depth: 2.51 - 3.5m [20.06] | 50,039.46 | 50,039.46 | CO-R17.S13-SD-100 | 3 | 3 | ML | Ex | LM | ML | SD | EX | CON | R17 | S13 | SD | SD |
| CO-R17.S13-SD-120 |  | Pipes Laying Works for Main Lines of Storm Drainage Network-[Road 17]-[SW-13] | 20d | 2025-06-24 A | 2025-06-28 A | CO-R17.S13-SD-100 | 100% | 2025-06-18 | 2025-07-10 |  |  | Labor/Helper [364.77 h]; Skilled Labor/Surveyor [18.24 h]; Foreman [18.24 h]; Plumber [182.38 h]; Excavator [160 h]; Pipe with diameter 600mm ; depth: 1.51m - 2.5m [37.12]; Pipe with diameter 700mm ; depth: 1.51m - 2.5m [81.25]; Pipe with diameter 1000mm ; depth: 1.51m - 2.5m [59.18]; Pipe with diameter 1000mm ; depth: 2.51 - 3.5m [59.18] | 147,718.69 | 147,718.69 | CO-R17.S13-SD-120 | 3 | 3 | ML | PL | LM | ML | SD | PIPE | CON | R17 | S13 | SD | SD |
| CO-R17.S13-SD-130 |  | Trench Backfilling and Compaction Works for Main Lines of Storm Drainage Network-[Road 17]-[SW-13] | 20d | 2025-06-29 A | 2025-06-30 A | CO-R17.S13-SD-120 SS+3d, CO-R17.S13-SD-120 FF+3d, ENG-SH-SD-ML-A-110 FF, CO-R16.S11-SD-130, ENG-MS-SD-ML-A-110 FF, CO-R17.S13-SD-120, CO-R17.S13-SD-220 FF | 100% | 2026-03-10 | 2026-04-05 |  |  | Skilled Labor/Surveyor [18.24 h]; Foreman [18.24 h]; Excavator [160 h]; Pipe with diameter 600mm ; depth: 1.51m - 2.5m [6.02]; Pipe with diameter 700mm ; depth: 1.51m - 2.5m [14.04]; Pipe with diameter 1000mm ; depth: 1.51m - 2.5m [10.03]; Pipe with diameter 1000mm ; depth: 2.51 - 3.5m [10.03] | 25,058.03 | 25,058.03 | CO-R17.S13-SD-130 | 3 | 3 | ML | BF | LM | ML | SD | BACK | CON | R17 | S13 | SD | SD |
|  | MH | **Manholes** |  | 2025-06-03 | 2026-07-13 |  |  |  |  |  |  |  |  |  |  |  |  |  |  |  |  |  |  |  |  |  |  |  |
| CO-R17.S13-SD-220 |  | Backfilling Works for Manholes of Storm Drainage Network-[Road 17]-[SW-13] | 7d | 2025-06-03 A | 2025-06-08 A | CO-R17.S13-SD-210 | 100% | 2025-06-26 | 2025-07-03 |  |  | Labor/Helper [191.5 h]; Skilled Labor/Surveyor [95.75 h]; Excavator [168 h]; MH ; depth: 0.0m - 1.5m [0.2]; MH ; depth: 1.51m - 2.5m [0.4]; MH ; depth: 2.51 - 3.5m [0.2]; MH ; depth: 1.51m - 2.5m [0.2] | 18,388.89 | 18,388.89 | CO-R17.S13-SD-220 | 3 | 3 |  |  |  |  | SD | BACK | CON | R17 | S13 | SD | SD |
| CO-R17.S13-SD-180 |  | Trench Excavation and Bedding Works for Manholes of Storm Drainage Network-[Road 17]-[SW-13] | 1d | 2025-06-29 A | 2025-06-29 A | CO-R17.S13-SD-120 SS, PRO-SD-1DL-100 | 100% | 2025-06-18 | 2025-06-18 |  |  | Labor/Helper [27.36 h]; Skilled Labor/Surveyor [13.68 h]; Excavator [24 h]; MH ; depth: 0.0m - 1.5m [0.15]; MH ; depth: 1.51m - 2.5m [0.3]; MH ; depth: 2.51 - 3.5m [0.15]; MH ; depth: 1.51m - 2.5m [0.15] | 13,791.67 | 13,791.67 | CO-R17.S13-SD-180 | 3 | 3 |  |  |  |  | SD | EX | CON | R17 | S13 | SD | SD |
| CO-R17.S13-SD-190 |  | Install RC Footing Works for Manholes of Storm Drainage Network-[Road 17]-[SW-13] | 1d | 2025-06-30 A | 2025-06-30 A | CO-R17.S13-SD-180 | 100% | 2025-06-19 | 2025-06-19 |  |  | Cons. Carpenter [54.71 h]; Steel Fixer [54.71 h]; MH ; depth: 0.0m - 1.5m [0.05]; MH ; depth: 1.51m - 2.5m [0.1]; MH ; depth: 2.51 - 3.5m [0.05]; MH ; depth: 1.51m - 2.5m [0.05] | 4,597.22 | 4,597.22 | CO-R17.S13-SD-190 | 3 | 3 |  |  |  |  | SD | RC F | CON | R17 | S13 | SD | SD |
| CO-R17.S13-SD-200 |  | Install RC Wall Rings & Slab Works for Manholes of Storm Drainage Network-[Road 17]-[SW-13] | 4d | 2025-07-01 A | 2025-07-02 A | CO-R17.S13-SD-190 | 100% | 2025-06-21 | 2025-06-24 |  |  | Cons. Carpenter [218.86 h]; Steel Fixer [218.86 h]; MH ; depth: 0.0m - 1.5m [0.45]; MH ; depth: 1.51m - 2.5m [1]; MH ; depth: 2.51 - 3.5m [0.45]; MH ; depth: 1.51m - 2.5m [0.45] | 43,117.08 | 43,117.08 | CO-R17.S13-SD-200 | 3 | 3 |  |  |  |  | SD | RC W | CON | R17 | S13 | SD | SD |
| CO-R17.S13-SD-210 |  | Testing Works for Manholes of Storm Drainage Network-[Road 17]-[SW-13] | 1d | 2026-06-04 A | 2026-07-13 A | CO-R17.S13-SD-200 | 100% | 2025-06-25 | 2025-06-25 |  |  | Labor/Helper [93.17 h]; Plumber [30.36 h]; MH ; depth: 0.0m - 1.5m [0.1]; MH ; depth: 1.51m - 2.5m [0.2]; MH ; depth: 2.51 - 3.5m [0.1]; MH ; depth: 1.51m - 2.5m [0.1] | 9,194.44 | 9,194.44 | CO-R17.S13-SD-210 | 3 | 3 |  |  |  |  | SD | T&COV | CON | R17 | S13 | SD | SD |
|  | CB | **Catch Basin Sections** |  | 2025-06-07 | 2026-07-13 |  |  |  |  |  |  |  |  |  |  |  |  |  |  |  |  |  |  |  |  |  |  |  |
| CO-R17.S13-SD-170 |  | Trench Backfilling and Compaction Works for Catch Basins of Storm Drainage Network-[Road 17]-[SW-13] | 7d | 2025-06-07 A | 2025-06-10 A | CO-R17.S13-SD-160 | 100% | 2025-07-30 | 2025-08-06 |  |  | Skilled Labor/Surveyor [6.84 h]; Foreman [6.84 h]; Excavator [56 h]; Pipe with diameter 300mm ; depth: 0 - 1.5m [71.22]; Pipe with diameter 400mm ; depth: 0 - 1.5m [4.01] | 17,830.32 | 17,830.32 | CO-R17.S13-SD-170 | 3 | 3 | CB | BF | Each | CB | SD | BACK | CON | R17 | S13 | SD | SD |
| CO-R17.S13-SD-140 |  | Trench Excavation and Bedding Works for Catch Basins of Storm Drainage Network-[Road 17]-[SW-13] | 7d | 2025-06-24 A | 2025-06-30 A | CO-R17.S13-EW-110, ENG-SH-SD-CB-A-110, ENG-MS-SD-CB-A-110, CO-R17.S13-SD-220 | 100% | 2025-07-05 | 2025-07-12 |  |  | Skilled Labor/Surveyor [6.84 h]; Foreman [6.84 h]; Excavator [56 h]; Pipe with diameter 300mm ; depth: 0 - 1.5m [54.17]; Pipe with diameter 400mm ; depth: 0 - 1.5m [3.01] | 13,547.61 | 13,547.61 | CO-R17.S13-SD-140 | 3 | 3 | CB | Ex | Each | CB | SD | EX | CON | R17 | S13 | SD | SD |
| CO-R17.S13-SD-150 |  | Installation and Pipes Laying Connection Works for Catch Basins of Storm Drainage Network-[Road 17]-[SW-13] | 7d | 2025-07-01 A | 2025-07-06 A | CO-R17.S13-SD-140, CO-R18.S16-SD-270 | 100% | 2025-07-14 | 2025-07-21 |  |  | Labor/Helper [255.34 h]; Skilled Labor/Surveyor [13.68 h]; Foreman [13.68 h]; Excavator [112 h]; Pipe with diameter 300mm ; depth: 0 - 1.5m [160.5]; Pipe with diameter 400mm ; depth: 0 - 1.5m [10.03] | 40,492.72 | 40,492.72 | CO-R17.S13-SD-150 | 3 | 3 | CB | CB | Each | CB | SD | INSTALL | CON | R17 | S13 | SD | SD |
| CO-R17.S13-SD-160 |  | Testing Works for Catch Basins of Storm Drainage Network-[Road 17]-[SW-13] | 7d | 2026-06-04 A | 2026-07-13 A | CO-R17.S13-SD-150, CO-R17.S13-SD-120 | 100% | 2025-07-22 | 2025-07-29 |  |  | Labor/Helper [127.67 h]; Skilled Labor/Surveyor [18.23 h]; Foreman [19.63 h]; Plumber [63.83 h]; Excavator [56 h]; Pipe with diameter 300mm ; depth: 0 - 1.5m [35.11]; Pipe with diameter 400mm ; depth: 0 - 1.5m [3.01] | 9,113.77 | 9,113.77 | CO-R17.S13-SD-160 | 3 | 3 | CB | PL | Each | CB | SD | TEST | CON | R17 | S13 | SD | SD |
|  | IR | **Irrigation Network** |  | 2025-05-01 | 2026-12-16 |  |  |  |  |  |  |  |  |  |  |  |  |  |  |  |  |  |  |  |  |  |  |  |
|  | ML | **Main Line Pipes** |  | 2025-05-01 | 2026-12-16 |  |  |  |  |  |  |  |  |  |  |  |  |  |  |  |  |  |  |  |  |  |  |  |
| CO-R17.S13-IR-100 |  | Trench Excavation and Bedding Works for Main Lines of Irrigation Network-[Road 17]-[SW-13] | 7d | 2025-05-01 A | 2025-05-10 A | ENG-SH-IR-ML-A-110, CO-R17.S13-EW-110, CO-R17.S13-SD-170, ENG-MS-IR-ML-A-110 | 100% | 2025-08-07 | 2025-08-14 |  |  | Skilled Labor/Surveyor [6.84 h]; Foreman [6.84 h]; Excavator [56 h]; 125 mm pipe; depth 0.0m - 1.5m [181.57] | 13,788.6 | 13,788.6 | CO-R17.S13-IR-100 | 3 | 3 | ML | Ex | LM | ML | IR | EX | CON | R17 | S13 | IR | IR |
| CO-R17.S13-IR-110 |  | Pipes Laying Works for Main Lines of Irrigation Network-[Road 17]-[SW-13] | 10d | 2025-05-21 A | 2025-05-27 A | CO-R17.S13-IR-100, PRO-R17-IR-DL-100 FF+3d | 100% | 2025-08-16 | 2025-08-26 |  |  | Labor/Helper [182.38 h]; Skilled Labor/Surveyor [9.12 h]; Foreman [9.12 h]; Plumber [91.19 h]; Excavator [80 h]; 125 mm pipe; depth 0.0m - 1.5m [544.7] | 41,365.81 | 41,365.81 | CO-R17.S13-IR-110 | 3 | 3 | ML | PL | LM | ML | IR | PIPE | CON | R17 | S13 | IR | IR |
| CO-R17.S13-IR-130 |  | Trench Backfilling and Compaction Works for Main Lines of Irrigation Network-[Road 17]-[SW-13] | 9d | 2025-06-29 A | 2025-07-07 A | CO-R17.S13-IR-110 | 100% | 2025-09-04 | 2025-09-14 |  |  | Skilled Labor/Surveyor [9.12 h]; Foreman [9.12 h]; Excavator [72 h]; 125 mm pipe; depth 0.0m - 1.5m [91.29] | 6,932.59 | 6,932.59 | CO-R17.S13-IR-130 | 3 | 3 | ML | BF | LM | ML | IR | BACK | CON | R17 | S13 | IR | IR |
| CO-R17.S13-IR-120 |  | Installation Works for Main Line Valves of Irrigation Network-[Road 17]-[SW-13] | 7d | 2026-12-09 | 2026-12-16 | CO-R17.S13-IR-110, PRO-R17-IR-DL-110 FF+3d |  |  |  | -42d | 98d | Labor/Helper [125.62 h]; Skilled Labor/Surveyor [6.73 h]; Foreman [6.73 h]; Plumber [125.62 h]; Gate valves dia (90)mm on pipes with dia (125) mm. [7.02] | 14,292.03 |  | CO-R17.S13-IR-120 | 3 | 3 | ML | VI | Each | ML | IR | VALV | CON | R17 | S13 | IR | IR |
|  | TE | **Telecom Network** |  | 2025-07-14 | 2025-07-27 |  |  |  |  |  |  |  |  |  |  |  |  |  |  |  |  |  |  |  |  |  |  |  |
|  | PD | **Ducts Works** |  | 2025-07-14 | 2025-07-25 |  |  |  |  |  |  |  |  |  |  |  |  |  |  |  |  |  |  |  |  |  |  |  |
| CO-R17.S13-TE-100 |  | Trench Excavation and Bedding Works for Ducts of Telecom Network-[Road 17]-[SW-13] | 7d | 2025-07-14 A | 2025-07-17 A | CO-R17.S13-IR-130, CO-R17.S13-EW-110, CO-R18.S16-TE-170 | 100% | 2025-11-08 | 2025-11-15 |  |  | Skilled Labor/Surveyor [6.84 h]; Foreman [6.84 h]; Excavator [56 h]; 6-way ducts, 50mm dia. HDPE [28.09]; Road crossing ducts (6-way) [3.01] | 4,358.27 | 4,358.27 | CO-R17.S13-TE-100 | 3 | 3 | PD | Ex | LM | DC | TE | DUCTS | CON | R17 | S13 | TE | TE |
| CO-R17.S13-TE-110 |  | Pipes Laying Works for Ducts of Telecom Network-[Road 17]-[SW-13] | 7d | 2025-07-18 A | 2025-07-21 A | CO-R17.S13-TE-100, CO-R16.S11-TE-110 | 100% | 2026-08-01 | 2026-08-08 |  |  | Labor/Helper [127.67 h]; Skilled Labor/Surveyor [6.84 h]; Foreman [6.84 h]; Plumber [63.83 h]; Excavator [56 h]; JCB [28 h]; Truck [56 h]; 6-way ducts, 50mm dia. HDPE [168.53]; Road crossing ducts (6-way) [14.04] | 25,462.4 | 25,462.4 | CO-R17.S13-TE-110 | 3 | 3 | PD | PL | LM | DC | TE | DUCTS | CON | R17 | S13 | TE | TE |
| CO-R17.S13-TE-120 |  | Pouring Plain Concrete Above Ducts of Telecom Network-[Road 17]-[SW-13] | 7d | 2025-07-22 A | 2025-07-22 A | CO-R17.S13-TE-110, CO-R16.S11-TE-120 | 100% | 2026-08-09 | 2026-08-16 |  |  | Skilled Labor/Surveyor [6.84 h]; Foreman [6.84 h]; Cons. Carpenter [127.67 h]; Block Mason [63.83 h]; 6-way ducts, 50mm dia. HDPE [28.09]; Road crossing ducts (6-way) [3.01] | 4,358.27 | 4,358.27 | CO-R17.S13-TE-120 | 3 | 3 | PD | PC | LM | DC | TE | DUCTS | CON | R17 | S13 | TE | TE |
| CO-R17.S13-TE-130 |  | Trench Backfilling and Compaction Works for Ducts of Telecom Network-[Road 17]-[SW-13] | 7d | 2025-07-23 A | 2025-07-25 A | CO-R17.S13-TE-120, CO-R16.S11-TE-130 | 100% | 2026-08-17 | 2026-08-24 |  |  | Skilled Labor/Surveyor [6.84 h]; Foreman [6.84 h]; Excavator [56 h]; 6-way ducts, 50mm dia. HDPE [57.18]; Road crossing ducts (6-way) [4.01] | 8,510.27 | 8,510.27 | CO-R17.S13-TE-130 | 3 | 3 | PD | BF | LM | DC | TE | DUCTS | CON | R17 | S13 | TE | TE |

| ID | WBS | Activity | Duration | Start | Finish | Predecessors | Complete | Planned start | Planned finish | Resources | Cost | Actual cost | Activity ID N | Seq | New Seq | 02- Network-WBS | 03- Activity | 04-UOM | 05-Discipline | 01- Network | 07-Weightage System | 08 Stage | 09 Roads | 10 side Walk | Discipline | New Discipline |
| --- | --- | --- | --- | --- | --- | --- | --- | --- | --- | --- | --- | --- | --- | --- | --- | --- | --- | --- | --- | --- | --- | --- | --- | --- | --- | --- |
|  | MH | **Manholes Works** |  | 2025-07-19 | 2025-07-27 |  |  |  |  |  |  |  |  |  |  |  |  |  |  |  |  |  |  |  |  |  |
| CO-R17.S13-TE-140 |  | Excavation Works for Manholes of Telecom Network-[Road 17]-[SW-13] | 7d | 2025-07-19 A | 2025-07-22 A | CO-R16.S11-TE-140, CO-R17.S13-TE-100 | 100% | 2026-08-01 | 2026-08-08 | Skilled Labor/Surveyor [6.84 h]; Foreman [6.84 h]; Excavator [56 h]; Manhole Type 2 (2000x1000x1000) [0.2] | 641.28 | 641.28 | CO-R17.S13-TE-140 | 3 | 3 | MH | Ex | Each | MNH | TE | EXC | CON | R17 | S13 | TE | TE |
| CO-R17.S13-TE-150 |  | Installation Works for Manholes of Telecom Network-[Road 17]-[SW-13] | 7d | 2025-07-23 A | 2025-07-24 A | CO-R17.S13-TE-140, CO-R16.S11-TE-150 | 100% | 2026-08-09 | 2026-08-16 | Skilled Labor/Surveyor [6.84 h]; Foreman [6.84 h]; Excavator [56 h]; Manhole Type 1 (2000x1000x1000) [1]; Manhole Type 2 (2000x1000x1000) [1] | 6,410.79 | 6,410.79 | CO-R17.S13-TE-150 | 3 | 3 | MH | HH | Each | MNH | TE | INSTALL-1 | CON | R17 | S13 | TE | TE |
| CO-R17.S13-TE-160 |  | Backfilling Works for Manholes of Telecom Network-[Road 17]-[SW-13] | 7d | 2025-07-26 A | 2025-07-27 A | CO-R17.S13-TE-150, CO-R16.S11-TE-160 | 100% | 2026-08-17 | 2026-08-24 | Skilled Labor/Surveyor [6.84 h]; Foreman [6.84 h]; Excavator [56 h]; Manhole Type 2 (2000x1000x1000) [0.2] | 641.28 | 641.28 | CO-R17.S13-TE-160 | 3 | 3 | MH | BF | Each | MNH | TE | (New)-2 | CON | R17 | S13 | TE | TE |
|  | MV | **Medium Voltage Network** |  | 2025-07-23 | 2026-07-13 |  |  |  |  |  |  |  |  |  |  |  |  |  |  |  |  |  |  |  |  |  |
|  | CW | **Cabling Works** |  | 2025-07-23 | 2025-07-26 |  |  |  |  |  |  |  |  |  |  |  |  |  |  |  |  |  |  |  |  |  |
| CO-R17.S13-MV-ML-310 |  | Trench Excavation and Bedding Works for Medium Voltage Network-[Road 17]-[SW-13] | 18d | 2025-07-23 A | 2025-07-25 A | ENG-SH-MV-A-110, CO-R17.S13-SD-170 SS+3d, CO-R17.S13-SD-170 FF+3d, CO-R17.S13-EW-110, CO-R17.S13-TE-130 SS+3d, CO-R17.S13-TE-130 FF+3d, CO-R16.S11-MV-ML-280, ENG-MS-MV-A-110, CO-R17.S14-SL-160 | 100% | 2026-09-15 | 2026-10-06 | Skilled Labor/Surveyor [17.1 h]; Foreman [17.1 h]; Excavator [144 h]; Excavation for Trench size 40cm wide and 80cm deep ( Maximum 1 cable 33kv) [250.78]; Excavation for Trench size 60cm wide and 80cm deep ( for Max two cables 33 kv) [14.04]; Excavation for Trench size 90cm wide and 80cm deep ( Maximum 3 cable 33kv) [64.2]; Excavation for Trench size 120cm wide and 80cm deep ( Maximum 4cable 33kv) [21.07]; Excavation for Trench size 150cm wide and 80cm deep ( Maximum 4cable 33kv) [81.25]; Duct bank for (2) 33 kv cables [8.03]; Duct bank for (4) 33 kv cables [57.18]; Duct bank for (6) 33 kv cables [25.08] | 29,490.84 | 29,490.84 | CO-R17.S13-MV-ML-310 | 3 | 3 | CW | Ex | LM | CW | MV | EXC | CON | R17 | S13 | MV | MV |
| CO-R17.S13-MV-ML-320 |  | Cable Laying Works for Medium Voltage Network-[Road 17]-[SW-13] | 18d | 2025-07-23 A | 2025-07-25 A | CO-R17.S13-MV-ML-310 SS+3d, CO-R17.S13-MV-ML-310 FF+3d, CO-R16.S11-MV-ML-290, PRO-R17-MV-DL-100 FF+3d | 100% | 2026-09-19 | 2026-10-10 | Labor/Helper [656.58 h]; Electrician [656.58 h]; Low Current Technician [656.58 h]; 33kv 3Cx400 mmï¿½ Al XLPE / LLDPE /PVC Cable [1184.7]; 33kv 3Cx400 mmï¿½ Al XLPE /LLDPE/PVC [4.01] | 161,653.32 | 161,653.32 | CO-R17.S13-MV-ML-320 | 3 | 3 | CW | CL | LM | CW | MV | LAY | CON | R17 | S13 | MV | MV |
| CO-R17.S13-MV-ML-330 |  | Trench Backfilling and Compaction Works for Medium Voltage Network-[Road 17]-[SW-13] | 18d | 2025-07-24 A | 2025-07-26 A | CO-R17.S13-MV-ML-320 SS+3d, CO-R17.S13-MV-ML-320 FF+3d, CO-R16.S11-MV-ML-300 | 100% | 2026-09-22 | 2026-10-13 | Skilled Labor/Surveyor [17.1 h]; Foreman [17.1 h]; Excavator [144 h]; Water Tank [36 h]; 33kv 3Cx400 mmï¿½ Al XLPE / LLDPE /PVC Cable [508.59]; 33kv 3Cx400 mmï¿½ Al XLPE /LLDPE/PVC [1] | 68,084.22 | 68,084.22 | CO-R17.S13-MV-ML-330 | 3 | 3 | CW | BF | LM | CW | MV | BACK | CON | R17 | S13 | MV | MV |
|  | SS | **RMU Works** |  | 2026-07-07 | 2026-07-13 |  |  |  |  |  |  |  |  |  |  |  |  |  |  |  |  |  |  |  |  |  |
| CO-R17.S13-MV-130 |  | Foundation Excavation Works for RMU of Medium Voltage Network-[Road 17]-[SW-13] | 6d | 2026-07-07 A | 2026-07-13 A | ENG-SH-MV-A-110, ENG-MS-MV-A-110, CO-R17.S13-EW-100, CO-R17.S13-EW-110 | 100% | 2025-04-05 | 2025-04-10 | Supply & installation of (33) kv MV Switch (RMU) for Normally-open Points (NOP) according to the Saudi Electric Company specification [0.1] | 8,195.76 | 8,195.76 | CO-R11.S08-MV-130 | 3 | 3 | RMU | Ex | Each | RMU | MV | EXC | CON | R17 | S13 | MV | MV |
| CO-R17.S13-MV-150 |  | Installation Works for RMU Concrete Foundations of Medium Voltage Network-[Road 17]-[SW-13] | 8d | 2026-07-07 A | 2026-07-13 A | CO-R17.S13-MV-130, CO-R10.S03-ES-MV-150, PRO-R17-MV-DL-120, CO-R10.S03-WE-MV-150 | 100% | 2026-08-22 | 2026-08-30 | Supply & installation of (33) kv MV Switch (RMU) for Normally-open Points (NOP) according to the Saudi Electric Company specification [0.25] | 20,488.37 | 20,488.37 | CO-R11.S08-MV-150 | 3 | 3 | RMU | RMUF | Each | RMU | MV | INSTALL | CON | R17 | S13 | MV | MV |
| CO-R17.S13-MV-170 |  | Installation Works for RMU of Medium Voltage Network-[Road 17]-[SW-13] | 5d | 2026-07-07 A | 2026-07-13 A | CO-R17.S13-MV-150, ENG-SH-MV-A-110, ENG-MS-MV-A-110, PRO-MV-LL-SH/DL-10, CO-R10.S03-ES-MV-170, PRO-R17-MV-LL-MSI-40, CO-R10.S03-WE-MV-170 | 100% | 2026-08-31 | 2026-09-05 | Supply & installation of (33) kv MV Switch (RMU) for Normally-open Points (NOP) according to the Saudi Electric Company specification [0.45] | 36,879.89 | 36,879.89 | CO-R11.S08-MV-170 | 3 | 3 | RMU | RMU | Each | RMU | MV | INS RMU | CON | R17 | S13 | MV | MV |
| CO-R17.S13-MV-SS-150 |  | Termination Works for RMU of Medium Voltage Network-[Road 17]-[SW-13] | 5d | 2026-07-07 A | 2026-07-13 A | CO-R17.S13-MV-170 | 100% | 2026-09-06 | 2026-09-10 | Supply & installation of (33) kv MV Switch (RMU) for Normally-open Points (NOP) according to the Saudi Electric Company specification [0.1] | 8,195.76 | 8,195.76 | CO-R11.S08-MV-SS-150 | 3 | 3 |  |  |  |  | MV | TER RMU | CON | R17 | S13 | MV | MV |
| CO-R17.S13-MV-SS-160 |  | Testing Works for RMU of Medium Voltage Network-[Road 17]-[SW-13] | 5d | 2026-07-07 A | 2026-07-13 A | CO-R17.S13-MV-SS-150 | 100% | 2026-09-12 | 2026-09-16 | Supply & installation of (33) kv MV Switch (RMU) for Normally-open Points (NOP) according to the Saudi Electric Company specification [0.1] | 8,195.76 | 8,195.76 | CO-R11.S08-MV-SS-160 | 3 | 3 |  |  |  |  | MV | BACK RM | CON | R17 | S13 | MV | MV |
|  | RD | **Road Works** |  | 2025-06-22 | 2026-09-19 |  |  |  |  |  |  |  |  |  |  |  |  |  |  |  |  |  |  |  |  |  |
|  | RD | **Pre-Bituminous Construction** |  | 2025-06-22 | 2025-09-14 |  |  |  |  |  |  |  |  |  |  |  |  |  |  |  |  |  |  |  |  |  |
| CO-R17.S13-RD-P-100 |  | Capping and Subgrade Layer for Road Works-[Road 17]-[SW-13] | 15d | 2025-06-22 A | 2025-07-05 A | ENG-SH-RD-A-100, CO-R17.S13-SD-130, CO-R17.S13-SW-130, ENG-MS-RD-A-10, CO-R17.S13-TE-130, CO-R17.S13-TE-160, CO-R17.S13-MV-ML-330 SS+3d, CO-R17.S13-MV-ML-330 FF+3d | 100% | 2026-09-30 | 2026-10-17 | Labor/Helper [273.57 h]; Skilled Labor/Surveyor [136.79 h]; Loader [120 h]; Grader [120 h]; Road Roller [120 h]; Water Tank [120 h]; 300mm capping layer underneath subgrade , CBR?15% [2141.69]; 300mm thick Subgrade, including subgrade preparation, CBR?25% [2141.69] | 169,711.22 | 169,711.22 | CO-R17.S13-RD-P-100 | 3 | 3 | AB | SG | Sq.m | BS | RD |  | CON | R17 | S13 | RD | RD |
| CO-R17.S13-RD-P-110 |  | Aggregate Base Course Layer for Road Works-[Road 17]-[SW-13] | 12d | 2025-09-13 A | 2025-09-14 A | CO-R17.S13-RD-P-100 SS+3d, CO-R17.S13-RD-P-100 FF+3d, CO-R17.S13-SD-170 SS+3d, CO-R17.S13-SD-170 FF+3d, CO-R16.S11-RD-P-110 | 100% | 2026-11-08 | 2026-11-21 | Labor/Helper [196.09 h]; Skilled Labor/Surveyor [98.05 h]; Foreman [98.05 h]; Loader [144 h]; Grader [144 h]; Road Roller [144 h]; Aggregate base course 200mm thick after compaction in two layers(Grading 1); CBR?80%; including watering, compaction and testing [1427.46] | 118,171.68 | 118,171.68 | CO-R17.S13-RD-P-110 | 3 | 3 | AB | BA | Sq.m | BS | RD |  | CON | R17 | S13 | RD | RD |
|  | LS | **Pavement Works** |  | 2026-08-25 | 2026-09-19 |  |  |  |  |  |  |  |  |  |  |  |  |  |  |  |  |  |  |  |  |  |
| CO-R17.S13-RD-P-120 |  | Fixing of Curbstone for Sidewalks Pavement-[Road 17]-[SW-13] | 12d | 2026-08-25 A | 2026-08-31 A | CO-R16.S11-RD-P-120, CO-R17.S13-RD-P-110 SS+3d, CO-R17.S13-RD-P-110 FF+3d | 100% | 2026-11-11 | 2026-11-24 | Labor/Helper [196.09 h]; Block Mason [588.28 h]; Precast Concrete Kerb, Type K1 [790.47]; Precast Concrete Kerb, Type L1 [1567.9] | 96,811.25 | 96,811.25 | CO-R17.S13-RD-P-120 | 3 | 3 | LS | CR | LM | LAND | RD |  | CON | R17 | S13 | RD | RD |
| CO-R17.S13-RD-P-130 |  | Fixing of Interlock Tiles for Sidewalks Pavement-[Road 17]-[SW-13] | 10d | 2026-09-12 A | 2026-09-19 A | CO-R17.S13-RD-P-120 SS+3d, CO-R17.S13-RD-P-120 FF+3d, CO-R16.S11-RD-P-130, CO-R17-SW-TF-100 | 100% | 2026-11-19 | 2026-11-30 | Labor/Helper [196.09 h]; Block Mason [588.28 h]; Interlocking block pavers for sidewalk/footpath 60mm thick on and including 30mm Sand Bedding, 200mm Aggregate subbase, all in accordance with authority standards and complete as per specifications [1410.41]; Extraover for Pedestrian ramps [3.01] | 68,896.04 | 68,896.04 | CO-R17.S13-RD-P-130 | 3 | 3 | LS | IL | Sq.m | LAND | RD |  | CON | R17 | S13 | RD | RD |
|  | SW_16 | **SW_14** |  | 2025-03-04 | 2026-12-28 |  |  |  |  |  |  |  |  |  |  |  |  |  |  |  |  |  |  |  |  |  |
|  | EW | **Earthworks** |  | 2025-03-04 | 2025-03-27 |  |  |  |  |  |  |  |  |  |  |  |  |  |  |  |  |  |  |  |  |  |
|  | EW | **Earthworks** |  | 2025-03-04 | 2025-03-27 |  |  |  |  |  |  |  |  |  |  |  |  |  |  |  |  |  |  |  |  |  |
| CO-R17.S14-EW-100 |  | Roadway Excavation Works Upto Design Level for Earthworks-[Road 17]-[SW-14] | 10d | 2025-03-04 A | 2025-03-15 A | ENG-MS-RD-A-10, ENG-SH-RD-A-100, CO-R17.S13-EW-100 | 100% | 2025-03-17 | 2025-03-27 | Labor/Helper [218.86 h]; Skilled Labor/Surveyor [27.36 h]; Foreman [27.36 h]; Dump Truck [192 h]; Water Tank [192 h]; Dozer [192 h]; Roadway Excavation for cuttings; on any type of material for all depths including trimming and Preparation of excavated surfaces and disposal. [10085.5] | 64,882.92 | 64,882.92 | CO-R17.S14-EW-100 | 4 | 4 | EW | Ex | Cub.m | EW | EW |  | CON | R17 | S14 | EW | EW |
| CO-R17.S14-EW-110 |  | Embankments Works Upto Design Level for Earthworks-[Road 17]-[SW-14] | 12d | 2025-03-16 A | 2025-03-27 A | ENG-MS-RD-A-10, ENG-SH-RD-A-100, CO-R17.S14-EW-100 | 100% | 2025-03-29 | 2025-04-15 | Labor/Helper [683.93 h]; Skilled Labor/Surveyor [85.49 h]; Foreman [85.49 h]; Dump Truck [600 h]; Water Tank [600 h]; Dozer [600 h]; Embankments to the ROW, with suitable material other than top soil or rock according to specifications [16978] | 140,430.73 | 140,430.73 | CO-R17.S14-EW-110 | 4 | 4 | EW | BF | Cub.m | EW | EW |  | CON | R17 | S14 | EW | EW |

| ID | WBS | Activity | Duration | Start | Finish | Predecessors | Complete | Planned start | Planned finish | Resources | Cost | Actual cost | Activity ID N | Seq | New Seq | 02- Network-WBS | 03- Activity | 04-UOM | 05-Discipline | 01- Network | 07-Weightage System | 08 Stage | 09 Roads | 10 side Walk | Discipline | New Discipline |
| --- | --- | --- | --- | --- | --- | --- | --- | --- | --- | --- | --- | --- | --- | --- | --- | --- | --- | --- | --- | --- | --- | --- | --- | --- | --- | --- |
|  | SW | **Sewage Network** |  | 2025-05-23 | 2025-07-05 |  |  |  |  |  |  |  |  |  |  |  |  |  |  |  |  |  |  |  |  |  |
|  | ML | **Main Line Sections** |  | 2025-05-23 | 2025-07-05 |  |  |  |  |  |  |  |  |  |  |  |  |  |  |  |  |  |  |  |  |  |
| CO-R17.S14-SW-100 |  | Trench Excavation and Bedding Works for Main Lines of Sewage Network-[Road 17]-[SW-14] | 12d | 2025-05-23 A | 2025-05-25 A | CO-R17.S14-EW-110, ENG-MS-SW-ML-A-110, ENG-SH-SW-ML-A-110, CO-R17.S13-SW-100 | 100% | 2025-04-23 | 2025-05-06 | Labor/Helper [109.43 h]; Foreman [109.43 h]; Excavator [96 h]; Nominal bore : 160mm; Depth : 0.0m - 1.5m [6.02]; Nominal bore : 160mm; Depth : 1.5m - 2.5m [24.08]; Nominal bore : 200mm; Depth : 0.0m - 1.5m [3.01]; Nominal bore : 200mm; Depth : 1.5m - 2.5m [7.02]; Nominal bore : 200mm; Depth : 2.5m - 3.5m [16.05]; Nominal bore : 200mm; Depth : 3.5m - 4.5m [11.03]; Nominal bore : 200mm; Depth : 4.5m -5.5m [6.02]; Nominal bore : 200mm; Depth : 5.5m - 6.5m [8.03] | 21,910.84 | 21,910.84 | CO-R17.S14-SW-100 | 4 | 4 | ML | Ex | LM | ML | SW | EX | CON | R17 | S14 | SW | SW |
| CO-R17.S14-SW-120 |  | Pipes Laying Works for Main Lines of Sewage Network-[Road 17]-[SW-14] | 12d | 2025-05-26 A | 2025-06-12 A | PRO-R17-SW-DL-100 FF+3d, CO-R17.S14-SW-100 | 100% | 2025-05-07 | 2025-05-20 | Labor/Helper [218.86 h]; Skilled Labor/Surveyor [11.4 h]; Foreman [11.4 h]; Plumber [109.43 h]; Excavator [96 h]; Nominal bore : 160mm; Depth : 0.0m - 1.5m [16.05]; Nominal bore : 160mm; Depth : 1.5m - 2.5m [72.23]; Nominal bore : 200mm; Depth : 0.0m - 1.5m [10.03]; Nominal bore : 200mm; Depth : 1.5m - 2.5m [20.06]; Nominal bore : 200mm; Depth : 2.5m - 3.5m [48.15]; Nominal bore : 200mm; Depth : 3.5m - 4.5m [35.11]; Nominal bore : 200mm; Depth : 4.5m -5.5m [18.06]; Nominal bore : 200mm; Depth : 5.5m - 6.5m [24.08] | 66,008.22 | 66,008.22 | CO-R17.S14-SW-120 | 4 | 4 | ML | PL | LM | ML | SW | PIPE | CON | R17 | S14 | SW | SW |
| CO-R17.S14-SW-130 |  | Trench Backfilling and Compaction Works for Main Lines of Sewage Network-[Road 17]-[SW-14] | 10d | 2025-06-22 A | 2025-07-05 A | CO-R17.S14-SW-120, CO-R17.S14-SW-210 FF, CO-R17.S13-SW-130 | 100% | 2025-06-15 | 2025-06-25 | Skilled Labor/Surveyor [54.44 h]; Foreman [54.44 h]; Excavator [96 h]; Nominal bore : 160mm; Depth : 0.0m - 1.5m [3.01]; Nominal bore : 160mm; Depth : 1.5m - 2.5m [13.04]; Nominal bore : 200mm; Depth : 0.0m - 1.5m [1]; Nominal bore : 200mm; Depth : 1.5m - 2.5m [3.01]; Nominal bore : 200mm; Depth : 2.5m - 3.5m [8.03]; Nominal bore : 200mm; Depth : 3.5m - 4.5m [6.02]; Nominal bore : 200mm; Depth : 4.5m -5.5m [3.01]; Nominal bore : 200mm; Depth : 5.5m - 6.5m [4.01] | 11,091.74 | 11,091.74 | CO-R17.S14-SW-130 | 4 | 4 | ML | BF | LM | ML | SW | BACK | CON | R17 | S14 | SW | SW |
|  | 1 | **Manholes** |  | 2025-06-13 | 2025-06-28 |  |  |  |  |  |  |  |  |  |  |  |  |  |  |  |  |  |  |  |  |  |
| CO-R17.S14-SW-160 |  | Excavation Works for Main Line Manholes of Sewage Network-[Road 17]-[SW-14] | 1d | 2025-06-13 A | 2025-06-13 A | CO-R17.S14-SW-120 SS | 100% | 2025-05-07 | 2025-05-07 | Labor/Helper [18.24 h]; Skilled Labor/Surveyor [9.12 h]; Excavator [16 h]; Depth: not exceeding 1.5m [0.15]; Depth: 1.5 - 2.5m [0.3]; Depth: 2.5 - 3.5m [0.15] | 4,648.28 | 4,648.28 | CO-R17.S14-SW-160 | 4 | 4 |  |  |  |  | SW | EX | CON | R17 | S14 | SW | SW |
| CO-R17.S14-SW-170 |  | Installation RC Footing Works for Main Line Manholes of Sewage Network-[Road 17]-[SW-14] | 2d | 2025-06-14 A | 2025-06-15 A | CO-R17.S14-SW-160, PRO-R17-SW-DL-110 FF+3d | 100% | 2025-05-08 | 2025-05-10 | Cons. Carpenter [72.95 h]; Steel Fixer [72.95 h]; Depth: not exceeding 1.5m [0.1]; Depth: 1.5 - 2.5m [0.2]; Depth: 2.5 - 3.5m [0.1] | 3,099.19 | 3,099.19 | CO-R17.S14-SW-170 | 4 | 4 |  |  |  |  | SW | RC F | CON | R17 | S14 | SW | SW |
| CO-R17.S14-SW-180 |  | Install Grp Liner Wall Works for Main Line Manholes of Sewage Network-[Road 17]-[SW-14] | 4d | 2025-06-16 A | 2025-06-20 A | CO-R17.S14-SW-170 | 100% | 2025-05-11 | 2025-05-14 | Labor/Helper [72.95 h]; Plumber [72.95 h]; Depth: not exceeding 1.5m [0.4]; Depth: 1.5 - 2.5m [1]; Depth: 2.5 - 3.5m [0.4] | 13,884.59 | 13,884.59 | CO-R17.S14-SW-180 | 4 | 4 |  |  |  |  | SW | LP | CON | R17 | S14 | SW | SW |
| CO-R17.S14-SW-190 |  | Pouring Grp Liner Wall Works for Main Line Manholes of Sewage Network-[Road 17]-[SW-14] | 1d | 2025-06-21 A | 2025-06-21 A | CO-R17.S14-SW-180 | 100% | 2025-05-15 | 2025-05-15 | Cons. Carpenter [36.48 h]; Steel Fixer [36.48 h]; Depth: not exceeding 1.5m [0.05]; Depth: 1.5 - 2.5m [0.1]; Depth: 2.5 - 3.5m [0.05] | 1,549.09 | 1,549.09 | CO-R17.S14-SW-190 | 4 | 4 |  |  |  |  | SW | (New) | CON | R17 | S14 | SW | SW |
| CO-R17.S14-SW-200 |  | Backfilling Works for Main Line Manholes of Sewage Network-[Road 17]-[SW-14] | 4d | 2025-06-22 A | 2025-06-28 A | CO-R17.S14-SW-190 | 100% | 2025-05-17 | 2025-05-20 | Labor/Helper [72.95 h]; Skilled Labor/Surveyor [36.48 h]; Excavator [64 h]; Depth: not exceeding 1.5m [0.15]; Depth: 1.5 - 2.5m [0.3]; Depth: 2.5 - 3.5m [0.15] | 4,648.28 | 4,648.28 | CO-R17.S14-SW-200 | 4 | 4 |  |  |  |  | SW | BACK | CON | R17 | S14 | SW | SW |
| CO-R17.S14-SW-210 |  | Testing Works for Main Line Manholes of Sewage Network-[Road 17]-[SW-14] | 1d | 2025-06-22 A | 2025-06-28 A | CO-R17.S14-SW-200 | 100% | 2025-05-21 | 2025-05-21 | Labor/Helper [18.24 h]; Plumber [18.24 h]; Depth: not exceeding 1.5m [0.05]; Depth: 1.5 - 2.5m [0.1]; Depth: 2.5 - 3.5m [0.05] | 1,549.09 | 1,549.09 | CO-R17.S14-SW-210 | 4 | 4 |  |  |  |  | SW | T&COV | CON | R17 | S14 | SW | SW |
|  | SD | **Storm Drainage Network** |  | 2025-06-23 | 2026-07-13 |  |  |  |  |  |  |  |  |  |  |  |  |  |  |  |  |  |  |  |  |  |
|  | ML | **Main Line Sections** |  | 2025-06-23 | 2025-07-10 |  |  |  |  |  |  |  |  |  |  |  |  |  |  |  |  |  |  |  |  |  |
| CO-R17.S14-SD-100 |  | Trench Excavation and Bedding Works for Main Lines of Storm Drainage Network-[Road 17]-[SW-14] | 10d | 2025-06-23 A | 2025-07-06 A | CO-R17.S14-EW-110, CO-R17.S14-EW-100, CO-R17.S14-SW-130 SS+3d, CO-R17.S14-SW-130 FF+3d | 100% | 2025-06-18 | 2025-06-29 | Skilled Labor/Surveyor [170.13 h]; Foreman [170.13 h]; Excavator [112 h]; Pipe with diameter 400mm ; depth: 0.0m - 1.5m [42.13]; Pipe with diameter 400mm ; depth: 1.51m - 2.5m [64.2]; Pipe with diameter 500mm ; depth: 1.51m - 2.5m [109.34]; Pipe with diameter 600mm ; depth: 1.51m - 2.5m [13.04]; Pipe with diameter 700mm ; depth: 1.51m - 2.5m [27.08]; Pipe with diameter 800mm ; depth: 1.51m - 2.5m [24.08]; Pipe with diameter 900mm ; depth: 1.51m - 2.5m [7.02] | 103,264.92 | 103,264.92 | CO-R17.S14-SD-100 | 4 | 4 | ML | Ex | LM | ML | SD | EX | CON | R17 | S14 | SD | SD |
| CO-R17.S14-SD-120 |  | Pipes Laying Works for Main Lines of Storm Drainage Network-[Road 17]-[SW-14] | 20d | 2025-07-07 A | 2025-07-10 A | PRO-R17-SD-DL-120 FF+3d, CO-R17.S14-SD-100 | 100% | 2025-06-30 | 2025-07-22 | Labor/Helper [357.28 h]; Skilled Labor/Surveyor [17.86 h]; Foreman [17.86 h]; Plumber [178.64 h]; Excavator [160 h]; Pipe with diameter 400mm ; depth: 0.0m - 1.5m [126.39]; Pipe with diameter 400mm ; depth: 1.51m - 2.5m [191.6]; Pipe with diameter 500mm ; depth: 1.51m - 2.5m [326.02]; Pipe with diameter 600mm ; depth: 1.51m - 2.5m [37.12]; Pipe with diameter 700mm ; depth: 1.51m - 2.5m [81.25]; Pipe with diameter 800mm ; depth: 1.51m - 2.5m [71.22]; Pipe with diameter 900mm ; depth: 1.51m - 2.5m [20.06] | 306,795.64 | 306,795.64 | CO-R17.S14-SD-120 | 4 | 4 | ML | PL | LM | ML | SD | PIPE | CON | R17 | S14 | SD | SD |
| CO-R17.S14-SD-130 |  | Trench Backfilling and Compaction Works for Main Lines of Storm Drainage Network-[Road 17]-[SW-14] | 20d | 2025-07-08 A | 2025-07-10 A | CO-R17.S14-SD-120 SS+3d, CO-R17.S14-SD-120 FF+3d, CO-R16.S12-SD-130, CO-R17.S14-SD-120, CO-R17.S14-SD-220 FF | 100% | 2026-03-15 | 2026-04-09 | Skilled Labor/Surveyor [34.03 h]; Foreman [34.03 h]; Excavator [160 h]; Pipe with diameter 400mm ; depth: 0.0m - 1.5m [21.07]; Pipe with diameter 400mm ; depth: 1.51m - 2.5m [31.1]; Pipe with diameter 500mm ; depth: 1.51m - 2.5m [54.17]; Pipe with diameter 600mm ; depth: 1.51m - 2.5m [6.02]; Pipe with diameter 700mm ; depth: 1.51m - 2.5m [14.04]; Pipe with diameter 800mm ; depth: 1.51m - 2.5m [11.03]; Pipe with diameter 900mm ; depth: 1.51m - 2.5m [3.01] | 50,334.58 | 50,334.58 | CO-R17.S14-SD-130 | 4 | 4 | ML | BF | LM | ML | SD | BACK | CON | R17 | S14 | SD | SD |
|  | MH | **Manholes** |  | 2025-07-08 | 2026-07-13 |  |  |  |  |  |  |  |  |  |  |  |  |  |  |  |  |  |  |  |  |  |
| CO-R17.S14-SD-180 |  | Trench Excavation and Bedding Works for Manholes of Storm Drainage Network-[Road 17]-[SW-14] | 1d | 2025-07-08 A | 2025-07-11 A | CO-R17.S14-SD-120 SS, PRO-SD-1DL-100 | 100% | 2025-06-30 | 2025-06-30 | Labor/Helper [27.36 h]; Skilled Labor/Surveyor [13.68 h]; Excavator [24 h]; MH ; depth: 0.0m - 1.5m [0.15]; MH ; depth: 1.51m - 2.5m [0.3]; MH ; depth: 1.51m - 2.5m [0.15] | 8,686.93 | 8,686.93 | CO-R17.S14-SD-180 | 4 | 4 |  |  |  |  | SD | EX | CON | R17 | S14 | SD | SD |
| CO-R17.S14-SD-190 |  | Install RC Footing Works for Manholes of Storm Drainage Network-[Road 17]-[SW-14] | 1d | 2025-07-12 A | 2025-07-12 A | CO-R17.S14-SD-180 | 100% | 2025-07-01 | 2025-07-01 | Cons. Carpenter [54.71 h]; Steel Fixer [54.71 h]; MH ; depth: 0.0m - 1.5m [0.05]; MH ; depth: 1.51m - 2.5m [0.1]; MH ; depth: 1.51m - 2.5m [0.05] | 2,895.98 | 2,895.98 | CO-R17.S14-SD-190 | 4 | 4 |  |  |  |  | SD | RC F | CON | R17 | S14 | SD | SD |
| CO-R17.S14-SD-200 |  | Install RC Wall Rings & Slab Works for Manholes of Storm Drainage Network-[Road 17]-[SW-14] | 4d | 2025-07-13 A | 2025-07-14 A | CO-R17.S14-SD-190 | 100% | 2025-07-02 | 2025-07-06 | Cons. Carpenter [218.86 h]; Steel Fixer [218.86 h]; MH ; depth: 0.0m - 1.5m [0.45]; MH ; depth: 1.51m - 2.5m [1]; MH ; depth: 1.51m - 2.5m [0.45] | 27,802.88 | 27,802.88 | CO-R17.S14-SD-200 | 4 | 4 |  |  |  |  | SD | RC W | CON | R17 | S14 | SD | SD |
| CO-R17.S14-SD-220 |  | Backfilling Works for Manholes of Storm Drainage Network-[Road 17]-[SW-14] | 7d | 2025-07-15 A | 2025-07-15 A | CO-R17.S14-SD-210 | 100% | 2025-07-08 | 2025-07-15 | Labor/Helper [191.5 h]; Skilled Labor/Surveyor [95.75 h]; Excavator [168 h]; MH ; depth: 0.0m - 1.5m [0.2]; MH ; depth: 1.51m - 2.5m [0.4]; MH ; depth: 1.51m - 2.5m [0.2] | 11,582.92 | 11,582.92 | CO-R17.S14-SD-220 | 4 | 4 |  |  |  |  | SD | BACK | CON | R17 | S14 | SD | SD |
| CO-R17.S14-SD-210 |  | Testing Works for Manholes of Storm Drainage Network-[Road 17]-[SW-14] | 1d | 2026-06-04 A | 2026-07-13 A | CO-R17.S14-SD-200 | 100% | 2025-07-07 | 2025-07-07 | Labor/Helper [93.17 h]; Plumber [30.36 h]; MH ; depth: 0.0m - 1.5m [0.1]; MH ; depth: 1.51m - 2.5m [0.2]; MH ; depth: 1.51m - 2.5m [0.1] | 5,790.95 | 5,790.95 | CO-R17.S14-SD-210 | 4 | 4 |  |  |  |  | SD | T&COV | CON | R17 | S14 | SD | SD |
|  | CB | **Catch Basin Sections** |  | 2025-07-16 | 2026-07-13 |  |  |  |  |  |  |  |  |  |  |  |  |  |  |  |  |  |  |  |  |  |
| CO-R17.S14-SD-140 |  | Trench Excavation and Bedding Works for Catch Basins of Storm Drainage Network-[Road 17]-[SW-14] | 6d | 2025-07-16 A | 2025-07-16 A | CO-R17.S14-EW-110, CO-R17.S14-SD-220 | 100% | 2025-07-16 | 2025-07-22 | Skilled Labor/Surveyor [5.7 h]; Foreman [5.7 h]; Excavator [48 h]; Pipe with diameter 300mm ; depth: 0 - 1.5m [54.17]; Pipe with diameter 400mm ; depth: 0 - 1.5m [3.01] | 13,547.61 | 13,547.61 | CO-R17.S14-SD-140 | 4 | 4 | CB | Ex | Each | CB | SD | EX | CON | R17 | S14 | SD | SD |
| CO-R17.S14-SD-150 |  | Installation and Pipes Laying Connection Works for Catch Basins of Storm Drainage Network-[Road 17]-[SW-14] | 7d | 2025-07-17 A | 2025-07-17 A | CO-R17.S14-SD-140, PRO-R17-SD-DL-130 FF+3d, CO-R17.S13-SD-150 | 100% | 2025-07-23 | 2025-07-30 | Labor/Helper [255.34 h]; Skilled Labor/Surveyor [13.68 h]; Foreman [13.68 h]; Excavator [112 h]; Pipe with diameter 300mm ; depth: 0 - 1.5m [160.5]; Pipe with diameter 400mm ; depth: 0 - 1.5m [10.03] | 40,492.72 | 40,492.72 | CO-R17.S14-SD-150 | 4 | 4 | CB | CB | Each | CB | SD | INSTALL | CON | R17 | S14 | SD | SD |
| CO-R17.S14-SD-170 |  | Trench Backfilling and Compaction Works for Catch Basins of Storm Drainage Network-[Road 17]-[SW-14] | 7d | 2025-07-18 A | 2025-07-18 A | CO-R17.S14-SD-160 | 100% | 2025-08-05 | 2025-08-12 | Skilled Labor/Surveyor [6.84 h]; Foreman [6.84 h]; Excavator [56 h]; Pipe with diameter 300mm ; depth: 0 - 1.5m [71.22]; Pipe with diameter 400mm ; depth: 0 - 1.5m [4.01] | 17,830.32 | 17,830.32 | CO-R17.S14-SD-170 | 4 | 4 | CB | BF | Each | CB | SD | BACK | CON | R17 | S14 | SD | SD |
| CO-R17.S14-SD-160 |  | Testing Works for Catch Basins of Storm Drainage Network-[Road 17]-[SW-14] | 4d | 2026-06-04 A | 2026-07-13 A | CO-R17.S14-SD-150, CO-R17.S14-SD-120, PRO-R17-SD-DL-110 FF+3d | 100% | 2025-07-31 | 2025-08-04 | Labor/Helper [93.17 h]; Skilled Labor/Surveyor [18.23 h]; Foreman [19.63 h]; Plumber [36.48 h]; Excavator [32 h]; Pipe with diameter 300mm ; depth: 0 - 1.5m [35.11]; Pipe with diameter 400mm ; depth: 0 - 1.5m [3.01] | 9,113.77 | 9,113.77 | CO-R17.S14-SD-160 | 4 | 4 | CB | PL | Each | CB | SD | TEST | CON | R17 | S14 | SD | SD |

| ID | WBS | Activity | Duration | Start | Finish | Predecessors | Complete | Planned start | Planned finish | Total float | Free float | Resources | Cost | Actual cost | Activity ID N | Seq | New Seq | 02- Network-WBS | 03- Activity | 04-UOM | 05-Discipline | 01- Network | 07-Weightage System | 08 Stage | 09 Roads | 10 side Walk | Discipline | New Discipline |
| --- | --- | --- | --- | --- | --- | --- | --- | --- | --- | --- | --- | --- | --- | --- | --- | --- | --- | --- | --- | --- | --- | --- | --- | --- | --- | --- | --- | --- |
|  | SL | **Street Lighting Network** |  | 2025-07-08 | 2026-12-21 |  |  |  |  |  |  |  |  |  |  |  |  |  |  |  |  |  |  |  |  |  |  |  |
|  | LP | **Lighting Poles Works** |  | 2025-07-08 | 2026-12-14 |  |  |  |  |  |  |  |  |  |  |  |  |  |  |  |  |  |  |  |  |  |  |  |
| CO-R17.S14-SL-100 |  | Foundation Excavation Works for Lighting Poles of Street Lighting Network-[Road 17]-[SW-14] | 12d | 2025-07-08 A | 2025-07-11 A | CO-R17.S13-IR-100 SS+3d, CO-R17.S13-IR-130, CO-R17.S14-EW-100, CO-R17.S14-EW-110, ENG-MS-SL-A-110, ENG-SH-SL-A-110, PRO-SL-1DL-110 | 100% | 2025-09-15 | 2025-09-29 |  |  | Lighting poles with one arm, including the power distribution box, screws, cables, 12 meters in height. [3.01] | 5,849.15 | 5,849.15 | CO-R11.S07-SL-100 | 4 | 4 | LP | Ex | Each | POL | SL | EX | CON | R17 | S14 | SL | SL |
| CO-R17.S14-SL-110 |  | Installation Works for Lighting Poles Foundation of Street Lighting Network-[Road 17]-[SW-14] | 12d | 2025-07-12 A | 2025-07-14 A | CO-R17.S14-SL-100, PRO-R17-SL-DL-110 FF+3d | 100% | 2025-09-30 | 2025-10-13 |  |  | Reinforced concrete foundation, for 12m high lighting columns With Drawpits [64.2] | 23,851.02 | 23,851.02 | CO-R11.S07-SL-110 | 4 | 4 | LP | LPF | Each | POL | SL | INSTALL | CON | R17 | S14 | SL | SL |
| CO-R17.S14-SL-120 |  | Installation Works for Lighting Poles of Street Lighting Network-[Road 17]-[SW-14] | 17.5d | 2025-09-11 A | 2025-09-11 A | CO-R17.S14-SL-110, CO-R17.S14-SL-160, PRO-R17-SL-DL-120 FF+3d | 100% | 2025-11-18 | 2025-12-08 |  |  | Lighting poles with one arm, including the power distribution box, screws, cables, 12 meters in height. [35.11] | 68,243.52 | 68,243.52 | CO-R11.S07-SL-120 | 4 | 4 | LP | LP | Each | POL | SL | POLES | CON | R17 | S14 | SL | SL |
| CO-R17.S14-SL-210 |  | Backfilling Works for Lighting Poles of Street Lighting Network-[Road 17]-[SW-14] | 12d | 2025-09-11 A | 2025-09-11 A | CO-R17.S14-SL-120 SS, CO-R17.S14-SL-120 FF, CO-R18.S16-SL-210 | 100% | 2025-11-24 | 2025-12-08 |  |  | Lighting poles with one arm, including the power distribution box, screws, cables, 12 meters in height. [13.04] | 25,348.03 | 25,348.03 | CO-R11.S07-SL-210 | 4 | 4 |  |  |  |  | SL | BACK | CON | R17 | S14 | SL | SL |
| CO-R17.S14-SL-130 |  | Installation Works for Lighting Fixtures With Drop Wire of Street Lighting Network-[Road 17]-[SW-14] | 18d | 2026-11-24 | 2026-12-14 | CO-R17.S14-SL-120 SS+5d, CO-R17.S14-SL-120 FF+5d, CO-R17.S14-SL-200 FF, PRO-R17-SL-DL-140 FF+3d |  |  |  | -87d | 76d | Street Lighting( LED) Luminaire,(Type C) complete with control gear and lamp, ?.17000 Lumen [64.2] | 39,268.36 |  | CO-R11.S07-SL-130 | 4 | 4 | LP | LPA | Each | POL | SL | INSTALL | CON | R17 | S14 | SL | SL |
| CO-R17.S14-SL-200 |  | Testing Works for Lighting Poles of Street Lighting Network-[Road 17]-[SW-14] | 5d | 2026-11-24 | 2026-11-29 | CO-R17.S14-SL-210, CO-R17.S14-SL-120 |  |  |  | -74d | 13d | Lighting poles with one arm, including the power distribution box, screws, cables, 12 meters in height. [13.04] | 25,348.03 |  | CO-R11.S07-SL-200 | 4 | 4 |  |  |  |  | SL | TESTING | CON | R17 | S14 | SL | SL |
|  | CW | **Cabling Works** |  | 2025-07-15 | 2025-07-20 |  |  |  |  |  |  |  |  |  |  |  |  |  |  |  |  |  |  |  |  |  |  |  |
| CO-R17.S14-SL-140 |  | Trench Excavation and Bedding Works for Street Lighting Network-[Road 17]-[SW-14] | 10d | 2025-07-15 A | 2025-07-16 A | CO-R17.S14-SL-110 | 100% | 2025-10-14 | 2025-10-25 |  |  |  |  |  | CO-R11.S07-SL-140 | 4 | 4 | CW | Ex | LM | CB | SL | EXC | CON | R17 | S14 | SL | SL |
| CO-R17.S14-SL-150 |  | Cable Laying Works for Street Lighting Network-[Road 17]-[SW-14] | 10d | 2025-07-17 A | 2025-07-18 A | CO-R17.S14-SL-140, PRO-R17-SL-DL-100 FF+3d | 100% | 2025-10-26 | 2025-11-05 |  |  | Supply, installation , test and operation of cables, Copper, (4Cx25mmï¿½,Cu/XLPE/SWA/PVC +1x16mmï¿½ PVC/PVC) [2421.56] | 115,973.15 | 115,973.15 | CO-R11.S07-SL-150 | 4 | 4 | CW | CL | LM | CB | SL | LAYING | CON | R17 | S14 | SL | SL |
| CO-R17.S14-SL-160 |  | Trench Backfilling and Compaction Works for Street Lighting Network-[Road 17]-[SW-14] | 10d | 2025-07-19 A | 2025-07-20 A | CO-R17.S14-SL-150 | 100% | 2025-11-06 | 2025-11-17 |  |  | Supply, installation , test and operation of cables, Copper, (4Cx25mmï¿½,Cu/XLPE/SWA/PVC +1x16mmï¿½ PVC/PVC) [185.58] | 8,888.1 | 8,888.1 | CO-R11.S07-SL-160 | 4 | 4 | CW | BF | LM | CB | SL | BACK | CON | R17 | S14 | SL | SL |
|  | DPB | **Distrubution Panel Boards** |  | 2026-11-24 | 2026-12-21 |  |  |  |  |  |  |  |  |  |  |  |  |  |  |  |  |  |  |  |  |  |  |  |
| CO-R17.S14-SL-170 |  | Foundation Excavation Works For Panel Boards of Street Lighting Network-[Road 17]-[SW-14] | 18d | 2026-11-24 | 2026-12-14 | CO-R17.S14-EW-110, ENG-MS-SL-A-110, ENG-SH-SL-A-110 |  |  |  | -71d | 0d |  |  |  | CO-R11.S07-SL-170 | 4 | 4 | DB | Ex | Each | DS | SL | EXC | CON | R17 | S14 | SL | SL |
| CO-R17.S14-SL-180 |  | Installation Works for Panel Board Concrete Foundations of Street Lighting Network-[Road 17]-[SW-14] | 18d | 2026-11-28 | 2026-12-17 | CO-R17.S14-SL-170 SS+3d, CO-R17.S14-SL-170 FF+3d |  |  |  | -71d | 0d |  |  |  | CO-R11.S07-SL-180 | 4 | 4 | DB | PBF | Each | DS | SL | INSTALL | CON | R17 | S14 | SL | SL |
| CO-R17.S14-SL-220 |  | A wall of concrete blocks to install the KWH meter of Street Lighting Network-[Road 17]-[SW-14] | 18d | 2026-11-28 | 2026-12-17 | CO-R17.S14-SL-180 SS, CO-R17.S14-SL-180 FF |  |  |  | -68d | 123d | Road crossing ducts, 4 way (4 x 100mm PVC) [139.44]; Drawpit with medium duty steel cover, size 900x900x1200mm, Type 4 [8.03] | 38,740.43 |  | CO-R11.S07-SL-220 | 4 | 4 | DB |  | Each | DS | SL | wall | CON | R17 | S14 | SL | SL |
| CO-R17.S14-SL-190 |  | Installation Works for Lighting Panel Boards of Street Lighting Network-[Road 17]-[SW-14] | 18d | 2026-12-01 | 2026-12-21 | CO-R17.S14-SL-180 SS+3d, CO-R17.S14-SL-180 FF+3d |  |  |  | -71d | 120d |  |  |  | CO-R11.S07-SL-190 | 4 | 4 | DB | PB | Each | DS | SL | INST BO | CON | R17 | S14 | SL | SL |
|  | PW | **Potable Water Network** |  | 2025-07-11 | 2026-12-28 |  |  |  |  |  |  |  |  |  |  |  |  |  |  |  |  |  |  |  |  |  |  |  |
|  | ML | **Main Line Sections** |  | 2025-07-11 | 2025-07-17 |  |  |  |  |  |  |  |  |  |  |  |  |  |  |  |  |  |  |  |  |  |  |  |
| CO-R17.S14-PW-100 |  | Trench Excavation and Bedding Works for Main Lines of Potable Water Network-[Road 17]-[SW-14] | 6d | 2025-07-11 A | 2025-07-12 A | CO-R17.S14-EW-110, CO-R17.S14-EW-100, CO-R17.S14-SW-130, CO-R17.S14-SD-130 | 100% | 2026-04-11 | 2026-04-16 |  |  | Skilled Labor/Surveyor [5.7 h]; Foreman [5.7 h]; Excavator [48 h]; Pipe with diameter 200mm; in depth 0.0m - 1.5m [177.55] | 26,361.01 | 26,361.01 | CO-R17.S14-PW-100 | 4 | 4 | ML | Ex | LM | ML | PW | EX | CON | R17 | S14 | PW | PW |
| CO-R17.S14-PW-110 |  | Pipes Laying and accessories for Main Lines of Potable Water Network-[Road 17]-[SW-14] | 5.75d | 2025-07-13 A | 2025-07-16 A | CO-R17.S14-PW-100, CO-R16.S12-PW-110, PRO-R17-PW-DL-100 FF+3d | 100% | 2026-04-18 | 2026-04-23 |  |  | Labor/Helper [104.87 h]; Skilled Labor/Surveyor [5.7 h]; Foreman [5.7 h]; Plumber [52.44 h]; Excavator [46 h]; Pipe with diameter 200mm; in depth 0.0m - 1.5m [442.38] | 65,678.39 | 65,678.39 | CO-R17.S14-PW-110 | 4 | 4 | ML | PL | LM | ML | PW | PIPE | CON | R17 | S14 | PW | PW |
| CO-R17.S14-PW-130 |  | Trench Backfilling and Compaction Works for Main Lines of Potable Water Network-[Road 17]-[SW-14] | 6d | 2025-07-14 A | 2025-07-17 A | CO-R17.S14-PW-110 SS+3d, CO-R17.S14-PW-110 FF+3d, CO-R16.S12-PW-130 | 100% | 2026-04-23 | 2026-04-30 |  |  | Skilled Labor/Surveyor [5.7 h]; Foreman [5.7 h]; Eq. Operator [5.7 h]; Loader [48 h]; Compactor [48 h]; Water Tank [12 h]; Pipe with diameter 200mm; in depth 0.0m - 1.5m [177.55] | 26,361.01 | 26,361.01 | CO-R17.S14-PW-130 | 4 | 4 | ML | BF | LM | ML | PW | BACK | CON | R17 | S14 | PW | PW |
|  | VC | **Valve Chamber** |  | 2026-11-24 | 2026-11-30 |  |  |  |  |  |  |  |  |  |  |  |  |  |  |  |  |  |  |  |  |  |  |  |
| CO-R17.S14-PW-210 |  | Installation Works for Main Line Valves and Valve Chambers of Potable Water Network-[Road 17]-[SW-14] | 6d | 2026-11-24 | 2026-11-30 | CO-R17.S14-PW-110 |  |  |  | -10d | 180d | Labor/Helper [19.51 h]; Plumber [17.95 h]; Gate valves dia(200)mm on pipes with dia (200) mm. [10.03] | 27,122.79 |  | CO-R17.S14-PW-210 | 4 | 4 | ML | VI | Each | ML | PW | INSUL | CON | R17 | S14 | PW | PW |

| ID | WBS | Activity | Duration | Start | Finish | Predecessors | Complete | Planned start | Planned finish | Total float | Free float | Resources | Cost | Actual cost | Activity ID N | Seq | New Seq | 02- Network-WBS | 03- Activity | 04-UOM | 05-Discipline | 01- Network | 07-Weightage System | 08 Stage | 09 Roads | 10 side Walk | Discipline | New Discipline |
| --- | --- | --- | --- | --- | --- | --- | --- | --- | --- | --- | --- | --- | --- | --- | --- | --- | --- | --- | --- | --- | --- | --- | --- | --- | --- | --- | --- | --- |
|  | FH | **Fire Hydrant** |  | 2026-11-24 | 2026-12-28 |  |  |  |  |  |  |  |  |  |  |  |  |  |  |  |  |  |  |  |  |  |  |  |
| CO-R17.S14-PW-140 |  | Excavation Works for Fire Hydrants of Potable Water Network-[Road 17]-[SW-14] | 6d | 2026-11-24 | 2026-11-30 | CO-R17.S14-PW-110 SS+3d, CO-R17.S14-PW-110 FF+3d, CO-R17.S14-EW-110, CO-R17.S14-SW-130 SS+3d, CO-R17.S14-SW-130 FF+3d |  |  |  | -22d | 12d | Skilled Labor/Surveyor [5.61 h]; Foreman [5.61 h]; Excavator [48 h]; 3-outlet fire hydrant (2 x 2.5 inch and 1 x 4 inch) in the form of a separate dry vacuum cylinder [0.45] | 3,480.08 |  | CO-R17.S14-PW-140 | 4 | 4 | FH | Ex | Each | FH | PW | EX | CON | R17 | S14 | PW | PW |
| CO-R17.S14-PW-150 |  | Installation Works for Fire Hydrant of Potable Water Network-[Road 17]-[SW-14] | 6d | 2026-12-15 | 2026-12-21 | CO-R17.S14-PW-140, CO-R16.S12-PW-150, PRO-R17-PW-DL-120 FF+3d |  |  |  | -34d | 0d | Labor/Helper [107.67 h]; Skilled Labor/Surveyor [5.61 h]; Foreman [5.61 h]; Plumber [107.67 h]; 3-outlet fire hydrant (2 x 2.5 inch and 1 x 4 inch) in the form of a separate dry vacuum cylinder [3.01] | 23,276.12 |  | CO-R17.S14-PW-150 | 4 | 4 | FH | FH | Each | FH | PW | INSTALL | CON | R17 | S14 | PW | PW |
| CO-R17.S14-PW-160 |  | Trench Backfilling and Compaction Works for Fire Hydrants of Potable Water Network-[Road 17]-[SW-14] | 6d | 2026-12-22 | 2026-12-28 | CO-R17.S14-PW-150, CO-R16.S12-PW-160 |  |  |  | -34d | 156d | Skilled Labor/Surveyor [5.61 h]; Foreman [5.61 h]; Excavator [48 h]; 3-outlet fire hydrant (2 x 2.5 inch and 1 x 4 inch) in the form of a separate dry vacuum cylinder [1] | 7,758.71 |  | CO-R17.S14-PW-160 | 4 | 4 | FH | BF | Each | FH | PW | BACK | CON | R17 | S14 | PW | PW |
|  | TE | **Telecom Network** |  | 2025-07-20 | 2026-12-17 |  |  |  |  |  |  |  |  |  |  |  |  |  |  |  |  |  |  |  |  |  |  |  |
|  | PD | **Ducts Works** |  | 2025-07-20 | 2025-07-27 |  |  |  |  |  |  |  |  |  |  |  |  |  |  |  |  |  |  |  |  |  |  |  |
| CO-R17.S14-TE-100 |  | Trench Excavation and Bedding Works for Ducts of Telecom Network-[Road 17]-[SW-14] | 7d | 2025-07-20 A | 2025-07-22 A | CO-R17.S14-EW-110, CO-R17.S14-SL-160 SS+5d, CO-R17.S14-SL-160 FF+5d, CO-R17.S13-TE-100 | 100% | 2025-11-16 | 2025-11-23 |  |  | Skilled Labor/Surveyor [6.84 h]; Foreman [6.84 h]; Excavator [56 h]; 6-way ducts, 50mm dia. HDPE [28.09]; Road crossing ducts (6-way) [3.01] | 4,358.27 | 4,358.27 | CO-R17.S14-TE-100 | 4 | 4 | PD | Ex | LM | DC | TE | DUCTS | CON | R17 | S14 | TE | TE |
| CO-R17.S14-TE-110 |  | Pipes Laying Works for Ducts of Telecom Network-[Road 17]-[SW-14] | 7d | 2025-07-23 A | 2025-07-24 A | CO-R17.S14-TE-100, CO-R16.S12-TE-110, PRO-R17-TE-DL-100 FF+3d | 100% | 2026-08-09 | 2026-08-16 |  |  | Labor/Helper [127.67 h]; Skilled Labor/Surveyor [6.84 h]; Foreman [6.84 h]; Plumber [63.83 h]; Excavator [56 h]; JCB [28 h]; Truck [56 h]; 6-way ducts, 50mm dia. HDPE [168.53]; Road crossing ducts (6-way) [14.04] | 25,462.4 | 25,462.4 | CO-R17.S14-TE-110 | 4 | 4 | PD | PL | LM | DC | TE | DUCTS | CON | R17 | S14 | TE | TE |
| CO-R17.S14-TE-120 |  | Pouring Plain Concrete Above Ducts of Telecom Network-[Road 17]-[SW-14] | 7d | 2025-07-26 A | 2025-07-26 A | CO-R17.S14-TE-110, CO-R16.S12-TE-120 | 100% | 2026-08-17 | 2026-08-24 |  |  | Skilled Labor/Surveyor [6.84 h]; Foreman [6.84 h]; Cons. Carpenter [127.67 h]; Block Mason [63.83 h]; 6-way ducts, 50mm dia. HDPE [28.09]; Road crossing ducts (6-way) [3.01] | 4,358.27 | 4,358.27 | CO-R17.S14-TE-120 | 4 | 4 | PD | PC | LM | DC | TE | DUCTS | CON | R17 | S14 | TE | TE |
| CO-R17.S14-TE-130 |  | Trench Backfilling and Compaction Works for Ducts of Telecom Network-[Road 17]-[SW-14] | 7d | 2025-07-27 A | 2025-07-27 A | CO-R17.S14-TE-120, CO-R16.S12-TE-130 | 100% | 2026-08-25 | 2026-09-01 |  |  | Skilled Labor/Surveyor [6.84 h]; Foreman [6.84 h]; Excavator [56 h]; 6-way ducts, 50mm dia. HDPE [57.18]; Road crossing ducts (6-way) [4.01] | 8,510.27 | 8,510.27 | CO-R17.S14-TE-130 | 4 | 4 | PD | BF | LM | DC | TE | DUCTS | CON | R17 | S14 | TE | TE |
|  | MH | **Manholes Works** |  | 2026-11-24 | 2026-12-17 |  |  |  |  |  |  |  |  |  |  |  |  |  |  |  |  |  |  |  |  |  |  |  |
| CO-R17.S14-TE-140 |  | Excavation Works for Manholes of Telecom Network-[Road 17]-[SW-14] | 7d | 2026-11-24 | 2026-12-01 | CO-R16.S12-TE-140, CO-R17.S13-TE-140, CO-R17.S14-TE-100 |  |  |  | -91d | 0d | Skilled Labor/Surveyor [6.73 h]; Foreman [6.73 h]; Excavator [56 h]; Manhole Type 2 (2000x1000x1000) [0.2] | 641.28 |  | CO-R17.S14-TE-140 | 4 | 4 | MH | Ex | Each | MNH | TE | EXC | CON | R17 | S14 | TE | TE |
| CO-R17.S14-TE-150 |  | Installation Works for Manholes of Telecom Network-[Road 17]-[SW-14] | 7d | 2026-12-02 | 2026-12-09 | CO-R17.S14-TE-140, CO-R16.S12-TE-150, PRO-R17-TE-DL-110 FF+3d |  |  |  | -91d | 0d | Skilled Labor/Surveyor [6.73 h]; Foreman [6.73 h]; Excavator [56 h]; Manhole Type 1 (2000x1000x1000) [1]; Manhole Type 2 (2000x1000x1000) [1] | 6,410.79 |  | CO-R17.S14-TE-150 | 4 | 4 | MH | HH | Each | MNH | TE | INSTALL-1 | CON | R17 | S14 | TE | TE |
| CO-R17.S14-TE-160 |  | Backfilling Works for Manholes of Telecom Network-[Road 17]-[SW-14] | 7d | 2026-12-10 | 2026-12-17 | CO-R17.S14-TE-150, CO-R16.S12-TE-160 |  |  |  | -91d | 81d | Skilled Labor/Surveyor [6.73 h]; Foreman [6.73 h]; Excavator [56 h]; Manhole Type 2 (2000x1000x1000) [0.2] | 641.28 |  | CO-R17.S14-TE-160 | 4 | 4 | MH | BF | Each | MNH | TE | (New)-2 | CON | R17 | S14 | TE | TE |
|  | RD | **Road Works** |  | 2025-07-06 | 2026-09-17 |  |  |  |  |  |  |  |  |  |  |  |  |  |  |  |  |  |  |  |  |  |  |  |
|  | RD | **Pre-Bituminous Construction** |  | 2025-07-06 | 2025-09-14 |  |  |  |  |  |  |  |  |  |  |  |  |  |  |  |  |  |  |  |  |  |  |  |
| CO-R17.S14-RD-P-100 |  | Capping and Subgrade Layer for Road Works-[Road 17]-[SW-14] | 18d | 2025-07-06 A | 2025-07-16 A | CO-R17.S14-SD-130, CO-R17.S14-SW-130, CO-R17.S14-PW-130, PRO-R17-RD-DL-120 FF+3d, CO-R17.S14-TE-130, CO-R17.S14-SL-160 SS+3d, CO-R17.S14-SL-160 FF+3d | 100% | 2026-09-02 | 2026-09-22 |  |  | Labor/Helper [725.9 h]; Skilled Labor/Surveyor [362.95 h]; Loader [144 h]; Grader [144 h]; Road Roller [144 h]; Water Tank [144 h]; 300mm capping layer underneath subgrade , CBR?15% [2141.69]; 300mm thick Subgrade, including subgrade preparation, CBR?25% [2141.69] | 169,711.22 | 169,711.22 | CO-R17.S14-RD-P-100 | 4 | 4 | AB | SG | Sq.m | BS | RD |  | CON | R17 | S14 | RD | RD |
| CO-R17.S14-RD-P-110 |  | Aggregate Base Course Layer for Road Works-[Road 17]-[SW-14] | 12d | 2025-09-13 A | 2025-09-14 A | CO-R17.S14-RD-P-100 SS+3d, CO-R17.S14-RD-P-100 FF+3d, CO-R17.S14-SD-170 SS+3d, CO-R17.S14-SD-170 FF+3d, CO-R16.S12-RD-P-110, PRO-R17-RD-DL-130 FF+3d | 100% | 2026-11-05 | 2026-11-18 |  |  | Labor/Helper [325.2 h]; Skilled Labor/Surveyor [162.6 h]; Foreman [162.6 h]; Loader [144 h]; Grader [144 h]; Road Roller [144 h]; Aggregate base course 200mm thick after compaction in two layers(Grading 1); CBR?80%; including watering, compaction and testing [1427.46] | 118,171.68 | 118,171.68 | CO-R17.S14-RD-P-110 | 4 | 4 | AB | BA | Sq.m | BS | RD |  | CON | R17 | S14 | RD | RD |
|  | LS | **Pavement Works** |  | 2026-08-25 | 2026-09-17 |  |  |  |  |  |  |  |  |  |  |  |  |  |  |  |  |  |  |  |  |  |  |  |
| CO-R17.S14-RD-P-120 |  | Fixing of Curbstone for Sidewalks Pavement-[Road 17]-[SW-14] | 12d | 2026-08-25 A | 2026-08-31 A | CO-R16.S12-RD-P-120, PRO-R17-RD-DL-110 FF+3d, CO-R17.S14-RD-P-110 SS+3d, CO-R17.S14-RD-P-110 FF+3d | 100% | 2026-11-09 | 2026-11-22 |  |  | Labor/Helper [102.13 h]; Block Mason [354.06 h]; Precast Concrete Kerb, Type K1 [790.47]; Precast Concrete Kerb, Type L1 [1567.9] | 96,811.25 | 96,811.25 | CO-R17.S14-RD-P-120 | 4 | 4 | LS | CR | LM | LAND | RD |  | CON | R17 | S14 | RD | RD |
| CO-R17.S14-RD-P-130 |  | Fixing of Interlock Tiles for Sidewalks Pavement-[Road 17]-[SW-14] | 10d | 2026-09-05 A | 2026-09-17 A | CO-R17.S14-RD-P-120 SS+3d, CO-R17.S14-RD-P-120 FF+3d, CO-R16.S12-RD-P-130, PRO-R17-RD-DL-100 FF+3d, CO-R17-SW-TF-100, CO-R17-SD-TF-120 | 100% | 2026-11-21 | 2026-12-01 |  |  | Labor/Helper [196.09 h]; Block Mason [588.28 h]; Interlocking block pavers for sidewalk/footpath 60mm thick on and including 30mm Sand Bedding, 200mm Aggregate subbase, all in accordance with authority standards and complete as per specifications [1410.41]; Extraover for Pedestrian ramps [3.01] | 68,896.04 | 68,896.04 | CO-R17.S14-RD-P-130 | 4 | 4 | LS | IL | Sq.m | LAND | RD |  | CON | R17 | S14 | RD | RD |
|  | 1 | **Road 18 Local 1 ( 479 LM )** |  | 2025-02-11 | 2026-12-21 |  |  |  |  |  |  |  |  |  |  |  |  |  |  |  |  |  |  |  |  |  |  |  |
|  | SW_15 | **SW_15** |  | 2025-02-11 | 2026-12-15 |  |  |  |  |  |  |  |  |  |  |  |  |  |  |  |  |  |  |  |  |  |  |  |
|  | EW | **Earthworks** |  | 2025-02-11 | 2025-02-25 |  |  |  |  |  |  |  |  |  |  |  |  |  |  |  |  |  |  |  |  |  |  |  |
|  | EW | **Earthworks** |  | 2025-02-11 | 2025-02-25 |  |  |  |  |  |  |  |  |  |  |  |  |  |  |  |  |  |  |  |  |  |  |  |
| CO-R18.S15-EW-120 |  | Roadway Excavation Works Upto Design Level for Earthworks-[Road 18]-[SW-15] | 10d | 2025-02-11 A | 2025-02-20 A | ENG-MS-RD-A-10, ENG-SH-RD-A-100 | 100% | 2025-02-09 | 2025-02-19 |  |  | Labor/Helper [544.43 h]; Skilled Labor/Surveyor [68.05 h]; Foreman [68.05 h]; Dump Truck [480 h]; Water Tank [240 h]; Dozer [240 h]; Roadway Excavation for cuttings; on any type of material for all depths including trimming and Preparation of excavated surfaces and disposal. [9753.47] | 62,746.67 | 62,746.67 | CO-R18.S15-EW-120 | 1 | 1 | EW | Ex | Cub.m | EW | EW |  | CON | R18 | S15 | EW | EW |
| CO-R18.S15-EW-130 |  | Embankments Works Upto Design Level for Earthworks-[Road 18]-[SW-15] | 12d | 2025-02-21 A | 2025-02-25 A | CO-R18.S15-EW-120, ENG-MS-RD-A-10, ENG-SH-RD-A-100 | 100% | 2025-02-20 | 2025-03-06 |  |  | Labor/Helper [1088.85 h]; Skilled Labor/Surveyor [136.11 h]; Foreman [136.11 h]; Dump Truck [960 h]; Water Tank [480 h]; Dozer [480 h]; Embankments to the ROW, with suitable material other than top soil or rock according to specifications [16418.3] | 135,800.83 | 135,800.83 | CO-R18.S15-EW-130 | 1 | 1 | EW | BF | Cub.m | EW | EW |  | CON | R18 | S15 | EW | EW |

| ID | WBS | Activity | Duration | Start | Finish | Predecessors | Complete | Planned start | Planned finish | Resources | Cost | Actual cost | Activity ID N | Seq | New Seq | 02- Network-WBS | 03- Activity | 04-UOM | 05-Discipline | 01- Network | 07-Weightage System | 08 Stage | 09 Roads | 10 side Walk | Discipline | New Discipline |
| --- | --- | --- | --- | --- | --- | --- | --- | --- | --- | --- | --- | --- | --- | --- | --- | --- | --- | --- | --- | --- | --- | --- | --- | --- | --- | --- |
|  | SW | **Sewage Network** |  | 2025-04-29 | 2025-09-17 |  |  |  |  |  |  |  |  |  |  |  |  |  |  |  |  |  |  |  |  |  |
|  | ML | **Main Line Sections** |  | 2025-04-29 | 2025-05-20 |  |  |  |  |  |  |  |  |  |  |  |  |  |  |  |  |  |  |  |  |  |
| CO-R18.S15-SW-220 |  | Trench Excavation and Bedding Works for Main Lines of Sewage Network-[Road 18]-[SW-15] | 12d | 2025-04-29 A | 2025-05-09 A | CO-R18.S15-EW-130, ENG-MS-SW-ML-A-110, ENG-SH-SW-ML-A-110 | 100% | 2025-03-08 | 2025-03-20 | Labor/Helper [544.43 h]; Foreman [544.43 h]; Excavator [96 h]; Nominal bore : 160mm; Depth : 1.5m - 2.5m [25.08]; Nominal bore : 200mm; Depth : 0.0m - 1.5m [3.01]; Nominal bore : 200mm; Depth : 1.5m - 2.5m [6.02]; Nominal bore : 200mm; Depth : 2.5m - 3.5m [16.05]; Nominal bore : 200mm; Depth : 3.5m - 4.5m [11.03]; Nominal bore : 200mm; Depth : 4.5m -5.5m [6.02]; Nominal bore : 200mm; Depth : 5.5m - 6.5m [7.02] | 20,283.12 | 20,283.12 | CO-R18.S15-SW-220 | 1 | 1 | ML | Ex | LM | ML | SW | EX | CON | R18 | S15 | SW | SW |
| CO-R18.S15-SW-230 |  | Pipes Laying Works for Main Lines of Sewage Network-[Road 18]-[SW-15] | 10d | 2025-05-10 A | 2025-05-16 A | CO-R18.S15-SW-220, PRO-R18-SW-DL-150 | 100% | 2025-04-24 | 2025-05-05 | Labor/Helper [1357.53 h]; Skilled Labor/Surveyor [70.7 h]; Foreman [70.7 h]; Plumber [678.76 h]; Excavator [96 h]; Nominal bore : 160mm; Depth : 1.5m - 2.5m [75.24]; Nominal bore : 200mm; Depth : 0.0m - 1.5m [10.03]; Nominal bore : 200mm; Depth : 1.5m - 2.5m [18.06]; Nominal bore : 200mm; Depth : 2.5m - 3.5m [47.15]; Nominal bore : 200mm; Depth : 3.5m - 4.5m [35.11]; Nominal bore : 200mm; Depth : 4.5m -5.5m [17.05]; Nominal bore : 200mm; Depth : 5.5m - 6.5m [23.07] | 62,301.45 | 62,301.45 | CO-R18.S15-SW-230 | 1 | 1 | ML | PL | LM | ML | SW | PIPE | CON | R18 | S15 | SW | SW |
| CO-R18.S15-SW-240 |  | Trench Backfilling and Compaction Works for Main Lines of Sewage Network-[Road 18]-[SW-15] | 10d | 2025-05-17 A | 2025-05-20 A | CO-R18.S15-SW-230, CO-R18.S15-SW-300 FF | 100% | 2025-05-06 | 2025-05-17 | Skilled Labor/Surveyor [544.43 h]; Foreman [544.43 h]; Excavator [96 h]; Nominal bore : 160mm; Depth : 1.5m - 2.5m [13.04]; Nominal bore : 200mm; Depth : 0.0m - 1.5m [1]; Nominal bore : 200mm; Depth : 1.5m - 2.5m [3.01]; Nominal bore : 200mm; Depth : 2.5m - 3.5m [8.03]; Nominal bore : 200mm; Depth : 3.5m - 4.5m [6.02]; Nominal bore : 200mm; Depth : 4.5m -5.5m [3.01]; Nominal bore : 200mm; Depth : 5.5m - 6.5m [4.01] | 10,605.67 | 10,605.67 | CO-R18.S15-SW-240 | 1 | 1 | ML | BF | LM | ML | SW | BACK | CON | R18 | S15 | SW | SW |
|  | 1 | **Manholes** |  | 2025-05-25 | 2025-09-17 |  |  |  |  |  |  |  |  |  |  |  |  |  |  |  |  |  |  |  |  |  |
| CO-R18.S15-SW-250 |  | Excavation Works for Main Line Manholes of Sewage Network-[Road 18]-[SW-15] | 1d | 2025-05-25 A | 2025-05-26 A | CO-R18.S15-SW-230 SS | 100% | 2025-04-24 | 2025-04-24 | Labor/Helper [45.6 h]; Skilled Labor/Surveyor [22.8 h]; Excavator [40 h]; Depth: not exceeding 1.5m [0.15]; Depth: 1.5 - 2.5m [1]; Depth: 2.5 - 3.5m [0.15]; Depth: 5.5 - 6.5m [0.3]; Depth:6.5 - 7.5m [0.15] | 22,177.36 | 22,177.36 | CO-R18.S15-SW-250 | 1 | 1 |  |  |  |  | SW | EX | CON | R18 | S15 | SW | SW |
| CO-R18.S15-SW-260 |  | Installation RC Footing Works for Main Line Manholes of Sewage Network-[Road 18]-[SW-15] | 2.25d | 2025-05-31 A | 2025-06-02 A | CO-R18.S15-SW-250, PRO-R18-SW-DL-160 | 100% | 2025-04-26 | 2025-04-28 | Cons. Carpenter [205.18 h]; Steel Fixer [205.18 h]; Depth: not exceeding 1.5m [0.1]; Depth: 1.5 - 2.5m [1]; Depth: 2.5 - 3.5m [0.1]; Depth: 5.5 - 6.5m [0.2]; Depth:6.5 - 7.5m [0.1] | 17,231.92 | 17,231.92 | CO-R18.S15-SW-260 | 1 | 1 |  |  |  |  | SW | RC F | CON | R18 | S15 | SW | SW |
| CO-R18.S15-SW-270 |  | Install Grp Liner Wall Works for Main Line Manholes of Sewage Network-[Road 18]-[SW-15] | 4d | 2025-06-01 A | 2025-06-03 A | CO-R18.S15-SW-260 | 100% | 2025-04-28 | 2025-05-03 | Labor/Helper [72.95 h]; Plumber [72.95 h]; Depth: not exceeding 1.5m [0.4]; Depth: 1.5 - 2.5m [3.01]; Depth: 2.5 - 3.5m [0.4]; Depth: 5.5 - 6.5m [1]; Depth:6.5 - 7.5m [0.4] | 67,078.39 | 67,078.39 | CO-R18.S15-SW-270 | 1 | 1 |  |  |  |  | SW | LP | CON | R18 | S15 | SW | SW |
| CO-R18.S15-SW-290 |  | Backfilling Works for Main Line Manholes of Sewage Network-[Road 18]-[SW-15] | 4d | 2025-06-17 A | 2025-06-21 A | CO-R18.S15-SW-280 | 100% | 2025-05-04 | 2025-05-08 | Labor/Helper [72.95 h]; Skilled Labor/Surveyor [36.48 h]; Excavator [64 h]; Depth: not exceeding 1.5m [0.15]; Depth: 1.5 - 2.5m [1]; Depth: 2.5 - 3.5m [0.15]; Depth: 5.5 - 6.5m [0.3]; Depth:6.5 - 7.5m [0.15] | 22,177.36 | 22,177.36 | CO-R18.S15-SW-290 | 1 | 1 |  |  |  |  | SW | BACK | CON | R18 | S15 | SW | SW |
| CO-R18.S15-SW-280 |  | Pouring Grp Liner Wall Works for Main Line Manholes of Sewage Network-[Road 18]-[SW-15] | 1d | 2025-09-16 A | 2025-09-16 A | CO-R18.S15-SW-270 | 100% | 2025-05-03 | 2025-05-04 | Cons. Carpenter [91.19 h]; Steel Fixer [91.19 h]; Depth: not exceeding 1.5m [0.05]; Depth: 1.5 - 2.5m [0.3]; Depth: 2.5 - 3.5m [0.05]; Depth: 5.5 - 6.5m [0.1]; Depth:6.5 - 7.5m [0.05] | 7,140.91 | 7,140.91 | CO-R18.S15-SW-280 | 1 | 1 |  |  |  |  | SW | (New) | CON | R18 | S15 | SW | SW |
| CO-R18.S15-SW-300 |  | Testing Works for Main Line Manholes of Sewage Network-[Road 18]-[SW-15] | 1d | 2025-09-17 A | 2025-09-17 A | CO-R18.S15-SW-290 | 100% | 2025-05-08 | 2025-05-10 | Labor/Helper [45.6 h]; Plumber [45.6 h]; Depth: not exceeding 1.5m [0.05]; Depth: 1.5 - 2.5m [0.3]; Depth: 2.5 - 3.5m [0.05]; Depth: 5.5 - 6.5m [0.1]; Depth:6.5 - 7.5m [0.05] | 7,140.91 | 7,140.91 | CO-R18.S15-SW-300 | 1 | 1 |  |  |  |  | SW | T&COV | CON | R18 | S15 | SW | SW |
|  | SD | **Storm Drainage Network** |  | 2025-04-30 | 2026-07-13 |  |  |  |  |  |  |  |  |  |  |  |  |  |  |  |  |  |  |  |  |  |
|  | ML | **Main Line Sections** |  | 2025-04-30 | 2025-05-24 |  |  |  |  |  |  |  |  |  |  |  |  |  |  |  |  |  |  |  |  |  |
| CO-R18.S15-SD-230 |  | Trench Excavation and Bedding Works for Main Lines of Storm Drainage Network-[Road 18]-[SW-15] | 10d | 2025-04-30 A | 2025-05-22 A | CO-R18.S15-EW-130, CO-R18.S15-EW-120, CO-R18.S15-SW-240, CO-R18.S15-SW-240 FF+3d | 100% | 2025-05-18 | 2025-05-28 | Skilled Labor/Surveyor [544.43 h]; Foreman [544.43 h]; Excavator [112 h]; Pipe with diameter 600mm ; depth: 1.51m - 2.5m [45.14]; Pipe with diameter 700mm ; depth: 1.51m - 2.5m [23.07]; Pipe with diameter 1000mm ; depth: 1.51m - 2.5m [14.04]; Pipe with diameter 1000mm ; depth: 2.51 - 3.5m [14.04] | 52,001.1 | 52,001.1 | CO-R18.S15-SD-230 | 1 | 1 | ML | Ex | LM | ML | SD | EX | CON | R18 | S15 | SD | SD |
| CO-R18.S15-SD-240 |  | Pipes Laying Works for Main Lines of Storm Drainage Network-[Road 18]-[SW-15] | 20d | 2025-05-01 A | 2025-05-24 A | CO-R18.S15-SD-230, PRO-R18-SD-DL-180 | 100% | 2025-05-29 | 2025-06-25 | Labor/Helper [1361.06 h]; Skilled Labor/Surveyor [68.05 h]; Foreman [68.05 h]; Plumber [680.53 h]; Excavator [160 h]; Pipe with diameter 600mm ; depth: 1.51m - 2.5m [136.43]; Pipe with diameter 700mm ; depth: 1.51m - 2.5m [66.21]; Pipe with diameter 1000mm ; depth: 1.51m - 2.5m [42.13]; Pipe with diameter 1000mm ; depth: 2.51 - 3.5m [42.13] | 154,942.31 | 154,942.31 | CO-R18.S15-SD-240 | 1 | 1 | ML | PL | LM | ML | SD | PIPE | CON | R18 | S15 | SD | SD |
| CO-R18.S15-SD-250 |  | Trench Backfilling and Compaction Works for Main Lines of Storm Drainage Network-[Road 18]-[SW-15] | 20d | 2025-05-15 A | 2025-05-24 A | CO-R18.S15-SD-240 SS+3d, CO-R18.S15-SD-240 FF+3d, CO-R18.S15-SD-240, CO-R18.S15-SD-340 FF | 100% | 2025-06-26 | 2025-07-19 | Skilled Labor/Surveyor [544.43 h]; Foreman [544.43 h]; Excavator [160 h]; Pipe with diameter 600mm ; depth: 1.51m - 2.5m [23.07]; Pipe with diameter 700mm ; depth: 1.51m - 2.5m [11.03]; Pipe with diameter 1000mm ; depth: 1.51m - 2.5m [7.02]; Pipe with diameter 1000mm ; depth: 2.51 - 3.5m [7.02] | 25,962.77 | 25,962.77 | CO-R18.S15-SD-250 | 1 | 1 | ML | BF | LM | ML | SD | BACK | CON | R18 | S15 | SD | SD |
|  | MH | **Manholes** |  | 2025-05-13 | 2026-07-13 |  |  |  |  |  |  |  |  |  |  |  |  |  |  |  |  |  |  |  |  |  |
| CO-R18.S15-SD-300 |  | Trench Excavation and Bedding Works for Manholes of Storm Drainage Network-[Road 18]-[SW-15] | 1d | 2025-05-13 A | 2025-05-22 A | CO-R18.S15-SD-240 SS | 100% | 2025-05-29 | 2025-05-29 | Labor/Helper [45.37 h]; Skilled Labor/Surveyor [22.68 h]; Excavator [24 h]; MH ; depth: 0.0m - 1.5m [0.15]; MH ; depth: 1.51m - 2.5m [0.3]; MH ; depth: 2.51 - 3.5m [0.3] | 12,371.24 | 12,371.24 | CO-R18.S15-SD-300 | 1 | 1 |  |  |  |  | SD | EX | CON | R18 | S15 | SD | SD |
| CO-R18.S15-SD-310 |  | Install RC Footing Works for Manholes of Storm Drainage Network-[Road 18]-[SW-15] | 1d | 2025-05-21 A | 2025-05-22 A | CO-R18.S15-SD-300, PRO-R18-SD-DL-170 | 100% | 2025-05-31 | 2025-05-31 | Cons. Carpenter [81.66 h]; Steel Fixer [81.66 h]; MH ; depth: 0.0m - 1.5m [0.05]; MH ; depth: 1.51m - 2.5m [0.1]; MH ; depth: 2.51 - 3.5m [0.1] | 4,124.43 | 4,124.43 | CO-R18.S15-SD-310 | 1 | 1 |  |  |  |  | SD | RC F | CON | R18 | S15 | SD | SD |
| CO-R18.S15-SD-320 |  | Install RC Wall Rings & Slab Works for Manholes of Storm Drainage Network-[Road 18]-[SW-15] | 4d | 2025-06-01 A | 2025-06-04 A | CO-R18.S15-SD-310 | 100% |  |  | Cons. Carpenter [353.88 h]; Steel Fixer [353.88 h]; MH ; depth: 0.0m - 1.5m [0.45]; MH ; depth: 1.51m - 2.5m [1]; MH ; depth: 2.51 - 3.5m [1] | 41,024.74 | 41,024.74 | CO-R18.S15-SD-320 | 1 | 1 |  |  |  |  | SD | RC W | CON | R18 | S15 | SD | SD |
| CO-R18.S15-SD-340 |  | Backfilling Works for Manholes of Storm Drainage Network-[Road 18]-[SW-15] | 7d | 2025-06-08 A | 2025-06-14 A | CO-R18.S15-SD-330 | 100% | 2025-06-11 | 2025-06-18 | Labor/Helper [317.58 h]; Skilled Labor/Surveyor [158.79 h]; Excavator [168 h]; MH ; depth: 0.0m - 1.5m [0.2]; MH ; depth: 1.51m - 2.5m [0.4]; MH ; depth: 2.51 - 3.5m [0.4] | 16,495.67 | 16,495.67 | CO-R18.S15-SD-340 | 1 | 1 |  |  |  |  | SD | BACK | CON | R18 | S15 | SD | SD |
| CO-R18.S15-SD-330 |  | Testing Works for Manholes of Storm Drainage Network-[Road 18]-[SW-15] | 1d | 2026-06-04 A | 2026-07-13 A | CO-R18.S15-SD-320 | 100% | 2025-06-10 | 2025-06-10 | Labor/Helper [93.17 h]; Plumber [61.25 h]; MH ; depth: 0.0m - 1.5m [0.1]; MH ; depth: 1.51m - 2.5m [0.2]; MH ; depth: 2.51 - 3.5m [0.2] | 8,247.84 | 8,247.84 | CO-R18.S15-SD-330 | 1 | 1 |  |  |  |  | SD | T&COV | CON | R18 | S15 | SD | SD |
|  | CB | **Catch Basin Sections** |  | 2025-05-18 | 2026-07-13 |  |  |  |  |  |  |  |  |  |  |  |  |  |  |  |  |  |  |  |  |  |
| CO-R18.S15-SD-260 |  | Trench Excavation and Bedding Works for Catch Basins of Storm Drainage Network-[Road 18]-[SW-15] | 7d | 2025-05-18 A | 2025-05-22 A | CO-R18.S15-EW-130, CO-R18.S15-SD-340 | 100% | 2025-06-19 | 2025-06-26 | Skilled Labor/Surveyor [6.84 h]; Foreman [6.84 h]; Excavator [56 h]; Pipe with diameter 300mm ; depth: 0 - 1.5m [51.16]; Pipe with diameter 400mm ; depth: 0 - 1.5m [3.01] | 12,847.1 | 12,847.1 | CO-R18.S15-SD-260 | 1 | 1 | CB | Ex | Each | CB | SD | EX | CON | R18 | S15 | SD | SD |
| CO-R18.S15-SD-270 |  | Installation and Pipes Laying Connection Works for Catch Basins of Storm Drainage Network-[Road 18]-[SW-15] | 7d | 2025-05-24 A | 2025-06-03 A | CO-R18.S15-SD-260, PRO-R18-SD-DL-200, PRO-R18-SD-DL-220 | 100% | 2025-06-28 | 2025-07-05 | Labor/Helper [255.34 h]; Skilled Labor/Surveyor [13.68 h]; Foreman [13.68 h]; Excavator [112 h]; Pipe with diameter 300mm ; depth: 0 - 1.5m [154.48]; Pipe with diameter 400mm ; depth: 0 - 1.5m [10.03] | 39,092.73 | 39,092.73 | CO-R18.S15-SD-270 | 1 | 1 | CB | CB | Each | CB | SD | INSTALL | CON | R18 | S15 | SD | SD |
| CO-R18.S15-SD-290 |  | Trench Backfilling and Compaction Works for Catch Basins of Storm Drainage Network-[Road 18]-[SW-15] | 7d | 2025-06-04 A | 2025-06-09 A | CO-R18.S15-SD-280 | 100% | 2025-07-14 | 2025-07-21 | Skilled Labor/Surveyor [6.84 h]; Foreman [6.84 h]; Excavator [56 h]; Pipe with diameter 300mm ; depth: 0 - 1.5m [69.22]; Pipe with diameter 400mm ; depth: 0 - 1.5m [4.01] | 17,363.65 | 17,363.65 | CO-R18.S15-SD-290 | 1 | 1 | CB | BF | Each | CB | SD | BACK | CON | R18 | S15 | SD | SD |
| CO-R18.S15-SD-280 |  | Testing Works for Catch Basins of Storm Drainage Network-[Road 18]-[SW-15] | 7d | 2026-06-04 A | 2026-07-13 A | CO-R18.S15-SD-270, CO-R18.S15-SD-240 | 100% | 2025-07-06 | 2025-07-13 | Labor/Helper [127.67 h]; Skilled Labor/Surveyor [18.23 h]; Foreman [19.63 h]; Plumber [63.83 h]; Excavator [56 h]; Pipe with diameter 300mm ; depth: 0 - 1.5m [34.11]; Pipe with diameter 400mm ; depth: 0 - 1.5m [1] | 8,248.86 | 8,248.86 | CO-R18.S15-SD-280 | 1 | 1 | CB | PL | Each | CB | SD | TEST | CON | R18 | S15 | SD | SD |

| ID | WBS | Activity | Duration | Start | Finish | Predecessors | Complete | Planned start | Planned finish | Total float | Free float | Resources | Cost | Actual cost | Activity ID N | Seq | New Seq | 02- Network-WBS | 03- Activity | 04-UOM | 05-Discipline | 01- Network | 07-Weightage System | 08 Stage | 09 Roads | 10 side Walk | Discipline | New Discipline |
| --- | --- | --- | --- | --- | --- | --- | --- | --- | --- | --- | --- | --- | --- | --- | --- | --- | --- | --- | --- | --- | --- | --- | --- | --- | --- | --- | --- | --- |
|  | IR | **Irrigation Network** |  | 2025-06-16 | 2026-12-15 |  |  |  |  |  |  |  |  |  |  |  |  |  |  |  |  |  |  |  |  |  |  |  |
|  | ML | **Main Line Pipes** |  | 2025-06-16 | 2026-12-15 |  |  |  |  |  |  |  |  |  |  |  |  |  |  |  |  |  |  |  |  |  |  |  |
| CO-R18.S15-IR-140 |  | Trench Excavation and Bedding Works for Main Lines of Irrigation Network-[Road 18]-[SW-15] | 7d | 2025-06-16 A | 2025-07-07 A | CO-R18.S15-EW-130, CO-R18.S15-SD-290 | 100% | 2025-07-22 | 2025-07-29 |  |  | Skilled Labor/Surveyor [6.84 h]; Foreman [6.84 h]; Excavator [56 h]; 125 mm pipe; depth 0.0m - 1.5m [175.55] | 13,332.15 | 13,332.15 | CO-R18.S15-IR-140 | 1 | 1 | ML | Ex | LM | ML | IR | EX | CON | R18 | S15 | IR | IR |
| CO-R18.S15-IR-150 |  | Pipes Laying Works for Main Lines of Irrigation Network-[Road 18]-[SW-15] | 10d | 2025-06-19 A | 2025-07-07 A | CO-R18.S15-IR-140, PRO-R18-IR-DL-120 FF+3d | 100% | 2025-07-30 | 2025-08-10 |  |  | Labor/Helper [182.38 h]; Skilled Labor/Surveyor [9.12 h]; Foreman [9.12 h]; Plumber [91.19 h]; Excavator [80 h]; 125 mm pipe; depth 0.0m - 1.5m [526.65] | 39,995.42 | 39,995.42 | CO-R18.S15-IR-150 | 1 | 1 | ML | PL | LM | ML | IR | PIPE | CON | R18 | S15 | IR | IR |
| CO-R18.S15-IR-170 |  | Trench Backfilling and Compaction Works for Main Lines of Irrigation Network-[Road 18]-[SW-15] | 9d | 2025-07-02 A | 2025-07-07 A | CO-R18.S15-IR-150 | 100% | 2025-08-19 | 2025-08-28 |  |  | Skilled Labor/Surveyor [9.12 h]; Foreman [9.12 h]; Excavator [72 h]; 125 mm pipe; depth 0.0m - 1.5m [88.28] | 6,703.86 | 6,703.86 | CO-R18.S15-IR-170 | 1 | 1 | ML | BF | LM | ML | IR | BACK | CON | R18 | S15 | IR | IR |
| CO-R18.S15-IR-160 |  | Installation Works for Main Line Valves of Irrigation Network-[Road 18]-[SW-15] | 7d | 2026-12-08 | 2026-12-15 | CO-R18.S15-IR-150, PRO-R18-IR-DL-130 FF+3d |  |  |  | -41d | 99d | Labor/Helper [125.62 h]; Skilled Labor/Surveyor [6.73 h]; Foreman [6.73 h]; Plumber [125.62 h]; Gate valves dia (90)mm on pipes with dia (125) mm. [7.02]; Wash out valve with dia (100)mm on pipes with dia (125) mm [1]; Wash out chamber; on 125 mm dia pipeline Depth 1.5 - 3m [1] | 52,670.97 |  | CO-R18.S15-IR-160 | 1 | 1 | ML | VI | Each | ML | IR | VALV | CON | R18 | S15 | IR | IR |
|  | TE | **Telecom Network** |  | 2025-07-08 | 2025-07-30 |  |  |  |  |  |  |  |  |  |  |  |  |  |  |  |  |  |  |  |  |  |  |  |
|  | PD | **Ducts Works** |  | 2025-07-08 | 2025-07-21 |  |  |  |  |  |  |  |  |  |  |  |  |  |  |  |  |  |  |  |  |  |  |  |
| CO-R18.S15-TE-170 |  | Trench Excavation and Bedding Works for Ducts of Telecom Network-[Road 18]-[SW-15] | 7d | 2025-07-08 A | 2025-07-10 A | CO-R18.S15-IR-170, CO-R18.S15-EW-130 | 100% | 2025-08-30 | 2025-09-06 |  |  | Skilled Labor/Surveyor [6.84 h]; Foreman [6.84 h]; Excavator [56 h]; 6-way ducts, 50mm dia. HDPE [27.08]; Road crossing ducts (6-way) [3.01] | 4,220.42 | 4,220.42 | CO-R18.S15-TE-170 | 1 | 1 | PD | Ex | LM | DC | TE | DUCTS | CON | R18 | S15 | TE | TE |
| CO-R18.S15-TE-180 |  | Pipes Laying Works for Ducts of Telecom Network-[Road 18]-[SW-15] | 7d | 2025-07-11 A | 2025-07-15 A | CO-R18.S15-TE-170, PRO-R18-TE-DL-120 | 100% | 2025-09-07 | 2025-09-14 |  |  | Labor/Helper [127.67 h]; Skilled Labor/Surveyor [6.84 h]; Foreman [6.84 h]; Plumber [63.83 h]; Excavator [56 h]; JCB [28 h]; Truck [56 h]; 6-way ducts, 50mm dia. HDPE [163.51]; Road crossing ducts (6-way) [14.04] | 24,775.17 | 24,775.17 | CO-R18.S15-TE-180 | 1 | 1 | PD | PL | LM | DC | TE | DUCTS | CON | R18 | S15 | TE | TE |
| CO-R18.S15-TE-190 |  | Trench Backfilling and Compaction Works for Ducts of Telecom Network-[Road 18]-[SW-15] | 7d | 2025-07-16 A | 2025-07-17 A | CO-R18.S15-TE-230 | 100% | 2025-09-24 | 2025-10-01 |  |  | Skilled Labor/Surveyor [6.84 h]; Foreman [6.84 h]; Excavator [56 h]; 6-way ducts, 50mm dia. HDPE [54.17]; Road crossing ducts (6-way) [4.01] | 8,098.75 | 8,098.75 | CO-R18.S15-TE-190 | 1 | 1 | PD | BF | LM | DC | TE | DUCTS | CON | R18 | S15 | TE | TE |
| CO-R18.S15-TE-230 |  | Pouring Plain Concrete Above Ducts of Telecom Network-[Road 18]-[SW-15] | 7d | 2025-07-18 A | 2025-07-21 A | CO-R18.S15-TE-180 | 100% | 2025-09-15 | 2025-09-22 |  |  | Skilled Labor/Surveyor [6.84 h]; Foreman [6.84 h]; Cons. Carpenter [127.67 h]; Block Mason [63.83 h]; 6-way ducts, 50mm dia. HDPE [27.08]; Road crossing ducts (6-way) [3.01] | 4,220.42 | 4,220.42 | CO-R18.S15-TE-230 | 1 | 1 | PD | PC | LM | DC | TE | DUCTS | CON | R18 | S15 | TE | TE |
|  | MH | **Manholes Works** |  | 2025-07-20 | 2025-07-30 |  |  |  |  |  |  |  |  |  |  |  |  |  |  |  |  |  |  |  |  |  |  |  |
| CO-R18.S15-TE-200 |  | Excavation Works for Manholes of Telecom Network-[Road 18]-[SW-15] | 7d | 2025-07-20 A | 2025-07-22 A | CO-R18.S15-TE-170 | 100% | 2025-09-07 | 2025-09-14 |  |  | Skilled Labor/Surveyor [6.84 h]; Foreman [6.84 h]; Excavator [56 h]; Manhole Type 2 (2000x1000x1000) [0.4] | 1,283.59 | 1,283.59 | CO-R18.S15-TE-200 | 1 | 1 | MH | Ex | Each | MNH | TE | EXC | CON | R18 | S15 | TE | TE |
| CO-R18.S15-TE-210 |  | Installation Works for Manholes of Telecom Network-[Road 18]-[SW-15] | 7d | 2025-07-23 A | 2025-07-26 A | CO-R18.S15-TE-200, PRO-R18-TE-DL-130 | 100% | 2025-09-15 | 2025-09-22 |  |  | Skilled Labor/Surveyor [6.84 h]; Foreman [6.84 h]; Excavator [56 h]; Manhole Type 1 (2000x1000x1000) [1]; Manhole Type 2 (2000x1000x1000) [1] | 6,410.79 | 6,410.79 | CO-R18.S15-TE-210 | 1 | 1 | MH | HH | Each | MNH | TE | INSTALL-1 | CON | R18 | S15 | TE | TE |
| CO-R18.S15-TE-220 |  | Backfilling Works for Manholes of Telecom Network-[Road 18]-[SW-15] | 7d | 2025-07-27 A | 2025-07-30 A | CO-R18.S15-TE-210 | 100% | 2025-09-24 | 2025-10-01 |  |  | Skilled Labor/Surveyor [6.84 h]; Foreman [6.84 h]; Excavator [56 h]; Manhole Type 2 (2000x1000x1000) [0.4] | 1,283.59 | 1,283.59 | CO-R18.S15-TE-220 | 1 | 1 | MH | BF | Each | MNH | TE | (New)-2 | CON | R18 | S15 | TE | TE |
|  | MV | **Medium Voltage Network** |  | 2025-07-22 | 2025-07-24 |  |  |  |  |  |  |  |  |  |  |  |  |  |  |  |  |  |  |  |  |  |  |  |
|  | CW | **Cabling Works** |  | 2025-07-22 | 2025-07-24 |  |  |  |  |  |  |  |  |  |  |  |  |  |  |  |  |  |  |  |  |  |  |  |
| CO-R18.S15-MV-ML-340 |  | Trench Excavation and Bedding Works for Medium Voltage Network-[Road 18]-[SW-15] | 18d | 2025-07-22 A | 2025-07-23 A | CO-R18.S15-SD-290 SS+3d, CO-R18.S15-SD-290 FF+3d, CO-R18.S15-EW-130, CO-R18.S15-TE-190 SS+3d, CO-R18.S15-TE-190 FF+3d, CO-R18.S16-SL-160 | 100% | 2025-11-02 | 2025-11-22 |  |  | Skilled Labor/Surveyor [17.1 h]; Foreman [17.1 h]; Excavator [144 h]; Excavation for Trench size 40cm wide and 80cm deep ( Maximum 1 cable 33kv) [243.76]; Excavation for Trench size 60cm wide and 80cm deep ( for Max two cables 33 kv) [14.04]; Excavation for Trench size 90cm wide and 80cm deep ( Maximum 3 cable 33kv) [61.19]; Excavation for Trench size 120cm wide and 80cm deep ( Maximum 4cable 33kv) [21.07]; Excavation for Trench size 150cm wide and 80cm deep ( Maximum 4cable 33kv) [78.24]; Duct bank for (2) 33 kv cables [8.03]; Duct bank for (4) 33 kv cables [55.17]; Duct bank for (6) 33 kv cables [25.08] | 28,804.63 | 28,804.63 | CO-R18.S15-MV-ML-340 | 1 | 1 | CW | Ex | LM | CW | MV | EXC | CON | R18 | S15 | MV | MV |
| CO-R18.S15-MV-ML-350 |  | Cable Laying Works for Medium Voltage Network-[Road 18]-[SW-15] | 18d | 2025-07-22 A | 2025-07-23 A | CO-R18.S15-MV-ML-340 SS+3d, CO-R18.S15-MV-ML-340 FF+3d, PRO-R18-MV-DL-120 FF+3d | 100% | 2025-11-05 | 2025-11-25 |  |  | Labor/Helper [164.14 h]; Electrician [164.14 h]; Low Current Technician [164.14 h]; 33kv 3Cx400 mmï¿½ Al XLPE / LLDPE /PVC Cable [1146.58]; 33kv 3Cx400 mmï¿½ Al XLPE /LLDPE/PVC [4.01] | 156,687.46 | 156,687.46 | CO-R18.S15-MV-ML-350 | 1 | 1 | CW | CL | LM | CW | MV | LAY | CON | R18 | S15 | MV | MV |
| CO-R18.S15-MV-ML-360 |  | Trench Backfilling and Compaction Works for Medium Voltage Network-[Road 18]-[SW-15] | 18d | 2025-07-23 A | 2025-07-24 A | CO-R18.S15-MV-ML-350 SS+3d, CO-R18.S15-MV-ML-350 FF+3d | 100% | 2025-11-09 | 2025-11-29 |  |  | Skilled Labor/Surveyor [17.1 h]; Foreman [17.1 h]; Excavator [144 h]; Water Tank [36 h]; 33kv 3Cx400 mmï¿½ Al XLPE / LLDPE /PVC Cable [491.54]; 33kv 3Cx400 mmï¿½ Al XLPE /LLDPE/PVC [1] | 65,862.2 | 65,862.2 | CO-R18.S15-MV-ML-360 | 1 | 1 | CW | BF | LM | CW | MV | BACK | CON | R18 | S15 | MV | MV |
|  | RD | **Road Works** |  | 2025-07-10 | 2026-09-20 |  |  |  |  |  |  |  |  |  |  |  |  |  |  |  |  |  |  |  |  |  |  |  |
|  | RD | **Pre-Bituminous Construction** |  | 2025-07-10 | 2025-08-31 |  |  |  |  |  |  |  |  |  |  |  |  |  |  |  |  |  |  |  |  |  |  |  |
| CO-R18.S15-RD-P-160 |  | Capping and Subgrade Layer for Road Works-[Road 18]-[SW-15] | 15d | 2025-07-10 A | 2025-07-21 A | CO-R18.S15-SD-250, CO-R18.S15-SW-240, CO-R18.S15-TE-190, CO-R18.S15-TE-220, CO-R18.S15-MV-ML-360 SS+3d, CO-R18.S15-MV-ML-360 FF+3d, PRO-R18-RD-DL-220 | 100% | 2025-11-16 | 2025-12-02 |  |  | Labor/Helper [273.57 h]; Skilled Labor/Surveyor [136.79 h]; Loader [120 h]; Grader [120 h]; Road Roller [120 h]; Water Tank [120 h]; 300mm capping layer underneath subgrade , CBR?15% [2072.47]; 300mm thick Subgrade, including subgrade preparation, CBR?25% [2072.47] | 164,225.6 | 164,225.6 | CO-R18.S15-RD-P-160 | 1 | 1 | AB | SG | Sq.m | BS | RD |  | CON | R18 | S15 | RD | RD |
| CO-R18.S15-RD-P-170 |  | Aggregate Base Course Layer for Road Works-[Road 18]-[SW-15] | 18d | 2025-08-27 A | 2025-08-31 A | CO-R18.S15-RD-P-160 SS+3d, CO-R18.S15-RD-P-160 FF+3d, CO-R18.S15-SD-290 SS+3d, CO-R18.S15-SD-290 FF+3d, PRO-R18-RD-DL-230 | 100% | 2025-11-19 | 2025-12-09 |  |  | Labor/Helper [328.29 h]; Skilled Labor/Surveyor [164.14 h]; Foreman [164.14 h]; Loader [144 h]; Grader [144 h]; Road Roller [144 h]; Aggregate base course 200mm thick after compaction in two layers(Grading 1); CBR?80%; including watering, compaction and testing [1381.31] | 114,351.56 | 114,351.56 | CO-R18.S15-RD-P-170 | 1 | 1 | AB | BA | Sq.m | BS | RD |  | CON | R18 | S15 | RD | RD |

| ID | WBS | Activity | Duration | Start | Finish | Predecessors | Complete | Planned start | Planned finish | Resources | Cost | Actual cost | Activity ID N | Seq | New Seq | 02- Network-WBS | 03- Activity | 04-UOM | 05-Discipline | 01- Network | 08 Stage | 09 Roads | 10 side Walk | Discipline | New Discipline | 07-Weightage System |
| --- | --- | --- | --- | --- | --- | --- | --- | --- | --- | --- | --- | --- | --- | --- | --- | --- | --- | --- | --- | --- | --- | --- | --- | --- | --- | --- |
|  | LS | **Pavement Works** |  | 2026-08-25 | 2026-09-20 |  |  |  |  |  |  |  |  |  |  |  |  |  |  |  |  |  |  |  |  |  |
| CO-R18.S15-RD-P-140 |  | Fixing of Curbstone for Sidewalks Pavement-[Road 18]-[SW-15] | 18d | 2026-08-25 A | 2026-08-31 A | CO-R18.S15-RD-P-170 SS+3d, CO-R18.S15-RD-P-170 FF+3d, PRO-R18-RD-DL-190 | 100% | 2025-11-23 | 2025-12-13 | Labor/Helper [328.29 h]; Block Mason [984.87 h]; Precast Concrete Kerb, Type K1 [765.39]; Precast Concrete Kerb, Type L1 [1515.73] | 93,641.59 | 93,641.59 | CO-R18.S15-RD-P-140 | 1 | 1 | LS | CR | LM | LAND | RD | CON | R18 | S15 | RD | RD |  |
| CO-R18.S15-RD-P-150 |  | Fixing of Interlock Tiles for Sidewalks Pavement-[Road 18]-[SW-15] | 18d | 2026-09-02 A | 2026-09-20 A | CO-R18.S15-RD-P-140 SS+3d, CO-R18.S15-RD-P-140 FF+3d, PRO-R18-RD-DL-180 | 100% | 2025-11-26 | 2025-12-16 | Labor/Helper [328.29 h]; Block Mason [984.87 h]; Interlocking block pavers for sidewalk/footpath 60mm thick on and including 30mm Sand Bedding, 200mm Aggregate subbase, all in accordance with authority standards and complete as per specifications [1365.26]; Extraover for Pedestrian ramps [4.01] | 67,183.57 | 67,183.57 | CO-R18.S15-RD-P-150 | 1 | 1 | LS | IL | Sq.m | LAND | RD | CON | R18 | S15 | RD | RD |  |
|  | SW_16 | **SW_16** |  | 2025-02-21 | 2026-12-21 |  |  |  |  |  |  |  |  |  |  |  |  |  |  |  |  |  |  |  |  |  |
|  | EW | **Earthworks** |  | 2025-02-21 | 2025-03-02 |  |  |  |  |  |  |  |  |  |  |  |  |  |  |  |  |  |  |  |  |  |
|  | EW | **Earthworks** |  | 2025-02-21 | 2025-03-02 |  |  |  |  |  |  |  |  |  |  |  |  |  |  |  |  |  |  |  |  |  |
| CO-R18.S16-EW-120 |  | Roadway Excavation Works Upto Design Level for Earthworks-[Road 18]-[SW-16] | 10d | 2025-02-21 A | 2025-02-26 A | ENG-MS-RD-A-10, ENG-SH-RD-A-100, CO-R18.S15-EW-120 | 100% | 2025-02-20 | 2025-03-04 | Labor/Helper [218.86 h]; Skilled Labor/Surveyor [27.36 h]; Foreman [27.36 h]; Dump Truck [192 h]; Water Tank [192 h]; Dozer [192 h]; Roadway Excavation for cuttings; on any type of material for all depths including trimming and Preparation of excavated surfaces and disposal. [9753.47] | 62,746.67 | 62,746.67 | CO-R18.S16-EW-120 | 2 | 2 | EW | Ex | Cub.m | EW | EW | CON | R18 | S16 | EW | EW |  |
| CO-R18.S16-EW-130 |  | Embankments Works Upto Design Level for Earthworks-[Road 18]-[SW-16] | 12d | 2025-02-27 A | 2025-03-02 A | CO-R18.S16-EW-120, ENG-MS-RD-A-10, ENG-SH-RD-A-100 | 100% | 2025-03-05 | 2025-03-18 | Labor/Helper [683.93 h]; Skilled Labor/Surveyor [85.49 h]; Foreman [85.49 h]; Dump Truck [600 h]; Water Tank [600 h]; Dozer [600 h]; Embankments to the ROW, with suitable material other than top soil or rock according to specifications [16418.3] | 135,800.83 | 135,800.83 | CO-R18.S16-EW-130 | 2 | 2 | EW | BF | Cub.m | EW | EW | CON | R18 | S16 | EW | EW |  |
|  | SW | **Sewage Network** |  | 2025-04-29 | 2025-09-17 |  |  |  |  |  |  |  |  |  |  |  |  |  |  |  |  |  |  |  |  |  |
|  | ML | **Main Line Sections** |  | 2025-04-29 | 2025-05-19 |  |  |  |  |  |  |  |  |  |  |  |  |  |  |  |  |  |  |  |  |  |
| CO-R18.S16-SW-220 |  | Trench Excavation and Bedding Works for Main Lines of Sewage Network-[Road 18]-[SW-16] | 12d | 2025-04-29 A | 2025-05-19 A | CO-R18.S16-EW-130, ENG-MS-SW-ML-A-110, ENG-SH-SW-ML-A-110, CO-R18.S15-SW-220 | 100% | 2025-03-22 | 2025-04-08 | Labor/Helper [109.43 h]; Foreman [109.43 h]; Excavator [96 h]; Nominal bore : 200mm; Depth : 0.0m - 1.5m [3.01]; Nominal bore : 200mm; Depth : 1.5m - 2.5m [6.02]; Nominal bore : 200mm; Depth : 2.5m - 3.5m [16.05]; Nominal bore : 200mm; Depth : 3.5m - 4.5m [11.03]; Nominal bore : 200mm; Depth : 4.5m -5.5m [6.02]; Nominal bore : 200mm; Depth : 5.5m - 6.5m [7.02] | 16,010.63 | 16,010.63 | CO-R18.S16-SW-220 | 2 | 2 | ML | Ex | LM | ML | SW | CON | R18 | S16 | SW | SW | EX |
| CO-R18.S16-SW-230 |  | Pipes Laying Works for Main Lines of Sewage Network-[Road 18]-[SW-16] | 12d | 2025-04-30 A | 2025-05-19 A | CO-R18.S16-SW-220, PRO-R18-SW-DL-150 | 100% | 2025-04-24 | 2025-05-07 | Labor/Helper [218.86 h]; Skilled Labor/Surveyor [11.4 h]; Foreman [11.4 h]; Plumber [109.43 h]; Excavator [96 h]; Nominal bore : 200mm; Depth : 0.0m - 1.5m [10.03]; Nominal bore : 200mm; Depth : 1.5m - 2.5m [18.06]; Nominal bore : 200mm; Depth : 2.5m - 3.5m [47.15]; Nominal bore : 200mm; Depth : 3.5m - 4.5m [35.11]; Nominal bore : 200mm; Depth : 4.5m -5.5m [17.05]; Nominal bore : 200mm; Depth : 5.5m - 6.5m [23.07] | 49,484.98 | 49,484.98 | CO-R18.S16-SW-230 | 2 | 2 | ML | PL | LM | ML | SW | CON | R18 | S16 | SW | SW | PIPE |
| CO-R18.S16-SW-240 |  | Trench Backfilling and Compaction Works for Main Lines of Sewage Network-[Road 18]-[SW-16] | 10d | 2025-05-03 A | 2025-05-17 A | CO-R18.S16-SW-230, CO-R18.S16-SW-300 FF, CO-R18.S15-SW-240 | 100% | 2025-05-18 | 2025-05-28 | Skilled Labor/Surveyor [11.4 h]; Foreman [11.4 h]; Excavator [96 h]; Nominal bore : 200mm; Depth : 0.0m - 1.5m [1]; Nominal bore : 200mm; Depth : 1.5m - 2.5m [3.01]; Nominal bore : 200mm; Depth : 2.5m - 3.5m [8.03]; Nominal bore : 200mm; Depth : 3.5m - 4.5m [6.02]; Nominal bore : 200mm; Depth : 4.5m -5.5m [3.01]; Nominal bore : 200mm; Depth : 5.5m - 6.5m [4.01] | 8,383.65 | 8,383.65 | CO-R18.S16-SW-240 | 2 | 2 | ML | BF | LM | ML | SW | CON | R18 | S16 | SW | SW | BACK |
|  | 1 | **Manholes** |  | 2025-06-10 | 2025-09-17 |  |  |  |  |  |  |  |  |  |  |  |  |  |  |  |  |  |  |  |  |  |
| CO-R18.S16-SW-250 |  | Excavation Works for Main Line Manholes of Sewage Network-[Road 18]-[SW-16] | 1d | 2025-06-10 A | 2025-06-10 A | CO-R18.S16-SW-230 SS | 100% | 2025-04-24 | 2025-04-24 | Labor/Helper [18.24 h]; Skilled Labor/Surveyor [9.12 h]; Excavator [16 h]; Depth: 1.5 - 2.5m [1] | 7,339.01 | 7,339.01 | CO-R18.S16-SW-250 | 2 | 2 |  |  |  |  | SW | CON | R18 | S16 | SW | SW | EX |
| CO-R18.S16-SW-260 |  | Installation RC Footing Works for Main Line Manholes of Sewage Network-[Road 18]-[SW-16] | 2d | 2025-06-11 A | 2025-06-12 A | CO-R18.S16-SW-250, PRO-R18-SW-DL-160 | 100% | 2025-04-26 | 2025-04-27 | Cons. Carpenter [72.95 h]; Steel Fixer [72.95 h]; Depth: 1.5 - 2.5m [0.4] | 2,926.62 | 2,926.62 | CO-R18.S16-SW-260 | 2 | 2 |  |  |  |  | SW | CON | R18 | S16 | SW | SW | RC F |
| CO-R18.S16-SW-270 |  | Install Grp Liner Wall Works for Main Line Manholes of Sewage Network-[Road 18]-[SW-16] | 4d | 2025-06-17 A | 2025-06-22 A | CO-R18.S16-SW-260 | 100% | 2025-04-28 | 2025-05-01 | Labor/Helper [72.95 h]; Plumber [72.95 h]; Depth: 1.5 - 2.5m [3.01] | 22,016.02 | 22,016.02 | CO-R18.S16-SW-270 | 2 | 2 |  |  |  |  | SW | CON | R18 | S16 | SW | SW | LP |
| CO-R18.S16-SW-290 |  | Backfilling Works for Main Line Manholes of Sewage Network-[Road 18]-[SW-16] | 4d | 2025-06-24 A | 2025-06-28 A | CO-R18.S16-SW-280 | 100% | 2025-05-04 | 2025-05-07 | Labor/Helper [72.95 h]; Skilled Labor/Surveyor [36.48 h]; Excavator [64 h]; Depth: 1.5 - 2.5m [1] | 7,339.01 | 7,339.01 | CO-R18.S16-SW-290 | 2 | 2 |  |  |  |  | SW | CON | R18 | S16 | SW | SW | BACK |
| CO-R18.S16-SW-280 |  | Pouring Grp Liner Wall Works for Main Line Manholes of Sewage Network-[Road 18]-[SW-16] | 1d | 2025-09-16 A | 2025-09-16 A | CO-R18.S16-SW-270 | 100% | 2025-05-03 | 2025-05-03 | Cons. Carpenter [36.48 h]; Steel Fixer [36.48 h]; Depth: 1.5 - 2.5m [0.2] | 1,463.31 | 1,463.31 | CO-R18.S16-SW-280 | 2 | 2 |  |  |  |  | SW | CON | R18 | S16 | SW | SW | (New) |
| CO-R18.S16-SW-300 |  | Testing Works for Main Line Manholes of Sewage Network-[Road 18]-[SW-16] | 1d | 2025-09-17 A | 2025-09-17 A | CO-R18.S16-SW-290 | 100% | 2025-05-08 | 2025-05-08 | Labor/Helper [18.24 h]; Plumber [18.24 h]; Depth: 1.5 - 2.5m [0.2] | 1,463.31 | 1,463.31 | CO-R18.S16-SW-300 | 2 | 2 |  |  |  |  | SW | CON | R18 | S16 | SW | SW | T&COV |
|  | SD | **Storm Drainage Network** |  | 2025-05-01 | 2026-07-13 |  |  |  |  |  |  |  |  |  |  |  |  |  |  |  |  |  |  |  |  |  |
|  | ML | **Main Line Sections** |  | 2025-05-01 | 2025-06-04 |  |  |  |  |  |  |  |  |  |  |  |  |  |  |  |  |  |  |  |  |  |
| CO-R18.S16-SD-240 |  | Pipes Laying Works for Main Lines of Storm Drainage Network-[Road 18]-[SW-16] | 20d | 2025-05-01 A | 2025-06-02 A | CO-R18.S16-SD-230 | 100% | 2025-06-02 | 2025-06-29 | Labor/Helper [364.77 h]; Skilled Labor/Surveyor [18.24 h]; Foreman [18.24 h]; Plumber [182.38 h]; Excavator [160 h]; Pipe with diameter 400mm ; depth: 0.0m - 1.5m [208.65]; Pipe with diameter 400mm ; depth: 1.51m - 2.5m [222.7]; Pipe with diameter 500mm ; depth: 1.51m - 2.5m [522.63]; Pipe with diameter 600mm ; depth: 1.51m - 2.5m [38.12]; Pipe with diameter 700mm ; depth: 1.51m - 2.5m [66.21]; Pipe with diameter 900mm ; depth: 1.51m - 2.5m [212.66]; Pipe with diameter 900mm ; depth: 2.51 - 3.5m [48.15] | 514,839.85 | 514,839.85 | CO-R18.S16-SD-240 | 2 | 2 | ML | PL | LM | ML | SD | CON | R18 | S16 | SD | SD | PIPE |
| CO-R18.S16-SD-230 |  | Trench Excavation and Bedding Works for Main Lines of Storm Drainage Network-[Road 18]-[SW-16] | 10d | 2025-05-03 A | 2025-05-15 A | CO-R18.S16-EW-130, CO-R18.S16-EW-120, CO-R18.S16-SW-240 SS+3d, CO-R18.S16-SW-240 FF+3d | 100% | 2025-05-21 | 2025-06-01 | Skilled Labor/Surveyor [13.68 h]; Foreman [13.68 h]; Excavator [112 h]; Pipe with diameter 400mm ; depth: 0.0m - 1.5m [69.22]; Pipe with diameter 400mm ; depth: 1.51m - 2.5m [74.23]; Pipe with diameter 500mm ; depth: 1.51m - 2.5m [106.33]; Pipe with diameter 600mm ; depth: 1.51m - 2.5m [13.04]; Pipe with diameter 700mm ; depth: 1.51m - 2.5m [23.07]; Pipe with diameter 900mm ; depth: 1.51m - 2.5m [71.22]; Pipe with diameter 900mm ; depth: 2.51 - 3.5m [16.05] | 149,287.18 | 149,287.18 | CO-R18.S16-SD-230 | 2 | 2 | ML | Ex | LM | ML | SD | CON | R18 | S16 | SD | SD | EX |
| CO-R18.S16-SD-250 |  | Trench Backfilling and Compaction Works for Main Lines of Storm Drainage Network-[Road 18]-[SW-16] | 20d | 2025-05-19 A | 2025-06-04 A | CO-R18.S16-SD-240 SS+3d, CO-R18.S16-SD-240 FF+3d, CO-R18.S16-SD-240, CO-R18.S16-SD-340 FF, CO-R18.S15-SD-250 | 100% | 2025-07-20 | 2025-08-11 | Skilled Labor/Surveyor [18.24 h]; Foreman [18.24 h]; Excavator [160 h]; Pipe with diameter 400mm ; depth: 0.0m - 1.5m [34.11]; Pipe with diameter 600mm ; depth: 1.51m - 2.5m [6.02]; Pipe with diameter 700mm ; depth: 1.51m - 2.5m [11.03]; Pipe with diameter 900mm ; depth: 1.51m - 2.5m [35.11]; Pipe with diameter 900mm ; depth: 2.51 - 3.5m [8.03] | 45,221.67 | 45,221.67 | CO-R18.S16-SD-250 | 2 | 2 | ML | BF | LM | ML | SD | CON | R18 | S16 | SD | SD | BACK |

| ID | WBS | Activity | Duration | Start | Finish | Predecessors | Complete | Planned start | Planned finish | Total float | Free float | Resources | Cost | Actual cost | Activity ID N | Seq | New Seq | 01- Network | 07-Weightage System | 08 Stage | 09 Roads | 10 side Walk | Discipline | New Discipline | 02- Network-WBS | 03- Activity | 04-UOM | 05-Discipline |
| --- | --- | --- | --- | --- | --- | --- | --- | --- | --- | --- | --- | --- | --- | --- | --- | --- | --- | --- | --- | --- | --- | --- | --- | --- | --- | --- | --- | --- |
|  | MH | **Manholes** |  | 2025-06-01 | 2026-07-13 |  |  |  |  |  |  |  |  |  |  |  |  |  |  |  |  |  |  |  |  |  |  |  |
| CO-R18.S16-SD-300 |  | Trench Excavation and Bedding Works for Manholes of Storm Drainage Network-[Road 18]-[SW-16] | 1d | 2025-06-01 A | 2025-06-02 A | CO-R18.S16-SD-240 SS | 100% | 2025-06-02 | 2025-06-02 |  |  | Labor/Helper [27.36 h]; Skilled Labor/Surveyor [13.68 h]; Excavator [24 h]; MH ; depth: 0.0m - 1.5m [0.15]; MH ; depth: 1.51m - 2.5m [0.3]; MH ; depth: 1.51m - 2.5m [0.15]; MH ; depth: 2.51 - 3.5m [0.3] | 14,987.43 | 14,987.43 | CO-R18.S16-SD-300 | 2 | 2 | SD | EX | CON | R18 | S16 | SD | SD |  |  |  |  |
| CO-R18.S16-SD-310 |  | Install RC Footing Works for Manholes of Storm Drainage Network-[Road 18]-[SW-16] | 1d | 2025-06-02 A | 2025-06-03 A | CO-R18.S16-SD-300 | 100% | 2025-06-03 | 2025-06-03 |  |  | Cons. Carpenter [54.71 h]; Steel Fixer [54.71 h]; MH ; depth: 0.0m - 1.5m [0.05]; MH ; depth: 1.51m - 2.5m [0.1]; MH ; depth: 1.51m - 2.5m [0.05]; MH ; depth: 2.51 - 3.5m [0.1] | 4,996.49 | 4,996.49 | CO-R18.S16-SD-310 | 2 | 2 | SD | RC F | CON | R18 | S16 | SD | SD |  |  |  |  |
| CO-R18.S16-SD-320 |  | Install RC Wall Rings & Slab Works for Manholes of Storm Drainage Network-[Road 18]-[SW-16] | 4d | 2025-06-03 A | 2025-06-04 A | CO-R18.S16-SD-310 | 100% | 2025-06-04 | 2025-06-12 |  |  | Cons. Carpenter [218.86 h]; Steel Fixer [218.86 h]; MH ; depth: 0.0m - 1.5m [0.45]; MH ; depth: 1.51m - 2.5m [1]; MH ; depth: 1.51m - 2.5m [0.45]; MH ; depth: 2.51 - 3.5m [1] | 48,872.29 | 48,872.29 | CO-R18.S16-SD-320 | 2 | 2 | SD | RC W | CON | R18 | S16 | SD | SD |  |  |  |  |
| CO-R18.S16-SD-340 |  | Backfilling Works for Manholes of Storm Drainage Network-[Road 18]-[SW-16] | 7d | 2025-06-11 A | 2025-06-14 A | CO-R18.S16-SD-330 | 100% | 2025-06-15 | 2025-06-22 |  |  | Labor/Helper [191.5 h]; Skilled Labor/Surveyor [95.75 h]; Excavator [168 h]; MH ; depth: 0.0m - 1.5m [0.2]; MH ; depth: 1.51m - 2.5m [0.4]; MH ; depth: 1.51m - 2.5m [0.2]; MH ; depth: 2.51 - 3.5m [0.4] | 19,983.93 | 19,983.93 | CO-R18.S16-SD-340 | 2 | 2 | SD | BACK | CON | R18 | S16 | SD | SD |  |  |  |  |
| CO-R18.S16-SD-330 |  | Testing Works for Manholes of Storm Drainage Network-[Road 18]-[SW-16] | 1d | 2026-06-04 A | 2026-07-13 A | CO-R18.S16-SD-320 | 100% | 2025-06-14 | 2025-06-14 |  |  | Labor/Helper [93.17 h]; Plumber [30.36 h]; MH ; depth: 0.0m - 1.5m [0.1]; MH ; depth: 1.51m - 2.5m [0.2]; MH ; depth: 1.51m - 2.5m [0.1]; MH ; depth: 2.51 - 3.5m [0.2] | 9,991.96 | 9,991.96 | CO-R18.S16-SD-330 | 2 | 2 | SD | T&COV | CON | R18 | S16 | SD | SD |  |  |  |  |
|  | CB | **Catch Basin Sections** |  | 2025-06-10 | 2026-07-13 |  |  |  |  |  |  |  |  |  |  |  |  |  |  |  |  |  |  |  |  |  |  |  |
| CO-R18.S16-SD-260 |  | Trench Excavation and Bedding Works for Catch Basins of Storm Drainage Network-[Road 18]-[SW-16] | 6d | 2025-06-10 A | 2025-06-12 A | CO-R18.S16-EW-130, CO-R18.S16-SD-340 | 100% | 2025-06-23 | 2025-06-29 |  |  | Skilled Labor/Surveyor [5.7 h]; Foreman [5.7 h]; Excavator [48 h]; Pipe with diameter 300mm ; depth: 0 - 1.5m [51.16]; Pipe with diameter 400mm ; depth: 0 - 1.5m [3.01] | 12,847.1 | 12,847.1 | CO-R18.S16-SD-260 | 2 | 2 | SD | EX | CON | R18 | S16 | SD | SD | CB | Ex | Each | CB |
| CO-R18.S16-SD-290 |  | Trench Backfilling and Compaction Works for Catch Basins of Storm Drainage Network-[Road 18]-[SW-16] | 7d | 2025-06-15 A | 2025-06-23 A | CO-R18.S16-SD-280 | 100% | 2025-07-19 | 2025-07-26 |  |  | Skilled Labor/Surveyor [6.84 h]; Foreman [6.84 h]; Excavator [56 h]; Pipe with diameter 300mm ; depth: 0 - 1.5m [69.22]; Pipe with diameter 400mm ; depth: 0 - 1.5m [4.01] | 17,363.65 | 17,363.65 | CO-R18.S16-SD-290 | 2 | 2 | SD | BACK | CON | R18 | S16 | SD | SD | CB | BF | Each | CB |
| CO-R18.S16-SD-270 |  | Installation and Pipes Laying Connection Works for Catch Basins of Storm Drainage Network-[Road 18]-[SW-16] | 7d | 2025-06-17 A | 2025-06-22 A | CO-R18.S16-SD-260, CO-R18.S15-SD-270 | 100% | 2025-07-06 | 2025-07-13 |  |  | Labor/Helper [255.34 h]; Skilled Labor/Surveyor [13.68 h]; Foreman [13.68 h]; Excavator [112 h]; Pipe with diameter 300mm ; depth: 0 - 1.5m [154.48]; Pipe with diameter 400mm ; depth: 0 - 1.5m [10.03] | 39,092.73 | 39,092.73 | CO-R18.S16-SD-270 | 2 | 2 | SD | INSTALL | CON | R18 | S16 | SD | SD | CB | CB | Each | CB |
| CO-R18.S16-SD-280 |  | Testing Works for Catch Basins of Storm Drainage Network-[Road 18]-[SW-16] | 4d | 2026-06-04 A | 2026-07-13 A | CO-R18.S16-SD-270, CO-R18.S16-SD-240 | 100% | 2025-07-14 | 2025-07-17 |  |  | Labor/Helper [93.17 h]; Skilled Labor/Surveyor [18.23 h]; Foreman [19.63 h]; Plumber [36.48 h]; Excavator [32 h]; Pipe with diameter 300mm ; depth: 0 - 1.5m [34.11]; Pipe with diameter 400mm ; depth: 0 - 1.5m [1] | 8,248.86 | 8,248.86 | CO-R18.S16-SD-280 | 2 | 2 | SD | TEST | CON | R18 | S16 | SD | SD | CB | PL | Each | CB |
|  | SL | **Street Lighting Network** |  | 2025-07-08 | 2026-12-21 |  |  |  |  |  |  |  |  |  |  |  |  |  |  |  |  |  |  |  |  |  |  |  |
|  | LP | **Lighting Poles Works** |  | 2025-07-08 | 2026-12-14 |  |  |  |  |  |  |  |  |  |  |  |  |  |  |  |  |  |  |  |  |  |  |  |
| CO-R18.S16-SL-100 |  | Foundation Excavation Works for Lighting Poles of Street Lighting Network-[Road 18]-[SW-16] | 12d | 2025-07-08 A | 2025-07-10 A | CO-R18.S15-IR-140 SS+3d, CO-R18.S15-IR-170, CO-R18.S16-EW-120, CO-R18.S16-EW-130, ENG-MS-SL-A-110, ENG-SH-SL-A-110, PRO-SL-1DL-110 | 100% | 2025-08-30 | 2025-09-11 |  |  | Lighting poles with one arm, including the power distribution box, screws, cables, 12 meters in height. [1] | 1,949.38 | 1,949.38 | CO-R11.S07-SL-100 | 2 | 2 | SL | EX | CON | R16 | S16 | SL | SL | LP | Ex | Each | POL |
| CO-R18.S16-SL-110 |  | Installation Works for Lighting Poles Foundation of Street Lighting Network-[Road 18]-[SW-16] | 12d | 2025-07-11 A | 2025-07-13 A | CO-R18.S16-SL-100, PRO-R18-SL-DL-190 FF+3d | 100% | 2025-09-13 | 2025-09-27 |  |  | Reinforced concrete foundation, for 12m high lighting columns With Drawpits [30.09] | 11,179.56 | 11,179.56 | CO-R11.S07-SL-110 | 2 | 2 | SL | INSTALL | CON | R16 | S16 | SL | SL | LP | LPF | Each | POL |
| CO-R18.S16-SL-120 |  | Installation Works for Lighting Poles of Street Lighting Network-[Road 18]-[SW-16] | 17.5d | 2025-09-10 A | 2025-09-10 A | CO-R18.S16-SL-110, CO-R18.S16-SL-160, PRO-R18-SL-DL-200 FF+3d | 100% | 2025-11-02 | 2025-11-22 |  |  | Lighting poles with one arm, including the power distribution box, screws, cables, 12 meters in height. [17.05] | 33,146.56 | 33,146.56 | CO-R11.S07-SL-120 | 2 | 2 | SL | POLES | CON | R16 | S16 | SL | SL | LP | LP | Each | POL |
| CO-R18.S16-SL-210 |  | Backfilling Works for Lighting Poles of Street Lighting Network-[Road 18]-[SW-16] | 12d | 2025-09-10 A | 2025-09-10 A | CO-R18.S16-SL-120 SS, CO-R18.S16-SL-120 FF | 100% | 2025-11-08 | 2025-11-22 |  |  | Lighting poles with one arm, including the power distribution box, screws, cables, 12 meters in height. [6.02] | 11,699.33 | 11,699.33 | CO-R11.S07-SL-210 | 2 | 2 | SL | BACK | CON | R16 | S16 | SL | SL |  |  |  |  |
| CO-R18.S16-SL-130 |  | Installation Works for Lighting Fixtures With Drop Wire of Street Lighting Network-[Road 18]-[SW-16] | 18d | 2026-11-24 | 2026-12-14 | CO-R18.S16-SL-120 SS+5d, CO-R18.S16-SL-120 FF+5d, CO-R18.S16-SL-200 FF, PRO-R18-SL-DL-220 FF+3d |  |  |  | -51d | 85d | Street Lighting( LED) Luminaire,(Type C) complete with control gear and lamp, ?.17000 Lumen [30.09] | 18,407.27 |  | CO-R11.S07-SL-130 | 2 | 2 | SL | INSTALL | CON | R16 | S16 | SL | SL | LP | LPA | Each | POL |
| CO-R18.S16-SL-200 |  | Testing Works for Lighting Poles of Street Lighting Network-[Road 18]-[SW-16] | 5d | 2026-11-24 | 2026-11-29 | CO-R18.S16-SL-210, CO-R18.S16-SL-120 |  |  |  | -38d | 13d | Lighting poles with one arm, including the power distribution box, screws, cables, 12 meters in height. [6.02] | 11,699.33 |  | CO-R11.S07-SL-200 | 2 | 2 | SL | TESTING | CON | R16 | S16 | SL | SL |  |  |  |  |
|  | CW | **Cabling Works** |  | 2025-07-14 | 2025-07-21 |  |  |  |  |  |  |  |  |  |  |  |  |  |  |  |  |  |  |  |  |  |  |  |
| CO-R18.S16-SL-140 |  | Trench Excavation and Bedding Works for Street Lighting Network-[Road 18]-[SW-16] | 10d | 2025-07-14 A | 2025-07-16 A | CO-R18.S16-SL-110 | 100% | 2025-09-28 | 2025-10-08 |  |  |  |  |  | CO-R11.S07-SL-140 | 2 | 2 | SL | EXC | CON | R16 | S16 | SL | SL | CW | Ex | LM | CB |
| CO-R18.S16-SL-150 |  | Cable Laying Works for Street Lighting Network-[Road 18]-[SW-16] | 10d | 2025-07-17 A | 2025-07-18 A | CO-R18.S16-SL-140, PRO-R18-SL-DL-180 FF+3d | 100% | 2025-10-09 | 2025-10-20 |  |  | Supply, installation , test and operation of cables, Copper, (4Cx25mmï¿½,Cu/XLPE/SWA/PVC +1x16mmï¿½ PVC/PVC) [1142.57] | 54,719.4 | 54,719.4 | CO-R11.S07-SL-150 | 2 | 2 | SL | LAYING | CON | R16 | S16 | SL | SL | CW | CL | LM | CB |
| CO-R18.S16-SL-160 |  | Trench Backfilling and Compaction Works for Street Lighting Network-[Road 18]-[SW-16] | 10d | 2025-07-19 A | 2025-07-21 A | CO-R18.S16-SL-150 | 100% | 2025-10-21 | 2025-11-01 |  |  | Supply, installation , test and operation of cables, Copper, (4Cx25mmï¿½,Cu/XLPE/SWA/PVC +1x16mmï¿½ PVC/PVC) [88.28] | 4,227.57 | 4,227.57 | CO-R11.S07-SL-160 | 2 | 2 | SL | BACK | CON | R16 | S16 | SL | SL | CW | BF | LM | CB |
|  | DPB | **Distrubution Panel Boards** |  | 2026-11-24 | 2026-12-21 |  |  |  |  |  |  |  |  |  |  |  |  |  |  |  |  |  |  |  |  |  |  |  |
| CO-R18.S16-SL-170 |  | Foundation Excavation Works For Panel Boards of Street Lighting Network-[Road 18]-[SW-16] | 18d | 2026-11-24 | 2026-12-14 | CO-R18.S16-EW-130, ENG-MS-SL-A-110, ENG-SH-SL-A-110 |  |  |  | -57d | 0d |  |  |  | CO-R11.S07-SL-170 | 2 | 2 | SL | EXC | CON | R16 | S16 | SL | SL | DB | Ex | Each | DS |
| CO-R18.S16-SL-180 |  | Installation Works for Panel Board Concrete Foundations of Street Lighting Network-[Road 18]-[SW-16] | 18d | 2026-11-28 | 2026-12-17 | CO-R18.S16-SL-170 SS+3d, CO-R18.S16-SL-170 FF+3d |  |  |  | -57d | 0d |  |  |  | CO-R11.S07-SL-180 | 2 | 2 | SL | INSTALL | CON | R16 | S16 | SL | SL | DB | PBF | Each | DS |
| CO-R18.S16-SL-220 |  | A wall of concrete blocks to install the KWH meter of Street Lighting Network-[Road 18]-[SW-16] | 18d | 2026-11-28 | 2026-12-17 | CO-R18.S16-SL-180 SS, CO-R18.S16-SL-180 FF |  |  |  | -54d | 143.5d | Road crossing ducts, 4 way (4 x 100mm PVC) [65.2]; Drawpit with medium duty steel cover, size 900x900x1200mm, Type 4 [6.02] | 23,964.37 |  | CO-R11.S07-SL-220 | 2 | 2 | SL | wall | CON | R16 | S16 | SL | SL | DB |  | Each | DS |
| CO-R18.S16-SL-190 |  | Installation Works for Lighting Panel Boards of Street Lighting Network-[Road 18]-[SW-16] | 18d | 2026-12-01 | 2026-12-21 | CO-R18.S16-SL-180 SS+3d, CO-R18.S16-SL-180 FF+3d |  |  |  | -57d | 140.5d |  |  |  | CO-R11.S07-SL-190 | 2 | 2 | SL | INST BO | CON | R16 | S16 | SL | SL | DB | PB | Each | DS |

| ID | WBS | Activity | Duration | Start | Finish | Predecessors | Complete | Planned start | Planned finish | Total float | Free float | Resources | Cost | Actual cost | Activity ID N | Seq | New Seq | 02- Network-WBS | 03- Activity | 04-UOM | 05-Discipline | 01- Network | 07-Weightage System | 08 Stage | 09 Roads | 10 side Walk | Discipline | New Discipline |
| --- | --- | --- | --- | --- | --- | --- | --- | --- | --- | --- | --- | --- | --- | --- | --- | --- | --- | --- | --- | --- | --- | --- | --- | --- | --- | --- | --- | --- |
|  | PW | **Potable Water Network** |  | 2025-06-19 | 2026-12-14 |  |  |  |  |  |  |  |  |  |  |  |  |  |  |  |  |  |  |  |  |  |  |  |
|  | ML | **Main Line Sections** |  | 2025-06-19 | 2025-07-07 |  |  |  |  |  |  |  |  |  |  |  |  |  |  |  |  |  |  |  |  |  |  |  |
| CO-R18.S16-PW-230 |  | Trench Excavation and Bedding Works for Main Lines of Potable Water Network-[Road 18]-[SW-16] | 6d | 2025-06-19 A | 2025-07-07 A | CO-R18.S16-EW-130, CO-R18.S16-EW-120, CO-R18.S16-SW-240, CO-R18.S16-SD-250 | 100% | 2025-08-12 | 2025-08-18 |  |  | Skilled Labor/Surveyor [5.7 h]; Foreman [5.7 h]; Excavator [48 h]; Pipe with diameter 200mm; in depth 0.0m - 1.5m [199.62] | 29,636.87 | 29,636.87 | CO-R18.S16-PW-230 | 2 | 2 | ML | Ex | LM | ML | PW | EX | CON | R18 | S16 | PW | PW |
| CO-R18.S16-PW-240 |  | Pipes Laying and accessories for Main Lines of Potable Water Network-[Road 18]-[SW-16] | 5.75d | 2025-06-21 A | 2025-07-07 A | CO-R18.S16-PW-230, PRO-R18-PW-DL-150 FF+3d, PRO-R18-PW-DL-140 FF+3d | 100% | 2025-08-19 | 2025-08-25 |  |  | Labor/Helper [104.87 h]; Skilled Labor/Surveyor [5.7 h]; Foreman [5.7 h]; Plumber [52.44 h]; Excavator [46 h]; Pipe with diameter 200mm; in depth 0.0m - 1.5m [500.56] | 74,316.31 | 74,316.31 | CO-R18.S16-PW-240 | 2 | 2 | ML | PL | LM | ML | PW | PIPE | CON | R18 | S16 | PW | PW |
| CO-R18.S16-PW-280 |  | Trench Backfilling and Compaction Works for Main Lines of Potable Water Network-[Road 18]-[SW-16] | 6d | 2025-06-22 A | 2025-07-07 A | CO-R18.S16-PW-240 SS+3d, CO-R18.S16-PW-240 FF+3d | 100% | 2025-08-25 | 2025-09-01 |  |  | Skilled Labor/Surveyor [5.7 h]; Foreman [5.7 h]; Eq. Operator [5.7 h]; Loader [48 h]; Compactor [48 h]; Water Tank [12 h]; Pipe with diameter 200mm; in depth 0.0m - 1.5m [199.62] | 29,636.87 | 29,636.87 | CO-R18.S16-PW-280 | 2 | 2 | ML | BF | LM | ML | PW | BACK | CON | R18 | S16 | PW | PW |
|  | VC | **Valve Chamber** |  | 2026-11-24 | 2026-11-30 |  |  |  |  |  |  |  |  |  |  |  |  |  |  |  |  |  |  |  |  |  |  |  |
| CO-R18.S16-PW-330 |  | Installation Works for Main Line Valves and Valve Chambers of Potable Water Network-[Road 18]-[SW-16] | 6d | 2026-11-24 | 2026-11-30 | CO-R18.S16-PW-240 |  |  |  | -10d | 180d | Labor/Helper [19.51 h]; Plumber [17.95 h]; Gate valves dia(200)mm on pipes with dia (200) mm. [10.03] | 27,122.79 |  | CO-R18.S16-PW-330 | 2 | 2 | ML | VI | Each | ML | PW | INSUL | CON | R18 | S16 | PW | PW |
|  | FH | **Fire Hydrant** |  | 2026-11-24 | 2026-12-14 |  |  |  |  |  |  |  |  |  |  |  |  |  |  |  |  |  |  |  |  |  |  |  |
| CO-R18.S16-PW-250 |  | Excavation Works for Fire Hydrants of Potable Water Network-[Road 18]-[SW-16] | 6d | 2026-11-24 | 2026-11-30 | CO-R18.S16-PW-240 SS+3d, CO-R18.S16-PW-240 FF+3d, CO-R18.S16-EW-130, CO-R18.S16-SW-240 SS+3d, CO-R18.S16-SW-240 FF+3d |  |  |  | -22d | 0d | Skilled Labor/Surveyor [5.61 h]; Foreman [5.61 h]; Excavator [48 h]; 3-outlet fire hydrant (2 x 2.5 inch and 1 x 4 inch) in the form of a separate dry vacuum cylinder [0.3] | 2,320.06 |  | CO-R18.S16-PW-250 | 2 | 2 | FH | Ex | Each | FH | PW | EX | CON | R18 | S16 | PW | PW |
| CO-R18.S16-PW-260 |  | Installation Works for Fire Hydrant of Potable Water Network-[Road 18]-[SW-16] | 6d | 2026-12-01 | 2026-12-07 | CO-R18.S16-PW-250, PRO-R18-PW-DL-160 FF+3d |  |  |  | -22d | 0d | Labor/Helper [107.67 h]; Skilled Labor/Surveyor [5.61 h]; Foreman [5.61 h]; Plumber [107.67 h]; 3-outlet fire hydrant (2 x 2.5 inch and 1 x 4 inch) in the form of a separate dry vacuum cylinder [1] | 7,758.71 |  | CO-R18.S16-PW-260 | 2 | 2 | FH | FH | Each | FH | PW | INSTALL | CON | R18 | S16 | PW | PW |
| CO-R18.S16-PW-270 |  | Trench Backfilling and Compaction Works for Fire Hydrants of Potable Water Network-[Road 18]-[SW-16] | 6d | 2026-12-08 | 2026-12-14 | CO-R18.S16-PW-260 |  |  |  | -22d | 168d | Skilled Labor/Surveyor [5.61 h]; Foreman [5.61 h]; Excavator [48 h]; 3-outlet fire hydrant (2 x 2.5 inch and 1 x 4 inch) in the form of a separate dry vacuum cylinder [0.4] | 3,094.09 |  | CO-R18.S16-PW-270 | 2 | 2 | FH | BF | Each | FH | PW | BACK | CON | R18 | S16 | PW | PW |
|  | TE | **Telecom Network** |  | 2025-07-11 | 2025-07-31 |  |  |  |  |  |  |  |  |  |  |  |  |  |  |  |  |  |  |  |  |  |  |  |
|  | PD | **Ducts Works** |  | 2025-07-11 | 2025-07-21 |  |  |  |  |  |  |  |  |  |  |  |  |  |  |  |  |  |  |  |  |  |  |  |
| CO-R18.S16-TE-170 |  | Trench Excavation and Bedding Works for Ducts of Telecom Network-[Road 18]-[SW-16] | 7d | 2025-07-11 A | 2025-07-13 A | CO-R18.S16-EW-130, CO-R18.S16-SL-160 SS+5d, CO-R18.S16-SL-160 FF+5d, CO-R18.S15-TE-170 | 100% | 2025-10-30 | 2025-11-06 |  |  | Skilled Labor/Surveyor [6.84 h]; Foreman [6.84 h]; Excavator [56 h]; 6-way ducts, 50mm dia. HDPE [27.08]; Road crossing ducts (6-way) [3.01] | 4,220.42 | 4,220.42 | CO-R18.S16-TE-170 | 2 | 2 | PD | Ex | LM | DC | TE | DUCTS | CON | R18 | S16 | TE | TE |
| CO-R18.S16-TE-180 |  | Pipes Laying Works for Ducts of Telecom Network-[Road 18]-[SW-16] | 7d | 2025-07-14 A | 2025-07-17 A | CO-R18.S16-TE-170 | 100% | 2025-11-08 | 2025-11-15 |  |  | Labor/Helper [127.67 h]; Skilled Labor/Surveyor [6.84 h]; Foreman [6.84 h]; Plumber [63.83 h]; Excavator [56 h]; JCB [28 h]; Truck [56 h]; 6-way ducts, 50mm dia. HDPE [163.51]; Road crossing ducts (6-way) [14.04] | 24,775.17 | 24,775.17 | CO-R18.S16-TE-180 | 2 | 2 | PD | PL | LM | DC | TE | DUCTS | CON | R18 | S16 | TE | TE |
| CO-R18.S16-TE-230 |  | Pouring Plain Concrete Above Ducts of Telecom Network-[Road 18]-[SW-16] | 7d | 2025-07-18 A | 2025-07-18 A | CO-R18.S16-TE-180 | 100% | 2025-11-16 | 2025-11-23 |  |  | Skilled Labor/Surveyor [6.84 h]; Foreman [6.84 h]; Cons. Carpenter [127.67 h]; Block Mason [63.83 h]; 6-way ducts, 50mm dia. HDPE [27.08]; Road crossing ducts (6-way) [3.01] | 4,220.42 | 4,220.42 | CO-R18.S16-TE-230 | 2 | 2 | PD | PC | LM | DC | TE | DUCTS | CON | R18 | S16 | TE | TE |
| CO-R18.S16-TE-190 |  | Trench Backfilling and Compaction Works for Ducts of Telecom Network-[Road 18]-[SW-16] | 7d | 2025-07-19 A | 2025-07-21 A | CO-R18.S16-TE-230 | 100% | 2025-11-24 | 2025-12-01 |  |  | Skilled Labor/Surveyor [6.84 h]; Foreman [6.84 h]; Excavator [56 h]; 6-way ducts, 50mm dia. HDPE [54.17]; Road crossing ducts (6-way) [4.01] | 8,098.75 | 8,098.75 | CO-R18.S16-TE-190 | 2 | 2 | PD | BF | LM | DC | TE | DUCTS | CON | R18 | S16 | TE | TE |
|  | MH | **Manholes Works** |  | 2025-07-23 | 2025-07-31 |  |  |  |  |  |  |  |  |  |  |  |  |  |  |  |  |  |  |  |  |  |  |  |
| CO-R18.S16-TE-200 |  | Excavation Works for Manholes of Telecom Network-[Road 18]-[SW-16] | 7d | 2025-07-23 A | 2025-07-24 A | CO-R18.S15-TE-200, CO-R18.S16-TE-170 | 100% | 2025-11-08 | 2025-11-15 |  |  | Skilled Labor/Surveyor [6.84 h]; Foreman [6.84 h]; Excavator [56 h]; Manhole Type 2 (2000x1000x1000) [0.4]; Manhole Type 3 (2000x1000x1000) [0.2] | 1,931 | 1,931 | CO-R18.S16-TE-200 | 2 | 2 | MH | Ex | Each | MNH | TE | EXC | CON | R18 | S16 | TE | TE |
| CO-R18.S16-TE-210 |  | Installation Works for Manholes of Telecom Network-[Road 18]-[SW-16] | 7d | 2025-07-26 A | 2025-07-28 A | CO-R18.S16-TE-200 | 100% | 2025-11-16 | 2025-11-23 |  |  | Skilled Labor/Surveyor [6.84 h]; Foreman [6.84 h]; Excavator [56 h]; Manhole Type 1 (2000x1000x1000) [1]; Manhole Type 2 (2000x1000x1000) [1]; Manhole Type 3 (2000x1000x1000) [1] | 9,656 | 9,656 | CO-R18.S16-TE-210 | 2 | 2 | MH | HH | Each | MNH | TE | INSTALL-1 | CON | R18 | S16 | TE | TE |
| CO-R18.S16-TE-220 |  | Backfilling Works for Manholes of Telecom Network-[Road 18]-[SW-16] | 7d | 2025-07-29 A | 2025-07-31 A | CO-R18.S16-TE-210 | 100% | 2025-11-24 | 2025-12-01 |  |  | Skilled Labor/Surveyor [6.84 h]; Foreman [6.84 h]; Excavator [56 h]; Manhole Type 2 (2000x1000x1000) [0.4]; Manhole Type 3 (2000x1000x1000) [0.2] | 1,931 | 1,931 | CO-R18.S16-TE-220 | 2 | 2 | MH | BF | Each | MNH | TE | (New)-2 | CON | R18 | S16 | TE | TE |
|  | RD | **Road Works** |  | 2025-07-10 | 2026-09-01 |  |  |  |  |  |  |  |  |  |  |  |  |  |  |  |  |  |  |  |  |  |  |  |
|  | RD | **Pre-Bituminous Construction** |  | 2025-07-10 | 2025-08-31 |  |  |  |  |  |  |  |  |  |  |  |  |  |  |  |  |  |  |  |  |  |  |  |
| CO-R18.S16-RD-P-160 |  | Capping and Subgrade Layer for Road Works-[Road 18]-[SW-16] | 18d | 2025-07-10 A | 2025-07-21 A | CO-R18.S16-SD-250, CO-R18.S16-SW-240, CO-R18.S16-PW-280, CO-R18.S16-TE-190, CO-R18.S16-TE-220, CO-R18.S16-SL-160 SS+3d, CO-R18.S16-SL-160 FF+3d | 100% | 2025-12-02 | 2025-12-22 |  |  | Labor/Helper [328.29 h]; Skilled Labor/Surveyor [164.14 h]; Loader [144 h]; Grader [144 h]; Road Roller [144 h]; Water Tank [144 h]; 300mm capping layer underneath subgrade , CBR?15% [2072.47]; 300mm thick Subgrade, including subgrade preparation, CBR?25% [2072.47] | 164,225.6 | 164,225.6 | CO-R18.S16-RD-P-160 | 2 | 2 | AB | SG | Sq.m | BS | RD |  | CON | R18 | S16 | RD | RD |
| CO-R18.S16-RD-P-170 |  | Aggregate Base Course Layer for Road Works-[Road 18]-[SW-16] | 18d | 2025-08-27 A | 2025-08-31 A | CO-R18.S16-RD-P-160 SS+3d, CO-R18.S16-RD-P-160 FF+3d, CO-R18.S16-SD-290 SS+3d, CO-R18.S16-SD-290 FF+3d | 100% | 2025-12-06 | 2025-12-25 |  |  | Labor/Helper [328.29 h]; Skilled Labor/Surveyor [164.14 h]; Foreman [164.14 h]; Loader [144 h]; Grader [144 h]; Road Roller [144 h]; Aggregate base course 200mm thick after compaction in two layers(Grading 1); CBR?80%; including watering, compaction and testing [1381.31] | 114,351.56 | 114,351.56 | CO-R18.S16-RD-P-170 | 2 | 2 | AB | BA | Sq.m | BS | RD |  | CON | R18 | S16 | RD | RD |

| ID | WBS | Activity | Duration | Start | Finish | Predecessors | Complete | Remaining | Planned start | Planned finish | Total float | Free float | Resources | Cost | Actual cost | Activity ID N | Seq | New Seq | 02- Network-WBS | 03- Activity | 04-UOM | 05-Discipline | 01- Network | 08 Stage | 09 Roads | 10 side Walk | Discipline | New Discipline | 07-Weightage System | 05number |
| --- | --- | --- | --- | --- | --- | --- | --- | --- | --- | --- | --- | --- | --- | --- | --- | --- | --- | --- | --- | --- | --- | --- | --- | --- | --- | --- | --- | --- | --- | --- |
|  | LS | **Pavement Works** |  | 2026-08-25 | 2026-09-01 |  |  |  |  |  |  |  |  |  |  |  |  |  |  |  |  |  |  |  |  |  |  |  |  |  |
| CO-R18.S16-RD-P-140 |  | Fixing of Curbstone for Sidewalks Pavement-[Road 18]-[SW-16] | 18d | 2026-08-25 A | 2026-08-31 A | CO-R18.S16-RD-P-170 SS+3d, CO-R18.S16-RD-P-170 FF+3d | 100% |  | 2025-12-09 | 2025-12-29 |  |  | Labor/Helper [328.29 h]; Block Mason [984.87 h]; Precast Concrete Kerb, Type K1 [765.39]; Precast Concrete Kerb, Type L1 [1515.73] | 93,641.59 | 93,641.59 | CO-R18.S16-RD-P-140 | 2 | 2 | LS | CR | LM | LAND | RD | CON | R18 | S16 | RD | RD |  |  |
| CO-R18.S16-RD-P-150 |  | Fixing of Interlock Tiles for Sidewalks Pavement-[Road 18]-[SW-16] | 18d | 2026-08-25 A | 2026-09-01 A | CO-R18.S16-RD-P-140 SS+3d, CO-R18.S16-RD-P-140 FF+3d | 100% |  | 2025-12-13 | 2026-01-01 |  |  | Labor/Helper [328.29 h]; Block Mason [984.87 h]; Interlocking block pavers for sidewalk/footpath 60mm thick on and including 30mm Sand Bedding, 200mm Aggregate subbase, all in accordance with authority standards and complete as per specifications [1365.26]; Extraover for Pedestrian ramps [4.01] | 67,183.57 | 67,183.57 | CO-R18.S16-RD-P-150 | 2 | 2 | LS | IL | Sq.m | LAND | RD | CON | R18 | S16 | RD | RD |  |  |
|  | 3 | **Finishes for Infrastructure Networks** |  | 2025-09-20 | 2027-09-16 |  |  |  |  |  |  |  |  |  |  |  |  |  |  |  |  |  |  |  |  |  |  |  |  |  |
|  | 1 | **Phase 2 Block "J"** |  | 2025-09-20 | 2027-09-16 |  |  |  |  |  |  |  |  |  |  |  |  |  |  |  |  |  |  |  |  |  |  |  |  |  |
|  | 2 | **Road 09 Local 2 ( 2278 LM )** |  | 2026-06-01 | 2027-09-16 |  |  |  |  |  |  |  |  |  |  |  |  |  |  |  |  |  |  |  |  |  |  |  |  |  |
|  | 10 | **Sewage Network** |  | 2026-06-01 | 2027-04-17 |  |  |  |  |  |  |  |  |  |  |  |  |  |  |  |  |  |  |  |  |  |  |  |  |  |
|  | TF | **Testing and Finishes** |  | 2026-06-01 | 2027-04-17 |  |  |  |  |  |  |  |  |  |  |  |  |  |  |  |  |  |  |  |  |  |  |  |  |  |
| CO-R09-SW-TF-100 |  | Final Testing For Main Line of Sewage Network-[Road 09] | 12d | 2026-06-01 A | 2027-03-30 | CO-R09.S01-SW-130, CO-R09.S01-RD-P-100 SS+3d, CO-R09.S01-RD-P-100 FF+3d, CO-R09.S02-RD-P-100 SS+3d, CO-R09.S02-RD-P-100 FF+3d | 95% | 2d | 2026-07-19 | 2026-08-01 | -190d | 0d | Labor/Helper [639.08 h]; Plumber [639.08 h]; Pipe Fitter [1171.72 h]; Nominal bore : 160mm; Depth : 1.5m - 2.5m [28.09]; Nominal bore : 200mm; Depth : 0.0m - 1.5m [16.05]; Nominal bore : 200mm; Depth : 1.5m - 2.5m [42.13]; Nominal bore : 200mm; Depth : 2.5m - 3.5m [62.19]; Nominal bore : 200mm; Depth : 3.5m - 4.5m [72.23]; Nominal bore : 200mm; Depth : 4.5m -5.5m [37.12]; Nominal bore : 200mm; Depth : 5.5m - 6.5m [47.15]; Nominal bore : 250mm; Depth : 4.5m -5.5m [31.1]; Nominal bore : 250mm; Depth : 5.5m - 6.5m [25.08]; Nominal bore : 315mm; Depth : 4.5m -5.5m [25.08]; Nominal bore : 315mm; Depth : 6.5m - 7.5m [28.09]; Depth : 6.5 -7.5m [35.11]; Depth :more than 7.5m [85.27] | 301,477.49 | 286,403.61 | CO-R09-SW-TF-100 |  |  | TF | Test | Each | TF | SW | CON | R09 |  | SW | SW | TEST |  |
| CO-R09-SW-TF-110 |  | Install Manhole Cover Works for External Finishes of Sewage Network-[Road 09] | 12d | 2027-03-31 | 2027-04-13 | PRO-SW-1DL-120, PRO-R09-SW-DL-120 FF+3d, CO-R09-SW-TF-100, CO-R09.S01-RD-P-100, CO-R09.S01-SW-120, ENG-SH-SW-ML-A-110, ENG-SH-SW-ML-A-110 FF, ENG-MS-SW-ML-A-110, ENG-MS-SW-ML-A-110 FF |  |  |  |  | -172d | 0d | Labor/Helper [17.86 h]; Plumber [17.86 h]; Pipe Fitter [17.86 h]; Depth: 1.5 - 2.5m [0.4]; Depth: 3.5 - 4.5m [0.1]; Depth: 4.5 - 5.5m [0.15]; Depth:6.5 - 7.5m [0.35]; Depth: more than 7.5m [0.1]; Depth: 2.5 - 3.5m [0.25]; Depth: 3.5 - 4.5m [0.15]; Depth: 4.5 - 5.5m [0.1]; Depth: 5.5 - 6.5m [0.1] | 41,408.7 |  | CO-R09-SW-TF-110 |  |  | TF | Test | Each | TF | SW | CON | R09 |  | SW | SW |  |  |
| CO-R09-SW-TF-120 |  | Main Manhole Internal Finishes (Benching + Insulation) of Sewage Network-[Road 09] | 12d | 2027-04-04 | 2027-04-17 | CO-R09-SW-TF-110 SS+3d, CO-R09-SW-TF-110 FF+3d, PRO-SW-1DL-140, PRO-R09-SW-DL-130 FF+3d |  |  |  |  | -159d | 0d | Labor/Helper [17.86 h]; Plumber [17.86 h]; Pipe Fitter [17.86 h]; Depth: 1.5 - 2.5m [0.4]; Depth: 3.5 - 4.5m [0.1]; Depth: 4.5 - 5.5m [0.15]; Depth:6.5 - 7.5m [0.35]; Depth: more than 7.5m [0.1]; Depth: 2.5 - 3.5m [0.25]; Depth: 3.5 - 4.5m [0.15]; Depth: 4.5 - 5.5m [0.1]; Depth: 5.5 - 6.5m [0.1] | 41,408.7 |  | CO-R09-SW-TF-120 |  |  | TF | Test | Each | TF | SW | CON | R09 |  | SW | SW |  | 05 num |
|  | 11 | **Storm Drainage Network** |  | 2027-02-28 | 2027-05-02 |  |  |  |  |  |  |  |  |  |  |  |  |  |  |  |  |  |  |  |  |  |  |  |  |  |
|  | TF | **Testing and Finishes** |  | 2027-02-28 | 2027-05-02 |  |  |  |  |  |  |  |  |  |  |  |  |  |  |  |  |  |  |  |  |  |  |  |  |  |
| CO-R09-SD-TF-110 |  | Install Catch Basin Cover Works for External Finishes of Storm Drainage Network-[Road 09] | 16d | 2027-02-28 | 2027-03-21 | CO-R09.S01-SD-170 SS+3d, PRO-SD-1DL-150, PRO-R09-SD-DL-150 FF+3d, CO-R09.S01-RD-P-100 FF+3d, CO-R09.S01-RD-P-100, CO-R09.S01-SD-170 FF+3d |  |  |  |  | -152d | 0d | Labor/Helper [457.47 h]; Foreman [457.47 h]; Pipe with diameter 300mm ; depth: 0 - 1.5m [158.5]; Pipe with diameter 400mm ; depth: 0 - 1.5m [10.03] | 40,026.06 |  | CO-R09-SD-TF-110 |  |  | TF | Test | Each | TF | SD | CON | R09 |  | SD | SD | cover |  |
| CO-R09-SD-TF-100 |  | Testing Work for Pipes of Storm Drainage Network-[Road 09] | 12d | 2027-03-17 | 2027-03-30 | CO-R09.S01-SD-130 SS+3d, PRO-SD-1DL-140, PRO-R09-SD-DL-140 FF+3d, CO-R09.S01-RD-P-100 SS+3d, CO-R09.S01-RD-P-100 FF+3d, CO-R09.S01-SD-130 FF+3d, CO-R09.S01-SD-120 SS, CO-R09.S01-SD-120, ENG-SH-SD-ML-A-110, ENG-MS-SD-ML-A-110, CO-R09.S02-RD-P-100 SS+3d, CO-R09.S02-RD-P-100 FF+3d |  |  |  |  | -190d | 0d | Labor/Helper [358.79 h]; Plumber [340.81 h]; Pipe with diameter 400mm ; depth: 0.0m - 1.5m [13.04]; Pipe with diameter 400mm ; depth: 1.51m - 2.5m [13.04]; Pipe with diameter 600mm ; depth: 0.0m - 1.5m [7.02]; Pipe with diameter 700mm ; depth: 1.51m - 2.5m [14.04]; Pipe with diameter 700mm ; depth: 2.51m - 3.5m [7.02]; Pipe with diameter 800mm ; depth: 1.51m - 2.5m [8.03]; Pipe with diameter 1100mm ; depth: 1.51m - 2.5m [95.3]; Pipe with diameter 1100mm ; depth: 2.51 - 3.5m [24.08]; Pipe with diameter 1200mm ; depth: 1.51m - 2.5m [23.07] | 148,464.13 |  | CO-R09-SD-TF-100 |  |  | TF | Test | Each | TF | SD | CON | R09 |  | SD | SD | TEST |  |
| CO-R09-SD-TF-120 |  | Main Manhole Internal Finishes (Benching + Insulation ) for Storm Drainage Network-[Road 09] | 16d | 2027-04-14 | 2027-05-02 | CO-R09-SD-TF-100 SS+3d, CO-R09-SD-TF-100 FF+3d, PRO-R09-SD-DL-160 FF+3d, PRO-SD-1DL-160, CO-R09-SD-TF-100, CO-R09-SD-TF-110 SS, CO-R09-SD-TF-110, CO-R09-SD-TF-110 FF, CO-R09-SW-TF-110 SS, CO-R09-SW-TF-110, CO-R09-SW-TF-110 FF, ENG-SH-RD-A-100, ENG-SH-RD-A-100 FF, ENG-MS-RD-A-10, ENG-MS-RD-A-10 FF, PRO-R09-SD-DL-100 |  |  |  |  | -172d | 11d | Labor/Helper [468.72 h]; MH ; depth: 0.0m - 1.5m [0.3]; MH ; depth: 1.51m - 2.5m [1]; MH ; depth: 2.51 - 3.5m [0.2]; MH ; depth: 0.0m - 1.5m [0.2]; MH ; depth: 2.51 - 3.5m [0.1]; MH ; depth: 1.51m - 2.5m [0.4]; MH ; depth: 2.51 - 3.5m [0.4]; Access opening with dimensions 1000*1000 mm [18.06]; Single Catch basin [110.34]; Double Catch basin [35.11] | 851,182.49 |  | CO-R09-SD-TF-120 |  |  | TF | Test | Each | TF | SD | CON | R09 |  | SD | SD |  |  |
| CO-R09-SD-TF-130 |  | Catch Basin Internal Finishes (Benching + Insulation ) for Storm Drainage Network-[Road 09] | 16d | 2027-04-14 | 2027-05-02 | CO-R09-SD-TF-110 SS+3d, CO-R09-SD-TF-110 FF+3d, PRO-R09-SD-DL-160 FF+3d, PRO-SD-1DL-160, CO-R09-SD-TF-100 SS, CO-R09-SD-TF-100, CO-R09-SD-TF-100 FF, CO-R09-SD-TF-110, CO-R09-SW-TF-110 SS, CO-R09-SW-TF-110, CO-R09-SW-TF-110 FF, ENG-SH-RD-A-100, ENG-SH-RD-A-100 FF, ENG-MS-RD-A-10, ENG-MS-RD-A-10 FF |  |  |  |  | -117d | 0d | Labor/Helper [285.64 h]; Foreman [112.92 h]; Pipe with diameter 300mm ; depth: 0 - 1.5m [158.5]; Pipe with diameter 400mm ; depth: 0 - 1.5m [10.03] | 40,026.06 |  | CO-R09-SD-TF-130 |  |  | TF | Test | Each | TF | SD | CON | R09 |  | SD | SD | INSUL |  |
|  | 9 | **Potable Water Network** |  | 2027-03-31 | 2027-05-08 |  |  |  |  |  |  |  |  |  |  |  |  |  |  |  |  |  |  |  |  |  |  |  |  |  |
|  | TF | **Testing and Finishes** |  | 2027-03-31 | 2027-05-08 |  |  |  |  |  |  |  |  |  |  |  |  |  |  |  |  |  |  |  |  |  |  |  |  |  |
| CO-R09-PW-TF-110 |  | Testing Work for Main Line of Potable Water Network-[Road 09] | 9d | 2027-03-31 | 2027-04-10 | CO-R09.S02-PW-130, CO-R09-SL-TF-100, CO-R09-SW-TF-100, CO-R09-SD-TF-100 |  |  |  |  | -190d | 0d | Labor/Helper [26.78 h]; Plumber [26.78 h]; Pipe with diameter 160 mm; in depth 1.5m - 3.0m [7.02]; Pipe with diameter 200mm; in depth 0.0m - 1.5m [360.12]; Pipe with diameter 200mm; in depth 1.5m - 3.0m [14.04] | 56,670.82 |  | CO-R09-PW-TF-110 |  |  | TF | Test | LM | TF | PW | CON | R09 |  | PW | PW | TEST |  |
| CO-R09-PW-TF-100 |  | Final Finishes works and Covers for Valves and Valve Chambers of Potable Water Network-[Road 09] | 12d | 2027-04-11 | 2027-04-24 | CO-R09.S01-RD-P-100 FS+3d, PRO-PW-1DL-130, PRO-R09-PW-DL-130 FF+3d, CO-R09.S02-PW-130, CO-R09-PW-TF-110 |  |  |  |  | -177d | 0d | Labor/Helper [26.78 h]; Plumber [26.78 h] |  |  | CO-R09-PW-TF-100 |  |  | TF | Test | Each | TF | PW | CON | R09 |  | PW | PW | T&COV |  |
| CO-R09-PW-TF-120 |  | Fire Hydrant Finishies (S.Box + Safety + Marker Post ) of Potable Water Network-[Road 09] | 12d | 2027-04-25 | 2027-05-08 | CO-R09-PW-TF-100, PRO-PW-1DL-130, PRO-R09-PW-DL-130 FF+3d, CO-R09.S02-PW-160 |  |  |  |  | -177d | 0d |  |  |  | CO-R09-PW-TF-120 |  |  | TF | Test | Each | TF | PW | CON | R09 |  | PW | PW |  |  |
|  | 13 | **Irrigation Network** |  | 2027-03-28 | 2027-04-14 |  |  |  |  |  |  |  |  |  |  |  |  |  |  |  |  |  |  |  |  |  |  |  |  |  |
|  | TF | **Testing and Finishes** |  | 2027-03-28 | 2027-04-14 |  |  |  |  |  |  |  |  |  |  |  |  |  |  |  |  |  |  |  |  |  |  |  |  |  |
| CO-R09-IR-TF-100 |  | Final Testing (pressure tests) of Irrigation Network-[Road 09] | 16d | 2027-03-28 | 2027-04-14 | CO-R09.S01-IR-140, CO-R09.S01-RD-P-100, CO-R09.S02-RD-P-100 |  |  |  |  | -157d | 0d | Labor/Helper [17.86 h]; Plumber [17.86 h]; Pipe Fitter [17.86 h]; 125 mm pipe; depth 0.0m - 1.5m [407.27] | 30,929.64 |  | CO-R09-IR-TF-100 |  |  | TF | Test | LM | TF | IR | CON | R09 |  | IR | IR | TEST |  |

| ID | WBS | Activity | Duration | Start | Finish | Predecessors | Complete | Planned start | Planned finish | Total float | Free float | Resources | Cost | Activity ID N | 02- Network-WBS | 03- Activity | 04-UOM | 05-Discipline | 01- Network | 07-Weightage System | 08 Stage | 09 Roads | Discipline | New Discipline | Seq | New Seq | 10 side Walk | 05number |
| --- | --- | --- | --- | --- | --- | --- | --- | --- | --- | --- | --- | --- | --- | --- | --- | --- | --- | --- | --- | --- | --- | --- | --- | --- | --- | --- | --- | --- |
|  | 12 | **Street Lighting Network** |  | 2027-03-15 | 2027-06-28 |  |  |  |  |  |  |  |  |  |  |  |  |  |  |  |  |  |  |  |  |  |  |  |
|  | TR | **Termination and Testing Works** |  | 2027-03-15 | 2027-06-26 |  |  |  |  |  |  |  |  |  |  |  |  |  |  |  |  |  |  |  |  |  |  |  |
| CO-R09-SL-TF-100 |  | Termination Works For Lighting Poles Cables of Street Lighting Network-[Road 09] | 12d | 2027-03-15 | 2027-03-28 | CO-R09.S01-SL-130, PRO-SL-1DL-130, PRO-R09-SL-DL-130 FF+3d, CO-R09.S02-SL-130 |  |  |  | -215.5d | 0d | Labor/Helper [17.86 h]; Electrician [17.86 h]; Low Current Technician [17.86 h]; Supply, installation , test and operation of cables, Copper, (4Cx25mmï¿½,Cu/XLPE/SWA/PVC +1x16mmï¿½ PVC/PVC) [2449.65] | 117,319.02 | CO-R09-SL-TF-100 | TR | TR | Each | T&F | SL | TERM | CON | R09 | SL | SL |  |  |  |  |
| CO-R09-SL-TF-110 |  | Termination Works For Panel Board Cables of Street Lighting Network-[Road 09] | 10.5d | 2027-06-02 | 2027-06-14 | CO-R09.S01-SL-190, PRO-SL-1DL-170, PRO-R09-SL-DL-170 FF+3d, CO-R09.S01-SL-160, CO-R09.S01-SL-220 |  |  |  | -215.5d | 0d | Package Substation 33000/400V, 500kVA with RMU [1] | 110,416.04 | CO-R09-SL-TF-110 | TR | TR | Each | T&F | SL | TERMINA | CON | R09 | SL | SL |  |  |  |  |
| CO-R09-SL-TF-380 |  | Testing Works For Panel Board Cables of Street Lighting Network-[Road 09] | 10d | 2027-06-14 | 2027-06-26 | CO-R09-SL-TF-110 |  |  |  | -207.5d | 0d | Package Substation 33000/400V, 500kVA with RMU [0.3] | 33,020.96 | CO-R09-SL-TF-380 |  |  |  |  | SL | TEST | CON | R09 | SL | SL |  |  |  |  |
|  | ES | **Earthing System Works** |  | 2027-03-29 | 2027-06-28 |  |  |  |  |  |  |  |  |  |  |  |  |  |  |  |  |  |  |  |  |  |  |  |
| CO-R09-SL-ES-100 |  | Install Earthing System Works for Lighting Poles of Street Lighting Network-[Road 09] | 12d | 2027-03-29 | 2027-04-11 | PRO-SL-1DL-150, PRO-R09-SL-DL-150 FF+3d, CO-R09-SL-TF-100 |  |  |  | -215.5d | 0d | Labor/Helper [17.86 h]; Electrician [17.86 h]; Low Current Technician [17.86 h]; Earthing installation, for Street lighting circuits, including earth rod in plastic chamber [35.11]; Earthing installation Lighting Panales [4.01] | 8,686.93 | CO-R09-SL-ES-100 | ER | EW | Each | T&F | SL | TER | CON | R09 | SL | SL |  |  |  |  |
| CO-R09-SL-ES-110 |  | Install Earthing System Works for Lighting Panel Boards of Street Lighting Network-[Road 09] | 12d | 2027-06-14 | 2027-06-28 | PRO-SL-1DL-150, PRO-R09-SL-DL-150 FF+3d, CO-R09-SL-TF-110 |  |  |  | -215.5d | 0d | Labor/Helper [17.86 h]; Electrician [17.86 h]; Low Current Technician [17.86 h]; Earthing installation, lighting plants. [4.01] | 7,731.13 | CO-R09-SL-ES-110 | ER | EW | Each | T&F | SL | EARTH | CON | R09 | SL | SL |  |  |  |  |
|  | 14 | **Medium Voltage Network** |  | 2027-02-28 | 2027-03-21 |  |  |  |  |  |  |  |  |  |  |  |  |  |  |  |  |  |  |  |  |  |  |  |
|  | TT | **Termination and Testing Works** |  | 2027-02-28 | 2027-03-21 |  |  |  |  |  |  |  |  |  |  |  |  |  |  |  |  |  |  |  |  |  |  |  |
| CO-R09-MV-TF-100 |  | Termination Works of Medium Voltage Network-[Road 09] | 16d | 2027-02-28 | 2027-03-21 | PRO-MV-1DL-120, CO-R09.S01-MV-120, PRO-R09-MV-DL-110 FF+3d, CO-R09.S01-TE-160 |  |  |  | -136d | 0d | Labor/Helper [17.86 h]; Electrician [17.86 h]; Low Current Technician [17.86 h] |  | CO-R09-MV-TF-100 | RMU | TR | Each | TR | MV | TEST | CON | R09 | MV | MV |  |  |  |  |
|  | 1 | **Road Works** |  | 2027-07-12 | 2027-09-16 |  |  |  |  |  |  |  |  |  |  |  |  |  |  |  |  |  |  |  |  |  |  |  |
|  | 1 | **Bituminous Construction** |  | 2027-07-12 | 2027-08-12 |  |  |  |  |  |  |  |  |  |  |  |  |  |  |  |  |  |  |  |  |  |  |  |
| CO-R09-S1-RD-F-100 |  | Application of Prime Coat Layer for Road Works - S.W 01-[Road 09] | 12d | 2027-07-12 | 2027-07-26 | PRO-RD-1DL-120, CO-R09.S01-RD-P-130 |  |  |  | -209.5d | 0d | Labor/Helper [26.78 h]; Insulation Worker [26.78 h]; Bituminous base course(Grading I - Class A), 70mm thick after compaction including Prime Coat (MC1) [2240] | 835,235.18 | CO-R09-S1-RD-F-100 | AB | MC | Sq.m | BS | RD |  | CON | R09 | RD | RD | 11 | 11 | S01 |  |
| CO-R09-S1-RD-F-120 |  | Bituminous Base & Wearing Courses Layers for Road Works- S.W 01-[Road 09] | 12d | 2027-07-15 | 2027-07-29 | PRO-RD-1DL-130, CO-R09-S1-RD-F-100 SS+3d, CO-R09-S1-RD-F-100 FF+3d |  |  |  | -209.5d | 0d | Labor/Helper [26.78 h]; Eq. Operator [26.78 h]; Asphalt Cutter [144 h]; Asphalt Paver [144 h]; Bituminous concrete wearing course, 50 mm thick, after compaction(Grading I - Class A), including tack coat (RC) [1598.99] | 656,391.81 | CO-R09-S1-RD-F-120 | AB | AB | Sq.m | BS | RD |  | CON | R09 | RD | RD | 11 | 11 | S01 |  |
| CO-R09-S2-RD-F-110 |  | Application of Prime Coat Layer for Road Works- S.W 02-[Road 09] | 18d | 2027-07-19 | 2027-08-09 | PRO-R09-RD-DL-160 FF+3d, CO-R09.S02-RD-P-130, CO-R09-S1-RD-F-100 SS |  |  |  | -215.5d | 0d | Labor/Helper [26.78 h]; Insulation Worker [26.78 h]; Bituminous base course(Grading I - Class A), 70mm thick after compaction including Prime Coat (MC1) [2240] | 835,235.18 | CO-R09-S2-RD-F-110 | AB | MC | Sq.m | BS | RD |  | CON | R09 | RD | RD | 12 | 12 | S02 |  |
| CO-R09-S2-RD-F-130 |  | Bituminous Base & Wearing Courses Layers for Road Works- S.W 02-[Road 09] | 18d | 2027-07-22 | 2027-08-12 | CO-R09-S2-RD-F-110 SS+3d, CO-R09-S2-RD-F-110 FF+3d, PRO-R09-RD-DL-170 FF+3d, CO-R09-S1-RD-F-120 SS |  |  |  | -215.5d | 0d | Labor/Helper [26.78 h]; Eq. Operator [26.78 h]; Asphalt Cutter [144 h]; Asphalt Paver [144 h]; Bituminous concrete wearing course, 50 mm thick, after compaction(Grading I - Class A), including tack coat (RC) [1598.99] | 656,391.81 | CO-R09-S2-RD-F-130 | AB | AB | Sq.m | BS | RD |  | CON | R09 | RD | RD | 12 | 12 | S02 |  |
|  | TS | **Traffic Signs Boards and Roads Marking** |  | 2027-07-29 | 2027-09-16 |  |  |  |  |  |  |  |  |  |  |  |  |  |  |  |  |  |  |  |  |  |  |  |
| CO-R09-S1-RD-F-140 |  | Application of Road Marking Works For Road Works- S.W 01-[Road 09] | 12d | 2027-07-29 | 2027-08-12 | PRO-RD-1DL-170, ENG-SH-MRK-A-110, CO-R09-S1-RD-F-120, ENG-SH-RD-A-100, ENG-MS-MRK-A-10, ENG-MS-RD-A-10 |  |  |  | -197.5d | 0d | Labor/Helper [26.78 h]; Painter [26.78 h]; Retroreflective Thermoplastic White, Traffic lines [1206.77]; Retroreflective Thermoplastic Yellow, Traffic lines [184.58]; Retroreflective raised pavement markers(Type A) [235.74] | 48,689.5 | CO-R09-S1-RD-F-140 | RM | RM | LM | TRF | RD |  | CON | R09 | RD | RD | 11 | 11 | S01 |  |
| CO-R09-S1-RD-F-150 |  | Installation Works of Traffic Signs Boards For Road Works- S.W 01-[Road 09] | 12d | 2027-08-12 | 2027-08-26 | PRO-RD-1DL-160, ENG-SH-TSB-A-100, CO-R09.S01-RD-P-130, ENG-SH-RD-A-100, ENG-MS-TSB-A-10, ENG-MS-RD-A-10, PRO-R09-RD-DL-140 SS+6d, CO-R09-S1-RD-F-140 |  |  |  | -197.5d | 0d | Labor/Helper [26 h]; Painter [26 h]; Traffic signs, ground mounted, Sheet Alumenium, (breakaway) Single post, with all accessories [16.05]; Straight Arrow [37.12]; Right or Left Arrow [3.01]; Straight-Left Arrow [3.01] | 18,593.12 | CO-R09-S1-RD-F-150 | TS | TF | Each | TRF | RD |  | CON | R09 | RD | RD | 11 | 11 | S01 |  |
| CO-R09-S2-RD-F-160 |  | Application of Road Marking Works For Road Works- S.W 02-[Road 09] | 15d | 2027-08-12 | 2027-08-30 | PRO-R09-RD-DL-150 FF+3d, CO-R09-S2-RD-F-130 |  |  |  | -215.5d | 0d | Labor/Helper [26 h]; Painter [26 h]; Retroreflective Thermoplastic White, Traffic lines [1206.77]; Retroreflective Thermoplastic Yellow, Traffic lines [184.58]; Retroreflective raised pavement markers(Type A) [235.74] | 48,689.5 | CO-R09-S2-RD-F-160 | RM | RM | LM | TRF | RD |  | CON | R09 | RD | RD | 12 | 12 | S02 |  |
| CO-R09-S2-RD-F-170 |  | Installation Works of Traffic Signs Boards For Road Works- S.W 02-[Road 09] | 15d | 2027-08-30 | 2027-09-16 | PRO-R09-RD-DL-140 FF+6d, CO-R09.S02-RD-P-130, CO-R09-S2-RD-F-160 |  |  |  | -215.5d | 0d | Labor/Helper [16 h]; Painter [16 h]; Traffic signs, ground mounted, Sheet Alumenium, (breakaway) Single post, with all accessories [16.05]; Straight Arrow [37.12]; Right or Left Arrow [3.01]; Straight-Left Arrow [3.01] | 18,593.12 | CO-R09-S2-RD-F-170 | TS | TF | Each | TRF | RD |  | CON | R09 | RD | RD | 12 | 12 | S02 |  |
|  | 4 | **Road 10 Local 2 ( 2352 LM )** |  | 2026-06-15 | 2027-06-12 |  |  |  |  |  |  |  |  |  |  |  |  |  |  |  |  |  |  |  |  |  |  |  |
|  | 10 | **Sewage Network** |  | 2026-11-11 | 2027-02-09 |  |  |  |  |  |  |  |  |  |  |  |  |  |  |  |  |  |  |  |  |  |  |  |
|  | TF | **Testing and Finishes** |  | 2026-11-11 | 2027-02-09 |  |  |  |  |  |  |  |  |  |  |  |  |  |  |  |  |  |  |  |  |  |  |  |
| CO-R10-SW-TF-100 |  | Final Testing For Main Line of Sewage Network-[Road 10] | 12d | 2026-11-11 A | 2026-11-15 A | CO-R10.S03-ES-RD-100 SS+3d, CO-R10.S04-ES-RD-100 SS+3d, CO-R09.S02-SW-130 SS, CO-R10.S03-WE-RD-100 SS+3d, CO-R10.S04-WE-RD-100 SS+3d | 100% | 2027-01-09 | 2027-01-21 |  |  | Labor/Helper [17.86 h]; Plumber [17.86 h]; Pipe Fitter [17.86 h]; Depth : 1.5 - 2.5m [21.07]; Depth : 2.5 - 3.5m [13.04]; Depth : 3.5 - 4.5m [13.04]; Depth : 5.5 - 6.5m [71.22]; Depth : 6.5 -7.5m [57.18]; Depth : 6.5 -7.5m [21.07]; Depth :more than 7.5m [14.04] | 168,096.78 | CO-R10-SW-TF-100 | TF | Test | Each | TF | SW | TEST | CON | R10 | SW | SW |  |  |  |  |
| CO-R10-SW-TF-110 |  | Install Manhole Cover Works for External Finishes of Sewage Network-[Road 10] | 12d | 2027-01-24 | 2027-02-06 | PRO-R10-SW-DL-120 FF+3d, CO-R10-SW-TF-100, CO-R10.S03-ES-RD-100 SS+3d, CO-R10.S03-ES-RD-100 FF+3d, ENG-SH-SW-ML-A-110, ENG-SH-SW-ML-A-110 FF, ENG-MS-SW-ML-A-110, ENG-MS-SW-ML-A-110 FF, CO-R10.S04-ES-RD-100 SS+3d, CO-R10.S04-ES-RD-100 FS+3d, CO-R10.S03-WE-RD-100 SS+3d, CO-R10.S03-WE-RD-100 FF+3d, CO-R10.S04-WE-RD-100 SS+3d, CO-R10.S04-WE-RD-100 FS+3d |  |  |  | -140d | 0d | Labor/Helper [17.86 h]; Plumber [17.86 h]; Pipe Fitter [17.86 h]; Depth: 1.5 - 2.5m [0.2]; Depth: 2.5 - 3.5m [1]; Depth: 3.5 - 4.5m [0.05]; Depth: 4.5 - 5.5m [0.1]; Depth: 5.5 - 6.5m [0.15]; Depth:6.5 - 7.5m [0.2]; Depth: more than 7.5m [0.05] | 24,435.12 | CO-R10-SW-TF-110 | TF | Test | Each | TF | SW |  | CON | R10 | SW | SW |  |  |  |  |
| CO-R10-SW-TF-130 |  | Main Manhole Internal Finishes (Benching + Insulation) of Sewage Network-[Road 10] | 12d | 2027-01-27 | 2027-02-09 | CO-R10-SW-TF-110 SS+3d, CO-R10-SW-TF-110 FF+3d, PRO-R10-SW-DL-130 FF+3d |  |  |  | -140d | 0d | Labor/Helper [17.86 h]; Plumber [17.86 h]; Pipe Fitter [17.86 h]; Depth: 1.5 - 2.5m [0.2]; Depth: 2.5 - 3.5m [1]; Depth: 3.5 - 4.5m [0.05]; Depth: 4.5 - 5.5m [0.1]; Depth: 5.5 - 6.5m [0.15]; Depth:6.5 - 7.5m [0.2]; Depth: more than 7.5m [0.05] | 24,435.12 | CO-R10-SW-TF-130 | TF | Test | Each | TF | SW |  | CON | R10 | SW | SW |  |  |  | 05 num |

| ID | WBS | Activity | Duration | Start | Finish | Predecessors | Complete | Remaining | Planned start | Planned finish | Total float | Free float | Resources | Cost | Actual cost | Activity ID N | 02- Network-WBS | 03- Activity | 04-UOM | 05-Discipline | 01- Network | 07-Weightage System | 08 Stage | 09 Roads | Discipline | New Discipline |
| --- | --- | --- | --- | --- | --- | --- | --- | --- | --- | --- | --- | --- | --- | --- | --- | --- | --- | --- | --- | --- | --- | --- | --- | --- | --- | --- |
|  | 11 | **Storm Drainage Network** |  | 2026-06-15 | 2027-02-06 |  |  |  |  |  |  |  |  |  |  |  |  |  |  |  |  |  |  |  |  |  |
|  | TF | **Testing and Finishes** |  | 2026-06-15 | 2027-02-06 |  |  |  |  |  |  |  |  |  |  |  |  |  |  |  |  |  |  |  |  |  |
| CO-R10-SD-TF-100 |  | Testing Work for Pipes of Storm Drainage Network-[Road 10] | 16d | 2026-06-15 A | 2026-08-08 A | CO-R10.S03-ES-SD-130 SS+3d, CO-R10.S03-ES-RD-100 SS+3d, CO-R10.S03-ES-SD-130 FF+3d, CO-R10.S03-ES-SD-120 SS, CO-R10.S03-ES-SD-120, ENG-SH-SD-ML-A-110, ENG-MS-SD-ML-A-110, CO-R10.S04-ES-RD-100 SS+3d, CO-R10.S03-WE-SD-130 SS+3d, CO-R10.S03-WE-RD-100 SS+3d, CO-R10.S03-WE-SD-130 FF+3d, CO-R10.S03-WE-SD-120 SS, CO-R10.S03-WE-SD-120, CO-R10.S04-WE-RD-100 SS+3d | 100% |  | 2026-07-27 | 2026-08-13 |  |  | Labor/Helper [128.8 h]; Plumber [102.08 h]; Pipe with diameter 400mm ; depth: 0.0m - 1.5m [62.19]; Pipe with diameter 400mm ; depth: 1.51m - 2.5m [79.25]; Pipe with diameter 500mm ; depth: 0.0m - 1.5m [7.02]; Pipe with diameter 500mm ; depth: 1.51m - 2.5m [34.11]; Pipe with diameter 600mm ; depth: 1.51m - 2.5m [55.17]; Pipe with diameter 600mm ; depth: 2.51m - 3.5m [24.08]; Pipe with diameter 700mm ; depth: 0.0m - 1.5m [7.02]; Pipe with diameter 700mm ; depth: 1.51m - 2.5m [130.41]; Pipe with diameter 800mm ; depth: 1.51m - 2.5m [64.2]; Pipe with diameter 900mm ; depth: 1.51m - 2.5m [33.1]; Pipe with diameter 1000mm ; depth: 0.0m - 1.5m [7.02]; Pipe with diameter 1100mm ; depth: 0.0m - 1.5m [7.02] | 223,085.76 | 223,085.76 | CO-R10-SD-TF-100 | TF | Test | Each | TF | SD | TEST | CON | R10 | SD | SD |
| CO-R10-SD-TF-110 |  | Install Catch Basin Cover Works for External Finishes of Storm Drainage Network-[Road 10] | 16d | 2026-06-17 A | 2027-01-23 | CO-R10.S03-ES-SD-170 SS+3d, PRO-R10-SD-DL-150 FF+3d, CO-R10.S03-ES-RD-100 SS+3d, CO-R10.S03-ES-RD-100 FF+3d, CO-R10.S03-ES-SD-170 FF+3d, CO-R10.S04-ES-RD-100 SS+3d, CO-R10.S04-ES-RD-100 FF+3d, CO-R10.S03-WE-SD-170 SS+3d, CO-R10.S03-WE-RD-100 SS+3d, CO-R10.S03-WE-RD-100 FF+3d, CO-R10.S03-WE-SD-170 FF+3d, CO-R10.S04-WE-RD-100 SS+3d, CO-R10.S04-WE-RD-100 FF+3d | 20% | 6d | 2026-08-04 | 2026-08-22 | -109d | 0d | Labor/Helper [299.94 h]; Foreman [84.57 h]; Pipe with diameter 300mm ; depth: 0 - 1.5m [160.5]; Pipe with diameter 400mm ; depth: 0 - 1.5m [10.03] | 40,492.72 | 8,098.54 | CO-R10-SD-TF-110 | TF | Test | Each | TF | SD | cover | CON | R10 | SD | SD |
| CO-R10-SD-TF-120 |  | Main Manhole Internal Finishes (Benching + Insulation ) for Storm Drainage Network-[Road 10] | 12d | 2026-06-18 A | 2027-02-06 | CO-R10-SD-TF-100 SS+3d, CO-R10-SD-TF-100 FF+3d, PRO-R10-SD-DL-160 FF+3d, CO-R10-SD-TF-100, CO-R10-SD-TF-110 SS, CO-R10-SD-TF-110 FF, CO-R10-SW-TF-110 FF, ENG-SH-RD-A-100, ENG-SH-RD-A-100 FF, ENG-MS-RD-A-10, ENG-MS-RD-A-10 FF, PRO-R10-SD-DL-100 FF+3d | 85% | 1d | 2026-08-26 | 2026-09-08 | -121d | 12d | Labor/Helper [474.28 h]; MH ; depth: 0.0m - 1.5m [0.3]; MH ; depth: 1.51m - 2.5m [1]; MH ; depth: 0.0m - 1.5m [0.2]; MH ; depth: 1.51m - 2.5m with back drop less than 1.0 m [0.05]; MH ; depth: 0.0m - 1.5m [0.1]; MH ; depth: 1.51m - 2.5m [0.3]; MH ; depth: 2.51 - 3.5m [0.4]; MH ; depth: 3.51 - 4.5m [0.25]; Single Catch basin [113.35]; Double Catch basin [28.09]; Pipe encasement dia 300 mm [64.2]; Pipe encasement dia 400 mm [33.1]; Pipe encasement dia 500 mm [24.08]; Pipe encasement dia 600 mm [11.03]; Pipe encasement dia 700 mm [21.07]; Pipe encasement dia 800 mm [10.03]; Pipe encasement dia 900 mm [7.02]; Pipe encasement dia 1000 mm [7.02]; Pipe encasement dia 1100 mm [7.02]; Pipe encasement dia 1200 mm [4.01] | 710,306.54 | 603,760.56 | CO-R10-SD-TF-120 | TF | Test | Each | TF | SD |  | CON | R10 | SD | SD |
| CO-R10-SD-TF-130 |  | Catch Basin Internal Finishes (Benching + Insulation ) for Storm Drainage Network-[Road 10] | 16d | 2026-06-22 A | 2027-02-06 | CO-R10-SD-TF-110 SS+3d, CO-R10-SD-TF-110 FF+3d, PRO-R10-SD-DL-160 FF+3d, CO-R10-SD-TF-100 SS, CO-R10-SD-TF-100, CO-R10-SD-TF-100 FF, CO-R10-SW-TF-110 FF, ENG-SH-RD-A-100, ENG-SH-RD-A-100 FF, ENG-MS-RD-A-10, ENG-MS-RD-A-10 FF | 35% | 8d | 2026-08-26 | 2026-09-13 | -48d | 12d | Labor/Helper [289.03 h]; Foreman [149.06 h]; Pipe with diameter 300mm ; depth: 0 - 1.5m [160.5]; Pipe with diameter 400mm ; depth: 0 - 1.5m [10.03] | 40,492.72 | 14,172.45 | CO-R10-SD-TF-130 | TF | Test | Each | TF | SD | INSUL | CON | R10 | SD | SD |
|  | 9 | **Potable Water Network** |  | 2027-01-14 | 2027-04-24 |  |  |  |  |  |  |  |  |  |  |  |  |  |  |  |  |  |  |  |  |  |
|  | TF | **Testing and Finishes** |  | 2027-01-14 | 2027-04-24 |  |  |  |  |  |  |  |  |  |  |  |  |  |  |  |  |  |  |  |  |  |
| CO-R10-PW-TF-100 |  | Final Finishes works and Covers for Valves and Valve Chambers of Potable Water Network-[Road 10] | 12d | 2027-01-14 | 2027-01-27 | CO-R10.S03-ES-RD-100 FS+3d, PRO-R10-PW-DL-130 FF+3d, CO-R10.S03-WE-RD-100 FS+3d |  |  |  |  | -132d | 0d | Labor/Helper [23.94 h]; Plumber [29.63 h] |  |  | CO-R10-PW-TF-100 | TF | Test | Each | TF | PW | T&COV | CON | R10 | PW | PW |
| CO-R10-PW-TF-120 |  | Fire Hydrant Finishies (S.Box + Safety + Marker Post ) of Potable Water Network-[Road 10] | 12d | 2027-01-28 | 2027-02-10 | CO-R10.S03-ES-PW-160, CO-R10-PW-TF-100, PRO-R10-PW-DL-130 FF+3d, CO-R10.S03-WE-PW-160 |  |  |  |  | -132d | 0d |  |  |  | CO-R10-PW-TF-120 | TF | Test | Each | TF | PW |  | CON | R10 | PW | PW |
| CO-R10-PW-TF-110 |  | Testing Work for Main Line of Potable Water Network-[Road 10] | 12d | 2027-04-11 | 2027-04-24 | CO-R10.S03-ES-PW-130, CO-R09-PW-TF-110, CO-R10.S03-WE-PW-130 |  |  |  |  | -190d | 0d | Labor/Helper [26.78 h]; Plumber [26.78 h]; Pipe with diameter 200mm; in depth 0.0m - 1.5m [362.13]; Pipe with diameter 560mm; in depth 1.5m - 3.0m [170.53]; Pipe with diameter 630mm; in depth 1.5m - 3.0m [296.93] | 435,130.84 |  | CO-R10-PW-TF-110 | TF | Test | LM | TF | PW | TEST | CON | R10 | PW | PW |
|  | 13 | **Irrigation Network** |  | 2027-01-20 | 2027-01-31 |  |  |  |  |  |  |  |  |  |  |  |  |  |  |  |  |  |  |  |  |  |
|  | TF | **Testing and Finishes** |  | 2027-01-20 | 2027-01-31 |  |  |  |  |  |  |  |  |  |  |  |  |  |  |  |  |  |  |  |  |  |
| CO-R10-IR-TF-120 |  | Final Testing (pressure tests) of Irrigation Network-[Road 10] | 10d | 2027-01-20 | 2027-01-31 | CO-R10.S03-ES-IR-130, CO-R10.S03-ES-RD-100, CO-R10.S04-ES-RD-100, CO-R10.S03-WE-IR-130, CO-R10.S03-WE-RD-100, CO-R10.S04-WE-RD-100 |  |  |  |  | -131d | 0d | Labor/Helper [17.86 h]; Plumber [17.86 h]; Pipe Fitter [17.86 h]; 125 mm pipe; depth 0.0m - 1.5m [407.27]; 355 mm pipe; depth 1.5m - 3.0m [141.44]; 400 mm pipe; depth 1.5m - 3.0m [141.44] | 145,602.86 |  | CO-R10-IR-TF-120 | TF | Test | LM | TF | IR | TEST | CON | R10 | IR | IR |
|  | 12 | **Street Lighting Network** |  | 2027-01-06 | 2027-03-20 |  |  |  |  |  |  |  |  |  |  |  |  |  |  |  |  |  |  |  |  |  |
|  | TR | **Termination and Testing Works** |  | 2027-01-06 | 2027-03-20 |  |  |  |  |  |  |  |  |  |  |  |  |  |  |  |  |  |  |  |  |  |
| CO-R10-SL-TF-140 |  | Termination Works For Lighting Poles Cables of Street Lighting Network-[Road 10] | 12d | 2027-01-06 | 2027-01-19 | CO-R10.S03-ES-SL-160, CO-R10.S03-ES-SL-130, PRO-R10-SL-DL-130 FF+3d, CO-R15.S10-SL-130, CO-R10.S03-WE-SL-160, CO-R10.S03-WE-SL-130 |  |  |  |  | -191d | 0d | Labor/Helper [17.86 h]; Electrician [17.86 h]; Low Current Technician [17.86 h]; Supply, installation , test and operation of cables, Copper, (4Cx25mmï¿½,Cu/XLPE/SWA/PVC +1x16mmï¿½ PVC/PVC) [2459.68] | 117,798.96 |  | CO-R10-SL-TF-140 | TR | TR | Each | T&F | SL | TERM | CON | R10 | SL | SL |
| CO-R10-SL-TF-150 |  | Termination Works For Panel Board Cables of Street Lighting Network-[Road 10] | 12d | 2027-03-01 | 2027-03-17 | CO-R10.S03-ES-SL-190, PRO-R10-SL-DL-170 FF+3d, CO-R10.S03-ES-SL-160, CO-R10.S03-ES-SL-220, CO-R10.S04-ES-SL-220, CO-R10.S03-WE-SL-190, CO-R10.S03-WE-SL-160, CO-R10.S03-WE-SL-220, CO-R10.S04-WE-SL-220 |  |  |  |  | -191d | 0d | Labor/Helper [17.86 h]; Electrician [17.86 h]; Low Current Technician [17.86 h]; Package Substation 33000/400V, 500kVA with RMU [1] | 110,416.04 |  | CO-R10-SL-TF-150 | TR | TR | Each | T&F | SL | TERMINA | CON | R10 | SL | SL |
| CO-R10-SL-TF-380 |  | Testing Works For Panel Board Cables of Street Lighting Network-[Road 10] | 2d | 2027-03-18 | 2027-03-20 | CO-R10-SL-TF-150 |  |  |  |  | -171d | 10d | Labor/Helper [26.78 h]; Electrician [26.78 h]; Package Substation 33000/400V, 500kVA with RMU [0.3] | 33,020.96 |  | CO-R10-SL-TF-380 |  |  |  |  | SL | TEST | CON | R10 | SL | SL |
|  | ES | **Earthing System Works** |  | 2027-01-20 | 2027-02-20 |  |  |  |  |  |  |  |  |  |  |  |  |  |  |  |  |  |  |  |  |  |
| CO-R10-SL-ES-140 |  | Install Earthing System Works for Lighting Poles of Street Lighting Network-[Road 10] | 12d | 2027-01-20 | 2027-02-02 | PRO-R10-SL-DL-150 FF+3d, CO-R10.S03-ES-SL-100 SS+5d, CO-R10.S03-ES-SL-100 FF+5d, CO-R10-SL-TF-140, CO-R10-SL-TF-140 SS+3d, CO-R10.S03-WE-SL-100 SS+5d, CO-R10.S03-WE-SL-100 FF+5d |  |  |  |  | -191d | 0d | Labor/Helper [17.86 h]; Electrician [17.86 h]; Low Current Technician [17.86 h]; Earthing installation, for Street lighting circuits, including earth rod in plastic chamber [35.11]; Earthing installation Lighting Panales [4.01] | 8,686.93 |  | CO-R10-SL-ES-140 | ER | EW | Each | T&F | SL | TER | CON | R10 | SL | SL |
| CO-R10-SL-ES-150 |  | Install Earthing System Works for Lighting Panel Boards of Street Lighting Network-[Road 10] | 12d | 2027-02-07 | 2027-02-20 | CO-R10.S03-ES-SL-170 SS+3d, CO-R10.S03-ES-SL-170 FF+3d, PRO-R10-SL-DL-150 FF+3d, CO-R10.S03-WE-SL-170 SS+3d, CO-R10.S03-WE-SL-170 FF+3d |  |  |  |  | -191d | 0d | Labor/Helper [17.86 h]; Electrician [17.86 h]; Low Current Technician [17.86 h]; Earthing installation, lighting plants. [4.01] | 7,731.13 |  | CO-R10-SL-ES-150 | ER | EW | Each | T&F | SL | EARTH | CON | R10 | SL | SL |
|  | 14 | **Medium Voltage Network** |  | 2026-11-24 | 2026-12-01 |  |  |  |  |  |  |  |  |  |  |  |  |  |  |  |  |  |  |  |  |  |
|  | TT | **Termination and Testing Works** |  | 2026-11-24 | 2026-12-01 |  |  |  |  |  |  |  |  |  |  |  |  |  |  |  |  |  |  |  |  |  |
| CO-R10-MV-TF-140 |  | Termination Works of Medium Voltage Network-[Road 10] | 7d | 2026-11-24 | 2026-12-01 | CO-R10.S03-ES-MV-120, PRO-R10-MV-DL-110 FF+3d, CO-R10.S03-ES-MV-190, CO-R10.S03-WE-MV-120, CO-R10.S03-WE-MV-190 |  |  |  |  | -64d | 0d | Labor/Helper [17.86 h]; Electrician [17.86 h]; Low Current Technician [17.86 h] |  |  | CO-R10-MV-TF-140 | RMU | TR | Each | TR | MV | TEST | CON | R10 | MV | MV |

| ID | WBS | Activity | Duration | Start | Finish | Predecessors | Complete | Remaining | Planned start | Planned finish | Total float | Free float | Resources | Cost | Actual cost | Activity ID N | Seq | New Seq | 02- Network-WBS | 03- Activity | 04-UOM | 05-Discipline | 01- Network | 08 Stage | 09 Roads | 10 side Walk | Discipline | New Discipline | 07-Weightage System | 05number |
| --- | --- | --- | --- | --- | --- | --- | --- | --- | --- | --- | --- | --- | --- | --- | --- | --- | --- | --- | --- | --- | --- | --- | --- | --- | --- | --- | --- | --- | --- | --- |
|  | 1 | **Road Works** |  | 2027-05-06 | 2027-06-12 |  |  |  |  |  |  |  |  |  |  |  |  |  |  |  |  |  |  |  |  |  |  |  |  |  |
|  | 1 | **Bituminous Construction** |  | 2027-05-06 | 2027-05-29 |  |  |  |  |  |  |  |  |  |  |  |  |  |  |  |  |  |  |  |  |  |  |  |  |  |
| CO-R10-S03-RD-F-110 |  | Application of Prime Coat Layer for Road Works- S.W 05-[Road 10] | 10d | 2027-05-06 | 2027-05-23 | CO-R10.S03-ES-RD-130, CO-SD-PO-K1-130, CO-R10.S03-WE-RD-130 |  |  |  |  | -183d | 0d | Labor/Helper [26.78 h]; Insulation Worker [26.78 h]; Bituminous base course(Grading I - Class A), 70mm thick after compaction including Prime Coat (MC1) [2245.01] | 837,104.91 |  | CO-R10-S03-RD-F-110 | 9 | 9 | AB | MC | Sq.m | BS | RD | CON | R10 | S03 | RD | RD |  |  |
| CO-R10-S04-RD-F-140 |  | Application of Prime Coat Layer for Road Works- S.W 06-[Road 10] | 10d | 2027-05-09 | 2027-05-25 | PRO-R10-RD-DL-160 FF+3d, CO-R10.S04-ES-RD-130, CO-R10-S03-RD-F-110 SS, CO-SD-PO-K1-130, CO-R10.S04-WE-RD-130 |  |  |  |  | -183d | 0d | Labor/Helper [26.78 h]; Insulation Worker [26.78 h]; Bituminous base course(Grading I - Class A), 70mm thick after compaction including Prime Coat (MC1) [2245.01] | 837,104.91 |  | CO-R10-S04-RD-F-140 | 10 | 10 | AB | MC | Sq.m | BS | RD | CON | R10 | S04 | RD | RD |  |  |
| CO-R10-S03-RD-F-120 |  | Bituminous Base & Wearing Courses Layers for Road Works- S.W 05-[Road 10] | 10d | 2027-05-10 | 2027-05-26 | CO-R10-S03-RD-F-110 SS+3d, CO-R10-S03-RD-F-110 FF+3d |  |  |  |  | -183d | 0d | Labor/Helper [26.78 h]; Eq. Operator [26.78 h]; Asphalt Cutter [144 h]; Asphalt Paver [144 h]; Bituminous concrete wearing course, 50 mm thick, after compaction(Grading I - Class A), including tack coat (RC) [1604.01] | 658,450.45 |  | CO-R10-S03-RD-F-120 | 9 | 9 | AB | AB | Sq.m | BS | RD | CON | R10 | S03 | RD | RD |  |  |
| CO-R10-S04-RD-F-150 |  | Bituminous Base & Wearing Courses Layers for Road Works- S.W 06-[Road 10] | 10d | 2027-05-12 | 2027-05-29 | CO-R10-S04-RD-F-140 SS+3d, CO-R10-S04-RD-F-140 FF+3d, PRO-R10-RD-DL-170 FF+3d, CO-R10-S03-RD-F-120 SS |  |  |  |  | -183d | 0d | Labor/Helper [26.78 h]; Eq. Operator [26.78 h]; Asphalt Cutter [144 h]; Asphalt Paver [144 h]; Bituminous concrete wearing course, 50 mm thick, after compaction(Grading I - Class A), including tack coat (RC) [1604.01] | 658,450.45 |  | CO-R10-S04-RD-F-150 | 10 | 10 | AB | AB | Sq.m | BS | RD | CON | R10 | S04 | RD | RD |  |  |
|  | TS | **Traffic Signs Boards and Roads Marking** |  | 2027-05-27 | 2027-06-12 |  |  |  |  |  |  |  |  |  |  |  |  |  |  |  |  |  |  |  |  |  |  |  |  |  |
| CO-R10-S03-RD-F-100 |  | Installation Works of Traffic Signs Boards For Road Works- S.W 05-[Road 10] | 12d | 2027-05-27 | 2027-06-09 | CO-R10.S03-ES-RD-130, CO-R10-S03-RD-F-160 FF, CO-R10.S03-WE-RD-130 |  |  |  |  | -183d | 0d | Labor/Helper [26 h]; Painter [26 h]; Traffic signs, ground mounted, Sheet Alumenium, (breakaway) Single post, with all accessories [16.05]; Straight Arrow [37.12]; Right or Left Arrow [3.01]; Straight-Right Arrow [1]; Straight-Left Arrow [3.01] | 18,691.15 |  | CO-R10-S03-RD-F-100 | 9 | 9 | TS | TF | Each | TRF | RD | CON | R10 | S03 | RD | RD |  |  |
| CO-R10-S03-RD-F-160 |  | Application of Road Marking Works For Road Works- S.W 05-[Road 10] | 12d | 2027-05-27 | 2027-06-09 | CO-R10-S03-RD-F-120 |  |  |  |  | -183d | 0d | Labor/Helper [26 h]; Painter [26 h]; Retroreflective Thermoplastic White, Traffic lines [1208.78]; Retroreflective Thermoplastic Yellow, Traffic lines [185.58]; Retroreflective raised pavement markers(Type A) [236.74] | 48,813.06 |  | CO-R10-S03-RD-F-160 | 9 | 9 | RM | RM | LM | TRF | RD | CON | R10 | S03 | RD | RD |  |  |
| CO-R10-S04-RD-F-170 |  | Application of Road Marking Works For Road Works- S.W 06-[Road 10] | 12d | 2027-05-30 | 2027-06-12 | PRO-R10-RD-DL-150 FF+3d, CO-R10-S04-RD-F-150 |  |  |  |  | -183d | 0d | Labor/Helper [26 h]; Painter [26 h]; Retroreflective Thermoplastic White, Traffic lines [1208.78]; Retroreflective Thermoplastic Yellow, Traffic lines [185.58]; Retroreflective raised pavement markers(Type A) [236.74] | 48,813.06 |  | CO-R10-S04-RD-F-170 | 10 | 10 | RM | RM | LM | TRF | RD | CON | R10 | S04 | RD | RD |  |  |
| CO-R10-S04-RD-F-130 |  | Installation Works of Traffic Signs Boards For Road Works- S.W 06-[Road 10] | 10d | 2027-06-01 | 2027-06-12 | PRO-R10-RD-DL-140 FF+3d, CO-R10.S04-ES-RD-130, CO-R10-S04-RD-F-170 FF, CO-R10.S04-WE-RD-130 |  |  |  |  | -182d | 0d | Labor/Helper [26 h]; Painter [26 h]; Traffic signs, ground mounted, Sheet Alumenium, (breakaway) Single post, with all accessories [16.05]; Straight Arrow [37.12]; Right or Left Arrow [3.01]; Straight-Right Arrow [1]; Straight-Left Arrow [3.01] | 18,691.15 |  | CO-R10-S04-RD-F-130 | 10 | 10 | TS | TF | Each | TRF | RD | CON | R10 | S04 | RD | RD |  |  |
|  | 5 | **Road 11 Local 1 ( 670 LM )** |  | 2026-06-22 | 2027-06-23 |  |  |  |  |  |  |  |  |  |  |  |  |  |  |  |  |  |  |  |  |  |  |  |  |  |
|  | 10 | **Sewage Network** |  | 2026-10-28 | 2027-02-24 |  |  |  |  |  |  |  |  |  |  |  |  |  |  |  |  |  |  |  |  |  |  |  |  |  |
|  | TF | **Testing and Finishes** |  | 2026-10-28 | 2027-02-24 |  |  |  |  |  |  |  |  |  |  |  |  |  |  |  |  |  |  |  |  |  |  |  |  |  |
| CO-R11-SW-TF-100 |  | Final Testing For Main Line of Sewage Network-[Road 11] | 12d | 2026-10-28 A | 2026-10-29 A | CO-R11.S05-SW-130, CO-R11.S05-RD-P-100 SS+3d, CO-R11.S05-RD-P-100 FF+3d, CO-R11.S06-RD-P-100 SS+3d, CO-R11.S06-RD-P-100 FF+3d, CO-R11.S06-SW-130 | 100% |  | 2027-08-08 | 2027-08-21 |  |  | Labor/Helper [18.15 h]; Plumber [18.15 h]; Pipe Fitter [18.15 h]; Nominal bore : 160mm; Depth : 1.5m - 2.5m [21.07]; Nominal bore : 200mm; Depth : 0.0m - 1.5m [10.03]; Nominal bore : 200mm; Depth : 1.5m - 2.5m [14.04]; Nominal bore : 200mm; Depth : 2.5m - 3.5m [11.03]; Nominal bore : 200mm; Depth : 3.5m - 4.5m [28.09]; Nominal bore : 200mm; Depth : 4.5m -5.5m [10.03]; Nominal bore : 200mm; Depth : 5.5m - 6.5m [23.07]; Depth : 1.5 - 2.5m [7.02]; Depth : 2.5 - 3.5m [8.03]; Depth : 3.5 - 4.5m [8.03]; Depth : 4.5 - 5.5m [14.04]; Depth : 5.5 - 6.5m [14.04]; Depth : 6.5 -7.5m [42.13]; Depth : 6.5 -7.5m [50.16]; Depth :more than 7.5m [99.31] | 262,821.81 | 262,821.81 | CO-R11-SW-TF-100 |  |  | TF | Test | Each | TF | SW | CON | R11 |  | SW | SW | TEST |  |
| CO-R11-SW-TF-110 |  | Install Manhole Cover Works for External Finishes of Sewage Network-[Road 11] | 12d | 2027-02-07 | 2027-02-20 | CO-R11.S05-SW-130 SS+3d, PRO-R11-SW-DL-120 FF+3d, CO-R11-SW-TF-100, CO-R11.S05-SW-130 FF+3d, CO-R11.S05-RD-P-100 SS+3d, CO-R11.S05-RD-P-100 FF+3d, CO-R11.S05-SW-120 SS, CO-R11.S05-SW-120, CO-R11.S05-SW-120 FF, ENG-SH-SW-ML-A-110, ENG-SH-SW-ML-A-110 FF, CO-R10-SW-TF-110, ENG-MS-SW-ML-A-110, ENG-MS-SW-ML-A-110 FF, CO-R11.S06-RD-P-100 SS+3d, CO-R11.S06-RD-P-100 FF+3d, CO-R11.S06-SW-130 SS+3d, CO-R11.S06-SW-130 FF+3d |  |  |  |  | -140d | 0d | Labor/Helper [17.86 h]; Plumber [17.86 h]; Pipe Fitter [17.86 h]; Depth: not exceeding 1.5m [0.1]; Depth: 1.5 - 2.5m [0.3]; Depth: 2.5 - 3.5m [0.1]; Depth: 3.5 - 4.5m [0.05]; Depth: 4.5 - 5.5m [0.05]; Depth: 5.5 - 6.5m [0.2]; Depth:6.5 - 7.5m [0.15] | 14,729.08 |  | CO-R11-SW-TF-110 |  |  | TF | Test | Each | TF | SW | CON | R11 |  | SW | SW |  |  |
| CO-R11-SW-TF-130 |  | Main Manhole Internal Finishes (Benching + Insulation) of Sewage Network-[Road 11] | 12d | 2027-02-10 | 2027-02-24 | CO-R11-SW-TF-110 SS+3d, CO-R11-SW-TF-110 FF+3d, PRO-R11-SW-DL-130 FF+3d, CO-R10-SW-TF-130 |  |  |  |  | -140d | 0d | Labor/Helper [17.86 h]; Plumber [17.86 h]; Pipe Fitter [17.86 h]; Depth: not exceeding 1.5m [0.1]; Depth: 1.5 - 2.5m [0.3]; Depth: 2.5 - 3.5m [0.1]; Depth: 3.5 - 4.5m [0.05]; Depth: 4.5 - 5.5m [0.05]; Depth: 5.5 - 6.5m [0.2]; Depth:6.5 - 7.5m [0.15] | 14,729.08 |  | CO-R11-SW-TF-130 |  |  | TF | Test | Each | TF | SW | CON | R11 |  | SW | SW |  | 05 num |
|  | 11 | **Storm Drainage Network** |  | 2026-06-22 | 2027-02-20 |  |  |  |  |  |  |  |  |  |  |  |  |  |  |  |  |  |  |  |  |  |  |  |  |  |
|  | TF | **Testing and Finishes** |  | 2026-06-22 | 2027-02-20 |  |  |  |  |  |  |  |  |  |  |  |  |  |  |  |  |  |  |  |  |  |  |  |  |  |
| CO-R11-SD-TF-130 |  | Catch Basin Internal Finishes (Benching + Insulation ) for Storm Drainage Network-[Road 11] | 16d | 2026-06-22 A | 2027-02-20 | CO-R11-SD-TF-110 SS+3d, CO-R11-SD-TF-110 FF+3d, PRO-R11-SD-DL-160 FF+3d, CO-R11-SD-TF-100 SS, CO-R11-SD-TF-100, CO-R11-SD-TF-100 FF, CO-R11-SW-TF-110 FF, ENG-SH-RD-A-100, ENG-SH-RD-A-100 FF, CO-R10-SD-TF-130 FF, ENG-MS-RD-A-10, ENG-MS-RD-A-10 FF | 35% | 6d | 2026-09-14 | 2026-10-03 | -60d | 68d | Labor/Helper [289.03 h]; Foreman [82.27 h]; Pipe with diameter 300mm ; depth: 0 - 1.5m [47.15]; Pipe with diameter 400mm ; depth: 0 - 1.5m [3.01] | 11,913.77 | 2,382.75 | CO-R11-SD-TF-130 |  |  | TF | Test | Each | TF | SD | CON | R11 |  | SD | SD | INSUL |  |
| CO-R11-SD-TF-120 |  | Main Manhole Internal Finishes (Benching + Insulation ) for Storm Drainage Network-[Road 11] | 12d | 2026-06-23 A | 2027-02-20 | CO-R11-SD-TF-100 SS+3d, CO-R11-SD-TF-100 FF+3d, PRO-R11-SD-DL-160 FF+3d, CO-R11-SD-TF-100, CO-R11-SD-TF-110 SS, CO-R11-SD-TF-110 FF, CO-R11-SW-TF-110 FF, ENG-SH-RD-A-100, ENG-SH-RD-A-100 FF, CO-R10-SD-TF-120 FF, ENG-MS-RD-A-10, ENG-MS-RD-A-10 FF, PRO-R11-SD-DL-100 FF+3d | 85% | 1d | 2026-09-09 | 2026-09-22 | -60d | 68d | Labor/Helper [474.28 h]; MH ; depth: 0.0m - 1.5m [0.1]; MH ; depth: 1.51m - 2.5m [0.3]; MH ; depth: 2.51 - 3.5m [0.1]; MH ; depth: 1.51m - 2.5m [0.2]; MH ; depth: 2.51 - 3.5m [0.25]; MH ; depth: 2.51 - 3.5m [0.2]; Single Catch basin [31.1]; Double Catch basin [28.09]; Pipe encasement dia 300 mm [18.06]; Pipe encasement dia 400 mm [10.03]; Pipe encasement dia 500 mm [7.02]; Pipe encasement dia 600 mm [3.01]; Pipe encasement dia 700 mm [6.02]; Pipe encasement dia 800 mm [3.01]; Pipe encasement dia 900 mm [1]; Pipe encasement dia 1000 mm [3.01]; Pipe encasement dia 1100 mm [1]; Pipe encasement dia 1200 mm [1] | 355,946.7 | 302,554.7 | CO-R11-SD-TF-120 |  |  | TF | Test | Each | TF | SD | CON | R11 |  | SD | SD |  |  |
| CO-R11-SD-TF-100 |  | Testing Work for Pipes of Storm Drainage Network-[Road 11] | 16d | 2026-06-24 A | 2026-07-05 A | CO-R11.S05-SD-130 SS+3d, CO-R11.S05-RD-P-100 SS+3d, CO-R11.S05-RD-P-100 FF+3d, CO-R11.S05-SD-130 FF+3d, CO-R11.S05-SD-120 SS, CO-R11.S05-SD-120, ENG-SH-SD-ML-A-110, CO-R10-SD-TF-100, ENG-MS-SD-ML-A-110, CO-R11.S06-RD-P-100 SS+3d, CO-R11.S06-RD-P-100 FF | 100% |  | 2026-08-15 | 2026-09-01 |  |  | Labor/Helper [291.81 h]; Plumber [291.81 h]; Pipe with diameter 600mm ; depth: 1.51m - 2.5m [30.09]; Pipe with diameter 700mm ; depth: 1.51m - 2.5m [30.09]; Pipe with diameter 800mm ; depth: 0.0m - 1.5m [7.02]; Pipe with diameter 800mm ; depth: 1.51m - 2.5m [58.18]; Pipe with diameter 800mm ; depth: 2.51m - 3.5m [10.03]; Pipe with diameter 900mm ; depth: 0.0m - 1.5m [7.02]; Pipe with diameter 900mm ; depth: 1.51m - 2.5m [24.08]; Pipe with diameter 1000mm ; depth: 1.51m - 2.5m [25.08]; Pipe with diameter 1000mm ; depth: 2.51 - 3.5m [25.08] | 129,233.81 | 129,233.81 | CO-R11-SD-TF-100 |  |  | TF | Test | Each | TF | SD | CON | R11 |  | SD | SD | TEST |  |
| CO-R11-SD-TF-110 |  | Install Catch Basin Cover Works for External Finishes of Storm Drainage Network-[Road 11] | 12d | 2026-06-27 A | 2027-01-23 | CO-R11.S05-SD-170 SS+3d, PRO-R11-SD-DL-150 FF+3d, CO-R11.S05-RD-P-100 SS+3d, CO-R11.S05-RD-P-100 FF+3d, CO-R11.S05-RD-P-100, CO-R11.S05-SD-170 FF+3d, CO-R10-SD-TF-110 FF, CO-R11.S06-RD-P-100 SS+3d, CO-R11.S06-RD-P-100 FF+3d | 35% | 7d | 2026-08-23 | 2026-09-05 | -39d | 21d | Labor/Helper [278.11 h]; Foreman [114.26 h]; Pipe with diameter 300mm ; depth: 0 - 1.5m [47.15]; Pipe with diameter 400mm ; depth: 0 - 1.5m [3.01] | 11,913.77 | 2,382.75 | CO-R11-SD-TF-110 |  |  | TF | Test | Each | TF | SD | CON | R11 |  | SD | SD | cover |  |
|  | 9 | **Potable Water Network** |  | 2027-01-28 | 2027-05-08 |  |  |  |  |  |  |  |  |  |  |  |  |  |  |  |  |  |  |  |  |  |  |  |  |  |
|  | TF | **Testing and Finishes** |  | 2027-01-28 | 2027-05-08 |  |  |  |  |  |  |  |  |  |  |  |  |  |  |  |  |  |  |  |  |  |  |  |  |  |
| CO-R11-PW-TF-100 |  | Final Finishes works and Covers for Valves and Valve Chambers of Potable Water Network-[Road 11] | 12d | 2027-01-28 | 2027-02-10 | CO-R11.S05-RD-P-100 FS+3d, CO-R10-PW-TF-100, PRO-R11-PW-DL-130 FF+3d |  |  |  |  | -132d | 0d | Labor/Helper [26.78 h]; Plumber [26.78 h] |  |  | CO-R11-PW-TF-100 |  |  | TF | Test | Each | TF | PW | CON | R11 |  | PW | PW | T&COV |  |
| CO-R11-PW-TF-120 |  | Fire Hydrant Finishies (S.Box + Safety + Marker Post ) of Potable Water Network-[Road 11] | 12d | 2027-02-11 | 2027-02-25 | CO-R11-PW-TF-100, CO-R10-PW-TF-120, PRO-R11-PW-DL-130 FF+3d |  |  |  |  | -132d | 0d |  |  |  | CO-R11-PW-TF-120 |  |  | TF | Test | Each | TF | PW | CON | R11 |  | PW | PW |  |  |
| CO-R11-PW-TF-110 |  | Testing Work for Main Line of Potable Water Network-[Road 11] | 12d | 2027-04-25 | 2027-05-08 | CO-R10-PW-TF-110 |  |  |  |  | -190d | 0d | Labor/Helper [26.78 h]; Plumber [26.78 h]; Pipe with diameter 200mm; in depth 0.0m - 1.5m [113.35] | 16,829.59 |  | CO-R11-PW-TF-110 |  |  | TF | Test | LM | TF | PW | CON | R11 |  | PW | PW | TEST |  |

| ID | WBS | Activity | Duration | Start | Finish | Predecessors | Complete | Planned start | Planned finish | Total float | Free float | Resources | Cost | Actual cost | Activity ID N | 02- Network-WBS | 03- Activity | 04-UOM | 05-Discipline | 01- Network | 07-Weightage System | 08 Stage | 09 Roads | Discipline | New Discipline | Seq | New Seq | 10 side Walk | 05number |
| --- | --- | --- | --- | --- | --- | --- | --- | --- | --- | --- | --- | --- | --- | --- | --- | --- | --- | --- | --- | --- | --- | --- | --- | --- | --- | --- | --- | --- | --- |
|  | 13 | **Irrigation Network** |  | 2027-02-01 | 2027-02-11 |  |  |  |  |  |  |  |  |  |  |  |  |  |  |  |  |  |  |  |  |  |  |  |  |
|  | TF | **Testing and Finishes** |  | 2027-02-01 | 2027-02-11 |  |  |  |  |  |  |  |  |  |  |  |  |  |  |  |  |  |  |  |  |  |  |  |  |
| CO-R11-IR-TF-130 |  | Final Testing (pressure tests) of Irrigation Network-[Road 11] | 10d | 2027-02-01 | 2027-02-11 | CO-R11.S05-IR-130, CO-R11.S05-RD-P-100, CO-R10-IR-TF-120, CO-R11.S06-RD-P-100 |  |  |  | -131d | 0d | Labor/Helper [16.77 h]; Plumber [17.79 h]; Pipe Fitter [19 h]; 125 mm pipe; depth 0.0m - 1.5m [119.37] | 9,065.78 |  | CO-R11-IR-TF-130 | TF | Test | LM | TF | IR | TEST | CON | R11 | IR | IR |  |  |  |  |
|  | 12 | **Street Lighting Network** |  | 2027-02-14 | 2027-04-03 |  |  |  |  |  |  |  |  |  |  |  |  |  |  |  |  |  |  |  |  |  |  |  |  |
|  | TR | **Termination and Testing Works** |  | 2027-02-14 | 2027-04-03 |  |  |  |  |  |  |  |  |  |  |  |  |  |  |  |  |  |  |  |  |  |  |  |  |
| CO-R11-SL-TF-160 |  | Termination Works For Lighting Poles Cables of Street Lighting Network-[Road 11] | 12d | 2027-02-14 | 2027-02-28 | PRO-R11-SL-DL-130 FF+3d, CO-R10-SL-TF-140 |  |  |  | -163d | 0d | Labor/Helper [17.86 h]; Electrician [17.86 h]; Low Current Technician [17.86 h]; Supply, installation , test and operation of cables, Copper, (4Cx25mmï¿½,Cu/XLPE/SWA/PVC +1x16mmï¿½ PVC/PVC) [724.26] | 34,686.46 |  | CO-R11-SL-TF-160 | TR | TR | Each | T&F | SL | TERM | CON | R11 | SL | SL |  |  |  |  |
| CO-R11-SL-TF-170 |  | Termination Works For Panel Board Cables of Street Lighting Network-[Road 11] | 12d | 2027-03-18 | 2027-03-31 | PRO-R11-SL-DL-170 FF+3d, CO-R10-SL-TF-150, CO-R11.S06-SL-220 |  |  |  | -191d | 0d |  |  |  | CO-R11-SL-TF-170 | TR | TR | Each | T&F | SL | TERMINA | CON | R11 | SL | SL |  |  |  |  |
| CO-R11-SL-TF-380 |  | Testing Works For Panel Board Cables of Street Lighting Network-[Road 11] | 2d | 2027-04-01 | 2027-04-03 | CO-R11-SL-TF-170, CO-R10-SL-TF-380 |  |  |  | -181d | 10d |  |  |  | CO-R11-SL-TF-380 |  |  |  |  | SL | TEST | CON | R11 | SL | SL |  |  |  |  |
|  | ES | **Earthing System Works** |  |  |  |  |  |  |  |  |  |  |  |  |  |  |  |  |  |  |  |  |  |  |  |  |  |  |  |
|  | 14 | **Medium Voltage Network** |  | 2026-12-02 | 2026-12-09 |  |  |  |  |  |  |  |  |  |  |  |  |  |  |  |  |  |  |  |  |  |  |  |  |
|  | TT | **Termination and Testing Works** |  | 2026-12-02 | 2026-12-09 |  |  |  |  |  |  |  |  |  |  |  |  |  |  |  |  |  |  |  |  |  |  |  |  |
| CO-R11-MV-TF-160 |  | Termination Works of Medium Voltage Network-[Road 11] | 7d | 2026-12-02 | 2026-12-09 | CO-R10.S03-ES-MV-170, CO-R11.S05-MV-120, CO-R10-MV-TF-140, PRO-R11-MV-DL-110 FF+3d, CO-R17.S13-MV-170, CO-R10.S03-WE-MV-170 |  |  |  | -64d | 0d | Labor/Helper [17.86 h]; Electrician [17.86 h]; Low Current Technician [17.86 h] |  |  | CO-R11-MV-TF-160 | RMU | TR | Each | TR | MV | TEST | CON | R11 | MV | MV |  |  |  |  |
|  | 1 | **Road Works** |  | 2026-08-12 | 2027-06-23 |  |  |  |  |  |  |  |  |  |  |  |  |  |  |  |  |  |  |  |  |  |  |  |  |
|  | 1 | **Bituminous Construction** |  | 2026-08-12 | 2027-06-12 |  |  |  |  |  |  |  |  |  |  |  |  |  |  |  |  |  |  |  |  |  |  |  |  |
| CO-R11-S05-RD-F-110 |  | Application of Prime Coat Layer for Road Works- S.W 07-[Road 11] | 10d | 2026-08-12 A | 2026-08-15 A | CO-R11.S05-RD-P-130 | 100% | 2026-10-12 | 2026-10-22 |  |  | Labor/Helper [612.48 h]; Insulation Worker [612.48 h]; Bituminous base course(Grading I - Class A), 70mm thick after compaction including Prime Coat (MC1) [656.05] | 244,622.86 | 244,622.86 | CO-R11-S05-RD-F-110 | AB | MC | Sq.m | BS | RD |  | CON | R11 | RD | RD | 15 | 15 | S05 |  |
| CO-R11-S06-RD-F-140 |  | Application of Prime Coat Layer for Road Works- S.W 08-[Road 11] | 12d | 2026-08-13 A | 2026-08-15 A | PRO-R11-RD-DL-160 FF+3d, CO-R11.S06-RD-P-130, CO-R11-S05-RD-F-110 SS | 100% | 2026-10-14 | 2026-10-27 |  |  | Labor/Helper [594.6 h]; Insulation Worker [594.6 h]; Bituminous base course(Grading I - Class A), 70mm thick after compaction including Prime Coat (MC1) [656.05] | 244,622.86 | 244,622.86 | CO-R11-S06-RD-F-140 | AB | MC | Sq.m | BS | RD |  | CON | R11 | RD | RD | 16 | 16 | S06 |  |
| CO-R11-S05-RD-F-120 |  | Bituminous Base & Wearing Courses Layers for Road Works- S.W 07-[Road 11] | 12d | 2027-05-27 | 2027-06-09 | CO-R11-S05-RD-F-110 SS+3d, CO-R11-S05-RD-F-110 FF+3d, CO-R10-S03-RD-F-120 |  |  |  | -183d | 0d | Labor/Helper [26 h]; Eq. Operator [26 h]; Asphalt Cutter [96 h]; Asphalt Paver [96 h]; Bituminous concrete wearing course, 50 mm thick, after compaction(Grading I - Class A), including tack coat (RC) [468.46] | 192,305.21 |  | CO-R11-S05-RD-F-120 | AB | AB | Sq.m | BS | RD |  | CON | R11 | RD | RD | 15 | 15 | S05 |  |
| CO-R11-S06-RD-F-150 |  | Bituminous Base & Wearing Courses Layers for Road Works- S.W 08-[Road 11] | 12d | 2027-05-30 | 2027-06-12 | CO-R11-S06-RD-F-140 SS+3d, CO-R11-S06-RD-F-140 FF+3d, CO-R10-S04-RD-F-150, PRO-R11-RD-DL-170 FF+3d, CO-R11-S05-RD-F-120 SS |  |  |  | -183d | 0d | Labor/Helper [26.07 h]; Eq. Operator [25.94 h]; Asphalt Cutter [144 h]; Asphalt Paver [144 h]; Bituminous concrete wearing course, 50 mm thick, after compaction(Grading I - Class A), including tack coat (RC) [468.46] | 192,305.21 |  | CO-R11-S06-RD-F-150 | AB | AB | Sq.m | BS | RD |  | CON | R11 | RD | RD | 16 | 16 | S06 |  |
|  | TS | **Traffic Signs Boards and Roads Marking** |  | 2027-06-10 | 2027-06-23 |  |  |  |  |  |  |  |  |  |  |  |  |  |  |  |  |  |  |  |  |  |  |  |  |
| CO-R11-S05-RD-F-100 |  | Installation Works of Traffic Signs Boards For Road Works- S.W 07-[Road 11] | 10d | 2027-06-10 | 2027-06-21 | CO-R11.S05-RD-P-130, CO-R10-S03-RD-F-100, CO-R11-S05-RD-F-160 FF |  |  |  | -183d | 4d | Labor/Helper [16 h]; Painter [16 h]; Traffic signs, ground mounted, Sheet Alumenium, (breakaway) Single post, with all accessories [4.01]; Straight Arrow [11.03]; Straight-Left Arrow [1] | 4,770.82 |  | CO-R11-S05-RD-F-100 | TS | TF | Each | TRF | RD |  | CON | R11 | RD | RD | 15 | 15 | S05 |  |
| CO-R11-S05-RD-F-160 |  | Application of Road Marking Works For Road Works- S.W 07-[Road 11] | 10d | 2027-06-10 | 2027-06-21 | CO-R11-S05-RD-F-120, CO-R10-S03-RD-F-160 |  |  |  | -183d | 0d | Labor/Helper [16 h]; Painter [16 h]; Retroreflective Thermoplastic White, Traffic lines [353.1]; Retroreflective Thermoplastic Yellow, Traffic lines [54.17]; Retroreflective raised pavement markers(Type A) [69.22] | 14,259.35 |  | CO-R11-S05-RD-F-160 | RM | RM | LM | TRF | RD |  | CON | R11 | RD | RD | 15 | 15 | S05 |  |
| CO-R11-S06-RD-F-130 |  | Installation Works of Traffic Signs Boards For Road Works- S.W 08-[Road 11] | 10d | 2027-06-13 | 2027-06-23 | PRO-R11-RD-DL-140 FF+3d, CO-R11.S06-RD-P-130, CO-R10-S04-RD-F-130, CO-R11-S06-RD-F-170 FF |  |  |  | -182d | 4d | Labor/Helper [16 h]; Painter [16 h]; Traffic signs, ground mounted, Sheet Alumenium, (breakaway) Single post, with all accessories [4.01]; Straight Arrow [11.03]; Straight-Left Arrow [1] | 4,770.82 |  | CO-R11-S06-RD-F-130 | TS | TF | Each | TRF | RD |  | CON | R11 | RD | RD | 16 | 16 | S06 |  |
| CO-R11-S06-RD-F-170 |  | Application of Road Marking Works For Road Works- S.W 08-[Road 11] | 10d | 2027-06-13 | 2027-06-23 | PRO-R11-RD-DL-150 FF+3d, CO-R11-S06-RD-F-150, CO-R10-S04-RD-F-170 |  |  |  | -183d | 0d | Labor/Helper [16 h]; Painter [16 h]; Retroreflective Thermoplastic White, Traffic lines [353.1]; Retroreflective Thermoplastic Yellow, Traffic lines [54.17]; Retroreflective raised pavement markers(Type A) [69.22] | 14,259.35 |  | CO-R11-S06-RD-F-170 | RM | RM | LM | TRF | RD |  | CON | R11 | RD | RD | 16 | 16 | S06 |  |
|  | 6 | **Road 14 Local 1 ( 584 LM )** |  | 2026-04-08 | 2027-07-10 |  |  |  |  |  |  |  |  |  |  |  |  |  |  |  |  |  |  |  |  |  |  |  |  |
|  | 10 | **Sewage Network** |  | 2026-09-15 | 2027-03-14 |  |  |  |  |  |  |  |  |  |  |  |  |  |  |  |  |  |  |  |  |  |  |  |  |
|  | TF | **Testing and Finishes** |  | 2026-09-15 | 2027-03-14 |  |  |  |  |  |  |  |  |  |  |  |  |  |  |  |  |  |  |  |  |  |  |  |  |
| CO-R14-SW-TF-100 |  | Final Testing For Main Line of Sewage Network-[Road 14] | 12d | 2026-09-15 A | 2026-09-21 A | CO-R14.S07-SW-130, CO-R14.S07-RD-P-100 SS+3d, CO-R14.S07-RD-P-100 FF+3d, CO-R11-SW-TF-100, CO-R14.S08-RD-P-100 SS+3d, CO-R14.S08-RD-P-100 FF+3d, CO-R14.S08-SW-130 | 100% | 2026-08-26 | 2026-09-08 |  |  | Labor/Helper [18.15 h]; Plumber [18.15 h]; Pipe Fitter [18.15 h]; Nominal bore : 160mm; Depth : 0.0m - 1.5m [10.03]; Nominal bore : 200mm; Depth : 0.0m - 1.5m [17.05]; Nominal bore : 200mm; Depth : 1.5m - 2.5m [17.05]; Nominal bore : 200mm; Depth : 2.5m - 3.5m [28.09]; Nominal bore : 200mm; Depth : 3.5m - 4.5m [28.09]; Nominal bore : 200mm; Depth : 4.5m -5.5m [17.05]; Nominal bore : 200mm; Depth : 5.5m - 6.5m [24.08] | 45,205.34 | 45,205.34 | CO-R14-SW-TF-100 | TF | Test | Each | TF | SW | TEST | CON | R14 | SW | SW |  |  |  |  |
| CO-R14-SW-TF-110 |  | Install Manhole Cover Works for External Finishes of Sewage Network-[Road 14] | 12d | 2027-02-21 | 2027-03-07 | CO-R14.S07-SW-130 SS+3d, PRO-R14-SW-DL-120 FF+3d, CO-R14-SW-TF-100, CO-R14.S07-SW-130 FF+3d, CO-R14.S07-RD-P-100 SS+3d, CO-R14.S07-RD-P-100 FF+3d, CO-R14.S07-SW-120 SS, CO-R14.S07-SW-120, CO-R14.S07-SW-120 FF, ENG-SH-SW-ML-A-110, ENG-SH-SW-ML-A-110 FF, CO-R11-SW-TF-110, ENG-MS-SW-ML-A-110, ENG-MS-SW-ML-A-110 FF, CO-R14.S08-RD-P-100 SS+3d, CO-R14.S08-RD-P-100 FF+3d, CO-R14.S08-SW-130 SS+3d, CO-R14.S08-SW-130 FF+3d |  |  |  | -140d | 0d | Labor/Helper [17.86 h]; Plumber [17.86 h]; Pipe Fitter [17.86 h]; Depth: not exceeding 1.5m [0.2]; Depth: 1.5 - 2.5m [0.3]; Depth: 3.5 - 4.5m [0.05]; Depth: 4.5 - 5.5m [0.05]; Depth: 5.5 - 6.5m [0.1]; Depth:6.5 - 7.5m [0.05] | 8,844.19 |  | CO-R14-SW-TF-110 | TF | Test | Each | TF | SW |  | CON | R14 | SW | SW |  |  |  |  |
| CO-R14-SW-TF-130 |  | Main Manhole Internal Finishes (Benching + Insulation) of Sewage Network-[Road 14] | 12d | 2027-02-25 | 2027-03-14 | CO-R14-SW-TF-110 SS+3d, CO-R14-SW-TF-110 FF+3d, PRO-R14-SW-DL-130 FF+3d, CO-R11-SW-TF-130 |  |  |  | -140d | 0d | Labor/Helper [14.09 h]; Plumber [19.09 h]; Pipe Fitter [20.39 h]; Depth: not exceeding 1.5m [0.2]; Depth: 1.5 - 2.5m [0.3]; Depth: 3.5 - 4.5m [0.05]; Depth: 4.5 - 5.5m [0.05]; Depth: 5.5 - 6.5m [0.1]; Depth:6.5 - 7.5m [0.05] | 8,844.19 |  | CO-R14-SW-TF-130 | TF | Test | Each | TF | SW |  | CON | R14 | SW | SW |  |  |  | 05 num |

| ID | WBS | Activity | Duration | Start | Finish | Predecessors | Complete | Planned start | Planned finish | Total float | Free float | Resources | Cost | Actual cost | Activity ID N | 02- Network-WBS | 01- Network | 07-Weightage System | 08 Stage | 09 Roads | Discipline | New Discipline | 03- Activity | 04-UOM | 05-Discipline | Seq | New Seq | 10 side Walk |
| --- | --- | --- | --- | --- | --- | --- | --- | --- | --- | --- | --- | --- | --- | --- | --- | --- | --- | --- | --- | --- | --- | --- | --- | --- | --- | --- | --- | --- |
|  | 11 | **Storm Drainage Network** |  | 2026-04-08 | 2026-04-18 |  |  |  |  |  |  |  |  |  |  |  |  |  |  |  |  |  |  |  |  |  |  |  |
|  | TF | **Testing and Finishes** |  | 2026-04-08 | 2026-04-18 |  |  |  |  |  |  |  |  |  |  |  |  |  |  |  |  |  |  |  |  |  |  |  |
| CO-R14-SD-TF-100 |  | Testing Work for Pipes of Storm Drainage Network-[Road 14] | 10d | 2026-04-08 A | 2026-04-18 A | CO-R14.S07-SD-120 SS+2d, CO-R14.S08-SD-120 SS+2d, CO-R14.S07-SD-130, CO-R14.S07-RD-P-100 SS, CO-R14.S07-RD-P-100 FF | 100% | 2026-08-10 | 2026-08-20 |  |  | Pipe with diameter 400mm ; depth: 0.0m - 1.5m [37.12]; Pipe with diameter 400mm ; depth: 1.51m - 2.5m [37.12]; Pipe with diameter 400mm ; depth: 2.51m - 3.5m [7.02]; Pipe with diameter 500mm ; depth: 1.51m - 2.5m [92.29]; Pipe with diameter 600mm ; depth: 1.51m - 2.5m [34.11]; Pipe with diameter 700mm ; depth: 1.51m - 2.5m [44.14]; Pipe with diameter 1200mm ; depth: 2.51 - 3.5m [68.21] | 160,447.34 | 160,447.34 | CO-R14-SD-TF-100 | TC | SD | TEST | CON | R14 | SD | SD |  |  |  |  |  |  |
| CO-R14-SD-TF-110 |  | Install Catch Basin Cover Works for External Finishes of Storm Drainage Network-[Road 14] | 12d | 2026-04-08 A | 2026-04-18 A | CO-R14.S07-SD-170 SS+3d, CO-R14.S07-RD-P-100 SS+3d, CO-R14.S07-RD-P-100 FF+3d, CO-R14.S07-RD-P-100, CO-R14.S07-SD-170 FF+3d, CO-R14.S08-RD-P-100 SS+3d, CO-R14.S08-RD-P-100 FF+3d, CO-R14-SD-TF-100, CO-R14.S07-SD-170 | 100% | 2026-09-06 | 2026-09-19 |  |  | Labor/Helper [476.37 h]; Foreman [476.37 h]; Pipe with diameter 300mm ; depth: 0 - 1.5m [69.22]; Pipe with diameter 400mm ; depth: 0 - 1.5m [4.01] | 17,363.65 | 17,363.65 | CO-R14-SD-TF-110 | TF | SD | cover | CON | R14 | SD | SD | Test | Each | TF |  |  |  |
| CO-R14-SD-TF-120 |  | Main Manhole Internal Finishes (Benching + Insulation ) for Storm Drainage Network-[Road 14] | 12d | 2026-04-08 A | 2026-04-18 A | PRO-R14-SD-DL-160 FF+3d, CO-R14-SD-TF-110 SS, CO-R14-SD-TF-110, CO-R14-SD-TF-110 FF, ENG-SH-RD-A-100, ENG-SH-RD-A-100 FF, ENG-MS-RD-A-10, ENG-MS-RD-A-10 FF, CO-R14.S07-SD-220, PRO-R14-SD-DL-100 FF+3d | 100% | 2026-09-24 | 2026-10-07 |  |  | Labor/Helper [108.89 h]; MH ; depth: 0.0m - 1.5m [0.2]; MH ; depth: 1.51m - 2.5m [0.4]; MH ; depth: 2.51 - 3.5m [0.05]; MH ; depth: 2.51 - 3.5m [0.1]; MH ; depth: 2.51 - 3.5m with back drop less than 1.0 m [0.05]; MH ; depth: 1.51m - 2.5m [0.1]; Single Catch basin [42.13]; Double Catch basin [34.11]; Pipe encasement dia 300 mm [27.08]; Pipe encasement dia 400 mm [14.04]; Pipe encasement dia 500 mm [10.03]; Pipe encasement dia 600 mm [6.02]; Pipe encasement dia 700 mm [8.03]; Pipe encasement dia 800 mm [4.01]; Pipe encasement dia 900 mm [3.01]; Pipe encasement dia 1000 mm [3.01]; Pipe encasement dia 1100 mm [3.01]; Pipe encasement dia 1200 mm [1] | 439,485.03 | 439,485.03 | CO-R14-SD-TF-120 | TF | SD |  | CON | R14 | SD | SD | Test | Each | TF |  |  |  |
| CO-R14-SD-TF-130 |  | Catch Basin Internal Finishes (Benching + Insulation ) for Storm Drainage Network-[Road 14] | 16d | 2026-04-08 A | 2026-04-18 A | CO-R14-SD-TF-110 SS+3d, CO-R14-SD-TF-110 FF+3d, PRO-R14-SD-DL-160 FF+3d, CO-R14-SD-TF-110, ENG-SH-RD-A-100, ENG-SH-RD-A-100 FF, ENG-MS-RD-A-10, ENG-MS-RD-A-10 FF, CO-R14.S07-SD-150 | 100% | 2026-10-04 | 2026-10-21 |  |  | Labor/Helper [476.37 h]; Foreman [476.37 h]; Pipe with diameter 300mm ; depth: 0 - 1.5m [69.22]; Pipe with diameter 400mm ; depth: 0 - 1.5m [4.01] | 17,363.65 | 17,363.65 | CO-R14-SD-TF-130 | TF | SD | INSUL | CON | R14 | SD | SD | Test | Each | TF |  |  |  |
|  | 9 | **Potable Water Network** |  | 2027-02-11 | 2027-05-27 |  |  |  |  |  |  |  |  |  |  |  |  |  |  |  |  |  |  |  |  |  |  |  |
|  | TF | **Testing and Finishes** |  | 2027-02-11 | 2027-05-27 |  |  |  |  |  |  |  |  |  |  |  |  |  |  |  |  |  |  |  |  |  |  |  |
| CO-R14-PW-TF-100 |  | Final Finishes works and Covers for Valves and Valve Chambers of Potable Water Network-[Road 14] | 12d | 2027-02-11 | 2027-02-25 | CO-R14.S07-RD-P-100 FS+3d, CO-R11-PW-TF-100, PRO-R14-PW-DL-130 FF+3d |  |  |  | -132d | 0d | Labor/Helper [26.78 h]; Plumber [26.78 h] |  |  | CO-R14-PW-TF-100 | TF | PW | T&COV | CON | R14 | PW | PW | Test | Each | TF |  |  |  |
| CO-R14-PW-TF-120 |  | Fire Hydrant Finishies (S.Box + Safety + Marker Post ) of Potable Water Network-[Road 14] | 12d | 2027-02-27 | 2027-03-15 | CO-R14-PW-TF-100, CO-R11-PW-TF-120, PRO-R14-PW-DL-130 FF+3d |  |  |  | -132d | 0d |  |  |  | CO-R14-PW-TF-120 | TF | PW |  | CON | R14 | PW | PW | Test | Each | TF |  |  |  |
| CO-R14-PW-TF-110 |  | Testing Work for Main Line of Potable Water Network-[Road 14] | 12d | 2027-05-09 | 2027-05-27 | CO-R11-PW-TF-110 |  |  |  | -190d | 0d | Labor/Helper [26.78 h]; Plumber [26.78 h]; Pipe with diameter 355mm; in depth 0.0m - 1.5m [198.62]; Pipe with diameter 355mm; in depth 1.5m - 3.0m [14.04] | 64,345.79 |  | CO-R14-PW-TF-110 | TF | PW | TEST | CON | R14 | PW | PW | Test | LM | TF |  |  |  |
|  | 13 | **Irrigation Network** |  | 2027-02-13 | 2027-02-24 |  |  |  |  |  |  |  |  |  |  |  |  |  |  |  |  |  |  |  |  |  |  |  |
|  | TF | **Testing and Finishes** |  | 2027-02-13 | 2027-02-24 |  |  |  |  |  |  |  |  |  |  |  |  |  |  |  |  |  |  |  |  |  |  |  |
| CO-R11-IR-TF-140 |  | Final Testing (pressure tests) of Irrigation Network-[Road 14] | 10d | 2027-02-13 | 2027-02-24 | CO-R14.S07-IR-130, CO-R14.S07-RD-P-100, CO-R11-IR-TF-130, CO-R14.S08-RD-P-100 |  |  |  | -131d | 0d | Labor/Helper [17.86 h]; Plumber [17.86 h]; Pipe Fitter [17.86 h]; 125 mm pipe; depth 0.0m - 1.5m [175.55]; 280 mm pipe; depth 0.0m - 1.5m [68.21]; 280 mm pipe; depth 1.5m - 3.0m [7.02] | 35,548.31 |  | CO-R11-IR-TF-140 | TF | IR | TEST | CON | R14 | IR | IR | Test | LM | TF |  |  |  |
|  | 12 | **Street Lighting Network** |  | 2027-03-01 | 2027-04-17 |  |  |  |  |  |  |  |  |  |  |  |  |  |  |  |  |  |  |  |  |  |  |  |
|  | TR | **Termination and Testing Works** |  | 2027-03-01 | 2027-04-17 |  |  |  |  |  |  |  |  |  |  |  |  |  |  |  |  |  |  |  |  |  |  |  |
| CO-R11-SL-TF-180 |  | Termination Works For Lighting Poles Cables of Street Lighting Network-[Road 14] | 12d | 2027-03-01 | 2027-03-17 | CO-R14.S07-SL-160, CO-R14.S07-SL-130, PRO-R14-SL-DL-130 FF+3d, CO-R11-SL-TF-160, CO-R14.S08-SL-660 |  |  |  | -163d | 0d | Labor/Helper [17.86 h]; Electrician [17.86 h]; Low Current Technician [17.86 h]; Supply, installation , test and operation of cables, Copper, (4Cx25mmï¿½,Cu/XLPE/SWA/PVC +1x16mmï¿½ PVC/PVC) [1054.29] | 50,491.83 |  | CO-R11-SL-TF-180 | TR | SL | TERM | CON | R14 | SL | SL | TR | Each | T&F |  |  |  |
| CO-R11-SL-TF-190 |  | Termination Works For Panel Board Cables of Street Lighting Network-[Road 14] | 12d | 2027-04-01 | 2027-04-14 | CO-R14.S07-SL-190, PRO-R14-SL-DL-170 FF+3d, CO-R14.S07-SL-160, CO-R11-SL-TF-170, CO-R14.S08-SL-DB-660, CO-R14.S07-SL-220, CO-R14.S08-SL-220 |  |  |  | -191d | 0d | Labor/Helper [17.86 h]; Electrician [17.86 h]; Low Current Technician [17.86 h] |  |  | CO-R11-SL-TF-190 | TR | SL | TERMINA | CON | R14 | SL | SL | TR | Each | T&F |  |  |  |
| CO-R14-SL-TF-380 |  | Testing Works For Panel Board Cables of Street Lighting Network-[Road 14] | 2d | 2027-04-15 | 2027-04-17 | CO-R11-SL-TF-190, CO-R11-SL-TF-380 |  |  |  | -191d | 0d | Labor/Helper [26.78 h]; Electrician [26.78 h] |  |  | CO-R14-SL-TF-380 |  | SL | TEST | CON | R14 | SL | SL |  |  |  |  |  |  |
|  | ES | **Earthing System Works** |  |  |  |  |  |  |  |  |  |  |  |  |  |  |  |  |  |  |  |  |  |  |  |  |  |  |
|  | 14 | **Medium Voltage Network** |  | 2026-12-10 | 2026-12-17 |  |  |  |  |  |  |  |  |  |  |  |  |  |  |  |  |  |  |  |  |  |  |  |
|  | TT | **Termination and Testing Works** |  | 2026-12-10 | 2026-12-17 |  |  |  |  |  |  |  |  |  |  |  |  |  |  |  |  |  |  |  |  |  |  |  |
| CO-R11-MV-TF-180 |  | Termination Works of Medium Voltage Network-[Road 14] | 7d | 2026-12-10 | 2026-12-17 | CO-R11-MV-TF-160, PRO-R14-MV-DL-110 FF+3d |  |  |  | -64d | 0d | Labor/Helper [17.86 h]; Electrician [17.86 h]; Low Current Technician [17.86 h] |  |  | CO-R11-MV-TF-180 | RMU | MV | TEST | CON | R14 | MV | MV | TR | Each | TR |  |  |  |
|  | 1 | **Road Works** |  | 2027-06-12 | 2027-07-10 |  |  |  |  |  |  |  |  |  |  |  |  |  |  |  |  |  |  |  |  |  |  |  |
|  | 1 | **Bituminous Construction** |  | 2027-06-12 | 2027-06-28 |  |  |  |  |  |  |  |  |  |  |  |  |  |  |  |  |  |  |  |  |  |  |  |
| CO-R11-S07-RD-F-110 |  | Application of Prime Coat Layer for Road Works- S.W 09-[Road 14] | 12d | 2027-06-12 | 2027-06-24 | CO-R11-S05-RD-F-110, CO-R14.S07-RD-P-130 |  |  |  | -187d | 0d | Labor/Helper [26 h]; Insulation Worker [26 h]; Bituminous base course(Grading I - Class A), 70mm thick after compaction including Prime Coat (MC1) [966.02] | 360,201.84 |  | CO-R11-S07-RD-F-110 | AB | RD |  | CON | R14 | RD | RD | MC | Sq.m | BS | 13 | 13 | S07 |
| CO-R11-S08-RD-F-140 |  | Application of Prime Coat Layer for Road Works- S.W 10-[Road 14] | 10d | 2027-06-12 | 2027-06-22 | PRO-R14-RD-DL-160 FF+3d, CO-R14.S08-RD-P-130, CO-R11-S07-RD-F-110 SS |  |  |  | -185d | 2d | Labor/Helper [16 h]; Insulation Worker [16 h]; Bituminous base course(Grading I - Class A), 70mm thick after compaction including Prime Coat (MC1) [966.02] | 360,201.84 |  | CO-R11-S08-RD-F-140 | AB | RD |  | CON | R14 | RD | RD | MC | Sq.m | BS | 14 | 14 | S08 |
| CO-R11-S07-RD-F-120 |  | Bituminous Base & Wearing Courses Layers for Road Works- S.W 09-[Road 14] | 10d | 2027-06-17 | 2027-06-28 | CO-R11-S07-RD-F-110 SS+3d, CO-R11-S07-RD-F-110 FF+3d, CO-R11-S05-RD-F-120 |  |  |  | -187d | 0d | Labor/Helper [16 h]; Eq. Operator [16 h]; Asphalt Cutter [96 h]; Asphalt Paver [96 h]; Bituminous concrete wearing course, 50 mm thick, after compaction(Grading I - Class A), including tack coat (RC) [691.16] | 283,722.73 |  | CO-R11-S07-RD-F-120 | AB | RD |  | CON | R14 | RD | RD | AB | Sq.m | BS | 13 | 13 | S07 |
| CO-R11-S08-RD-F-150 |  | Bituminous Base & Wearing Courses Layers for Road Works- S.W 10-[Road 14] | 10d | 2027-06-17 | 2027-06-28 | CO-R11-S08-RD-F-140 SS+3d, CO-R11-S08-RD-F-140 FF+3d, PRO-R14-RD-DL-170 FF+3d, CO-R11-S07-RD-F-120 SS |  |  |  | -187d | 0d | Labor/Helper [16.04 h]; Eq. Operator [15.96 h]; Asphalt Cutter [144 h]; Asphalt Paver [144 h]; Bituminous concrete wearing course, 50 mm thick, after compaction(Grading I - Class A), including tack coat (RC) [691.16] | 283,722.73 |  | CO-R11-S08-RD-F-150 | AB | RD |  | CON | R14 | RD | RD | AB | Sq.m | BS | 14 | 14 | S08 |

| ID | WBS | Activity | Duration | Start | Finish | Predecessors | Complete | Planned start | Planned finish | Total float | Free float | Resources | Cost | Actual cost | Activity ID N | Seq | New Seq | 02- Network-WBS | 03- Activity | 04-UOM | 05-Discipline | 01- Network | 08 Stage | 09 Roads | 10 side Walk | Discipline | New Discipline | 07-Weightage System | 05number |
| --- | --- | --- | --- | --- | --- | --- | --- | --- | --- | --- | --- | --- | --- | --- | --- | --- | --- | --- | --- | --- | --- | --- | --- | --- | --- | --- | --- | --- | --- |
|  | TS | **Traffic Signs Boards and Roads Marking** |  | 2027-06-27 | 2027-07-10 |  |  |  |  |  |  |  |  |  |  |  |  |  |  |  |  |  |  |  |  |  |  |  |  |
| CO-R11-S07-RD-F-100 |  | Installation Works of Traffic Signs Boards For Road Works- S.W 09-[Road 14] | 12d | 2027-06-27 | 2027-07-10 | CO-R14.S07-RD-P-130, CO-R11-S05-RD-F-100, CO-R11-S07-RD-F-160 FF |  |  |  | -187d | 0d | Labor/Helper [16 h]; Painter [16 h]; Traffic signs, ground mounted, Sheet Alumenium, (breakaway) Single post, with all accessories [7.02]; Straight Arrow [16.05]; Straight-Right Arrow [1]; Straight-Left Arrow [1] | 8,054.84 |  | CO-R11-S07-RD-F-100 | 13 | 13 | TS | TF | Each | TRF | RD | CON | R14 | S07 | RD | RD |  |  |
| CO-R11-S07-RD-F-160 |  | Application of Road Marking Works For Road Works- S.W 09-[Road 14] | 10d | 2027-06-29 | 2027-07-10 | CO-R11-S07-RD-F-120, CO-R11-S05-RD-F-160 |  |  |  | -187d | 0d | Labor/Helper [16 h]; Painter [16 h]; Retroreflective Thermoplastic White, Traffic lines [520.63]; Retroreflective Thermoplastic Yellow, Traffic lines [79.25]; Retroreflective raised pavement markers(Type A) [102.32] | 21,017.33 |  | CO-R11-S07-RD-F-160 | 13 | 13 | RM | RM | LM | TRF | RD | CON | R14 | S07 | RD | RD |  |  |
| CO-R11-S08-RD-F-130 |  | Installation Works of Traffic Signs Boards For Road Works- S.W 10-[Road 14] | 10d | 2027-06-29 | 2027-07-10 | PRO-R14-RD-DL-140 FF+3d, CO-R14.S08-RD-P-130, CO-R11-S06-RD-F-130, CO-R11-S08-RD-F-170 FF |  |  |  | -186d | 0d | Labor/Helper [16 h]; Painter [16 h]; Traffic signs, ground mounted, Sheet Alumenium, (breakaway) Single post, with all accessories [7.02]; Straight Arrow [16.05]; Straight-Right Arrow [1]; Straight-Left Arrow [1] | 8,054.84 |  | CO-R11-S08-RD-F-130 | 14 | 14 | TS | TF | Each | TRF | RD | CON | R14 | S08 | RD | RD |  |  |
| CO-R11-S08-RD-F-170 |  | Application of Road Marking Works For Road Works- S.W 10-[Road 14] | 10d | 2027-06-29 | 2027-07-10 | PRO-R14-RD-DL-150 FF+3d, CO-R11-S08-RD-F-150, CO-R11-S06-RD-F-170 |  |  |  | -187d | 0d | Labor/Helper [16 h]; Painter [16 h]; Retroreflective Thermoplastic White, Traffic lines [520.63]; Retroreflective Thermoplastic Yellow, Traffic lines [79.25]; Retroreflective raised pavement markers(Type A) [102.32] | 21,017.33 |  | CO-R11-S08-RD-F-170 | 14 | 14 | RM | RM | LM | TRF | RD | CON | R14 | S08 | RD | RD |  |  |
|  | 7 | **Road 15 Local 1 ( 556 LM )** |  | 2026-04-01 | 2027-07-24 |  |  |  |  |  |  |  |  |  |  |  |  |  |  |  |  |  |  |  |  |  |  |  |  |
|  | 10 | **Sewage Network** |  | 2026-09-15 | 2027-03-28 |  |  |  |  |  |  |  |  |  |  |  |  |  |  |  |  |  |  |  |  |  |  |  |  |
|  | TF | **Testing and Finishes** |  | 2026-09-15 | 2027-03-28 |  |  |  |  |  |  |  |  |  |  |  |  |  |  |  |  |  |  |  |  |  |  |  |  |
| CO-R15-SW-TF-100 |  | Final Testing For Main Line of Sewage Network-[Road 15] | 12d | 2026-09-15 A | 2026-09-21 A | CO-R15.S09-SW-130, CO-R15.S09-RD-P-100 SS+3d, CO-R15.S09-RD-P-100 FF+3d, CO-R14-SW-TF-100, CO-R15.S10-RD-P-100 SS+3d, CO-R15.S10-RD-P-100 FF+3d | 100% | 2026-09-09 | 2026-09-22 |  |  | Labor/Helper [12.71 h]; Plumber [17.22 h]; Pipe Fitter [24.52 h]; Nominal bore : 160mm; Depth : 0.0m - 1.5m [13.04]; Nominal bore : 200mm; Depth : 0.0m - 1.5m [4.01]; Nominal bore : 200mm; Depth : 1.5m - 2.5m [10.03]; Nominal bore : 200mm; Depth : 2.5m - 3.5m [23.07]; Nominal bore : 200mm; Depth : 3.5m - 4.5m [21.07]; Nominal bore : 200mm; Depth : 4.5m -5.5m [16.05]; Nominal bore : 200mm; Depth : 5.5m - 6.5m [11.03] | 29,826.8 | 29,826.8 | CO-R15-SW-TF-100 |  |  | TF | Test | Each | TF | SW | CON | R15 |  | SW | SW | TEST |  |
| CO-R15-SW-TF-110 |  | Install Manhole Cover Works for External Finishes of Sewage Network-[Road 15] | 12d | 2027-03-08 | 2027-03-24 | CO-R15.S09-SW-130 SS+3d, PRO-R15-SW-DL-120 FF+3d, CO-R15-SW-TF-100, CO-R15.S09-SW-130 FF+3d, CO-R15.S09-RD-P-100 SS+3d, CO-R15.S09-RD-P-100 FF+3d, CO-R15.S09-SW-120 SS, CO-R15.S09-SW-120, CO-R15.S09-SW-120 FF, ENG-SH-SW-ML-A-110, ENG-SH-SW-ML-A-110 FF, CO-R14-SW-TF-110, ENG-MS-SW-ML-A-110, ENG-MS-SW-ML-A-110 FF, CO-R15.S10-RD-P-100 SS+3d, CO-R15.S10-RD-P-100 FF+3d |  |  |  | -140d | 0d | Labor/Helper [12.5 h]; Plumber [16.94 h]; Pipe Fitter [24.13 h]; Depth: not exceeding 1.5m [0.2]; Depth: 1.5 - 2.5m [0.35]; Depth: 2.5 - 3.5m [0.1]; Depth: 3.5 - 4.5m [0.05]; Depth: 5.5 - 6.5m [0.15]; Depth:6.5 - 7.5m [0.1] | 12,329.38 |  | CO-R15-SW-TF-110 |  |  | TF | Test | Each | TF | SW | CON | R15 |  | SW | SW |  |  |
| CO-R15-SW-TF-130 |  | Main Manhole Internal Finishes (Benching + Insulation) of Sewage Network-[Road 15] | 12d | 2027-03-15 | 2027-03-28 | CO-R15-SW-TF-110 SS+3d, CO-R15-SW-TF-110 FF+3d, PRO-R15-SW-DL-130 FF+3d, CO-R14-SW-TF-130 |  |  |  | -140d | 0d | Labor/Helper [14.09 h]; Plumber [19.09 h]; Pipe Fitter [20.39 h]; Depth: not exceeding 1.5m [0.2]; Depth: 1.5 - 2.5m [0.35]; Depth: 2.5 - 3.5m [0.1]; Depth: 3.5 - 4.5m [0.05]; Depth: 5.5 - 6.5m [0.15]; Depth:6.5 - 7.5m [0.1] | 12,329.38 |  | CO-R15-SW-TF-130 |  |  | TF | Test | Each | TF | SW | CON | R15 |  | SW | SW |  | 05 num |
|  | 11 | **Storm Drainage Network** |  | 2026-04-15 | 2027-04-12 |  |  |  |  |  |  |  |  |  |  |  |  |  |  |  |  |  |  |  |  |  |  |  |  |
|  | TF | **Testing and Finishes** |  | 2026-04-15 | 2027-04-12 |  |  |  |  |  |  |  |  |  |  |  |  |  |  |  |  |  |  |  |  |  |  |  |  |
| CO-R15-SD-TF-100 |  | Testing Work for Pipes of Storm Drainage Network-[Road 15] | 16d | 2026-04-15 A | 2026-04-18 A | CO-R15.S09-SD-130 SS+3d, CO-R15.S09-RD-P-100 SS+3d, CO-R15.S09-RD-P-100 FF+3d, CO-R15.S09-SD-130 FF+3d, CO-R15.S09-SD-120 SS, CO-R15.S09-SD-120, ENG-SH-SD-ML-A-110, ENG-MS-SD-ML-A-110, CO-R15.S10-RD-P-100 SS+3d, CO-R15.S10-RD-P-100 FF+3d | 100% | 2026-08-23 | 2026-09-09 |  |  | Labor/Helper [145.91 h]; Plumber [145.91 h]; Pipe with diameter 400mm ; depth: 0.0m - 1.5m [28.09]; Pipe with diameter 400mm ; depth: 1.51m - 2.5m [62.19]; Pipe with diameter 500mm ; depth: 1.51m - 2.5m [57.18]; Pipe with diameter 600mm ; depth: 1.51m - 2.5m [14.04]; Pipe with diameter 700mm ; depth: 1.51m - 2.5m [54.17]; Pipe with diameter 800mm ; depth: 1.51m - 2.5m [21.07]; Pipe with diameter 900mm ; depth: 1.51m - 2.5m [23.07]; Pipe with diameter 1000mm ; depth: 1.51m - 2.5m [10.03]; Pipe with diameter 1000mm ; depth: 2.51 - 3.5m [21.07] | 128,227.98 | 128,227.98 | CO-R15-SD-TF-100 |  |  | TF | Test | Each | TF | SD | CON | R15 |  | SD | SD | TEST |  |
| CO-R15-SD-TF-120 |  | Main Manhole Internal Finishes (Benching + Insulation ) for Storm Drainage Network-[Road 15] | 12d | 2026-04-19 A | 2026-06-17 A | CO-R15-SD-TF-100 SS+3d, CO-R15-SD-TF-100 FF+3d, CO-R15-SD-TF-100, ENG-SH-RD-A-100, ENG-SH-RD-A-100 FF, CO-R14-SD-TF-120, ENG-MS-RD-A-10, ENG-MS-RD-A-10 FF, PRO-R15-SD-DL-100 FF+3d | 100% | 2026-10-08 | 2026-10-21 |  |  | Labor/Helper [646.51 h]; MH ; depth: 0.0m - 1.5m [0.1]; MH ; depth: 1.51m - 2.5m [0.2]; MH ; depth: 1.51m - 2.5m [0.3]; MH ; depth: 2.51 - 3.5m [0.05]; MH ; depth: 1.51m - 2.5m [0.1]; MH ; depth: 2.51 - 3.5m [0.1]; Single Catch basin [31.1]; Double Catch basin [14.04]; Pipe encasement dia 300 mm [16.05]; Pipe encasement dia 400 mm [8.03]; Pipe encasement dia 500 mm [6.02]; Pipe encasement dia 600 mm [3.01]; Pipe encasement dia 700 mm [6.02]; Pipe encasement dia 800 mm [3.01]; Pipe encasement dia 900 mm [1]; Pipe encasement dia 1000 mm [1]; Pipe encasement dia 1100 mm [1]; Pipe encasement dia 1200 mm [1] | 236,130.97 | 236,130.97 | CO-R15-SD-TF-120 |  |  | TF | Test | Each | TF | SD | CON | R15 |  | SD | SD |  |  |
| CO-R15-SD-TF-110 |  | Install Catch Basin Cover Works for External Finishes of Storm Drainage Network-[Road 15] | 12d | 2026-11-24 | 2026-12-07 | CO-R15.S09-SD-170 SS+3d, PRO-R15-SD-DL-150 FF+3d, CO-R15.S09-RD-P-100 SS+3d, CO-R15.S09-RD-P-100 FF+3d, CO-R15.S09-RD-P-100, CO-R15.S09-SD-170 FF+3d, CO-R14-SD-TF-110, CO-R15.S10-RD-P-100 SS+3d, CO-R15.S10-RD-P-100 FF+3d |  |  |  | -40d | 0d | Labor/Helper [26.78 h]; Foreman [26.78 h]; Pipe with diameter 300mm ; depth: 0 - 1.5m [40.13]; Pipe with diameter 400mm ; depth: 0 - 1.5m [3.01] | 10,280.95 |  | CO-R15-SD-TF-110 |  |  | TF | Test | Each | TF | SD | CON | R15 |  | SD | SD | cover |  |
| CO-R15-SD-TF-130 |  | Catch Basin Internal Finishes (Benching + Insulation ) for Storm Drainage Network-[Road 15] | 16d | 2027-03-25 | 2027-04-12 | CO-R15-SD-TF-110 SS+3d, CO-R15-SD-TF-110 FF+3d, PRO-R15-SD-DL-160 FF+3d, CO-R15-SD-TF-100 SS, CO-R15-SD-TF-100, CO-R15-SD-TF-100 FF, CO-R15-SD-TF-110, CO-R15-SW-TF-110 SS, CO-R15-SW-TF-110, CO-R15-SW-TF-110 FF, ENG-SH-RD-A-100, ENG-SH-RD-A-100 FF, CO-R14-SD-TF-130, ENG-MS-RD-A-10, ENG-MS-RD-A-10 FF |  |  |  | -128d | 0d | Labor/Helper [26 h]; Foreman [26 h]; Pipe with diameter 300mm ; depth: 0 - 1.5m [40.13]; Pipe with diameter 400mm ; depth: 0 - 1.5m [3.01] | 10,280.95 |  | CO-R15-SD-TF-130 |  |  | TF | Test | Each | TF | SD | CON | R15 |  | SD | SD | INSUL |  |
|  | 9 | **Potable Water Network** |  | 2027-02-27 | 2027-06-10 |  |  |  |  |  |  |  |  |  |  |  |  |  |  |  |  |  |  |  |  |  |  |  |  |
|  | TF | **Testing and Finishes** |  | 2027-02-27 | 2027-06-10 |  |  |  |  |  |  |  |  |  |  |  |  |  |  |  |  |  |  |  |  |  |  |  |  |
| CO-R15-PW-TF-100 |  | Final Finishes works and Covers for Valves and Valve Chambers of Potable Water Network-[Road 15] | 12d | 2027-02-27 | 2027-03-15 | CO-R15.S09-RD-P-100 FS+3d, CO-R14-PW-TF-100, PRO-R15-PW-DL-130 FF+3d |  |  |  | -132d | 0d | Labor/Helper [26.78 h]; Plumber [26.78 h] |  |  | CO-R15-PW-TF-100 |  |  | TF | Test | Each | TF | PW | CON | R15 |  | PW | PW | T&COV |  |
| CO-R15-PW-TF-120 |  | Fire Hydrant Finishies (S.Box + Safety + Marker Post ) of Potable Water Network-[Road 15] | 12d | 2027-03-16 | 2027-03-29 | CO-R15-PW-TF-100, CO-R14-PW-TF-120, PRO-R15-PW-DL-130 FF+3d |  |  |  | -132d | 0d |  |  |  | CO-R15-PW-TF-120 |  |  | TF | Test | Each | TF | PW | CON | R15 |  | PW | PW |  |  |
| CO-R15-PW-TF-110 |  | Testing Work for Main Line of Potable Water Network-[Road 15] | 12d | 2027-05-29 | 2027-06-10 | CO-R14-PW-TF-110 |  |  |  | -190d | 0d | Labor/Helper [26.78 h]; Plumber [26.78 h]; Pipe with diameter 200mm; in depth 0.0m - 1.5m [96.3] | 14,297.14 |  | CO-R15-PW-TF-110 |  |  | TF | Test | LM | TF | PW | CON | R15 |  | PW | PW | TEST |  |
|  | 13 | **Irrigation Network** |  | 2027-02-25 | 2027-03-08 |  |  |  |  |  |  |  |  |  |  |  |  |  |  |  |  |  |  |  |  |  |  |  |  |
|  | TF | **Testing and Finishes** |  | 2027-02-25 | 2027-03-08 |  |  |  |  |  |  |  |  |  |  |  |  |  |  |  |  |  |  |  |  |  |  |  |  |
| CO-R15-IR-TF-150 |  | Final Testing (pressure tests) of Irrigation Network-[Road 15] | 10d | 2027-02-25 | 2027-03-08 | CO-R15.S09-IR-130, CO-R15.S09-RD-P-100, CO-R11-IR-TF-140, CO-R15.S10-RD-P-100 |  |  |  | -131d | 0d | Labor/Helper [17.86 h]; Plumber [17.86 h]; Pipe Fitter [17.86 h]; 125 mm pipe; depth 0.0m - 1.5m [100.31] | 7,617.79 |  | CO-R15-IR-TF-150 |  |  | TF | Test | LM | TF | IR | CON | R15 |  | IR | IR | TEST |  |

| ID | WBS | Activity | Duration | Start | Finish | Predecessors | Complete | Planned start | Planned finish | Total float | Free float | Resources | Cost | Actual cost | Activity ID N | 02- Network-WBS | 03- Activity | 04-UOM | 05-Discipline | 01- Network | 07-Weightage System | 08 Stage | 09 Roads | Discipline | New Discipline | Seq | New Seq | 10 side Walk | 05number |
| --- | --- | --- | --- | --- | --- | --- | --- | --- | --- | --- | --- | --- | --- | --- | --- | --- | --- | --- | --- | --- | --- | --- | --- | --- | --- | --- | --- | --- | --- |
|  | 12 | **Street Lighting Network** |  | 2027-03-18 | 2027-05-25 |  |  |  |  |  |  |  |  |  |  |  |  |  |  |  |  |  |  |  |  |  |  |  |  |
|  | TR | **Termination and Testing Works** |  | 2027-03-18 | 2027-05-25 |  |  |  |  |  |  |  |  |  |  |  |  |  |  |  |  |  |  |  |  |  |  |  |  |
| CO-R15-SL-TF-200 |  | Termination Works For Lighting Poles Cables of Street Lighting Network-[Road 15] | 12d | 2027-03-18 | 2027-03-31 | PRO-R15-SL-DL-130 FF+3d, CO-R11-SL-TF-180, CO-R17.S14-SL-130 |  |  |  | -163d | 0d | Labor/Helper [17.86 h]; Electrician [17.86 h]; Low Current Technician [17.86 h]; Supply, installation , test and operation of cables, Copper, (4Cx25mmï¿½,Cu/XLPE/SWA/PVC +1x16mmï¿½ PVC/PVC) [607.9] | 29,113.02 |  | CO-R15-SL-TF-200 | TR | TR | Each | T&F | SL | TERM | CON | R15 | SL | SL |  |  |  |  |
| CO-R15-SL-TF-210 |  | Termination Works For Panel Board Cables of Street Lighting Network-[Road 15] | 12d | 2027-04-18 | 2027-05-01 | PRO-R15-SL-DL-170 FF+3d, CO-R11-SL-TF-190, CO-R14-SL-TF-380, CO-R15.S10-SL-160, CO-R15.S10-SL-190, CO-R15.S10-SL-220 |  |  |  | -191d | 0d | Labor/Helper [17.86 h]; Electrician [17.86 h]; Low Current Technician [17.86 h] |  |  | CO-R15-SL-TF-210 | TR | TR | Each | T&F | SL | TERMINA | CON | R15 | SL | SL |  |  |  |  |
| CO-R15-SL-TF-380 |  | Testing Works For Panel Board Cables of Street Lighting Network-[Road 15] | 16d | 2027-05-02 | 2027-05-25 | CO-R15-SL-TF-210, CO-R14-SL-TF-380 |  |  |  | -185d | 0d | Labor/Helper [26.78 h]; Electrician [26.78 h] |  |  | CO-R15-SL-TF-380 |  |  |  |  | SL | TEST | CON | R15 | SL | SL |  |  |  |  |
|  | ES | **Earthing System Works** |  |  |  |  |  |  |  |  |  |  |  |  |  |  |  |  |  |  |  |  |  |  |  |  |  |  |  |
|  | 14 | **Medium Voltage Network** |  | 2026-12-19 | 2026-12-26 |  |  |  |  |  |  |  |  |  |  |  |  |  |  |  |  |  |  |  |  |  |  |  |  |
|  | TT | **Termination and Testing Works** |  | 2026-12-19 | 2026-12-26 |  |  |  |  |  |  |  |  |  |  |  |  |  |  |  |  |  |  |  |  |  |  |  |  |
| CO-R15-MV-TF-200 |  | Termination Works of Medium Voltage Network-[Road 15] | 7d | 2026-12-19 | 2026-12-26 | CO-R15.S09-MV-ML-270, CO-R11-MV-TF-180, PRO-R15-MV-DL-110 FF+3d |  |  |  | -64d | 0d | Labor/Helper [17.86 h]; Electrician [17.86 h]; Low Current Technician [17.86 h] |  |  | CO-R15-MV-TF-200 | RMU | TR | Each | TR | MV | TEST | CON | R15 | MV | MV |  |  |  |  |
|  | 1 | **Road Works** |  | 2026-04-01 | 2027-07-24 |  |  |  |  |  |  |  |  |  |  |  |  |  |  |  |  |  |  |  |  |  |  |  |  |
|  | 1 | **Bituminous Construction** |  | 2026-04-01 | 2026-04-11 |  |  |  |  |  |  |  |  |  |  |  |  |  |  |  |  |  |  |  |  |  |  |  |  |
| CO-R15-S09-RD-F-110 |  | Application of Prime Coat Layer for Road Works- S.W 11-[Road 15] | 10d | 2026-04-01 A | 2026-04-11 A | CO-R15.S09-RD-P-130 | 100% | 2026-11-09 | 2026-11-19 |  |  | Labor/Helper [65.36 h]; Insulation Worker [65.36 h]; Bituminous base course(Grading I - Class A), 70mm thick after compaction including Prime Coat (MC1) [551.72] | 205,723.13 | 205,723.13 | CO-R15-S09-RD-F-110 | AB | MC | Sq.m | BS | RD |  | CON | R15 | RD | RD | 7 | 7 | S09 |  |
| CO-R15-S09-RD-F-120 |  | Bituminous Base & Wearing Courses Layers for Road Works- S.W 11-[Road 15] | 10d | 2026-04-01 A | 2026-04-11 A | CO-R15-S09-RD-F-110 SS+3d, CO-R15-S09-RD-F-110 FF+3d | 100% | 2026-11-12 | 2026-11-23 |  |  | Labor/Helper [65.36 h]; Eq. Operator [65.36 h]; Asphalt Cutter [96 h]; Asphalt Paver [96 h]; Bituminous concrete wearing course, 50 mm thick, after compaction(Grading I - Class A), including tack coat (RC) [394.23] | 161,833.04 | 161,833.04 | CO-R15-S09-RD-F-120 | AB | AB | Sq.m | BS | RD |  | CON | R15 | RD | RD | 7 | 7 | S09 |  |
| CO-R15-S10-RD-F-140 |  | Application of Prime Coat Layer for Road Works- S.W 12-[Road 15] | 10d | 2026-04-01 A | 2026-04-11 A | PRO-R15-RD-DL-160 FF+3d, CO-R15.S10-RD-P-130, CO-R15-S09-RD-F-110 SS | 100% | 2026-11-09 | 2026-11-19 |  |  | Labor/Helper [98.05 h]; Insulation Worker [98.05 h]; Bituminous base course(Grading I - Class A), 70mm thick after compaction including Prime Coat (MC1) [551.72] | 205,723.13 | 205,723.13 | CO-R15-S10-RD-F-140 | AB | MC | Sq.m | BS | RD |  | CON | R15 | RD | RD | 8 | 8 | S10 |  |
| CO-R15-S10-RD-F-150 |  | Bituminous Base & Wearing Courses Layers for Road Works- S.W 12-[Road 15] | 10d | 2026-04-01 A | 2026-04-11 A | CO-R15-S10-RD-F-140 SS+3d, CO-R15-S10-RD-F-140 FF+3d, PRO-R15-RD-DL-170 FF+3d, CO-R15-S09-RD-F-120 SS | 100% | 2026-11-12 | 2026-11-23 |  |  | Labor/Helper [98.05 h]; Eq. Operator [98.05 h]; Asphalt Cutter [144 h]; Asphalt Paver [144 h]; Bituminous concrete wearing course, 50 mm thick, after compaction(Grading I - Class A), including tack coat (RC) [394.23] | 161,833.04 | 161,833.04 | CO-R15-S10-RD-F-150 | AB | AB | Sq.m | BS | RD |  | CON | R15 | RD | RD | 8 | 8 | S10 |  |
|  | TS | **Traffic Signs Boards and Roads Marking** |  | 2027-07-11 | 2027-07-24 |  |  |  |  |  |  |  |  |  |  |  |  |  |  |  |  |  |  |  |  |  |  |  |  |
| CO-R15-S09-RD-F-100 |  | Installation Works of Traffic Signs Boards For Road Works- S.W 11-[Road 15] | 10d | 2027-07-11 | 2027-07-21 | CO-R15.S09-RD-P-130, CO-R11-S07-RD-F-100, CO-R15-S09-RD-F-160 FF |  |  |  | -187d | 0d | Labor/Helper [16 h]; Painter [16 h]; Traffic signs, ground mounted, Sheet Alumenium, (breakaway) Single post, with all accessories [4.01]; Straight Arrow [8.03]; Straight-Right Arrow [1] | 4,476.73 |  | CO-R15-S09-RD-F-100 | TS | TF | Each | TRF | RD |  | CON | R15 | RD | RD | 7 | 7 | S09 |  |
| CO-R15-S09-RD-F-160 |  | Application of Road Marking Works For Road Works- S.W 11-[Road 15] | 10d | 2027-07-11 | 2027-07-21 | CO-R15-S09-RD-F-120, CO-R11-S07-RD-F-160 |  |  |  | -187d | 0d | Labor/Helper [16 h]; Painter [16 h]; Retroreflective Thermoplastic White, Traffic lines [296.93]; Retroreflective Thermoplastic Yellow, Traffic lines [45.14]; Retroreflective raised pavement markers(Type A) [58.18] | 11,979.12 |  | CO-R15-S09-RD-F-160 | RM | RM | LM | TRF | RD |  | CON | R15 | RD | RD | 7 | 7 | S09 |  |
| CO-R15-S10-RD-F-130 |  | Installation Works of Traffic Signs Boards For Road Works- S.W 12-[Road 15] | 12d | 2027-07-11 | 2027-07-24 | CO-R15.S10-RD-P-130, CO-R11-S08-RD-F-130, PRO-R15-RD-DL-140 FF+3d, CO-R15-S10-RD-F-170 FF |  |  |  | -186d | 0d | Labor/Helper [16 h]; Painter [16 h]; Traffic signs, ground mounted, Sheet Alumenium, (breakaway) Single post, with all accessories [6.02]; Straight Arrow [8.03]; Straight-Right Arrow [1] | 6,273.95 |  | CO-R15-S10-RD-F-130 | TS | TF | Each | TRF | RD |  | CON | R15 | RD | RD | 8 | 8 | S10 |  |
| CO-R15-S10-RD-F-170 |  | Application of Road Marking Works For Road Works- S.W 12-[Road 15] | 10d | 2027-07-11 | 2027-07-21 | CO-R15-S10-RD-F-150, CO-R11-S08-RD-F-170, PRO-R15-RD-DL-150 FF+3d |  |  |  | -187d | 0d | Labor/Helper [16 h]; Painter [16 h]; Retroreflective Thermoplastic White, Traffic lines [296.93]; Retroreflective Thermoplastic Yellow, Traffic lines [45.14]; Retroreflective raised pavement markers(Type A) [58.18] | 11,979.12 |  | CO-R15-S10-RD-F-170 | RM | RM | LM | TRF | RD |  | CON | R15 | RD | RD | 8 | 8 | S10 |  |
|  | 8 | **Road 16 Local 1 ( 527 LM )** |  | 2025-10-13 | 2027-08-04 |  |  |  |  |  |  |  |  |  |  |  |  |  |  |  |  |  |  |  |  |  |  |  |  |
|  | 10 | **Sewage Network** |  | 2026-09-15 | 2027-04-11 |  |  |  |  |  |  |  |  |  |  |  |  |  |  |  |  |  |  |  |  |  |  |  |  |
|  | TF | **Testing and Finishes** |  | 2026-09-15 | 2027-04-11 |  |  |  |  |  |  |  |  |  |  |  |  |  |  |  |  |  |  |  |  |  |  |  |  |
| CO-R16-SW-TF-100 |  | Final Testing For Main Line of Sewage Network-[Road 16] | 12d | 2026-09-15 A | 2026-09-21 A | CO-R16.S11-SW-130, CO-R16.S11-RD-P-100 SS+3d, CO-R16.S11-RD-P-100 FF+3d, CO-R15-SW-TF-100, CO-R16.S12-RD-P-100 SS+3d, CO-R16.S12-RD-P-100 FF+3d | 100% | 2026-09-24 | 2026-10-07 |  |  | Labor/Helper [12.71 h]; Plumber [17.22 h]; Pipe Fitter [24.52 h]; Nominal bore : 160mm; Depth : 0.0m - 1.5m [10.03]; Nominal bore : 200mm; Depth : 0.0m - 1.5m [4.01]; Nominal bore : 200mm; Depth : 1.5m - 2.5m [10.03]; Nominal bore : 200mm; Depth : 2.5m - 3.5m [14.04]; Nominal bore : 200mm; Depth : 3.5m - 4.5m [18.06]; Nominal bore : 200mm; Depth : 4.5m -5.5m [8.03]; Nominal bore : 200mm; Depth : 5.5m - 6.5m [8.03] | 21,390.05 | 21,390.05 | CO-R16-SW-TF-100 | TF | Test | Each | TF | SW | TEST | CON | R16 | SW | SW |  |  |  |  |
| CO-R16-SW-TF-110 |  | Install Manhole Cover Works for External Finishes of Sewage Network-[Road 16] | 12d | 2027-03-25 | 2027-04-07 | CO-R16.S11-SW-130 SS+3d, PRO-R16-SW-DL-120 FF+3d, CO-R16-SW-TF-100, CO-R16.S11-SW-130 FF+3d, CO-R16.S11-RD-P-100 SS+3d, CO-R16.S11-RD-P-100 FF+3d, CO-R16.S11-SW-120 SS, CO-R16.S11-SW-120, CO-R16.S11-SW-120 FF, ENG-SH-SW-ML-A-110, ENG-SH-SW-ML-A-110 FF, CO-R15-SW-TF-110, ENG-MS-SW-ML-A-110, ENG-MS-SW-ML-A-110 FF, CO-R16.S12-RD-P-100 SS+3d, CO-R16.S12-RD-P-100 FF+3d |  |  |  | -140d | 0d | Labor/Helper [17.86 h]; Plumber [17.86 h]; Pipe Fitter [17.86 h]; Depth: not exceeding 1.5m [0.1]; Depth: 1.5 - 2.5m [0.25]; Depth: 2.5 - 3.5m [0.05]; Depth: 5.5 - 6.5m [0.05]; Depth:6.5 - 7.5m [0.1] | 7,173.59 |  | CO-R16-SW-TF-110 | TF | Test | Each | TF | SW |  | CON | R16 | SW | SW |  |  |  |  |
| CO-R16-SW-TF-130 |  | Main Manhole Internal Finishes (Benching + Insulation) of Sewage Network-[Road 16] | 12d | 2027-03-29 | 2027-04-11 | CO-R16-SW-TF-110 SS+3d, CO-R16-SW-TF-110 FF+3d, PRO-R16-SW-DL-130 FF+3d, CO-R15-SW-TF-130 |  |  |  | -140d | 0d | Labor/Helper [14.09 h]; Plumber [19.09 h]; Pipe Fitter [20.39 h]; Depth: not exceeding 1.5m [0.1]; Depth: 1.5 - 2.5m [0.25]; Depth: 2.5 - 3.5m [0.05]; Depth: 5.5 - 6.5m [0.05]; Depth:6.5 - 7.5m [0.1] | 7,173.59 |  | CO-R16-SW-TF-130 | TF | Test | Each | TF | SW |  | CON | R16 | SW | SW |  |  |  | 05 num |

| ID | WBS | Activity | Duration | Start | Finish | Predecessors | Complete | Planned start | Planned finish | Total float | Free float | Resources | Cost | Actual cost | Activity ID N | 02- Network-WBS | 03- Activity | 04-UOM | 05-Discipline | 01- Network | 08 Stage | 09 Roads | Discipline | New Discipline | 07-Weightage System | Seq | New Seq | 10 side Walk |
| --- | --- | --- | --- | --- | --- | --- | --- | --- | --- | --- | --- | --- | --- | --- | --- | --- | --- | --- | --- | --- | --- | --- | --- | --- | --- | --- | --- | --- |
|  | 11 | **Storm Drainage Network** |  | 2026-05-31 | 2027-05-01 |  |  |  |  |  |  |  |  |  |  |  |  |  |  |  |  |  |  |  |  |  |  |  |
|  | TF | **Testing and Finishes** |  | 2026-05-31 | 2027-05-01 |  |  |  |  |  |  |  |  |  |  |  |  |  |  |  |  |  |  |  |  |  |  |  |
| CO-R16-SD-TF-120 |  | Main Manhole Internal Finishes (Benching + Insulation ) for Storm Drainage Network-[Road 16] | 12d | 2026-05-31 A | 2026-06-26 A | ENG-SH-RD-A-100, ENG-SH-RD-A-100 FF, CO-R15-SD-TF-120, ENG-MS-RD-A-10, ENG-MS-RD-A-10 FF, PRO-R16-SD-DL-100 FF+3d | 100% | 2026-10-22 | 2026-11-04 |  |  | Labor/Helper [528.54 h]; MH ; depth: 0.0m - 1.5m [0.1]; MH ; depth: 1.51m - 2.5m [0.2]; MH ; depth: 1.51m - 2.5m [0.1]; Single Catch basin [28.09]; Double Catch basin [8.03]; Pipe encasement dia 300 mm [16.05]; Pipe encasement dia 400 mm [7.02]; Pipe encasement dia 500 mm [6.02]; Pipe encasement dia 600 mm [3.01]; Pipe encasement dia 700 mm [4.01]; Pipe encasement dia 800 mm [3.01]; Pipe encasement dia 900 mm [1]; Pipe encasement dia 1000 mm [1]; Pipe encasement dia 1100 mm [1]; Pipe encasement dia 1200 mm [1] | 176,566.21 | 176,566.21 | CO-R16-SD-TF-120 | TF | Test | Each | TF | SD | CON | R16 | SD | SD |  |  |  |  |
| CO-R16-SD-TF-100 |  | Testing Work for Pipes of Storm Drainage Network-[Road 16] | 16d | 2026-11-24 | 2026-12-12 | CO-R16.S11-SD-130 SS+3d, PRO-R16-SD-DL-140 FF+3d, CO-R16.S11-RD-P-100 SS+3d, CO-R16.S11-RD-P-100 FF+3d, CO-R16.S11-SD-130 FF+3d, CO-R16.S11-SD-120 SS, CO-R16.S11-SD-120, ENG-SH-SD-ML-A-110, CO-R15-SD-TF-100, ENG-MS-SD-ML-A-110, CO-R16.S12-RD-P-100 SS+3d, CO-R16.S12-RD-P-100 FF+3d |  |  |  | -28d | 0d | Labor/Helper [26.78 h]; Plumber [26.78 h]; Pipe with diameter 400mm ; depth: 0.0m - 1.5m [31.1]; Pipe with diameter 400mm ; depth: 1.51m - 2.5m [28.09]; Pipe with diameter 500mm ; depth: 1.51m - 2.5m [41.13]; Pipe with diameter 600mm ; depth: 1.51m - 2.5m [27.08]; Pipe with diameter 700mm ; depth: 1.51m - 2.5m [51.16]; Pipe with diameter 800mm ; depth: 1.51m - 2.5m [23.07]; Pipe with diameter 900mm ; depth: 1.51m - 2.5m [3.01]; Pipe with diameter 1000mm ; depth: 1.51m - 2.5m [8.03]; Pipe with diameter 1000mm ; depth: 2.51 - 3.5m [8.03] | 94,020.44 |  | CO-R16-SD-TF-100 | TF | Test | Each | TF | SD | CON | R16 | SD | SD | TEST |  |  |  |
| CO-R16-SD-TF-110 |  | Install Catch Basin Cover Works for External Finishes of Storm Drainage Network-[Road 16] | 12d | 2026-12-08 | 2026-12-21 | CO-R16.S11-SD-170 SS+3d, PRO-R16-SD-DL-150 FF+3d, CO-R16.S11-RD-P-100 SS+3d, CO-R16.S11-RD-P-100 FF+3d, CO-R16.S11-RD-P-100, CO-R16.S11-SD-170 FF+3d, CO-R15-SD-TF-110, CO-R16.S12-RD-P-100 SS+3d, CO-R16.S12-RD-P-100 FF+3d |  |  |  | -36d | 0d | Labor/Helper [26.78 h]; Foreman [26.78 h]; Pipe with diameter 300mm ; depth: 0 - 1.5m [37.12]; Pipe with diameter 400mm ; depth: 0 - 1.5m [3.01] | 9,580.44 |  | CO-R16-SD-TF-110 | TF | Test | Each | TF | SD | CON | R16 | SD | SD | cover |  |  |  |
| CO-R16-SD-TF-130 |  | Catch Basin Internal Finishes (Benching + Insulation ) for Storm Drainage Network-[Road 16] | 16d | 2027-04-13 | 2027-05-01 | CO-R16-SD-TF-110 SS+3d, CO-R16-SD-TF-110 FF+3d, PRO-R16-SD-DL-160 FF+3d, CO-R16-SD-TF-100 SS, CO-R16-SD-TF-100, CO-R16-SD-TF-100 FF, CO-R16-SD-TF-110, CO-R16-SW-TF-110 SS, CO-R16-SW-TF-110, CO-R16-SW-TF-110 FF, ENG-SH-RD-A-100, ENG-SH-RD-A-100 FF, CO-R15-SD-TF-130, ENG-MS-RD-A-10, ENG-MS-RD-A-10 FF |  |  |  | -128d | 0d | Labor/Helper [16 h]; Foreman [16 h]; Pipe with diameter 300mm ; depth: 0 - 1.5m [37.12]; Pipe with diameter 400mm ; depth: 0 - 1.5m [3.01] | 9,580.44 |  | CO-R16-SD-TF-130 | TF | Test | Each | TF | SD | CON | R16 | SD | SD | INSUL |  |  |  |
|  | 9 | **Potable Water Network** |  | 2027-03-16 | 2027-06-24 |  |  |  |  |  |  |  |  |  |  |  |  |  |  |  |  |  |  |  |  |  |  |  |
|  | TF | **Testing and Finishes** |  | 2027-03-16 | 2027-06-24 |  |  |  |  |  |  |  |  |  |  |  |  |  |  |  |  |  |  |  |  |  |  |  |
| CO-R16-PW-TF-100 |  | Final Finishes works and Covers for Valves and Valve Chambers of Potable Water Network-[Road 16] | 12d | 2027-03-16 | 2027-03-29 | CO-R16.S11-RD-P-100 FS+3d, CO-R15-PW-TF-100, PRO-R16-PW-DL-130 FF+3d, CO-R16.S12-RD-P-100 FS+3d |  |  |  | -132d | 0d | Labor/Helper [26.78 h]; Plumber [26.78 h] |  |  | CO-R16-PW-TF-100 | TF | Test | Each | TF | PW | CON | R16 | PW | PW | T&COV |  |  |  |
| CO-R16-PW-TF-120 |  | Fire Hydrant Finishies (S.Box + Safety + Marker Post ) of Potable Water Network-[Road 16] | 12d | 2027-03-30 | 2027-04-12 | CO-R16-PW-TF-100, CO-R15-PW-TF-120, PRO-R16-PW-DL-130 FF+3d |  |  |  | -132d | 0d |  |  |  | CO-R16-PW-TF-120 | TF | Test | Each | TF | PW | CON | R16 | PW | PW |  |  |  |  |
| CO-R16-PW-TF-110 |  | Testing Work for Main Line of Potable Water Network-[Road 16] | 12d | 2027-06-12 | 2027-06-24 | CO-R15-PW-TF-110 |  |  |  | -190d | 0d | Labor/Helper [26.78 h]; Plumber [26.78 h]; Pipe with diameter 200mm; in depth 0.0m - 1.5m [92.29] | 13,701.8 |  | CO-R16-PW-TF-110 | TF | Test | LM | TF | PW | CON | R16 | PW | PW | TEST |  |  |  |
|  | 13 | **Irrigation Network** |  | 2027-03-13 | 2027-03-23 |  |  |  |  |  |  |  |  |  |  |  |  |  |  |  |  |  |  |  |  |  |  |  |
|  | TF | **Testing and Finishes** |  | 2027-03-13 | 2027-03-23 |  |  |  |  |  |  |  |  |  |  |  |  |  |  |  |  |  |  |  |  |  |  |  |
| CO-R16-IR-TF-160 |  | Final Testing (pressure tests) of Irrigation Network-[Road 16] | 10d | 2027-03-13 | 2027-03-23 | CO-R16.S11-IR-130, CO-R16.S11-RD-P-100, CO-R15-IR-TF-150, CO-R16.S12-RD-P-100 |  |  |  | -131d | 0d | Labor/Helper [15 h]; Plumber [15.91 h]; Pipe Fitter [22.66 h]; 125 mm pipe; depth 0.0m - 1.5m [95.3] | 7,236.9 |  | CO-R16-IR-TF-160 | TF | Test | LM | TF | IR | CON | R16 | IR | IR | TEST |  |  |  |
|  | 12 | **Street Lighting Network** |  | 2027-04-01 | 2027-05-27 |  |  |  |  |  |  |  |  |  |  |  |  |  |  |  |  |  |  |  |  |  |  |  |
|  | TR | **Termination and Testing Works** |  | 2027-04-01 | 2027-05-27 |  |  |  |  |  |  |  |  |  |  |  |  |  |  |  |  |  |  |  |  |  |  |  |
| CO-R16-SL-TF-220 |  | Termination Works For Lighting Poles Cables of Street Lighting Network-[Road 16] | 12d | 2027-04-01 | 2027-04-14 | PRO-R16-SL-DL-130 FF+3d, CO-R15-SL-TF-200 |  |  |  | -163d | 0d | Labor/Helper [17.86 h]; Electrician [17.86 h]; Low Current Technician [17.86 h]; Supply, installation , test and operation of cables, Copper, (4Cx25mmï¿½,Cu/XLPE/SWA/PVC +1x16mmï¿½ PVC/PVC) [571.79] | 27,384.21 |  | CO-R16-SL-TF-220 | TR | TR | Each | T&F | SL | CON | R16 | SL | SL | TERM |  |  |  |
| CO-R16-SL-TF-230 |  | Termination Works For Panel Board Cables of Street Lighting Network-[Road 16] | 12d | 2027-05-02 | 2027-05-20 | PRO-R16-SL-DL-170 FF+3d, CO-R15-SL-TF-210 |  |  |  | -191d | 0d |  |  |  | CO-R16-SL-TF-230 | TR | TR | Each | T&F | SL | CON | R16 | SL | SL | TERMINA |  |  |  |
| CO-R16-SL-TF-380 |  | Testing Works For Panel Board Cables of Street Lighting Network-[Road 16] | 2d | 2027-05-26 | 2027-05-27 | CO-R16-SL-TF-230, CO-R15-SL-TF-380 |  |  |  | -185d | 6d |  |  |  | CO-R16-SL-TF-380 |  |  |  |  | SL | CON | R16 | SL | SL | TEST |  |  |  |
|  | ES | **Earthing System Works** |  |  |  |  |  |  |  |  |  |  |  |  |  |  |  |  |  |  |  |  |  |  |  |  |  |  |
|  | 14 | **Medium Voltage Network** |  | 2026-12-27 | 2027-01-03 |  |  |  |  |  |  |  |  |  |  |  |  |  |  |  |  |  |  |  |  |  |  |  |
|  | TT | **Termination and Testing Works** |  | 2026-12-27 | 2027-01-03 |  |  |  |  |  |  |  |  |  |  |  |  |  |  |  |  |  |  |  |  |  |  |  |
| CO-R16-MV-TF-220 |  | Termination Works of Medium Voltage Network-[Road 16] | 7d | 2026-12-27 | 2027-01-03 | CO-R16.S11-MV-ML-300, CO-R15-MV-TF-200, PRO-R16-MV-DL-110 FF+3d |  |  |  | -64d | 0d | Labor/Helper [17.86 h]; Electrician [17.86 h]; Low Current Technician [17.86 h] |  |  | CO-R16-MV-TF-220 | RMU | TR | Each | TR | MV | CON | R16 | MV | MV | TEST |  |  |  |
|  | 1 | **Road Works** |  | 2025-10-13 | 2027-08-04 |  |  |  |  |  |  |  |  |  |  |  |  |  |  |  |  |  |  |  |  |  |  |  |
|  | 1 | **Bituminous Construction** |  | 2025-10-13 | 2026-08-16 |  |  |  |  |  |  |  |  |  |  |  |  |  |  |  |  |  |  |  |  |  |  |  |
| CO-R16-S11-RD-F-110 |  | Application of Prime Coat Layer for Road Works - S.W 13-[Road 16] | 10d | 2025-10-13 A | 2025-10-14 A | CO-R15-S09-RD-F-110, CO-R16.S11-RD-P-130 | 100% | 2026-11-21 | 2026-12-01 |  |  | Labor/Helper [65.36 h]; Insulation Worker [65.36 h]; Bituminous base course(Grading I - Class A), 70mm thick after compaction including Prime Coat (MC1) [524.64] | 195,623.95 | 195,623.95 | CO-R16-S11-RD-F-110 | AB | MC | Sq.m | BS | RD | CON | R16 | RD | RD |  | 5 | 5 | S11 |
| CO-R16-S12-RD-F-140 |  | Application of Prime Coat Layer for Road Works- S.W 14-[Road 16] | 10d | 2025-10-13 A | 2025-10-14 A | CO-R15-S10-RD-F-140, PRO-R16-RD-DL-160 FF+3d, CO-R16.S12-RD-P-130, CO-R16-S11-RD-F-110 SS | 100% | 2026-11-21 | 2026-12-01 |  |  | Labor/Helper [98.05 h]; Insulation Worker [98.05 h]; Bituminous base course(Grading I - Class A), 70mm thick after compaction including Prime Coat (MC1) [524.64] | 195,623.95 | 195,623.95 | CO-R16-S12-RD-F-140 | AB | MC | Sq.m | BS | RD | CON | R16 | RD | RD |  | 6 | 6 | S12 |
| CO-R16-S11-RD-F-120 |  | Bituminous Base & Wearing Courses Layers for Road Works- S.W 13-[Road 16] | 10d | 2026-05-12 A | 2026-05-16 A | CO-R16-S11-RD-F-110 SS+3d, CO-R16-S11-RD-F-110 FF+3d, CO-R15-S09-RD-F-120 | 100% | 2026-11-24 | 2026-12-05 |  |  | Labor/Helper [65.36 h]; Eq. Operator [65.36 h]; Asphalt Cutter [96 h]; Asphalt Paver [96 h]; Bituminous concrete wearing course, 50 mm thick, after compaction(Grading I - Class A), including tack coat (RC) [376.18] | 154,420.5 | 154,420.5 | CO-R16-S11-RD-F-120 | AB | AB | Sq.m | BS | RD | CON | R16 | RD | RD |  | 5 | 5 | S11 |
| CO-R16-S12-RD-F-150 |  | Bituminous Base & Wearing Courses Layers for Road Works- S.W 14-[Road 16] | 10d | 2026-08-12 A | 2026-08-16 A | CO-R16-S12-RD-F-140 SS+3d, CO-R16-S12-RD-F-140 FF+3d, CO-R15-S10-RD-F-150, PRO-R16-RD-DL-170 FF+3d, CO-R16-S11-RD-F-120 FF | 100% | 2026-11-24 | 2026-12-05 |  |  | Labor/Helper [98.05 h]; Eq. Operator [98.05 h]; Asphalt Cutter [144 h]; Asphalt Paver [144 h]; Bituminous concrete wearing course, 50 mm thick, after compaction(Grading I - Class A), including tack coat (RC) [376.18] | 154,420.5 | 154,420.5 | CO-R16-S12-RD-F-150 | AB | AB | Sq.m | BS | RD | CON | R16 | RD | RD |  | 6 | 6 | S12 |

| ID | WBS | Activity | Duration | Start | Finish | Predecessors | Complete | Planned start | Planned finish | Total float | Free float | Resources | Cost | Actual cost | Activity ID N | Seq | New Seq | 02- Network-WBS | 03- Activity | 04-UOM | 05-Discipline | 01- Network | 08 Stage | 09 Roads | 10 side Walk | Discipline | New Discipline | 07-Weightage System | 05number |
| --- | --- | --- | --- | --- | --- | --- | --- | --- | --- | --- | --- | --- | --- | --- | --- | --- | --- | --- | --- | --- | --- | --- | --- | --- | --- | --- | --- | --- | --- |
|  | TS | **Traffic Signs Boards and Roads Marking** |  | 2027-07-22 | 2027-08-04 |  |  |  |  |  |  |  |  |  |  |  |  |  |  |  |  |  |  |  |  |  |  |  |  |
| CO-R16-S11-RD-F-100 |  | Installation Works of Traffic Signs Boards For Road Works- S.W 13-[Road 16] | 10d | 2027-07-22 | 2027-08-02 | CO-R16.S11-RD-P-130, CO-R15-S09-RD-F-100, CO-R16-S11-RD-F-160 FF |  |  |  | -187d | 0d | Labor/Helper [16 h]; Painter [16 h]; Traffic signs, ground mounted, Sheet Alumenium, (breakaway) Single post, with all accessories [4.01]; Straight Arrow [8.03]; Right or Left Arrow [1]; Straight-Right Arrow [1] | 4,574.76 |  | CO-R16-S11-RD-F-100 | 5 | 5 | TS | TF | Each | TRF | RD | CON | R16 | S11 | RD | RD |  |  |
| CO-R16-S11-RD-F-160 |  | Application of Road Marking Works For Road Works- S.W 13-[Road 16] | 10d | 2027-07-22 | 2027-08-02 | CO-R16-S11-RD-F-120, CO-R15-S09-RD-F-160 |  |  |  | -187d | 0d | Labor/Helper [16 h]; Painter [16 h]; Retroreflective Thermoplastic White, Traffic lines [283.89]; Retroreflective Thermoplastic Yellow, Traffic lines [44.14]; Retroreflective raised pavement markers(Type A) [55.17] | 11,464.46 |  | CO-R16-S11-RD-F-160 | 5 | 5 | RM | RM | LM | TRF | RD | CON | R16 | S11 | RD | RD |  |  |
| CO-R16-S12-RD-F-170 |  | Application of Road Marking Works For Road Works- S.W 14-[Road 16] | 10d | 2027-07-22 | 2027-08-02 | CO-R16-S12-RD-F-150, CO-R15-S10-RD-F-170, PRO-R16-RD-DL-150 FF+3d |  |  |  | -187d | 0d | Labor/Helper [16 h]; Painter [16 h]; Retroreflective Thermoplastic White, Traffic lines [283.89]; Retroreflective Thermoplastic Yellow, Traffic lines [44.14]; Retroreflective raised pavement markers(Type A) [55.17] | 11,464.46 |  | CO-R16-S12-RD-F-170 | 6 | 6 | RM | RM | LM | TRF | RD | CON | R16 | S12 | RD | RD |  |  |
| CO-R16-S12-RD-F-130 |  | Installation Works of Traffic Signs Boards For Road Works- S.W 14-[Road 16] | 10d | 2027-07-25 | 2027-08-04 | CO-R16.S12-RD-P-130, CO-R15-S10-RD-F-130, PRO-R16-RD-DL-140 FF+3d, CO-R16-S12-RD-F-170 FF |  |  |  | -186d | 1d | Labor/Helper [16 h]; Painter [16 h]; Traffic signs, ground mounted, Sheet Alumenium, (breakaway) Single post, with all accessories [4.01]; Straight Arrow [8.03]; Right or Left Arrow [1]; Straight-Right Arrow [1] | 4,574.76 |  | CO-R16-S12-RD-F-130 | 6 | 6 | TS | TF | Each | TRF | RD | CON | R16 | S12 | RD | RD |  |  |
|  | 9 | **Road 17 Local 1 ( 500 LM )** |  | 2025-09-20 | 2027-08-14 |  |  |  |  |  |  |  |  |  |  |  |  |  |  |  |  |  |  |  |  |  |  |  |  |
|  | 10 | **Sewage Network** |  | 2026-09-15 | 2027-04-25 |  |  |  |  |  |  |  |  |  |  |  |  |  |  |  |  |  |  |  |  |  |  |  |  |
|  | TF | **Testing and Finishes** |  | 2026-09-15 | 2027-04-25 |  |  |  |  |  |  |  |  |  |  |  |  |  |  |  |  |  |  |  |  |  |  |  |  |
| CO-R17-SW-TF-100 |  | Final Testing For Main Line of Sewage Network-[Road 17] | 12d | 2026-09-15 A | 2026-09-21 A | CO-R17.S13-SW-130, CO-R17.S13-RD-P-100 SS+3d, CO-R17.S13-RD-P-100 FF+3d, CO-R16-SW-TF-100, CO-R17.S14-RD-P-100 SS+3d, CO-R17.S14-RD-P-100 FF+3d | 100% | 2026-10-08 | 2026-10-21 |  |  | Labor/Helper [12.71 h]; Plumber [17.22 h]; Pipe Fitter [24.52 h]; Nominal bore : 160mm; Depth : 0.0m - 1.5m [3.01]; Nominal bore : 160mm; Depth : 1.5m - 2.5m [30.09]; Nominal bore : 200mm; Depth : 0.0m - 1.5m [3.01]; Nominal bore : 200mm; Depth : 1.5m - 2.5m [7.02]; Nominal bore : 200mm; Depth : 2.5m - 3.5m [16.05]; Nominal bore : 200mm; Depth : 3.5m - 4.5m [11.03]; Nominal bore : 200mm; Depth : 4.5m -5.5m [6.02]; Nominal bore : 200mm; Depth : 5.5m - 6.5m [8.03] | 22,451.03 | 22,451.03 | CO-R17-SW-TF-100 |  |  | TF | Test | Each | TF | SW | CON | R17 |  | SW | SW | TEST |  |
| CO-R17-SW-TF-110 |  | Install Manhole Cover Works for External Finishes of Sewage Network-[Road 17] | 12d | 2027-04-08 | 2027-04-21 | CO-R17.S13-SW-130 SS+3d, PRO-R17-SW-DL-120 FF+3d, CO-R17-SW-TF-100, CO-R17.S13-SW-130 FF+3d, CO-R17.S13-RD-P-100 SS+3d, CO-R17.S13-RD-P-100 FF+3d, CO-R17.S13-SW-120 SS, CO-R17.S13-SW-120, CO-R17.S13-SW-120 FF, ENG-SH-SW-ML-A-110, ENG-SH-SW-ML-A-110 FF, CO-R16-SW-TF-110, ENG-MS-SW-ML-A-110, ENG-MS-SW-ML-A-110 FF, CO-R17.S14-RD-P-100 SS+3d, CO-R17.S14-RD-P-100 FF+3d |  |  |  | -140d | 0d | Labor/Helper [13.68 h]; Plumber [18.53 h]; Pipe Fitter [19.8 h]; Depth: not exceeding 1.5m [0.1]; Depth: 1.5 - 2.5m [0.25]; Depth: 2.5 - 3.5m [0.15]; Depth: 5.5 - 6.5m [0.05]; Depth:6.5 - 7.5m [0.05] | 6,733.47 |  | CO-R17-SW-TF-110 |  |  | TF | Test | Each | TF | SW | CON | R17 |  | SW | SW |  |  |
| CO-R17-SW-TF-130 |  | Main Manhole Internal Finishes (Benching + Insulation) of Sewage Network-[Road 17] | 12d | 2027-04-12 | 2027-04-25 | CO-R17-SW-TF-110 SS+3d, CO-R17-SW-TF-110 FF+3d, PRO-R17-SW-DL-130 FF+3d, CO-R16-SW-TF-130 |  |  |  | -140d | 0d | Labor/Helper [13.68 h]; Plumber [18.53 h]; Pipe Fitter [19.8 h]; Depth: not exceeding 1.5m [0.1]; Depth: 1.5 - 2.5m [0.25]; Depth: 2.5 - 3.5m [0.15]; Depth: 5.5 - 6.5m [0.05]; Depth:6.5 - 7.5m [0.05] | 6,733.47 |  | CO-R17-SW-TF-130 |  |  | TF | Test | Each | TF | SW | CON | R17 |  | SW | SW |  | 05 num |
|  | 11 | **Storm Drainage Network** |  | 2026-05-31 | 2027-05-20 |  |  |  |  |  |  |  |  |  |  |  |  |  |  |  |  |  |  |  |  |  |  |  |  |
|  | TF | **Testing and Finishes** |  | 2026-05-31 | 2027-05-20 |  |  |  |  |  |  |  |  |  |  |  |  |  |  |  |  |  |  |  |  |  |  |  |  |
| CO-R17-SD-TF-120 |  | Main Manhole Internal Finishes (Benching + Insulation ) for Storm Drainage Network-[Road 17] | 12d | 2026-05-31 A | 2026-06-18 A | ENG-SH-RD-A-100, ENG-SH-RD-A-100 FF, CO-R16-SD-TF-120, ENG-MS-RD-A-10, ENG-MS-RD-A-10 FF, PRO-R17-SD-DL-100 FF+3d | 100% | 2026-11-05 | 2026-11-18 |  |  | Labor/Helper [325.2 h]; MH ; depth: 0.0m - 1.5m [0.1]; MH ; depth: 1.51m - 2.5m [0.2]; MH ; depth: 2.51 - 3.5m [0.05]; MH ; depth: 1.51m - 2.5m [0.1]; Single Catch basin [28.09]; Double Catch basin [14.04]; Pipe encasement dia 300 mm [14.04]; Pipe encasement dia 400 mm [7.02]; Pipe encasement dia 500 mm [6.02]; Pipe encasement dia 600 mm [3.01]; Pipe encasement dia 700 mm [4.01]; Pipe encasement dia 800 mm [3.01]; Pipe encasement dia 900 mm [1]; Pipe encasement dia 1000 mm [1]; Pipe encasement dia 1100 mm [1]; Pipe encasement dia 1200 mm [1] | 222,085.03 | 222,085.03 | CO-R17-SD-TF-120 |  |  | TF | Test | Each | TF | SD | CON | R17 |  | SD | SD |  |  |
| CO-R17-SD-TF-100 |  | Testing Work for Pipes of Storm Drainage Network-[Road 17] | 16d | 2026-12-13 | 2026-12-30 | CO-R17.S13-SD-130 SS+3d, PRO-R17-SD-DL-140 FF+3d, CO-R17.S13-RD-P-100 SS+3d, CO-R17.S13-RD-P-100 FF+3d, CO-R17.S13-SD-130 FF+3d, CO-R17.S13-SD-120 SS, CO-R17.S13-SD-120, ENG-SH-SD-ML-A-110, CO-R16-SD-TF-100, ENG-MS-SD-ML-A-110, CO-R17.S14-RD-P-100 SS+3d, CO-R17.S14-RD-P-100 FF+3d |  |  |  | -28d | 100d | Labor/Helper [26.78 h]; Plumber [26.78 h]; Pipe with diameter 400mm ; depth: 0.0m - 1.5m [21.07]; Pipe with diameter 400mm ; depth: 1.51m - 2.5m [31.1]; Pipe with diameter 500mm ; depth: 1.51m - 2.5m [54.17]; Pipe with diameter 600mm ; depth: 1.51m - 2.5m [13.04]; Pipe with diameter 700mm ; depth: 1.51m - 2.5m [27.08]; Pipe with diameter 800mm ; depth: 1.51m - 2.5m [11.03]; Pipe with diameter 900mm ; depth: 1.51m - 2.5m [3.01]; Pipe with diameter 1000mm ; depth: 1.51m - 2.5m [10.03]; Pipe with diameter 1000mm ; depth: 2.51 - 3.5m [10.03] | 75,316.02 |  | CO-R17-SD-TF-100 |  |  | TF | Test | Each | TF | SD | CON | R17 |  | SD | SD | TEST |  |
| CO-R17-SD-TF-110 |  | Install Catch Basin Cover Works for External Finishes of Storm Drainage Network-[Road 17] | 12d | 2026-12-22 | 2027-01-04 | CO-R17.S13-SD-170 SS+3d, PRO-R17-SD-DL-150 FF+3d, CO-R17.S13-RD-P-100 SS+3d, CO-R17.S13-RD-P-100 FF+3d, CO-R17.S13-RD-P-100, CO-R17.S13-SD-170 FF+3d, CO-R16-SD-TF-110, CO-R17.S14-RD-P-100 SS+3d, CO-R17.S14-RD-P-100 FF+3d |  |  |  | -32d | 96d | Labor/Helper [26 h]; Foreman [26 h]; Pipe with diameter 300mm ; depth: 0 - 1.5m [35.11]; Pipe with diameter 400mm ; depth: 0 - 1.5m [3.01] | 9,113.77 |  | CO-R17-SD-TF-110 |  |  | TF | Test | Each | TF | SD | CON | R17 |  | SD | SD | cover |  |
| CO-R17-SD-TF-130 |  | Catch Basin Internal Finishes (Benching + Insulation ) for Storm Drainage Network-[Road 17] | 12d | 2027-05-02 | 2027-05-20 | CO-R17-SD-TF-110 SS+3d, CO-R17-SD-TF-110 FF+3d, PRO-R17-SD-DL-160 FF+3d, CO-R17-SD-TF-100 SS, CO-R17-SD-TF-100, CO-R17-SD-TF-100 FF, CO-R17-SD-TF-110, CO-R17-SW-TF-110 SS, CO-R17-SW-TF-110, CO-R17-SW-TF-110 FF, ENG-SH-RD-A-100, ENG-SH-RD-A-100 FF, CO-R16-SD-TF-130, ENG-MS-RD-A-10, ENG-MS-RD-A-10 FF |  |  |  | -128d | 0d | Labor/Helper [16 h]; Foreman [16 h]; Pipe with diameter 300mm ; depth: 0 - 1.5m [35.11]; Pipe with diameter 400mm ; depth: 0 - 1.5m [3.01] | 9,113.77 |  | CO-R17-SD-TF-130 |  |  | TF | Test | Each | TF | SD | CON | R17 |  | SD | SD | INSUL |  |
|  | 9 | **Potable Water Network** |  | 2027-03-30 | 2027-07-08 |  |  |  |  |  |  |  |  |  |  |  |  |  |  |  |  |  |  |  |  |  |  |  |  |
|  | TF | **Testing and Finishes** |  | 2027-03-30 | 2027-07-08 |  |  |  |  |  |  |  |  |  |  |  |  |  |  |  |  |  |  |  |  |  |  |  |  |
| CO-R17-PW-TF-100 |  | Final Finishes works and Covers for Valves and Valve Chambers of Potable Water Network-[Road 17] | 12d | 2027-03-30 | 2027-04-12 | CO-R17.S13-RD-P-100 FS+3d, CO-R16-PW-TF-100, PRO-R17-PW-DL-130 FF+3d, CO-R17.S14-RD-P-100 FS+3d |  |  |  | -132d | 0d | Labor/Helper [26 h]; Plumber [26 h] |  |  | CO-R17-PW-TF-100 |  |  | TF | Test | Each | TF | PW | CON | R17 |  | PW | PW | T&COV |  |
| CO-R17-PW-TF-120 |  | Fire Hydrant Finishies (S.Box + Safety + Marker Post ) of Potable Water Network-[Road 17] | 12d | 2027-04-13 | 2027-04-26 | CO-R17-PW-TF-100, CO-R16-PW-TF-120, PRO-R17-PW-DL-130 FF+3d |  |  |  | -132d | 58d |  |  |  | CO-R17-PW-TF-120 |  |  | TF | Test | Each | TF | PW | CON | R17 |  | PW | PW |  |  |
| CO-R17-PW-TF-110 |  | Testing Work for Main Line of Potable Water Network-[Road 17] | 12d | 2027-06-26 | 2027-07-08 | CO-R16-PW-TF-110 |  |  |  | -190d | 0d | Labor/Helper [23.24 h]; Plumber [28.76 h]; Pipe with diameter 200mm; in depth 0.0m - 1.5m [88.28] | 13,105.45 |  | CO-R17-PW-TF-110 |  |  | TF | Test | LM | TF | PW | CON | R17 |  | PW | PW | TEST |  |
|  | 13 | **Irrigation Network** |  | 2027-03-24 | 2027-04-04 |  |  |  |  |  |  |  |  |  |  |  |  |  |  |  |  |  |  |  |  |  |  |  |  |
|  | TF | **Testing and Finishes** |  | 2027-03-24 | 2027-04-04 |  |  |  |  |  |  |  |  |  |  |  |  |  |  |  |  |  |  |  |  |  |  |  |  |
| CO-R17-IR-TF-170 |  | Final Testing (pressure tests) of Irrigation Network-[Road 17] | 10d | 2027-03-24 | 2027-04-04 | CO-R17.S13-IR-130, CO-R17.S13-RD-P-100, CO-R16-IR-TF-160, CO-R17.S14-RD-P-100 |  |  |  | -131d | 9d | Labor/Helper [17.33 h]; Plumber [17.33 h]; Pipe Fitter [17.33 h]; 125 mm pipe; depth 0.0m - 1.5m [91.29] | 6,932.59 |  | CO-R17-IR-TF-170 |  |  | TF | Test | LM | TF | IR | CON | R17 |  | IR | IR | TEST |  |

| ID | WBS | Activity | Duration | Start | Finish | Predecessors | Complete | Remaining | Planned start | Planned finish | Total float | Free float | Resources | Cost | Actual cost | Activity ID N | 02- Network-WBS | 03- Activity | 04-UOM | 05-Discipline | 01- Network | 07-Weightage System | 08 Stage | 09 Roads | Discipline | New Discipline | Seq | New Seq | 10 side Walk | 05number |
| --- | --- | --- | --- | --- | --- | --- | --- | --- | --- | --- | --- | --- | --- | --- | --- | --- | --- | --- | --- | --- | --- | --- | --- | --- | --- | --- | --- | --- | --- | --- |
|  | 12 | **Street Lighting Network** |  | 2027-04-15 | 2027-06-06 |  |  |  |  |  |  |  |  |  |  |  |  |  |  |  |  |  |  |  |  |  |  |  |  |  |
|  | TR | **Termination and Testing Works** |  | 2027-04-15 | 2027-06-06 |  |  |  |  |  |  |  |  |  |  |  |  |  |  |  |  |  |  |  |  |  |  |  |  |  |
| CO-R17-SL-TF-240 |  | Termination Works For Lighting Poles Cables of Street Lighting Network-[Road 17] | 12d | 2027-04-15 | 2027-04-28 | PRO-R17-SL-DL-130 FF+3d, CO-R16-SL-TF-220 |  |  |  |  | -163d | 46.5d | Labor/Helper [17.86 h]; Electrician [17.86 h]; Low Current Technician [17.86 h]; Supply, installation , test and operation of cables, Copper, (4Cx25mmï¿½,Cu/XLPE/SWA/PVC +1x16mmï¿½ PVC/PVC) [544.7] | 26,086.32 |  | CO-R17-SL-TF-240 | TR | TR | Each | T&F | SL | TERM | CON | R17 | SL | SL |  |  |  |  |
| CO-R17-SL-TF-250 |  | Termination Works For Panel Board Cables of Street Lighting Network-[Road 17] | 12d | 2027-05-22 | 2027-06-03 | PRO-R17-SL-DL-170 FF+3d, CO-R16-SL-TF-230, CO-R17.S14-SL-160, CO-R17.S14-SL-190, CO-R17.S14-SL-220 |  |  |  |  | -191d | 0d | Labor/Helper [17.86 h]; Electrician [17.86 h]; Low Current Technician [17.86 h] |  |  | CO-R17-SL-TF-250 | TR | TR | Each | T&F | SL | TERMINA | CON | R17 | SL | SL |  |  |  |  |
| CO-R17-SL-TF-380 |  | Testing Works For Panel Board Cables of Street Lighting Network-[Road 17] | 2d | 2027-06-05 | 2027-06-06 | CO-R17-SL-TF-250, CO-R16-SL-TF-380 |  |  |  |  | -191d | 18.5d | Labor/Helper [26.78 h]; Electrician [26.78 h] |  |  | CO-R17-SL-TF-380 |  |  |  |  | SL | TEST | CON | R17 | SL | SL |  |  |  |  |
|  | ES | **Earthing System Works** |  |  |  |  |  |  |  |  |  |  |  |  |  |  |  |  |  |  |  |  |  |  |  |  |  |  |  |  |
|  | 14 | **Medium Voltage Network** |  | 2027-01-04 | 2027-01-11 |  |  |  |  |  |  |  |  |  |  |  |  |  |  |  |  |  |  |  |  |  |  |  |  |  |
|  | TT | **Termination and Testing Works** |  | 2027-01-04 | 2027-01-11 |  |  |  |  |  |  |  |  |  |  |  |  |  |  |  |  |  |  |  |  |  |  |  |  |  |
| CO-R17-MV-TF-240 |  | Termination Works of Medium Voltage Network-[Road 17] | 7d | 2027-01-04 | 2027-01-11 | CO-R17.S13-MV-ML-330, CO-R16-MV-TF-220, PRO-R17-MV-DL-110 FF+3d, CO-R17.S13-MV-SS-160 |  |  |  |  | -64d | 55d | Labor/Helper [17.33 h]; Electrician [17.33 h]; Low Current Technician [17.33 h] |  |  | CO-R17-MV-TF-240 | RMU | TR | Each | TR | MV | TEST | CON | R17 | MV | MV |  |  |  |  |
|  | 1 | **Road Works** |  | 2025-09-20 | 2027-08-14 |  |  |  |  |  |  |  |  |  |  |  |  |  |  |  |  |  |  |  |  |  |  |  |  |  |
|  | 1 | **Bituminous Construction** |  | 2025-09-20 | 2025-10-13 |  |  |  |  |  |  |  |  |  |  |  |  |  |  |  |  |  |  |  |  |  |  |  |  |  |
| CO-R17-S13-RD-F-110 |  | Application of Prime Coat Layer for Road Works- S.W 15-[Road 17] | 10d | 2025-09-20 A | 2025-09-25 A | CO-R16-S11-RD-F-110, CO-R17.S13-RD-P-130 | 100% |  | 2026-12-02 | 2026-12-13 |  |  | Labor/Helper [65.36 h]; Insulation Worker [65.36 h]; Bituminous base course(Grading I - Class A), 70mm thick after compaction including Prime Coat (MC1) [499.56] | 186,273.27 | 186,273.27 | CO-R17-S13-RD-F-110 | AB | MC | Sq.m | BS | RD |  | CON | R17 | RD | RD | 3 | 3 | S13 |  |
| CO-R17-S14-RD-F-140 |  | Application of Prime Coat Layer for Road Works- S.W 16-[Road 17] | 10d | 2025-09-20 A | 2025-09-25 A | CO-R16-S12-RD-F-140, PRO-R17-RD-DL-160 FF+3d, CO-R17.S14-RD-P-130, CO-R17-S13-RD-F-110 SS | 100% |  | 2026-12-02 | 2026-12-13 |  |  | Labor/Helper [98.05 h]; Insulation Worker [98.05 h]; Bituminous base course(Grading I - Class A), 70mm thick after compaction including Prime Coat (MC1) [499.56] | 186,273.27 | 186,273.27 | CO-R17-S14-RD-F-140 | AB | MC | Sq.m | BS | RD |  | CON | R17 | RD | RD | 4 | 4 | S14 |  |
| CO-R17-S13-RD-F-120 |  | Bituminous Base & Wearing Courses Layers for Road Works- S.W 15-[Road 17] | 10d | 2025-10-09 A | 2025-10-13 A | CO-R17-S13-RD-F-110 SS+3d, CO-R17-S13-RD-F-110 FF+3d, CO-R16-S11-RD-F-120 | 100% |  | 2026-12-06 | 2026-12-16 |  |  | Labor/Helper [65.36 h]; Eq. Operator [65.36 h]; Asphalt Cutter [96 h]; Asphalt Paver [96 h]; Bituminous concrete wearing course, 50 mm thick, after compaction(Grading I - Class A), including tack coat (RC) [358.12] | 147,008.99 | 147,008.99 | CO-R17-S13-RD-F-120 | AB | AB | Sq.m | BS | RD |  | CON | R17 | RD | RD | 3 | 3 | S13 |  |
| CO-R17-S14-RD-F-150 |  | Bituminous Base & Wearing Courses Layers for Road Works- S.W 16-[Road 17] | 10d | 2025-10-09 A | 2025-10-13 A | CO-R17-S14-RD-F-140 SS+3d, CO-R17-S14-RD-F-140 FF+3d, CO-R16-S12-RD-F-150, PRO-R17-RD-DL-170 FF+3d, CO-R17-S13-RD-F-120 SS | 100% |  | 2026-12-06 | 2026-12-16 |  |  | Labor/Helper [98.05 h]; Eq. Operator [98.05 h]; Asphalt Cutter [144 h]; Asphalt Paver [144 h]; Bituminous concrete wearing course, 50 mm thick, after compaction(Grading I - Class A), including tack coat (RC) [358.12] | 147,008.99 | 147,008.99 | CO-R17-S14-RD-F-150 | AB | AB | Sq.m | BS | RD |  | CON | R17 | RD | RD | 4 | 4 | S14 |  |
|  | TS | **Traffic Signs Boards and Roads Marking** |  | 2027-08-03 | 2027-08-14 |  |  |  |  |  |  |  |  |  |  |  |  |  |  |  |  |  |  |  |  |  |  |  |  |  |
| CO-R17-S13-RD-F-100 |  | Installation Works of Traffic Signs Boards For Road Works- S.W 15-[Road 17] | 10d | 2027-08-03 | 2027-08-14 | CO-R17.S13-RD-P-130, CO-R16-S11-RD-F-100, CO-R17-S13-RD-F-160 FF |  |  |  |  | -187d | 28.5d | Labor/Helper [16 h]; Painter [16 h]; Traffic signs, ground mounted, Sheet Alumenium, (breakaway) Single post, with all accessories [3.01]; Straight Arrow [8.03]; Straight-Right Arrow [1]; Straight-Left Arrow [1] | 3,676.14 |  | CO-R17-S13-RD-F-100 | TS | TF | Each | TRF | RD |  | CON | R17 | RD | RD | 3 | 3 | S13 |  |
| CO-R17-S13-RD-F-160 |  | Application of Road Marking Works For Road Works- S.W 15-[Road 17] | 10d | 2027-08-03 | 2027-08-14 | CO-R17-S13-RD-F-120, CO-R16-S11-RD-F-160 |  |  |  |  | -187d | 0d | Labor/Helper [16 h]; Painter [16 h]; Retroreflective Thermoplastic White, Traffic lines [269.84]; Retroreflective Thermoplastic Yellow, Traffic lines [41.13]; Retroreflective raised pavement markers(Type A) [52.16] | 10,861.98 |  | CO-R17-S13-RD-F-160 | RM | RM | LM | TRF | RD |  | CON | R17 | RD | RD | 3 | 3 | S13 |  |
| CO-R17-S14-RD-F-170 |  | Application of Road Marking Works For Road Works- S.W 16-[Road 17] | 10d | 2027-08-03 | 2027-08-14 | CO-R17-S14-RD-F-150, CO-R16-S12-RD-F-170, PRO-R17-RD-DL-150 FF+3d |  |  |  |  | -187d | 0d | Labor/Helper [16 h]; Painter [16 h]; Retroreflective Thermoplastic White, Traffic lines [269.84]; Retroreflective Thermoplastic Yellow, Traffic lines [41.13]; Retroreflective raised pavement markers(Type A) [52.16] | 10,861.98 |  | CO-R17-S14-RD-F-170 | RM | RM | LM | TRF | RD |  | CON | R17 | RD | RD | 4 | 4 | S14 |  |
| CO-R17-S14-RD-F-130 |  | Installation Works of Traffic Signs Boards For Road Works- S.W 16-[Road 17] | 7d | 2027-08-07 | 2027-08-14 | CO-R17.S14-RD-P-130, CO-R16-S12-RD-F-130, PRO-R17-RD-DL-140 FF+3d, CO-R17-S14-RD-F-170 FF |  |  |  |  | -187d | 28.5d | Labor/Helper [16 h]; Painter [16 h]; Traffic signs, ground mounted, Sheet Alumenium, (breakaway) Single post, with all accessories [3.01]; Straight Arrow [8.03]; Straight-Right Arrow [1]; Straight-Left Arrow [1] | 3,676.14 |  | CO-R17-S14-RD-F-130 | TS | TF | Each | TRF | RD |  | CON | R17 | RD | RD | 4 | 4 | S14 |  |
|  | 3 | **Road 18 Local 1 ( 479 LM )** |  | 2025-09-23 | 2027-09-16 |  |  |  |  |  |  |  |  |  |  |  |  |  |  |  |  |  |  |  |  |  |  |  |  |  |
|  | 10 | **Sewage Network** |  | 2026-09-15 | 2027-04-17 |  |  |  |  |  |  |  |  |  |  |  |  |  |  |  |  |  |  |  |  |  |  |  |  |  |
|  | TF | **Testing and Finishes** |  | 2026-09-15 | 2027-04-17 |  |  |  |  |  |  |  |  |  |  |  |  |  |  |  |  |  |  |  |  |  |  |  |  |  |
| CO-R18-SW-TF-100 |  | Final Testing For Main Line of Sewage Network-[Road 18] | 12d | 2026-09-15 A | 2026-09-21 A | CO-R11.S06-RD-P-100, CO-R18.S15-RD-P-160 SS, CO-R18.S15-RD-P-160 FF | 100% |  | 2026-08-20 | 2026-09-02 |  |  | Labor/Helper [13.31 h]; Plumber [18.03 h]; Pipe Fitter [23.11 h]; Nominal bore : 160mm; Depth : 1.5m - 2.5m [13.04]; Nominal bore : 200mm; Depth : 0.0m - 1.5m [3.01]; Nominal bore : 200mm; Depth : 1.5m - 2.5m [6.02]; Nominal bore : 200mm; Depth : 2.5m - 3.5m [16.05]; Nominal bore : 200mm; Depth : 3.5m - 4.5m [11.03]; Nominal bore : 200mm; Depth : 4.5m -5.5m [6.02]; Nominal bore : 200mm; Depth : 5.5m - 6.5m [7.02] | 18,232.65 | 18,232.65 | CO-R18-SW-TF-100 | TF | Test | Each | TF | SW | TEST | CON | R18 | SW | SW |  |  |  |  |
| CO-R18-SW-TF-110 |  | Install Manhole Cover Works for External Finishes of Sewage Network-[Road 18] | 12d | 2026-11-04 A | 2027-04-13 | CO-R18-SW-TF-100, ENG-SH-SW-ML-A-110, ENG-SH-SW-ML-A-110 FF, CO-R09-SW-TF-110 FF, ENG-MS-SW-ML-A-110, ENG-MS-SW-ML-A-110 FF, PRO-R18-SW-DL-170 | 50% | 12d | 2027-04-22 | 2027-05-05 | -130d | 3d | Depth: not exceeding 1.5m [0.05]; Depth: 1.5 - 2.5m [1]; Depth: 2.5 - 3.5m [0.05]; Depth: 5.5 - 6.5m [0.1]; Depth:6.5 - 7.5m [0.05] | 12,285.47 |  | CO-R18-SW-TF-110 | TF | Test | Each | TF | SW |  | CON | R18 | SW | SW |  |  |  |  |
| CO-R18-SW-TF-130 |  | Main Manhole Internal Finishes (Benching + Insulation) of Sewage Network-[Road 18] | 12d | 2026-11-04 A | 2027-04-17 | CO-R09-SW-TF-120 FF, CO-R18-SW-TF-110 SS, CO-R18-SW-TF-110 FF, PRO-R18-SW-DL-190 | 50% | 12d | 2027-04-26 | 2027-05-09 | -133d | 7d | Depth: not exceeding 1.5m [0.05]; Depth: 1.5 - 2.5m [1]; Depth: 2.5 - 3.5m [0.05]; Depth: 5.5 - 6.5m [0.1]; Depth:6.5 - 7.5m [0.05] | 12,285.47 |  | CO-R18-SW-TF-130 | TF | Test | Each | TF | SW |  | CON | R18 | SW | SW |  |  |  | 05 num |

| ID | WBS | Activity | Duration | Start | Finish | Predecessors | Complete | Remaining | Planned start | Planned finish | Total float | Free float | Resources | Cost | Actual cost | Activity ID N | 02- Network-WBS | 03- Activity | 04-UOM | 05-Discipline | 01- Network | 08 Stage | 09 Roads | Discipline | New Discipline | 07-Weightage System | Seq | New Seq | 10 side Walk |
| --- | --- | --- | --- | --- | --- | --- | --- | --- | --- | --- | --- | --- | --- | --- | --- | --- | --- | --- | --- | --- | --- | --- | --- | --- | --- | --- | --- | --- | --- |
|  | 11 | **Storm Drainage Network** |  | 2026-06-20 | 2027-05-02 |  |  |  |  |  |  |  |  |  |  |  |  |  |  |  |  |  |  |  |  |  |  |  |  |
|  | TF | **Testing and Finishes** |  | 2026-06-20 | 2027-05-02 |  |  |  |  |  |  |  |  |  |  |  |  |  |  |  |  |  |  |  |  |  |  |  |  |
| CO-R18-SD-TF-120 |  | Main Manhole Internal Finishes (Benching + Insulation ) for Storm Drainage Network-[Road 18] | 16d | 2026-06-20 A | 2026-06-27 A | ENG-SH-RD-A-100, ENG-SH-RD-A-100 FF, ENG-MS-RD-A-10, ENG-MS-RD-A-10 FF, PRO-R18-SD-DL-170 FF+3d | 100% |  | 2026-10-22 | 2026-11-09 |  |  | MH ; depth: 0.0m - 1.5m [0.1]; MH ; depth: 1.51m - 2.5m [0.2]; MH ; depth: 1.51m - 2.5m [0.05]; MH ; depth: 2.51 - 3.5m [0.2]; Single Catch basin [25.08]; Double Catch basin [14.04]; Pipe encasement dia 300 mm [14.04]; Pipe encasement dia 400 mm [7.02]; Pipe encasement dia 500 mm [6.02]; Pipe encasement dia 600 mm [3.01]; Pipe encasement dia 700 mm [4.01]; Pipe encasement dia 800 mm [3.01]; Pipe encasement dia 900 mm [1]; Pipe encasement dia 1000 mm [1]; Pipe encasement dia 1100 mm [1]; Pipe encasement dia 1200 mm [1] | 212,686.36 | 212,686.36 | CO-R18-SD-TF-120 | TF | Test | Each | TF | SD | CON | R18 | SD | SD |  |  |  |  |
| CO-R18-SD-TF-100 |  | Testing Work for Pipes of Storm Drainage Network-[Road 18] | 16d | 2026-11-04 A | 2027-03-30 | ENG-SH-SD-ML-A-110, CO-R09-SD-TF-100 FF, ENG-MS-SD-ML-A-110, CO-R17.S13-RD-P-100 SS+3d, CO-R17.S13-RD-P-100 FF+3d | 50% | 16d | 2027-04-08 | 2027-04-26 | -89d | 28d | Labor/Helper [35.77 h]; Plumber [17.79 h]; Pipe with diameter 400mm ; depth: 0.0m - 1.5m [34.11]; Pipe with diameter 400mm ; depth: 1.51m - 2.5m [37.12]; Pipe with diameter 500mm ; depth: 1.51m - 2.5m [54.17]; Pipe with diameter 600mm ; depth: 1.51m - 2.5m [28.09]; Pipe with diameter 700mm ; depth: 1.51m - 2.5m [23.07]; Pipe with diameter 900mm ; depth: 1.51m - 2.5m [35.11]; Pipe with diameter 900mm ; depth: 2.51 - 3.5m [8.03]; Pipe with diameter 1000mm ; depth: 1.51m - 2.5m [7.02]; Pipe with diameter 1000mm ; depth: 2.51 - 3.5m [7.02] | 100,116.71 |  | CO-R18-SD-TF-100 | TF | Test | Each | TF | SD | CON | R18 | SD | SD | TEST |  |  |  |
| CO-R18-SD-TF-110 |  | Install Catch Basin Cover Works for External Finishes of Storm Drainage Network-[Road 18] | 16d | 2026-11-04 A | 2027-03-21 | CO-R09-SD-TF-110 FF, CO-R18.S15-RD-P-160 SS, CO-R18.S15-RD-P-160 FF, PRO-R18-SD-DL-210 | 50% | 16d | 2027-03-30 | 2027-04-17 | -84d | 33d | Labor/Helper [26.78 h]; Foreman [26.78 h]; Pipe with diameter 300mm ; depth: 0 - 1.5m [34.11]; Pipe with diameter 400mm ; depth: 0 - 1.5m [1] | 8,248.86 |  | CO-R18-SD-TF-110 | TF | Test | Each | TF | SD | CON | R18 | SD | SD | cover |  |  |  |
| CO-R18-SD-TF-130 |  | Catch Basin Internal Finishes (Benching + Insulation ) for Storm Drainage Network-[Road 18] | 16d | 2026-11-04 A | 2027-05-02 | CO-R18-SD-TF-110 SS+3d, CO-R18-SD-TF-110 FF+3d, CO-R18-SD-TF-100 SS, CO-R18-SD-TF-100 FF, CO-R18-SW-TF-110 SS, CO-R18-SW-TF-110 FF, ENG-SH-RD-A-100, ENG-SH-RD-A-100 FF, CO-R09-SD-TF-130 FF, ENG-MS-RD-A-10, ENG-MS-RD-A-10 FF, PRO-R18-SD-DL-230 | 50% | 16d | 2027-05-11 | 2027-06-03 | -117d | 11d | Labor/Helper [26 h]; Foreman [26 h]; Pipe with diameter 300mm ; depth: 0 - 1.5m [34.11]; Pipe with diameter 400mm ; depth: 0 - 1.5m [1] | 8,248.86 |  | CO-R18-SD-TF-130 | TF | Test | Each | TF | SD | CON | R18 | SD | SD | INSUL |  |  |  |
|  | 9 | **Potable Water Network** |  | 2026-11-04 | 2027-07-08 |  |  |  |  |  |  |  |  |  |  |  |  |  |  |  |  |  |  |  |  |  |  |  |  |
|  | TF | **Testing and Finishes** |  | 2026-11-04 | 2027-07-08 |  |  |  |  |  |  |  |  |  |  |  |  |  |  |  |  |  |  |  |  |  |  |  |  |
| CO-R18-PW-TF-100 |  | Final Finishes works and Covers for Valves and Valve Chambers of Potable Water Network-[Road 18] | 12d | 2026-11-04 A | 2027-04-24 | CO-R09-PW-TF-100 FF, CO-R18.S15-RD-P-160 SS, CO-R18.S15-RD-P-160 FF | 50% | 12d | 2027-05-03 | 2027-05-22 | -130d | 12d | Labor/Helper [23.94 h]; Plumber [29.63 h] |  |  | CO-R18-PW-TF-100 | TF | Test | Each | TF | PW | CON | R18 | PW | PW | T&COV |  |  |  |
| CO-R18-PW-TF-110 |  | Testing Work for Main Line of Potable Water Network-[Road 18] | 12d | 2026-11-04 A | 2027-07-08 | CO-R09-PW-TF-110 FF, CO-R17-PW-TF-110 FF, PRO-R18-PW-DL-170 FF, PRO-R17-SD-DL-140 SS | 50% | 12d | 2027-07-18 | 2027-07-31 | -190d | 0d | Labor/Helper [14.3 h]; Plumber [17.7 h]; Pipe with diameter 200mm; in depth 0.0m - 1.5m [100.31] | 14,893.49 |  | CO-R18-PW-TF-110 | TF | Test | LM | TF | PW | CON | R18 | PW | PW | TEST |  |  |  |
| CO-R18-PW-TF-120 |  | Fire Hydrant Finishies (S.Box + Safety + Marker Post ) of Potable Water Network-[Road 18] | 12d | 2026-11-04 A | 2027-05-08 | CO-R18-PW-TF-100 FF, CO-R09-PW-TF-120 FF, CO-R18-PW-TF-100 SS | 50% | 12d | 2027-05-23 | 2027-06-05 | -142d | 48d |  |  |  | CO-R18-PW-TF-120 | TF | Test | Each | TF | PW | CON | R18 | PW | PW |  |  |  |  |
|  | 13 | **Irrigation Network** |  | 2026-11-04 | 2027-04-14 |  |  |  |  |  |  |  |  |  |  |  |  |  |  |  |  |  |  |  |  |  |  |  |  |
|  | TF | **Testing and Finishes** |  | 2026-11-04 | 2027-04-14 |  |  |  |  |  |  |  |  |  |  |  |  |  |  |  |  |  |  |  |  |  |  |  |  |
| CO-R18-IR-TF-110 |  | Final Testing (pressure tests) of Irrigation Network-[Road 18] | 16d | 2026-11-04 A | 2027-04-14 | CO-R09-IR-TF-100 FF, CO-R18.S15-RD-P-160 SS, CO-R18.S15-RD-P-160 FF | 50% | 16d | 2027-04-24 | 2027-05-11 | -140d | 0d | Labor/Helper [16.77 h]; Plumber [17.79 h]; Pipe Fitter [19 h]; 125 mm pipe; depth 0.0m - 1.5m [88.28] | 6,703.86 |  | CO-R18-IR-TF-110 | TF | Test | LM | TF | IR | CON | R18 | IR | IR | TEST |  |  |  |
|  | 12 | **Street Lighting Network** |  | 2026-11-04 | 2027-06-26 |  |  |  |  |  |  |  |  |  |  |  |  |  |  |  |  |  |  |  |  |  |  |  |  |
|  | TR | **Termination and Testing Works** |  | 2026-11-04 | 2027-06-26 |  |  |  |  |  |  |  |  |  |  |  |  |  |  |  |  |  |  |  |  |  |  |  |  |
| CO-R18-SL-TF-120 |  | Termination Works For Lighting Poles Cables of Street Lighting Network-[Road 18] | 12.25d | 2026-11-04 A | 2027-03-28 | CO-R09-SL-TF-100 FF, PRO-R18-SL-DL-210 FF, PRO-R18-SL-DL-250 FF, CO-R18.S16-SL-130 FF, PRO-R10-SL-DL-130 SS | 80% | 12.25d | 2027-03-15 | 2027-03-29 | -136d | 73.5d | Labor/Helper [17.86 h]; Electrician [17.86 h]; Low Current Technician [17.86 h]; Supply, installation , test and operation of cables, Copper, (4Cx25mmï¿½,Cu/XLPE/SWA/PVC +1x16mmï¿½ PVC/PVC) [527.65] | 25,270.42 |  | CO-R18-SL-TF-120 | TR | TR | Each | T&F | SL | CON | R18 | SL | SL | TERM |  |  |  |
| CO-R18-SL-TF-130 |  | Termination Works For Panel Board Cables of Street Lighting Network-[Road 18] | 12d | 2026-11-04 A | 2027-06-14 | CO-R09-SL-TF-110 FF, CO-R09.S02-SL-220 FF, CO-R18.S16-SL-160, CO-R18.S16-SL-190 FF, CO-R18.S16-SL-220 FF | 50% | 12d | 2027-05-31 | 2027-06-14 | -197.5d | 10d |  |  |  | CO-R18-SL-TF-130 | TR | TR | Each | T&F | SL | CON | R18 | SL | SL | TERMINA |  |  |  |
| CO-R18-SL-TF-380 |  | Testing Works For Panel Board Cables of Street Lighting Network-[Road 18] | 2d | 2026-11-04 A | 2027-06-26 | CO-R18-SL-TF-130 FF, CO-R09-SL-TF-380 FF, CO-R18-SL-TF-130 SS | 50% | 2d | 2027-06-14 | 2027-06-16 | -207.5d | 2d |  |  |  | CO-R18-SL-TF-380 |  |  |  |  | SL | CON | R18 | SL | SL | TEST |  |  |  |
|  | ES | **Earthing System Works** |  |  |  |  |  |  |  |  |  |  |  |  |  |  |  |  |  |  |  |  |  |  |  |  |  |  |  |
|  | 14 | **Medium Voltage Network** |  | 2026-11-04 | 2027-03-21 |  |  |  |  |  |  |  |  |  |  |  |  |  |  |  |  |  |  |  |  |  |  |  |  |
|  | TT | **Termination and Testing Works** |  | 2026-11-04 | 2027-03-21 |  |  |  |  |  |  |  |  |  |  |  |  |  |  |  |  |  |  |  |  |  |  |  |  |
| CO-R18-MV-TF-120 |  | Termination Works of Medium Voltage Network-[Road 18] | 16d | 2026-11-04 A | 2027-03-21 | CO-R09-MV-TF-100 FF, CO-R18.S15-MV-ML-360, PRO-R18-MV-DL-130 | 50% | 16d | 2027-03-30 | 2027-04-17 | -119d | 0d | Labor/Helper [17.86 h]; Electrician [17.86 h]; Low Current Technician [17.86 h] |  |  | CO-R18-MV-TF-120 | RMU | TR | Each | TR | MV | CON | R18 | MV | MV | TEST |  |  |  |
|  | 1 | **Road Works** |  | 2025-09-23 | 2027-09-16 |  |  |  |  |  |  |  |  |  |  |  |  |  |  |  |  |  |  |  |  |  |  |  |  |
|  | 1 | **Bituminous Construction** |  | 2025-09-23 | 2025-10-13 |  |  |  |  |  |  |  |  |  |  |  |  |  |  |  |  |  |  |  |  |  |  |  |  |
| CO-R18-S15-RD-F-100 |  | Application of Prime Coat Layer for Road Works- S.W 03-[Road 18] | 18d | 2025-09-23 A | 2025-09-28 A | CO-R18.S15-RD-P-140, PRO-R18-RD-DL-240 | 100% |  | 2026-10-08 | 2026-10-29 |  |  | Labor/Helper [159.35 h]; Insulation Worker [159.35 h]; Bituminous base course(Grading I - Class A), 70mm thick after compaction including Prime Coat (MC1) [483.51] | 180,288.3 | 180,288.3 | CO-R18-S15-RD-F-100 | AB | MC | Sq.m | BS | RD | CON | R18 | RD | RD |  | 1 | 1 | S15 |
| CO-R18-S15-RD-F-110 |  | Bituminous Base & Wearing Courses Layers for Road Works- S.W 03-[Road 18] | 18d | 2025-09-23 A | 2025-09-28 A | CO-R18-S15-RD-F-100 SS+3d, CO-R18-S15-RD-F-100 FF+3d, PRO-R18-RD-DL-250 FF+3d | 100% |  | 2026-10-12 | 2026-11-02 |  |  | Labor/Helper [159.35 h]; Eq. Operator [159.35 h]; Asphalt Cutter [144 h]; Asphalt Paver [144 h]; Bituminous concrete wearing course, 50 mm thick, after compaction(Grading I - Class A), including tack coat (RC) [345.08] | 141,655.09 | 141,655.09 | CO-R18-S15-RD-F-110 | AB | AB | Sq.m | BS | RD | CON | R18 | RD | RD |  | 1 | 1 | S15 |
| CO-R18-S16-RD-F-150 |  | Application of Prime Coat Layer for Road Works- S.W 04-[Road 18] | 18d | 2025-10-09 A | 2025-10-13 A | CO-R18-S15-RD-F-100 SS, PRO-R18-RD-DL-240 | 100% |  | 2026-10-22 | 2026-11-12 |  |  | Labor/Helper [159.35 h]; Insulation Worker [159.35 h]; Bituminous base course(Grading I - Class A), 70mm thick after compaction including Prime Coat (MC1) [483.51] | 180,288.3 | 180,288.3 | CO-R18-S16-RD-F-150 | AB | MC | Sq.m | BS | RD | CON | R18 | RD | RD |  | 2 | 2 | S16 |
| CO-R18-S16-RD-F-170 |  | Bituminous Base & Wearing Courses Layers for Road Works- S.W 04-[Road 18] | 18d | 2025-10-09 A | 2025-10-11 A | CO-R18-S16-RD-F-150 SS+3d, CO-R18-S16-RD-F-150 FF+3d, CO-R18-S15-RD-F-110 SS, PRO-R18-RD-DL-250 FF+3d | 100% |  | 2026-10-26 | 2026-11-16 |  |  | Labor/Helper [159.35 h]; Eq. Operator [159.35 h]; Asphalt Cutter [144 h]; Asphalt Paver [144 h]; Bituminous concrete wearing course, 50 mm thick, after compaction(Grading I - Class A), including tack coat (RC) [345.08] | 141,655.09 | 141,655.09 | CO-R18-S16-RD-F-170 | AB | AB | Sq.m | BS | RD | CON | R18 | RD | RD |  | 2 | 2 | S16 |

| ID | WBS | Activity | Duration | Start | Finish | Predecessors | Complete | Remaining | Planned start | Planned finish | Total float | Free float | Resources | Cost | Activity ID N | Seq | New Seq | 02- Network-WBS | 03- Activity | 04-UOM | 05-Discipline | 01- Network | 08 Stage | 09 Roads | 10 side Walk | Discipline | New Discipline |
| --- | --- | --- | --- | --- | --- | --- | --- | --- | --- | --- | --- | --- | --- | --- | --- | --- | --- | --- | --- | --- | --- | --- | --- | --- | --- | --- | --- |
|  | TS | **Traffic Signs Boards and Roads Marking** |  | 2026-11-04 | 2027-09-16 |  |  |  |  |  |  |  |  |  |  |  |  |  |  |  |  |  |  |  |  |  |  |
| CO-R18-S15-RD-F-120 |  | Application of Road Marking Works For Road Works- S.W 03-[Road 18] | 12d | 2026-11-04 A | 2027-08-26 | CO-R09-S1-RD-F-140 FF, CO-R18-S15-RD-F-110, CO-R09-S1-RD-F-150 FF, PRO-R18-RD-DL-210 FF | 50% | 12d | 2027-08-12 | 2027-08-26 | -197.5d | 0d | Labor/Helper [16 h]; Painter [16 h]; Retroreflective Thermoplastic White, Traffic lines [259.81]; Retroreflective Thermoplastic Yellow, Traffic lines [40.13]; Retroreflective raised pavement markers(Type A) [51.16] | 10,508.67 | CO-R18-S15-RD-F-120 | 1 | 1 | RM | RM | LM | TRF | RD | CON | R18 | S15 | RD | RD |
| CO-R18-S15-RD-F-130 |  | Installation Works of Traffic Signs Boards For Road Works- S.W 03-[Road 18] | 12d | 2026-11-04 A | 2027-08-26 | CO-R09-S1-RD-F-150 FF, CO-R18-S15-RD-F-120 FF, PRO-R18-RD-DL-200 FF+3d, CO-R18-S15-RD-F-120 SS | 50% | 12d | 2027-08-26 | 2027-09-09 | -197.5d | 18d | Labor/Helper [16 h]; Painter [16 h]; Traffic signs, ground mounted, Sheet Alumenium, (breakaway) Single post, with all accessories [4.01]; Straight Arrow [8.03]; Straight-Right Arrow [1] | 4,476.73 | CO-R18-S15-RD-F-130 | 1 | 1 | TS | TF | Each | TRF | RD | CON | R18 | S15 | RD | RD |
| CO-R18-S16-RD-F-140 |  | Application of Road Marking Works For Road Works- S.W 04-[Road 18] | 15d | 2026-11-04 A | 2027-09-16 | CO-R09-S2-RD-F-160 FF, CO-R18-S16-RD-F-170, CO-R09-S1-RD-F-150 FF, CO-R09-S2-RD-F-170 FF, PRO-R18-RD-DL-210 FF | 50% | 15d | 2027-09-02 | 2027-09-20 | -215.5d | 0d | Labor/Helper [16 h]; Painter [16 h]; Retroreflective Thermoplastic White, Traffic lines [259.81]; Retroreflective Thermoplastic Yellow, Traffic lines [40.13]; Retroreflective raised pavement markers(Type A) [51.16] | 10,508.67 | CO-R18-S16-RD-F-140 | 2 | 2 | RM | RM | LM | TRF | RD | CON | R18 | S16 | RD | RD |
| CO-R18-S16-RD-F-160 |  | Installation Works of Traffic Signs Boards For Road Works- S.W 04-[Road 18] | 10d | 2026-11-04 A | 2027-09-16 | CO-R18-S16-RD-F-140 FF, CO-R09-S2-RD-F-170 FF, CO-R18-S15-RD-F-130 FF, PRO-R18-RD-DL-200 FF+3d, CO-R18-S16-RD-F-140 SS, CO-R18-S15-RD-F-130 SS | 50% | 10d | 2027-09-09 | 2027-09-21 | -215.5d | 0d | Labor/Helper [16 h]; Painter [16 h]; Traffic signs, ground mounted, Sheet Alumenium, (breakaway) Single post, with all accessories [4.01]; Straight Arrow [8.03]; Straight-Right Arrow [1] | 4,476.73 | CO-R18-S16-RD-F-160 | 2 | 2 | TS | TF | Each | TRF | RD | CON | R18 | S16 | RD | RD |
|  | GEN | **Independent Works** |  | 2025-05-19 | 2027-09-16 |  |  |  |  |  |  |  |  |  |  |  |  |  |  |  |  |  |  |  |  |  |  |
|  | CON | **Tie In To Existing Networks** |  | 2027-03-22 | 2027-09-16 |  |  |  |  |  |  |  |  |  |  |  |  |  |  |  |  |  |  |  |  |  |  |
|  | 1 | **Phase 2 Block "J"** |  | 2027-03-22 | 2027-09-16 |  |  |  |  |  |  |  |  |  |  |  |  |  |  |  |  |  |  |  |  |  |  |
|  | 2 | **Road 09 Local 2 ( 2278 LM )** |  | 2027-03-22 | 2027-07-22 |  |  |  |  |  |  |  |  |  |  |  |  |  |  |  |  |  |  |  |  |  |  |
|  | 15 | **Storm Drainage Network** |  | 2027-05-22 | 2027-05-29 |  |  |  |  |  |  |  |  |  |  |  |  |  |  |  |  |  |  |  |  |  |  |
| TIE-SD-R09 |  | TIE IN Existing Network For Storm Drainage Network | 7d | 2027-05-22 | 2027-05-29 | MS-CF-SD |  |  |  |  | -118d | 0d |  |  | TIE-SD-R09 |  |  | CO | Con | LM | CO | SD | CON | R09 |  | SD | SD |
|  | 16 | **Sewage Network** |  | 2027-04-26 | 2027-05-09 |  |  |  |  |  |  |  |  |  |  |  |  |  |  |  |  |  |  |  |  |  |  |
| TIE-SW-R09 |  | TIE IN Existing Network For Sewage Network | 12d | 2027-04-26 | 2027-05-09 | MS-CF-SW |  |  |  |  | -106d | 62d |  |  | TIE-SW-R09 |  |  | CO | Con | LM | CO | SW | CON | R09 |  | SW | SW |
|  | 17 | **Potable Water Network** |  | 2027-07-10 | 2027-07-22 |  |  |  |  |  |  |  |  |  |  |  |  |  |  |  |  |  |  |  |  |  |  |
| TIE-PW-R09 |  | TIE IN Existing Network For Potable Water Network | 12d | 2027-07-10 | 2027-07-22 | MS-CF-PW |  |  |  |  | -165d | 0d |  |  | TIE-PW-R09 |  |  | CO | Con | LM | CON | PW | CON | R09 |  | PW | PW |
|  | 1 | **Irrigation Network** |  | 2027-04-15 | 2027-04-28 |  |  |  |  |  |  |  |  |  |  |  |  |  |  |  |  |  |  |  |  |  |  |
| TIE-IR-R09 |  | TIE IN Existing Network For Irrigation Network | 12d | 2027-04-15 | 2027-04-28 | MS-CF-IR |  |  |  |  | -97d | 0d |  |  | TIE-IR-R09 |  |  | CO | Con | LM | CON | PW | CON | R09 |  | PW | PW |
|  | 18 | **Meduim Voltage Network** |  | 2027-03-22 | 2027-04-11 |  |  |  |  |  |  |  |  |  |  |  |  |  |  |  |  |  |  |  |  |  |  |
| TIE-R09-MV |  | TIE IN Existing Network For Medium Voltage Network | 18d | 2027-03-22 | 2027-04-11 | MS-CF-MV |  |  |  |  | -91d | 0d |  |  | TIE-R09-MV |  |  | CO | Con | LM | CO | MV | CON | R09 |  | MV | MV |
|  | 2 | **Street Lighting Network** |  | 2027-06-28 | 2027-07-19 |  |  |  |  |  |  |  |  |  |  |  |  |  |  |  |  |  |  |  |  |  |  |
| TIE-R09-SL |  | TIE IN Existing Network For Street Lighting Network | 18d | 2027-06-28 | 2027-07-19 | MS-CF-SL |  |  |  |  | -161.5d | 0d |  |  | TIE-R09-SL |  |  |  |  |  |  |  | CON | R09 |  | SL | SL |
|  | 3 | **Telecom Network** |  | 2027-03-28 | 2027-04-07 |  |  |  |  |  |  |  |  |  |  |  |  |  |  |  |  |  |  |  |  |  |  |
| TIE-R09-TE |  | TIE IN Existing Network For Telecom Network | 10d | 2027-03-28 | 2027-04-07 | MS-CF-TE, MS-CF-MV |  |  |  |  | -88d | 2d |  |  | TIE-R09-TE |  |  |  |  |  |  |  | CON | R09 |  | TE | TE |
|  | 4 | **Road 10 Local 2 ( 2352 LM )** |  | 2027-03-22 | 2027-09-16 |  |  |  |  |  |  |  |  |  |  |  |  |  |  |  |  |  |  |  |  |  |  |
|  | 15 | **Storm Drainage Network** |  | 2027-05-22 | 2027-05-29 |  |  |  |  |  |  |  |  |  |  |  |  |  |  |  |  |  |  |  |  |  |  |
| TIE-SD-R10 |  | TIE IN Existing Network For Storm Drainage Network | 7d | 2027-05-22 | 2027-05-29 | MS-CF-SD |  |  |  |  | -118d | 0d |  |  | TIE-SD-R10 |  |  | CO | Con | LM | CO | SD | CON | R10 |  | SD | SD |

| ID | WBS | Activity | Duration | Start | Finish | Predecessors | Total float | Free float | Activity ID N | 02- Network-WBS | 03- Activity | 04-UOM | 05-Discipline | 01- Network | 08 Stage | 09 Roads | Discipline | New Discipline |
| --- | --- | --- | --- | --- | --- | --- | --- | --- | --- | --- | --- | --- | --- | --- | --- | --- | --- | --- |
|  | 16 | **Sewage Network** |  | 2027-04-26 | 2027-05-09 |  |  |  |  |  |  |  |  |  |  |  |  |  |
| TIE-SW-R10 |  | TIE IN Existing Network For Sewage Network | 12d | 2027-04-26 | 2027-05-09 | MS-CF-SW | -106d | 62d | TIE-SW-R10 | CO | Con | LM | CO | SW | CON | R10 | SW | SW |
|  | 17 | **Potable Water Network** |  | 2027-07-10 | 2027-07-22 |  |  |  |  |  |  |  |  |  |  |  |  |  |
| TIE-PW-R10 |  | TIE IN Existing Network For Potable Water Network | 12d | 2027-07-10 | 2027-07-22 | MS-CF-PW | -165d | 0d | TIE-PW-R10 | CO | Con | LM | CON | PW | CON | R10 | PW | PW |
|  | 1 | **Irrigation Network** |  | 2027-04-15 | 2027-04-28 |  |  |  |  |  |  |  |  |  |  |  |  |  |
| TIE-IR-R10 |  | TIE IN Existing Network For Irrigation Network | 12d | 2027-04-15 | 2027-04-28 | MS-CF-IR | -97d | 0d | TIE-IR-R10 | CO | Con | LM | CON | PW | CON | R10 | PW | PW |
|  | 18 | **Meduim Voltage Network** |  | 2027-03-22 | 2027-04-11 |  |  |  |  |  |  |  |  |  |  |  |  |  |
| TIE-R10-MV |  | TIE IN Existing Network For Medium Voltage Network | 18d | 2027-03-22 | 2027-04-11 | MS-CF-MV | -91d | 0d | TIE-R10-MV | CO | Con | LM | CO | MV | CON | R10 | MV | MV |
|  | 2 | **Street Lighting Network** |  | 2027-06-28 | 2027-07-19 |  |  |  |  |  |  |  |  |  |  |  |  |  |
| TIE-R10-SL |  | TIE IN Existing Network For Street Lighting Network | 18d | 2027-06-28 | 2027-07-19 | MS-CF-SL | -161.5d | 0d | TIE-R10-SL |  |  |  |  |  | CON | R10 | SL | SL |
|  | 4 | **Telecom Network** |  | 2027-03-28 | 2027-04-07 |  |  |  |  |  |  |  |  |  |  |  |  |  |
| TIE-R10-TE |  | TIE IN Existing Network For Telecom Network | 10d | 2027-03-28 | 2027-04-07 | MS-CF-TE, MS-CF-MV | -88d | 2d | TIE-R10-TE |  |  |  |  |  | CON | R10 | TE | TE |
|  | 3 | **Road Works** |  | 2027-09-11 | 2027-09-16 |  |  |  |  |  |  |  |  |  |  |  |  |  |
| TIE-R10-RD |  | TIE IN Existing Network For Road Works | 5d | 2027-09-11 | 2027-09-16 | MS-CF-RD FF, TIE-R10-TE | -212.5d | 0d | TIE-R10-RD |  |  |  |  |  | CON | R10 | RD | RD |
|  | 5 | **Road 11 Local 1 ( 670 LM )** |  | 2027-03-22 | 2027-09-16 |  |  |  |  |  |  |  |  |  |  |  |  |  |
|  | 15 | **Storm Drainage Network** |  | 2027-05-22 | 2027-05-29 |  |  |  |  |  |  |  |  |  |  |  |  |  |
| TIE-SD-R11 |  | TIE IN Existing Network For Storm Drainage Network | 7d | 2027-05-22 | 2027-05-29 | MS-CF-SD | -118d | 0d | TIE-SD-R11 | CO | Con | LM | CO | SD | CON | R11 | SD | SD |
|  | 16 | **Sewage Network** |  | 2027-04-26 | 2027-05-09 |  |  |  |  |  |  |  |  |  |  |  |  |  |
| TIE-SW-R11 |  | TIE IN Existing Network For Sewage Network | 12d | 2027-04-26 | 2027-05-09 | MS-CF-SW | -106d | 62d | TIE-SW-R11 | CO | Con | LM | CO | SW | CON | R11 | SW | SW |
|  | 17 | **Potable Water Network** |  | 2027-07-10 | 2027-07-22 |  |  |  |  |  |  |  |  |  |  |  |  |  |
| TIE-PW-R11 |  | TIE IN Existing Network For Potable Water Network | 12d | 2027-07-10 | 2027-07-22 | MS-CF-PW | -165d | 0d | TIE-PW-R11 | CO | Con | LM | CON | PW | CON | R11 | PW | PW |
|  | 1 | **Irrigation Network** |  | 2027-04-15 | 2027-04-28 |  |  |  |  |  |  |  |  |  |  |  |  |  |
| TIE-IR-R11 |  | TIE IN Existing Network For Irrigation Network | 12d | 2027-04-15 | 2027-04-28 | MS-CF-IR | -97d | 0d | TIE-IR-R11 | CO | Con | LM | CON | PW | CON | R11 | PW | PW |
|  | 18 | **Meduim Voltage Network** |  | 2027-03-22 | 2027-04-11 |  |  |  |  |  |  |  |  |  |  |  |  |  |
| TIE-R11-MV |  | TIE IN Existing Network For Medium Voltage Network | 18d | 2027-03-22 | 2027-04-11 | MS-CF-MV | -91d | 0d | TIE-R11-MV | CO | Con | LM | CO | MV | CON | R11 | MV | MV |

| ID | WBS | Activity | Duration | Start | Finish | Predecessors | Total float | Free float | Activity ID N | 08 Stage | 09 Roads | Discipline | New Discipline | 02- Network-WBS | 03- Activity | 04-UOM | 05-Discipline | 01- Network |
| --- | --- | --- | --- | --- | --- | --- | --- | --- | --- | --- | --- | --- | --- | --- | --- | --- | --- | --- |
|  | 2 | **Street Lighting Network** |  | 2027-06-28 | 2027-07-19 |  |  |  |  |  |  |  |  |  |  |  |  |  |
| TIE-R11-SL |  | TIE IN Existing Network For Street Lighting Network | 18d | 2027-06-28 | 2027-07-19 | MS-CF-SL | -161.5d | 0d | TIE-R11-SL | CON | R11 | SL | SL |  |  |  |  |  |
|  | 4 | **Telecom Network** |  | 2027-03-28 | 2027-04-07 |  |  |  |  |  |  |  |  |  |  |  |  |  |
| TIE-R11-TE |  | TIE IN Existing Network For Telecom Network | 10d | 2027-03-28 | 2027-04-07 | MS-CF-TE, MS-CF-MV | -88d | 2d | TIE-R11-TE | CON | R11 | TE | TE |  |  |  |  |  |
|  | 3 | **Road Works** |  | 2027-09-11 | 2027-09-16 |  |  |  |  |  |  |  |  |  |  |  |  |  |
| TIE-R11-RD |  | TIE IN Existing Network For Road Works | 5d | 2027-09-11 | 2027-09-16 | MS-CF-RD FF, TIE-R11-TE | -208.5d | 0d | TIE-R11-RD | CON | R11 | RD | RD |  |  |  |  |  |
|  | 6 | **Road 14 Local 1 ( 584 LM )** |  | 2027-03-22 | 2027-09-16 |  |  |  |  |  |  |  |  |  |  |  |  |  |
|  | 15 | **Storm Drainage Network** |  | 2027-05-22 | 2027-05-29 |  |  |  |  |  |  |  |  |  |  |  |  |  |
| TIE-SD-R14 |  | TIE IN Existing Network For Storm Drainage Network | 7d | 2027-05-22 | 2027-05-29 | MS-CF-SD | -118d | 0d | TIE-SD-R14 | CON | R14 | SD | SD | CO | Con | LM | CO | SD |
|  | 16 | **Sewage Network** |  | 2027-04-26 | 2027-05-09 |  |  |  |  |  |  |  |  |  |  |  |  |  |
| TIE-SW-R14 |  | TIE IN Existing Network For Sewage Network | 12d | 2027-04-26 | 2027-05-09 | MS-CF-SW | -106d | 62d | TIE-SW-R14 | CON | R14 | SW | SW | CO | Con | LM | CO | SW |
|  | 17 | **Potable Water Network** |  | 2027-07-10 | 2027-07-22 |  |  |  |  |  |  |  |  |  |  |  |  |  |
| TIE-PW-R14 |  | TIE IN Existing Network For Potable Water Network | 12d | 2027-07-10 | 2027-07-22 | MS-CF-PW | -165d | 0d | TIE-PW-R14 | CON | R14 | PW | PW | CO | Con | LM | CON | PW |
|  | 1 | **Irrigation Network** |  | 2027-04-15 | 2027-04-28 |  |  |  |  |  |  |  |  |  |  |  |  |  |
| TIE-IR-R14 |  | TIE IN Existing Network For Irrigation Network | 12d | 2027-04-15 | 2027-04-28 | MS-CF-IR | -97d | 0d | TIE-IR-R14 | CON | R14 | PW | PW | CO | Con | LM | CON | PW |
|  | 18 | **Meduim Voltage Network** |  | 2027-03-22 | 2027-04-11 |  |  |  |  |  |  |  |  |  |  |  |  |  |
| TIE-R14-MV |  | TIE IN Existing Network For Medium Voltage Network | 18d | 2027-03-22 | 2027-04-11 | MS-CF-MV | -91d | 0d | TIE-R14-MV | CON | R14 | MV | MV | CO | Con | LM | CO | MV |
|  | 2 | **Street Lighting Network** |  | 2027-06-28 | 2027-07-19 |  |  |  |  |  |  |  |  |  |  |  |  |  |
| TIE-R14-SL |  | TIE IN Existing Network For Street Lighting Network | 18d | 2027-06-28 | 2027-07-19 | MS-CF-SL | -161.5d | 0d | TIE-R14-SL | CON | R14 | SL | SL |  |  |  |  |  |
|  | 4 | **Telecom Network** |  | 2027-03-28 | 2027-04-07 |  |  |  |  |  |  |  |  |  |  |  |  |  |
| TIE-R14-TE |  | TIE IN Existing Network For Telecom Network | 10d | 2027-03-28 | 2027-04-07 | MS-CF-TE, MS-CF-MV | -88d | 2d | TIE-R14-TE | CON | R14 | TE | TE |  |  |  |  |  |
|  | 3 | **Road Works** |  | 2027-09-11 | 2027-09-16 |  |  |  |  |  |  |  |  |  |  |  |  |  |
| TIE-R14-RD |  | TIE IN Existing Network For Road Works | 5d | 2027-09-11 | 2027-09-16 | MS-CF-RD FF, TIE-R10-TE | -212.5d | 0d | TIE-R14-RD | CON | R14 | RD | RD |  |  |  |  |  |
|  | 7 | **Road 15 Local 1 ( 556 LM )** |  | 2027-03-22 | 2027-07-22 |  |  |  |  |  |  |  |  |  |  |  |  |  |
|  | 15 | **Storm Drainage Network** |  | 2027-05-22 | 2027-05-29 |  |  |  |  |  |  |  |  |  |  |  |  |  |
| TIE-SD-R15 |  | TIE IN Existing Network For Storm Drainage Network | 7d | 2027-05-22 | 2027-05-29 | MS-CF-SD | -118d | 0d | TIE-SD-R15 | CON | R15 | SD | SD | CO | Con | LM | CO | SD |

| ID | WBS | Activity | Duration | Start | Finish | Predecessors | Total float | Free float | Activity ID N | 02- Network-WBS | 03- Activity | 04-UOM | 05-Discipline | 01- Network | 08 Stage | 09 Roads | Discipline | New Discipline |
| --- | --- | --- | --- | --- | --- | --- | --- | --- | --- | --- | --- | --- | --- | --- | --- | --- | --- | --- |
|  | 16 | **Sewage Network** |  | 2027-04-26 | 2027-05-09 |  |  |  |  |  |  |  |  |  |  |  |  |  |
| TIE-SW-R15 |  | TIE IN Existing Network For Sewage Network | 12d | 2027-04-26 | 2027-05-09 | MS-CF-SW | -106d | 62d | TIE-SW-R15 | CO | Con | LM | CO | SW | CON | R15 | SW | SW |
|  | 17 | **Potable Water Network** |  | 2027-07-10 | 2027-07-22 |  |  |  |  |  |  |  |  |  |  |  |  |  |
| TIE-PW-R15 |  | TIE IN Existing Network For Potable Water Network | 12d | 2027-07-10 | 2027-07-22 | MS-CF-PW | -165d | 0d | TIE-PW-R15 | CO | Con | LM | CON | PW | CON | R15 | PW | PW |
|  | 1 | **Irrigation Network** |  | 2027-04-15 | 2027-04-28 |  |  |  |  |  |  |  |  |  |  |  |  |  |
| TIE-IR-R15 |  | TIE IN Existing Network For Irrigation Network | 12d | 2027-04-15 | 2027-04-28 | MS-CF-IR | -97d | 0d | TIE-IR-R15 | CO | Con | LM | CON | PW | CON | R15 | PW | PW |
|  | 18 | **Meduim Voltage Network** |  | 2027-03-22 | 2027-04-11 |  |  |  |  |  |  |  |  |  |  |  |  |  |
| TIE-R15-MV |  | TIE IN Existing Network For Medium Voltage Network | 18d | 2027-03-22 | 2027-04-11 | MS-CF-MV | -91d | 0d | TIE-R15-MV | CO | Con | LM | CO | MV | CON | R15 | MV | MV |
|  | 2 | **Street Lighting Network** |  | 2027-06-28 | 2027-07-19 |  |  |  |  |  |  |  |  |  |  |  |  |  |
| TIE-R15-SL |  | TIE IN Existing Network For Street Lighting Network | 18d | 2027-06-28 | 2027-07-19 | MS-CF-SL | -161.5d | 0d | TIE-R15-SL |  |  |  |  |  | CON | R15 | SL | SL |
|  | 3 | **Telecom Network** |  | 2027-03-28 | 2027-04-07 |  |  |  |  |  |  |  |  |  |  |  |  |  |
| TIE-R15-TE |  | TIE IN Existing Network For Telecom Network | 10d | 2027-03-28 | 2027-04-07 | MS-CF-TE, MS-CF-MV | -88d | 2d | TIE-R15-TE |  |  |  |  |  | CON | R15 | TE | TE |
|  | 8 | **Road 16 Local 1 ( 527 LM )** |  | 2027-03-22 | 2027-07-22 |  |  |  |  |  |  |  |  |  |  |  |  |  |
|  | 15 | **Storm Drainage Network** |  | 2027-05-22 | 2027-05-29 |  |  |  |  |  |  |  |  |  |  |  |  |  |
| TIE-SD-R16 |  | TIE IN Existing Network For Storm Drainage Network | 7d | 2027-05-22 | 2027-05-29 | MS-CF-SD | -118d | 0d | TIE-SD-R16 | CO | Con | LM | CO | SD | CON | R16 | SD | SD |
|  | 16 | **Sewage Network** |  | 2027-04-26 | 2027-05-09 |  |  |  |  |  |  |  |  |  |  |  |  |  |
| TIE-SW-R16 |  | TIE IN Existing Network For Sewage Network | 12d | 2027-04-26 | 2027-05-09 | MS-CF-SW | -106d | 62d | TIE-SW-R16 | CO | Con | LM | CO | SW | CON | R16 | SW | SW |
|  | 17 | **Potable Water Network** |  | 2027-07-10 | 2027-07-22 |  |  |  |  |  |  |  |  |  |  |  |  |  |
| TIE-PW-R16 |  | TIE IN Existing Network For Potable Water Network | 12d | 2027-07-10 | 2027-07-22 | MS-CF-PW | -165d | 0d | TIE-PW-R16 | CO | Con | LM | CON | PW | CON | R16 | PW | PW |
|  | 1 | **Irrigation Network** |  | 2027-04-15 | 2027-04-28 |  |  |  |  |  |  |  |  |  |  |  |  |  |
| TIE-IR-R16 |  | TIE IN Existing Network For Irrigation Network | 12d | 2027-04-15 | 2027-04-28 | MS-CF-IR | -97d | 0d | TIE-IR-R16 | CO | Con | LM | CON | PW | CON | R16 | PW | PW |
|  | 18 | **Meduim Voltage Network** |  | 2027-03-22 | 2027-04-11 |  |  |  |  |  |  |  |  |  |  |  |  |  |
| TIE-R16-MV |  | TIE IN Existing Network For Medium Voltage Network | 18d | 2027-03-22 | 2027-04-11 | MS-CF-MV | -91d | 0d | TIE-R16-MV | CO | Con | LM | CO | MV | CON | R16 | MV | MV |
|  | 2 | **Street Lighting Network** |  | 2027-06-28 | 2027-07-19 |  |  |  |  |  |  |  |  |  |  |  |  |  |
| TIE-R16-SL |  | TIE IN Existing Network For Street Lighting Network | 18d | 2027-06-28 | 2027-07-19 | MS-CF-SL | -161.5d | 0d | TIE-R16-SL |  |  |  |  |  | CON | R16 | SL | SL |

| ID | WBS | Activity | Duration | Start | Finish | Predecessors | Total float | Free float | Activity ID N | 08 Stage | 09 Roads | Discipline | New Discipline | 02- Network-WBS | 03- Activity | 04-UOM | 05-Discipline | 01- Network |
| --- | --- | --- | --- | --- | --- | --- | --- | --- | --- | --- | --- | --- | --- | --- | --- | --- | --- | --- |
|  | 3 | **Telecom Network** |  | 2027-03-28 | 2027-04-07 |  |  |  |  |  |  |  |  |  |  |  |  |  |
| TIE-R16-TE |  | TIE IN Existing Network For Telecom Network | 10d | 2027-03-28 | 2027-04-07 | MS-CF-TE, MS-CF-MV | -88d | 2d | TIE-R16-TE | CON | R16 | TE | TE |  |  |  |  |  |
|  | 9 | **Road 17 Local 1 ( 500 LM )** |  | 2027-03-22 | 2027-07-22 |  |  |  |  |  |  |  |  |  |  |  |  |  |
|  | 15 | **Storm Drainage Network** |  | 2027-05-22 | 2027-05-29 |  |  |  |  |  |  |  |  |  |  |  |  |  |
| TIE-SD-R17 |  | TIE IN Existing Network For Storm Drainage Network | 7d | 2027-05-22 | 2027-05-29 | MS-CF-SD | -118d | 0d | TIE-SD-R17 | CON | R17 | SD | SD | CO | Con | LM | CO | SD |
|  | 16 | **Sewage Network** |  | 2027-04-26 | 2027-05-09 |  |  |  |  |  |  |  |  |  |  |  |  |  |
| TIE-SW-R17 |  | TIE IN Existing Network For Sewage Network | 12d | 2027-04-26 | 2027-05-09 | MS-CF-SW | -106d | 62d | TIE-SW-R17 | CON | R17 | SW | SW | CO | Con | LM | CO | SW |
|  | 17 | **Potable Water Network** |  | 2027-07-10 | 2027-07-22 |  |  |  |  |  |  |  |  |  |  |  |  |  |
| TIE-PW-R17 |  | TIE IN Existing Network For Potable Water Network | 12d | 2027-07-10 | 2027-07-22 | MS-CF-PW | -165d | 0d | TIE-PW-R17 | CON | R17 | PW | PW | CO | Con | LM | CON | PW |
|  | 1 | **Irrigation Network** |  | 2027-04-15 | 2027-04-28 |  |  |  |  |  |  |  |  |  |  |  |  |  |
| TIE-IR-R17 |  | TIE IN Existing Network For Irrigation Network | 12d | 2027-04-15 | 2027-04-28 | MS-CF-IR | -97d | 0d | TIE-IR-R17 | CON | R17 | PW | PW | CO | Con | LM | CON | PW |
|  | 18 | **Meduim Voltage Network** |  | 2027-03-22 | 2027-04-11 |  |  |  |  |  |  |  |  |  |  |  |  |  |
| TIE-R17-MV |  | TIE IN Existing Network For Medium Voltage Network | 18d | 2027-03-22 | 2027-04-11 | MS-CF-MV | -91d | 0d | TIE-R17-MV | CON | R17 | MV | MV | CO | Con | LM | CO | MV |
|  | 2 | **Street Lighting Network** |  | 2027-06-28 | 2027-07-19 |  |  |  |  |  |  |  |  |  |  |  |  |  |
| TIE-R17-SL |  | TIE IN Existing Network For Street Lighting Network | 18d | 2027-06-28 | 2027-07-19 | MS-CF-SL | -161.5d | 0d | TIE-R17-SL | CON | R17 | SL | SL |  |  |  |  |  |
|  | 3 | **Telecom Network** |  | 2027-03-28 | 2027-04-07 |  |  |  |  |  |  |  |  |  |  |  |  |  |
| TIE-R17-TE |  | TIE IN Existing Network For Telecom Network | 10d | 2027-03-28 | 2027-04-07 | MS-CF-TE, MS-CF-MV | -88d | 2d | TIE-R17-TE | CON | R17 | TE | TE |  |  |  |  |  |
|  | 1 | **Road 18 Local 1 ( 479 LM )** |  | 2027-03-22 | 2027-07-22 |  |  |  |  |  |  |  |  |  |  |  |  |  |
|  | 15 | **Storm Drainage Network** |  | 2027-05-22 | 2027-05-29 |  |  |  |  |  |  |  |  |  |  |  |  |  |
| TIE-SD-R18 |  | TIE IN Existing Network For Storm Drainage Network | 7d | 2027-05-22 | 2027-05-29 | MS-CF-SD | -114d | 0d | TIE-SD-R18 | CON | R18 | SD | SD | CO | Con | LM | CO | SD |
|  | 16 | **Sewage Network** |  | 2027-04-26 | 2027-05-09 |  |  |  |  |  |  |  |  |  |  |  |  |  |
| TIE-SW-R18 |  | TIE IN Existing Network For Sewage Network | 12d | 2027-04-26 | 2027-05-09 | MS-CF-SW | -102d | 62d | TIE-SW-R18 | CON | R18 | SW | SW | CO | Con | LM | CO | SW |
|  | 17 | **Potable Water Network** |  | 2027-07-10 | 2027-07-22 |  |  |  |  |  |  |  |  |  |  |  |  |  |
| TIE-PW-R18 |  | TIE IN Existing Network For Potable Water Network | 12d | 2027-07-10 | 2027-07-22 | MS-CF-PW | -161d | 0d | TIE-PW-R18 | CON | R18 | PW | PW | CO | Con | LM | CON | PW |

| ID | WBS | Activity | Duration | Start | Finish | Predecessors | Complete | Remaining | Planned start | Planned finish | Total float | Free float | Resources | Cost | Actual cost | Activity ID N | 02- Network-WBS | 03- Activity | 04-UOM | 05-Discipline | 01- Network | 08 Stage | 09 Roads | Discipline | New Discipline | 07-Weightage System |
| --- | --- | --- | --- | --- | --- | --- | --- | --- | --- | --- | --- | --- | --- | --- | --- | --- | --- | --- | --- | --- | --- | --- | --- | --- | --- | --- |
|  | 1 | **Irrigation Network** |  | 2027-04-15 | 2027-04-28 |  |  |  |  |  |  |  |  |  |  |  |  |  |  |  |  |  |  |  |  |  |
| TIE-IR-R18 |  | TIE IN Existing Network For Irrigation Network | 12d | 2027-04-15 | 2027-04-28 | MS-CF-IR |  |  |  |  | -93d | 0d |  |  |  | TIE-IR-R18 | CO | Con | LM | CON | PW | CON | R18 | PW | PW |  |
|  | 18 | **Meduim Voltage Network** |  | 2027-03-22 | 2027-04-11 |  |  |  |  |  |  |  |  |  |  |  |  |  |  |  |  |  |  |  |  |  |
| TIE-R18-MV10 |  | TIE IN Existing Network For Medium Voltage Network | 18d | 2027-03-22 | 2027-04-11 | MS-CF-MV |  |  |  |  | -91d | 0d |  |  |  | TIE-R18-MV10 | CO | Con | LM | CO | MV | CON | R18 | MV | MV |  |
|  | 2 | **Street Lighting Network** |  | 2027-06-28 | 2027-07-19 |  |  |  |  |  |  |  |  |  |  |  |  |  |  |  |  |  |  |  |  |  |
| TIE-R18-SL10 |  | TIE IN Existing Network For Street Lighting Network | 18d | 2027-06-28 | 2027-07-19 | MS-CF-SL |  |  |  |  | -157.5d | 0d |  |  |  | TIE-R18-SL10 |  |  |  |  |  | CON | R18 | SL | SL |  |
|  | 3 | **Telecom Network** |  | 2027-03-28 | 2027-04-10 |  |  |  |  |  |  |  |  |  |  |  |  |  |  |  |  |  |  |  |  |  |
| TIE-R18-TE10 |  | TIE IN Existing Network For Telecom Network | 12d | 2027-03-28 | 2027-04-10 | MS-CF-TE |  |  |  |  | -90d | 0d |  |  |  | TIE-R18-TE10 |  |  |  |  |  | CON | R18 | TE | TE |  |
|  | 2 | **Sewage Pump Stations** |  | 2026-09-01 | 2027-06-26 |  |  |  |  |  |  |  |  |  |  |  |  |  |  |  |  |  |  |  |  |  |
|  | 1 | **Sewage Pump Station ( PS 06 )** |  | 2026-09-01 | 2027-06-26 |  |  |  |  |  |  |  |  |  |  |  |  |  |  |  |  |  |  |  |  |  |
|  | 1 | **Pump Station Main Building** |  | 2026-09-01 | 2027-04-20 |  |  |  |  |  |  |  |  |  |  |  |  |  |  |  |  |  |  |  |  |  |
| CO-SW-PS7-MB-100 |  | Excavation Main Bulding | 15d | 2026-09-01 A | 2026-09-06 A | ENG-SH-SPS-A-110, ENG-MS-SPS-A-110, ENG-MT-SPS-CV-A-110, ENG-MT-SPS-MC-A-110, PRO-SPS-CV-1DL-10, CO-R14.S07-SD-130, CO-R15.S09-SD-130, CO-R16.S12-SD-130 | 100% |  | 2026-03-15 | 2026-04-04 |  |  | Valve chamber [0.1] | 9,770.37 | 9,770.37 | CO-SW-PS7-MB-100 |  |  |  |  |  | CON |  | SW | SW | P06 |
| CO-SW-PS7-MB-110 |  | Concrete Works of Superstrucure | 30d | 2026-09-16 A | 2026-11-26 | CO-SW-PS7-MB-100, PRO-SPS-CV-DL-10 | 99% | 3d | 2026-04-05 | 2026-05-09 | -164d | 0d | Valve chamber [1] | 98,005.99 | 68,604.19 | CO-SW-PS7-MB-110 |  |  |  |  |  | CON |  | SW | SW | P06 |
| CO-SW-PS7-MB-120 |  | Internal Finishes Works of Superstrucure | 30d | 2026-11-28 | 2026-12-31 | CO-SW-PS7-MB-110 |  |  |  |  | -164d | 0d | Valve chamber [0.2] | 19,539.73 |  | CO-SW-PS7-MB-120 |  |  |  |  |  | CON |  | SW | SW | P06 |
| CO-SW-PS7-MB-130 |  | Internal Electrical Works | 30d | 2027-01-02 | 2027-02-04 | CO-SW-PS7-MB-120 |  |  |  |  | -127d | 0d | Gate valves for the pump station [4.01]; Non return valves for the pump station [4.01]; Penstok for the pump station [1] | 929,064.66 |  | CO-SW-PS7-MB-130 |  |  |  |  |  | CON |  | SW | SW | P06 |
| CO-SW-PS7-MB-140 |  | Internal Mechanical Works | 30d | 2027-02-06 | 2027-03-16 | CO-SW-PS7-MB-130 |  |  |  |  | -127d | 0d | Constant speed drive, sewage pumps, centrifugal submersible type; 2 duty / 1 standby capable of delivering a flow rate of flow 424 l/s against a total head of 22m, rate includes provision of MCC [1] | 586,564.48 |  | CO-SW-PS7-MB-140 |  |  |  |  |  | CON |  | SW | SW | P06 |
| CO-SW-PS7-MB-150 |  | Electromechanical Main Works | 30d | 2027-03-17 | 2027-04-20 | CO-SW-PS7-MB-140, PRO-SPS7-LL-SH/DL-10, PRO-SPS7-LL-MSI-10 |  |  |  |  | -127d | 37d | Labor/Helper [595.11 h]; Electrician [403.77 h]; Odour control system [1] | 164,859.73 |  | CO-SW-PS7-MB-150 |  |  |  |  | SW | CON |  | SW | SW | P06 |
|  | 2 | **Generator With Umbrella Tank** |  | 2027-01-02 | 2027-04-03 |  |  |  |  |  |  |  |  |  |  |  |  |  |  |  |  |  |  |  |  |  |
| CO-SW-PS7-GN-100 |  | Concrete Works of Base | 12d | 2027-01-02 | 2027-01-14 | CO-SW-PS7-MB-110, CO-SW-PS7-MB-120 |  |  |  |  | -164d | 0d | Standby Diesel Generator Set 400/230KVA, 3P, 60Hz in Sound Attenuated Enclosure KVA rating by contractor as per total load onsite after pumps selection [0.2]; Supply, install, test and commission of manually operated fuel pump, The pump should be supplied with all accessories as specified. [0.2]; Supply, install, test and commission of Fuel pump with capacity of not less than 1 hour to fill the daily tank of generator at required head. [0.2]; supply, install, test & commission Automatic Transfer Switch ATS panel including all accessories & works required. [0.2]; Supply, install, test and commission under ground fuel tank for 3 days of continuous operation of the standby generator at full load. The tank should be supplied with all accessories such as black steel pipes, float switches with two contactors ï¿½etc. as [0.2] | 43,962.59 |  | CO-SW-PS7-GN-100 |  |  |  |  |  | CON |  | SW | SW | P06 |
| CO-SW-PS7-GN-110 |  | Install Manually Operated Fuel Pump | 21d | 2027-01-16 | 2027-02-08 | CO-SW-PS7-GN-100 |  |  |  |  | -164d | 0d | Standby Diesel Generator Set 400/230KVA, 3P, 60Hz in Sound Attenuated Enclosure KVA rating by contractor as per total load onsite after pumps selection [1]; Supply, install, test and commission of manually operated fuel pump, The pump should be supplied with all accessories as specified. [1]; Supply, install, test and commission of Fuel pump with capacity of not less than 1 hour to fill the daily tank of generator at required head. [1]; supply, install, test & commission Automatic Transfer Switch ATS panel including all accessories & works required. [1]; Supply, install, test and commission under ground fuel tank for 3 days of continuous operation of the standby generator at full load. The tank should be supplied with all accessories such as black steel pipes, float switches with two contactors ï¿½etc. as [1] | 220,498.17 |  | CO-SW-PS7-GN-110 |  |  |  |  |  | CON |  | SW | SW | P06 |
| CO-SW-PS7-GN-120 |  | Install Ground Fuel Tank | 21d | 2027-02-09 | 2027-03-06 | CO-SW-PS7-GN-110 |  |  |  |  | -164d | 0d | Standby Diesel Generator Set 400/230KVA, 3P, 60Hz in Sound Attenuated Enclosure KVA rating by contractor as per total load onsite after pumps selection [0.2]; Supply, install, test and commission of manually operated fuel pump, The pump should be supplied with all accessories as specified. [0.2]; Supply, install, test and commission of Fuel pump with capacity of not less than 1 hour to fill the daily tank of generator at required head. [0.2]; supply, install, test & commission Automatic Transfer Switch ATS panel including all accessories & works required. [0.2]; Supply, install, test and commission under ground fuel tank for 3 days of continuous operation of the standby generator at full load. The tank should be supplied with all accessories such as black steel pipes, float switches with two contactors ï¿½etc. as [0.2] | 43,962.59 |  | CO-SW-PS7-GN-120 |  |  |  |  |  | CON |  | SW | SW | P06 |
| CO-SW-PS7-GN-130 |  | Fix Steel Structure for Umbrella | 21d | 2027-03-07 | 2027-04-03 | CO-SW-PS7-GN-110, CO-SW-PS7-GN-120 |  |  |  |  | -164d | 0d | Standby Diesel Generator Set 400/230KVA, 3P, 60Hz in Sound Attenuated Enclosure KVA rating by contractor as per total load onsite after pumps selection [0.1]; Supply, install, test and commission of manually operated fuel pump, The pump should be supplied with all accessories as specified. [0.1]; Supply, install, test and commission of Fuel pump with capacity of not less than 1 hour to fill the daily tank of generator at required head. [0.1]; supply, install, test & commission Automatic Transfer Switch ATS panel including all accessories & works required. [0.1]; Supply, install, test and commission under ground fuel tank for 3 days of continuous operation of the standby generator at full load. The tank should be supplied with all accessories such as black steel pipes, float switches with two contactors ï¿½etc. as [0.1] | 21,980.28 |  | CO-SW-PS7-GN-130 |  |  |  |  |  | CON |  | SW | SW | P06 |
|  | 5 | **Motor Control Centre Building** |  | 2026-11-28 | 2027-04-21 |  |  |  |  |  |  |  |  |  |  |  |  |  |  |  |  |  |  |  |  |  |
| CO-SW-PS7-MCC-100 |  | Excavation Main Bulding | 16d | 2026-11-28 | 2026-12-15 | CO-SW-PS7-MB-100, CO-SW-PS7-MB-110 |  |  |  |  | -128d | 0d | Skilled Labor/Surveyor [100.94 h]; Foreman [100.94 h]; Excavator [896 h]; Plain concrete foundation [0.2] | 98.03 |  | CO-SW-PS7-MCC-100 |  |  |  |  | SW | CON |  | SW | SW | P06 |
| CO-SW-PS7-MCC-110 |  | Concrete Works of Superstrucure | 21d | 2026-12-16 | 2027-01-09 | CO-SW-PS7-MCC-100 |  |  |  |  | -128d | 0d | Skilled Labor/Surveyor [8.78 h]; Foreman [8.78 h]; Cons. Carpenter [122.89 h]; Block Mason [61.44 h]; Plain concrete foundation [1]; Reinfirced concrete foundation [11.03]; Reinforced concrete columns [14.04]; Reinfirced concrete SOG [30.09]; Reinfirced concrete slab [51.16]; CMU walls with thickness 200mm [212.66]; Waterproofing for foundation [85.27]; Roof Insulation [64.2] | 156,477.1 |  | CO-SW-PS7-MCC-110 |  |  |  |  | SW | CON |  | SW | SW | P06 |
| CO-SW-PS7-MCC-120 |  | Internal Finishes Works of Superstrucure | 21d | 2027-01-10 | 2027-02-02 | CO-SW-PS7-MCC-110 |  |  |  |  | -128d | 0d | Labor/Helper [50.47 h]; Block Mason [50.47 h]; Plasterer [50.47 h]; Painter [50.47 h]; Acrylic paint on elevations including plastering [212.66]; Acrylic paint on internal wallsand ceiling including plastering [269.84]; Epoxy paint on floors [57.18]; Supply and install 2000*3000 mm double leaf manufacturer label shall pass the test requirements complete with accessories as per door schedule and material as approved by the Client. [1]; Plinth for odour control system [28.09] | 92,471.35 |  | CO-SW-PS7-MCC-120 |  |  |  |  | SW | CON |  | SW | SW | P06 |
| CO-SW-PS7-MCC-130 |  | Internal Electrical Works | 21d | 2027-02-03 | 2027-02-28 | CO-SW-PS7-MCC-120 |  |  |  |  | -128d | 0d | Labor/Helper [100.94 h]; Electrician [100.94 h]; 4Cx 185mm2 Cu/XLPE//PVC from nearest power supply (SEC) and generator to the ATS and from ATS to MCC-SPS [851.66]; 4Cx 95mm2 Cu/XLPE//PVC from nearest power supply (SEC) and generator to the ATS and from ATS to MCC-SPS [567.77]; 4Cx 10mm2 Cu/XLPE/SWA/PVC from MCC-SPS to ELP [71.22]; 4Cx 150mm2 + 1Cx25mm2 SUBMERGED RUBBER INSULATED FLEXIBLE CABLE from MCC to PUMP1& PUMP2. [297.93]; 4Cx 10mm2 + 1Cx10mm2 Cu/XLPE/PVC FROM MCC-SPS to DB-SPS [71.22]; 4Cx 10mm2 + 1Cx10mm2 Cu/XLPE/PVC FROM MCC-SPS to Penstok [141.44]; 4Cx 10mm2 + 1Cx10mm2 Cu/XLPE/PVC FROM MCC-SPS to Odor Control Unit [141.44]; 4Cx 6mm2 + 1Cx6mm2 Cu/XLPE/PVC FROM MCC-SPS to the mechanical bar screen [113.35]; 3Cx 6mm2 Cu/XLPE/PVC FROM MCC-SPS to the two fuel pumps. [141.44]; 3Cx 4mm2 Cu/XLPE/PVC to the AC. [113.35]; 13A DOUBLE SWITCH SOCKET OUTLET (WEATHER PROOF) [11.03]; 20A SWITCH SOCKET OUTLET (FOR SPLIT UNIT), (WEATHER PROOF) [11.03]; Supply, install and test the following grounding and lightning system including ground wires, ground rods, inspection pits, terminations, bonding/clamping, civil works and all materials and accessories required to complete the work according to specificat [3.01] | 434,647.84 |  | CO-SW-PS7-MCC-130 |  |  |  |  | SW | CON |  | SW | SW | P06 |
| CO-SW-PS7-MCC-140 |  | Internal Mechanical Works | 21d | 2027-03-01 | 2027-03-28 | CO-SW-PS7-MCC-130 |  |  |  |  | -128d | 0d | Labor/Helper [100.94 h]; Electrician [100.94 h]; MCC [1] | 77,105.07 |  | CO-SW-PS7-MCC-140 |  |  |  |  | SW | CON |  | SW | SW | P06 |
| CO-SW-PS7-MCC-150 |  | Electromechanical Main Works | 21d | 2027-03-29 | 2027-04-21 | CO-SW-PS7-MCC-140, PRO-SPS7-LL-MSI-10 |  |  |  |  | -128d | 36d | Labor/Helper [100.94 h]; Electrician [100.94 h]; Surge protection system study [1]; Surge protection system [1]; Local Control Panel, IP 65 [6.02]; Isolator/disconnect switches IP65 [23.07]; DB-SPS Panel [6.02]; ELP Panel: phtocell , timer,40 Ampere, 3P, IP66,60Hz incomer MCCB & 5ways outgoing MCCB [6.02]; Electrical Hand Hole 600mm x 600mm x 800mm concrete hand hole with hot dip galvanized heavy duty steel cover [14.04]; Electrical Hand Hole 400mm x 400mm x 600mm concrete hand hole with hot dip galvanized heavy duty steel cover [14.04]; Supply and install telephone and fire alarm system including smoke detector, cabinet, control panel, cables, conduits, switches, and other accessories to complete as per drawings and specifications. [1]; Supply, installation, testing and commissioning of all control, instrumentation( as shown on the P & ID drawings cable schedule) including all installation accessories such as termination kits, lugs, glands, cable containments, junction boxes , conduits, [3.01]; Supply, installation, testing and commissioning of all field instruments such as hydrostatic level meter, level switches, flow switch, and all necessary instruments including all installation accessories, etc. all as per specifications and design drawings [3.01]; Earth pits [1]; Cable draw pit, 600x600mm [1]; Supply, installation, testing and commissioning of PLC system, [3.01] | 1,869,586.64 |  | CO-SW-PS7-MCC-150 |  |  |  |  | SW | CON |  | SW | SW | P06 |

| ID | WBS | Activity | Duration | Start | Finish | Predecessors | Complete | Remaining | Planned start | Planned finish | Total float | Free float | Resources | Cost | Actual cost | Activity ID N | 01- Network | 07-Weightage System | 08 Stage | Discipline | New Discipline |
| --- | --- | --- | --- | --- | --- | --- | --- | --- | --- | --- | --- | --- | --- | --- | --- | --- | --- | --- | --- | --- | --- |
|  | 6 | **Simple Building Works** |  | 2027-04-04 | 2027-06-06 |  |  |  |  |  |  |  |  |  |  |  |  |  |  |  |  |
| CO-SW-PS7-SBL-100 |  | Perimeter Fencing | 23d | 2027-04-04 | 2027-04-29 | CO-SW-PS7-MCC-120, CO-SW-PS7-MB-120, CO-SW-PS7-GN-130, CO-SW-PS7-GN-120 |  |  |  |  | -164d | 0d | Skilled Labor/Surveyor [25.24 h]; Foreman [25.24 h]; Cons. Carpenter [502.03 h]; Block Mason [184.36 h]; Double leaf swing or sliding main entrance gate [1]; 1.8m high Chainlink Fence (mesh opening size 60mm x 60mm) [360.12]; Single leaf personal access gate [1] | 97,970.25 |  | CO-SW-PS7-SBL-100 | SW | P06 | CON | SW | SW |
| CO-SW-PS7-SBL-110 |  | Outside Lighting | 27d | 2027-05-01 | 2027-06-06 | CO-SW-PS7-SBL-100 |  |  |  |  | -162d | 2d | Labor/Helper [487.54 h]; Electrician [487.54 h]; Surfaced Mounted Light [11.03]; Flood lights shall be high pole with 250 watt HPS luminaire [6.02] | 24,650.59 |  | CO-SW-PS7-SBL-110 | SW | P06 | CON | SW | SW |
| CO-SW-PS7-SBL-120 |  | Outside Duct Works | 23d | 2027-05-01 | 2027-06-01 | CO-SW-PS7-SBL-100 |  |  |  |  | -164d | 0d | Labor/Helper [234.02 h]; Electrician [195.99 h]; DX wall mounted Split/AC [3.01]; CO2 fire extinguishers [3.01]; Powder fire extinguishers [3.01]; 1 - way duct - not exceeding 1.5m deep [1]; 2 - way duct - not exceeding 1.5m deep [1]; 8 - way duct - not exceeding 1.5m deep [1] | 14,954.76 |  | CO-SW-PS7-SBL-120 | SW | P06 | CON | SW | SW |
| CO-SW-PS7-SBL-130 |  | Rectangular Wet Wells | 27d | 2027-05-01 | 2027-06-06 | CO-SW-PS7-SBL-100 |  |  |  |  | -162d | 2d | Skilled Labor/Surveyor [35.13 h]; Foreman [35.13 h]; Cons. Carpenter [689.88 h]; Block Mason [344.94 h]; Wet well structure internal size (5.5*4.0m) at 11.0m depth [1] | 151,419.34 |  | CO-SW-PS7-SBL-130 | SW | P06 | CON | SW | SW |
| CO-SW-PS7-SBL-140 |  | Round Wet Well Structure for basket screen | 27d | 2027-05-01 | 2027-06-06 | CO-SW-PS7-SBL-100 |  |  |  |  | -162d | 2d | Skilled Labor/Surveyor [11.78 h]; Foreman [11.78 h]; Cons. Carpenter [235.64 h]; Block Mason [117.82 h]; for the pump station [1] | 69,420.91 |  | CO-SW-PS7-SBL-140 | SW | P06 | CON | SW | SW |
| CO-SW-PS7-SBL-150 |  | Motorized basket screen | 27d | 2027-05-01 | 2027-06-06 | CO-SW-PS7-SBL-100 |  |  |  |  | -162d | 2d | Labor/Helper [130.01 h]; Electrician [130.01 h]; basket screen [1] | 157,225.6 |  | CO-SW-PS7-SBL-150 | SW | P06 | CON | SW | SW |
|  | 7 | **Site Work and Service Road** |  | 2027-06-02 | 2027-06-26 |  |  |  |  |  |  |  |  |  |  |  |  |  |  |  |  |
| CO-SW-PS7-SWS-100 |  | Outside Strom Drainage System | 6d | 2027-06-02 | 2027-06-08 | CO-SW-PS7-SBL-120 |  |  |  |  | -164d | 0d | Skilled Labor/Surveyor [32.16 h]; Foreman [32.16 h]; Plumber [32.16 h]; Excavator [48 h]; surface drainage channel [212.66] | 58,243.39 |  | CO-SW-PS7-SWS-100 | SW | P06 | CON | SW | SW |
| CO-SW-PS7-SWS-110 |  | Bituminous Works | 15d | 2027-06-09 | 2027-06-26 | CO-SW-PS7-MCC-150, CO-SW-PS7-SWS-100, CO-SW-PS7-SBL-120, CO-SW-PS7-SBL-110, CO-SW-PS7-SBL-100, CO-SW-PS7-GN-130, CO-SW-PS7-GN-120, CO-SW-PS7-MB-150, CO-SW-PS7-SBL-130, CO-SW-PS7-SBL-140, CO-SW-PS7-SBL-150, PRO-SPS-CV-DL-10 FF+3d |  |  |  |  | -164d | 0d | Labor/Helper [88.87 h]; Insulation Worker [151.99 h]; Site Preparation (including survey, removal and disposal of unsuitable materials, placement and compaction fill material to bring the pump station site to proposed grades) [1]; Supply and install 300mm thick Subgrade as per drawings and specifications. [425.33]; Supply and install 200mm thick Aggregate base course [283.89]; Supply and install Bituminous base course (Grading I - Class A), including Prime Coat (MC1) as per drawings and specifications. [99.31]; Supply and install Bituminous concrete wearing course, (Grading I - Class A), including tack coat (RC2) as per drawings and specifications. [71.22]; Supply and install Precast Concrete Kerb [506.58]; Supply and install 60mm thick - Interlocking block pavers for sidewalk/footpath as per drawings and specifications. [639]; Supply and install Traffic signs, ground mounted, Sheet Alumenium, (breakaway)Single post, with all accessories as per drawings and specifications. [7.02]; Supply and install thermoplastic pavement road markings as per drawings and specifications. [1] | 233,686.33 |  | CO-SW-PS7-SWS-110 | SW | P06 | CON | SW | SW |
|  | 1 | **Storm Drainage Ponds** |  | 2025-05-19 | 2026-12-23 |  |  |  |  |  |  |  |  |  |  |  |  |  |  |  |  |
|  | 1 | **Storm Drainage Pond ( PO-J1)** |  | 2025-05-19 | 2026-12-23 |  |  |  |  |  |  |  |  |  |  |  |  |  |  |  |  |
| CO-SD-PO-K1-100-P1 |  | Excavation & Filling Works - PART 1 | 21d | 2025-05-19 A | 2025-06-03 A | CO-R10.S04-ES-SD-130, PRO-DPO-CV-1DL-10, ENG-SH-DPO-A-110, ENG-MS-DPO-A-110, ENG-MT-DPO-CV-A-110, CO-R11.S06-SD-130, CO-R10.S04-WE-SD-130 | 100% |  | 2026-01-21 | 2026-02-14 |  |  | Skilled Labor/Surveyor [204.16 h]; Foreman [204.16 h]; Excavator [1008 h]; Excavation in all type of soil for any depth including levelling, compaction and disposal of surplus material [17725.4] | 606,359.49 | 606,359.49 | CO-SD-PO-K1-100-P1 | SD | PO K1 | CON | SD | SD |
| CO-SD-PO-K1-100-P2 |  | Excavation & Filling Works - PART 2 | 21d | 2025-06-04 A | 2025-06-28 A | CO-SD-PO-K1-100-P1 | 100% |  | 2026-02-15 | 2026-03-10 |  |  | Skilled Labor/Surveyor [204.16 h]; Foreman [204.16 h]; Excavator [1008 h]; Excavation in all type of soil for any depth including levelling, compaction and disposal of surplus material [17725.4] | 606,359.49 | 606,359.49 | CO-SD-PO-K1-100-P2 | SD | PO K1 | CON | SD | SD |
| CO-SD-PO-K1-100-P3 |  | Excavation & Filling Works - PART 3 | 21d | 2025-07-01 A | 2025-07-15 A | CO-SD-PO-K1-100-P2 | 100% |  | 2026-03-11 | 2026-04-07 |  |  | Skilled Labor/Surveyor [204.16 h]; Foreman [204.16 h]; Excavator [1008 h]; Excavation in all type of soil for any depth including levelling, compaction and disposal of surplus material [17725.4] | 606,359.49 | 606,359.49 | CO-SD-PO-K1-100-P3 | SD | PO K1 | CON | SD | SD |
| CO-SD-PO-K1-100-P4 |  | Excavation & Filling Works - PART 4 | 21d | 2025-07-16 A | 2025-07-21 A | CO-SD-PO-K1-100-P3 | 100% |  | 2026-04-08 | 2026-05-02 |  |  | Skilled Labor/Surveyor [204.16 h]; Foreman [204.16 h]; Excavator [1008 h]; Excavation in all type of soil for any depth including levelling, compaction and disposal of surplus material [17725.4] | 606,359.49 | 606,359.49 | CO-SD-PO-K1-100-P4 | SD | PO K1 | CON | SD | SD |
| CO-SD-PO-K1-110-P1 |  | Finished Grouted Riprap - PART 1 | 21d | 2026-11-04 A | 2026-12-17 | CO-SD-PO-K1-100-P1 | 50% | 21d | 2026-11-10 | 2026-12-03 | -73d | 0d | Skilled Labor/Surveyor [113.28 h]; Foreman [113.28 h]; Excavator [1008 h]; Reinforced Concrete lining including blinding concrete, construction, isolation layers and expansion joints as shown in drawings. [11.03] | 8,085.47 |  | CO-SD-PO-K1-110-P1 | SD | PO K1 | CON | SD | SD |
| CO-SD-PO-K1-110-P2 |  | Finished Grouted Riprap - PART 2 | 21d | 2026-11-04 A | 2026-12-17 | CO-SD-PO-K1-110-P1 FF, CO-SD-PO-K1-100-P2 | 50% | 21d | 2026-12-05 | 2026-12-28 | -73d | 0d | Skilled Labor/Surveyor [113.28 h]; Foreman [113.28 h]; Excavator [1008 h]; Reinforced Concrete lining including blinding concrete, construction, isolation layers and expansion joints as shown in drawings. [11.03] | 8,085.47 |  | CO-SD-PO-K1-110-P2 | SD | PO K1 | CON | SD | SD |
| CO-SD-PO-K1-110-P3 |  | Finished Grouted Riprap - PART 3 | 21d | 2026-11-04 A | 2026-12-17 | CO-SD-PO-K1-110-P2 FF, CO-SD-PO-K1-100-P3 | 50% | 21d | 2026-12-29 | 2027-01-21 | -73d | 0d | Skilled Labor/Surveyor [113.28 h]; Foreman [113.28 h]; Excavator [1008 h]; Reinforced Concrete lining including blinding concrete, construction, isolation layers and expansion joints as shown in drawings. [11.03] | 8,085.47 |  | CO-SD-PO-K1-110-P3 | SD | PO K1 | CON | SD | SD |
| CO-SD-PO-K1-110-P4 |  | Finished Grouted Riprap - PART 4 | 21d | 2026-11-04 A | 2026-12-17 | CO-SD-PO-K1-110-P3 FF, CO-SD-PO-K1-100-P4 | 50% | 21d | 2027-01-23 | 2027-02-15 | -73d | 0d | Reinforced Concrete lining including blinding concrete, construction, isolation layers and expansion joints as shown in drawings. [11.03] | 8,085.47 |  | CO-SD-PO-K1-110-P4 | SD | PO K1 | CON | SD | SD |
| CO-SD-PO-K1-120 |  | Outfall structure | 26d | 2026-11-04 A | 2026-12-23 | CO-SD-PO-K1-110-P4 FF, CO-SD-PO-K1-110-P4 SS | 50% | 26d | 2027-02-16 | 2027-03-22 | -73d | 0d | Skilled Labor/Surveyor [94.21 h]; Foreman [94.21 h]; Cons. Carpenter [1369.21 h]; Block Mason [933.15 h]; Reinforced Concrete lining including blinding concrete, construction, isolation layers and expansion joints as shown in drawings. [6.02] | 4,410.35 |  | CO-SD-PO-K1-120 | SD | PO K1 | CON | SD | SD |
| CO-SD-PO-K1-130 |  | Acess Entrace Ramp | 26d | 2026-11-04 A | 2026-12-23 | CO-SD-PO-K1-120 FF, PRO-DPO-CV-DL-10 FF+3d, CO-SD-PO-K1-120 SS, PRO-DPO-CV-DL-10 SS | 50% | 26d | 2027-03-23 | 2027-04-21 | -73d | 0d | Skilled Labor/Surveyor [94.21 h]; Foreman [94.21 h]; Excavator [832 h]; Reinforced Concrete lining including blinding concrete, construction, isolation layers and expansion joints as shown in drawings. [6.02] | 4,410.35 |  | CO-SD-PO-K1-130 | SD | PO K1 | CON | SD | SD |
|  | 2 | **Storm Drainage Pond ( PO-J2)** |  | 2026-11-04 | 2026-12-23 |  |  |  |  |  |  |  |  |  |  |  |  |  |  |  |  |
| CO-SD-PO-K2-100-P1 |  | Excavation & Filling Works - PART 1 | 21d | 2026-11-04 A | 2026-12-17 | CO-SD-PO-K1-100-P1, CO-R11.S06-SD-130, PRO-DPO-CV-1DL-20, ENG-SH-DPO-A-110, ENG-MS-DPO-A-110, ENG-MT-DPO-CV-A-110 | 60% | 21d | 2026-11-10 | 2026-12-03 | -45d | 0d | Skilled Labor/Surveyor [113.28 h]; Foreman [113.28 h]; Excavator [1008 h]; Excavation in all type of soil to increase the depth of the existing pond for any depth including levelling, compaction and disposal of surplus material [7246.64] | 99,158.87 |  | CO-SD-PO-K2-100-P1 | SD | PO K2 | CON | SD | SD |
| CO-SD-PO-K2-100-P2 |  | Excavation & Filling Works - PART 2 | 21d | 2026-11-04 A | 2026-12-17 | CO-SD-PO-K2-100-P1 FF, CO-SD-PO-K2-100-P1 SS | 60% | 21d | 2026-12-05 | 2026-12-28 | -45d | 0d | Skilled Labor/Surveyor [113.28 h]; Foreman [113.28 h]; Excavator [1008 h]; Excavation in all type of soil to increase the depth of the existing pond for any depth including levelling, compaction and disposal of surplus material [7246.64] | 99,158.87 |  | CO-SD-PO-K2-100-P2 | SD | PO K2 | CON | SD | SD |
| CO-SD-PO-K2-100-P3 |  | Excavation & Filling Works - PART 3 | 21d | 2026-11-04 A | 2026-12-17 | CO-SD-PO-K2-100-P2 FF, PRO-DPO-CV-DL-20 | 60% | 21d | 2026-12-29 | 2027-01-21 | -45d | 0d | Skilled Labor/Surveyor [113.28 h]; Foreman [113.28 h]; Excavator [1008 h]; Excavation in all type of soil to increase the depth of the existing pond for any depth including levelling, compaction and disposal of surplus material [7246.64] | 99,158.87 |  | CO-SD-PO-K2-100-P3 | SD | PO K2 | CON | SD | SD |
| CO-SD-PO-K2-100-P4 |  | Excavation & Filling Works - PART 4 | 21d | 2026-11-04 A | 2026-12-17 | CO-SD-PO-K2-100-P3 FF, CO-SD-PO-K2-100-P3 SS | 60% | 21d | 2027-01-23 | 2027-02-15 | -45d | 0d | Skilled Labor/Surveyor [113.28 h]; Foreman [113.28 h]; Excavator [1008 h]; Excavation in all type of soil to increase the depth of the existing pond for any depth including levelling, compaction and disposal of surplus material [7246.64] | 99,158.87 |  | CO-SD-PO-K2-100-P4 | SD | PO K2 | CON | SD | SD |
| CO-SD-PO-K2-110-P1 |  | Finished Grouted Riprap - PART 1 | 21d | 2026-11-17 A | 2026-12-17 | CO-SD-PO-K2-100-P1 SS | 30% | 21d | 2026-12-12 | 2027-01-04 | -45d | 0d | Skilled Labor/Surveyor [97.58 h]; Foreman [97.58 h]; Excavator [864 h]; Reinforced Concrete lining including blinding concrete, construction, isolation layers and expansion joints as shown in drawings. [6.02] | 4,410.35 |  | CO-SD-PO-K2-110-P1 | SD | PO K2 | CON | SD | SD |
| CO-SD-PO-K2-110-P2 |  | Finished Grouted Riprap - PART 2 | 21d | 2026-11-17 A | 2026-12-17 | CO-SD-PO-K2-100-P2 SS, CO-SD-PO-K2-110-P1 SS | 30% | 21d | 2027-01-05 | 2027-01-28 | -45d | 0d | Skilled Labor/Surveyor [97.58 h]; Foreman [97.58 h]; Excavator [864 h]; Reinforced Concrete lining including blinding concrete, construction, isolation layers and expansion joints as shown in drawings. [6.02] | 4,410.35 |  | CO-SD-PO-K2-110-P2 | SD | PO K2 | CON | SD | SD |
| CO-SD-PO-K2-110-P3 |  | Finished Grouted Riprap - PART 3 | 21d | 2026-11-17 A | 2026-12-17 | CO-SD-PO-K2-100-P3 SS, CO-SD-PO-K2-110-P2 SS | 30% | 21d | 2027-01-30 | 2027-02-23 | -45d | 0d | Skilled Labor/Surveyor [97.58 h]; Foreman [97.58 h]; Excavator [864 h]; Reinforced Concrete lining including blinding concrete, construction, isolation layers and expansion joints as shown in drawings. [6.02] | 4,410.35 |  | CO-SD-PO-K2-110-P3 | SD | PO K2 | CON | SD | SD |
| CO-SD-PO-K2-110-P4 |  | Finished Grouted Riprap - PART 4 | 21d | 2026-11-17 A | 2026-12-17 | CO-SD-PO-K2-100-P4 SS, CO-SD-PO-K2-110-P3 SS | 30% | 21d | 2027-02-24 | 2027-03-23 | -45d | 0d | Skilled Labor/Surveyor [97.58 h]; Foreman [97.58 h]; Excavator [864 h]; Reinforced Concrete lining including blinding concrete, construction, isolation layers and expansion joints as shown in drawings. [6.02] | 4,410.35 |  | CO-SD-PO-K2-110-P4 | SD | PO K2 | CON | SD | SD |
| CO-SD-PO-K2-120 |  | Outfall structure | 26d | 2026-11-17 A | 2026-12-23 | CO-SD-PO-K2-110-P4 SS | 15% | 26d | 2027-03-24 | 2027-04-22 | -45d | 0d | Skilled Labor/Surveyor [23.55 h]; Foreman [23.55 h]; Cons. Carpenter [466.58 h]; Block Mason [233.29 h]; Reinforced Concrete lining including blinding concrete, construction, isolation layers and expansion joints as shown in drawings. [3.01] | 2,204.67 |  | CO-SD-PO-K2-120 | SD | PO K2 | CON | SD | SD |
| CO-SD-PO-K2-130 |  | Acess Entrace Ramp | 26d | 2026-11-17 A | 2026-12-23 | CO-SD-PO-K2-120 SS, PRO-DPO-CV-DL-20 FF+3d | 15% | 26d | 2027-04-24 | 2027-05-29 | -45d | 0d | Skilled Labor/Surveyor [89.81 h]; Foreman [94.21 h]; Excavator [832 h]; Reinforced Concrete lining including blinding concrete, construction, isolation layers and expansion joints as shown in drawings. [3.01] | 2,204.67 |  | CO-SD-PO-K2-130 | SD | PO K2 | CON | SD | SD |

| ID | WBS | Activity | Duration | Start | Finish | Predecessors | Complete | Remaining | Planned start | Planned finish | Total float | Free float | Resources | Activity ID N | 02- Network-WBS | 03- Activity | 04-UOM | 05-Discipline | 01- Network | 08 Stage | Discipline | New Discipline |
| --- | --- | --- | --- | --- | --- | --- | --- | --- | --- | --- | --- | --- | --- | --- | --- | --- | --- | --- | --- | --- | --- | --- |
|  | TC | **Testing and Comissioning** |  | 2026-06-01 | 2027-09-16 |  |  |  |  |  |  |  |  |  |  |  |  |  |  |  |  |  |
|  | INF | **Infrastructure Networks** |  | 2026-06-01 | 2027-09-16 |  |  |  |  |  |  |  |  |  |  |  |  |  |  |  |  |  |
|  | PW1 | **Irrigation Network** |  | 2026-06-05 | 2027-04-28 |  |  |  |  |  |  |  |  |  |  |  |  |  |  |  |  |  |
| T/C-IR |  | Testing and Commissioning of Irrigation Network | 12d | 2026-06-05 A | 2027-04-28 | TIE-IR-R09 FF, TIE-IR-R10 FF, TIE-IR-R11 FF, TIE-IR-R14 FF, TIE-IR-R15 FF, TIE-IR-R16 FF, TIE-IR-R17 FF, TIE-IR-R18 FF, CO-R18-IR-TF-110 SS | 50% | 18d | 2026-11-12 | 2026-11-25 | -93d | 117.5d | Labor/Helper [2950.4 h] | T/C-IR | TC | T&C | LM | TC | IR | TC | TC | TC-ALL |
|  | PW | **Potable Water Network** |  | 2026-07-01 | 2027-07-22 |  |  |  |  |  |  |  |  |  |  |  |  |  |  |  |  |  |
| T/C-PW |  | Testing and Commissioning of Potable Water Network | 12d | 2026-07-01 A | 2027-07-22 | TIE-PW-R09 FF, TIE-PW-R10 FF, TIE-PW-R11 FF, TIE-PW-R14 FF, TIE-PW-R15 FF, TIE-PW-R16 FF, TIE-PW-R17 FF, TIE-PW-R18 FF, CO-R18-PW-TF-100 SS | 80% | 17d | 2026-12-03 | 2026-12-16 | -161d | 49.5d | Labor/Helper [4339.84 h] | T/C-PW | TC | T&C | LM | TC | PW | TC | TC | TC-ALL |
|  | SW | **Sewage Network** |  | 2026-06-01 | 2027-07-26 |  |  |  |  |  |  |  |  |  |  |  |  |  |  |  |  |  |
| T/C-SW |  | Testing and Commissioning of Sewage Network | 12d | 2026-06-01 A | 2027-07-26 | TIE-SW-R09 FF, TIE-SW-R10 FF, TIE-SW-R11 FF, TIE-SW-R14 FF, TIE-SW-R15 FF, TIE-SW-R16 FF, TIE-SW-R17 FF, T/C-SPS FF, TIE-SW-R18 FF, CO-SD-PO-K1-130 SS | 85% | 2d | 2026-12-19 | 2026-12-31 | -164d | 46.5d | Labor/Helper [10343.6 h] | T/C-SW | TC | T&C | LM | TC | SW | TC | TC | TC-ALL |
|  | SD | **Storm Drainage Network** |  | 2026-06-10 | 2027-05-29 |  |  |  |  |  |  |  |  |  |  |  |  |  |  |  |  |  |
| T/C-SD |  | Testing and Commissioning of Storm Drainage Network | 10d | 2026-06-10 A | 2027-05-29 | TIE-SD-R09 FF, TIE-SD-R10 FF, TIE-SD-R11 FF, TIE-SD-R14 FF, TIE-SD-R15 FF, TIE-SD-R16 FF, TIE-SD-R17 FF, T/C-DPO FF, TIE-SD-R18 FF, CO-SD-PO-K1-130 SS | 88% | 17d | 2026-12-21 | 2026-12-31 | -114d | 96.5d | Labor/Helper [15661.2 h] | T/C-SD | TC | T&C | LM | TC | SD | TC | TC | TC-ALL |
|  | SL | **Street Lighting Network** |  | 2026-09-05 | 2027-07-19 |  |  |  |  |  |  |  |  |  |  |  |  |  |  |  |  |  |
| T/C-SL |  | Testing and Commissioning of Street Lighting Network | 18d | 2026-09-05 A | 2027-07-19 | TIE-R09-SL FF, TIE-R10-SL FF, TIE-R11-SL FF, TIE-R14-SL FF, TIE-R15-SL FF, TIE-R16-SL FF, TIE-R17-SL FF, TIE-R18-SL10 FF, CO-R18-SL-TF-120 SS | 40% | 7d | 2026-11-07 | 2026-11-26 | -157.5d | 53d | Labor/Helper [1955.5 h] | T/C-SL | TC | T&C | LM | TC | SL | TC | TC | TC-ALL |
|  | TE | **Telecom Network** |  | 2026-09-05 | 2027-04-10 |  |  |  |  |  |  |  |  |  |  |  |  |  |  |  |  |  |
| T/C-TE |  | Testing and Commissioning of Telecom Network | 10d | 2026-09-05 A | 2027-04-10 | TIE-R09-TE FF, TIE-R10-TE FF, TIE-R11-TE FF, TIE-R14-TE FF, TIE-R15-TE FF, TIE-R16-TE FF, TIE-R17-TE FF, T/C-DPO FF, TIE-R18-TE10 FF, CO-SD-PO-K1-130 SS | 32% | 4d | 2026-11-10 | 2026-11-21 | -90d | 1d | Labor/Helper [754.75 h] | T/C-TE | TC | T&C | LM | TC | TE | TC | TC | TC-ALL |
|  | MV | **Medium Voltage Network** |  | 2026-09-05 | 2027-04-11 |  |  |  |  |  |  |  |  |  |  |  |  |  |  |  |  |  |
| T/C-MV |  | Testing and Commissioning of Medium Voltage Network | 10d | 2026-09-05 A | 2027-04-11 | TIE-R09-MV FF, TIE-R10-MV FF, TIE-R11-MV FF, TIE-R14-MV FF, TIE-R15-MV FF, TIE-R16-MV FF, TIE-R17-MV FF, T/C-TE FF, TIE-R18-MV10 FF, T/C-TE SS | 80% | 4d | 2026-11-22 | 2026-12-02 | -91d | 117.5d | Labor/Helper [2006.96 h] | T/C-MV | TC | T&C | LM | TC | MV | TC | TC | TC-ALL |
|  | RD | **Road Works** |  | 2026-08-16 | 2027-09-16 |  |  |  |  |  |  |  |  |  |  |  |  |  |  |  |  |  |
| T/C-RD |  | Testing and Commissioning of Road Works | 5d | 2026-08-16 A | 2027-09-16 | TIE-R10-RD FF, TIE-R11-RD FF, TIE-R14-RD FF, T/C-MV FF, T/C-MV SS | 62% | 17d | 2026-12-29 | 2027-01-03 | -208.5d | 2d | Labor/Helper [14323.2 h] | T/C-RD | TC | T&C | LM | TC | RD | TC | TC | TC-ALL |
|  | 1 | **Independent Works** |  | 2026-12-24 | 2027-07-26 |  |  |  |  |  |  |  |  |  |  |  |  |  |  |  |  |  |
| T/C-DPO |  | Testing and Commissioning of Storm Drainage Ponds | 30d | 2026-12-24 | 2027-01-27 | CO-SD-PO-K1-130, CO-SD-PO-K2-130 |  |  |  |  | -45d | 58d | Excavation in all type of soil for any depth including levelling, compaction and disposal of surplus material; Reinforced Concrete lining including blinding concrete, construction, isolation layers and expansion joints as shown in drawings.; Excavation in all type of soil to increase the depth of the existing pond for any depth including levelling, compaction and disposal of surplus material | T/C-DPO |  |  |  |  | TC | TC | TC | TC-ALL |
| T/C-SPS |  | Testing and Commissioning of Sewage Pump Stations | 26d | 2027-06-27 | 2027-07-26 | CO-SW-PS7-SWS-110, T/C-DPO |  |  |  |  | -164d | 0d | Site Preparation (including survey, removal and disposal of unsuitable materials, placement and compaction fill material to bring the pump station site to proposed grades); Supply and install 300mm thick Subgrade as per drawings and specifications.; Supply and install 200mm thick Aggregate base course; Supply and install Bituminous base course (Grading I - Class A), including Prime Coat (MC1) as per drawings and specifications.; Supply and install Bituminous concrete wearing course, (Grading I - Class A), including tack coat (RC2) as per drawings and specifications.; Supply and install Precast Concrete Kerb; Supply and install 60mm thick - Interlocking block pavers for sidewalk/footpath as per drawings and specifications.; Supply and install Traffic signs, ground mounted, Sheet Alumenium, (breakaway)Single post, with all accessories as per drawings and specifications.; Supply and install thermoplastic pavement road markings as per drawings and specifications.; surface drainage channel | T/C-SPS |  |  |  |  | SW | TC | TC | TC-ALL |
|  | 1 | **Handing over and close out** |  | 2027-04-15 | 2027-10-02 |  |  |  |  |  |  |  |  |  |  |  |  |  |  |  |  |  |
|  | 2 | **As-Built** |  | 2027-04-15 | 2027-09-26 |  |  |  |  |  |  |  |  |  |  |  |  |  |  |  |  |  |
| HO-180 |  | Submission As-Built Drawing For Irrigation Network | 12d | 2027-04-15 | 2027-04-28 | MS-CF-IR |  |  |  |  | -107d | 0d |  | HO-180 |  |  |  |  |  |  | HO | CO-HO |
| HO-130 |  | Submission As-Built Drawing For Pond | 12d | 2027-04-29 | 2027-05-12 | MS-MO-20, HO-180 |  |  |  |  | -107d | 108.5d |  | HO-130 |  |  |  |  |  |  | HO | CO-HO |
| HO-160 |  | Submission As-Built Drawing For Telecom Network | 12d | 2027-04-29 | 2027-05-12 | MS-CF-TE, HO-180 |  |  |  |  | -107d | 108.5d |  | HO-160 |  |  |  |  |  |  | HO | CO-HO |
| HO-170 |  | Submission As-Built Drawing For Medium Voltage Network | 12d | 2027-04-29 | 2027-05-12 | MS-CF-MV, HO-180 |  |  |  |  | -107d | 108.5d |  | HO-170 |  |  |  |  |  |  | HO | CO-HO |
| HO-200 |  | Submission As-Built Drawing For Storm Network | 12d | 2027-05-22 | 2027-06-03 | MS-CF-SD |  |  |  |  | -121d | 94.5d |  | HO-200 |  |  |  |  |  |  | HO | CO-HO |
| HO-210 |  | Submission As-Built Drawing For Pump station | 12d | 2027-06-27 | 2027-07-10 | MS-MO-10 |  |  |  |  | -152d | 63.5d |  | HO-210 |  |  |  |  |  |  | HO | CO-HO |
| HO-150 |  | Submission As-Built Drawing For Street Lighting Network | 12d | 2027-06-28 | 2027-07-12 | MS-CF-SL |  |  |  |  | -153.5d | 62d |  | HO-150 |  |  |  |  |  |  | HO | CO-HO |
| HO-190 |  | As-Built Drawing For Potable Water Network | 12d | 2027-07-10 | 2027-07-22 | MS-CF-PW |  |  |  |  | -163d | 52.5d |  | HO-190 |  |  |  |  |  |  | HO | CO-HO |
| HO-100 |  | Submission As-Built Drawing For Sewage Network | 7d | 2027-09-16 | 2027-09-26 | MS-CF-IR, MS-CF-SL, MS-CF-TE, MS-CF-RD, MS-CF-MV, MS-CF-SD, MS-CF-SW, MS-CF-PW, MS-MO-10, MS-MO-20, MS-MO-30 |  |  |  |  | -212.5d | 0d |  | HO-100 | HO |  |  | HO | HO |  | HO | CO-HO |
| HO-140 |  | Submission As-Built Drawing For Roads Network | 5d | 2027-09-16 | 2027-09-22 | MS-CF-RD |  |  |  |  | -215.5d | 0d |  | HO-140 |  |  |  |  |  |  | HO | CO-HO |

| ID | WBS | Activity | Duration | Start | Finish | Predecessors | Total float | Free float | Activity ID N | 02- Network-WBS | 05-Discipline | 01- Network | Discipline | New Discipline |
| --- | --- | --- | --- | --- | --- | --- | --- | --- | --- | --- | --- | --- | --- | --- |
|  | 1 | **De-Mobilization Works** |  | 2027-09-19 | 2027-09-26 |  |  |  |  |  |  |  |  |  |
| HO-120 |  | Remove material stock & Storage area | 5d | 2027-09-19 | 2027-09-26 | HO-110 FF, HO-110 SS | -210.5d | 5d | HO-120 | HO | HO | HO | HO | DM-SITE |
| HO-220 |  | Removing Portable Caravan | 5d | 2027-09-19 | 2027-09-26 | HO-110 SS, HO-110 FF | -210.5d | 5d | HO-220 |  |  |  | HO | DM-SITE |
| HO-230 |  | Remove Temporary Car Shades | 5d | 2027-09-19 | 2027-09-26 | HO-110 SS, HO-110 FF | -210.5d | 5d | HO-230 |  |  |  | HO | DM-SITE |
|  | 3 | **Handing Over** |  | 2027-09-19 | 2027-10-02 |  |  |  |  |  |  |  |  |  |
| HO-110 |  | Final Testing Work | 5d | 2027-09-19 | 2027-09-26 | HO-100 FF, T/C-PW, T/C-SW, T/C-SD, T/C-SL, T/C-TE, T/C-MV, T/C-RD, T/C-SPS, T/C-DPO, T/C-IR, HO-210 FF, HO-200 FF, HO-190 FF, HO-150 FF, HO-180 FF, HO-170 FF, HO-130 FF, HO-160 FF, HO-140 FF | -210.5d | 0d | HO-110 | HO | HO | HO | HO | CO-HO |
| HO-250 |  | Review B.O.Q Qty. to ensure compliance with the actual status | 5d | 2027-09-22 | 2027-09-29 | HO-260 SS | -215.5d | 0d | HO-250 |  |  |  | HO | CO-HO |
| HO-260 |  | Review FIR Approval to ensure compliance with the actual status | 5d | 2027-09-22 | 2027-09-29 | MS-CF-TE, MS-CF-MV, MS-CF-IR, MS-CF-SL, MS-CF-SW, MS-CF-PW, MS-CF-SD, MS-CF-RD, HO-270 SS | -215.5d | 0d | HO-260 |  |  |  | HO | CO-HO |
| HO-270 |  | Review the sample drawing to ensure compliance with the actual status | 5d | 2027-09-22 | 2027-09-29 | HO-180, HO-150, HO-190, HO-130, HO-160, HO-170, HO-200, HO-210, HO-100 FF, HO-140 | -215.5d | 0d | HO-270 |  |  |  | HO | CO-HO |
| HO-240 |  | Final Walkthrough and Inspection | 2d | 2027-09-29 | 2027-10-02 | HO-250, HO-260, HO-270 | -215.5d | 0d | HO-240 |  |  |  | HO | CO-HO |
| HO-280 |  | Punch List Completion | 2d | 2027-09-29 | 2027-10-02 | HO-250, HO-260, HO-270, HO-110 FF, HO-240 FF | -215.5d | 0d | HO-280 |  |  |  | HO | CO-HO |

## Activity codes

| Code | Value | Meaning |
| --- | --- | --- |
| 01- Network | EW | Earthworks Network |
| 01- Network | HO | Handing Over |
| 01- Network | IR | Irrigation Network |
| 01- Network | MB | Mobilization |
| 01- Network | MS | Milestone |
| 01- Network | MV | Medium Voltage Network |
| 01- Network | PW | Potable Water Network |
| 01- Network | RD | Roads Network |
| 01- Network | SD | Storm Drainage Network |
| 01- Network | SL | Street Lighting Network |
| 01- Network | SW | Sewage Network |
| 01- Network | TC | Testing and Comissioning |
| 01- Network | TE | Telecom Network |
| 02- Network-WBS | AB | Asphaltic Base Course Layer and Related Works |
| 02- Network-WBS | CB | Catch Basins of Storm Drainage Network |
| 02- Network-WBS | CO | Connection of Potable Network |
| 02- Network-WBS | CW | Cabling Works of Street Lighting Network |
| 02- Network-WBS | DB | Distribution Panel of Street Lighting Network |
| 02- Network-WBS | DSN | Design of Street Lighting Network |
| 02- Network-WBS | ER | Earthing System Works of Street Lighting Network |
| 02- Network-WBS | EW | Earthworks |
| 02- Network-WBS | FH | Fire Hydrant of Potable Network |
| 02- Network-WBS | GN | General |
| 02- Network-WBS | HO | Handing Over |
| 02- Network-WBS | LP | Lighting Poles of Street Lightng Network |
| 02- Network-WBS | LS | Landscap of Roads Network |
| 02- Network-WBS | MB | Preliminaries and Mobilization Works |
| 02- Network-WBS | MH | Manholes of Telecom Network |
| 02- Network-WBS | ML | Main Line of Potable Network |
| 02- Network-WBS | MS | Milestones |
| 02- Network-WBS | PD | Primary Ducts Works of Telecom Network |
| 02- Network-WBS | PRC | Procurement of Potable Network |
| 02- Network-WBS | RM | Road Markings of Roads Network |
| 02- Network-WBS | RMU | RMU Works of Meduim Voltage Network |
| 02- Network-WBS | SD | Shop Drawaing of Telecom Network |
| 02- Network-WBS | TC | Testing & Commissioning of Storm Drainage Network |
| 02- Network-WBS | TF | Testing & Finishes of Sewage Network |
| 02- Network-WBS | TR | Termination Works of Street Lighting Network |
| 02- Network-WBS | TS | Traffic Signs of Roads Network |
| 03- Activity | 1DL | Material 1st Delivery |
| 03- Activity | AB | Ashpaltic Base Course |
| 03- Activity | BA | Base Cource |
| 03- Activity | BF | Backfilling |
| 03- Activity | CB | Catch Basin Installation |
| 03- Activity | CL | Cable Laying |
| 03- Activity | CR | Fixing of Curbstone |
| 03- Activity | Con | Connection |
| 03- Activity | DL | Material Delivery |
| 03- Activity | DSA | Desgin Approval |
| 03- Activity | DSS | Desgin Submittal |
| 03- Activity | EW | Earthing Work |
| 03- Activity | Ex | Excavation |
| 03- Activity | FH | Fire Haydrant Installation |
| 03- Activity | HH | Hand Hole Installation |
| 03- Activity | IL | Fixing of Interlock |
| 03- Activity | LP | Light Pole Installation |
| 03- Activity | LPA | Light Poles Arms & Fixture |
| 03- Activity | LPF | Light Pole Fondation |
| 03- Activity | MA | Material Approval |
| 03- Activity | MC | Prime Coat Layer Works |
| 03- Activity | MF | Material Manufacturing |
| 03- Activity | MS | Material Submittal |
| 03- Activity | NOC | Recieval of Approval NOC |
| 03- Activity | PB | Panal Board Installation |
| 03- Activity | PBF | Panal Board Foundation |
| 03- Activity | PC | Pouring Plain Concrete |
| 03- Activity | PL | Pipe Laying |
| 03- Activity | PO | Issuance of Purchase Order |
| 03- Activity | RM | Road Marking |
| 03- Activity | RMU | Installation of RMU |
| 03- Activity | RMUF | Installation of RMU Foundation |
| 03- Activity | SDA | Shop Drawaing Review & Approval |
| 03- Activity | SDS | Shop Drawaing Preparation & Submission |
| 03- Activity | SG | Sub Grade |
| 03- Activity | T&C | Testing and Commissioning |
| 03- Activity | TF | Traffic Signs |
| 03- Activity | TR | Termination |
| 03- Activity | Test | Testing |
| 03- Activity | VI | Valve Installation |
| 04-UOM | Cub.m | Cubic Meter |
| 04-UOM | LM | Linear Meter |
| 04-UOM | Sq.m | Square Meter |
| 05-Discipline | 1DL | 1st Delivery of Material to Site |
| 05-Discipline | A | Shop Drawaings Approval |
| 05-Discipline | BS | Asphaltic Base Course Layer and Related Works |
| 05-Discipline | C | Contractual Milestones |
| 05-Discipline | CB | Cabling Works |
| 05-Discipline | CO | Connection works |
| 05-Discipline | CON | Connection works |
| 05-Discipline | CW | Cabling Works |
| 05-Discipline | DC | Primary Ducts Works |
| 05-Discipline | DL | Delivery of Material to Site |
| 05-Discipline | DS | Distrubution Panel Boards |
| 05-Discipline | EPC | EPC Milestones |
| 05-Discipline | EW | Earthworks Network |
| 05-Discipline | FH | Fire Hydrant |
| 05-Discipline | HO | Handing Over |
| 05-Discipline | LAND | Landscaping Works |
| 05-Discipline | MF | Manufacturing of Material |
| 05-Discipline | ML | Main Line Sections |
| 05-Discipline | MNH | Manholes and Handholes Works |
| 05-Discipline | MON | Monitor Milestones |
| 05-Discipline | Mob | Mobilization Works |
| 05-Discipline | NOC | Recieval of Approval NOC |
| 05-Discipline | PO | Issuance of Purchase Orders |
| 05-Discipline | POL | Lighting Poles Works |
| 05-Discipline | RMU | RMUs and Unit Substation Works |
| 05-Discipline | S | Shop Drawaings Submittal |
| 05-Discipline | T&F | Testing&Finishing |
| 05-Discipline | TC | Testing & Commissioning |
| 05-Discipline | TF | Testing&Finishing |
| 05-Discipline | TR | Termination and Testing Works |
| 05-Discipline | TRF | Traffic Signs Boards and Roads Marking |
| 05number | 05 num | 1 |
| 06-Employer Responsibilities | ER | Employer Responsibilities |
| 07-Weightage System | (New) | POURING RC WALL |
| 07-Weightage System | (New)-2 | BACKFILLING |
| 07-Weightage System | BACK | BACKFILLING WORK |
| 07-Weightage System | BACK RM | BACKFILLING |
| 07-Weightage System | DUCTS | INSTALL DUCTS |
| 07-Weightage System | EARTH | EARTHING WORK For Panels and Plant |
| 07-Weightage System | EX | EXCAVATION |
| 07-Weightage System | EXC | EXCAVATION |
| 07-Weightage System | INS RMU | INSTALL RMU |
| 07-Weightage System | INST BO | INSTALL LIGHTINING PANEL BOARD |
| 07-Weightage System | INSTALL | INSTALL PANNELS BOARD FOUNDATION |
| 07-Weightage System | INSTALL-1 | INSTALL MANHOLES |
| 07-Weightage System | INSUL | INSULATION |
| 07-Weightage System | LAY | CABLE LAYING |
| 07-Weightage System | LAYING | CABLE LAYING |
| 07-Weightage System | LP | INSTALL LINER PIPES |
| 07-Weightage System | P06 | Sewage Pump Station PS06 |
| 07-Weightage System | PIPE | PIPES LAYING AND ACCESSORIES |
| 07-Weightage System | PO K1 | POND J1 |
| 07-Weightage System | PO K2 | POND J2 |
| 07-Weightage System | POLES | INSTALL POLES WITH ACCESSORIES |
| 07-Weightage System | RC F | INSTALL RC FOOTING |
| 07-Weightage System | RC S | RC SLAB |
| 07-Weightage System | RC W | INSTALL RC WALL RINGS & SLAB |
| 07-Weightage System | T&COV | TESTING |
| 07-Weightage System | T&COVER | TESTING & COVERS |
| 07-Weightage System | TER | EARTHING WORK FOR POLES |
| 07-Weightage System | TER RMU | TERMINATION AND TESTING |
| 07-Weightage System | TERM | TERMINATIO AND TESTIG |
| 07-Weightage System | TERMINA | TERMINATION OF LIGHTING PANEL BOARD |
| 07-Weightage System | TEST | TEASTING |
| 07-Weightage System | TESTING | TESTING WORK FOR POLES |
| 07-Weightage System | VALV | VALVES |
| 07-Weightage System | cover | INSTALL COVER |
| 07-Weightage System | wall | Install wall of concrete blocks |
| 08 Stage | CON | Construction |
| 08 Stage | EN | ENGINEERING |
| 08 Stage | PRO | PROCUREMENT |
| 08 Stage | TC | TESTING & COMISSIONING |
| 09 Roads | R09 | ROAD 09 |
| 09 Roads | R10 | ROAD 10 |
| 09 Roads | R11 | ROAD 11 |
| 09 Roads | R14 | ROAD 14 |
| 09 Roads | R15 | ROAD 15 |
| 09 Roads | R16 | ROAD 16 |
| 09 Roads | R17 | ROAD 17 |
| 09 Roads | R18 | ROAD 18 |
| 09 Roads | RM | RISING MAILINE |
| 10 side Walk | S01 | Side Walk 01 |
| 10 side Walk | S02 | Side Walk 02 |
| 10 side Walk | S03 | Side Walk 03 |
| 10 side Walk | S04 | Side Walk 04 |
| 10 side Walk | S05 | Side Walk 05 |
| 10 side Walk | S06 | Side Walk 06 |
| 10 side Walk | S07 | Side Walk 07 |
| 10 side Walk | S08 | Side Walk 08 |
| 10 side Walk | S09 | Side Walk 09 |
| 10 side Walk | S10 | Side Walk 10 |
| 10 side Walk | S11 | Side Walk 11 |
| 10 side Walk | S12 | Side Walk 12 |
| 10 side Walk | S13 | Side Walk 13 |
| 10 side Walk | S14 | Side Walk 14 |
| 10 side Walk | S15 | Side Walk 15 |
| 10 side Walk | S16 | Side Walk 16 |
| Discipline | ENG | Engineering |
| Discipline | EW | Earthworks Network |
| Discipline | HO | Handing Over |
| Discipline | IR | Irrigation Network |
| Discipline | MOB | Mobilization |
| Discipline | MS | Milestone |
| Discipline | MV | Medium Voltage Network |
| Discipline | PROC | Procurement |
| Discipline | PW | Potable Water Network |
| Discipline | RD | Roads Network |
| Discipline | SD | Storm Drainage Network |
| Discipline | SL | Street Lighting Network |
| Discipline | SW | Sewage Network |
| Discipline | TC | Testing and Comissioning |
| Discipline | TE | Telecom Network |
| New Discipline | CO-HO | Handing Over & As-Built Submittals |
| New Discipline | DM-SITE | Site Demobilization |
| New Discipline | EW | Earthworks Network |
| New Discipline | IR | Irrigation Network |
| New Discipline | MEP | Mobilization, Engineering & Procurement |
| New Discipline | MS | Key Milestones (no cost) |
| New Discipline | MV | Medium Voltage Network |
| New Discipline | PW | Potable Water Network |
| New Discipline | RD | Roads Network |
| New Discipline | SD | Storm Water Drainage Network |
| New Discipline | SL | Street Lighting Network |
| New Discipline | SW | Sewage Network |
| New Discipline | TC-ALL | Testing & Commissioning (All Networks) |
| New Discipline | TE | Telecom Network |
