# Infrastructure Works of Area J -3rd Industrial City-Dammam-Phase 2 - Update 20-10-2026

Schedule from Primavera P6, 2025-01-12 to 2027-09-07, data date 2026-10-27, costs in USD, A marks actual dates.
Must finish by 2027-01-12

## Calendars

- MODON - ACTIVITY: Mon-Thu 08:00-12:00, 13:00-17:00; Fri off; Sat-Sun 08:00-12:00, 13:00-17:00. Exceptions (off unless hours are given): 2025-02-22, 2025-02-23 08:00-12:00, 13:00-17:00, 2025-03-01 to 2025-03-06 08:00-12:00, 13:00-17:00, 2025-03-08 to 2025-03-13 08:00-12:00, 13:00-17:00, 2025-03-15 to 2025-03-20 08:00-12:00, 13:00-17:00, 2025-03-22 to 2025-03-27 08:00-12:00, 13:00-17:00, 2025-03-29 08:00-12:00, 13:00-17:00, 2025-03-30 to 2025-04-02, 2025-06-05, 2025-06-07 to 2025-06-09, 2025-06-15 to 2025-06-19 08:00-12:00, 13:00-17:00, 2025-06-21 to 2025-06-26 08:00-12:00, 13:00-17:00, 2025-06-28 to 2025-07-03 08:00-12:00, 13:00-17:00, 2025-07-05 to 2025-07-10 08:00-12:00, 13:00-17:00, 2025-07-12 to 2025-07-17 08:00-12:00, 13:00-17:00, 2025-07-19 to 2025-07-24 08:00-12:00, 13:00-17:00, 2025-07-26 to 2025-07-31 08:00-12:00, 13:00-17:00, 2025-08-02 to 2025-08-07 08:00-12:00, 13:00-17:00, 2025-08-09 to 2025-08-14 08:00-12:00, 13:00-17:00, 2025-08-16 to 2025-08-21 08:00-12:00, 13:00-17:00, 2025-08-23 to 2025-08-28 08:00-12:00, 13:00-17:00, 2025-08-30 to 2025-09-04 08:00-12:00, 13:00-17:00, 2025-09-06 to 2025-09-11 08:00-12:00, 13:00-17:00, 2025-09-13 to 2025-09-15 08:00-12:00, 13:00-17:00, 2025-09-23, 2026-02-18 to 2026-02-19 08:00-12:00, 13:00-17:00, 2026-02-21 to 2026-02-26 08:00-12:00, 13:00-17:00, 2026-02-28 to 2026-03-05 08:00-12:00, 13:00-17:00, 2026-03-07 to 2026-03-12 08:00-12:00, 13:00-17:00, 2026-03-14 to 2026-03-19 08:00-12:00, 13:00-17:00, 2026-03-21 to 2026-03-23, 2026-05-26 to 2026-05-28, 2026-05-30, 2026-06-15 to 2026-06-18 08:00-12:00, 13:00-17:00, 2026-06-20 to 2026-06-25 08:00-12:00, 13:00-17:00, 2026-06-27 to 2026-07-02 08:00-12:00, 13:00-17:00, 2026-07-04 to 2026-07-09 08:00-12:00, 13:00-17:00, 2026-07-11 to 2026-07-16 08:00-12:00, 13:00-17:00, 2026-07-18 to 2026-07-23 08:00-12:00, 13:00-17:00, 2026-07-25 to 2026-07-30 08:00-12:00, 13:00-17:00, 2026-08-01 to 2026-08-06 08:00-12:00, 13:00-17:00, 2026-08-08 to 2026-08-13 08:00-12:00, 13:00-17:00, 2026-08-15 to 2026-08-20 08:00-12:00, 13:00-17:00, 2026-08-22 to 2026-08-27 08:00-12:00, 13:00-17:00, 2026-08-29 to 2026-09-03 08:00-12:00, 13:00-17:00, 2026-09-05 to 2026-09-10 08:00-12:00, 13:00-17:00, 2026-09-12 to 2026-09-15 08:00-12:00, 13:00-17:00, 2026-09-23, 2027-02-08 to 2027-02-11 08:00-12:00, 13:00-17:00, 2027-02-13 to 2027-02-18 08:00-12:00, 13:00-17:00, 2027-02-20 to 2027-02-21 08:00-12:00, 13:00-17:00, 2027-02-22, 2027-02-23 to 2027-02-25 08:00-12:00, 13:00-17:00, 2027-02-27 to 2027-03-04 08:00-12:00, 13:00-17:00, 2027-03-06 to 2027-03-08 08:00-12:00, 13:00-17:00, 2027-03-09 to 2027-03-11, 2027-05-15 to 2027-05-19, 2027-06-15 to 2027-06-17 08:00-12:00, 13:00-17:00, 2027-06-19 to 2027-06-24 08:00-12:00, 13:00-17:00, 2027-06-26 to 2027-07-01 08:00-12:00, 13:00-17:00, 2027-07-03 to 2027-07-08 08:00-12:00, 13:00-17:00, 2027-07-10 to 2027-07-15 08:00-12:00, 13:00-17:00, 2027-07-17 to 2027-07-22 08:00-12:00, 13:00-17:00, 2027-07-24 to 2027-07-29 08:00-12:00, 13:00-17:00, 2027-07-31 to 2027-08-05 08:00-12:00, 13:00-17:00, 2027-08-07 to 2027-08-12 08:00-12:00, 13:00-17:00, 2027-08-14 to 2027-08-19 08:00-12:00, 13:00-17:00, 2027-08-21 to 2027-08-26 08:00-12:00, 13:00-17:00, 2027-08-28 to 2027-09-02 08:00-12:00, 13:00-17:00, 2027-09-04 to 2027-09-07 08:00-12:00, 13:00-17:00.

## Resources

| Resource | Group | Rate |
| --- | --- | --- |
| MH ; depth: 0.0m - 1.5m | material | 291.48 |
| MH ; depth: 1.51m - 2.5m | material | 315.51 |
| MH ; depth: 2.51 - 3.5m | material | 415.92 |
| MH ; depth: 0.0m - 1.5m | material | 395.61 |
| MH ; depth: 1.51m - 2.5m | material | 426.06 |
| MH ; depth: 1.51m - 2.5m with back drop less than 1.0 m | material | 754.86 |
| MH ; depth: 2.51 - 3.5m | material | 571.2 |
| MH ; depth: 2.51 - 3.5m with back drop less than 1.0 m | material | 974.46 |
| MH ; depth: 0.0m - 1.5m | material | 722.55 |
| MH ; depth: 1.51m - 2.5m | material | 764.7 |
| MH ; depth: 2.51 - 3.5m | material | 920.97 |
| MH ; depth: 2.51 - 3.5m | material | 1785 |
| MH ; depth: 3.51 - 4.5m | material | 1963.5 |
| Pipe with diameter 400mm ; depth: 0.0m - 1.5m | material | 11.76 |
| Pipe with diameter 400mm ; depth: 1.51m - 2.5m | material | 12.33 |
| Pipe with diameter 400mm ; depth: 2.51m - 3.5m | material | 16.08 |
| Pipe with diameter 500mm ; depth: 0.0m - 1.5m | material | 14.19 |
| Pipe with diameter 500mm ; depth: 1.51m - 2.5m | material | 14.91 |
| Pipe with diameter 600mm ; depth: 0.0m - 1.5m | material | 17.4 |
| Pipe with diameter 600mm ; depth: 1.51m - 2.5m | material | 18.21 |
| Pipe with diameter 600mm ; depth: 2.51m - 3.5m | material | 22.32 |
| Pipe with diameter 700mm ; depth: 0.0m - 1.5m | material | 20.58 |
| Pipe with diameter 700mm ; depth: 1.51m - 2.5m | material | 21.51 |
| Pipe with diameter 700mm ; depth: 2.51m - 3.5m | material | 25.65 |
| Pipe with diameter 800mm ; depth: 0.0m - 1.5m | material | 23.73 |
| Pipe with diameter 800mm ; depth: 1.51m - 2.5m | material | 24.72 |
| Pipe with diameter 800mm ; depth: 2.51m - 3.5m | material | 28.92 |
| Pipe with diameter 900mm ; depth: 0.0m - 1.5m | material | 26.85 |
| Pipe with diameter 900mm ; depth: 1.51m - 2.5m | material | 27.84 |
| Pipe with diameter 900mm ; depth: 2.51 - 3.5m | material | 32.07 |
| Pipe with diameter 1000mm ; depth: 0.0m - 1.5m | material | 30.99 |
| Pipe with diameter 1000mm ; depth: 1.51m - 2.5m | material | 32.07 |
| Pipe with diameter 1000mm ; depth: 2.51 - 3.5m | material | 36.42 |
| Pipe with diameter 1100mm ; depth: 0.0m - 1.5m | material | 35.25 |
| Pipe with diameter 1100mm ; depth: 1.51m - 2.5m | material | 36.42 |
| Pipe with diameter 1100mm ; depth: 2.51 - 3.5m | material | 40.86 |
| Pipe with diameter 1200mm ; depth: 1.51m - 2.5m | material | 40.68 |
| Pipe with diameter 1200mm ; depth: 2.51 - 3.5m | material | 45.18 |
| Access opening with dimensions 1000*1000 mm | material | 357 |
| Pipe with diameter 300mm ; depth: 0 - 1.5m | material | 10.2 |
| Pipe with diameter 400mm ; depth: 0 - 1.5m | material | 13.8 |
| Single Catch basin | material | 160.65 |
| Double Catch basin | material | 321.3 |
| Nominal bore : 160mm; Depth : 0.0m - 1.5m | material | 7.08 |
| Nominal bore : 160mm; Depth : 1.5m - 2.5m | material | 7.47 |
| Nominal bore : 200mm; Depth : 0.0m - 1.5m | material | 7.98 |
| Nominal bore : 200mm; Depth : 1.5m - 2.5m | material | 8.4 |
| Nominal bore : 200mm; Depth : 2.5m - 3.5m | material | 12.66 |
| Nominal bore : 200mm; Depth : 3.5m - 4.5m | material | 13.23 |
| Nominal bore : 200mm; Depth : 4.5m -5.5m | material | 13.83 |
| Nominal bore : 200mm; Depth : 5.5m - 6.5m | material | 27.78 |
| Nominal bore : 250mm; Depth : 4.5m -5.5m | material | 16.44 |
| Nominal bore : 250mm; Depth : 5.5m - 6.5m | material | 19.29 |
| Nominal bore : 315mm; Depth : 4.5m -5.5m | material | 24 |
| Nominal bore : 315mm; Depth : 6.5m - 7.5m | material | 36.69 |
| Depth : 1.5 - 2.5m | material | 14.91 |
| Depth : 2.5 - 3.5m | material | 19.71 |
| Depth : 3.5 - 4.5m | material | 20.55 |
| Depth : 4.5 - 5.5m | material | 21.39 |
| Depth : 5.5 - 6.5m | material | 38.04 |
| Depth : 6.5 -7.5m | material | 38.04 |
| Depth : 6.5 -7.5m | material | 46.92 |
| Depth :more than 7.5m | material | 46.92 |
| Depth : 6.5 -7.5m | material | 52.62 |
| Depth :more than 7.5m | material | 52.62 |
| HDPE force main DN 800mm diameter, in trenches depth: 0- 1.5m | material | 62.82 |
| HDPE force main DN 800mm diameter, in trenches depth: 1.51- 2.5m | material | 64.05 |
| Washout valve 200mm, on 800mm dia. pipe | material | 1160.25 |
| Air release valve 110 mm dia, on 800mm dia. pipe | material | 856.8 |
| Washout valve chamber | material | 1428 |
| Air release valve chamber | material | 364.14 |
| Depth: not exceeding 1.5m | material | 285.75 |
| Depth: 1.5 - 2.5m | material | 320.79 |
| Depth: 2.5 - 3.5m | material | 431.73 |
| Depth: 3.5 - 4.5m | material | 505.02 |
| Depth: 4.5 - 5.5m | material | 563.25 |
| Depth: 5.5 - 6.5m | material | 1185.6 |
| Depth:6.5 - 7.5m | material | 1249.05 |
| Depth: more than 7.5m | material | 1299.45 |
| Depth: 2.5 - 3.5m | material | 601.14 |
| Depth: 3.5 - 4.5m | material | 692.28 |
| Depth: 4.5 - 5.5m | material | 781.02 |
| Depth: 5.5 - 6.5m | material | 1388.97 |
| Depth:6.5 - 7.5m | material | 1469.13 |
| Pipe with diameter 160 mm; in depth 1.5m - 3.0m | material | 5.43 |
| Pipe with diameter 200mm; in depth 0.0m - 1.5m | material | 6.51 |
| Pipe with diameter 200mm; in depth 1.5m - 3.0m | material | 7.29 |
| Pipe with diameter 355mm; in depth 0.0m - 1.5m | material | 13.2 |
| Pipe with diameter 355mm; in depth 1.5m - 3.0m | material | 14.22 |
| Pipe with diameter 560mm; in depth 1.5m - 3.0m | material | 30.99 |
| Pipe with diameter 630mm; in depth 1.5m - 3.0m | material | 38.52 |
| Butterfly valves with dia (355)mm on pipes with dia (355)mm. | material | 1196.91 |
| Butterfly valves with dia (560)mm on pipes with dia (560)mm. | material | 2677.5 |
| Butterfly valves with dia (630)mm on pipes with dia (630)mm. | material | 3009.57 |
| Wash out valve with dia (100)mm on pipes with dia (200) mm | material | 254.46 |
| Wash out valve with dia (150)mm on pipes with dia (560) mm | material | 816.66 |
| Wash out valve with dia (150)mm on pipes with dia (630) mm | material | 1059.87 |
| Air valves with dia (50mm) mm on pipes with dia(200)mm. | material | 290.16 |
| Air valves with dia (65mm) mm on pipes with dia(355)mm. | material | 390.57 |
| Air valves with dia (65mm) mm on pipes with dia(560)mm. | material | 533.37 |
| Air valves with dia (65mm) mm on pipes with dia(630)mm. | material | 782.01 |
| 125 mm pipe; depth 0.0m - 1.5m | material | 3.33 |
| 280 mm pipe; depth 0.0m - 1.5m | material | 12.87 |
| 280 mm pipe; depth 1.5m - 3.0m | material | 13.71 |
| 355 mm pipe; depth 1.5m - 3.0m | material | 18.33 |
| 400 mm pipe; depth 1.5m - 3.0m | material | 17.22 |
| 500. mm pipe; depth 1.5m - 3.0m | material | 25.2 |
| Gate valves dia (90)mm on pipes with dia (125) mm. | material | 89.25 |
| Gate valves dia (200)mm on pipes with dia (280) mm. | material | 133.89 |
| Butterfly valves with dia (355)mm on pipes with dia (355)mm. | material | 1196.91 |
| Butterfly valves with dia (400)mm on pipes with dia (400)mm. | material | 1492.14 |
| Butterfly valves with dia (500)mm on pipes with dia (500)mm. | material | 2285.85 |
| Wash out valve with dia (100)mm on pipes with dia (125) mm | material | 248.52 |
| Wash out valve with dia (100)mm on pipes with dia (355) mm | material | 454.29 |
| Wash out valve with dia (150)mm on pipes with dia (400) mm | material | 586.53 |
| Wash out valve with dia (150)mm on pipes with dia (500) mm | material | 816.66 |
| Air valves with dia (50mm) mm on pipes with dia(125)mm. | material | 285.69 |
| Air valves with dia (65mm) mm on pipes with dia(280)mm. | material | 321.3 |
| Air valves with dia (65mm) mm on pipes with dia(400)mm. | material | 535.5 |
| Air valves with dia (65mm) mm on pipes with dia(500)mm. | material | 600.3 |
| Excavation for Trench size 40cm wide and 80cm deep ( Maximum 1 cable 33kv) | material | 0.79 |
| Excavation for Trench size 60cm wide and 80cm deep ( for Max two cables 33 kv) | material | 0.82 |
| Excavation for Trench size 90cm wide and 80cm deep ( Maximum 3 cable 33kv) | material | 0.89 |
| Excavation for Trench size 120cm wide and 80cm deep ( Maximum 4cable 33kv) | material | 0.93 |
| Excavation for Trench size 150cm wide and 80cm deep ( Maximum 4cable 33kv) | material | 1.03 |
| Duct bank for (2) 33 kv cables | material | 4.71 |
| Duct bank for (4) 33 kv cables | material | 9.35 |
| Duct bank for (6) 33 kv cables | material | 13.99 |
| 33kv 3Cx400 mmï¿½ Al XLPE / LLDPE /PVC Cable | material | 5.71 |
| 33kv 3Cx400 mmï¿½ Al XLPE /LLDPE/PVC | material | 80.04 |
| 33kv 3Cx400 mmï¿½ Al XLPE/LLDPE Cable Termination | material | 80.04 |
| Supply & installation of (33) kv MV Switch (RMU) for Normally-open Points (NOP) according to the Saudi Electric Company specification | material | 3593.6 |
| Supply, installation , test and operation of cables, Copper, (4Cx25mmï¿½,Cu/XLPE/SWA/PVC +1x16mmï¿½ PVC/PVC) | material | 2.1 |
| Street Lighting Feeder pillars , Includes foundation and draw pits | material | 350.37 |
| Reinforced concrete foundation, for 12m high lighting columns With Drawpits | material | 16.29 |
| Reinforced concrete base With fence for Distribution substation in accordance with SEC Specifications | material | 646.17 |
| Lighting poles with one arm, including the power distribution box, screws, cables, 12 meters in height. | material | 85.23 |
| Lighting poles complete with two arms, including the power distribution box, screws, cables, 12 meters in height. | material | 94.35 |
| Road crossing ducts, 4 way (4 x 100mm PVC) | material | 5.67 |
| Street Lighting( LED) Luminaire,(Type C) complete with control gear and lamp, ?.17000 Lumen | material | 26.82 |
| Street Lighting( LED) Luminaire,(Type B) complete with control gear and lamp, ?.40600 Lumen | material | 43.17 |
| Earthing installation, lighting plants. | material | 84.48 |
| Earthing installation, for Street lighting circuits, including earth rod in plastic chamber | material | 8.4 |
| Earthing installation Lighting Panales | material | 21.42 |
| Package Substation 33000/400V, 500kVA with RMU | material | 4826.49 |
| 6-way ducts, 50mm dia. HDPE | material | 6 |
| Road crossing ducts (6-way) | material | 7.5 |
| Manhole Type 1 (2000x1000x1000) | material | 139.53 |
| Manhole Type 2 (2000x1000x1000) | material | 140.7 |
| Manhole Type 3 (2000x1000x1000) | material | 141.87 |
| 300mm thick Subgrade, including subgrade preparation, CBR?25% | material | 1.5 |
| Aggregate base course 200mm thick after compaction in two layers(Grading 1); CBR?80%; including watering, compaction and testing | material | 3.63 |
| Bituminous base course(Grading I - Class A), 70mm thick after compaction including Prime Coat (MC1) | material | 16.35 |
| Bituminous concrete wearing course, 50 mm thick, after compaction(Grading I - Class A), including tack coat (RC) | material | 18 |
| Interlocking block pavers for sidewalk/footpath 60mm thick on and including 30mm Sand Bedding, 200mm Aggregate subbase, all in accordance with authority standards and complete as per specifications | material | 2.1 |
| Extraover for Pedestrian ramps | material | 19.65 |
| Precast Concrete Kerb, Type K1 | material | 1.8 |
| Precast Concrete Kerb, Type L1 | material | 1.8 |
| Traffic signs, ground mounted, Sheet Alumenium, (breakaway) Single post, with all accessories | material | 39.27 |
| Straight Arrow | material | 4.29 |
| Right or Left Arrow | material | 4.29 |
| Straight-Right Arrow | material | 4.29 |
| Straight-Left Arrow | material | 4.29 |
| Retroreflective Thermoplastic White, Traffic lines | material | 1.26 |
| Retroreflective Thermoplastic Yellow, Traffic lines | material | 1.26 |
| Retroreflective raised pavement markers(Type A) | material | 1.62 |
| Skilled Labor/Surveyor | labor |  |
| Foreman | labor |  |
| Excavator | equipment |  |
| Pipe with diameter 400mm ; depth: 0.0m - 1.5m | material | 262.64 |
| Pipe with diameter 600mm ; depth: 0.0m - 1.5m | material | 388.6 |
| Pipe with diameter 700mm ; depth: 1.51m - 2.5m | material | 480.39 |
| Pipe with diameter 700mm ; depth: 2.51m - 3.5m | material | 572.85 |
| Pipe with diameter 800mm ; depth: 1.51m - 2.5m | material | 552.08 |
| Pipe with diameter 1100mm ; depth: 1.51m - 2.5m | material | 813.38 |
| Pipe with diameter 1100mm ; depth: 2.51 - 3.5m | material | 912.54 |
| Labor/Helper | labor |  |
| Plumber | labor |  |
| Pipe with diameter 1000mm ; depth: 2.51 - 3.5m | material | 813.38 |
| Pipe encasement dia 300 mm | material | 139.5 |
| Pipe encasement dia 400 mm | material | 165.6 |
| Pipe encasement dia 500 mm | material | 197.1 |
| Pipe encasement dia 600 mm | material | 240.3 |
| Pipe encasement dia 700 mm | material | 264.6 |
| Pipe encasement dia 800 mm | material | 301.5 |
| Pipe encasement dia 900 mm | material | 339.3 |
| Pipe encasement dia 1000 mm | material | 377.1 |
| Pipe encasement dia 1100 mm | material | 418.5 |
| Pipe encasement dia 1200 mm | material | 459 |
| Box Conduit with dimensions 1200*1200 mm ; depth: 0.0m - 1.5m | material | 3308.4 |
| Box Conduit with dimensions 1200*1200 mm ; depth: 2.51m - 3.5m | material | 3400.2 |
| Box Conduit with dimensions 1500*1200 mm ; depth: 2.51m - 3.5m | material | 3689.1 |
| Box Conduit with dimensions 1500*1500 mm ; depth: 2.51m - 3.5m | material | 4078.8 |
| Box Conduit with dimensions 2000*1200 mm ; depth: 2.51m - 3.5m | material | 4311.9 |
| Pipe with diameter 300mm ; depth: 0 - 1.5m | material | 227.8 |
| Pipe with diameter 400mm ; depth: 0 - 1.5m | material | 308.2 |
| Pipe with diameter 400mm ; depth: 1.51m - 2.5m | material | 275.37 |
| Pipe with diameter 1200mm ; depth: 1.51m - 2.5m | material | 908.52 |
| Pipe with diameter 160 mm; in depth 1.5m - 3.0m | material | 121.27 |
| Pipe with diameter 200mm; in depth 0.0m - 1.5m | material | 145.39 |
| Pipe with diameter 200mm; in depth 1.5m - 3.0m | material | 162.81 |
| 125 mm pipe; depth 0.0m - 1.5m | material | 74.37 |
| 500. mm pipe; depth 1.5m - 3.0m | material | 562.8 |
| Gate valves dia (90)mm on pipes with dia (125) mm. | material | 1993.25 |
| Wash out valve with dia (100)mm on pipes with dia (125) mm | material | 5550.28 |
| Wash out chamber; on 125 mm dia pipeline Depth 1.5 - 3m | material | 31915.8 |
| Pipe Fitter | labor |  |
| Excavation for Trench size 40cm wide and 80cm deep ( Maximum 1 cable 33kv) | material | 17.54 |
| Excavation for Trench size 60cm wide and 80cm deep ( for Max two cables 33 kv) | material | 18.34 |
| Excavation for Trench size 90cm wide and 80cm deep ( Maximum 3 cable 33kv) | material | 19.93 |
| Excavation for Trench size 120cm wide and 80cm deep ( Maximum 4cable 33kv) | material | 20.73 |
| Excavation for Trench size 150cm wide and 80cm deep ( Maximum 4cable 33kv) | material | 23.12 |
| Duct bank for (2) 33 kv cables | material | 105.24 |
| Duct bank for (4) 33 kv cables | material | 208.89 |
| Duct bank for (6) 33 kv cables | material | 312.54 |
| Electrician | labor |  |
| Low Current Technician | labor |  |
| 33kv 3Cx400 mmï¿½ Al XLPE / LLDPE /PVC Cable | material | 127.57 |
| 33kv 3Cx400 mmï¿½ Al XLPE /LLDPE/PVC | material | 1787.55 |
| Water Tank | equipment |  |
| Supply, installation , test and operation of cables, Copper, (4Cx25mmï¿½,Cu/XLPE/SWA/PVC +1x16mmï¿½ PVC/PVC) | material | 46.9 |
| Lighting poles with one arm, including the power distribution box, screws, cables, 12 meters in height. | material | 1903.47 |
| Eq. Operator | labor |  |
| Loader | equipment |  |
| Reinforced concrete foundation, for 12m high lighting columns With Drawpits | material | 363.81 |
| Earthing installation, for Street lighting circuits, including earth rod in plastic chamber | material | 187.6 |
| Earthing installation Lighting Panales | material | 478.38 |
| Manlift | equipment |  |
| Street Lighting( LED) Luminaire,(Type C) complete with control gear and lamp, ?.17000 Lumen | material | 598.98 |
| Earthing installation, lighting plants. | material | 1886.72 |
| Package Substation 33000/400V, 500kVA with RMU | material | 107792 |
| 6-way ducts, 50mm dia. HDPE | material | 134 |
| Road crossing ducts (6-way) | material | 167.5 |
| JCB | equipment |  |
| Truck | equipment |  |
| Manhole Type 1 (2000x1000x1000) | material | 3116.17 |
| Manhole Type 2 (2000x1000x1000) | material | 3142.3 |
| Block Mason | labor |  |
| Precast Concrete Kerb, Type K1 | material | 40.2 |
| Precast Concrete Kerb, Type L1 | material | 40.2 |
| Interlocking block pavers for sidewalk/footpath 60mm thick on and including 30mm Sand Bedding, 200mm Aggregate subbase, all in accordance with authority standards and complete as per specifications | material | 46.9 |
| Extraover for Pedestrian ramps | material | 438.85 |
| Painter | labor |  |
| Retroreflective Thermoplastic White, Traffic lines | material | 28.14 |
| Retroreflective Thermoplastic Yellow, Traffic lines | material | 28.14 |
| Retroreflective raised pavement markers(Type A) | material | 36.18 |
| Traffic signs, ground mounted, Sheet Alumenium, (breakaway) Single post, with all accessories | material | 877.03 |
| Straight Arrow | material | 95.81 |
| Right or Left Arrow | material | 95.81 |
| Straight-Left Arrow | material | 95.81 |
| Grader | equipment |  |
| Road Roller | equipment |  |
| 300mm capping layer underneath subgrade , CBR?15% | material | 44.1 |
| 300mm thick Subgrade, including subgrade preparation, CBR?25% | material | 33.5 |
| Aggregate base course 200mm thick after compaction in two layers(Grading 1); CBR?80%; including watering, compaction and testing | material | 81.07 |
| Insulation Worker | labor |  |
| Bituminous base course(Grading I - Class A), 70mm thick after compaction including Prime Coat (MC1) | material | 365.15 |
| Asphalt Cutter | equipment |  |
| Asphalt Paver | equipment |  |
| Bituminous concrete wearing course, 50 mm thick, after compaction(Grading I - Class A), including tack coat (RC) | material | 402 |
| Pipe with diameter 400mm ; depth: 0.0m - 1.5m | material | 39.2 |
| Pipe with diameter 400mm ; depth: 1.51m - 2.5m | material | 41.1 |
| Pipe with diameter 400mm ; depth: 2.51m - 3.5m | material | 53.6 |
| Pipe with diameter 500mm ; depth: 0.0m - 1.5m | material | 47.3 |
| Pipe with diameter 500mm ; depth: 1.51m - 2.5m | material | 49.7 |
| Pipe with diameter 600mm ; depth: 0.0m - 1.5m | material | 58 |
| Pipe with diameter 600mm ; depth: 1.51m - 2.5m | material | 60.7 |
| Pipe with diameter 600mm ; depth: 2.51m - 3.5m | material | 74.4 |
| Pipe with diameter 700mm ; depth: 0.0m - 1.5m | material | 68.6 |
| Pipe with diameter 700mm ; depth: 1.51m - 2.5m | material | 71.7 |
| Pipe with diameter 700mm ; depth: 2.51m - 3.5m | material | 85.5 |
| Pipe with diameter 800mm ; depth: 0.0m - 1.5m | material | 79.1 |
| Pipe with diameter 800mm ; depth: 1.51m - 2.5m | material | 82.4 |
| Pipe with diameter 800mm ; depth: 2.51m - 3.5m | material | 96.4 |
| Pipe with diameter 900mm ; depth: 0.0m - 1.5m | material | 89.5 |
| Pipe with diameter 900mm ; depth: 1.51m - 2.5m | material | 92.8 |
| Pipe with diameter 900mm ; depth: 2.51 - 3.5m | material | 106.9 |
| Pipe with diameter 1000mm ; depth: 0.0m - 1.5m | material | 103.3 |
| Pipe with diameter 1000mm ; depth: 1.51m - 2.5m | material | 106.9 |
| Pipe with diameter 1000mm ; depth: 2.51 - 3.5m | material | 121.4 |
| Pipe with diameter 1100mm ; depth: 0.0m - 1.5m | material | 117.5 |
| Pipe with diameter 1100mm ; depth: 1.51m - 2.5m | material | 121.4 |
| Pipe with diameter 1100mm ; depth: 2.51 - 3.5m | material | 136.2 |
| Pipe with diameter 1200mm ; depth: 1.51m - 2.5m | material | 135.6 |
| Pipe with diameter 1200mm ; depth: 2.51 - 3.5m | material | 150.6 |
| Pipe with diameter 300mm ; depth: 0 - 1.5m | material | 34 |
| Pipe with diameter 400mm ; depth: 0 - 1.5m | material | 46 |
| MH ; depth: 0.0m - 1.5m | material | 971.6 |
| MH ; depth: 1.51m - 2.5m | material | 1051.7 |
| MH ; depth: 2.51 - 3.5m | material | 1386.4 |
| MH ; depth: 0.0m - 1.5m | material | 1318.7 |
| MH ; depth: 1.51m - 2.5m | material | 1420.2 |
| MH ; depth: 1.51m - 2.5m with back drop less than 1.0 m | material | 2516.2 |
| MH ; depth: 2.51 - 3.5m | material | 1904 |
| MH ; depth: 2.51 - 3.5m with back drop less than 1.0 m | material | 3248.2 |
| MH ; depth: 0.0m - 1.5m | material | 2408.5 |
| MH ; depth: 1.51m - 2.5m | material | 2549 |
| MH ; depth: 2.51 - 3.5m | material | 3069.9 |
| MH ; depth: 2.51 - 3.5m | material | 5950 |
| MH ; depth: 3.51 - 4.5m | material | 6545 |
| Access opening with dimensions 1000*1000 mm | material | 1190 |
| Single Catch basin | material | 535.5 |
| Double Catch basin | material | 1071 |
| Pipe encasement dia 300 mm | material | 15.5 |
| Pipe encasement dia 400 mm | material | 18.4 |
| Pipe encasement dia 500 mm | material | 21.9 |
| Pipe encasement dia 600 mm | material | 26.7 |
| Pipe encasement dia 700 mm | material | 29.4 |
| Pipe encasement dia 800 mm | material | 33.5 |
| Pipe encasement dia 900 mm | material | 37.7 |
| Pipe encasement dia 1000 mm | material | 41.9 |
| Pipe encasement dia 1100 mm | material | 46.5 |
| Pipe encasement dia 1200 mm | material | 51 |
| Box Conduit with dimensions 1200*1200 mm ; depth: 0.0m - 1.5m | material | 367.6 |
| Box Conduit with dimensions 1200*1200 mm ; depth: 2.51m - 3.5m | material | 377.8 |
| Box Conduit with dimensions 1500*1200 mm ; depth: 2.51m - 3.5m | material | 409.9 |
| Box Conduit with dimensions 1500*1500 mm ; depth: 2.51m - 3.5m | material | 453.2 |
| Box Conduit with dimensions 2000*1200 mm ; depth: 2.51m - 3.5m | material | 479.1 |
| Concrete Outfall structure | material | 2975 |
| Nominal bore : 160mm; Depth : 0.0m - 1.5m | material | 23.6 |
| Nominal bore : 160mm; Depth : 1.5m - 2.5m | material | 24.9 |
| Nominal bore : 200mm; Depth : 0.0m - 1.5m | material | 26.6 |
| Nominal bore : 200mm; Depth : 1.5m - 2.5m | material | 28 |
| Nominal bore : 200mm; Depth : 2.5m - 3.5m | material | 42.2 |
| Nominal bore : 200mm; Depth : 3.5m - 4.5m | material | 44.1 |
| Nominal bore : 200mm; Depth : 4.5m -5.5m | material | 46.1 |
| Nominal bore : 200mm; Depth : 5.5m - 6.5m | material | 92.6 |
| Nominal bore : 250mm; Depth : 4.5m -5.5m | material | 54.8 |
| Nominal bore : 250mm; Depth : 5.5m - 6.5m | material | 64.3 |
| Nominal bore : 315mm; Depth : 4.5m -5.5m | material | 80 |
| Nominal bore : 315mm; Depth : 6.5m - 7.5m | material | 122.3 |
| Depth : 1.5 - 2.5m | material | 49.7 |
| Depth : 2.5 - 3.5m | material | 65.7 |
| Depth : 3.5 - 4.5m | material | 68.5 |
| Depth : 4.5 - 5.5m | material | 71.3 |
| Depth : 5.5 - 6.5m | material | 126.8 |
| Depth : 6.5 -7.5m | material | 126.8 |
| Depth : 6.5 -7.5m | material | 156.4 |
| Depth :more than 7.5m | material | 156.4 |
| Depth : 6.5 -7.5m | material | 175.4 |
| Depth :more than 7.5m | material | 175.4 |
| HDPE force main DN 800mm diameter, in trenches depth: 0- 1.5m | material | 209.4 |
| HDPE force main DN 800mm diameter, in trenches depth: 1.51- 2.5m | material | 213.5 |
| Washout valve 200mm, on 800mm dia. pipe | material | 3867.5 |
| Air release valve 110 mm dia, on 800mm dia. pipe | material | 2856 |
| Washout valve chamber | material | 4760 |
| Air release valve chamber | material | 1213.8 |
| Depth: not exceeding 1.5m | material | 952.5 |
| Depth: 1.5 - 2.5m | material | 1069.3 |
| Depth: 2.5 - 3.5m | material | 1439.1 |
| Depth: 3.5 - 4.5m | material | 1683.4 |
| Depth: 4.5 - 5.5m | material | 1877.5 |
| Depth: 5.5 - 6.5m | material | 3952 |
| Depth:6.5 - 7.5m | material | 4163.5 |
| Depth: more than 7.5m | material | 4331.5 |
| Depth: 2.5 - 3.5m | material | 2003.8 |
| Depth: 3.5 - 4.5m | material | 2307.6 |
| Depth: 4.5 - 5.5m | material | 2603.4 |
| Depth: 5.5 - 6.5m | material | 4629.9 |
| Depth:6.5 - 7.5m | material | 4897.1 |
| Constant speed drive, sewage pumps, centrifugal submersible type; 2 duty / 1 standby capable of delivering a flow rate of flow 424 l/s against a total head of 22m, rate includes provision of MCC | material | 85465.8 |
| Odour control system | material | 24021 |
| Gate valves for the pump station | material | 16244.9 |
| Non return valves for the pump station | material | 15011.1 |
| Penstok for the pump station | material | 10345.9 |
| Wet well structure internal size (5.5*4.0m) at 11.0m depth | material | 22062.6 |
| Valve chamber | material | 14280 |
| for the pump station | material | 10115 |
| basket screen | material | 22908.7 |
| Standby Diesel Generator Set 400/230KVA, 3P, 60Hz in Sound Attenuated Enclosure KVA rating by contractor as per total load onsite after pumps selection | material | 15993.1 |
| Supply, install, test and commission of manually operated fuel pump, The pump should be supplied with all accessories as specified. | material | 2788.5 |
| Supply, install, test and commission of Fuel pump with capacity of not less than 1 hour to fill the daily tank of generator at required head. | material | 2856 |
| supply, install, test & commission Automatic Transfer Switch ATS panel including all accessories & works required. | material | 3564.5 |
| Supply, install, test and commission under ground fuel tank for 3 days of continuous operation of the standby generator at full load. The tank should be supplied with all accessories such as black steel pipes, float switches with two contactors ï¿½etc. as | material | 6925.8 |
| Plain concrete foundation | material | 53.6 |
| Reinfirced concrete foundation | material | 130.9 |
| Reinforced concrete columns | material | 130.9 |
| Reinfirced concrete SOG | material | 130.9 |
| Reinfirced concrete slab | material | 130.9 |
| CMU walls with thickness 200mm | material | 11.9 |
| Waterproofing for foundation | material | 5.4 |
| Roof Insulation | material | 17.3 |
| Acrylic paint on elevations including plastering | material | 14.3 |
| Acrylic paint on internal wallsand ceiling including plastering | material | 14.3 |
| Epoxy paint on floors | material | 14.3 |
| Supply and install 2000*3000 mm double leaf manufacturer label shall pass the test requirements complete with accessories as per door schedule and material as approved by the Client. | material | 856.8 |
| Plinth for odour control system | material | 130.9 |
| 4Cx 185mm2 Cu/XLPE//PVC from nearest power supply (SEC) and generator to the ATS and from ATS to MCC-SPS | material | 36.3 |
| 4Cx 95mm2 Cu/XLPE//PVC from nearest power supply (SEC) and generator to the ATS and from ATS to MCC-SPS | material | 21.4 |
| 4Cx 10mm2 Cu/XLPE/SWA/PVC from MCC-SPS to ELP | material | 4.1 |
| 4Cx 150mm2 + 1Cx25mm2 SUBMERGED RUBBER INSULATED FLEXIBLE CABLE from MCC to PUMP1& PUMP2. | material | 40.9 |
| 4Cx 10mm2 + 1Cx10mm2 Cu/XLPE/PVC FROM MCC-SPS to DB-SPS | material | 4.2 |
| 4Cx 10mm2 + 1Cx10mm2 Cu/XLPE/PVC FROM MCC-SPS to Penstok | material | 4.2 |
| 4Cx 10mm2 + 1Cx10mm2 Cu/XLPE/PVC FROM MCC-SPS to Odor Control Unit | material | 4.2 |
| 4Cx 6mm2 + 1Cx6mm2 Cu/XLPE/PVC FROM MCC-SPS to the mechanical bar screen | material | 3.1 |
| 3Cx 6mm2 Cu/XLPE/PVC FROM MCC-SPS to the two fuel pumps. | material | 2.7 |
| 3Cx 4mm2 Cu/XLPE/PVC to the AC. | material | 2.2 |
| MCC | material | 11234.7 |
| Pump lifting arrangement with davit sockets, gantry and hoist, to be determined by the contractor to suit actual weight of pumps and as per drawings and specification. | material | 5173 |
| Surge protection system study | material | 29003.6 |
| Surge protection system | material | 58804.5 |
| Local Control Panel, IP 65 | material | 4964 |
| Isolator/disconnect switches IP65 | material | 272.8 |
| DB-SPS Panel | material | 600 |
| ELP Panel: phtocell , timer,40 Ampere, 3P, IP66,60Hz incomer MCCB & 5ways outgoing MCCB | material | 747.5 |
| Electrical Hand Hole 600mm x 600mm x 800mm concrete hand hole with hot dip galvanized heavy duty steel cover | material | 260.3 |
| Electrical Hand Hole 400mm x 400mm x 600mm concrete hand hole with hot dip galvanized heavy duty steel cover | material | 233.3 |
| Surfaced Mounted Light | material | 85.7 |
| 13A DOUBLE SWITCH SOCKET OUTLET (WEATHER PROOF) | material | 31.6 |
| 20A SWITCH SOCKET OUTLET (FOR SPLIT UNIT), (WEATHER PROOF) | material | 35.7 |
| Supply, install and test the following grounding and lightning system including ground wires, ground rods, inspection pits, terminations, bonding/clamping, civil works and all materials and accessories required to complete the work according to specificat | material | 1586.3 |
| Supply and install telephone and fire alarm system including smoke detector, cabinet, control panel, cables, conduits, switches, and other accessories to complete as per drawings and specifications. | material | 2975 |
| Supply, installation, testing and commissioning of all control, instrumentation( as shown on the P & ID drawings cable schedule) including all installation accessories such as termination kits, lugs, glands, cable containments, junction boxes , conduits, | material | 5355 |
| Supply, installation, testing and commissioning of all field instruments such as hydrostatic level meter, level switches, flow switch, and all necessary instruments including all installation accessories, etc. all as per specifications and design drawings | material | 5950 |
| DX wall mounted Split/AC | material | 628.3 |
| CO2 fire extinguishers | material | 36.3 |
| Powder fire extinguishers | material | 33.5 |
| Double leaf swing or sliding main entrance gate | material | 1190 |
| 1.8m high Chainlink Fence (mesh opening size 60mm x 60mm) | material | 23.8 |
| Single leaf personal access gate | material | 892.5 |
| Flood lights shall be high pole with 250 watt HPS luminaire | material | 441.5 |
| 1 - way duct - not exceeding 1.5m deep | material | 12.5 |
| 2 - way duct - not exceeding 1.5m deep | material | 20.2 |
| 8 - way duct - not exceeding 1.5m deep | material | 52.1 |
| Earth pits | material | 29.2 |
| Cable draw pit, 600x600mm | material | 238 |
| Supply, installation, testing and commissioning of PLC system | material | 32130 |
| Pipe with diameter 160 mm; in depth 1.5m - 3.0m | material | 18.1 |
| Pipe with diameter 200mm; in depth 0.0m - 1.5m | material | 21.7 |
| Pipe with diameter 200mm; in depth 1.5m - 3.0m | material | 24.3 |
| Pipe with diameter 355mm; in depth 0.0m - 1.5m | material | 44 |
| Pipe with diameter 355mm; in depth 1.5m - 3.0m | material | 47.4 |
| Pipe with diameter 560mm; in depth 1.5m - 3.0m | material | 103.3 |
| Pipe with diameter 630mm; in depth 1.5m - 3.0m | material | 128.4 |
| Gate valves dia(200)mm on pipes with dia (200) mm. | material | 395.2 |
| Butterfly valves with dia (355)mm on pipes with dia (355)mm. | material | 3989.7 |
| Butterfly valves with dia (560)mm on pipes with dia (560)mm. | material | 8925 |
| Butterfly valves with dia (630)mm on pipes with dia (630)mm. | material | 10031.9 |
| Wash out valve with dia (100)mm on pipes with dia (200) mm | material | 848.2 |
| Wash out valve with dia (150)mm on pipes with dia (560) mm | material | 2722.2 |
| Wash out valve with dia (150)mm on pipes with dia (630) mm | material | 3532.9 |
| Air valves with dia (50mm) mm on pipes with dia(200)mm. | material | 967.2 |
| Air valves with dia (65mm) mm on pipes with dia(355)mm. | material | 1301.9 |
| Air valves with dia (65mm) mm on pipes with dia(560)mm. | material | 1777.9 |
| Air valves with dia (65mm) mm on pipes with dia(630)mm. | material | 2606.7 |
| 3-outlet fire hydrant (2 x 2.5 inch and 1 x 4 inch) in the form of a separate dry vacuum cylinder | material | 1130.5 |
| In-situ, reinforced single concrete valve chambers on the pipeline, as defined and shown on the drawingss, and all necessary works and equipment (valve measured elsewhere), and supplies construction, cut and installation of pipe cutting, backfilling, in | material | 4165 |
| Wash out chamber; on 200 mm dia pipeline Depth 1.5 - 3m | material | 3546.2 |
| Wash out chamber; on 560 mm dia pipeline Depth 1.5 - 3m | material | 4709.2 |
| Wash out chamber; on 630 mm dia pipeline Depth 1.5 - 3m | material | 4709.2 |
| Air valve chamber; on 200 mm dia pipeline Depth 1.5 - 3 m | material | 859.9 |
| Air valve chamber on 355 mm dia pipeline Depth 1.5 - 3 m | material | 1041.5 |
| Air valve chamber on 560 mm dia pipeline Depth 1.5 - 3 m | material | 859.9 |
| Air valve chamber on 630 mm dia pipeline Depth 1.5 - 3 m | material | 859.9 |
| Excavation for Trench size 40cm wide and 80cm deep ( Maximum 1 cable 33kv) | material | 2.62 |
| Excavation for Trench size 60cm wide and 80cm deep ( for Max two cables 33 kv) | material | 2.74 |
| Excavation for Trench size 90cm wide and 80cm deep ( Maximum 3 cable 33kv) | material | 2.98 |
| Excavation for Trench size 120cm wide and 80cm deep ( Maximum 4cable 33kv) | material | 3.09 |
| Excavation for Trench size 150cm wide and 80cm deep ( Maximum 4cable 33kv) | material | 3.45 |
| Duct bank for (2) 33 kv cables | material | 15.71 |
| Duct bank for (4) 33 kv cables | material | 31.18 |
| Duct bank for (6) 33 kv cables | material | 46.65 |
| 33kv 3Cx400 mmï¿½ Al XLPE / LLDPE /PVC Cable | material | 19.04 |
| 33kv 3Cx400 mmï¿½ Al XLPE /LLDPE/PVC | material | 266.8 |
| 33kv 3Cx400 mmï¿½ Al XLPE/LLDPE Cable Termination | material | 266.8 |
| Supply & installation of (33) kv MV Switch (RMU) for Normally-open Points (NOP) according to the Saudi Electric Company specification | material | 11978.7 |
| Package Substation 33000/400V, 500kVA with RMU | material | 16088.3 |
| Supply, installation , test and operation of cables, Copper, (4Cx25mmï¿½,Cu/XLPE/SWA/PVC +1x16mmï¿½ PVC/PVC) | material | 7 |
| Lighting poles with one arm, including the power distribution box, screws, cables, 12 meters in height. | material | 284.1 |
| Lighting poles complete with two arms, including the power distribution box, screws, cables, 12 meters in height. | material | 314.5 |
| Street Lighting( LED) Luminaire,(Type C) complete with control gear and lamp, ?.17000 Lumen | material | 89.4 |
| Street Lighting( LED) Luminaire,(Type B) complete with control gear and lamp, ?.40600 Lumen | material | 143.9 |
| Reinforced concrete foundation, for 12m high lighting columns With Drawpits | material | 54.3 |
| Reinforced concrete base With fence for Distribution substation in accordance with SEC Specifications | material | 2153.9 |
| Earthing installation, lighting plants. | material | 281.6 |
| Earthing installation, for Street lighting circuits, including earth rod in plastic chamber | material | 28 |
| Earthing installation Lighting Panales | material | 71.4 |
| Road crossing ducts, 4 way (4 x 100mm PVC) | material | 18.9 |
| Drawpit with medium duty steel cover, size 600x600x1000mm, Type 18 | material | 336.9 |
| Drawpit with medium duty steel cover, size 900x900x1200mm, Type 4 | material | 377.2 |
| Street Lighting Feeder pillars , Includes foundation and draw pits | material | 1167.9 |
| 6-way ducts, 50mm dia. HDPE | material | 20 |
| Road crossing ducts (6-way) | material | 25 |
| Manhole Type 1 (2000x1000x1000) | material | 465.1 |
| Manhole Type 2 (2000x1000x1000) | material | 469 |
| Manhole Type 3 (2000x1000x1000) | material | 472.9 |
| Roadway Excavation for cuttings; on any type of material for all depths including trimming and Preparation of excavated surfaces and disposal. | material | 0.7 |
| Embankments to the ROW, with suitable material other than top soil or rock according to specifications | material | 0.9 |
| 300mm capping layer underneath subgrade , CBR?15% | material | 4.9 |
| 300mm thick Subgrade, including subgrade preparation, CBR?25% | material | 5 |
| Aggregate base course 200mm thick after compaction in two layers(Grading 1); CBR?80%; including watering, compaction and testing | material | 12.1 |
| Bituminous base course(Grading I - Class A), 70mm thick after compaction including Prime Coat (MC1) | material | 54.5 |
| Bituminous concrete wearing course, 50 mm thick, after compaction(Grading I - Class A), including tack coat (RC) | material | 60 |
| Interlocking block pavers for sidewalk/footpath 60mm thick on and including 30mm Sand Bedding, 200mm Aggregate subbase, all in accordance with authority standards and complete as per specifications | material | 7 |
| Extraover for Pedestrian ramps | material | 65.5 |
| Precast Concrete Kerb, Type K1 | material | 6 |
| Precast Concrete Kerb, Type L1 | material | 6 |
| Retroreflective Thermoplastic White, Traffic lines | material | 4.2 |
| Retroreflective Thermoplastic Yellow, Traffic lines | material | 4.2 |
| Retroreflective raised pavement markers(Type A) | material | 5.4 |
| Traffic signs, ground mounted, Sheet Alumenium, (breakaway) Single post, with all accessories | material | 130.9 |
| Straight Arrow | material | 14.3 |
| Right or Left Arrow | material | 14.3 |
| Straight-Right Arrow | material | 14.3 |
| Straight-Left Arrow | material | 14.3 |
| Nominal bore : 160mm; Depth : 1.5m - 2.5m | material | 166.83 |
| Nominal bore : 200mm; Depth : 0.0m - 1.5m | material | 178.22 |
| Nominal bore : 200mm; Depth : 1.5m - 2.5m | material | 187.6 |
| Nominal bore : 200mm; Depth : 2.5m - 3.5m | material | 282.74 |
| Nominal bore : 200mm; Depth : 3.5m - 4.5m | material | 295.47 |
| Nominal bore : 200mm; Depth : 4.5m -5.5m | material | 308.87 |
| Nominal bore : 200mm; Depth : 5.5m - 6.5m | material | 620.42 |
| Nominal bore : 250mm; Depth : 4.5m -5.5m | material | 367.16 |
| Nominal bore : 250mm; Depth : 5.5m - 6.5m | material | 430.81 |
| Nominal bore : 315mm; Depth : 4.5m -5.5m | material | 536 |
| Nominal bore : 315mm; Depth : 6.5m - 7.5m | material | 819.41 |
| Depth : 6.5 -7.5m | material | 1175.18 |
| Depth :more than 7.5m | material | 1175.18 |
| Nominal bore : 160mm; Depth : 0.0m - 1.5m | material | 158.12 |
| Depth: 1.5 - 2.5m | material | 7164.31 |
| Depth: 3.5 - 4.5m | material | 11278.8 |
| Depth: 4.5 - 5.5m | material | 12579.2 |
| Depth:6.5 - 7.5m | material | 27895.5 |
| Depth: more than 7.5m | material | 29021 |
| Depth: 2.5 - 3.5m | material | 13425.5 |
| Depth: 3.5 - 4.5m | material | 15460.9 |
| Depth: 4.5 - 5.5m | material | 17442.8 |
| Depth: 5.5 - 6.5m | material | 31020.3 |
| Depth:6.5 - 7.5m | material | 32810.6 |
| 3-outlet fire hydrant (2 x 2.5 inch and 1 x 4 inch) in the form of a separate dry vacuum cylinder | material | 339.15 |
| MH ; depth: 0.0m - 1.5m | material | 1943.2 |
| MH ; depth: 1.51m - 2.5m | material | 2103.4 |
| MH ; depth: 2.51 - 3.5m | material | 2772.8 |
| MH ; depth: 0.0m - 1.5m | material | 2637.4 |
| MH ; depth: 1.51m - 2.5m | material | 2840.4 |
| MH ; depth: 2.51 - 3.5m | material | 3808 |
| MH ; depth: 0.0m - 1.5m | material | 4817 |
| MH ; depth: 1.51m - 2.5m | material | 5098 |
| MH ; depth: 2.51 - 3.5m | material | 6139.8 |
| Pipe with diameter 400mm ; depth: 0.0m - 1.5m | material | 78.4 |
| Pipe with diameter 400mm ; depth: 1.51m - 2.5m | material | 82.2 |
| Pipe with diameter 600mm ; depth: 0.0m - 1.5m | material | 116 |
| Pipe with diameter 700mm ; depth: 1.51m - 2.5m | material | 143.4 |
| Pipe with diameter 700mm ; depth: 2.51m - 3.5m | material | 171 |
| Pipe with diameter 800mm ; depth: 1.51m - 2.5m | material | 164.8 |
| Pipe with diameter 1100mm ; depth: 1.51m - 2.5m | material | 242.8 |
| Pipe with diameter 1100mm ; depth: 2.51 - 3.5m | material | 272.4 |
| Pipe with diameter 1200mm ; depth: 1.51m - 2.5m | material | 271.2 |
| Pipe with diameter 300mm ; depth: 0 - 1.5m | material | 68 |
| Pipe with diameter 400mm ; depth: 0 - 1.5m | material | 92 |
| Access opening with dimensions 1000*1000 mm | material | 2380 |
| Single Catch basin | material | 1071 |
| Double Catch basin | material | 2142 |
| Nominal bore : 160mm; Depth : 1.5m - 2.5m | material | 49.8 |
| Nominal bore : 200mm; Depth : 0.0m - 1.5m | material | 53.2 |
| Nominal bore : 200mm; Depth : 1.5m - 2.5m | material | 56 |
| Nominal bore : 200mm; Depth : 2.5m - 3.5m | material | 84.4 |
| Nominal bore : 200mm; Depth : 3.5m - 4.5m | material | 88.2 |
| Nominal bore : 200mm; Depth : 4.5m -5.5m | material | 92.2 |
| Nominal bore : 200mm; Depth : 5.5m - 6.5m | material | 185.2 |
| Nominal bore : 250mm; Depth : 4.5m -5.5m | material | 109.6 |
| Nominal bore : 250mm; Depth : 5.5m - 6.5m | material | 128.6 |
| Nominal bore : 315mm; Depth : 4.5m -5.5m | material | 160 |
| Nominal bore : 315mm; Depth : 6.5m - 7.5m | material | 244.6 |
| Depth : 6.5 -7.5m | material | 350.8 |
| Depth :more than 7.5m | material | 350.8 |
| Depth: 1.5 - 2.5m | material | 2138.6 |
| Depth: 3.5 - 4.5m | material | 3366.8 |
| Depth: 4.5 - 5.5m | material | 3755 |
| Depth:6.5 - 7.5m | material | 8327 |
| Depth: more than 7.5m | material | 8663 |
| Depth: 2.5 - 3.5m | material | 4007.6 |
| Depth: 3.5 - 4.5m | material | 4615.2 |
| Depth: 4.5 - 5.5m | material | 5206.8 |
| Depth: 5.5 - 6.5m | material | 9259.8 |
| Depth:6.5 - 7.5m | material | 9794.2 |
| Pipe with diameter 160 mm; in depth 1.5m - 3.0m | material | 36.2 |
| Pipe with diameter 200mm; in depth 0.0m - 1.5m | material | 43.4 |
| Pipe with diameter 200mm; in depth 1.5m - 3.0m | material | 48.6 |
| Gate valves dia(200)mm on pipes with dia (200) mm. | material | 790.4 |
| Wash out valve with dia (100)mm on pipes with dia (200) mm | material | 1696.4 |
| 125 mm pipe; depth 0.0m - 1.5m | material | 22.2 |
| Gate valves dia (90)mm on pipes with dia (125) mm. | material | 595 |
| Wash out valve with dia (100)mm on pipes with dia (125) mm | material | 1656.8 |
| Excavation for Trench size 40cm wide and 80cm deep ( Maximum 1 cable 33kv) | material | 5.24 |
| Excavation for Trench size 60cm wide and 80cm deep ( for Max two cables 33 kv) | material | 5.47 |
| Excavation for Trench size 90cm wide and 80cm deep ( Maximum 3 cable 33kv) | material | 5.95 |
| Excavation for Trench size 120cm wide and 80cm deep ( Maximum 4cable 33kv) | material | 6.19 |
| Excavation for Trench size 150cm wide and 80cm deep ( Maximum 4cable 33kv) | material | 6.9 |
| Duct bank for (2) 33 kv cables | material | 31.42 |
| Duct bank for (4) 33 kv cables | material | 62.36 |
| Duct bank for (6) 33 kv cables | material | 93.3 |
| 33kv 3Cx400 mmï¿½ Al XLPE / LLDPE /PVC Cable | material | 38.08 |
| 33kv 3Cx400 mmï¿½ Al XLPE /LLDPE/PVC | material | 533.6 |
| Supply, installation , test and operation of cables, Copper, (4Cx25mmï¿½,Cu/XLPE/SWA/PVC +1x16mmï¿½ PVC/PVC) | material | 14 |
| Reinforced concrete foundation, for 12m high lighting columns With Drawpits | material | 108.6 |
| Reinforced concrete base With fence for Distribution substation in accordance with SEC Specifications | material | 4307.8 |
| Lighting poles with one arm, including the power distribution box, screws, cables, 12 meters in height. | material | 568.2 |
| Road crossing ducts, 4 way (4 x 100mm PVC) | material | 37.8 |
| Drawpit with medium duty steel cover, size 600x600x1000mm, Type 18 | material | 673.8 |
| Drawpit with medium duty steel cover, size 900x900x1200mm, Type 4 | material | 754.4 |
| Street Lighting( LED) Luminaire,(Type C) complete with control gear and lamp, ?.17000 Lumen | material | 178.8 |
| Earthing installation, lighting plants. | material | 563.2 |
| Earthing installation, for Street lighting circuits, including earth rod in plastic chamber | material | 56 |
| Earthing installation Lighting Panales | material | 142.8 |
| Package Substation 33000/400V, 500kVA with RMU | material | 32176.6 |
| Street Lighting Feeder pillars , Includes foundation and draw pits | material | 2335.8 |
| 6-way ducts, 50mm dia. HDPE | material | 40 |
| Road crossing ducts (6-way) | material | 50 |
| Manhole Type 1 (2000x1000x1000) | material | 930.2 |
| Manhole Type 2 (2000x1000x1000) | material | 938 |
| Manhole Type 3 (2000x1000x1000) | material | 945.8 |
| Interlocking block pavers for sidewalk/footpath 60mm thick on and including 30mm Sand Bedding, 200mm Aggregate subbase, all in accordance with authority standards and complete as per specifications | material | 14 |
| Extraover for Pedestrian ramps | material | 131 |
| Precast Concrete Kerb, Type K1 | material | 12 |
| Precast Concrete Kerb, Type L1 | material | 12 |
| Traffic signs, ground mounted, Sheet Alumenium, (breakaway) Single post, with all accessories | material | 261.8 |
| Straight Arrow | material | 28.6 |
| Right or Left Arrow | material | 28.6 |
| Straight-Left Arrow | material | 28.6 |
| Retroreflective Thermoplastic White, Traffic lines | material | 8.4 |
| Retroreflective Thermoplastic Yellow, Traffic lines | material | 8.4 |
| Retroreflective raised pavement markers(Type A) | material | 10.8 |
| 3-outlet fire hydrant (2 x 2.5 inch and 1 x 4 inch) in the form of a separate dry vacuum cylinder | material | 2261 |
| 33kv 3Cx400 mmï¿½ Al XLPE/LLDPE Cable Termination | material | 533.6 |
| Dozer | equipment |  |
| Roadway Excavation for cuttings; on any type of material for all depths including trimming and Preparation of excavated surfaces and disposal. | material | 6.3 |
| Embankments to the ROW, with suitable material other than top soil or rock according to specifications | material | 8.1 |
| MH ; depth: 0.0m - 1.5m | material | 6509.72 |
| MH ; depth: 1.51m - 2.5m | material | 7046.39 |
| MH ; depth: 2.51 - 3.5m | material | 9288.88 |
| MH ; depth: 0.0m - 1.5m | material | 8835.29 |
| MH ; depth: 1.51m - 2.5m | material | 9515.34 |
| MH ; depth: 2.51 - 3.5m | material | 12756.8 |
| MH ; depth: 0.0m - 1.5m | material | 16137 |
| MH ; depth: 1.51m - 2.5m | material | 17078.3 |
| MH ; depth: 2.51 - 3.5m | material | 20568.3 |
| Access opening with dimensions 1000*1000 mm | material | 7973 |
| Single Catch basin | material | 3587.85 |
| Double Catch basin | material | 7175.7 |
| Drawpit with medium duty steel cover, size 600x600x1000mm, Type 18 | material | 101.07 |
| Drawpit with medium duty steel cover, size 900x900x1200mm, Type 4 | material | 113.16 |
| Cons. Carpenter | labor |  |
| Gate valves dia(200)mm on pipes with dia (200) mm. | material | 118.56 |
| Pipe with diameter 500mm ; depth: 1.51m - 2.5m | material | 332.99 |
| Pipe with diameter 600mm ; depth: 1.51m - 2.5m | material | 406.69 |
| Pipe with diameter 900mm ; depth: 1.51m - 2.5m | material | 621.76 |
| Pipe with diameter 900mm ; depth: 2.51 - 3.5m | material | 716.23 |
| Pipe with diameter 1000mm ; depth: 1.51m - 2.5m | material | 716.23 |
| Depth: not exceeding 1.5m | material | 6381.75 |
| Depth: 2.5 - 3.5m | material | 9641.97 |
| Depth: 5.5 - 6.5m | material | 26478.4 |
| Pipe with diameter 500mm ; depth: 0.0m - 1.5m | material | 316.91 |
| Pipe with diameter 600mm ; depth: 2.51m - 3.5m | material | 498.48 |
| Pipe with diameter 700mm ; depth: 0.0m - 1.5m | material | 459.62 |
| Pipe with diameter 1000mm ; depth: 0.0m - 1.5m | material | 692.11 |
| Pipe with diameter 1100mm ; depth: 0.0m - 1.5m | material | 787.25 |
| 3-outlet fire hydrant (2 x 2.5 inch and 1 x 4 inch) in the form of a separate dry vacuum cylinder | material | 7574.35 |
| Pipe with diameter 560mm; in depth 1.5m - 3.0m | material | 692.11 |
| Pipe with diameter 630mm; in depth 1.5m - 3.0m | material | 860.28 |
| Compactor | equipment |  |
| 355 mm pipe; depth 1.5m - 3.0m | material | 409.37 |
| 400 mm pipe; depth 1.5m - 3.0m | material | 384.58 |
| Butterfly valves with dia (355)mm on pipes with dia (355)mm. | material | 26731 |
| Butterfly valves with dia (400)mm on pipes with dia (400)mm. | material | 33324.5 |
| Butterfly valves with dia (500)mm on pipes with dia (500)mm. | material | 51050.7 |
| Wash out valve with dia (100)mm on pipes with dia (355) mm | material | 10145.8 |
| Wash out valve with dia (150)mm on pipes with dia (400) mm | material | 13099.2 |
| Wash out valve with dia (150)mm on pipes with dia (500) mm | material | 18238.7 |
| Air valves with dia (65mm) mm on pipes with dia(280)mm. | material | 7175.7 |
| Air valves with dia (65mm) mm on pipes with dia(400)mm. | material | 11959.5 |
| Air valves with dia (65mm) mm on pipes with dia(500)mm. | material | 13406.7 |
| Wash out chamber; on 355 mm dia pipeline Depth 1.5 - 3m | material | 32665.5 |
| Wash out chamber; on 400 mm dia pipeline Depth 1.5 - 3m | material | 33736.5 |
| Wash out chamber; on 500 mm dia pipeline Depth 1.5 - 3m | material | 42382.8 |
| Reinforced concrete base With fence for Distribution substation in accordance with SEC Specifications | material | 14431.1 |
| Straight-Right Arrow | material | 95.81 |
| Depth : 1.5 - 2.5m | material | 332.99 |
| Depth : 2.5 - 3.5m | material | 440.19 |
| Depth : 3.5 - 4.5m | material | 458.95 |
| Depth : 5.5 - 6.5m | material | 849.56 |
| Depth : 6.5 -7.5m | material | 849.56 |
| Depth : 6.5 -7.5m | material | 1047.88 |
| Depth :more than 7.5m | material | 1047.88 |
| MH ; depth: 1.51m - 2.5m with back drop less than 1.0 m | material | 5032.4 |
| MH ; depth: 3.51 - 4.5m | material | 13090 |
| Pipe with diameter 500mm ; depth: 0.0m - 1.5m | material | 94.6 |
| Pipe with diameter 500mm ; depth: 1.51m - 2.5m | material | 99.4 |
| Pipe with diameter 600mm ; depth: 1.51m - 2.5m | material | 121.4 |
| Pipe with diameter 600mm ; depth: 2.51m - 3.5m | material | 148.8 |
| Pipe with diameter 700mm ; depth: 0.0m - 1.5m | material | 137.2 |
| Pipe with diameter 900mm ; depth: 1.51m - 2.5m | material | 185.6 |
| Pipe with diameter 1000mm ; depth: 0.0m - 1.5m | material | 206.6 |
| Pipe with diameter 1100mm ; depth: 0.0m - 1.5m | material | 235 |
| Depth : 1.5 - 2.5m | material | 99.4 |
| Depth : 2.5 - 3.5m | material | 131.4 |
| Depth : 3.5 - 4.5m | material | 137 |
| Depth : 5.5 - 6.5m | material | 253.6 |
| Depth : 6.5 -7.5m | material | 253.6 |
| Depth : 6.5 -7.5m | material | 312.8 |
| Depth :more than 7.5m | material | 312.8 |
| Depth: 2.5 - 3.5m | material | 2878.2 |
| Depth: 5.5 - 6.5m | material | 7904 |
| Pipe with diameter 560mm; in depth 1.5m - 3.0m | material | 206.6 |
| Pipe with diameter 630mm; in depth 1.5m - 3.0m | material | 256.8 |
| Butterfly valves with dia (560)mm on pipes with dia (560)mm. | material | 17850 |
| Butterfly valves with dia (630)mm on pipes with dia (630)mm. | material | 20063.8 |
| Wash out valve with dia (150)mm on pipes with dia (560) mm | material | 5444.4 |
| Wash out valve with dia (150)mm on pipes with dia (630) mm | material | 7065.8 |
| Air valves with dia (50mm) mm on pipes with dia(200)mm. | material | 1934.4 |
| Air valves with dia (65mm) mm on pipes with dia(560)mm. | material | 3555.8 |
| Air valves with dia (65mm) mm on pipes with dia(630)mm. | material | 5213.4 |
| 400 mm pipe; depth 1.5m - 3.0m | material | 114.8 |
| 500. mm pipe; depth 1.5m - 3.0m | material | 168 |
| Butterfly valves with dia (355)mm on pipes with dia (355)mm. | material | 7979.4 |
| Butterfly valves with dia (400)mm on pipes with dia (400)mm. | material | 9947.6 |
| Butterfly valves with dia (500)mm on pipes with dia (500)mm. | material | 15239 |
| Wash out valve with dia (100)mm on pipes with dia (355) mm | material | 3028.6 |
| Wash out valve with dia (150)mm on pipes with dia (500) mm | material | 5444.4 |
| Air valves with dia (65mm) mm on pipes with dia(280)mm. | material | 2142 |
| Air valves with dia (65mm) mm on pipes with dia(400)mm. | material | 3570 |
| Air valves with dia (65mm) mm on pipes with dia(500)mm. | material | 4002 |
| Straight-Right Arrow | material | 28.6 |
| MH ; depth: 1.51m - 2.5m with back drop less than 1.0 m | material | 16858.5 |
| MH ; depth: 3.51 - 4.5m | material | 43851.5 |
| Wash out chamber; on 200 mm dia pipeline Depth 1.5 - 3m | material | 7092.4 |
| Wash out chamber; on 560 mm dia pipeline Depth 1.5 - 3m | material | 9418.4 |
| Wash out chamber; on 630 mm dia pipeline Depth 1.5 - 3m | material | 9418.4 |
| Air valve chamber; on 200 mm dia pipeline Depth 1.5 - 3 m | material | 1719.8 |
| Air valve chamber on 560 mm dia pipeline Depth 1.5 - 3 m | material | 1719.8 |
| Air valve chamber on 630 mm dia pipeline Depth 1.5 - 3 m | material | 1719.8 |
| Pipe with diameter 800mm ; depth: 0.0m - 1.5m | material | 529.97 |
| Pipe with diameter 800mm ; depth: 2.51m - 3.5m | material | 645.88 |
| Pipe with diameter 900mm ; depth: 0.0m - 1.5m | material | 599.65 |
| Air valves with dia (50mm) mm on pipes with dia(125)mm. | material | 6380.41 |
| Air valve chamber; on 125 mm dia pipeline Depth 1.5 - 3 m | material | 7818.3 |
| Supply & installation of (33) kv MV Switch (RMU) for Normally-open Points (NOP) according to the Saudi Electric Company specification | material | 80257 |
| Depth : 4.5 - 5.5m | material | 477.71 |
| Pipe with diameter 800mm ; depth: 0.0m - 1.5m | material | 158.2 |
| Pipe with diameter 800mm ; depth: 2.51m - 3.5m | material | 192.8 |
| Pipe with diameter 900mm ; depth: 0.0m - 1.5m | material | 179 |
| Pipe with diameter 1000mm ; depth: 1.51m - 2.5m | material | 213.8 |
| Pipe with diameter 1000mm ; depth: 2.51 - 3.5m | material | 242.8 |
| Depth : 4.5 - 5.5m | material | 142.6 |
| Depth: not exceeding 1.5m | material | 1905 |
| Air valves with dia (50mm) mm on pipes with dia(125)mm. | material | 1904.6 |
| MH ; depth: 2.51 - 3.5m | material | 39865 |
| Pipe with diameter 1200mm ; depth: 2.51 - 3.5m | material | 1009.02 |
| Pipe with diameter 355mm; in depth 0.0m - 1.5m | material | 294.8 |
| Pipe with diameter 355mm; in depth 1.5m - 3.0m | material | 317.58 |
| 280 mm pipe; depth 0.0m - 1.5m | material | 287.43 |
| 280 mm pipe; depth 1.5m - 3.0m | material | 306.19 |
| Gate valves dia (200)mm on pipes with dia (280) mm. | material | 2990.21 |
| Lighting poles complete with two arms, including the power distribution box, screws, cables, 12 meters in height. | material | 2107.15 |
| Street Lighting( LED) Luminaire,(Type B) complete with control gear and lamp, ?.40600 Lumen | material | 964.13 |
| MH ; depth: 2.51 - 3.5m with back drop less than 1.0 m | material | 6496.4 |
| MH ; depth: 2.51 - 3.5m | material | 11900 |
| Pipe with diameter 400mm ; depth: 2.51m - 3.5m | material | 107.2 |
| Pipe with diameter 1200mm ; depth: 2.51 - 3.5m | material | 301.2 |
| Nominal bore : 160mm; Depth : 0.0m - 1.5m | material | 47.2 |
| 280 mm pipe; depth 0.0m - 1.5m | material | 85.8 |
| 280 mm pipe; depth 1.5m - 3.0m | material | 91.4 |
| Gate valves dia (200)mm on pipes with dia (280) mm. | material | 892.6 |
| Supply & installation of (33) kv MV Switch (RMU) for Normally-open Points (NOP) according to the Saudi Electric Company specification | material | 23957.3 |
| Lighting poles complete with two arms, including the power distribution box, screws, cables, 12 meters in height. | material | 629 |
| Street Lighting( LED) Luminaire,(Type B) complete with control gear and lamp, ?.40600 Lumen | material | 287.8 |
| MH ; depth: 2.51 - 3.5m with back drop less than 1.0 m | material | 21762.9 |
| Dump Truck | equipment |  |
| 355 mm pipe; depth 1.5m - 3.0m | material | 122.2 |
| Wash out valve with dia (150)mm on pipes with dia (400) mm | material | 3910.2 |
| Wet well structure internal size (5.5*4.0m) at 11.0m depth | material | 6618.78 |
| Valve chamber | material | 4284 |
| for the pump station | material | 3034.5 |
| basket screen | material | 6872.61 |
| CMU walls with thickness 200mm | material | 3.57 |
| Waterproofing for foundation | material | 1.62 |
| Roof Insulation | material | 5.19 |
| Acrylic paint on elevations including plastering | material | 4.29 |
| Acrylic paint on internal wallsand ceiling including plastering | material | 4.29 |
| Epoxy paint on floors | material | 4.29 |
| Supply and install 2000*3000 mm double leaf manufacturer label shall pass the test requirements complete with accessories as per door schedule and material as approved by the Client. | material | 257.04 |
| Excavation in all type of soil for any depth including levelling, compaction and disposal of surplus material | material | 1.5 |
| Reinforced Concrete lining including blinding concrete, construction, isolation layers and expansion joints as shown in drawings. | material | 32.13 |
| Excavation in all type of soil to increase the depth of the existing pond for any depth including levelling, compaction and disposal of surplus material | material | 0.6 |
| Reinforced Concrete lining including blinding concrete, construction, isolation layers and expansion joints as shown in drawings. | material | 32.13 |
| Constant speed drive, sewage pumps, centrifugal submersible type; 2 duty / 1 standby capable of delivering a flow rate of flow 424 l/s against a total head of 22m, rate includes provision of MCC | material | 25639.7 |
| Odour control system | material | 7206.3 |
| Gate valves for the pump station | material | 4873.47 |
| Non return valves for the pump station | material | 4503.33 |
| Penstok for the pump station | material | 3103.77 |
| Standby Diesel Generator Set 400/230KVA, 3P, 60Hz in Sound Attenuated Enclosure KVA rating by contractor as per total load onsite after pumps selection | material | 4797.93 |
| Supply, install, test and commission of manually operated fuel pump, The pump should be supplied with all accessories as specified. | material | 836.55 |
| Supply, install, test and commission of Fuel pump with capacity of not less than 1 hour to fill the daily tank of generator at required head. | material | 856.8 |
| supply, install, test & commission Automatic Transfer Switch ATS panel including all accessories & works required. | material | 1069.35 |
| Supply, install, test and commission under ground fuel tank for 3 days of continuous operation of the standby generator at full load. The tank should be supplied with all accessories such as black steel pipes, float switches with two contactors ï¿½etc. as | material | 2077.74 |
| 4Cx 185mm2 Cu/XLPE//PVC from nearest power supply (SEC) and generator to the ATS and from ATS to MCC-SPS | material | 10.89 |
| 4Cx 95mm2 Cu/XLPE//PVC from nearest power supply (SEC) and generator to the ATS and from ATS to MCC-SPS | material | 6.42 |
| 4Cx 10mm2 Cu/XLPE/SWA/PVC from MCC-SPS to ELP | material | 1.23 |
| 4Cx 150mm2 + 1Cx25mm2 SUBMERGED RUBBER INSULATED FLEXIBLE CABLE from MCC to PUMP1& PUMP2. | material | 12.27 |
| 4Cx 10mm2 + 1Cx10mm2 Cu/XLPE/PVC FROM MCC-SPS to DB-SPS | material | 1.26 |
| 4Cx 10mm2 + 1Cx10mm2 Cu/XLPE/PVC FROM MCC-SPS to Penstok | material | 1.26 |
| 4Cx 10mm2 + 1Cx10mm2 Cu/XLPE/PVC FROM MCC-SPS to Odor Control Unit | material | 1.26 |
| 4Cx 6mm2 + 1Cx6mm2 Cu/XLPE/PVC FROM MCC-SPS to the mechanical bar screen | material | 0.93 |
| 3Cx 6mm2 Cu/XLPE/PVC FROM MCC-SPS to the two fuel pumps. | material | 0.81 |
| 3Cx 4mm2 Cu/XLPE/PVC to the AC. | material | 0.66 |
| MCC | material | 3370.41 |
| Surge protection system study | material | 8701.08 |
| Surge protection system | material | 17641.3 |
| Local Control Panel, IP 65 | material | 1489.2 |
| Isolator/disconnect switches IP65 | material | 81.84 |
| DB-SPS Panel | material | 180 |
| ELP Panel: phtocell , timer,40 Ampere, 3P, IP66,60Hz incomer MCCB & 5ways outgoing MCCB | material | 224.25 |
| Electrical Hand Hole 600mm x 600mm x 800mm concrete hand hole with hot dip galvanized heavy duty steel cover | material | 78.09 |
| Electrical Hand Hole 400mm x 400mm x 600mm concrete hand hole with hot dip galvanized heavy duty steel cover | material | 69.99 |
| Surfaced Mounted Light | material | 25.71 |
| 13A DOUBLE SWITCH SOCKET OUTLET (WEATHER PROOF) | material | 9.48 |
| 20A SWITCH SOCKET OUTLET (FOR SPLIT UNIT), (WEATHER PROOF) | material | 10.71 |
| Supply, install and test the following grounding and lightning system including ground wires, ground rods, inspection pits, terminations, bonding/clamping, civil works and all materials and accessories required to complete the work according to specificat | material | 475.89 |
| Supply and install telephone and fire alarm system including smoke detector, cabinet, control panel, cables, conduits, switches, and other accessories to complete as per drawings and specifications. | material | 892.5 |
| "Supply, installation, testing and commissioning of PLC system, serving the pumping station and all related utilities. The PLC shall consists but limited to the following: | material | 9639 |
| Supply, installation, testing and commissioning of all control, instrumentation( as shown on the P & ID drawings cable schedule) including all installation accessories such as termination kits, lugs, glands, cable containments, junction boxes , conduits, | material | 1606.5 |
| Supply, installation, testing and commissioning of all field instruments such as hydrostatic level meter, level switches, flow switch, and all necessary instruments including all installation accessories, etc. all as per specifications and design drawings | material | 1785 |
| DX wall mounted Split/AC | material | 188.49 |
| CO2 fire extinguishers | material | 10.89 |
| Powder fire extinguishers | material | 10.05 |
| Flood lights shall be high pole with 250 watt HPS luminaire | material | 132.45 |
| 1 - way duct - not exceeding 1.5m deep | material | 3.75 |
| 2 - way duct - not exceeding 1.5m deep | material | 6.06 |
| 8 - way duct - not exceeding 1.5m deep | material | 15.63 |
| Earth pits | material | 8.76 |
| Cable draw pit, 600x600mm | material | 71.4 |
| HDPE force main DN 800mm diameter, in trenches depth: 0- 1.5m | material | 418.8 |
| HDPE force main DN 800mm diameter, in trenches depth: 1.51- 2.5m | material | 427 |
| Washout valve 200mm, on 800mm dia. pipe | material | 7735 |
| Air release valve 110 mm dia, on 800mm dia. pipe | material | 5712 |
| Washout valve chamber | material | 9520 |
| Air release valve chamber | material | 2427.6 |
| Wet well structure internal size (5.5*4.0m) at 11.0m depth | material | 44125.2 |
| Valve chamber | material | 28560 |
| for the pump station | material | 20230 |
| basket screen | material | 45817.4 |
| CMU walls with thickness 200mm | material | 23.8 |
| Waterproofing for foundation | material | 10.8 |
| Roof Insulation | material | 34.6 |
| Acrylic paint on elevations including plastering | material | 28.6 |
| Acrylic paint on internal wallsand ceiling including plastering | material | 28.6 |
| Epoxy paint on floors | material | 28.6 |
| Supply and install 2000*3000 mm double leaf manufacturer label shall pass the test requirements complete with accessories as per door schedule and material as approved by the Client. | material | 1713.6 |
| Excavation in all type of soil for any depth including levelling, compaction and disposal of surplus material | material | 10 |
| Reinforced Concrete lining including blinding concrete, construction, isolation layers and expansion joints as shown in drawings. | material | 214.2 |
| Excavation in all type of soil to increase the depth of the existing pond for any depth including levelling, compaction and disposal of surplus material | material | 4 |
| Reinforced Concrete lining including blinding concrete, construction, isolation layers and expansion joints as shown in drawings. | material | 214.2 |
| Constant speed drive, sewage pumps, centrifugal submersible type; 2 duty / 1 standby capable of delivering a flow rate of flow 424 l/s against a total head of 22m, rate includes provision of MCC | material | 170932 |
| Odour control system | material | 48042 |
| Gate valves for the pump station | material | 32489.8 |
| Non return valves for the pump station | material | 30022.2 |
| Penstok for the pump station | material | 20691.8 |
| Standby Diesel Generator Set 400/230KVA, 3P, 60Hz in Sound Attenuated Enclosure KVA rating by contractor as per total load onsite after pumps selection | material | 31986.2 |
| Supply, install, test and commission of manually operated fuel pump, The pump should be supplied with all accessories as specified. | material | 5577 |
| Supply, install, test and commission of Fuel pump with capacity of not less than 1 hour to fill the daily tank of generator at required head. | material | 5712 |
| supply, install, test & commission Automatic Transfer Switch ATS panel including all accessories & works required. | material | 7129 |
| Supply, install, test and commission under ground fuel tank for 3 days of continuous operation of the standby generator at full load. The tank should be supplied with all accessories such as black steel pipes, float switches with two contactors ï¿½etc. as | material | 13851.6 |
| 4Cx 185mm2 Cu/XLPE//PVC from nearest power supply (SEC) and generator to the ATS and from ATS to MCC-SPS | material | 72.6 |
| 4Cx 95mm2 Cu/XLPE//PVC from nearest power supply (SEC) and generator to the ATS and from ATS to MCC-SPS | material | 42.8 |
| 4Cx 10mm2 Cu/XLPE/SWA/PVC from MCC-SPS to ELP | material | 8.2 |
| 4Cx 150mm2 + 1Cx25mm2 SUBMERGED RUBBER INSULATED FLEXIBLE CABLE from MCC to PUMP1& PUMP2. | material | 81.8 |
| 4Cx 10mm2 + 1Cx10mm2 Cu/XLPE/PVC FROM MCC-SPS to DB-SPS | material | 8.4 |
| 4Cx 10mm2 + 1Cx10mm2 Cu/XLPE/PVC FROM MCC-SPS to Penstok | material | 8.4 |
| 4Cx 10mm2 + 1Cx10mm2 Cu/XLPE/PVC FROM MCC-SPS to Odor Control Unit | material | 8.4 |
| 4Cx 6mm2 + 1Cx6mm2 Cu/XLPE/PVC FROM MCC-SPS to the mechanical bar screen | material | 6.2 |
| 3Cx 6mm2 Cu/XLPE/PVC FROM MCC-SPS to the two fuel pumps. | material | 5.4 |
| 3Cx 4mm2 Cu/XLPE/PVC to the AC. | material | 4.4 |
| MCC | material | 22469.4 |
| Surge protection system study | material | 58007.2 |
| Surge protection system | material | 117609 |
| Local Control Panel, IP 65 | material | 9928 |
| Isolator/disconnect switches IP65 | material | 545.6 |
| DB-SPS Panel | material | 1200 |
| ELP Panel: phtocell , timer,40 Ampere, 3P, IP66,60Hz incomer MCCB & 5ways outgoing MCCB | material | 1495 |
| Electrical Hand Hole 600mm x 600mm x 800mm concrete hand hole with hot dip galvanized heavy duty steel cover | material | 520.6 |
| Electrical Hand Hole 400mm x 400mm x 600mm concrete hand hole with hot dip galvanized heavy duty steel cover | material | 466.6 |
| Surfaced Mounted Light | material | 171.4 |
| 13A DOUBLE SWITCH SOCKET OUTLET (WEATHER PROOF) | material | 63.2 |
| 20A SWITCH SOCKET OUTLET (FOR SPLIT UNIT), (WEATHER PROOF) | material | 71.4 |
| Supply, install and test the following grounding and lightning system including ground wires, ground rods, inspection pits, terminations, bonding/clamping, civil works and all materials and accessories required to complete the work according to specificat | material | 3172.6 |
| Supply and install telephone and fire alarm system including smoke detector, cabinet, control panel, cables, conduits, switches, and other accessories to complete as per drawings and specifications. | material | 5950 |
| Supply, installation, testing and commissioning of all control, instrumentation( as shown on the P & ID drawings cable schedule) including all installation accessories such as termination kits, lugs, glands, cable containments, junction boxes , conduits, | material | 10710 |
| Supply, installation, testing and commissioning of all field instruments such as hydrostatic level meter, level switches, flow switch, and all necessary instruments including all installation accessories, etc. all as per specifications and design drawings | material | 11900 |
| DX wall mounted Split/AC | material | 1256.6 |
| CO2 fire extinguishers | material | 72.6 |
| Powder fire extinguishers | material | 67 |
| Flood lights shall be high pole with 250 watt HPS luminaire | material | 883 |
| 1 - way duct - not exceeding 1.5m deep | material | 25 |
| 2 - way duct - not exceeding 1.5m deep | material | 40.4 |
| 8 - way duct - not exceeding 1.5m deep | material | 104.2 |
| Earth pits | material | 58.4 |
| Cable draw pit, 600x600mm | material | 476 |
| Supply, installation, testing and commissioning of PLC system | material | 64260 |
| Manhole Type 3 (2000x1000x1000) | material | 3168.43 |
| Air valve chamber on 280 mm dia pipeline Depth 1.5 - 3 m | material | 8139.6 |
| Pipe with diameter 400mm ; depth: 2.51m - 3.5m | material | 359.12 |
| 300mm thick Subgrade, including subgrade preparation, CBR?25% | material | 10 |
| Aggregate base course 200mm thick after compaction in two layers(Grading 1); CBR?80%; including watering, compaction and testing | material | 24.2 |
| Bituminous base course(Grading I - Class A), 70mm thick after compaction including Prime Coat (MC1) | material | 109 |
| Bituminous concrete wearing course, 50 mm thick, after compaction(Grading I - Class A), including tack coat (RC) | material | 120 |
| Excavation in all type of soil for any depth including levelling, compaction and disposal of surplus material | material | 33.5 |
| Reinforced Concrete lining including blinding concrete, construction, isolation layers and expansion joints as shown in drawings. | material | 717.57 |
| Excavation in all type of soil to increase the depth of the existing pond for any depth including levelling, compaction and disposal of surplus material | material | 13.4 |
| Reinforced Concrete lining including blinding concrete, construction, isolation layers and expansion joints as shown in drawings. | material | 717.57 |
| Valve chamber | material | 95676 |
| Gate valves for the pump station | material | 108841 |
| Non return valves for the pump station | material | 100574 |
| Penstok for the pump station | material | 69317.5 |
| Constant speed drive, sewage pumps, centrifugal submersible type; 2 duty / 1 standby capable of delivering a flow rate of flow 424 l/s against a total head of 22m, rate includes provision of MCC | material | 572621 |
| Odour control system | material | 160941 |
| Site Preparation (including survey, removal and disposal of unsuitable materials, placement and compaction fill material to bring the pump station site to proposed grades) | material | 10710 |
| Supply and install 300mm thick Subgrade as per drawings and specifications. | material | 44.1 |
| Supply and install 200mm thick Aggregate base course | material | 114.3 |
| Supply and install Bituminous base course (Grading I - Class A), including Prime Coat (MC1) as per drawings and specifications. | material | 525.6 |
| Supply and install Bituminous concrete wearing course, (Grading I - Class A), including tack coat (RC2) as per drawings and specifications. | material | 551.7 |
| Supply and install Precast Concrete Kerb | material | 43.2 |
| Supply and install 60mm thick - Interlocking block pavers for sidewalk/footpath as per drawings and specifications. | material | 54 |
| Supply and install Traffic signs, ground mounted, Sheet Alumenium, (breakaway)Single post, with all accessories as per drawings and specifications. | material | 1178.1 |
| Supply and install thermoplastic pavement road markings as per drawings and specifications. | material | 10710 |
| surface drainage channel | material | 268.2 |
| Standby Diesel Generator Set 400/230KVA, 3P, 60Hz in Sound Attenuated Enclosure KVA rating by contractor as per total load onsite after pumps selection | material | 107154 |
| Supply, install, test and commission of manually operated fuel pump, The pump should be supplied with all accessories as specified. | material | 18683 |
| Supply, install, test and commission of Fuel pump with capacity of not less than 1 hour to fill the daily tank of generator at required head. | material | 19135.2 |
| supply, install, test & commission Automatic Transfer Switch ATS panel including all accessories & works required. | material | 23882.2 |
| Supply, install, test and commission under ground fuel tank for 3 days of continuous operation of the standby generator at full load. The tank should be supplied with all accessories such as black steel pipes, float switches with two contactors ï¿½etc. as | material | 46402.9 |
| Double leaf swing or sliding main entrance gate | material | 10710 |
| 1.8m high Chainlink Fence (mesh opening size 60mm x 60mm) | material | 214.2 |
| Single leaf personal access gate | material | 8032.5 |
| Surfaced Mounted Light | material | 574.19 |
| Flood lights shall be high pole with 250 watt HPS luminaire | material | 2958.05 |
| DX wall mounted Split/AC | material | 4209.61 |
| CO2 fire extinguishers | material | 243.21 |
| Powder fire extinguishers | material | 224.45 |
| 1 - way duct - not exceeding 1.5m deep | material | 83.75 |
| 2 - way duct - not exceeding 1.5m deep | material | 135.34 |
| 8 - way duct - not exceeding 1.5m deep | material | 349.07 |
| Plain concrete foundation | material | 482.4 |
| Reinfirced concrete foundation | material | 1178.1 |
| Reinforced concrete columns | material | 1178.1 |
| Reinfirced concrete SOG | material | 1178.1 |
| Reinfirced concrete slab | material | 1178.1 |
| CMU walls with thickness 200mm | material | 79.73 |
| Waterproofing for foundation | material | 36.18 |
| Roof Insulation | material | 115.91 |
| Plasterer | labor |  |
| Acrylic paint on elevations including plastering | material | 95.81 |
| Acrylic paint on internal wallsand ceiling including plastering | material | 95.81 |
| Epoxy paint on floors | material | 95.81 |
| Supply and install 2000*3000 mm double leaf manufacturer label shall pass the test requirements complete with accessories as per door schedule and material as approved by the Client. | material | 5740.56 |
| Plinth for odour control system | material | 1178.1 |
| 4Cx 185mm2 Cu/XLPE//PVC from nearest power supply (SEC) and generator to the ATS and from ATS to MCC-SPS | material | 243.21 |
| 4Cx 95mm2 Cu/XLPE//PVC from nearest power supply (SEC) and generator to the ATS and from ATS to MCC-SPS | material | 143.38 |
| 4Cx 10mm2 Cu/XLPE/SWA/PVC from MCC-SPS to ELP | material | 27.47 |
| 4Cx 150mm2 + 1Cx25mm2 SUBMERGED RUBBER INSULATED FLEXIBLE CABLE from MCC to PUMP1& PUMP2. | material | 274.03 |
| 4Cx 10mm2 + 1Cx10mm2 Cu/XLPE/PVC FROM MCC-SPS to DB-SPS | material | 28.14 |
| 4Cx 10mm2 + 1Cx10mm2 Cu/XLPE/PVC FROM MCC-SPS to Penstok | material | 28.14 |
| 4Cx 10mm2 + 1Cx10mm2 Cu/XLPE/PVC FROM MCC-SPS to Odor Control Unit | material | 28.14 |
| 4Cx 6mm2 + 1Cx6mm2 Cu/XLPE/PVC FROM MCC-SPS to the mechanical bar screen | material | 20.77 |
| 3Cx 6mm2 Cu/XLPE/PVC FROM MCC-SPS to the two fuel pumps. | material | 18.09 |
| 3Cx 4mm2 Cu/XLPE/PVC to the AC. | material | 14.74 |
| 13A DOUBLE SWITCH SOCKET OUTLET (WEATHER PROOF) | material | 211.72 |
| 20A SWITCH SOCKET OUTLET (FOR SPLIT UNIT), (WEATHER PROOF) | material | 239.19 |
| Supply, install and test the following grounding and lightning system including ground wires, ground rods, inspection pits, terminations, bonding/clamping, civil works and all materials and accessories required to complete the work according to specificat | material | 10628.2 |
| MCC | material | 75272.5 |
| Surge protection system study | material | 194324 |
| Surge protection system | material | 393990 |
| Local Control Panel, IP 65 | material | 33258.8 |
| Isolator/disconnect switches IP65 | material | 1827.76 |
| DB-SPS Panel | material | 4020 |
| ELP Panel: phtocell , timer,40 Ampere, 3P, IP66,60Hz incomer MCCB & 5ways outgoing MCCB | material | 5008.25 |
| Electrical Hand Hole 600mm x 600mm x 800mm concrete hand hole with hot dip galvanized heavy duty steel cover | material | 1744.01 |
| Electrical Hand Hole 400mm x 400mm x 600mm concrete hand hole with hot dip galvanized heavy duty steel cover | material | 1563.11 |
| Supply and install telephone and fire alarm system including smoke detector, cabinet, control panel, cables, conduits, switches, and other accessories to complete as per drawings and specifications. | material | 19932.5 |
| Supply, installation, testing and commissioning of all control, instrumentation( as shown on the P & ID drawings cable schedule) including all installation accessories such as termination kits, lugs, glands, cable containments, junction boxes , conduits, | material | 35878.5 |
| Supply, installation, testing and commissioning of all field instruments such as hydrostatic level meter, level switches, flow switch, and all necessary instruments including all installation accessories, etc. all as per specifications and design drawings | material | 39865 |
| Earth pits | material | 195.64 |
| Cable draw pit, 600x600mm | material | 1594.6 |
| Supply, installation, testing and commissioning of PLC system, | material | 215271 |
| Site Preparation (including survey, removal and disposal of unsuitable materials, placement and compaction fill material to bring the pump station site to proposed grades) | material | 1190 |
| Supply and install 300mm thick Subgrade as per drawings and specifications. | material | 4.9 |
| Supply and install 200mm thick Aggregate base course | material | 12.7 |
| Supply and install Bituminous base course (Grading I - Class A), including Prime Coat (MC1) as per drawings and specifications. | material | 58.4 |
| Supply and install Bituminous concrete wearing course, (Grading I - Class A), including tack coat (RC2) as per drawings and specifications. | material | 61.3 |
| Supply and install Precast Concrete Kerb | material | 4.8 |
| Supply and install 60mm thick - Interlocking block pavers for sidewalk/footpath as per drawings and specifications. | material | 6 |
| Supply and install Traffic signs, ground mounted, Sheet Alumenium, (breakaway)Single post, with all accessories as per drawings and specifications. | material | 130.9 |
| Supply and install thermoplastic pavement road markings as per drawings and specifications. | material | 1190 |
| surface drainage channel | material | 29.8 |
| Excavation in all type of soil for any depth including levelling, compaction and disposal of surplus material | material | 5 |
| Reinforced Concrete lining including blinding concrete, construction, isolation layers and expansion joints as shown in drawings. | material | 107.1 |
| Excavation in all type of soil to increase the depth of the existing pond for any depth including levelling, compaction and disposal of surplus material | material | 2 |
| Reinforced Concrete lining including blinding concrete, construction, isolation layers and expansion joints as shown in drawings. | material | 107.1 |
| 125 mm pipe; depth 0.0m - 1.5m | material | 11.1 |
| 280 mm pipe; depth 0.0m - 1.5m | material | 42.9 |
| 280 mm pipe; depth 1.5m - 3.0m | material | 45.7 |
| 355 mm pipe; depth 1.5m - 3.0m | material | 61.1 |
| 400 mm pipe; depth 1.5m - 3.0m | material | 57.4 |
| 500. mm pipe; depth 1.5m - 3.0m | material | 84 |
| Gate valves dia (90)mm on pipes with dia (125) mm. | material | 297.5 |
| Gate valves dia (200)mm on pipes with dia (280) mm. | material | 446.3 |
| Butterfly valves with dia (355)mm on pipes with dia (355)mm. | material | 3989.7 |
| Butterfly valves with dia (400)mm on pipes with dia (400)mm. | material | 4973.8 |
| Butterfly valves with dia (500)mm on pipes with dia (500)mm. | material | 7619.5 |
| Wash out valve with dia (100)mm on pipes with dia (125) mm | material | 828.4 |
| Wash out valve with dia (100)mm on pipes with dia (355) mm | material | 1514.3 |
| Wash out valve with dia (150)mm on pipes with dia (400) mm | material | 1955.1 |
| Wash out valve with dia (150)mm on pipes with dia (500) mm | material | 2722.2 |
| Air valves with dia (50mm) mm on pipes with dia(125)mm. | material | 952.3 |
| Air valves with dia (65mm) mm on pipes with dia(280)mm. | material | 1071 |
| Air valves with dia (65mm) mm on pipes with dia(400)mm. | material | 1785 |
| Air valves with dia (65mm) mm on pipes with dia(500)mm. | material | 2001 |
| Wet well structure internal size (5.5*4.0m) at 11.0m depth | material | 147819 |
| for the pump station | material | 67770.5 |
| basket screen | material | 153488 |
| Gate valves dia(200)mm on pipes with dia (200) mm. | material | 2647.84 |
| Wash out valve with dia (100)mm on pipes with dia (200) mm | material | 5682.94 |
| Air valve chamber; on 200 mm dia pipeline Depth 1.5 - 3 m | material | 7739.1 |
| Steel Fixer | labor |  |
| Wash out chamber; on 200 mm dia pipeline Depth 1.5 - 3m | material | 31915.8 |
| Air valves with dia (50mm) mm on pipes with dia(200)mm. | material | 6480.24 |
| Wash out chamber; on 560 mm dia pipeline Depth 1.5 - 3m | material | 42382.8 |
| Wash out chamber; on 630 mm dia pipeline Depth 1.5 - 3m | material | 42382.8 |
| Air valve chamber on 560 mm dia pipeline Depth 1.5 - 3 m | material | 7739.1 |
| Air valve chamber on 630 mm dia pipeline Depth 1.5 - 3 m | material | 7739.1 |
| Butterfly valves with dia (560)mm on pipes with dia (560)mm. | material | 59797.5 |
| Butterfly valves with dia (630)mm on pipes with dia (630)mm. | material | 67213.7 |
| Wash out valve with dia (150)mm on pipes with dia (560) mm | material | 18238.7 |
| Wash out valve with dia (150)mm on pipes with dia (630) mm | material | 23670.4 |
| Air valves with dia (65mm) mm on pipes with dia(560)mm. | material | 11911.9 |
| Air valves with dia (65mm) mm on pipes with dia(630)mm. | material | 17464.9 |
| In-situ, reinforced single concrete valve chambers on the pipeline, as defined and shown on the drawingss, and all necessary works and equipment (valve measured elsewhere), and supplies construction, cut and installation of pipe cutting, backfilling, in | material | 37485 |
| Air valve chamber on 355 mm dia pipeline Depth 1.5 - 3 m | material | 9373.5 |
| Butterfly valves with dia (355)mm on pipes with dia (355)mm. | material | 26731 |
| Air valves with dia (65mm) mm on pipes with dia(355)mm. | material | 8722.73 |
| Road crossing ducts, 4 way (4 x 100mm PVC) | material | 126.63 |
| Drawpit with medium duty steel cover, size 900x900x1200mm, Type 4 | material | 2527.24 |
| Drawpit with medium duty steel cover, size 600x600x1000mm, Type 18 | material | 2257.23 |
| Street Lighting Feeder pillars , Includes foundation and draw pits | material | 7824.93 |
| Pipe with diameter 900mm ; depth: 2.51 - 3.5m | material | 213.8 |
| HDPE force main DN 800mm diameter, in trenches depth: 0- 1.5m | material | 1402.98 |
| HDPE force main DN 800mm diameter, in trenches depth: 1.51- 2.5m | material | 1430.45 |
| Washout valve 200mm, on 800mm dia. pipe | material | 25912.2 |
| Air release valve 110 mm dia, on 800mm dia. pipe | material | 19135.2 |
| Washout valve chamber | material | 31892 |
| Air release valve chamber | material | 8132.46 |
| Pipe with diameter 355mm; in depth 0.0m - 1.5m | material | 88 |
| Pipe with diameter 355mm; in depth 1.5m - 3.0m | material | 94.8 |
| Butterfly valves with dia (355)mm on pipes with dia (355)mm. | material | 7979.4 |
| Air valves with dia (65mm) mm on pipes with dia(355)mm. | material | 2603.8 |
| In-situ, reinforced single concrete valve chambers on the pipeline, as defined and shown on the drawingss, and all necessary works and equipment (valve measured elsewhere), and supplies construction, cut and installation of pipe cutting, backfilling, in | material | 8330 |
| Air valve chamber on 355 mm dia pipeline Depth 1.5 - 3 m | material | 2083 |

## Schedule

| ID | WBS | Activity | Type | Duration | Start | Finish | Predecessors | Complete | Planned start | Planned finish | Total float | Free float | Constraint | Activity ID N | 02- Network-WBS | 05-Discipline | 01- Network | 06-Employer Responsibilities | Discipline | 03- Activity | 04-UOM |
| --- | --- | --- | --- | --- | --- | --- | --- | --- | --- | --- | --- | --- | --- | --- | --- | --- | --- | --- | --- | --- | --- |
|  | MS | **Key Milestones** |  |  | 2025-01-12 | 2027-09-07 |  |  |  |  |  |  |  |  |  |  |  |  |  |  |  |
|  | CM | **Contractual Milestones** |  |  | 2025-01-12 | 2027-09-07 |  |  |  |  |  |  |  |  |  |  |  |  |  |  |  |
| MS-CS-PS |  | Project Commencement Date ( Site Handover ) | milestone | 0d | 2025-01-12 A | 2025-01-12 A |  | 100% |  |  |  |  |  | MS-CS-PS | GN | C | MS | ER | MS |  |  |
| MS-CF-MOB |  | Completion of Mobilization Works | milestone | 0d | 2025-03-09 A | 2025-03-09 A | MOB-30, MOB-40, MOB-50, MOB-60, MOB-70, MOB-80 FF | 100% |  |  |  |  | finish on or before 2025-03-09 | MS-CF-MOB | GN | MON | MS |  | MS |  |  |
| MS-CF-EBL |  | Completion of Work Plan and Baseline Schedule | milestone | 0d | 2025-03-10 A | 2025-03-10 A | PRE-CON-MDC-20 FF, PRE-CON-MDC-30 FF, PRE-CON-MDC-40 FF, PRE-CON-MDC-50 FF, PRE-CON-MDC-60 FF, PRE-CON-MDC-70 FF, PRE-CON-MDC-80 FF | 100% | 2025-02-10 | 2025-02-10 |  |  | finish on or before 2025-02-11 | MS-CF-EBL | GN | MON | MS |  | MS |  |  |
| MS-CF-ENG |  | Completion of Submitting and Approval of Shopdrwing and Material | milestone | 0d | 2025-05-24 A | 2025-05-24 A | ENG-SH-PW-ML-A-110 FF, ENG-SH-SW-ML-A-110 FF, ENG-SH-SD-ML-A-110 FF, ENG-SH-SD-CB-A-110 FF, ENG-SH-IR-ML-A-110 FF, ENG-SH-IR-LL-A-110 FF, ENG-SH-SL-A-110 FF, ENG-SH-TE-A-110 FF, ENG-SH-MV-A-110 FF, ENG-SH-RD-A-130 FF, ENG-SH-MRK-A-110 FF, ENG-SH-HS-A-110 FF, ENG-SH-RD-A-110 FF, ENG-SH-RD-A-120 FF, ENG-MS-PW-ML-A-110 FF, ENG-MS-SW-ML-A-110 FF, ENG-MS-SD-ML-A-110 FF, ENG-MS-SD-CB-A-110 FF, ENG-MS-IR-ML-A-110 FF, ENG-MS-IR-LL-A-110 FF, ENG-MS-SL-A-110 FF, ENG-MS-TE-A-110 FF, ENG-MS-MV-A-110 FF, ENG-MS-RD-A-40 FF, ENG-MS-MRK-A-10 FF, ENG-MS-HS-A-10 FF, ENG-MS-RD-A-20 FF, ENG-MS-RD-A-30 FF, ENG-SH-PW-FH-A-110 FF, ENG-MT-SW-ML-A-110 FF, ENG-MT-SW-ML-A-100 FF, ENG-MT-SW-TF-A-100 FF, ENG-MT-SW-TF-A-120 FF, ENG-MT-SD-ML-A-100 FF, ENG-MT-SD-ML-A-110 FF, ENG-MT-SD-CB-A-110 FF, ENG-MT-SD-CB-A-100 FF, ENG-MT-SD-TF-A-100 FF, ENG-MT-SD-TF-A-110 FF, ENG-MT-SD-TF-A-120 FF, ENG-MT-PW-ML-A-100 FF, ENG-MT-PW-ML-A-110 FF, ENG-MT-PW-FH-A-100 FF, ENG-MT-PW-TF-A-100 FF, ENG-MT-IR-ML-A-100 FF, ENG-MT-IR-ML-A-110 FF, ENG-MT-MV-ML-A-100 FF, ENG-MT-MV-SS-A-100 FF, ENG-MT-MV-TF-A-100 FF, ENG-MT-SL-ML-A-100 FF, ENG-MT-SL-A-100 FF, ENG-MT-SL-A-110 FF, ENG-MT-SL-A-120 FF, ENG-MT-SL-DB-A-100 FF, ENG-MT-SL-TF-A-100 FF, ENG-MT-SL-TF-A-110 FF, ENG-MT-SL-ES-A-100 FF, ENG-MT-TE-A-100 FF, ENG-MT-TE-A-110 FF, ENG-MT-SPS-CV-A-110 FF, ENG-MT-DPO-CV-A-110 FF, ENG-MT-MV-A-10 FF, ENG-MT-SPS-MC-A-110 FF, ENG-MS-CTV-A-110 FF, ENG-SH-CTV-A-110 FF | 100% | 2025-02-10 | 2025-02-10 |  |  | finish on or before 2025-02-11 | MS-CF-ENG | GN | MON | MS |  | MS |  |  |
| MS-CF-TE |  | Completion of Construction Works for Telecom Network | milestone | 0d | 2027-03-18 | 2027-03-18 | CO-R09.S01-TE-130, CO-R09.S01-TE-160, CO-R10.S03-ES-TE-130, CO-R10.S03-ES-TE-160, CO-R11.S05-TE-130, CO-R11.S05-TE-160, CO-R14.S07-TE-130, CO-R14.S07-TE-160, CO-R15.S09-TE-130, CO-R15.S09-TE-160, CO-R16.S11-TE-130, CO-R16.S11-TE-160, CO-R17.S13-TE-130, CO-R17.S13-TE-160, CO-R17.S14-TE-160 FF, CO-R17.S14-TE-130 FF, CO-R16.S12-TE-160 FF, CO-R16.S12-TE-130 FF, CO-R15.S10-TE-160 FF, CO-R15.S10-TE-130 FF, CO-R14.S08-TE-160 FF, CO-R14.S08-TE-130 FF, CO-R11.S06-TE-160 FF, CO-R11.S06-TE-130 FF, CO-R10.S04-ES-TE-130 FF, CO-R10.S04-ES-TE-160 FF, CO-R09.S02-TE-160 FF, CO-R10.S03-WE-TE-130, CO-R10.S03-WE-TE-160, CO-R10.S04-WE-TE-130 FF, CO-R10.S04-WE-TE-160 FF |  |  |  | -165d | 0d | finish on or before 2026-09-01 | MS-CF-TE | MS | EPC | TE |  | TE |  |  |
| MS-CF-MV |  | Completion of Construction Works for Medium Voltage Network | milestone | 0d | 2027-04-07 | 2027-04-07 | CO-R09.S01-MV-120, CO-R09-MV-TF-100, ENG-SH-MV-A-110, CO-R09.S01-EW-100, CO-R09.S01-EW-110, CO-R18-MV-TF-120, CO-R10.S03-ES-MV-120, CO-R10-MV-TF-140, CO-R10.S03-ES-EW-100, CO-R10.S03-ES-EW-110, CO-R11.S05-MV-120, CO-R11-MV-TF-160, CO-R11.S05-EW-100, CO-R11.S05-EW-110, CO-R11-MV-TF-180, CO-R14.S07-EW-100, CO-R14.S07-EW-110, CO-R15.S09-MV-ML-270, CO-R15-MV-TF-200, CO-R15.S09-EW-200, CO-R15.S09-EW-110, CO-R16.S11-MV-ML-300, CO-R16-MV-TF-220, CO-R16.S11-EW-100, CO-R16.S11-EW-110, CO-R17.S13-MV-ML-330, CO-R17-MV-TF-240, CO-R17.S13-EW-100, CO-R17.S13-EW-110, ENG-MS-MV-A-110, CO-R10.S03-WE-MV-120, CO-R10.S03-WE-EW-100, CO-R10.S03-WE-EW-110, MS-CS-MV |  |  |  | -134d | 0d | finish on or before 2026-10-28 | MS-CF-MV | MS | EPC | MV |  | MV |  |  |
| MS-CF-IR |  | Completion of Construction Works for Irrigation Network | milestone | 0d | 2027-05-11 | 2027-05-11 | CO-R09.S01-IR-140, CO-R09-IR-TF-100, CO-R18-IR-TF-110, CO-R10.S03-ES-IR-130, CO-R10-IR-TF-120, CO-R11.S05-IR-130, CO-R11-IR-TF-130, CO-R14.S07-IR-130, CO-R11-IR-TF-140, CO-R15.S09-IR-130, CO-R15-IR-TF-150, CO-R16.S11-IR-130, CO-R16-IR-TF-160, CO-R17.S13-IR-130, CO-R17-IR-TF-170, CO-R10.S03-WE-IR-130, CO-R10.S03-ES-IR-120, CO-R14.S07-IR-120, CO-R15.S09-IR-120, CO-R16.S11-IR-120, CO-R17.S13-IR-120, CO-R10.S04-ES-IR-120, CO-R18.S15-IR-160, CO-R10.S03-WE-IR-120, CO-R09.S01-IR-120 |  |  |  | -163d | 0d | finish on or before 2026-10-28 | MS-CF-IR | MS | EPC | IR |  | IR |  |  |
| MS-CF-SW |  | Completion of Construction Works for Sewage Network | milestone | 0d | 2027-06-21 | 2027-06-21 | CO-R09.S01-SW-130, CO-R09-SW-TF-100, CO-R09-SW-TF-110, CO-R09-SW-TF-120, CO-R18-SW-TF-100, CO-R18-SW-TF-110, CO-R18-SW-TF-130, CO-R10-SW-TF-100, CO-R10-SW-TF-110, CO-R10-SW-TF-130, CO-R11.S05-SW-130, CO-R11-SW-TF-100, CO-R11-SW-TF-110, CO-R11-SW-TF-130, CO-R14.S07-SW-130, CO-R14-SW-TF-100, CO-R14-SW-TF-110, CO-R14-SW-TF-130, CO-R15.S09-SW-130, CO-R15-SW-TF-100, CO-R15-SW-TF-110, CO-R15-SW-TF-130, CO-R16.S11-SW-130, CO-R16-SW-TF-100, CO-R16-SW-TF-110, CO-R16-SW-TF-130, CO-R17.S13-SW-130, CO-R17-SW-TF-100, CO-R17-SW-TF-110, CO-R17-SW-TF-130, CO-R11.S06-SW-130 FF, CO-R14.S08-SW-130 FF, CO-R09.S02-SW-130 FF, CO-R09.S01-SW-210, CO-R14.S08-SW-210 |  |  |  | -184d | 0d | finish on or before 2026-11-08 | MS-CF-SW | MS | EPC | SW |  | SW |  |  |
| MS-CF-PW |  | Completion of Construction Works for Potable Water Network | milestone | 0d | 2027-06-27 | 2027-06-27 | CO-R09-PW-TF-100, CO-R09-PW-TF-110, CO-R09-PW-TF-120, CO-R18-PW-TF-100, CO-R18-PW-TF-110, CO-R18-PW-TF-120, CO-R10.S03-ES-PW-130, CO-R10.S03-ES-PW-160, CO-R10-PW-TF-100, CO-R10-PW-TF-110, CO-R10-PW-TF-120, CO-R11-PW-TF-100, CO-R11-PW-TF-110, CO-R11-PW-TF-120, CO-R14-PW-TF-100, CO-R14-PW-TF-110, CO-R14-PW-TF-120, CO-R15-PW-TF-100, CO-R15-PW-TF-110, CO-R15-PW-TF-120, CO-R16-PW-TF-100, CO-R16-PW-TF-110, CO-R16-PW-TF-120, CO-R17-PW-TF-100, CO-R17-PW-TF-110, CO-R17-PW-TF-120, CO-R10.S03-WE-PW-130, CO-R10.S03-WE-PW-160, CO-R15.S10-PW-210, CO-R16.S12-PW-210, CO-R17.S14-PW-210, CO-R18.S16-PW-330, CO-R14.S08-PW-160 |  |  |  | -180d | 0d | finish on or before 2026-11-18 | MS-CF-PW | MS | EPC | PW |  | PW |  |  |
| MS-CF-SL |  | Completion of Construction Works for Street Lighting Network | milestone | 0d | 2027-06-30 | 2027-06-30 | CO-R09.S01-SL-120, CO-R09.S01-SL-130, CO-R09.S01-SL-160, CO-R09.S01-SL-180, CO-R09.S01-SL-190, CO-R09-SL-TF-100, CO-R09-SL-TF-110, CO-R09-SL-ES-100, CO-R09-SL-ES-110, CO-R18-SL-TF-120, CO-R18-SL-TF-130, CO-R10.S03-ES-SL-120, CO-R10.S03-ES-SL-130, CO-R10.S03-ES-SL-160, CO-R10.S03-ES-SL-180, CO-R10.S03-ES-SL-190, CO-R10-SL-TF-140, CO-R10-SL-TF-150, CO-R10-SL-ES-140, CO-R10-SL-ES-150, CO-R11-SL-TF-160, CO-R11-SL-TF-170, CO-R14.S07-SL-120, CO-R14.S07-SL-130, CO-R14.S07-SL-160, CO-R14.S07-SL-180, CO-R14.S07-SL-190, CO-R11-SL-TF-180, CO-R11-SL-TF-190, CO-R15-SL-TF-200, CO-R15-SL-TF-210, CO-R16-SL-TF-220, CO-R16-SL-TF-230, CO-R17-SL-TF-240, CO-R17-SL-TF-250, CO-R14.S08-SL-850 FF, CO-R09-SL-TF-380, CO-R10-SL-TF-380, CO-R11-SL-TF-380, CO-R14-SL-TF-380, CO-R15-SL-TF-380, CO-R16-SL-TF-380, CO-R17-SL-TF-380, CO-R18-SL-TF-380, CO-R15.S10-SL-130 FF, CO-R15.S10-SL-160 FF, CO-R15.S10-SL-190 FF, CO-R17.S14-SL-130 FF, CO-R17.S14-SL-160 FF, CO-R17.S14-SL-190 FF, CO-R18.S16-SL-130 FF, CO-R18.S16-SL-160 FF, CO-R18.S16-SL-190 FF, CO-R09.S02-SL-130 FF, CO-R10.S03-WE-SL-120, CO-R10.S03-WE-SL-130, CO-R10.S03-WE-SL-160, CO-R10.S03-WE-SL-180, CO-R10.S03-WE-SL-190 |  |  |  | -212d | 0d | finish on or before 2026-10-15 | MS-CF-SL | MS | EPC | SL |  | SL |  |  |
| MS-CF-SD |  | Completion of Construction Works for Storm Drainage Network | milestone | 0d | 2027-07-11 | 2027-07-11 | CO-R09.S01-SD-130, CO-R09.S01-SD-170, CO-R09-SD-TF-100, CO-R09-SD-TF-110, CO-R09-SD-TF-120, CO-R09-SD-TF-130, CO-R18-SD-TF-100, CO-R18-SD-TF-110, CO-R18-SD-TF-120, CO-R18-SD-TF-130, CO-R10.S03-ES-SD-130, CO-R10.S03-ES-SD-170, CO-R10-SD-TF-100, CO-R10-SD-TF-110, CO-R10-SD-TF-120, CO-R10-SD-TF-130, CO-R11.S05-SD-130, CO-R11.S05-SD-170, CO-R11-SD-TF-100, CO-R11-SD-TF-110, CO-R11-SD-TF-120, CO-R11-SD-TF-130, CO-R14.S07-SD-130, CO-R14.S07-SD-170, CO-R14-SD-TF-110, CO-R14-SD-TF-120, CO-R14-SD-TF-130, CO-R15.S09-SD-130, CO-R15.S09-SD-170, CO-R15-SD-TF-100, CO-R15-SD-TF-110, CO-R15-SD-TF-120, CO-R15-SD-TF-130, CO-R16.S11-SD-130, CO-R16.S11-SD-170, CO-R16-SD-TF-100, CO-R16-SD-TF-110, CO-R16-SD-TF-120, CO-R16-SD-TF-130, CO-R17.S13-SD-130, CO-R17.S13-SD-170, CO-R17-SD-TF-100, CO-R17-SD-TF-110, CO-R17-SD-TF-120, CO-R17-SD-TF-130, CO-R14-SD-TF-100, CO-R10.S03-WE-SD-130, CO-R10.S03-WE-SD-170, PRO-R11-SD-DL-140, CO-R09.S01-SD-210 |  |  |  | -172d | 0d | finish on or before 2026-12-12 | MS-CF-SD | MS | EPC | SD |  | SD |  |  |
| MS-CF-RD |  | Completion of Construction Works for Road Works | milestone | 0d | 2027-08-24 | 2027-08-24 | CO-R09-S1-RD-F-150 FF, CO-R09-S2-RD-F-170 FF, CO-R18-S15-RD-F-130 FF, CO-R18-S16-RD-F-160 FF, CO-R10-S03-RD-F-100 FF, CO-R10-S04-RD-F-130 FF, CO-R11-S05-RD-F-100 FF, CO-R11-S06-RD-F-130 FF, CO-R11-S07-RD-F-100 FF, CO-R11-S08-RD-F-130 FF, CO-R15-S09-RD-F-100 FF, CO-R15-S10-RD-F-130 FF, CO-R16-S11-RD-F-100 FF, CO-R16-S12-RD-F-130 FF, CO-R17-S13-RD-F-100 FF, CO-R17-S14-RD-F-130 FF, CO-R09-S1-RD-F-140 FF, CO-R09-S2-RD-F-160 FF, CO-R18-S15-RD-F-120 FF, CO-R18-S16-RD-F-140 FF, CO-R10-S03-RD-F-160 FF, CO-R10-S04-RD-F-170 FF, CO-R11-S05-RD-F-160 FF, CO-R11-S06-RD-F-170 FF, CO-R11-S07-RD-F-160 FF, CO-R11-S08-RD-F-170 FF, CO-R15-S09-RD-F-160 FF, CO-R15-S10-RD-F-170 FF, CO-R16-S11-RD-F-160 FF, CO-R16-S12-RD-F-170 FF, CO-R17-S13-RD-F-160 FF, CO-R17-S14-RD-F-170 FF, CO-R18.S15-RD-P-150 FF, CO-R18.S16-RD-P-150 FF, CO-R18.S16-PW-270 |  |  |  | -195.5d | 0d |  | MS-CF-RD | MS | EPC | RD |  | RD |  |  |
| MS-CF-PF |  | Project Completion Date | milestone | 0d | 2027-09-07 | 2027-09-07 | MS-CF-IR, MS-CF-SL, MS-CF-TE, MS-CF-RD, HO-120 FF, HO-230 FF, HO-220 FF, HO-280 FF, CO-RM-SW-310 FF |  |  |  | -195.5d | 0d |  | MS-CF-PF | GN | C | MS |  | MS |  |  |
|  | CM1 | **Control Milestones** |  |  | 2025-04-29 | 2026-12-22 |  |  |  |  |  |  |  |  |  |  |  |  |  |  |  |
| MS-CS-SW |  | The Employer Approval NOC for Sewage Network | milestone | 0d | 2025-04-29 A | 2025-04-29 A | CO-R09.S01-SW-100 SS | 100% | 2025-07-09 | 2025-07-09 |  |  |  | MS-CS-SW | NOC | NOC | SW |  | SW | NOC | Each |
| MS-CS-SD |  | The Employer Approval NOC for Storm Drainage Network | milestone | 0d | 2025-04-30 A | 2025-04-30 A | CO-R09.S01-SD-100 SS | 100% | 2025-09-08 | 2025-09-08 |  |  |  | MS-CS-SD | NOC | NOC | SD |  | SD | NOC | Each |
| MS-CS-IR |  | The Employer Approval NOC for Irrigation Network | milestone | 0d | 2025-06-16 A | 2025-06-16 A | CO-R09.S01-IR-100 SS | 100% | 2025-11-19 | 2025-11-19 |  |  |  | MS-CS-IR | NOC | NOC | IR |  | IR | NOC | Each |
| MS-CS-PW |  | The Employer Approval NOC for Potable Water Network | milestone | 0d | 2025-06-19 A | 2025-06-19 A | CO-R09.S02-EW-120 | 100% | 2025-11-03 | 2025-11-03 |  |  |  | MS-CS-PW | NOC | NOC | PW |  | PW | NOC | Each |
| MS-CS-SL |  | The Employer Approval NOC for Street Lighting Network | milestone | 0d | 2025-07-08 A | 2025-07-08 A | CO-R09.S01-EW-110 | 100% | 2025-12-29 | 2025-12-29 |  |  |  | MS-CS-SL | NOC | NOC | SL |  | SL | NOC | Each |
| MS-CS-TE |  | The Employer Approval NOC for Telecom Network | milestone | 0d | 2025-07-08 A | 2025-07-08 A | ENG-SH-TE-A-110 | 100% | 2026-05-03 | 2026-05-03 |  |  |  | MS-CS-TE | NOC | NOC | TE |  | TE | NOC | Each |
| MS-CS-RD |  | The Employer Approval NOC for Roads Works | milestone | 0d | 2025-07-10 A | 2025-07-10 A | ENG-SH-RD-A-100 | 100% | 2026-06-21 | 2026-06-21 |  |  |  | MS-CS-RD | NOC | NOC | RD |  | RD | NOC | Each |
| MS-CS-MV |  | The Employer Approval NOC for Medium Voltage Network | milestone | 0d | 2026-12-22 | 2026-12-22 | CO-R09.S01-MV-100 SS |  |  |  | -46d | 88d |  | MS-CS-MV | NOC | NOC | MV |  | MV | NOC | Each |

| ID | WBS | Activity | Type | Duration | Start | Finish | Predecessors | Complete | Planned start | Planned finish | Total float | Free float | Activity ID N | 02- Network-WBS | 03- Activity | 04-UOM | 05-Discipline | 01- Network | Discipline | 06-Employer Responsibilities |
| --- | --- | --- | --- | --- | --- | --- | --- | --- | --- | --- | --- | --- | --- | --- | --- | --- | --- | --- | --- | --- |
|  | MM | **Intermediate Milestones** |  |  | 2027-05-02 | 2027-08-24 |  |  |  |  |  |  |  |  |  |  |  |  |  |  |
| MS-MO-20 |  | Completion of Storm Drainage Ponds | milestone | 0d | 2027-05-02 | 2027-05-02 | CO-SD-PO-K2-130 |  |  |  | -110d | 20d | MS-MO-20 | DSN | DSS | Each | S | TE | SD |  |
| MS-MO-10 |  | Completion of Sewage Pump Stations | milestone | 0d | 2027-05-30 | 2027-05-30 | CO-SW-PS7-SWS-110 |  |  |  | -129d | 0d | MS-MO-10 | DSN | DSS | Each | S | SL | SW |  |
| MS-MO-30 |  | Completion of Tie In To Existing Networks | milestone | 0d | 2027-08-24 | 2027-08-24 | TIE-SD-R09 FF, TIE-SW-R09 FF, TIE-PW-R09 FF, TIE-IR-R09 FF, TIE-R09-MV FF, TIE-R09-SL FF, TIE-R09-TE FF, TIE-SD-R10 FF, TIE-SW-R10 FF, TIE-PW-R10 FF, TIE-IR-R10 FF, TIE-R10-MV FF, TIE-R10-SL FF, TIE-R10-TE FF, TIE-R10-RD FF, TIE-SD-R11 FF, TIE-SW-R11 FF, TIE-PW-R11 FF, TIE-IR-R11 FF, TIE-R11-MV FF, TIE-R11-SL FF, TIE-R11-TE FF, TIE-SD-R14 FF, TIE-SW-R14 FF, TIE-PW-R14 FF, TIE-IR-R14 FF, TIE-R14-MV FF, TIE-R14-SL FF, TIE-R14-TE FF, TIE-R14-RD FF, TIE-SD-R15 FF, TIE-SW-R15 FF, TIE-PW-R15 FF, TIE-IR-R15 FF, TIE-R15-MV FF, TIE-R15-SL FF, TIE-R15-TE FF, TIE-SD-R16 FF, TIE-SW-R16 FF, TIE-PW-R16 FF, TIE-IR-R16 FF, TIE-R16-MV FF, TIE-R16-SL FF, TIE-R16-TE FF, TIE-SD-R17 FF, TIE-SW-R17 FF, TIE-PW-R17 FF, TIE-IR-R17 FF, TIE-R17-MV FF, TIE-R17-SL FF, TIE-R17-TE FF |  |  |  | -192.5d | 0d | MS-MO-30 |  |  |  |  |  | MS |  |
|  | MOB | **Preliminaries and Mobilization Works** |  |  | 2025-01-12 | 2025-03-12 |  |  |  |  |  |  |  |  |  |  |  |  |  |  |
|  | MOB | **Mobilization Works** |  |  | 2025-01-12 | 2025-03-12 |  |  |  |  |  |  |  |  |  |  |  |  |  |  |
| MOB-10 |  | Clear and Grub for Offices and Access Roads |  | 24d | 2025-01-12 A | 2025-03-12 A | MS-CS-PS SS | 100% | 2025-01-12 | 2025-02-08 |  |  | MOB-10 | MB |  | Each | Mob | MB | MOB |  |
| MOB-20 |  | Project Site Layout Plan Approval |  | 24d | 2025-01-12 A | 2025-03-12 A | MS-CS-PS SS | 100% | 2025-01-12 | 2025-02-08 |  |  | MOB-20 |  |  |  |  | MB | MOB |  |
| MOB-30 |  | Supply & Install of Project Supervision Offices |  | 24d | 2025-02-09 A | 2025-03-12 A | MS-CS-PS SS, MOB-20, MOB-10 | 100% | 2025-02-09 | 2025-03-09 |  |  | MOB-30 | MB |  | Each | Mob | MB | MOB |  |
| MOB-40 |  | Construction Project Store & Temporary Fence |  | 24d | 2025-02-09 A | 2025-03-12 A | MOB-10 | 100% | 2025-02-09 | 2025-03-09 |  |  | MOB-40 | MB |  | Each | Mob | MB | MOB |  |
| MOB-50 |  | Mobilization of Major Manpower |  | 24d | 2025-02-09 A | 2025-03-12 A | MOB-20 | 100% | 2025-02-09 | 2025-03-09 |  |  | MOB-50 | MB |  | Each | Mob | MB | MOB |  |
| MOB-60 |  | Mobilization of Major Equipments |  | 24d | 2025-02-09 A | 2025-03-12 A | MOB-20 | 100% | 2025-02-09 | 2025-03-09 |  |  | MOB-60 | MB |  | Each | Mob | MB | MOB |  |
| MOB-70 |  | Installation Project Sign Board |  | 24d | 2025-02-09 A | 2025-03-12 A | MOB-10 | 100% | 2025-02-09 | 2025-03-09 |  |  | MOB-70 | MB |  |  | Mob | MB | MOB |  |
| MOB-80 |  | Construction Site Access Roads |  | 24d | 2025-02-09 A | 2025-03-12 A | MOB-10 | 100% | 2025-02-09 | 2025-03-09 |  |  | MOB-80 |  |  |  |  | MB | MOB |  |
|  | 2 | **Project Documents Provision From The Employer** |  |  | 2025-01-12 | 2025-02-12 |  |  |  |  |  |  |  |  |  |  |  |  |  |  |
| PRE-EMP-MDC-10 |  | Receive of Approved Project Master Plans of works (IFC) From The Employer | milestone | 0d | 2025-01-12 A | 2025-01-12 A | PRE-EMP-MDC-20 SS | 100% |  |  |  |  | PRE-EMP-MDC-10 | NOC |  |  | NOC | MS | MS | ER |
| PRE-EMP-MDC-20 |  | Receive of Site Benchmark Coordinates (Original Point) From The Employer | milestone | 0d | 2025-02-12 A | 2025-02-12 A | MS-CS-PS SS | 100% | 2025-01-12 | 2025-01-12 |  |  | PRE-EMP-MDC-20 | GN |  |  |  | MS | MS |  |
| PRE-EMP-MDC-30 |  | Receive of Site Surveying Details From The Employer | milestone | 0d | 2025-02-12 A | 2025-02-12 A | PRE-EMP-MDC-20 SS | 100% | 2025-01-12 | 2025-01-12 |  |  | PRE-EMP-MDC-30 | GN |  |  |  | MS | MS |  |
|  | 1 | **Project Main Documents From The Contractor** |  |  | 2025-01-12 | 2025-03-02 |  |  |  |  |  |  |  |  |  |  |  |  |  |  |
| PRE-CON-MDC-20 |  | Submission Project Baseline Schedule |  | 26d | 2025-01-12 A | 2025-03-01 A | MS-CS-PS SS | 100% | 2025-01-12 | 2025-02-10 |  |  | PRE-CON-MDC-20 |  |  |  |  | MB | MOB |  |
| PRE-CON-MDC-30 |  | Submission Project Health & Safety Plan |  | 26d | 2025-01-12 A | 2025-03-02 A | MS-CS-PS SS | 100% | 2025-01-12 | 2025-02-10 |  |  | PRE-CON-MDC-30 |  |  |  |  | MB | MOB |  |
| PRE-CON-MDC-40 |  | Submission Project Quality Control Plan |  | 26d | 2025-01-12 A | 2025-03-02 A | MS-CS-PS SS | 100% | 2025-01-12 | 2025-02-10 |  |  | PRE-CON-MDC-40 |  |  |  |  | MB | MOB |  |
| PRE-CON-MDC-50 |  | Submission Project Surveying Report |  | 26d | 2025-01-12 A | 2025-03-02 A | MS-CS-PS SS | 100% | 2025-01-12 | 2025-02-10 |  |  | PRE-CON-MDC-50 |  |  |  |  | MB | MOB |  |
| PRE-CON-MDC-60 |  | Submission Project Geotechnical Soil Report |  | 26d | 2025-01-12 A | 2025-03-02 A | MS-CS-PS SS | 100% | 2025-01-12 | 2025-02-10 |  |  | PRE-CON-MDC-60 |  |  |  |  | MB | MOB |  |
| PRE-CON-MDC-70 |  | Submission Project Environmental Plan |  | 26d | 2025-01-12 A | 2025-03-02 A | MS-CS-PS SS | 100% | 2025-01-12 | 2025-02-10 |  |  | PRE-CON-MDC-70 |  |  |  |  | MB | MOB |  |
| PRE-CON-MDC-80 |  | Submission Project Organization Chart and Communications Plan |  | 26d | 2025-01-12 A | 2025-03-02 A | MS-CS-PS SS | 100% | 2025-01-12 | 2025-02-10 |  |  | PRE-CON-MDC-80 |  |  |  |  | MB | MOB |  |

| ID | WBS | Activity | Duration | Start | Finish | Predecessors | Complete | Activity ID N | 02- Network-WBS | 03- Activity | 04-UOM | 05-Discipline | 01- Network | 08 Stage | Discipline |
| --- | --- | --- | --- | --- | --- | --- | --- | --- | --- | --- | --- | --- | --- | --- | --- |
|  | ENG | **Engineering Works** |  | 2025-01-12 | 2025-06-02 |  |  |  |  |  |  |  |  |  |  |
|  | DS | **Design Reviews** |  | 2025-01-12 | 2025-01-21 |  |  |  |  |  |  |  |  |  |  |
|  | INF | **Infrastructure Networks** |  | 2025-01-12 | 2025-01-21 |  |  |  |  |  |  |  |  |  |  |
|  | RD | **Road Works** |  | 2025-01-12 | 2025-01-21 |  |  |  |  |  |  |  |  |  |  |
| ENG-DS-RD-S-100 |  | Receive of Design Drawing Package for Road Works from Modon | 6d | 2025-01-12 A | 2025-01-18 A | PRE-EMP-MDC-10, PRE-EMP-MDC-20, PRE-EMP-MDC-30 | 100% | ENG-DS-RD-S-100 | DSN | DSS | Each | S | RD | EN | ENG |
| ENG-DS-RD-A-110 |  | Review and Comment of Design Drawings for Road Works by Contractor | 6d | 2025-01-15 A | 2025-01-21 A | ENG-DS-RD-S-100 FF+3d, ENG-DS-RD-S-100 SS+3d | 100% | ENG-DS-RD-A-110 | DSN | DSA | Each | A | RD | EN | ENG |
|  | SW | **Sewage Network** |  | 2025-01-12 | 2025-01-21 |  |  |  |  |  |  |  |  |  |  |
| ENG-DS-SW-S-100 |  | Receive of Design Drawing Package for Sewage Network from Modon | 6d | 2025-01-12 A | 2025-01-18 A | PRE-EMP-MDC-10, PRE-EMP-MDC-20, PRE-EMP-MDC-30 | 100% | ENG-DS-SW-S-100 | DSN | DSS | Each | S | SW | EN | ENG |
| ENG-DS-SW-A-110 |  | Review and Comment of Design Drawings for Sewage Network by Contractor | 6d | 2025-01-15 A | 2025-01-21 A | ENG-DS-SW-S-100 FF+3d, ENG-DS-SW-S-100 SS+3d | 100% | ENG-DS-SW-A-110 | DSN | DSA | Each | A | SW | EN | ENG |
|  | SD | **Storm Drainage Network** |  | 2025-01-12 | 2025-01-21 |  |  |  |  |  |  |  |  |  |  |
| ENG-DS-SD-S-100 |  | Receive of Design Drawing Package for Storm Drainage Network from Modon | 6d | 2025-01-12 A | 2025-01-18 A | PRE-EMP-MDC-10, PRE-EMP-MDC-20, PRE-EMP-MDC-30 | 100% | ENG-DS-SD-S-100 | DSN | DSS | Each | S | SD | EN | ENG |
| ENG-DS-SD-A-110 |  | Review and Comment of Design Drawings for Storm Drainage Network by Contractor | 6d | 2025-01-15 A | 2025-01-21 A | ENG-DS-SD-S-100 FF+3d, ENG-DS-SD-S-100 SS+3d | 100% | ENG-DS-SD-A-110 | DSN | DSA | Each | A | SD | EN | ENG |
|  | PW | **Potable Water Network** |  | 2025-01-12 | 2025-01-21 |  |  |  |  |  |  |  |  |  |  |
| ENG-DS-PW-S-100 |  | Receive of Design Drawing Package for Potable Water Network from Modon | 6d | 2025-01-12 A | 2025-01-18 A | PRE-EMP-MDC-10, PRE-EMP-MDC-20 | 100% | ENG-DS-PW-S-100 | DSN | DSS | Each | S | PW | EN | ENG |
| ENG-DS-PW-A-110 |  | Review and Comment of Design Drawings for Potable Water Network by Contractor | 6d | 2025-01-15 A | 2025-01-21 A | ENG-DS-PW-S-100 FF+3d, ENG-DS-PW-S-100 SS+3d | 100% | ENG-DS-PW-A-110 | DSN | DSA | Each | A | PW | EN | ENG |
|  | IR | **Irrigation Network** |  | 2025-01-12 | 2025-01-21 |  |  |  |  |  |  |  |  |  |  |
| ENG-DS-IR-S-100 |  | Receive of Design Drawing Package for Irrigation Network from Modon | 6d | 2025-01-12 A | 2025-01-18 A | PRE-EMP-MDC-10, PRE-EMP-MDC-20, PRE-EMP-MDC-30 | 100% | ENG-DS-IR-S-100 | DSN | DSS | Each | S | IR | EN | ENG |
| ENG-DS-IR-A-110 |  | Review and Comment of Design Drawings for Irrigation Network by Contractor | 6d | 2025-01-15 A | 2025-01-21 A | ENG-DS-IR-S-100 FF+3d, ENG-DS-IR-S-100 SS+3d | 100% | ENG-DS-IR-A-110 | DSN | DSA | Each | A | IR | EN | ENG |
|  | MV | **Medium Voltage Network** |  | 2025-01-12 | 2025-01-21 |  |  |  |  |  |  |  |  |  |  |
| ENG-DS-MV-S-100 |  | Receive of Design Drawing Package for Medium Voltage Network from Modon | 6d | 2025-01-12 A | 2025-01-18 A | PRE-EMP-MDC-10, PRE-EMP-MDC-20, PRE-EMP-MDC-30 | 100% | ENG-DS-MV-S-100 | DSN | DSS | Each | S | MV | EN | ENG |
| ENG-DS-MV-A-110 |  | Review and Comment of Design Drawings for Medium Voltage Network by Contractor | 6d | 2025-01-15 A | 2025-01-21 A | ENG-DS-MV-S-100 FF+3d, ENG-DS-MV-S-100 SS+3d | 100% | ENG-DS-MV-A-110 | DSN | DSA | Each | A | MV | EN | ENG |
|  | SL | **Street Lighting Network** |  | 2025-01-12 | 2025-01-21 |  |  |  |  |  |  |  |  |  |  |
| ENG-DS-SL-S-100 |  | Receive of Design Drawing Package for Street Lighting Network from Modon | 6d | 2025-01-12 A | 2025-01-18 A | PRE-EMP-MDC-10, PRE-EMP-MDC-20, PRE-EMP-MDC-30 | 100% | ENG-DS-SL-S-100 | DSN | DSS | Each | S | SL | EN | ENG |
| ENG-DS-SL-A-110 |  | Review and Comment of Design Drawings for Street Lighting Network by Contractor | 6d | 2025-01-15 A | 2025-01-21 A | ENG-DS-SL-S-100 FF+3d, ENG-DS-SL-S-100 SS+3d | 100% | ENG-DS-SL-A-110 | DSN | DSA | Each | A | SL | EN | ENG |

| ID | WBS | Activity | Duration | Start | Finish | Predecessors | Complete | Planned start | Planned finish | Activity ID N | 02- Network-WBS | 03- Activity | 04-UOM | 05-Discipline | 01- Network | 08 Stage | Discipline |
| --- | --- | --- | --- | --- | --- | --- | --- | --- | --- | --- | --- | --- | --- | --- | --- | --- | --- |
|  | TE | **Telecom Network** |  | 2025-01-12 | 2025-01-21 |  |  |  |  |  |  |  |  |  |  |  |  |
| ENG-DS-TE-S-100 |  | Receive of Design Drawing Package for Telecom Network from Modon | 6d | 2025-01-12 A | 2025-01-18 A | PRE-EMP-MDC-10, PRE-EMP-MDC-20, PRE-EMP-MDC-30 | 100% |  |  | ENG-DS-TE-S-100 | DSN | DSS | Each | S | TE | EN | ENG |
| ENG-DS-TE-A-110 |  | Review and Comment of Design Drawings for Telecom Network by Contractor | 6d | 2025-01-15 A | 2025-01-21 A | ENG-DS-TE-S-100 FF+3d, ENG-DS-TE-S-100 SS+3d | 100% |  |  | ENG-DS-TE-A-110 | DSN | DSA | Each | A | TE | EN | ENG |
|  | 1 | **Superstructure Works** |  | 2025-01-12 | 2025-01-21 |  |  |  |  |  |  |  |  |  |  |  |  |
|  | SL | **Sewage Pump Stations ( PS06 )** |  | 2025-01-12 | 2025-01-21 |  |  |  |  |  |  |  |  |  |  |  |  |
| ENG-DS-SPS-S-100 |  | Receive of Design Drawing Package for Sewage Pump Stations from Modon | 6d | 2025-01-12 A | 2025-01-18 A | PRE-EMP-MDC-10, PRE-EMP-MDC-20, PRE-EMP-MDC-30 | 100% |  |  | ENG-DS-SPS-S-100 | DSN | DSS | Each | S | SL | EN | ENG |
| ENG-DS-SPS-A-110 |  | Review and Comment of Design Drawings for Sewage Pump Stations by Contractor | 6d | 2025-01-15 A | 2025-01-21 A | ENG-DS-SPS-S-100 FF+3d, ENG-DS-SPS-S-100 SS | 100% |  |  | ENG-DS-SPS-A-110 | DSN | DSA | Each | A | SL | EN | ENG |
|  | TE | **Storm Drainage Ponds ( PO-J1 , PO-J2 )** |  | 2025-01-12 | 2025-01-21 |  |  |  |  |  |  |  |  |  |  |  |  |
| ENG-DS-DPO-S-100 |  | Receive of Design Drawing Package for Storm Drainage Ponds from Modon | 6d | 2025-01-12 A | 2025-01-18 A | PRE-EMP-MDC-10, PRE-EMP-MDC-20, PRE-EMP-MDC-30 | 100% |  |  | ENG-DS-DPO-S-100 | DSN | DSS | Each | S | TE | EN | ENG |
| ENG-DS-DPO-A-110 |  | Review and Comment of Design Drawings for Storm Drainage Ponds by Contractor | 6d | 2025-01-15 A | 2025-01-21 A | ENG-DS-DPO-S-100 FF+3d, ENG-DS-DPO-S-100 SS | 100% |  |  | ENG-DS-DPO-A-110 | DSN | DSA | Each | A | TE | EN | ENG |
|  | SD | **Shop Drawings** |  | 2025-01-22 | 2025-05-19 |  |  |  |  |  |  |  |  |  |  |  |  |
|  | INF | **Infrastructure Networks** |  | 2025-01-22 | 2025-05-19 |  |  |  |  |  |  |  |  |  |  |  |  |
|  | 10 | **Road Works** |  | 2025-01-22 | 2025-05-19 |  |  |  |  |  |  |  |  |  |  |  |  |
|  | 1 | **Road Pavement Works** |  | 2025-01-22 | 2025-05-19 |  |  |  |  |  |  |  |  |  |  |  |  |
| ENG-SH-RD-S-100 |  | Submission Shop Drawings for Plan and Profile of Road Works | 7d | 2025-01-22 A | 2025-01-29 A | ENG-DS-RD-A-110 | 100% |  |  | ENG-SH-RD-S-100 | SD | SDS | Each | S | RD | EN | ENG |
| ENG-SH-RD-S-110 |  | Submission Shop Drawings for Roads Typical Sections and Pavement Details | 7d | 2025-01-22 A | 2025-01-29 A | ENG-DS-RD-A-110 | 100% |  |  | ENG-SH-RD-S-110 | SD | SDS | Each | S | RD | EN | ENG |
| ENG-SH-RD-S-120 |  | Submission Shop Drawings of Extraover for Pedestrian ramps | 7d | 2025-01-22 A | 2025-01-29 A | ENG-DS-RD-A-110 | 100% |  |  | ENG-SH-RD-S-120 | SD | SDS | Each | S | RD | EN | ENG |
| ENG-SH-RD-S-130 |  | Submission Shop Drawings for Intersections of Road Works | 7d | 2025-01-22 A | 2025-01-29 A | ENG-DS-RD-A-110 | 100% |  |  | ENG-SH-RD-S-130 | SD | SDS | Each | S | RD | EN | ENG |
| ENG-SH-RD-A-100 |  | Approval Shop Drawings for Plan and Profile of Road Works | 8d | 2025-01-29 A | 2025-02-09 A | ENG-SH-RD-S-100 | 100% | 2025-01-30 | 2025-02-08 | ENG-SH-RD-A-100 | SD | SDA | Each | A | RD | EN | ENG |
| ENG-SH-RD-A-110 |  | Approval Shop Drawings for Roads Typical Sections and Pavement Details | 10d | 2025-01-30 A | 2025-03-19 A | ENG-SH-RD-S-110 | 100% | 2025-01-30 | 2025-02-10 | ENG-SH-RD-A-110 | SD | SDA | Each | A | RD | EN | ENG |
| ENG-SH-RD-A-120 |  | Approval Shop Drawings of Extraover for Pedestrian ramps | 10d | 2025-01-30 A | 2025-03-19 A | ENG-SH-RD-S-120 | 100% | 2025-01-30 | 2025-02-10 | ENG-SH-RD-A-120 | SD | SDA | Each | A | RD | EN | ENG |
| ENG-SH-RD-A-130 |  | Approval Shop Drawings for Intersections of Road Works | 10d | 2025-01-30 A | 2025-05-19 A | ENG-SH-RD-S-130, ENG-SH-RD-A-100 FF | 100% | 2025-01-30 | 2025-02-10 | ENG-SH-RD-A-130 | SD | SDA | Each | A | RD | EN | ENG |
|  | 10 | **Pavement Works** |  | 2025-01-22 | 2025-03-19 |  |  |  |  |  |  |  |  |  |  |  |  |
| ENG-SH-HS-S-100 |  | Submission Shop Drawings for Hardscaping Works | 6d | 2025-01-22 A | 2025-01-28 A | ENG-DS-RD-A-110 | 100% |  |  | ENG-SH-HS-S-100 | SD | SDS | Each | S | RD | EN | ENG |
| ENG-SH-HS-A-110 |  | Approval Shop Drawings for Hardscaping Works | 10d | 2025-01-29 A | 2025-03-19 A | ENG-SH-HS-S-100 | 100% | 2025-01-29 | 2025-02-09 | ENG-SH-HS-A-110 | SD | SDA | Each | A | RD | EN | ENG |

| ID | WBS | Activity | Duration | Start | Finish | Predecessors | Complete | Planned start | Planned finish | Activity ID N | 02- Network-WBS | 03- Activity | 04-UOM | 05-Discipline | 01- Network | 08 Stage | Discipline |
| --- | --- | --- | --- | --- | --- | --- | --- | --- | --- | --- | --- | --- | --- | --- | --- | --- | --- |
|  | 11 | **Traffic Sign Boards and Road Marking** |  | 2025-01-22 | 2025-03-19 |  |  |  |  |  |  |  |  |  |  |  |  |
| ENG-SH-MRK-S-110 |  | Submission Shop Drawings for Roads Markings | 6d | 2025-01-22 A | 2025-01-28 A | ENG-DS-RD-A-110 | 100% |  |  | ENG-SH-MRK-S-110 | SD | SDS | Each | S | RD | EN | ENG |
| ENG-SH-TSB-S-100 |  | Submission Shop Drawings for Traffic Signs Boards | 6d | 2025-01-22 A | 2025-01-29 A | ENG-DS-RD-A-110 | 100% | 2025-01-22 | 2025-01-28 | ENG-SH-TSB-S-100 | SD | SDS | Each | S | RD | EN | ENG |
| ENG-SH-MRK-A-110 |  | Approval Shop Drawings for Roads Markings | 10d | 2025-01-29 A | 2025-03-19 A | ENG-SH-MRK-S-110, ENG-SH-TSB-A-100 FF | 100% | 2025-01-29 | 2025-02-09 | ENG-SH-MRK-A-110 | SD | SDA | Each | A | RD | EN | ENG |
| ENG-SH-TSB-A-100 |  | Approval Shop Drawings for Traffic Signs Boards | 10d | 2025-01-29 A | 2025-03-19 A | ENG-SH-TSB-S-100 | 100% | 2025-01-29 | 2025-02-09 | ENG-SH-TSB-A-100 | SD | SDA | Each | A | RD | EN | ENG |
|  | 2 | **Sewage Network** |  | 2025-01-22 | 2025-04-28 |  |  |  |  |  |  |  |  |  |  |  |  |
|  | 1 | **Main Line Sections** |  | 2025-01-22 | 2025-04-28 |  |  |  |  |  |  |  |  |  |  |  |  |
| ENG-SH-SW-ML-S-100 |  | Submission Shop Drawings for Main Line of Sewage Network | 5d | 2025-01-22 A | 2025-01-27 A | ENG-DS-SW-A-110 | 100% |  |  | ENG-SH-SW-ML-S-100 | SD | SDS | Each | S | SW | EN | ENG |
| ENG-SH-SW-ML-A-110 |  | Approval Shop Drawings for Main Line of Sewage Network | 7d | 2025-01-28 A | 2025-04-28 A | ENG-SH-SW-ML-S-100 | 100% | 2025-01-28 | 2025-02-04 | ENG-SH-SW-ML-A-110 | SD | SDA | Each | A | SW | EN | ENG |
|  | 9 | **Storm Drainage Network** |  | 2025-01-22 | 2025-02-09 |  |  |  |  |  |  |  |  |  |  |  |  |
|  | 1 | **Main Line Sections** |  | 2025-01-22 | 2025-02-09 |  |  |  |  |  |  |  |  |  |  |  |  |
| ENG-SH-SD-ML-S-100 |  | Submission Shop Drawings for Main Line of Storm Drainage Network | 6d | 2025-01-22 A | 2025-01-28 A | ENG-DS-SD-A-110 | 100% |  |  | ENG-SH-SD-ML-S-100 | SD | SDS | Each | S | SD | EN | ENG |
| ENG-SH-SD-ML-A-110 |  | Approval Shop Drawings for Main Line of Storm Drainage Network | 10d | 2025-01-29 A | 2025-02-09 A | ENG-SH-SD-ML-S-100 | 100% |  |  | ENG-SH-SD-ML-A-110 | SD | SDA | Each | A | SD | EN | ENG |
|  | 2 | **Catch Basin Sections** |  | 2025-01-22 | 2025-02-09 |  |  |  |  |  |  |  |  |  |  |  |  |
| ENG-SH-SD-CB-S-100 |  | Submission Shop Drawings for Catch Basin of Storm Drainage Network | 6d | 2025-01-22 A | 2025-01-28 A | ENG-DS-SD-A-110 | 100% |  |  | ENG-SH-SD-CB-S-100 | SD | SDS | Each | S | SD | EN | ENG |
| ENG-SH-SD-CB-A-110 |  | Approval Shop Drawings for Catch Basin of Storm Drainage Network | 10d | 2025-01-29 A | 2025-02-09 A | ENG-SH-SD-CB-S-100 | 100% |  |  | ENG-SH-SD-CB-A-110 | SD | SDA | Each | A | SD | EN | ENG |
|  | 3 | **Potable Water Network** |  | 2025-01-22 | 2025-05-13 |  |  |  |  |  |  |  |  |  |  |  |  |
|  | 1 | **Main Line Sections** |  | 2025-01-22 | 2025-05-13 |  |  |  |  |  |  |  |  |  |  |  |  |
| ENG-SH-PW-ML-S-100 |  | Submission Shop Drawings for Main Line of Potable Water Network | 5d | 2025-01-22 A | 2025-01-27 A | ENG-DS-PW-A-110 | 100% |  |  | ENG-SH-PW-ML-S-100 | SD | SDS | Each | S | PW | EN | ENG |
| ENG-SH-PW-ML-A-110 |  | Approval Shop Drawings for Main Line of Potable Water Network | 10d | 2025-01-28 A | 2025-05-13 A | ENG-SH-PW-ML-S-100 | 100% | 2025-01-28 | 2025-02-08 | ENG-SH-PW-ML-A-110 | SD | SDA | Each | A | PW | EN | ENG |
|  | 1 | **Main Line Sections** |  |  |  |  |  |  |  |  |  |  |  |  |  |  |  |
|  | 2 | **Fire Hydrant** |  | 2025-01-22 | 2025-04-02 |  |  |  |  |  |  |  |  |  |  |  |  |
| ENG-SH-PW-FH-S-100 |  | Submission Shop Drawings for Fire Hydrant Network | 5d | 2025-01-22 A | 2025-01-27 A | ENG-DS-PW-A-110 | 100% |  |  | ENG-SH-PW-FH-S-100 | SD | SDS | Each | S | PW | EN | ENG |
| ENG-SH-PW-FH-A-110 |  | Approval Shop Drawings for Fire Hydrant Network | 10d | 2025-01-28 A | 2025-04-02 A | ENG-SH-PW-FH-S-100 | 100% | 2025-01-28 | 2025-02-08 | ENG-SH-PW-FH-A-110 | SD | SDA | Each | A | PW | EN | ENG |

| ID | WBS | Activity | Duration | Start | Finish | Predecessors | Complete | Planned start | Planned finish | Activity ID N | 02- Network-WBS | 03- Activity | 04-UOM | 05-Discipline | 01- Network | 08 Stage | Discipline |
| --- | --- | --- | --- | --- | --- | --- | --- | --- | --- | --- | --- | --- | --- | --- | --- | --- | --- |
|  | 1 | **Main Line Sections** |  |  |  |  |  |  |  |  |  |  |  |  |  |  |  |
|  | 4 | **Irrigation Network** |  | 2025-01-22 | 2025-04-28 |  |  |  |  |  |  |  |  |  |  |  |  |
|  | 1 | **Main Line Sections** |  | 2025-01-22 | 2025-04-27 |  |  |  |  |  |  |  |  |  |  |  |  |
| ENG-SH-IR-ML-S-100 |  | Submission Shop Drawings for Main Line of Irrigation Network | 6d | 2025-01-22 A | 2025-01-28 A | ENG-DS-IR-A-110 | 100% |  |  | ENG-SH-IR-ML-S-100 | SD | SDS | Each | S | IR | EN | ENG |
| ENG-SH-IR-ML-A-110 |  | Approval Shop Drawings for Main Line of Irrigation Network | 10d | 2025-01-29 A | 2025-04-27 A | ENG-SH-IR-ML-S-100 | 100% | 2025-01-29 | 2025-02-09 | ENG-SH-IR-ML-A-110 | SD | SDA | Each | A | IR | EN | ENG |
|  | 2 | **Lateral Line Sections** |  | 2025-01-22 | 2025-04-28 |  |  |  |  |  |  |  |  |  |  |  |  |
| ENG-SH-IR-LL-S-100 |  | Submission Shop Drawings for Lateral Line of Irrigation Network | 6d | 2025-01-22 A | 2025-01-28 A | ENG-DS-IR-A-110 | 100% |  |  | ENG-SH-IR-LL-S-100 | SD | SDS | Each | S | IR | EN | ENG |
| ENG-SH-IR-LL-A-110 |  | Approval Shop Drawings for Lateral Line of Irrigation Network | 10d | 2025-01-29 A | 2025-04-28 A | ENG-SH-IR-LL-S-100 | 100% | 2025-01-29 | 2025-02-09 | ENG-SH-IR-LL-A-110 | SD | SDA | Each | A | IR | EN | ENG |
|  | 5 | **Medium Voltage Network** |  | 2025-01-22 | 2025-02-09 |  |  |  |  |  |  |  |  |  |  |  |  |
| ENG-SH-MV-S-100 |  | Submission Shop Drawings for Medium Voltage Network | 6d | 2025-01-22 A | 2025-01-28 A | ENG-DS-MV-A-110 | 100% |  |  | ENG-SH-MV-S-100 | SD | SDS | Each | S | MV | EN | ENG |
| ENG-SH-MV-A-110 |  | Approval Shop Drawings for Medium Voltage Network | 10d | 2025-01-29 A | 2025-02-09 A | ENG-SH-MV-S-100 | 100% |  |  | ENG-SH-MV-A-110 | SD | SDA | Each | A | MV | EN | ENG |
|  | 7 | **Street Lighting Network** |  | 2025-01-22 | 2025-02-09 |  |  |  |  |  |  |  |  |  |  |  |  |
| ENG-SH-SL-S-100 |  | Submission Shop Drawings for Street Lighting Network | 6d | 2025-01-22 A | 2025-01-28 A | ENG-DS-SL-A-110 | 100% |  |  | ENG-SH-SL-S-100 | SD | SDS | Each | S | SL | EN | ENG |
| ENG-SH-SL-A-110 |  | Approval Shop Drawings for Street Lighting Network | 10d | 2025-01-29 A | 2025-02-09 A | ENG-SH-SL-S-100 | 100% |  |  | ENG-SH-SL-A-110 | SD | SDA | Each | A | SL | EN | ENG |
|  | 8 | **Telecom Network** |  | 2025-01-22 | 2025-02-09 |  |  |  |  |  |  |  |  |  |  |  |  |
| ENG-SH-CTV-S-100 |  | Submission Shop Drawings for CCTV Complete System | 6d | 2025-01-22 A | 2025-01-28 A | ENG-DS-TE-A-110 | 100% |  |  | ENG-SH-CTV-S-100 | SD | SDS | Each | S | TE | EN | ENG |
| ENG-SH-TE-S-100 |  | Submission Shop Drawings for Telecom Network | 6d | 2025-01-22 A | 2025-01-28 A | ENG-DS-TE-A-110 | 100% |  |  | ENG-SH-TE-S-100 | SD | SDS | Each | S | TE | EN | ENG |
| ENG-SH-CTV-A-110 |  | Approval Shop Drawings for CCTV Complete System | 10d | 2025-01-29 A | 2025-02-09 A | ENG-SH-CTV-S-100 | 100% |  |  | ENG-SH-CTV-A-110 | SD | SDA | Each | A | TE | EN | ENG |
| ENG-SH-TE-A-110 |  | Approval Shop Drawings for Telecom Network | 10d | 2025-01-29 A | 2025-02-09 A | ENG-SH-TE-S-100 | 100% |  |  | ENG-SH-TE-A-110 | SD | SDA | Each | A | TE | EN | ENG |
|  | 1 | **Superstructure Works** |  | 2025-01-22 | 2025-02-10 |  |  |  |  |  |  |  |  |  |  |  |  |
|  | SL | **Sewage Pump Stations ( PS 06 )** |  | 2025-01-22 | 2025-02-10 |  |  |  |  |  |  |  |  |  |  |  |  |
| ENG-SH-SPS-S-110 |  | Submission Shop Drawings Package for Sewage Pump Stations | 7d | 2025-01-22 A | 2025-01-29 A | ENG-DS-SPS-A-110 | 100% |  |  | ENG-SH-SPS-S-110 | DSN | DSS | Each | S | SL | EN | ENG |
| ENG-SH-SPS-A-110 |  | Approval Shop Drawings Package for Sewage Pump Stations | 10d | 2025-01-30 A | 2025-02-10 A | ENG-SH-SPS-S-110 | 100% |  |  | ENG-SH-SPS-A-110 | DSN | DSA | Each | A | SL | EN | ENG |
|  | TE | **Storm Drainage Ponds ( PO-J1 , PO-J2 )** |  | 2025-01-22 | 2025-02-10 |  |  |  |  |  |  |  |  |  |  |  |  |
| ENG-SH-DPO-S-100 |  | Submission Shop Drawings Package for Storm Drainage Ponds | 7d | 2025-01-22 A | 2025-01-29 A | ENG-DS-DPO-A-110 | 100% |  |  | ENG-SH-DPO-S-100 | DSN | DSS | Each | S | TE | EN | ENG |
| ENG-SH-DPO-A-110 |  | Approval Shop Drawings Package for Storm Drainage Ponds | 10d | 2025-01-30 A | 2025-02-10 A | ENG-SH-DPO-S-100 | 100% |  |  | ENG-SH-DPO-A-110 | DSN | DSA | Each | A | TE | EN | ENG |

| ID | WBS | Activity | Duration | Start | Finish | Predecessors | Complete | Planned start | Planned finish | Activity ID N | 02- Network-WBS | 03- Activity | 04-UOM | 05-Discipline | 01- Network | 08 Stage | Discipline |
| --- | --- | --- | --- | --- | --- | --- | --- | --- | --- | --- | --- | --- | --- | --- | --- | --- | --- |
|  | SD1 | **Method Statements** |  | 2025-01-22 | 2025-02-10 |  |  |  |  |  |  |  |  |  |  |  |  |
|  | INF | **Infrastructure Networks** |  | 2025-01-22 | 2025-02-10 |  |  |  |  |  |  |  |  |  |  |  |  |
|  | 10 | **Road Works** |  | 2025-01-22 | 2025-02-10 |  |  |  |  |  |  |  |  |  |  |  |  |
|  | 1 | **Road Pavement Works** |  | 2025-01-22 | 2025-02-10 |  |  |  |  |  |  |  |  |  |  |  |  |
| ENG-MS-RD-S-10 |  | Submission Method Statement for Plan and Profile of Road Works | 7d | 2025-01-22 A | 2025-01-29 A | ENG-DS-RD-A-110 | 100% |  |  | ENG-MS-RD-S-10 | SD | SDS | Each | S | RD | EN | ENG |
| ENG-MS-RD-S-20 |  | Submission Method Statement for Roads Typical Sections and Pavement Details | 7d | 2025-01-22 A | 2025-01-29 A | ENG-DS-RD-A-110 | 100% |  |  | ENG-MS-RD-S-20 | SD | SDS | Each | S | RD | EN | ENG |
| ENG-MS-RD-S-30 |  | Submission Method Statement of Extraover for Pedestrian ramps | 7d | 2025-01-22 A | 2025-01-29 A | ENG-DS-RD-A-110 | 100% |  |  | ENG-MS-RD-S-30 | SD | SDS | Each | S | RD | EN | ENG |
| ENG-MS-RD-S-40 |  | Submission Method Statement for Intersections of Road Works | 7d | 2025-01-22 A | 2025-01-29 A | ENG-DS-RD-A-110 | 100% |  |  | ENG-MS-RD-S-40 | SD | SDS | Each | S | RD | EN | ENG |
| ENG-MS-RD-A-10 |  | Approval Method Statement for Plan and Profile of Road Works | 8d | 2025-01-30 A | 2025-02-10 A | ENG-MS-RD-S-10 | 100% | 2025-01-30 | 2025-02-08 | ENG-MS-RD-A-10 | SD | SDA | Each | A | RD | EN | ENG |
| ENG-MS-RD-A-20 |  | Approval Method Statement for Roads Typical Sections and Pavement Details | 10d | 2025-01-30 A | 2025-02-10 A | ENG-MS-RD-S-20 | 100% |  |  | ENG-MS-RD-A-20 | SD | SDA | Each | A | RD | EN | ENG |
| ENG-MS-RD-A-30 |  | Approval Method Statement of Extraover for Pedestrian ramps | 10d | 2025-01-30 A | 2025-02-10 A | ENG-MS-RD-S-30 | 100% |  |  | ENG-MS-RD-A-30 | SD | SDA | Each | A | RD | EN | ENG |
| ENG-MS-RD-A-40 |  | Approval Method Statement for Intersections of Road Works | 10d | 2025-01-30 A | 2025-02-10 A | ENG-MS-RD-S-40, ENG-MS-RD-A-10 FF | 100% |  |  | ENG-MS-RD-A-40 | SD | SDA | Each | A | RD | EN | ENG |
|  | 10 | **Pavement Works** |  | 2025-01-22 | 2025-02-10 |  |  |  |  |  |  |  |  |  |  |  |  |
| ENG-MS-HS-S-10 |  | Submission Method Statement for Hardscaping Works | 7d | 2025-01-22 A | 2025-01-29 A | ENG-DS-RD-A-110 | 100% |  |  | ENG-MS-HS-S-10 | SD | SDS | Each | S | RD | EN | ENG |
| ENG-MS-HS-A-10 |  | Approval Method Statement for Hardscaping Works | 10d | 2025-01-30 A | 2025-02-10 A | ENG-MS-HS-S-10 | 100% |  |  | ENG-MS-HS-A-10 | SD | SDA | Each | A | RD | EN | ENG |
|  | 11 | **Traffic Sign Boards and Road Marking** |  | 2025-01-22 | 2025-02-10 |  |  |  |  |  |  |  |  |  |  |  |  |
| ENG-MS-MRK-S-10 |  | Submission Method Statement for Roads Markings | 7d | 2025-01-22 A | 2025-01-29 A | ENG-DS-RD-A-110 | 100% |  |  | ENG-MS-MRK-S-10 | SD | SDS | Each | S | RD | EN | ENG |
| ENG-MS-TSB-S-10 |  | Submission Method Statement for Traffic Signs Boards | 7d | 2025-01-22 A | 2025-01-29 A | ENG-DS-RD-A-110 | 100% |  |  | ENG-MS-TSB-S-10 | SD | SDS | Each | S | RD | EN | ENG |
| ENG-MS-MRK-A-10 |  | Approval Method Statement for Roads Markings | 10d | 2025-01-30 A | 2025-02-10 A | ENG-MS-MRK-S-10, ENG-MS-TSB-A-10 FF | 100% |  |  | ENG-MS-MRK-A-10 | SD | SDA | Each | A | RD | EN | ENG |
| ENG-MS-TSB-A-10 |  | Approval Method Statement for Traffic Signs Boards | 10d | 2025-01-30 A | 2025-02-10 A | ENG-MS-TSB-S-10 | 100% |  |  | ENG-MS-TSB-A-10 | SD | SDA | Each | A | RD | EN | ENG |
|  | 2 | **Sewage Network** |  | 2025-01-22 | 2025-02-08 |  |  |  |  |  |  |  |  |  |  |  |  |
|  | 1 | **Main Line Sections** |  | 2025-01-22 | 2025-02-08 |  |  |  |  |  |  |  |  |  |  |  |  |
| ENG-MS-SW-ML-S-100 |  | Submission Method Statement for Main Line of Sewage Network | 5d | 2025-01-22 A | 2025-01-27 A | ENG-DS-SW-A-110 | 100% |  |  | ENG-MS-SW-ML-S-100 | SD | SDS | Each | S | SW | EN | ENG |
| ENG-MS-SW-ML-A-110 |  | Approval Method Statement for Main Line of Sewage Network | 7d | 2025-01-28 A | 2025-02-08 A | ENG-MS-SW-ML-S-100 | 100% | 2025-01-28 | 2025-02-04 | ENG-MS-SW-ML-A-110 | SD | SDA | Each | A | SW | EN | ENG |

| ID | WBS | Activity | Duration | Start | Finish | Predecessors | Complete | Activity ID N | 02- Network-WBS | 03- Activity | 04-UOM | 05-Discipline | 01- Network | 08 Stage | Discipline |
| --- | --- | --- | --- | --- | --- | --- | --- | --- | --- | --- | --- | --- | --- | --- | --- |
|  | 9 | **Storm Drainage Network** |  | 2025-01-22 | 2025-02-09 |  |  |  |  |  |  |  |  |  |  |
|  | 1 | **Main Line Sections** |  | 2025-01-22 | 2025-02-09 |  |  |  |  |  |  |  |  |  |  |
| ENG-MS-SD-ML-S-100 |  | Submission Method Statement for Main Line of Storm Drainage Network | 6d | 2025-01-22 A | 2025-01-28 A | ENG-DS-SD-A-110 | 100% | ENG-MS-SD-ML-S-100 | SD | SDS | Each | S | SD | EN | ENG |
| ENG-MS-SD-ML-A-110 |  | Approval Method Statement for Main Line of Storm Drainage Network | 10d | 2025-01-29 A | 2025-02-09 A | ENG-MS-SD-ML-S-100 | 100% | ENG-MS-SD-ML-A-110 | SD | SDA | Each | A | SD | EN | ENG |
|  | 2 | **Catch Basin Sections** |  | 2025-01-22 | 2025-02-09 |  |  |  |  |  |  |  |  |  |  |
| ENG-MS-SD-CB-S-100 |  | Submission Method Statement for Catch Basin of Storm Drainage Network | 6d | 2025-01-22 A | 2025-01-28 A | ENG-DS-SD-A-110 | 100% | ENG-MS-SD-CB-S-100 | SD | SDS | Each | S | SD | EN | ENG |
| ENG-MS-SD-CB-A-110 |  | Approval Method Statement for Catch Basin of Storm Drainage Network | 10d | 2025-01-29 A | 2025-02-09 A | ENG-MS-SD-CB-S-100 | 100% | ENG-MS-SD-CB-A-110 | SD | SDA | Each | A | SD | EN | ENG |
|  | 3 | **Potable Water Network** |  | 2025-01-22 | 2025-02-08 |  |  |  |  |  |  |  |  |  |  |
|  | 1 | **Main Line Sections** |  | 2025-01-22 | 2025-02-08 |  |  |  |  |  |  |  |  |  |  |
| ENG-MS-PW-ML-S-100 |  | Submission Method Statement for Main Line of Potable Water Network | 5d | 2025-01-22 A | 2025-01-27 A | ENG-DS-PW-A-110 | 100% | ENG-MS-PW-ML-S-100 | SD | SDS | Each | S | PW | EN | ENG |
| ENG-MS-PW-ML-A-110 |  | Approval Method Statement for Main Line of Potable Water Network | 10d | 2025-01-28 A | 2025-02-08 A | ENG-MS-PW-ML-S-100 | 100% | ENG-MS-PW-ML-A-110 | SD | SDA | Each | A | PW | EN | ENG |
|  | 4 | **Irrigation Network** |  | 2025-01-22 | 2025-02-09 |  |  |  |  |  |  |  |  |  |  |
|  | 1 | **Main Line Sections** |  | 2025-01-22 | 2025-02-09 |  |  |  |  |  |  |  |  |  |  |
| ENG-MS-IR-ML-S-100 |  | Submission Method Statement for Main Line of Irrigation Network | 6d | 2025-01-22 A | 2025-01-28 A | ENG-DS-IR-A-110 | 100% | ENG-MS-IR-ML-S-100 | SD | SDS | Each | S | IR | EN | ENG |
| ENG-MS-IR-ML-A-110 |  | Approval Method Statement for Main Line of Irrigation Network | 10d | 2025-01-29 A | 2025-02-09 A | ENG-MS-IR-ML-S-100 | 100% | ENG-MS-IR-ML-A-110 | SD | SDA | Each | A | IR | EN | ENG |
|  | 2 | **Lateral Line Sections** |  | 2025-01-22 | 2025-02-09 |  |  |  |  |  |  |  |  |  |  |
| ENG-MS-IR-LL-S-100 |  | Submission Method Statement for Lateral Line of Irrigation Network | 6d | 2025-01-22 A | 2025-01-28 A | ENG-DS-IR-A-110 | 100% | ENG-MS-IR-LL-S-100 | SD | SDS | Each | S | IR | EN | ENG |
| ENG-MS-IR-LL-A-110 |  | Approval Method Statement for Lateral Line of Irrigation Network | 10d | 2025-01-29 A | 2025-02-09 A | ENG-MS-IR-LL-S-100 | 100% | ENG-MS-IR-LL-A-110 | SD | SDA | Each | A | IR | EN | ENG |
|  | 5 | **Medium Voltage Network** |  | 2025-01-22 | 2025-02-09 |  |  |  |  |  |  |  |  |  |  |
| ENG-MS-MV-S-100 |  | Submission Method Statement for Medium Voltage Network | 6d | 2025-01-22 A | 2025-01-28 A | ENG-DS-MV-A-110 | 100% | ENG-MS-MV-S-100 | SD | SDS | Each | S | MV | EN | ENG |
| ENG-MS-MV-A-110 |  | Approval Method Statement for Medium Voltage Network | 10d | 2025-01-29 A | 2025-02-09 A | ENG-MS-MV-S-100 | 100% | ENG-MS-MV-A-110 | SD | SDA | Each | A | MV | EN | ENG |
|  | 7 | **Street Lighting Network** |  | 2025-01-22 | 2025-02-09 |  |  |  |  |  |  |  |  |  |  |
| ENG-MS-SL-S-100 |  | Submission Method Statement for Street Lighting Network | 6d | 2025-01-22 A | 2025-01-28 A | ENG-DS-SL-A-110 | 100% | ENG-MS-SL-S-100 | SD | SDS | Each | S | SL | EN | ENG |
| ENG-MS-SL-A-110 |  | Approval Method Statement for Street Lighting Network | 10d | 2025-01-29 A | 2025-02-09 A | ENG-MS-SL-S-100 | 100% | ENG-MS-SL-A-110 | SD | SDA | Each | A | SL | EN | ENG |

| ID | WBS | Activity | Duration | Start | Finish | Predecessors | Complete | Planned start | Planned finish | Activity ID N | 02- Network-WBS | 03- Activity | 04-UOM | 05-Discipline | 01- Network | 08 Stage | Discipline |
| --- | --- | --- | --- | --- | --- | --- | --- | --- | --- | --- | --- | --- | --- | --- | --- | --- | --- |
|  | 8 | **Telecom Network** |  | 2025-01-22 | 2025-02-09 |  |  |  |  |  |  |  |  |  |  |  |  |
| ENG-MS-CTV-S-100 |  | Submission Method Statement for CCTV Complete System | 6d | 2025-01-22 A | 2025-01-28 A | ENG-DS-TE-A-110 | 100% |  |  | ENG-MS-CTV-S-100 | SD | SDS | Each | S | TE | EN | ENG |
| ENG-MS-TE-S-100 |  | Submission Method Statement for Telecom Network | 6d | 2025-01-22 A | 2025-01-28 A | ENG-DS-TE-A-110 | 100% |  |  | ENG-MS-TE-S-100 | SD | SDS | Each | S | TE | EN | ENG |
| ENG-MS-CTV-A-110 |  | Approval Method Statement for CCTV Complete System | 10d | 2025-01-29 A | 2025-02-09 A | ENG-MS-CTV-S-100 | 100% |  |  | ENG-MS-CTV-A-110 | SD | SDA | Each | A | TE | EN | ENG |
| ENG-MS-TE-A-110 |  | Approval Method Statement for Telecom Network | 10d | 2025-01-29 A | 2025-02-09 A | ENG-MS-TE-S-100 | 100% |  |  | ENG-MS-TE-A-110 | SD | SDA | Each | A | TE | EN | ENG |
|  | 1 | **Superstructure Works** |  | 2025-01-22 | 2025-02-10 |  |  |  |  |  |  |  |  |  |  |  |  |
|  | SL | **Sewage Pump Stations ( PS 06 )** |  | 2025-01-22 | 2025-02-10 |  |  |  |  |  |  |  |  |  |  |  |  |
| ENG-MS-SPS-S-100 |  | Submission Method Statement Package for Sewage Pump Stations | 7d | 2025-01-22 A | 2025-01-29 A | ENG-DS-SPS-A-110 | 100% |  |  | ENG-MS-SPS-S-100 | DSN | DSS | Each | S | SL | EN | ENG |
| ENG-MS-SPS-A-110 |  | Approval Method Statement Package for Sewage Pump Stations | 10d | 2025-01-30 A | 2025-02-10 A | ENG-MS-SPS-S-100 | 100% |  |  | ENG-MS-SPS-A-110 | DSN | DSA | Each | A | SL | EN | ENG |
|  | TE | **Storm Drainage Ponds ( PO-J1 , PO-J2 )** |  | 2025-01-22 | 2025-02-10 |  |  |  |  |  |  |  |  |  |  |  |  |
| ENG-MS-DPO-S-100 |  | Submission Method Statement Package for Storm Drainage Ponds | 7d | 2025-01-22 A | 2025-01-29 A | ENG-DS-DPO-A-110 | 100% |  |  | ENG-MS-DPO-S-100 | DSN | DSS | Each | S | TE | EN | ENG |
| ENG-MS-DPO-A-110 |  | Approval Method Statement Package for Storm Drainage Ponds | 10d | 2025-01-30 A | 2025-02-10 A | ENG-MS-DPO-S-100 | 100% |  |  | ENG-MS-DPO-A-110 | DSN | DSA | Each | A | TE | EN | ENG |
|  | SD11 | **Material Submittals** |  | 2025-01-22 | 2025-06-02 |  |  |  |  |  |  |  |  |  |  |  |  |
|  | 2 | **Short Lead Time Items** |  | 2025-01-22 | 2025-06-01 |  |  |  |  |  |  |  |  |  |  |  |  |
|  | INF | **Infrastructure Networks** |  | 2025-01-22 | 2025-06-01 |  |  |  |  |  |  |  |  |  |  |  |  |
|  | 10 | **Road Works** |  | 2025-01-22 | 2025-06-01 |  |  |  |  |  |  |  |  |  |  |  |  |
|  | MS | **Submission of Material** |  | 2025-01-22 | 2025-05-27 |  |  |  |  |  |  |  |  |  |  |  |  |
|  | 1 | **Roads Works** |  | 2025-01-22 | 2025-05-26 |  |  |  |  |  |  |  |  |  |  |  |  |
| ENG-MT-RD-S-100 |  | Material Submittal for Subgrade of Road Works | 12d | 2025-01-22 A | 2025-02-04 A | ENG-DS-RD-A-110 | 100% |  |  | ENG-MT-RD-S-100 | PRC | MS | Each | S | RD | EN | ENG |
| ENG-MT-RD-S-110 |  | Material Submittal for Aggregate Base Course of Road Works | 12d | 2025-01-22 A | 2025-02-04 A | ENG-DS-RD-A-110 | 100% |  |  | ENG-MT-RD-S-110 | PRC | MS | Each | S | RD | EN | ENG |
| ENG-MT-RD-S-120 |  | Material Submittal for Prime Coat of Road Works | 12d | 2025-05-13 A | 2025-05-26 A | ENG-DS-RD-A-110 | 100% | 2025-01-22 | 2025-02-04 | ENG-MT-RD-S-120 | PRC | MS | Each | S | RD | EN | ENG |
| ENG-MT-RD-S-130 |  | Material Submittal for Bituminous Base & Wearing Courses of Road Works | 12d | 2025-05-13 A | 2025-05-26 A | ENG-DS-RD-A-110 | 100% | 2025-01-22 | 2025-02-04 | ENG-MT-RD-S-130 | PRC | MS | Each | S | RD | EN | ENG |
|  | 10 | **Pavement Works** |  | 2025-01-27 | 2025-05-27 |  |  |  |  |  |  |  |  |  |  |  |  |
| ENG-MT-RD-S-140 |  | Material Submittal for Interlock Tiles of Landscaping | 12d | 2025-01-27 A | 2025-03-15 A | ENG-DS-RD-A-110 | 100% | 2025-01-22 | 2025-02-04 | ENG-MT-RD-S-140 | PRC | MS | Each | S | RD | EN | ENG |
| ENG-MT-RD-S-150 |  | Material Submittal for Curbstones of Landscaping | 12d | 2025-04-26 A | 2025-05-27 A | ENG-DS-RD-A-110 | 100% | 2025-01-22 | 2025-02-04 | ENG-MT-RD-S-150 | PRC | MS | Each | S | RD | EN | ENG |

| ID | WBS | Activity | Duration | Start | Finish | Predecessors | Complete | Planned start | Planned finish | Resources | Cost | Actual cost | Activity ID N | 02- Network-WBS | 03- Activity | 04-UOM | 05-Discipline | 01- Network | 08 Stage | Discipline |
| --- | --- | --- | --- | --- | --- | --- | --- | --- | --- | --- | --- | --- | --- | --- | --- | --- | --- | --- | --- | --- |
|  | 11 | **Traffic Signs Boards and Roads Marking** |  | 2025-05-13 | 2025-05-26 |  |  |  |  |  |  |  |  |  |  |  |  |  |  |  |
| ENG-MT-TS-S-100 |  | Material Submittal for Traffic Signs Boards of Road Works | 12d | 2025-05-13 A | 2025-05-26 A | ENG-DS-RD-A-110 | 100% | 2025-01-22 | 2025-02-04 |  |  |  | ENG-MT-TS-S-100 | PRC | MS | Each | S | RD | EN | ENG |
| ENG-MT-TS-S-110 |  | Material Submittal for Road Markings of Road Works | 12d | 2025-05-13 A | 2025-05-25 A | ENG-DS-RD-A-110 | 100% | 2025-01-22 | 2025-02-04 |  |  |  | ENG-MT-TS-S-110 | PRC | MS | Each | S | RD | EN | ENG |
|  | NA | **Approval of Material** |  | 2025-01-27 | 2025-06-01 |  |  |  |  |  |  |  |  |  |  |  |  |  |  |  |
|  | 1 | **Road Works** |  | 2025-02-05 | 2025-06-01 |  |  |  |  |  |  |  |  |  |  |  |  |  |  |  |
| ENG-MT-RD-A-100 |  | Material Approval for Subgrade of Road Works | 5d | 2025-02-05 A | 2025-03-13 A | ENG-MT-RD-S-100 | 100% | 2025-02-05 | 2025-02-10 | 300mm thick Subgrade, including subgrade preparation, CBR?25% [49330] | 73,995 | 73,995 | ENG-MT-RD-A-100 | PRC | MA | Each | A | RD | EN | ENG |
| ENG-MT-RD-A-110 |  | Material Approval for Aggregate Base Course of Road Works | 5d | 2025-02-05 A | 2025-03-13 A | ENG-MT-RD-S-110 | 100% | 2025-02-05 | 2025-02-10 | Aggregate base course 200mm thick after compaction in two layers(Grading 1); CBR?80%; including watering, compaction and testing [23023] | 83,573.49 | 83,573.49 | ENG-MT-RD-A-110 | PRC | MA | Each | A | RD | EN | ENG |
| ENG-MT-RD-A-120 |  | Material Approval for Prime Coat of Road Works | 5d | 2025-05-27 A | 2025-06-01 A | ENG-MT-RD-S-120 | 100% | 2025-02-05 | 2025-02-10 | Aggregate base course 200mm thick after compaction in two layers(Grading 1); CBR?80%; including watering, compaction and testing [9867] | 35,817.21 | 35,817.21 | ENG-MT-RD-A-120 | PRC | MA | Each | A | RD | EN | ENG |
| ENG-MT-RD-A-130 |  | Material Approval for Bituminous Base & Wearing Courses of Road Works | 5d | 2025-05-27 A | 2025-06-01 A | ENG-MT-RD-S-130 | 100% | 2025-02-05 | 2025-02-10 | Bituminous base course(Grading I - Class A), 70mm thick after compaction including Prime Coat (MC1) [11510]; Bituminous concrete wearing course, 50 mm thick, after compaction(Grading I - Class A), including tack coat (RC) [8222] | 336,184.5 | 336,184.5 | ENG-MT-RD-A-130 | PRC | MA | Each | A | RD | EN | ENG |
|  | 2 | **Pavement Works** |  | 2025-01-27 | 2025-04-27 |  |  |  |  |  |  |  |  |  |  |  |  |  |  |  |
| ENG-MT-RD-A-140 |  | Material Approval of Interlock Tiles for Landscaping | 10d | 2025-01-27 A | 2025-03-15 A | ENG-MT-RD-S-140 | 100% | 2025-02-05 | 2025-02-16 | Interlocking block pavers for sidewalk/footpath 60mm thick on and including 30mm Sand Bedding, 200mm Aggregate subbase, all in accordance with authority standards and complete as per specifications [32500]; Extraover for Pedestrian ramps [82] | 69,861.3 | 69,861.3 | ENG-MT-RD-A-140 | PRC | MA | Each | A | RD | EN | ENG |
| ENG-MT-RD-A-150 |  | Material Approval of Curbstones for Landscaping | 10d | 2025-04-26 A | 2025-04-27 A | ENG-MT-RD-S-150 | 100% | 2025-02-05 | 2025-02-16 | Precast Concrete Kerb, Type K1 [18200]; Precast Concrete Kerb, Type L1 [36111] | 97,759.8 | 97,759.8 | ENG-MT-RD-A-150 | PRC | MA | Each | A | RD | EN | ENG |
|  | 3 | **Traffic Signs Boards and Roads Marking** |  | 2025-05-26 | 2025-05-31 |  |  |  |  |  |  |  |  |  |  |  |  |  |  |  |
| ENG-MT-TS-A-110 |  | Material Approval for Road Markings of Road Works | 10d | 2025-05-26 A | 2025-05-31 A | ENG-MT-TS-S-110 | 100% | 2025-02-05 | 2025-02-16 | Retroreflective Thermoplastic White, Traffic lines [6200]; Retroreflective Thermoplastic Yellow, Traffic lines [950]; Retroreflective raised pavement markers(Type A) [1212] | 10,972.44 | 10,972.44 | ENG-MT-TS-A-110 | PRC | MA | Each | A | RD | EN | ENG |
| ENG-MT-TS-A-100 |  | Material Approval for Traffic Signs Boards of Road Works | 10d | 2025-05-27 A | 2025-05-31 A | ENG-MT-TS-S-100 | 100% | 2025-02-05 | 2025-02-16 | Traffic signs, ground mounted, Sheet Alumenium, (breakaway) Single post, with all accessories [83]; Straight Arrow [186.84]; Right or Left Arrow [10]; Straight-Right Arrow [12]; Straight-Left Arrow [14] | 4,215.39 | 4,215.39 | ENG-MT-TS-A-100 | PRC | MA | Each | A | RD | EN | ENG |
|  | 2 | **Sewage Network** |  | 2025-01-22 | 2025-05-15 |  |  |  |  |  |  |  |  |  |  |  |  |  |  |  |
|  | MS | **Submission of Material** |  | 2025-01-22 | 2025-01-29 |  |  |  |  |  |  |  |  |  |  |  |  |  |  |  |
|  | 1 | **Main Line Sections** |  | 2025-01-22 | 2025-01-29 |  |  |  |  |  |  |  |  |  |  |  |  |  |  |  |
| ENG-MT-SW-ML-S-100 |  | Material Submittal for Manholes of Sewage Network | 5d | 2025-01-22 A | 2025-01-29 A | ENG-DS-SW-A-110 | 100% | 2025-01-22 | 2025-01-27 |  |  |  | ENG-MT-SW-ML-S-100 | PRC | MS | Each | S | SW | EN | ENG |
| ENG-MT-SW-ML-S-110 |  | Material Submittal for Main Line Pipes of Sewage Network | 7d | 2025-01-22 A | 2025-01-29 A | ENG-DS-SW-A-110 | 100% |  |  |  |  |  | ENG-MT-SW-ML-S-110 | PRC | MS | Each | S | SW | EN | ENG |
|  | 3 | **Testing and Finishes** |  | 2025-01-22 | 2025-01-29 |  |  |  |  |  |  |  |  |  |  |  |  |  |  |  |
| ENG-MT-SW-TF-S-100 |  | Material Submittal for Manhole Covers of Sewage Network | 7d | 2025-01-22 A | 2025-01-29 A | ENG-DS-SW-A-110 | 100% |  |  |  |  |  | ENG-MT-SW-TF-S-100 | PRC | MS | Each | S | SW | EN | ENG |
| ENG-MT-SW-TF-S-120 |  | Material Submittal for Membrane Insulation of Sewage Network | 7d | 2025-01-22 A | 2025-01-29 A | ENG-DS-SW-A-110 | 100% |  |  |  |  |  | ENG-MT-SW-TF-S-120 | PRC | MS | Each | S | SW | EN | ENG |
|  | MA | **Approval of Material** |  | 2025-01-30 | 2025-05-15 |  |  |  |  |  |  |  |  |  |  |  |  |  |  |  |
|  | 1 | **Main Line Sections** |  | 2025-01-30 | 2025-04-20 |  |  |  |  |  |  |  |  |  |  |  |  |  |  |  |
| ENG-MT-SW-ML-A-100 |  | Material Approval for Manholes of Sewage Network | 6d | 2025-01-30 A | 2025-04-20 A | ENG-MT-SW-ML-S-100 | 100% | 2025-01-28 | 2025-02-03 | Washout valve chamber [2]; Air release valve chamber [3]; Depth: not exceeding 1.5m [13]; Depth: 1.5 - 2.5m [45]; Depth: 2.5 - 3.5m [10]; Depth: 3.5 - 4.5m [4]; Depth: 4.5 - 5.5m [5]; Depth: 5.5 - 6.5m [10]; Depth:6.5 - 7.5m [15]; Depth: more than 7.5m [1]; Depth: 2.5 - 3.5m [5]; Depth: 3.5 - 4.5m [3]; Depth: 4.5 - 5.5m [2]; Depth: 5.5 - 6.5m [2]; Depth:6.5 - 7.5m [7] | 82,849.98 | 82,849.98 | ENG-MT-SW-ML-A-100 | PRC | MA | Each | A | SW | EN | ENG |
| ENG-MT-SW-ML-A-110 |  | Material Approval for Main Line Pipes of Sewage Network | 10d | 2025-01-30 A | 2025-02-10 A | ENG-MT-SW-ML-S-110 | 100% |  |  | Nominal bore : 160mm; Depth : 0.0m - 1.5m [250]; Nominal bore : 160mm; Depth : 1.5m - 2.5m [650]; Nominal bore : 200mm; Depth : 0.0m - 1.5m [400]; Nominal bore : 200mm; Depth : 1.5m - 2.5m [750]; Nominal bore : 200mm; Depth : 2.5m - 3.5m [1200]; Nominal bore : 200mm; Depth : 3.5m - 4.5m [1350]; Nominal bore : 200mm; Depth : 4.5m -5.5m [700]; Nominal bore : 200mm; Depth : 5.5m - 6.5m [900]; Nominal bore : 250mm; Depth : 4.5m -5.5m [220]; Nominal bore : 250mm; Depth : 5.5m - 6.5m [180]; Nominal bore : 315mm; Depth : 4.5m -5.5m [180]; Nominal bore : 315mm; Depth : 6.5m - 7.5m [200]; Depth : 1.5 - 2.5m [200]; Depth : 2.5 - 3.5m [150]; Depth : 3.5 - 4.5m [150]; Depth : 4.5 - 5.5m [100]; Depth : 5.5 - 6.5m [600]; Depth : 6.5 -7.5m [700]; Depth : 6.5 -7.5m [500]; Depth :more than 7.5m [800]; Depth : 6.5 -7.5m [250]; Depth :more than 7.5m [600]; HDPE force main DN 800mm diameter, in trenches depth: 0- 1.5m [100]; HDPE force main DN 800mm diameter, in trenches depth: 1.51- 2.5m [2237]; Washout valve 200mm, on 800mm dia. pipe [2]; Air release valve 110 mm dia, on 800mm dia. pipe [3] | 423,387.75 | 423,387.75 | ENG-MT-SW-ML-A-110 | PRC | MA | Each | A | SW | EN | ENG |

| ID | WBS | Activity | Duration | Start | Finish | Predecessors | Complete | Planned start | Planned finish | Resources | Cost | Actual cost | Activity ID N | 02- Network-WBS | 03- Activity | 04-UOM | 05-Discipline | 01- Network | 08 Stage | Discipline |
| --- | --- | --- | --- | --- | --- | --- | --- | --- | --- | --- | --- | --- | --- | --- | --- | --- | --- | --- | --- | --- |
|  | 3 | **Testing and Finishes** |  | 2025-03-05 | 2025-05-15 |  |  |  |  |  |  |  |  |  |  |  |  |  |  |  |
| ENG-MT-SW-TF-A-100 |  | Material Approval for Manhole Covers of Sewage Network | 10d | 2025-03-05 A | 2025-05-15 A | ENG-MT-SW-TF-S-100 | 100% | 2025-01-30 | 2025-02-10 | Depth: not exceeding 1.5m [1]; Depth: 1.5 - 2.5m [3]; Depth: 2.5 - 3.5m [5]; Depth: 3.5 - 4.5m [1]; Depth: 4.5 - 5.5m [1]; Depth: 5.5 - 6.5m [3]; Depth:6.5 - 7.5m [3]; Depth: more than 7.5m [1] | 13,078.44 | 13,078.44 | ENG-MT-SW-TF-A-100 | PRC | MA | Each | A | SW | EN | ENG |
| ENG-MT-SW-TF-A-120 |  | Material Approval for Membrane Insulation of Sewage Network | 10d | 2025-03-06 A | 2025-03-15 A | ENG-MT-SW-TF-S-120 | 100% | 2025-01-30 | 2025-02-10 | Depth: not exceeding 1.5m [1]; Depth: 1.5 - 2.5m [3]; Depth: 2.5 - 3.5m [4]; Depth: 3.5 - 4.5m [1]; Depth: 4.5 - 5.5m [1]; Depth: 5.5 - 6.5m [3]; Depth:6.5 - 7.5m [3]; Depth: more than 7.5m [1] | 12,646.71 | 12,646.71 | ENG-MT-SW-TF-A-120 | PRC | MA | Each | A | SW | EN | ENG |
|  | 9 | **Storm Drainage Network** |  | 2025-01-22 | 2025-02-20 |  |  |  |  |  |  |  |  |  |  |  |  |  |  |  |
|  | MS | **Submission of Material** |  | 2025-01-22 | 2025-01-29 |  |  |  |  |  |  |  |  |  |  |  |  |  |  |  |
|  | 1 | **Main Line Sections** |  | 2025-01-22 | 2025-01-29 |  |  |  |  |  |  |  |  |  |  |  |  |  |  |  |
| ENG-MT-SD-ML-S-100 |  | Material Submittal for Manholes of Storm Drainage Network | 7d | 2025-01-22 A | 2025-01-29 A | ENG-DS-SD-A-110 | 100% |  |  |  |  |  | ENG-MT-SD-ML-S-100 | PRC | MS | Each | S | SD | EN | ENG |
| ENG-MT-SD-ML-S-110 |  | Material Submittal for Main Line Pipes of Storm Drainage Network | 7d | 2025-01-22 A | 2025-01-29 A | ENG-DS-SD-A-110 | 100% |  |  |  |  |  | ENG-MT-SD-ML-S-110 | PRC | MS | Each | S | SD | EN | ENG |
|  | 2 | **Catch Basin Sections** |  | 2025-01-22 | 2025-01-29 |  |  |  |  |  |  |  |  |  |  |  |  |  |  |  |
| ENG-MT-SD-CB-S-100 |  | Material Submittal for Catch Basins of Storm Drainage Network | 7d | 2025-01-22 A | 2025-01-29 A | ENG-DS-SD-A-110 | 100% |  |  |  |  |  | ENG-MT-SD-CB-S-100 | PRC | MS | Each | S | SD | EN | ENG |
| ENG-MT-SD-CB-S-110 |  | Material Submittal for Catch Basin Pipes of Storm Drainage Network | 7d | 2025-01-22 A | 2025-01-29 A | ENG-DS-SD-A-110 | 100% |  |  |  |  |  | ENG-MT-SD-CB-S-110 | PRC | MS | Each | S | SD | EN | ENG |
|  | 3 | **Testing and Finishes** |  | 2025-01-22 | 2025-01-29 |  |  |  |  |  |  |  |  |  |  |  |  |  |  |  |
| ENG-MT-SD-TF-S-100 |  | Material Submittal for Manhole Covers of Storm Drainage Network | 7d | 2025-01-22 A | 2025-01-29 A | ENG-DS-SD-A-110 | 100% |  |  |  |  |  | ENG-MT-SD-TF-S-100 | PRC | MS | Each | S | SD | EN | ENG |
| ENG-MT-SD-TF-S-110 |  | Material Submittal for Catch Basin Covers of Storm Drainage Network | 7d | 2025-01-22 A | 2025-01-29 A | ENG-DS-SD-A-110 | 100% |  |  |  |  |  | ENG-MT-SD-TF-S-110 | PRC | MS | Each | S | SD | EN | ENG |
| ENG-MT-SD-TF-S-120 |  | Material Submittal for Epoxy Insulation of Storm Drainage Network | 7d | 2025-01-22 A | 2025-01-29 A | ENG-DS-SD-A-110 | 100% |  |  |  |  |  | ENG-MT-SD-TF-S-120 | PRC | MS | Each | S | SD | EN | ENG |
|  | MA | **Approval of Material** |  | 2025-01-30 | 2025-02-20 |  |  |  |  |  |  |  |  |  |  |  |  |  |  |  |
|  | 1 | **Main Line Sections** |  | 2025-01-30 | 2025-02-10 |  |  |  |  |  |  |  |  |  |  |  |  |  |  |  |
| ENG-MT-SD-ML-A-100 |  | Material Approval for Manholes of Storm Drainage Network | 10d | 2025-01-30 A | 2025-02-10 A | ENG-MT-SD-ML-S-100 | 100% |  |  | MH ; depth: 0.0m - 1.5m [20.8]; MH ; depth: 1.51m - 2.5m [49.6]; MH ; depth: 2.51 - 3.5m [4]; MH ; depth: 0.0m - 1.5m [8]; MH ; depth: 1.51m - 2.5m [51.2]; MH ; depth: 1.51m - 2.5m with back drop less than 1.0 m [0.8]; MH ; depth: 2.51 - 3.5m [6.4]; MH ; depth: 2.51 - 3.5m with back drop less than 1.0 m [0.8]; MH ; depth: 1.51m - 2.5m [21.6]; MH ; depth: 2.51 - 3.5m [24]; MH ; depth: 2.51 - 3.5m [3.2]; MH ; depth: 3.51 - 4.5m [4] | 111,361.25 | 111,361.25 | ENG-MT-SD-ML-A-100 | PRC | MA | Each | A | SD | EN | ENG |
| ENG-MT-SD-ML-A-110 |  | Material Approval for Main Line Pipes of Storm Drainage Network | 10d | 2025-01-30 A | 2025-02-10 A | ENG-MT-SD-ML-S-110 | 100% |  |  | Pipe with diameter 400mm ; depth: 0.0m - 1.5m [1593]; Pipe with diameter 400mm ; depth: 1.51m - 2.5m [2033]; Pipe with diameter 400mm ; depth: 2.51m - 3.5m [50]; Pipe with diameter 500mm ; depth: 0.0m - 1.5m [50]; Pipe with diameter 500mm ; depth: 1.51m - 2.5m [2990]; Pipe with diameter 600mm ; depth: 0.0m - 1.5m [50]; Pipe with diameter 600mm ; depth: 1.51m - 2.5m [1429]; Pipe with diameter 600mm ; depth: 2.51m - 3.5m [173]; Pipe with diameter 700mm ; depth: 0.0m - 1.5m [50]; Pipe with diameter 700mm ; depth: 1.51m - 2.5m [2623]; Pipe with diameter 700mm ; depth: 2.51m - 3.5m [50]; Pipe with diameter 800mm ; depth: 0.0m - 1.5m [50]; Pipe with diameter 800mm ; depth: 1.51m - 2.5m [1310]; Pipe with diameter 800mm ; depth: 2.51m - 3.5m [70]; Pipe with diameter 900mm ; depth: 0.0m - 1.5m [50]; Pipe with diameter 900mm ; depth: 1.51m - 2.5m [854]; Pipe with diameter 900mm ; depth: 2.51 - 3.5m [57]; Pipe with diameter 1000mm ; depth: 0.0m - 1.5m [50]; Pipe with diameter 1000mm ; depth: 1.51m - 2.5m [427]; Pipe with diameter 1000mm ; depth: 2.51 - 3.5m [507]; Pipe with diameter 1100mm ; depth: 0.0m - 1.5m [50]; Pipe with diameter 1100mm ; depth: 1.51m - 2.5m [667]; Pipe with diameter 1100mm ; depth: 2.51 - 3.5m [174]; Pipe with diameter 1200mm ; depth: 1.51m - 2.5m [155]; Pipe with diameter 1200mm ; depth: 2.51 - 3.5m [483]; Access opening with dimensions 1000*1000 mm [13] | 341,561.55 | 341,561.55 | ENG-MT-SD-ML-A-110 | PRC | MA | Each | A | SD | EN | ENG |
|  | 2 | **Catch Basin Sections** |  | 2025-01-30 | 2025-02-13 |  |  |  |  |  |  |  |  |  |  |  |  |  |  |  |
| ENG-MT-SD-CB-A-100 |  | Material Approval for Catch Basins of Storm Drainage Network | 10d | 2025-01-30 A | 2025-02-12 A | ENG-MT-SD-CB-S-100 | 100% | 2025-01-30 | 2025-02-10 | Single Catch basin [232]; Double Catch basin [100] | 69,400.8 | 69,400.8 | ENG-MT-SD-CB-A-100 | PRC | MA | Each | A | SD | EN | ENG |
| ENG-MT-SD-CB-A-110 |  | Material Approval for Catch Basin Pipes of Storm Drainage Network | 10d | 2025-01-30 A | 2025-02-13 A | ENG-MT-SD-CB-S-110 | 100% | 2025-01-30 | 2025-02-10 | Pipe with diameter 300mm ; depth: 0 - 1.5m [8200]; Pipe with diameter 400mm ; depth: 0 - 1.5m [500] | 90,540 | 90,540 | ENG-MT-SD-CB-A-110 | PRC | MA | Each | A | SD | EN | ENG |
|  | 3 | **Testing and Finishes** |  | 2025-01-30 | 2025-02-20 |  |  |  |  |  |  |  |  |  |  |  |  |  |  |  |
| ENG-MT-SD-TF-A-100 |  | Material Approval for Manhole Covers of Storm Drainage Network | 10d | 2025-01-30 A | 2025-02-20 A | ENG-MT-SD-TF-S-100 | 100% | 2025-01-30 | 2025-02-10 | MH ; depth: 0.0m - 1.5m [2.6]; MH ; depth: 1.51m - 2.5m [6.2]; MH ; depth: 2.51 - 3.5m [0.5]; MH ; depth: 0.0m - 1.5m [1]; MH ; depth: 1.51m - 2.5m [6.4]; MH ; depth: 1.51m - 2.5m with back drop less than 1.0 m [0.1]; MH ; depth: 2.51 - 3.5m [0.8]; MH ; depth: 2.51 - 3.5m with back drop less than 1.0 m [0.1]; MH ; depth: 1.51m - 2.5m [2.7]; MH ; depth: 2.51 - 3.5m [3]; MH ; depth: 2.51 - 3.5m [0.4]; MH ; depth: 3.51 - 4.5m [0.5] | 13,920.16 | 13,920.16 | ENG-MT-SD-TF-A-100 | PRC | MA | Each | A | SD | EN | ENG |
| ENG-MT-SD-TF-A-110 |  | Material Approval for Catch Basin Covers of Storm Drainage Network | 10d | 2025-01-30 A | 2025-02-20 A | ENG-MT-SD-TF-S-110 | 100% | 2025-01-30 | 2025-02-10 | Single Catch basin [29]; Double Catch basin [12.5] | 8,675.1 | 8,675.1 | ENG-MT-SD-TF-A-110 | PRC | MA | Each | A | SD | EN | ENG |
| ENG-MT-SD-TF-A-120 |  | Material Approval for Epoxy Insulation of Storm Drainage Network | 10d | 2025-01-30 A | 2025-02-20 A | ENG-MT-SD-TF-S-120 | 100% | 2025-01-30 | 2025-02-10 | MH ; depth: 0.0m - 1.5m [2.6]; MH ; depth: 1.51m - 2.5m [6.2]; MH ; depth: 2.51 - 3.5m [0.5]; MH ; depth: 0.0m - 1.5m [1]; MH ; depth: 1.51m - 2.5m [6.4]; MH ; depth: 1.51m - 2.5m with back drop less than 1.0 m [0.1]; MH ; depth: 2.51 - 3.5m [0.8]; MH ; depth: 2.51 - 3.5m with back drop less than 1.0 m [0.1]; MH ; depth: 1.51m - 2.5m [2.7]; MH ; depth: 2.51 - 3.5m [3]; MH ; depth: 2.51 - 3.5m [0.4]; MH ; depth: 3.51 - 4.5m [0.5]; Single Catch basin [29]; Double Catch basin [12.5] | 22,595.26 | 22,595.26 | ENG-MT-SD-TF-A-120 | PRC | MA | Each | A | SD | EN | ENG |

| ID | WBS | Activity | Duration | Start | Finish | Predecessors | Complete | Planned start | Planned finish | Resources | Cost | Actual cost | Activity ID N | 02- Network-WBS | 03- Activity | 04-UOM | 05-Discipline | 01- Network | 08 Stage | Discipline |
| --- | --- | --- | --- | --- | --- | --- | --- | --- | --- | --- | --- | --- | --- | --- | --- | --- | --- | --- | --- | --- |
|  | 3 | **Potable Water Network** |  | 2025-01-22 | 2025-05-14 |  |  |  |  |  |  |  |  |  |  |  |  |  |  |  |
|  | MS | **Submission of Material** |  | 2025-01-22 | 2025-05-13 |  |  |  |  |  |  |  |  |  |  |  |  |  |  |  |
|  | 1 | **Main Line Sections** |  | 2025-01-22 | 2025-05-13 |  |  |  |  |  |  |  |  |  |  |  |  |  |  |  |
| ENG-MT-PW-ML-S-100 |  | Material Submittal for Main Line Pipes of Potable Water Network | 7d | 2025-01-22 A | 2025-01-29 A | ENG-DS-PW-A-110 | 100% |  |  |  |  |  | ENG-MT-PW-ML-S-100 | PRC | MS | Each | S | PW | EN | ENG |
| ENG-MT-PW-ML-S-110 |  | Material Submittal for Main Line Valves of Potable Water Network | 7d | 2025-01-22 A | 2025-05-13 A | ENG-DS-PW-A-110 | 100% | 2025-01-22 | 2025-01-29 |  |  |  | ENG-MT-PW-ML-S-110 | PRC | MS | Each | S | PW | EN | ENG |
|  | 3 | **Fire Hydrant** |  | 2025-01-22 | 2025-02-15 |  |  |  |  |  |  |  |  |  |  |  |  |  |  |  |
| ENG-MT-PW-FH-S-100 |  | Material Submittal for Fire Hydrant of Potable Water Network | 7d | 2025-01-22 A | 2025-02-15 A | ENG-DS-PW-A-110 | 100% | 2025-01-22 | 2025-01-29 |  |  |  | ENG-MT-PW-FH-S-100 | PRC | MS | Each | S | PW | EN | ENG |
|  | 4 | **Testing and Finishes** |  | 2025-01-22 | 2025-02-10 |  |  |  |  |  |  |  |  |  |  |  |  |  |  |  |
| ENG-MT-PW-TF-S-100 |  | Material Submittal for Surface Box of Potable Water Network | 7d | 2025-01-22 A | 2025-02-10 A | ENG-DS-PW-A-110 | 100% | 2025-01-22 | 2025-01-29 |  |  |  | ENG-MT-PW-TF-S-100 | PRC | MS | Each | S | PW | EN | ENG |
|  | MA | **Approval of Material** |  | 2025-01-30 | 2025-05-14 |  |  |  |  |  |  |  |  |  |  |  |  |  |  |  |
|  | 1 | **Main Line Sections** |  | 2025-01-30 | 2025-05-14 |  |  |  |  |  |  |  |  |  |  |  |  |  |  |  |
| ENG-MT-PW-ML-A-100 |  | Material Approval for Main Line Pipes of Potable Water Network | 10d | 2025-01-30 A | 2025-02-10 A | ENG-MT-PW-ML-S-100 | 100% |  |  | Pipe with diameter 160 mm; in depth 1.5m - 3.0m [50]; Pipe with diameter 200mm; in depth 0.0m - 1.5m [8552]; Pipe with diameter 200mm; in depth 1.5m - 3.0m [100]; Pipe with diameter 355mm; in depth 0.0m - 1.5m [1400]; Pipe with diameter 355mm; in depth 1.5m - 3.0m [100]; Pipe with diameter 560mm; in depth 1.5m - 3.0m [1200]; Pipe with diameter 630mm; in depth 1.5m - 3.0m [2090] | 194,270.82 | 194,270.82 | ENG-MT-PW-ML-A-100 | PRC | MA | Each | A | PW | EN | ENG |
| ENG-MT-PW-ML-A-110 |  | Material Approval for Valves of Potable Water Network | 10d | 2025-01-30 A | 2025-05-14 A | ENG-MT-PW-ML-S-110 | 100% | 2025-01-30 | 2025-02-10 | Butterfly valves with dia (355)mm on pipes with dia (355)mm. [18]; Butterfly valves with dia (560)mm on pipes with dia (560)mm. [2]; Butterfly valves with dia (630)mm on pipes with dia (630)mm. [5]; Wash out valve with dia (100)mm on pipes with dia (200) mm [2]; Wash out valve with dia (150)mm on pipes with dia (560) mm [1]; Wash out valve with dia (150)mm on pipes with dia (630) mm [3]; Air valves with dia (50mm) mm on pipes with dia(200)mm. [3]; Air valves with dia (65mm) mm on pipes with dia(355)mm. [1]; Air valves with dia (65mm) mm on pipes with dia(560)mm. [2]; Air valves with dia (65mm) mm on pipes with dia(630)mm. [4] | 51,908.25 | 51,908.25 | ENG-MT-PW-ML-A-110 | PRC | MA | Each | A | PW | EN | ENG |
|  | 3 | **Fire Hydrant** |  | 2025-02-16 | 2025-03-14 |  |  |  |  |  |  |  |  |  |  |  |  |  |  |  |
| ENG-MT-PW-FH-A-100 |  | Material Approval for Fire Hydrants of Potable Water Network | 10d | 2025-02-16 A | 2025-03-14 A | ENG-MT-PW-FH-S-100 | 100% | 2025-01-30 | 2025-02-10 | 3-outlet fire hydrant (2 x 2.5 inch and 1 x 4 inch) in the form of a separate dry vacuum cylinder [55] | 18,653.25 | 18,653.25 | ENG-MT-PW-FH-A-100 | PRC | MA | Each | A | PW | EN | ENG |
|  | 4 | **Testing and Finishes** |  | 2025-02-11 | 2025-03-14 |  |  |  |  |  |  |  |  |  |  |  |  |  |  |  |
| ENG-MT-PW-TF-A-100 |  | Material Approval for Surface Box of Potable Water Network | 0.63d | 2025-02-11 A | 2025-03-14 A | ENG-MT-PW-TF-S-100 | 100% | 2025-01-30 | 2025-01-30 | Gate valves dia(200)mm on pipes with dia (200) mm. [75] | 8,892 | 8,892 | ENG-MT-PW-TF-A-100 | PRC | MA | Each | A | PW | EN | ENG |
|  | 4 | **Irrigation Network** |  | 2025-01-22 | 2025-05-14 |  |  |  |  |  |  |  |  |  |  |  |  |  |  |  |
|  | MS | **Submission of Material** |  | 2025-01-22 | 2025-01-29 |  |  |  |  |  |  |  |  |  |  |  |  |  |  |  |
|  | 1 | **Main Line Pipes** |  | 2025-01-22 | 2025-01-29 |  |  |  |  |  |  |  |  |  |  |  |  |  |  |  |
| ENG-MT-IR-ML-S-100 |  | Material Submittal for Main Line Pipes of Irrigation Network | 7d | 2025-01-22 A | 2025-01-29 A | ENG-DS-IR-A-110 | 100% |  |  |  |  |  | ENG-MT-IR-ML-S-100 | PRC | MS | Each | S | IR | EN | ENG |
| ENG-MT-IR-ML-S-110 |  | Material Submittal for Main Line Valves of Irrigation Network | 7d | 2025-01-22 A | 2025-01-29 A | ENG-DS-IR-A-110 | 100% |  |  |  |  |  | ENG-MT-IR-ML-S-110 | PRC | MS | Each | S | IR | EN | ENG |
|  | MA | **Approval of Material** |  | 2025-01-30 | 2025-05-14 |  |  |  |  |  |  |  |  |  |  |  |  |  |  |  |
|  | 1 | **Main Line Pipes** |  | 2025-01-30 | 2025-05-14 |  |  |  |  |  |  |  |  |  |  |  |  |  |  |  |
| ENG-MT-IR-ML-A-100 |  | Material Approval for Main Line Pipes of Irrigation Network | 10d | 2025-01-30 A | 2025-02-10 A | ENG-MT-IR-ML-S-100 | 100% |  |  | 125 mm pipe; depth 0.0m - 1.5m [10450]; 280 mm pipe; depth 0.0m - 1.5m [475]; 280 mm pipe; depth 1.5m - 3.0m [50]; 355 mm pipe; depth 1.5m - 3.0m [1000]; 400 mm pipe; depth 1.5m - 3.0m [1000]; 500. mm pipe; depth 1.5m - 3.0m [2800] | 147,707.25 | 147,707.25 | ENG-MT-IR-ML-A-100 | PRC | MA | Each | A | IR | EN | ENG |
| ENG-MT-IR-ML-A-110 |  | Material Approval for Valves of Irrigation Network | 10d | 2025-01-30 A | 2025-05-14 A | ENG-MT-IR-ML-S-110 | 100% | 2025-01-30 | 2025-02-10 | Gate valves dia (90)mm on pipes with dia (125) mm. [82]; Gate valves dia (200)mm on pipes with dia (280) mm. [8]; Butterfly valves with dia (355)mm on pipes with dia (355)mm. [2]; Butterfly valves with dia (400)mm on pipes with dia (400)mm. [2]; Butterfly valves with dia (500)mm on pipes with dia (500)mm. [6]; Wash out valve with dia (100)mm on pipes with dia (125) mm [3]; Wash out valve with dia (100)mm on pipes with dia (355) mm [1]; Wash out valve with dia (150)mm on pipes with dia (400) mm [2]; Wash out valve with dia (150)mm on pipes with dia (500) mm [5]; Air valves with dia (50mm) mm on pipes with dia(125)mm. [4]; Air valves with dia (65mm) mm on pipes with dia(280)mm. [1]; Air valves with dia (65mm) mm on pipes with dia(400)mm. [1]; Air valves with dia (65mm) mm on pipes with dia(500)mm. [6] | 39,540.39 | 39,540.39 | ENG-MT-IR-ML-A-110 | PRC | MA | Each | A | IR | EN | ENG |

| ID | WBS | Activity | Duration | Start | Finish | Predecessors | Complete | Planned start | Planned finish | Resources | Cost | Actual cost | Activity ID N | 02- Network-WBS | 03- Activity | 04-UOM | 05-Discipline | 01- Network | 08 Stage | Discipline |
| --- | --- | --- | --- | --- | --- | --- | --- | --- | --- | --- | --- | --- | --- | --- | --- | --- | --- | --- | --- | --- |
|  | 5 | **Medium Voltage Network** |  | 2025-01-22 | 2025-05-13 |  |  |  |  |  |  |  |  |  |  |  |  |  |  |  |
|  | MS | **Submission of Material** |  | 2025-01-22 | 2025-01-29 |  |  |  |  |  |  |  |  |  |  |  |  |  |  |  |
|  | 1 | **Cabling Works** |  | 2025-01-22 | 2025-01-29 |  |  |  |  |  |  |  |  |  |  |  |  |  |  |  |
| ENG-MT-MV-ML-S-100 |  | Material Submittal for Medium Voltage Cables of Medium Voltage Network | 7d | 2025-01-22 A | 2025-01-29 A | ENG-DS-MV-A-110 | 100% |  |  |  |  |  | ENG-MT-MV-ML-S-100 | PRC | MS | Each | S | MV | EN | ENG |
|  | 2 | **RMU Concrete Works** |  | 2025-01-22 | 2025-01-29 |  |  |  |  |  |  |  |  |  |  |  |  |  |  |  |
| ENG-MT-MV-SS-S-100 |  | Material Submittal for RMU Concrete Foundations of Medium Voltage Network | 7d | 2025-01-22 A | 2025-01-29 A | ENG-DS-MV-A-110 | 100% |  |  |  |  |  | ENG-MT-MV-SS-S-100 | PRC | MS | Each | S | MV | EN | ENG |
|  | 3 | **Termination and Testing Works** |  | 2025-01-22 | 2025-01-29 |  |  |  |  |  |  |  |  |  |  |  |  |  |  |  |
| ENG-MT-MV-TF-S-100 |  | Material Submittal for Termination Kits of Medium Voltage Network | 7d | 2025-01-22 A | 2025-01-29 A | ENG-DS-MV-A-110 | 100% |  |  |  |  |  | ENG-MT-MV-TF-S-100 | PRC | MS | Each | S | MV | EN | ENG |
|  | MA | **Approval of Material** |  | 2025-01-30 | 2025-05-13 |  |  |  |  |  |  |  |  |  |  |  |  |  |  |  |
|  | 1 | **Cabling Works** |  | 2025-01-30 | 2025-05-13 |  |  |  |  |  |  |  |  |  |  |  |  |  |  |  |
| ENG-MT-MV-ML-A-100 |  | Material Approval for Medium Voltage Cables of Medium Voltage Network | 10d | 2025-01-30 A | 2025-05-13 A | ENG-MT-MV-ML-S-100 | 100% | 2025-01-30 | 2025-02-10 | Excavation for Trench size 40cm wide and 80cm deep ( Maximum 1 cable 33kv) [2610]; Excavation for Trench size 60cm wide and 80cm deep ( for Max two cables 33 kv) [148.5]; Excavation for Trench size 90cm wide and 80cm deep ( Maximum 3 cable 33kv) [661.5]; Excavation for Trench size 120cm wide and 80cm deep ( Maximum 4cable 33kv) [225]; Excavation for Trench size 150cm wide and 80cm deep ( Maximum 4cable 33kv) [832.5]; Duct bank for (2) 33 kv cables [90]; Duct bank for (4) 33 kv cables [594]; Duct bank for (6) 33 kv cables [270]; 33kv 3Cx400 mmï¿½ Al XLPE / LLDPE /PVC Cable [25771.5]; 33kv 3Cx400 mmï¿½ Al XLPE /LLDPE/PVC [60] | 165,542.44 | 165,542.44 | ENG-MT-MV-ML-A-100 | PRC | MA | Each | A | MV | EN | ENG |
|  | 2 | **RMU Concrete Works** |  | 2025-01-30 | 2025-02-20 |  |  |  |  |  |  |  |  |  |  |  |  |  |  |  |
| ENG-MT-MV-SS-A-100 |  | Material Approval for RMU Concrete Foundations of Medium Voltage Network | 10d | 2025-01-30 A | 2025-02-20 A | ENG-MT-MV-SS-S-100 | 100% | 2025-01-30 | 2025-02-10 | 33kv 3Cx400 mmï¿½ Al XLPE/LLDPE Cable Termination [20] | 1,600.8 | 1,600.8 | ENG-MT-MV-SS-A-100 | PRC | MA | Each | A | MV | EN | ENG |
|  | 3 | **Termination and Testing Works** |  | 2025-01-30 | 2025-02-10 |  |  |  |  |  |  |  |  |  |  |  |  |  |  |  |
| ENG-MT-MV-TF-A-100 |  | Material Approval for Termination and Joints Kits of Medium Voltage Network | 10d | 2025-01-30 A | 2025-02-10 A | ENG-MT-MV-TF-S-100 | 100% |  |  | Excavation for Trench size 40cm wide and 80cm deep ( Maximum 1 cable 33kv) [290]; Excavation for Trench size 60cm wide and 80cm deep ( for Max two cables 33 kv) [16.5]; Excavation for Trench size 90cm wide and 80cm deep ( Maximum 3 cable 33kv) [73.5]; Excavation for Trench size 120cm wide and 80cm deep ( Maximum 4cable 33kv) [25]; Excavation for Trench size 150cm wide and 80cm deep ( Maximum 4cable 33kv) [92.5]; Duct bank for (2) 33 kv cables [10]; Duct bank for (4) 33 kv cables [66]; Duct bank for (6) 33 kv cables [30] | 1,509.43 | 1,509.43 | ENG-MT-MV-TF-A-100 | PRC | MA | Each | A | MV | EN | ENG |
|  | 7 | **Street Lighting Network** |  | 2025-01-22 | 2025-05-24 |  |  |  |  |  |  |  |  |  |  |  |  |  |  |  |
|  | MS | **Submission of Material** |  | 2025-01-22 | 2025-01-29 |  |  |  |  |  |  |  |  |  |  |  |  |  |  |  |
|  | 1 | **Cabling Works** |  | 2025-01-22 | 2025-01-29 |  |  |  |  |  |  |  |  |  |  |  |  |  |  |  |
| ENG-MT-SL-ML-S-100 |  | Material Submittal for Lighting Cables of Street Lighting Network | 7d | 2025-01-22 A | 2025-01-29 A | ENG-DS-SL-A-110 | 100% |  |  |  |  |  | ENG-MT-SL-ML-S-100 | PRC | MS | Each | S | SL | EN | ENG |
|  | 2 | **Lighting Poles Works** |  | 2025-01-22 | 2025-01-29 |  |  |  |  |  |  |  |  |  |  |  |  |  |  |  |
| ENG-MT-SL-S-100 |  | Material Submittal for Lighting Poles Concrete Foundations of Street Lighting Network | 7d | 2025-01-22 A | 2025-01-29 A | ENG-DS-SL-A-110 | 100% |  |  |  |  |  | ENG-MT-SL-S-100 | PRC | MS | Each | S | SL | EN | ENG |
| ENG-MT-SL-S-110 |  | Material Submittal for Lighting Poles of Street Lighting Network | 7d | 2025-01-22 A | 2025-01-29 A | ENG-DS-SL-A-110 | 100% |  |  |  |  |  | ENG-MT-SL-S-110 | PRC | MS | Each | S | SL | EN | ENG |
| ENG-MT-SL-S-120 |  | Material Submittal for Lighting Fixtures of Street Lighting Network | 7d | 2025-01-22 A | 2025-01-29 A | ENG-DS-SL-A-110 | 100% |  |  |  |  |  | ENG-MT-SL-S-120 | PRC | MS | Each | S | SL | EN | ENG |
|  | 3 | **Distribution Panel Board** |  | 2025-01-22 | 2025-01-29 |  |  |  |  |  |  |  |  |  |  |  |  |  |  |  |
| ENG-MT-SL-DB-S-100 |  | Material Submittal for Lighting Distrubution Panel Boards of Street Lighting Network | 7d | 2025-01-22 A | 2025-01-29 A | ENG-DS-SL-A-110 | 100% |  |  |  |  |  | ENG-MT-SL-DB-S-100 | PRC | MS | Each | S | SL | EN | ENG |

| ID | WBS | Activity | Duration | Start | Finish | Predecessors | Complete | Planned start | Planned finish | Resources | Cost | Actual cost | Activity ID N | 02- Network-WBS | 03- Activity | 04-UOM | 05-Discipline | 01- Network | 08 Stage | Discipline |
| --- | --- | --- | --- | --- | --- | --- | --- | --- | --- | --- | --- | --- | --- | --- | --- | --- | --- | --- | --- | --- |
|  | 5 | **Termination and Testing Works** |  | 2025-01-22 | 2025-01-29 |  |  |  |  |  |  |  |  |  |  |  |  |  |  |  |
| ENG-MT-SL-TF-S-100 |  | Material Submittal for Fuse Boxes of Street Lighting Network | 7d | 2025-01-22 A | 2025-01-29 A | ENG-DS-SL-A-110 | 100% |  |  |  |  |  | ENG-MT-SL-TF-S-100 | PRC | MS | Each | S | SL | EN | ENG |
| ENG-MT-SL-TF-S-110 |  | Material Submittal for Cable Lugs of Street Lighting Network | 7d | 2025-01-22 A | 2025-01-29 A | ENG-DS-SL-A-110 | 100% |  |  |  |  |  | ENG-MT-SL-TF-S-110 | PRC | MS | Each | S | SL | EN | ENG |
|  | 4 | **Earthing System Works** |  | 2025-01-22 | 2025-01-29 |  |  |  |  |  |  |  |  |  |  |  |  |  |  |  |
| ENG-MT-SL-ES-S-100 |  | Material Submittal for Lighting Earthing of Street Lighting Network | 7d | 2025-01-22 A | 2025-01-29 A | ENG-DS-SL-A-110 | 100% |  |  |  |  |  | ENG-MT-SL-ES-S-100 | PRC | MS | Each | S | SL | EN | ENG |
|  | MA | **Approval of Material** |  | 2025-01-30 | 2025-05-24 |  |  |  |  |  |  |  |  |  |  |  |  |  |  |  |
|  | 1 | **Cabling Works** |  | 2025-01-30 | 2025-05-14 |  |  |  |  |  |  |  |  |  |  |  |  |  |  |  |
| ENG-MT-SL-ML-A-100 |  | Material Approval for Lighting Cables of Street Lighting Network | 10d | 2025-01-30 A | 2025-05-14 A | ENG-MT-SL-ML-S-100 | 100% | 2025-01-30 | 2025-02-10 | Supply, installation , test and operation of cables, Copper, (4Cx25mmï¿½,Cu/XLPE/SWA/PVC +1x16mmï¿½ PVC/PVC) [21000]; Street Lighting Feeder pillars , Includes foundation and draw pits [6] | 46,202.22 | 46,202.22 | ENG-MT-SL-ML-A-100 | PRC | MA | Each | A | SL | EN | ENG |
|  | 2 | **Lighting Poles Works** |  | 2025-01-30 | 2025-05-24 |  |  |  |  |  |  |  |  |  |  |  |  |  |  |  |
| ENG-MT-SL-A-100 |  | Material Approval for Lighting Poles Concrete Foundations of Street Lighting Network | 10d | 2025-01-30 A | 2025-05-21 A | ENG-MT-SL-S-100 | 100% | 2025-01-30 | 2025-02-10 | Reinforced concrete foundation, for 12m high lighting columns With Drawpits [359]; Reinforced concrete base With fence for Distribution substation in accordance with SEC Specifications [6] | 9,725.13 | 9,725.13 | ENG-MT-SL-A-100 | PRC | MA | Each | A | SL | EN | ENG |
| ENG-MT-SL-A-110 |  | Material Approval for Lighting Poles of Street Lighting Network | 10d | 2025-05-13 A | 2025-05-24 A | ENG-MT-SL-S-110 | 100% | 2025-01-30 | 2025-02-10 | Lighting poles with one arm, including the power distribution box, screws, cables, 12 meters in height. [355]; Lighting poles complete with two arms, including the power distribution box, screws, cables, 12 meters in height. [4] | 30,634.05 | 30,634.05 | ENG-MT-SL-A-110 | PRC | MA | Each | A | SL | EN | ENG |
| ENG-MT-SL-A-120 |  | Material Approval for Lighting Fixtures of Street Lighting Network | 10d | 2025-05-13 A | 2025-05-24 A | ENG-MT-SL-S-120 | 100% | 2025-01-30 | 2025-02-10 | Street Lighting( LED) Luminaire,(Type C) complete with control gear and lamp, ?.17000 Lumen [355]; Street Lighting( LED) Luminaire,(Type B) complete with control gear and lamp, ?.40600 Lumen [8] | 9,866.46 | 9,866.46 | ENG-MT-SL-A-120 | PRC | MA | Each | A | SL | EN | ENG |
|  | 3 | **Distribution Panel Board** |  | 2025-01-30 | 2025-02-10 |  |  |  |  |  |  |  |  |  |  |  |  |  |  |  |
| ENG-MT-SL-DB-A-100 |  | Material Approval for Distrubution Panel Boards of Street Lighting Network | 10d | 2025-01-30 A | 2025-02-10 A | ENG-MT-SL-DB-S-100 | 100% |  |  | Package Substation 33000/400V, 500kVA with RMU [6] | 28,956.04 | 28,956.04 | ENG-MT-SL-DB-A-100 | PRC | MA | Each | A | SL | EN | ENG |
|  | 4 | **Earthing System Works** |  | 2025-01-30 | 2025-02-10 |  |  |  |  |  |  |  |  |  |  |  |  |  |  |  |
| ENG-MT-SL-ES-A-100 |  | Material Approval for Lighting Earthing of Street Lighting Network | 10d | 2025-01-30 A | 2025-02-10 A | ENG-MT-SL-ES-S-100 | 100% |  |  | Earthing installation, lighting plants. [6]; Earthing installation, for Street lighting circuits, including earth rod in plastic chamber [50]; Earthing installation Lighting Panales [6] | 1,055.4 | 1,055.4 | ENG-MT-SL-ES-A-100 | PRC | MA | Each | A | SL | EN | ENG |
|  | 5 | **Termination and Testing Works** |  | 2025-01-30 | 2025-02-10 |  |  |  |  |  |  |  |  |  |  |  |  |  |  |  |
| ENG-MT-SL-TF-A-100 |  | Material Approval for Fuse Boxes of Street Lighting Network | 10d | 2025-01-30 A | 2025-02-10 A | ENG-MT-SL-TF-S-100 | 100% |  |  | Road crossing ducts, 4 way (4 x 100mm PVC) [780] | 4,422.6 | 4,422.6 | ENG-MT-SL-TF-A-100 | PRC | MA | Each | A | SL | EN | ENG |
| ENG-MT-SL-TF-A-110 |  | Material Approval for Cable Lugs of Street Lighting Network | 10d | 2025-01-30 A | 2025-02-10 A | ENG-MT-SL-TF-S-110 | 100% |  |  | Drawpit with medium duty steel cover, size 600x600x1000mm, Type 18 [6]; Drawpit with medium duty steel cover, size 900x900x1200mm, Type 4 [64] | 7,848.66 | 7,848.66 | ENG-MT-SL-TF-A-110 | PRC | MA | Each | A | SL | EN | ENG |
|  | 8 | **Telecom Network** |  | 2025-01-22 | 2025-05-14 |  |  |  |  |  |  |  |  |  |  |  |  |  |  |  |
|  | MS | **Submission of Material** |  | 2025-01-22 | 2025-01-29 |  |  |  |  |  |  |  |  |  |  |  |  |  |  |  |
|  | 1 | **Ducts Works** |  | 2025-01-22 | 2025-01-29 |  |  |  |  |  |  |  |  |  |  |  |  |  |  |  |
| ENG-MT-TE-S-100 |  | Material Submittal for Ducts of Telecom Network | 7d | 2025-01-22 A | 2025-01-29 A | ENG-DS-TE-A-110 | 100% |  |  |  |  |  | ENG-MT-TE-S-100 | PRC | MS | Each | S | TE | EN | ENG |
|  | 3 | **Manholes Works** |  | 2025-01-22 | 2025-01-29 |  |  |  |  |  |  |  |  |  |  |  |  |  |  |  |
| ENG-MT-TE-S-110 |  | Material Submittal for Manholes of Telecom Network | 7d | 2025-01-22 A | 2025-01-29 A | ENG-DS-TE-A-110 | 100% |  |  |  |  |  | ENG-MT-TE-S-110 | PRC | MS | Each | S | TE | EN | ENG |

| ID | WBS | Activity | Duration | Start | Finish | Predecessors | Complete | Planned start | Planned finish | Resources | Cost | Actual cost | Activity ID N | 02- Network-WBS | 03- Activity | 04-UOM | 05-Discipline | 01- Network | 08 Stage | Discipline |
| --- | --- | --- | --- | --- | --- | --- | --- | --- | --- | --- | --- | --- | --- | --- | --- | --- | --- | --- | --- | --- |
|  | MA | **Approval of Material** |  | 2025-01-30 | 2025-05-14 |  |  |  |  |  |  |  |  |  |  |  |  |  |  |  |
|  | 1 | **Ducts Works** |  | 2025-01-30 | 2025-02-10 |  |  |  |  |  |  |  |  |  |  |  |  |  |  |  |
| ENG-MT-TE-A-100 |  | Material Approval for Ducts of Telecom Network | 10d | 2025-01-30 A | 2025-02-10 A | ENG-MT-TE-S-100 | 100% |  |  | 6-way ducts, 50mm dia. HDPE [8342.95]; Road crossing ducts (6-way) [550] | 54,182.7 | 54,182.7 | ENG-MT-TE-A-100 | PRC | MA | Each | A | TE | EN | ENG |
|  | 3 | **Manholes Works** |  | 2025-01-30 | 2025-05-14 |  |  |  |  |  |  |  |  |  |  |  |  |  |  |  |
| ENG-MT-TE-A-110 |  | Material Approval for Manholes of Telecom Network | 10d | 2025-01-30 A | 2025-05-14 A | ENG-MT-TE-S-110 | 100% | 2025-01-30 | 2025-02-10 | Manhole Type 1 (2000x1000x1000) [25]; Manhole Type 2 (2000x1000x1000) [52]; Manhole Type 3 (2000x1000x1000) [4] | 11,372.13 | 11,372.13 | ENG-MT-TE-A-110 | PRC | MA | Each | A | TE | EN | ENG |
|  | 1 | **Superstructure Works** |  | 2025-01-22 | 2025-05-11 |  |  |  |  |  |  |  |  |  |  |  |  |  |  |  |
|  | SL | **Sewage Pump Stations ( PS 06 )** |  | 2025-01-22 | 2025-05-11 |  |  |  |  |  |  |  |  |  |  |  |  |  |  |  |
|  | 1 | **Submission of Material** |  | 2025-01-22 | 2025-05-11 |  |  |  |  |  |  |  |  |  |  |  |  |  |  |  |
| ENG-MT-SPS-CV-S-100 |  | Material Submittal for Civil Works for Sewage Pump Stations | 7d | 2025-01-22 A | 2025-05-11 A | ENG-DS-SW-A-110 | 100% | 2025-01-22 | 2025-01-29 |  |  |  | ENG-MT-SPS-CV-S-100 | DSN | DSS | Each | S | SL | EN | ENG |
|  | 2 | **Approval of Material** |  | 2025-01-30 | 2025-05-11 |  |  |  |  |  |  |  |  |  |  |  |  |  |  |  |
| ENG-MT-SPS-CV-A-110 |  | Material Approval for Civil Works for Sewage Pump Stations | 10d | 2025-01-30 A | 2025-05-11 A | ENG-MT-SPS-CV-S-100 | 100% | 2025-01-30 | 2025-02-10 | Wet well structure internal size (5.5*4.0m) at 11.0m depth [1]; Valve chamber [1]; for the pump station [1]; basket screen [1]; CMU walls with thickness 200mm [150]; Waterproofing for foundation [60]; Roof Insulation [45]; Acrylic paint on elevations including plastering [150]; Acrylic paint on internal wallsand ceiling including plastering [190]; Epoxy paint on floors [40]; Supply and install 2000*3000 mm double leaf manufacturer label shall pass the test requirements complete with accessories as per door schedule and material as approved by the Client. [1] | 23,563.38 | 23,563.38 | ENG-MT-SPS-CV-A-110 | DSN | DSA | Each | A | SL | EN | ENG |
|  | TE | **Storm Drainage Ponds ( PO-J1 , PO-J2 )** |  | 2025-01-22 | 2025-03-18 |  |  |  |  |  |  |  |  |  |  |  |  |  |  |  |
|  | 1 | **Submission of Material** |  | 2025-01-22 | 2025-01-29 |  |  |  |  |  |  |  |  |  |  |  |  |  |  |  |
| ENG-MT-DPO-CV-S-100 |  | Material Submittal for Civil Works for Storm Drainage Ponds | 7d | 2025-01-22 A | 2025-01-29 A | ENG-DS-SD-A-110 | 100% |  |  |  |  |  | ENG-MT-DPO-CV-S-100 | DSN | DSS | Each | S | TE | EN | ENG |
|  | 2 | **Approval of Material** |  | 2025-01-30 | 2025-03-18 |  |  |  |  |  |  |  |  |  |  |  |  |  |  |  |
| ENG-MT-DPO-CV-A-110 |  | Material Approval for Civil Works for Storm Drainage Ponds | 10d | 2025-01-30 A | 2025-03-18 A | ENG-MT-DPO-CV-S-100 | 100% | 2025-01-30 | 2025-02-10 | Excavation in all type of soil for any depth including levelling, compaction and disposal of surplus material [49955]; Reinforced Concrete lining including blinding concrete, construction, isolation layers and expansion joints as shown in drawings. [40]; Excavation in all type of soil to increase the depth of the existing pond for any depth including levelling, compaction and disposal of surplus material [20425]; Reinforced Concrete lining including blinding concrete, construction, isolation layers and expansion joints as shown in drawings. [18] | 89,051.04 | 89,051.04 | ENG-MT-DPO-CV-A-110 | DSN | DSA | Each | A | TE | EN | ENG |
|  | 1 | **Long Lead Time Items** |  | 2025-02-01 | 2025-06-02 |  |  |  |  |  |  |  |  |  |  |  |  |  |  |  |
|  | 1 | **Infrastructure Networks** |  | 2025-02-01 | 2025-05-23 |  |  |  |  |  |  |  |  |  |  |  |  |  |  |  |
|  | 1 | **RMU Works of Medium Voltage Network** |  | 2025-02-01 | 2025-05-23 |  |  |  |  |  |  |  |  |  |  |  |  |  |  |  |
|  | MS | **Submission of Material** |  | 2025-02-01 | 2025-02-12 |  |  |  |  |  |  |  |  |  |  |  |  |  |  |  |
| ENG-MT-MV-S-10 |  | Material Submittal for RMU of Medium Voltage Network | 7d | 2025-02-01 A | 2025-02-12 A | ENG-DS-MV-A-110 | 100% | 2025-01-22 | 2025-01-29 |  |  |  | ENG-MT-MV-S-10 | PRC | MS | Each | S | MV | EN | ENG |
|  | MA | **Approval of Material** |  | 2025-05-01 | 2025-05-23 |  |  |  |  |  |  |  |  |  |  |  |  |  |  |  |
| ENG-MT-MV-A-10 |  | Material Approval for RMU of Medium Voltage Network | 0d | 2025-05-01 A | 2025-05-23 A | ENG-MT-MV-S-10 | 100% | 2025-01-30 | 2025-01-30 | Supply & installation of (33) kv MV Switch (RMU) for Normally-open Points (NOP) according to the Saudi Electric Company specification | 30,058.8 | 30,058.8 | ENG-MT-MV-A-10 | PRC | MA | Each | A | MV | EN | ENG |
|  | 2 | **Superstructure Works** |  | 2025-05-11 | 2025-06-02 |  |  |  |  |  |  |  |  |  |  |  |  |  |  |  |
|  | SL | **Sewage Pump Stations ( PS 06 )** |  | 2025-05-11 | 2025-06-02 |  |  |  |  |  |  |  |  |  |  |  |  |  |  |  |
|  | 1 | **Submission of Material** |  | 2025-05-11 | 2025-05-19 |  |  |  |  |  |  |  |  |  |  |  |  |  |  |  |
| ENG-MT-SPS-MC-S-100 |  | Material Submittal for Electromechanical Works for Sewage Pump Stations | 7d | 2025-05-11 A | 2025-05-19 A | ENG-DS-SW-A-110 | 100% | 2025-01-22 | 2025-01-29 |  |  |  | ENG-MT-SPS-MC-S-100 | DSN | DSS | Each | S | SL | EN | ENG |

| ID | WBS | Activity | Duration | Start | Finish | Predecessors | Complete | Planned start | Planned finish | Resources | Cost | Actual cost | Activity ID N | 02- Network-WBS | 03- Activity | 04-UOM | 05-Discipline | 01- Network | 08 Stage | Discipline |
| --- | --- | --- | --- | --- | --- | --- | --- | --- | --- | --- | --- | --- | --- | --- | --- | --- | --- | --- | --- | --- |
|  | 2 | **Approval of Material** |  | 2025-05-20 | 2025-06-02 |  |  |  |  |  |  |  |  |  |  |  |  |  |  |  |
| ENG-MT-SPS-MC-A-110 |  | Material Approval for Electromechanical Works for Sewage Pump Stations | 10d | 2025-05-20 A | 2025-06-02 A | ENG-MT-SPS-MC-S-100 | 100% | 2025-01-30 | 2025-02-10 | Constant speed drive, sewage pumps, centrifugal submersible type; 2 duty / 1 standby capable of delivering a flow rate of flow 424 l/s against a total head of 22m, rate includes provision of MCC [1]; Odour control system [1]; Gate valves for the pump station [3]; Non return valves for the pump station [3]; Penstok for the pump station [1]; Standby Diesel Generator Set 400/230KVA, 3P, 60Hz in Sound Attenuated Enclosure KVA rating by contractor as per total load onsite after pumps selection [1]; Supply, install, test and commission of manually operated fuel pump, The pump should be supplied with all accessories as specified. [1]; Supply, install, test and commission of Fuel pump with capacity of not less than 1 hour to fill the daily tank of generator at required head. [1]; supply, install, test & commission Automatic Transfer Switch ATS panel including all accessories & works required. [1]; Supply, install, test and commission under ground fuel tank for 3 days of continuous operation of the standby generator at full load. The tank should be supplied with all accessories such as black steel pipes, float switches with two contactors ï¿½etc. as [1]; 4Cx 185mm2 Cu/XLPE//PVC from nearest power supply (SEC) and generator to the ATS and from ATS to MCC-SPS [600]; 4Cx 95mm2 Cu/XLPE//PVC from nearest power supply (SEC) and generator to the ATS and from ATS to MCC-SPS [400]; 4Cx 10mm2 Cu/XLPE/SWA/PVC from MCC-SPS to ELP [50]; 4Cx 150mm2 + 1Cx25mm2 SUBMERGED RUBBER INSULATED FLEXIBLE CABLE from MCC to PUMP1& PUMP2. [210]; 4Cx 10mm2 + 1Cx10mm2 Cu/XLPE/PVC FROM MCC-SPS to DB-SPS [50]; 4Cx 10mm2 + 1Cx10mm2 Cu/XLPE/PVC FROM MCC-SPS to Penstok [100]; 4Cx 10mm2 + 1Cx10mm2 Cu/XLPE/PVC FROM MCC-SPS to Odor Control Unit [100]; 4Cx 6mm2 + 1Cx6mm2 Cu/XLPE/PVC FROM MCC-SPS to the mechanical bar screen [80]; 3Cx 6mm2 Cu/XLPE/PVC FROM MCC-SPS to the two fuel pumps. [100]; 3Cx 4mm2 Cu/XLPE/PVC to the AC. [80]; MCC [1]; Surge protection system study [1]; Surge protection system [1]; Local Control Panel, IP 65 [4]; Isolator/disconnect switches IP65 [16]; DB-SPS Panel [4]; ELP Panel: phtocell , timer,40 Ampere, 3P, IP66,60Hz incomer MCCB & 5ways outgoing MCCB [4]; Electrical Hand Hole 600mm x 600mm x 800mm concrete hand hole with hot dip galvanized heavy duty steel cover [10]; Electrical Hand Hole 400mm x 400mm x 600mm concrete hand hole with hot dip galvanized heavy duty steel cover [10]; Surfaced Mounted Light [8]; 13A DOUBLE SWITCH SOCKET OUTLET (WEATHER PROOF) [8]; 20A SWITCH SOCKET OUTLET (FOR SPLIT UNIT), (WEATHER PROOF) [8]; Supply, install and test the following grounding and lightning system including ground wires, ground rods, inspection pits, terminations, bonding/clamping, civil works and all materials and accessories required to complete the work according to specificat [2]; Supply and install telephone and fire alarm system including smoke detector, cabinet, control panel, cables, conduits, switches, and other accessories to complete as per drawings and specifications. [1]; "Supply, installation, testing and commissioning of PLC system, serving the pumping station and all related utilities. The PLC shall consists but limited to the following:; Supply, installation, testing and commissioning of all control, instrumentation( as shown on the P & ID drawings cable schedule) including all installation accessories such as termination kits, lugs, glands, cable containments, junction boxes , conduits, [2]; Supply, installation, testing and commissioning of all field instruments such as hydrostatic level meter, level switches, flow switch, and all necessary instruments including all installation accessories, etc. all as per specifications and design drawings [2]; DX wall mounted Split/AC [2]; CO2 fire extinguishers [2]; Powder fire extinguishers [2]; Flood lights shall be high pole with 250 watt HPS luminaire [4]; 1 - way duct - not exceeding 1.5m deep [1]; 2 - way duct - not exceeding 1.5m deep [1]; 8 - way duct - not exceeding 1.5m deep [1]; Earth pits [1]; Cable draw pit, 600x600mm [1] | 136,107.6 | 136,107.6 | ENG-MT-SPS-MC-A-110 | DSN | DSA | Each | A | SL | EN | ENG |
|  | PROC | **Procurement Cycle** |  | 2025-02-11 | 2026-12-26 |  |  |  |  |  |  |  |  |  |  |  |  |  |  |  |
|  | NLL | **Short Lead Time Items** |  | 2025-02-11 | 2026-12-26 |  |  |  |  |  |  |  |  |  |  |  |  |  |  |  |
|  | INF | **Infrastructure Networks** |  | 2025-02-11 | 2026-12-26 |  |  |  |  |  |  |  |  |  |  |  |  |  |  |  |
|  | RD | **Road Works** |  | 2025-02-11 | 2026-12-02 |  |  |  |  |  |  |  |  |  |  |  |  |  |  |  |
|  | PO | **Issuance of Purchase Orders** |  | 2025-02-11 | 2025-06-12 |  |  |  |  |  |  |  |  |  |  |  |  |  |  |  |
|  | 1 | **Road Works** |  | 2025-02-11 | 2025-02-25 |  |  |  |  |  |  |  |  |  |  |  |  |  |  |  |
| PRO-RD-PO-100 |  | Issuance of Purchase Order for Subgrade of Road Works | 12d | 2025-02-11 A | 2025-02-25 A | ENG-MT-RD-A-100, ENG-SH-RD-A-100, ENG-MS-RD-A-10 | 100% |  |  |  |  |  | PRO-RD-PO-100 | PRC | PO | Each | PO | RD | PRO | PROC |
| PRO-RD-PO-110 |  | Issuance of Purchase Order for Aggregate Base Course of Road Works | 12d | 2025-02-11 A | 2025-02-25 A | ENG-MT-RD-A-110, ENG-SH-RD-A-100, ENG-MS-RD-A-10 | 100% |  |  |  |  |  | PRO-RD-PO-110 | PRC | PO | Each | PO | RD | PRO | PROC |
| PRO-RD-PO-120 |  | Issuance of Purchase Order for Prime Coat of Road Works | 12d | 2025-02-11 A | 2025-02-25 A | ENG-MT-RD-A-120, ENG-SH-RD-A-100, ENG-MS-RD-A-10 | 100% |  |  |  |  |  | PRO-RD-PO-120 | PRC | PO | Each | PO | RD | PRO | PROC |
| PRO-RD-PO-130 |  | Issuance of Purchase Order for Bituminous Base & Wearing Courses of Road Works | 12d | 2025-02-11 A | 2025-02-25 A | ENG-MT-RD-A-130, ENG-SH-RD-A-100, ENG-MS-RD-A-10 | 100% |  |  |  |  |  | PRO-RD-PO-130 | PRC | PO | Each | PO | RD | PRO | PROC |
|  | 2 | **Pavement Works** |  | 2025-02-17 | 2025-03-04 |  |  |  |  |  |  |  |  |  |  |  |  |  |  |  |
| PRO-RD-PO-140 |  | Issuance of Purchase Order for Interlock Tiles of Landscaping | 12d | 2025-02-17 A | 2025-03-04 A | ENG-MT-RD-A-140, ENG-SH-HS-A-110, ENG-MS-HS-A-10 | 100% | 2025-02-17 | 2025-03-03 |  |  |  | PRO-RD-PO-140 | PRC | PO | Each | PO | RD | PRO | PROC |
| PRO-RD-PO-150 |  | Issuance of Purchase Order for Curbstones of Landscaping | 12d | 2025-02-17 A | 2025-03-04 A | ENG-MT-RD-A-150, ENG-SH-HS-A-110, ENG-MS-HS-A-10 | 100% | 2025-02-17 | 2025-03-03 |  |  |  | PRO-RD-PO-150 | PRC | PO | Each | PO | RD | PRO | PROC |
|  | 3 | **Traffic Signs Boards and Roads Marking** |  | 2025-06-01 | 2025-06-12 |  |  |  |  |  |  |  |  |  |  |  |  |  |  |  |
| PRO-RD-PO-160 |  | Issuance of Purchase Order for Traffic Signs Boards of Road Works | 12d | 2025-06-01 A | 2025-06-12 A | ENG-MT-TS-A-100, ENG-SH-TSB-A-100, ENG-MS-TSB-A-10 | 100% | 2025-02-17 | 2025-03-03 |  |  |  | PRO-RD-PO-160 | PRC | PO | Each | PO | RD | PRO | PROC |
| PRO-RD-PO-170 |  | Issuance of Purchase Order for Road Markings of Road Works | 12d | 2025-06-01 A | 2025-06-12 A | ENG-MT-TS-A-110, ENG-SH-MRK-A-110, ENG-MS-MRK-A-10 | 100% | 2025-02-17 | 2025-03-03 |  |  |  | PRO-RD-PO-170 | PRC | PO | Each | PO | RD | PRO | PROC |
|  | MF | **Manufacturing of Material** |  | 2025-04-01 | 2025-06-01 |  |  |  |  |  |  |  |  |  |  |  |  |  |  |  |
|  | 1 | **Road Works** |  | 2025-04-01 | 2025-06-01 |  |  |  |  |  |  |  |  |  |  |  |  |  |  |  |
| PRO-RD-MF-100 |  | Manufacturing of Subgrade for Road Works | 90d | 2025-04-01 A | 2025-05-29 A | PRO-RD-PO-100 | 100% | 2025-02-26 | 2025-06-19 |  |  |  | PRO-RD-MF-100 | PRC | MF | Each | MF | RD | PRO | PROC |
| PRO-RD-MF-110 |  | Manufacturing of Aggregate Base Course for Road Works | 110d | 2025-05-11 A | 2025-06-01 A | PRO-RD-PO-110 | 100% | 2025-02-26 | 2025-07-13 |  |  |  | PRO-RD-MF-110 | PRC | MF | Each | MF | RD | PRO | PROC |
| PRO-RD-MF-120 |  | Manufacturing of Prime Coat for Road Works | 110d | 2025-05-12 A | 2025-05-22 A | PRO-RD-PO-120 | 100% | 2025-02-26 | 2025-07-13 |  |  |  | PRO-RD-MF-120 | PRC | MF | Each | MF | RD | PRO | PROC |
| PRO-RD-MF-130 |  | Manufacturing of Bituminous Base & Wearing Courses for Road Works | 110d | 2025-05-28 A | 2025-06-01 A | PRO-RD-PO-130 | 100% | 2025-02-26 | 2025-07-13 |  |  |  | PRO-RD-MF-130 | PRC | MF | Each | MF | RD | PRO | PROC |

| ID | WBS | Activity | Duration | Start | Finish | Predecessors | Complete | Planned start | Planned finish | Total float | Free float | Resources | Cost | Actual cost | Activity ID N | 02- Network-WBS | 03- Activity | 04-UOM | 05-Discipline | 01- Network | 08 Stage | Discipline | 09 Roads |
| --- | --- | --- | --- | --- | --- | --- | --- | --- | --- | --- | --- | --- | --- | --- | --- | --- | --- | --- | --- | --- | --- | --- | --- |
|  | 2 | **Pavement Works** |  | 2025-05-04 | 2025-06-01 |  |  |  |  |  |  |  |  |  |  |  |  |  |  |  |  |  |  |
| PRO-RD-MF-140 |  | Manufacturing of Interlock Tiles for Landscaping | 110d | 2025-05-04 A | 2025-05-26 A | PRO-RD-PO-140 | 100% | 2025-03-04 | 2025-07-19 |  |  |  |  |  | PRO-RD-MF-140 | PRC | MF | Each | MF | RD | PRO | PROC |  |
| PRO-RD-MF-150 |  | Manufacturing of Curbstones for Landscaping | 110d | 2025-05-20 A | 2025-06-01 A | PRO-RD-PO-150 | 100% | 2025-03-04 | 2025-07-19 |  |  |  |  |  | PRO-RD-MF-150 | PRC | MF | Each | MF | RD | PRO | PROC |  |
|  | 3 | **Traffic Signs Boards and Roads Marking** |  | 2025-05-12 | 2025-05-29 |  |  |  |  |  |  |  |  |  |  |  |  |  |  |  |  |  |  |
| PRO-RD-MF-170 |  | Manufacturing of Road Markings for Road Works | 130d | 2025-05-12 A | 2025-05-29 A | PRO-RD-PO-170 | 100% | 2025-03-04 | 2025-08-11 |  |  |  |  |  | PRO-RD-MF-170 | PRC | MF | Each | MF | RD | PRO | PROC |  |
| PRO-RD-MF-160 |  | Manufacturing of Traffic Signs Boards for Road Works | 130d | 2025-05-14 A | 2025-05-29 A | PRO-RD-PO-160 | 100% | 2025-03-04 | 2025-08-11 |  |  |  |  |  | PRO-RD-MF-160 | PRC | MF | Each | MF | RD | PRO | PROC |  |
|  | 1DL | **1st Material Delivery & Site Inspection** |  | 2025-05-22 | 2026-11-02 |  |  |  |  |  |  |  |  |  |  |  |  |  |  |  |  |  |  |
|  | 1 | **Road Works** |  | 2025-05-22 | 2025-07-05 |  |  |  |  |  |  |  |  |  |  |  |  |  |  |  |  |  |  |
| PRO-RD-1DL-120 |  | 1ST Material Delivery for Prime Coat of Road Works | 6d | 2025-05-22 A | 2025-05-30 A | PRO-RD-MF-120 | 100% | 2025-07-14 | 2025-07-20 |  |  |  |  |  | PRO-RD-1DL-120 | PRC | 1DL | Each | 1DL | RD | PRO | PROC |  |
| PRO-RD-1DL-100 |  | 1ST Material Delivery for Subgrade of Road Works | 6d | 2025-05-30 A | 2025-06-08 A | PRO-RD-MF-100 | 100% | 2025-06-21 | 2025-06-26 |  |  |  |  |  | PRO-RD-1DL-100 | PRC | 1DL | Each | 1DL | RD | PRO | PROC |  |
| PRO-RD-1DL-130 |  | 1ST Material Delivery for Bituminous Base & Wearing Courses of Road Works | 6d | 2025-06-01 A | 2025-06-15 A | PRO-RD-MF-130 | 100% | 2025-07-14 | 2025-07-20 |  |  |  |  |  | PRO-RD-1DL-130 | PRC | 1DL | Each | 1DL | RD | PRO | PROC |  |
| PRO-RD-1DL-110 |  | 1ST Material Delivery for Aggregate Base Course of Road Works | 6d | 2025-06-02 A | 2025-07-05 A | PRO-RD-MF-110 | 100% | 2025-07-14 | 2025-07-20 |  |  |  |  |  | PRO-RD-1DL-110 | PRC | 1DL | Each | 1DL | RD | PRO | PROC |  |
|  | 2 | **Pavement Works** |  | 2026-02-17 | 2026-07-19 |  |  |  |  |  |  |  |  |  |  |  |  |  |  |  |  |  |  |
| PRO-RD-1DL-140 |  | 1ST Material Delivery for Interlock Tiles of Landscaping | 6d | 2026-02-17 A | 2026-07-19 A | PRO-RD-MF-140 | 100% | 2026-10-13 | 2026-10-19 |  |  |  |  |  | PRO-RD-1DL-140 | PRC | 1DL | Each | 1DL | RD | PRO | PROC |  |
| PRO-RD-1DL-150 |  | 1ST Material Delivery for Curbstones of Landscaping | 6d | 2026-02-17 A | 2026-07-19 A | PRO-RD-MF-150 | 100% | 2026-10-13 | 2026-10-19 |  |  |  |  |  | PRO-RD-1DL-150 | PRC | 1DL | Each | 1DL | RD | PRO | PROC |  |
|  | 3 | **Traffic Signs Boards and Roads Marking** |  | 2026-10-27 | 2026-11-02 |  |  |  |  |  |  |  |  |  |  |  |  |  |  |  |  |  |  |
| PRO-RD-1DL-160 |  | 1ST Material Delivery for Traffic Signs Boards of Road Works | 6d | 2026-10-27 | 2026-11-02 | PRO-RD-MF-160 |  |  |  | -31d | 0d |  |  |  | PRO-RD-1DL-160 | PRC | 1DL | Each | 1DL | RD | PRO | PROC |  |
| PRO-RD-1DL-170 |  | 1ST Material Delivery for Road Markings of Road Works | 6d | 2026-10-27 | 2026-11-02 | PRO-RD-MF-170 |  |  |  | -31d | 0d |  |  |  | PRO-RD-1DL-170 | PRC | 1DL | Each | 1DL | RD | PRO | PROC |  |
|  | DL | **Material Delivery & Site Inspection** |  | 2025-06-09 | 2026-12-02 |  |  |  |  |  |  |  |  |  |  |  |  |  |  |  |  |  |  |
|  | 1 | **Road 18 Local 1 ( 479 LM )** |  | 2025-06-10 | 2026-12-02 |  |  |  |  |  |  |  |  |  |  |  |  |  |  |  |  |  |  |
|  | 1 | **Pre-Bituminous Construction** |  | 2025-06-10 | 2025-08-11 |  |  |  |  |  |  |  |  |  |  |  |  |  |  |  |  |  |  |
| PRO-R18-RD-DL-220 |  | Material Delivery & Site Inspection for Subgrade of Road Works | 26d | 2025-06-10 A | 2025-07-07 A | PRO-RD-1DL-100 | 100% | 2025-06-28 | 2025-07-27 |  |  | 300mm thick Subgrade, including subgrade preparation, CBR?25% [2919.16] | 29,191.6 | 29,191.6 | PRO-R18-RD-DL-220 | PRC | 1DL | Each | 1DL | RD | PRO | PROC | R18 |
| PRO-R18-RD-DL-230 |  | Material Delivery & Site Inspection for Aggregate Base Course of Road Works | 26d | 2025-08-01 A | 2025-08-11 A | PRO-RD-1DL-110, PRO-R18-RD-DL-220 | 100% | 2025-07-28 | 2025-08-26 |  |  | Aggregate base course 200mm thick after compaction in two layers(Grading 1); CBR?80%; including watering, compaction and testing [1946.32] | 47,100.94 | 47,100.94 | PRO-R18-RD-DL-230 | PRC | 1DL | Each | 1DL | RD | PRO | PROC | R18 |
|  | 2 | **Pavement Works** |  | 2026-08-03 | 2026-08-20 |  |  |  |  |  |  |  |  |  |  |  |  |  |  |  |  |  |  |
| PRO-R18-RD-DL-180 |  | Material Delivery & Site Inspection of Interlock Tiles for Landscaping | 26d | 2026-08-03 A | 2026-08-20 A | PRO-R18-RD-DL-230 | 100% | 2025-08-27 | 2025-09-27 |  |  | Interlocking block pavers for sidewalk/footpath 60mm thick on and including 30mm Sand Bedding, 200mm Aggregate subbase, all in accordance with authority standards and complete as per specifications [1923.24]; Extraover for Pedestrian ramps [6] | 27,711.36 | 27,711.36 | PRO-R18-RD-DL-180 | PRC | DL | Each | DL | RD | PRO | PROC | R18 |
| PRO-R18-RD-DL-190 |  | Material Delivery & Site Inspection of Curbstones for Landscaping | 26d | 2026-08-03 A | 2026-08-20 A | PRO-R18-RD-DL-180 | 100% | 2025-09-28 | 2025-10-27 |  |  | Precast Concrete Kerb, Type K1 [1077]; Precast Concrete Kerb, Type L1 [2136.92] | 38,567.04 | 38,567.04 | PRO-R18-RD-DL-190 | PRC | DL | Each | DL | RD | PRO | PROC | R18 |

| ID | WBS | Activity | Duration | Start | Finish | Predecessors | Complete | Planned start | Planned finish | Total float | Free float | Resources | Cost | Actual cost | Activity ID N | 02- Network-WBS | 03- Activity | 04-UOM | 05-Discipline | 01- Network | 08 Stage | 09 Roads | Discipline |
| --- | --- | --- | --- | --- | --- | --- | --- | --- | --- | --- | --- | --- | --- | --- | --- | --- | --- | --- | --- | --- | --- | --- | --- |
|  | 4 | **Bituminous Construction** |  | 2025-09-20 | 2025-10-11 |  |  |  |  |  |  |  |  |  |  |  |  |  |  |  |  |  |  |
| PRO-R18-RD-DL-240 |  | Material Delivery & Site Inspection for Prime Coat of Road Works | 26d | 2025-09-20 A | 2025-09-21 A | PRO-RD-1DL-120, PRO-R18-RD-DL-190 | 100% | 2025-10-28 | 2025-11-26 |  |  | Bituminous base course(Grading I - Class A), 70mm thick after compaction including Prime Coat (MC1) [136.22]; Bituminous concrete wearing course, 50 mm thick, after compaction(Grading I - Class A), including tack coat (RC) [97.31] | 26,525.18 | 26,525.18 | PRO-R18-RD-DL-240 | PRC | 1DL | Each | 1DL | RD | PRO | R18 | PROC |
| PRO-R18-RD-DL-250 |  | Material Delivery & Site Inspection for Bituminous Base & Wearing Courses of Road Works | 26d | 2025-09-23 A | 2025-10-11 A | PRO-RD-1DL-130, PRO-R18-RD-DL-240 | 100% | 2025-11-27 | 2025-12-27 |  |  | Bituminous base course(Grading I - Class A), 70mm thick after compaction including Prime Coat (MC1) [544.9]; Bituminous concrete wearing course, 50 mm thick, after compaction(Grading I - Class A), including tack coat (RC) [389.23] | 106,101.7 | 106,101.7 | PRO-R18-RD-DL-250 | PRC | 1DL | Each | 1DL | RD | PRO | R18 | PROC |
|  | 3 | **Traffic Signs Boards and Roads Marking** |  | 2026-11-03 | 2026-12-02 |  |  |  |  |  |  |  |  |  |  |  |  |  |  |  |  |  |  |
| PRO-R18-RD-DL-200 |  | Material Delivery & Site Inspection of Traffic Signs Boards For Road Works | 26d | 2026-11-03 | 2026-12-02 | PRO-R18-RD-DL-250 FF, PRO-RD-1DL-160, PRO-R18-RD-DL-250 SS |  |  |  | -31d | 0d | Traffic signs, ground mounted, Sheet Alumenium, (breakaway) Single post, with all accessories [6]; Straight Arrow [12]; Straight-Right Arrow [2] | 1,971.2 |  | PRO-R18-RD-DL-200 | PRC | DL | Each | DL | RD | PRO | R18 | PROC |
| PRO-R18-RD-DL-210 |  | Material Delivery & Site Inspection of Road Markings For Road Works | 26d | 2026-11-03 | 2026-12-02 | PRO-R18-RD-DL-200 SS, PRO-RD-1DL-170 |  |  |  | -31d | 0d | Retroreflective Thermoplastic White, Traffic lines [366.9]; Retroreflective Thermoplastic Yellow, Traffic lines [56.22]; Retroreflective raised pavement markers(Type A) [71.72] | 4,328.78 |  | PRO-R18-RD-DL-210 | PRC | DL | Each | DL | RD | PRO | R18 | PROC |
|  | 9 | **Road 17 Local 1 ( 500 LM )** |  | 2025-07-06 | 2026-12-02 |  |  |  |  |  |  |  |  |  |  |  |  |  |  |  |  |  |  |
|  | 1 | **Pre-Bituminous Construction** |  | 2025-07-06 | 2025-09-04 |  |  |  |  |  |  |  |  |  |  |  |  |  |  |  |  |  |  |
| PRO-R17-RD-DL-120 |  | Material Delivery & Site Inspection for Subgrade of Road Works | 26d | 2025-07-06 A | 2025-07-13 A | PRO-RD-1DL-100, PRO-R18-RD-DL-220 | 100% | 2025-07-28 | 2025-08-26 |  |  | 300mm thick Subgrade, including subgrade preparation, CBR?25% [3018.74] | 30,187.4 | 30,187.4 | PRO-R17-RD-DL-120 | PRC | 1DL | Each | 1DL | RD | PRO | R17 | PROC |
| PRO-R17-RD-DL-130 |  | Material Delivery & Site Inspection for Aggregate Base Course of Road Works | 26d | 2025-09-01 A | 2025-09-04 A | PRO-RD-1DL-110, PRO-R18-RD-DL-230, PRO-R17-RD-DL-120 | 100% | 2025-08-27 | 2025-09-27 |  |  | Aggregate base course 200mm thick after compaction in two layers(Grading 1); CBR?80%; including watering, compaction and testing [2012.68] | 48,706.86 | 48,706.86 | PRO-R17-RD-DL-130 | PRC | 1DL | Each | 1DL | RD | PRO | R17 | PROC |
|  | 2 | **Pavement Works** |  | 2026-08-22 | 2026-08-29 |  |  |  |  |  |  |  |  |  |  |  |  |  |  |  |  |  |  |
| PRO-R17-RD-DL-100 |  | Material Delivery & Site Inspection of Interlock Tiles for Landscaping | 26d | 2026-08-22 A | 2026-08-29 A | PRO-R18-RD-DL-180, PRO-R17-RD-DL-130 | 100% | 2025-09-28 | 2025-10-27 |  |  | Interlocking block pavers for sidewalk/footpath 60mm thick on and including 30mm Sand Bedding, 200mm Aggregate subbase, all in accordance with authority standards and complete as per specifications [1988.82]; Extraover for Pedestrian ramps [4] | 28,367.48 | 28,367.48 | PRO-R17-RD-DL-100 | PRC | DL | Each | DL | RD | PRO | R17 | PROC |
| PRO-R17-RD-DL-110 |  | Material Delivery & Site Inspection of Curbstones for Landscaping | 26d | 2026-08-22 A | 2026-08-29 A | PRO-R18-RD-DL-190, PRO-R17-RD-DL-100 | 100% | 2025-10-28 | 2025-11-26 |  |  | Precast Concrete Kerb, Type K1 [1113.76]; Precast Concrete Kerb, Type L1 [2209.78] | 39,882.48 | 39,882.48 | PRO-R17-RD-DL-110 | PRC | DL | Each | DL | RD | PRO | R17 | PROC |
|  | 4 | **Bituminous Construction** |  | 2025-09-20 | 2025-10-11 |  |  |  |  |  |  |  |  |  |  |  |  |  |  |  |  |  |  |
| PRO-R17-RD-DL-160 |  | Material Delivery & Site Inspection for Prime Coat of Road Works | 26d | 2025-09-20 A | 2025-09-25 A | PRO-RD-1DL-120, PRO-R18-RD-DL-240, PRO-R17-RD-DL-110 | 100% | 2025-11-27 | 2025-12-27 |  |  | Bituminous base course(Grading I - Class A), 70mm thick after compaction including Prime Coat (MC1) [140.88]; Bituminous concrete wearing course, 50 mm thick, after compaction(Grading I - Class A), including tack coat (RC) [100.63] | 27,431.52 | 27,431.52 | PRO-R17-RD-DL-160 | PRC | 1DL | Each | 1DL | RD | PRO | R17 | PROC |
| PRO-R17-RD-DL-170 |  | Material Delivery & Site Inspection for Bituminous Base & Wearing Courses of Road Works | 26d | 2025-10-09 A | 2025-10-11 A | PRO-RD-1DL-130, PRO-R18-RD-DL-250, PRO-R17-RD-DL-160 | 100% | 2025-12-28 | 2026-01-26 |  |  | Bituminous base course(Grading I - Class A), 70mm thick after compaction including Prime Coat (MC1) [563.5]; Bituminous concrete wearing course, 50 mm thick, after compaction(Grading I - Class A), including tack coat (RC) [402.51] | 109,722.7 | 109,722.7 | PRO-R17-RD-DL-170 | PRC | 1DL | Each | 1DL | RD | PRO | R17 | PROC |
|  | 3 | **Traffic Signs Boards and Roads Marking** |  | 2026-11-03 | 2026-12-02 |  |  |  |  |  |  |  |  |  |  |  |  |  |  |  |  |  |  |
| PRO-R17-RD-DL-140 |  | Material Delivery & Site Inspection of Traffic Signs Boards For Road Works | 26d | 2026-11-03 | 2026-12-02 | PRO-RD-1DL-160, PRO-R17-RD-DL-170 FF, PRO-R18-RD-DL-200 SS, PRO-R18-RD-DL-200 FF, PRO-R17-RD-DL-170 SS |  |  |  | -31d | 0d | Traffic signs, ground mounted, Sheet Alumenium, (breakaway) Single post, with all accessories [4]; Straight Arrow [12]; Straight-Right Arrow [2]; Straight-Left Arrow [2] | 1,504.8 |  | PRO-R17-RD-DL-140 | PRC | DL | Each | DL | RD | PRO | R17 | PROC |
| PRO-R17-RD-DL-150 |  | Material Delivery & Site Inspection of Road Markings For Road Works | 26d | 2026-11-03 | 2026-12-02 | PRO-RD-1DL-170, PRO-R17-RD-DL-140 SS, PRO-R18-RD-DL-210 SS, PRO-R18-RD-DL-210 FF |  |  |  | -31d | 0d | Retroreflective Thermoplastic White, Traffic lines [379.4]; Retroreflective Thermoplastic Yellow, Traffic lines [58.12]; Retroreflective raised pavement markers(Type A) [74.18] | 4,476.31 |  | PRO-R17-RD-DL-150 | PRC | DL | Each | DL | RD | PRO | R17 | PROC |
|  | 8 | **Road 16 Local 1 ( 527 LM )** |  | 2025-07-28 | 2026-12-02 |  |  |  |  |  |  |  |  |  |  |  |  |  |  |  |  |  |  |
|  | 1 | **Pre-Bituminous Construction** |  | 2025-07-28 | 2025-10-12 |  |  |  |  |  |  |  |  |  |  |  |  |  |  |  |  |  |  |
| PRO-R16-RD-DL-100 |  | Material Delivery & Site Inspection for Subgrade of Road Works | 26d | 2025-07-28 A | 2025-08-02 A | PRO-RD-1DL-100, PRO-R17-RD-DL-120 | 100% | 2025-08-27 | 2025-09-27 |  |  | 300mm thick Subgrade, including subgrade preparation, CBR?25% [3174.94] | 31,749.4 | 31,749.4 | PRO-R16-RD-DL-100 | PRC | 1DL | Each | 1DL | RD | PRO | R16 | PROC |
| PRO-R16-RD-DL-110 |  | Material Delivery & Site Inspection for Aggregate Base Course of Road Works | 26d | 2025-09-17 A | 2025-10-12 A | PRO-RD-1DL-110, PRO-R17-RD-DL-130 | 100% | 2025-09-28 | 2025-10-27 |  |  | Aggregate base course 200mm thick after compaction in two layers(Grading 1); CBR?80%; including watering, compaction and testing [2116.82] | 51,227.04 | 51,227.04 | PRO-R16-RD-DL-110 | PRC | 1DL | Each | 1DL | RD | PRO | R16 | PROC |
|  | 2 | **Pavement Works** |  | 2026-08-24 | 2026-08-27 |  |  |  |  |  |  |  |  |  |  |  |  |  |  |  |  |  |  |
| PRO-R16-RD-DL-120 |  | Material Delivery & Site Inspection of Interlock Tiles for Landscaping | 26d | 2026-08-24 A | 2026-08-27 A | PRO-R17-RD-DL-100 | 100% | 2025-10-28 | 2025-11-26 |  |  | Interlocking block pavers for sidewalk/footpath 60mm thick on and including 30mm Sand Bedding, 200mm Aggregate subbase, all in accordance with authority standards and complete as per specifications [2091.74]; Extraover for Pedestrian ramps [6] | 30,070.36 | 30,070.36 | PRO-R16-RD-DL-120 | PRC | DL | Each | DL | RD | PRO | R16 | PROC |
| PRO-R16-RD-DL-130 |  | Material Delivery & Site Inspection of Curbstones for Landscaping | 26d | 2026-08-24 A | 2026-08-27 A | PRO-R16-RD-DL-110 FF, PRO-R17-RD-DL-110 | 100% | 2025-11-27 | 2025-12-27 |  |  | Precast Concrete Kerb, Type K1 [1171.38]; Precast Concrete Kerb, Type L1 [2324.14] | 41,946.24 | 41,946.24 | PRO-R16-RD-DL-130 | PRC | DL | Each | DL | RD | PRO | R16 | PROC |

| ID | WBS | Activity | Duration | Start | Finish | Predecessors | Complete | Planned start | Planned finish | Total float | Free float | Resources | Cost | Actual cost | Activity ID N | 02- Network-WBS | 03- Activity | 04-UOM | 05-Discipline | 01- Network | 08 Stage | 09 Roads | Discipline |
| --- | --- | --- | --- | --- | --- | --- | --- | --- | --- | --- | --- | --- | --- | --- | --- | --- | --- | --- | --- | --- | --- | --- | --- |
|  | 4 | **Bituminous Construction** |  | 2025-10-12 | 2025-12-15 |  |  |  |  |  |  |  |  |  |  |  |  |  |  |  |  |  |  |
| PRO-R16-RD-DL-160 |  | Material Delivery & Site Inspection for Prime Coat of Road Works | 26d | 2025-10-12 A | 2025-10-12 A | PRO-RD-1DL-120, PRO-R17-RD-DL-160 | 100% | 2025-12-28 | 2026-01-26 |  |  | Bituminous base course(Grading I - Class A), 70mm thick after compaction including Prime Coat (MC1) [148.16]; Bituminous concrete wearing course, 50 mm thick, after compaction(Grading I - Class A), including tack coat (RC) [105.83] | 28,849.04 | 28,849.04 | PRO-R16-RD-DL-160 | PRC | 1DL | Each | 1DL | RD | PRO | R16 | PROC |
| PRO-R16-RD-DL-170 |  | Material Delivery & Site Inspection for Bituminous Base & Wearing Courses of Road Works | 26d | 2025-12-13 A | 2025-12-15 A | PRO-RD-1DL-130, PRO-R16-RD-DL-120, PRO-R17-RD-DL-170 | 100% | 2026-01-27 | 2026-02-25 |  |  | Bituminous base course(Grading I - Class A), 70mm thick after compaction including Prime Coat (MC1) [592.64]; Bituminous concrete wearing course, 50 mm thick, after compaction(Grading I - Class A), including tack coat (RC) [423.33] | 115,397.36 | 115,397.36 | PRO-R16-RD-DL-170 | PRC | 1DL | Each | 1DL | RD | PRO | R16 | PROC |
|  | 3 | **Traffic Signs Boards and Roads Marking** |  | 2026-11-03 | 2026-12-02 |  |  |  |  |  |  |  |  |  |  |  |  |  |  |  |  |  |  |
| PRO-R16-RD-DL-140 |  | Material Delivery & Site Inspection of Traffic Signs Boards For Road Works | 26d | 2026-11-03 | 2026-12-02 | PRO-RD-1DL-160, PRO-R16-RD-DL-170 FF, PRO-R17-RD-DL-140 SS, PRO-R17-RD-DL-140 FF |  |  |  | -31d | 0d | Traffic signs, ground mounted, Sheet Alumenium, (breakaway) Single post, with all accessories [6]; Straight Arrow [12]; Right or Left Arrow [2]; Straight-Right Arrow [2] | 2,028.4 |  | PRO-R16-RD-DL-140 | PRC | DL | Each | DL | RD | PRO | R16 | PROC |
| PRO-R16-RD-DL-150 |  | Material Delivery & Site Inspection of Road Markings For Road Works | 26d | 2026-11-03 | 2026-12-02 | PRO-RD-1DL-170, PRO-R16-RD-DL-140 SS, PRO-R17-RD-DL-150 SS, PRO-R17-RD-DL-150 FF |  |  |  | -31d | 0d | Retroreflective Thermoplastic White, Traffic lines [399.04]; Retroreflective Thermoplastic Yellow, Traffic lines [61.14]; Retroreflective raised pavement markers(Type A) [78] | 4,707.91 |  | PRO-R16-RD-DL-150 | PRC | DL | Each | DL | RD | PRO | R16 | PROC |
|  | 7 | **Road 15 Local 1 ( 556 LM )** |  | 2025-06-09 | 2026-12-02 |  |  |  |  |  |  |  |  |  |  |  |  |  |  |  |  |  |  |
|  | 1 | **Pre-Bituminous Construction** |  | 2025-06-09 | 2025-10-13 |  |  |  |  |  |  |  |  |  |  |  |  |  |  |  |  |  |  |
| PRO-R15-RD-DL-100 |  | Material Delivery & Site Inspection for Subgrade of Road Works | 26d | 2025-06-09 A | 2025-07-13 A | PRO-RD-1DL-100, PRO-R16-RD-DL-100 | 100% | 2025-09-28 | 2025-10-27 |  |  | 300mm thick Subgrade, including subgrade preparation, CBR?25% [3331.16] | 33,311.6 | 33,311.6 | PRO-R15-RD-DL-100 | PRC | 1DL | Each | 1DL | RD | PRO | R15 | PROC |
| PRO-R15-RD-DL-110 |  | Material Delivery & Site Inspection for Aggregate Base Course of Road Works | 26d | 2025-10-12 A | 2025-10-13 A | PRO-RD-1DL-110, PRO-R16-RD-DL-110 | 100% | 2025-10-28 | 2025-11-26 |  |  | Aggregate base course 200mm thick after compaction in two layers(Grading 1); CBR?80%; including watering, compaction and testing [2221] | 53,748.2 | 53,748.2 | PRO-R15-RD-DL-110 | PRC | 1DL | Each | 1DL | RD | PRO | R15 | PROC |
|  | 2 | **Pavement Works** |  | 2026-05-16 | 2026-06-01 |  |  |  |  |  |  |  |  |  |  |  |  |  |  |  |  |  |  |
| PRO-R15-RD-DL-130 |  | Material Delivery & Site Inspection of Curbstones for Landscaping | 26d | 2026-05-16 A | 2026-06-01 A | PRO-R15-RD-DL-110 FF, PRO-R16-RD-DL-130 | 100% | 2025-12-28 | 2026-01-26 |  |  | Precast Concrete Kerb, Type K1 [1229.02]; Precast Concrete Kerb, Type L1 [2438.52] | 44,010.48 | 44,010.48 | PRO-R15-RD-DL-130 | PRC | DL | Each | DL | RD | PRO | R15 | PROC |
| PRO-R15-RD-DL-120 |  | Material Delivery & Site Inspection of Interlock Tiles for Landscaping | 26d | 2026-05-20 A | 2026-06-01 A | PRO-R16-RD-DL-120 | 100% | 2025-11-27 | 2025-12-27 |  |  | Interlocking block pavers for sidewalk/footpath 60mm thick on and including 30mm Sand Bedding, 200mm Aggregate subbase, all in accordance with authority standards and complete as per specifications [2194.66]; Extraover for Pedestrian ramps [6] | 31,511.24 | 31,511.24 | PRO-R15-RD-DL-120 | PRC | DL | Each | DL | RD | PRO | R15 | PROC |
|  | 4 | **Bituminous Construction** |  | 2026-03-01 | 2026-03-08 |  |  |  |  |  |  |  |  |  |  |  |  |  |  |  |  |  |  |
| PRO-R15-RD-DL-160 |  | Material Delivery & Site Inspection for Prime Coat of Road Works | 26d | 2026-03-01 A | 2026-03-08 A | PRO-RD-1DL-120, PRO-R16-RD-DL-160 | 100% | 2026-01-27 | 2026-02-25 |  |  | Bituminous base course(Grading I - Class A), 70mm thick after compaction including Prime Coat (MC1) [155.45]; Bituminous concrete wearing course, 50 mm thick, after compaction(Grading I - Class A), including tack coat (RC) [111.04] | 30,268.85 | 30,268.85 | PRO-R15-RD-DL-160 | PRC | 1DL | Each | 1DL | RD | PRO | R15 | PROC |
| PRO-R15-RD-DL-170 |  | Material Delivery & Site Inspection for Bituminous Base & Wearing Courses of Road Works | 26d | 2026-03-01 A | 2026-03-08 A | PRO-RD-1DL-130, PRO-R15-RD-DL-120, PRO-R16-RD-DL-170 | 100% | 2026-02-26 | 2026-03-31 |  |  | Bituminous base course(Grading I - Class A), 70mm thick after compaction including Prime Coat (MC1) [621.79]; Bituminous concrete wearing course, 50 mm thick, after compaction(Grading I - Class A), including tack coat (RC) [444.18] | 121,076.71 | 121,076.71 | PRO-R15-RD-DL-170 | PRC | 1DL | Each | 1DL | RD | PRO | R15 | PROC |
|  | 3 | **Traffic Signs Boards and Roads Marking** |  | 2026-11-03 | 2026-12-02 |  |  |  |  |  |  |  |  |  |  |  |  |  |  |  |  |  |  |
| PRO-R15-RD-DL-140 |  | Material Delivery & Site Inspection of Traffic Signs Boards For Road Works | 26d | 2026-11-03 | 2026-12-02 | PRO-RD-1DL-160, PRO-R15-RD-DL-170 FF, PRO-R16-RD-DL-140 SS, PRO-R16-RD-DL-140 FF |  |  |  | -31d | 0d | Traffic signs, ground mounted, Sheet Alumenium, (breakaway) Single post, with all accessories [7]; Straight Arrow [12]; Straight-Right Arrow [2] | 2,233 |  | PRO-R15-RD-DL-140 | PRC | DL | Each | DL | RD | PRO | R15 | PROC |
| PRO-R15-RD-DL-150 |  | Material Delivery & Site Inspection of Road Markings For Road Works | 26d | 2026-11-03 | 2026-12-02 | PRO-RD-1DL-170, PRO-R15-RD-DL-140 SS, PRO-R16-RD-DL-150 SS, PRO-R16-RD-DL-150 FF |  |  |  | -31d | 0d | Retroreflective Thermoplastic White, Traffic lines [418.68]; Retroreflective Thermoplastic Yellow, Traffic lines [64.16]; Retroreflective raised pavement markers(Type A) [81.84] | 4,939.73 |  | PRO-R15-RD-DL-150 | PRC | DL | Each | DL | RD | PRO | R15 | PROC |
|  | 4 | **Road 10 Local 2 ( 2352 LM )** |  | 2025-09-20 | 2026-12-02 |  |  |  |  |  |  |  |  |  |  |  |  |  |  |  |  |  |  |
|  | 1 | **Pre-Bituminous Construction** |  | 2025-09-20 | 2025-09-27 |  |  |  |  |  |  |  |  |  |  |  |  |  |  |  |  |  |  |
| PRO-R10-RD-DL-110 |  | Material Delivery & Site Inspection for Aggregate Base Course of Road Works | 26d | 2025-09-20 A | 2025-09-24 A | PRO-RD-1DL-110, PRO-R15-RD-DL-110 | 100% | 2025-11-27 | 2025-12-27 |  |  | Aggregate base course 200mm thick after compaction in two layers(Grading 1); CBR?80%; including watering, compaction and testing [9042.86] | 218,837.21 | 218,837.21 | PRO-R10-RD-DL-110 | PRC | 1DL | Each | 1DL | RD | PRO | R10 | PROC |
| PRO-R10-RD-DL-100 |  | Material Delivery & Site Inspection for Subgrade of Road Works | 26d | 2025-09-24 A | 2025-09-27 A | PRO-RD-1DL-100, PRO-R15-RD-DL-100 | 100% | 2025-10-28 | 2025-11-26 |  |  | 300mm thick Subgrade, including subgrade preparation, CBR?25% [13562.9] | 135,629 | 135,629 | PRO-R10-RD-DL-100 | PRC | 1DL | Each | 1DL | RD | PRO | R10 | PROC |
|  | 2 | **Pavement Works** |  | 2026-02-17 | 2026-03-11 |  |  |  |  |  |  |  |  |  |  |  |  |  |  |  |  |  |  |
| PRO-R10-RD-DL-120 |  | Material Delivery & Site Inspection of Interlock Tiles for Landscaping | 26d | 2026-02-17 A | 2026-03-11 A | PRO-R15-RD-DL-120 | 100% | 2025-12-28 | 2026-01-26 |  |  | Interlocking block pavers for sidewalk/footpath 60mm thick on and including 30mm Sand Bedding, 200mm Aggregate subbase, all in accordance with authority standards and complete as per specifications [8935.62]; Extraover for Pedestrian ramps [22] | 127,980.68 | 127,980.68 | PRO-R10-RD-DL-120 | PRC | DL | Each | DL | RD | PRO | R10 | PROC |
| PRO-R10-RD-DL-130 |  | Material Delivery & Site Inspection of Curbstones for Landscaping | 26d | 2026-02-17 A | 2026-03-11 A | PRO-R10-RD-DL-110 FF, PRO-R15-RD-DL-130 | 100% | 2026-01-27 | 2026-02-25 |  |  | Precast Concrete Kerb, Type K1 [5003.94]; Precast Concrete Kerb, Type L1 [9928.44] | 179,188.56 | 179,188.56 | PRO-R10-RD-DL-130 | PRC | DL | Each | DL | RD | PRO | R10 | PROC |

| ID | WBS | Activity | Duration | Start | Finish | Predecessors | Complete | Planned start | Planned finish | Total float | Free float | Resources | Cost | Actual cost | Activity ID N | 02- Network-WBS | 03- Activity | 04-UOM | 05-Discipline | 01- Network | 08 Stage | 09 Roads | Discipline |
| --- | --- | --- | --- | --- | --- | --- | --- | --- | --- | --- | --- | --- | --- | --- | --- | --- | --- | --- | --- | --- | --- | --- | --- |
|  | 4 | **Bituminous Construction** |  | 2026-10-27 | 2026-11-25 |  |  |  |  |  |  |  |  |  |  |  |  |  |  |  |  |  |  |
| PRO-R10-RD-DL-160 |  | Material Delivery & Site Inspection for Prime Coat of Road Works | 26d | 2026-10-27 | 2026-11-25 | PRO-RD-1DL-120, PRO-R15-RD-DL-160 SS, PRO-R15-RD-DL-160 FF |  |  |  | -40d | 124d | Bituminous base course(Grading I - Class A), 70mm thick after compaction including Prime Coat (MC1) [632.92]; Bituminous concrete wearing course, 50 mm thick, after compaction(Grading I - Class A), including tack coat (RC) [452.12] | 123,242.68 |  | PRO-R10-RD-DL-160 | PRC | 1DL | Each | 1DL | RD | PRO | R10 | PROC |
| PRO-R10-RD-DL-170 |  | Material Delivery & Site Inspection for Bituminous Base & Wearing Courses of Road Works | 26d | 2026-10-27 | 2026-11-25 | PRO-RD-1DL-130, PRO-R15-RD-DL-170 SS, PRO-R15-RD-DL-170 FF, PRO-R10-RD-DL-120 SS |  |  |  | -37d | 6d | Bituminous base course(Grading I - Class A), 70mm thick after compaction including Prime Coat (MC1) [2531.66]; Bituminous concrete wearing course, 50 mm thick, after compaction(Grading I - Class A), including tack coat (RC) [1808.46] | 492,966.14 |  | PRO-R10-RD-DL-170 | PRC | 1DL | Each | 1DL | RD | PRO | R10 | PROC |
|  | 3 | **Traffic Signs Boards and Roads Marking** |  | 2026-11-03 | 2026-12-02 |  |  |  |  |  |  |  |  |  |  |  |  |  |  |  |  |  |  |
| PRO-R10-RD-DL-140 |  | Material Delivery & Site Inspection of Traffic Signs Boards For Road Works | 26d | 2026-11-03 | 2026-12-02 | PRO-RD-1DL-160, PRO-R10-RD-DL-170 FF, PRO-R15-RD-DL-140 SS, PRO-R15-RD-DL-140 FF |  |  |  | -31d | 0d | Traffic signs, ground mounted, Sheet Alumenium, (breakaway) Single post, with all accessories [22]; Straight Arrow [52]; Right or Left Arrow [4]; Straight-Right Arrow [2]; Straight-Left Arrow [4] | 7,532.8 |  | PRO-R10-RD-DL-140 | PRC | DL | Each | DL | RD | PRO | R10 | PROC |
| PRO-R10-RD-DL-150 |  | Material Delivery & Site Inspection of Road Markings For Road Works | 26d | 2026-11-03 | 2026-12-02 | PRO-RD-1DL-170, PRO-R10-RD-DL-140 SS, PRO-R15-RD-DL-150 SS, PRO-R15-RD-DL-150 FF |  |  |  | -31d | 0d | Retroreflective Thermoplastic White, Traffic lines [1704.64]; Retroreflective Thermoplastic Yellow, Traffic lines [261.2]; Retroreflective raised pavement markers(Type A) [333.22] | 20,111.83 |  | PRO-R10-RD-DL-150 | PRC | DL | Each | DL | RD | PRO | R10 | PROC |
|  | 6 | **Road 14 Local 1 ( 584 LM )** |  | 2025-09-25 | 2026-12-02 |  |  |  |  |  |  |  |  |  |  |  |  |  |  |  |  |  |  |
|  | 1 | **Pre-Bituminous Construction** |  | 2025-09-25 | 2025-09-29 |  |  |  |  |  |  |  |  |  |  |  |  |  |  |  |  |  |  |
| PRO-R14-RD-DL-100 |  | Material Delivery & Site Inspection for Subgrade of Road Works | 26d | 2025-09-25 A | 2025-09-29 A | PRO-RD-1DL-100, PRO-R10-RD-DL-100 | 100% | 2025-11-27 | 2025-12-27 |  |  | 300mm thick Subgrade, including subgrade preparation, CBR?25% [5840.52] | 58,405.2 | 58,405.2 | PRO-R14-RD-DL-100 | PRC | 1DL | Each | 1DL | RD | PRO | R14 | PROC |
| PRO-R14-RD-DL-110 |  | Material Delivery & Site Inspection for Aggregate Base Course of Road Works | 26d | 2025-09-25 A | 2025-09-28 A | PRO-RD-1DL-110, PRO-R10-RD-DL-110 | 100% | 2025-12-28 | 2026-01-26 |  |  | Aggregate base course 200mm thick after compaction in two layers(Grading 1); CBR?80%; including watering, compaction and testing [3894.08] | 94,236.74 | 94,236.74 | PRO-R14-RD-DL-110 | PRC | 1DL | Each | 1DL | RD | PRO | R14 | PROC |
|  | 2 | **Pavement Works** |  | 2026-08-23 | 2026-08-29 |  |  |  |  |  |  |  |  |  |  |  |  |  |  |  |  |  |  |
| PRO-R14-RD-DL-120 |  | Material Delivery & Site Inspection of Interlock Tiles for Landscaping | 26d | 2026-08-23 A | 2026-08-29 A | PRO-R10-RD-DL-120 | 100% | 2026-01-27 | 2026-02-25 |  |  | Interlocking block pavers for sidewalk/footpath 60mm thick on and including 30mm Sand Bedding, 200mm Aggregate subbase, all in accordance with authority standards and complete as per specifications [3847.9]; Extraover for Pedestrian ramps [10] | 55,180.6 | 55,180.6 | PRO-R14-RD-DL-120 | PRC | DL | Each | DL | RD | PRO | R14 | PROC |
| PRO-R14-RD-DL-130 |  | Material Delivery & Site Inspection of Curbstones for Landscaping | 26d | 2026-08-23 A | 2026-08-29 A | PRO-R14-RD-DL-110 FF, PRO-R10-RD-DL-130 | 100% | 2026-02-26 | 2026-03-31 |  |  | Precast Concrete Kerb, Type K1 [2154.82]; Precast Concrete Kerb, Type L1 [4275.44] | 77,163.12 | 77,163.12 | PRO-R14-RD-DL-130 | PRC | DL | Each | DL | RD | PRO | R14 | PROC |
|  | 4 | **Bituminous Construction** |  | 2026-08-23 | 2026-08-29 |  |  |  |  |  |  |  |  |  |  |  |  |  |  |  |  |  |  |
| PRO-R14-RD-DL-160 |  | Material Delivery & Site Inspection for Prime Coat of Road Works | 26d | 2026-08-23 A | 2026-08-29 A | PRO-RD-1DL-120 | 100% | 2026-04-01 | 2026-04-30 |  |  | Bituminous base course(Grading I - Class A), 70mm thick after compaction including Prime Coat (MC1) [272.55]; Bituminous concrete wearing course, 50 mm thick, after compaction(Grading I - Class A), including tack coat (RC) [194.69] | 53,070.75 | 53,070.75 | PRO-R14-RD-DL-160 | PRC | 1DL | Each | 1DL | RD | PRO | R14 | PROC |
| PRO-R14-RD-DL-170 |  | Material Delivery & Site Inspection for Bituminous Base & Wearing Courses of Road Works | 26d | 2026-08-23 A | 2026-08-29 A | PRO-RD-1DL-130, PRO-R14-RD-DL-120 | 100% | 2026-05-02 | 2026-06-04 |  |  | Bituminous base course(Grading I - Class A), 70mm thick after compaction including Prime Coat (MC1) [1090.19]; Bituminous concrete wearing course, 50 mm thick, after compaction(Grading I - Class A), including tack coat (RC) [778.77] | 212,283.11 | 212,283.11 | PRO-R14-RD-DL-170 | PRC | 1DL | Each | 1DL | RD | PRO | R14 | PROC |
|  | 3 | **Traffic Signs Boards and Roads Marking** |  | 2026-11-03 | 2026-12-02 |  |  |  |  |  |  |  |  |  |  |  |  |  |  |  |  |  |  |
| PRO-R14-RD-DL-140 |  | Material Delivery & Site Inspection of Traffic Signs Boards For Road Works | 26d | 2026-11-03 | 2026-12-02 | PRO-RD-1DL-160, PRO-R14-RD-DL-170 FF, PRO-R10-RD-DL-140 SS, PRO-R10-RD-DL-140 FF |  |  |  | -21d | 0d | Traffic signs, ground mounted, Sheet Alumenium, (breakaway) Single post, with all accessories [10]; Straight Arrow [22]; Straight-Right Arrow [2]; Straight-Left Arrow [2] | 3,361.6 |  | PRO-R14-RD-DL-140 | PRC | DL | Each | DL | RD | PRO | R14 | PROC |
| PRO-R14-RD-DL-150 |  | Material Delivery & Site Inspection of Road Markings For Road Works | 26d | 2026-11-03 | 2026-12-02 | PRO-RD-1DL-170, PRO-R14-RD-DL-140 SS, PRO-R10-RD-DL-150 SS, PRO-R10-RD-DL-150 FF |  |  |  | -21d | 0d | Retroreflective Thermoplastic White, Traffic lines [734.06]; Retroreflective Thermoplastic Yellow, Traffic lines [112.48]; Retroreflective raised pavement markers(Type A) [143.5] | 8,660.74 |  | PRO-R14-RD-DL-150 | PRC | DL | Each | DL | RD | PRO | R14 | PROC |
|  | 2 | **Road 09 Local 2 ( 2278 LM )** |  | 2025-09-25 | 2026-12-02 |  |  |  |  |  |  |  |  |  |  |  |  |  |  |  |  |  |  |
|  | 1 | **Pre-Bituminous Construction** |  | 2025-09-25 | 2026-03-15 |  |  |  |  |  |  |  |  |  |  |  |  |  |  |  |  |  |  |
| PRO-R09-RD-DL-100 |  | Material Delivery & Site Inspection for Subgrade of Road Works | 26d | 2025-09-25 A | 2026-03-12 A | PRO-RD-1DL-100, PRO-RD-1DL-100 FF, PRO-R14-RD-DL-100 | 100% | 2025-12-28 | 2026-01-26 |  |  | 300mm thick Subgrade, including subgrade preparation, CBR?25% [13524.8] | 135,248.4 | 135,248.4 | PRO-R09-RD-DL-100 | PRC | 1DL | Each | 1DL | RD | PRO | R09 | PROC |
| PRO-R09-RD-DL-110 |  | Material Delivery & Site Inspection for Aggregate Base Course of Road Works | 26d | 2026-03-10 A | 2026-03-15 A | PRO-RD-1DL-110, PRO-RD-1DL-110 FF, PRO-R14-RD-DL-110 | 100% | 2026-01-27 | 2026-02-25 |  |  | Aggregate base course 200mm thick after compaction in two layers(Grading 1); CBR?80%; including watering, compaction and testing [9017.48] | 218,223.02 | 218,223.02 | PRO-R09-RD-DL-110 | PRC | 1DL | Each | 1DL | RD | PRO | R09 | PROC |
|  | 2 | **Pavement Works** |  | 2026-03-10 | 2026-03-15 |  |  |  |  |  |  |  |  |  |  |  |  |  |  |  |  |  |  |
| PRO-R09-RD-DL-120 |  | Material Delivery & Site Inspection of Interlock Tiles for Landscaping | 26d | 2026-03-10 A | 2026-03-15 A | PRO-R14-RD-DL-120 | 100% | 2026-02-26 | 2026-03-31 |  |  | Interlocking block pavers for sidewalk/footpath 60mm thick on and including 30mm Sand Bedding, 200mm Aggregate subbase, all in accordance with authority standards and complete as per specifications [8910.54]; Extraover for Pedestrian ramps [22] | 127,629.56 | 127,629.56 | PRO-R09-RD-DL-120 | PRC | DL | Each | DL | RD | PRO | R09 | PROC |
| PRO-R09-RD-DL-130 |  | Material Delivery & Site Inspection of Curbstones for Landscaping | 26d | 2026-03-10 A | 2026-03-15 A | PRO-R09-RD-DL-110 FF, PRO-R14-RD-DL-130 | 100% | 2026-04-01 | 2026-04-30 |  |  | Precast Concrete Kerb, Type K1 [4989.9]; Precast Concrete Kerb, Type L1 [9900.58] | 178,685.76 | 178,685.76 | PRO-R09-RD-DL-130 | PRC | DL | Each | DL | RD | PRO | R09 | PROC |

| ID | WBS | Activity | Duration | Start | Finish | Predecessors | Complete | Planned start | Planned finish | Total float | Free float | Resources | Cost | Actual cost | Activity ID N | 02- Network-WBS | 03- Activity | 04-UOM | 05-Discipline | 01- Network | 08 Stage | 09 Roads | Discipline |
| --- | --- | --- | --- | --- | --- | --- | --- | --- | --- | --- | --- | --- | --- | --- | --- | --- | --- | --- | --- | --- | --- | --- | --- |
|  | 4 | **Bituminous Construction** |  | 2026-10-27 | 2026-11-25 |  |  |  |  |  |  |  |  |  |  |  |  |  |  |  |  |  |  |
| PRO-R09-RD-DL-160 |  | Material Delivery & Site Inspection for Prime Coat of Road Works | 26d | 2026-10-27 | 2026-11-25 | PRO-RD-1DL-120, PRO-RD-1DL-120 FF, PRO-R14-RD-DL-160 SS, PRO-R14-RD-DL-160 FF |  |  |  | -23d | 172.5d | Bituminous base course(Grading I - Class A), 70mm thick after compaction including Prime Coat (MC1) [631.14]; Bituminous concrete wearing course, 50 mm thick, after compaction(Grading I - Class A), including tack coat (RC) [450.85] | 122,896.26 |  | PRO-R09-RD-DL-160 | PRC | 1DL | Each | 1DL | RD | PRO | R09 | PROC |
| PRO-R09-RD-DL-170 |  | Material Delivery & Site Inspection for Bituminous Base & Wearing Courses of Road Works | 26d | 2026-10-27 | 2026-11-25 | PRO-RD-1DL-130, PRO-RD-1DL-130 FF, PRO-R14-RD-DL-170 SS, PRO-R14-RD-DL-170 FF, PRO-R09-RD-DL-120 SS |  |  |  | -20d | 6d | Bituminous base course(Grading I - Class A), 70mm thick after compaction including Prime Coat (MC1) [2524.56]; Bituminous concrete wearing course, 50 mm thick, after compaction(Grading I - Class A), including tack coat (RC) [1803.39] | 491,583.84 |  | PRO-R09-RD-DL-170 | PRC | 1DL | Each | 1DL | RD | PRO | R09 | PROC |
|  | 3 | **Traffic Signs Boards and Roads Marking** |  | 2026-11-03 | 2026-12-02 |  |  |  |  |  |  |  |  |  |  |  |  |  |  |  |  |  |  |
| PRO-R09-RD-DL-140 |  | Material Delivery & Site Inspection of Traffic Signs Boards For Road Works | 26d | 2026-11-03 | 2026-12-02 | PRO-RD-1DL-160, PRO-R14-RD-DL-140 SS, PRO-R14-RD-DL-140 FF, PRO-R09-RD-DL-170 SS |  |  |  | -21d | 0d | Traffic signs, ground mounted, Sheet Alumenium, (breakaway) Single post, with all accessories [22]; Straight Arrow [52]; Right or Left Arrow [4]; Straight-Left Arrow [4] | 7,475.6 |  | PRO-R09-RD-DL-140 | PRC | DL | Each | DL | RD | PRO | R09 | PROC |
| PRO-R09-RD-DL-150 |  | Material Delivery & Site Inspection of Road Markings For Road Works | 26d | 2026-11-03 | 2026-12-02 | PRO-RD-1DL-170, PRO-R09-RD-DL-140 SS, PRO-R14-RD-DL-150 SS, PRO-R14-RD-DL-150 FF |  |  |  | -21d | 0d | Retroreflective Thermoplastic White, Traffic lines [1699.86]; Retroreflective Thermoplastic Yellow, Traffic lines [260.46]; Retroreflective raised pavement markers(Type A) [332.3] | 20,055.53 |  | PRO-R09-RD-DL-150 | PRC | DL | Each | DL | RD | PRO | R09 | PROC |
|  | 5 | **Road 11 Local 1 ( 670 LM )** |  | 2026-02-19 | 2026-12-02 |  |  |  |  |  |  |  |  |  |  |  |  |  |  |  |  |  |  |
|  | 1 | **Pre-Bituminous Construction** |  | 2026-02-19 | 2026-02-23 |  |  |  |  |  |  |  |  |  |  |  |  |  |  |  |  |  |  |
| PRO-R11-RD-DL-100 |  | Material Delivery & Site Inspection for Subgrade of Road Works | 26d | 2026-02-19 A | 2026-02-23 A | PRO-RD-1DL-100, PRO-R09-RD-DL-100 | 100% | 2026-01-27 | 2026-02-25 |  |  | 300mm thick Subgrade, including subgrade preparation, CBR?25% [3957.74] | 39,577.4 | 39,577.4 | PRO-R11-RD-DL-100 | PRC | 1DL | Each | 1DL | RD | PRO | R11 | PROC |
| PRO-R11-RD-DL-110 |  | Material Delivery & Site Inspection for Aggregate Base Course of Road Works | 26d | 2026-02-19 A | 2026-02-23 A | PRO-RD-1DL-110, PRO-R09-RD-DL-110 | 100% | 2026-02-26 | 2026-03-31 |  |  | Aggregate base course 200mm thick after compaction in two layers(Grading 1); CBR?80%; including watering, compaction and testing [2638.76] | 63,857.99 | 63,857.99 | PRO-R11-RD-DL-110 | PRC | 1DL | Each | 1DL | RD | PRO | R11 | PROC |
|  | 2 | **Pavement Works** |  | 2026-06-01 | 2026-08-27 |  |  |  |  |  |  |  |  |  |  |  |  |  |  |  |  |  |  |
| PRO-R11-RD-DL-130 |  | Material Delivery & Site Inspection of Curbstones for Landscaping | 26d | 2026-06-01 A | 2026-08-27 A | PRO-R11-RD-DL-110 FF, PRO-R09-RD-DL-130 | 100% | 2026-05-02 | 2026-06-04 |  |  | Precast Concrete Kerb, Type K1 [1460.18]; Precast Concrete Kerb, Type L1 [2897.18] | 52,288.32 | 52,288.32 | PRO-R11-RD-DL-130 | PRC | DL | Each | DL | RD | PRO | R11 | PROC |
| PRO-R11-RD-DL-120 |  | Material Delivery & Site Inspection of Interlock Tiles for Landscaping | 26d | 2026-08-23 A | 2026-08-27 A | PRO-R09-RD-DL-120 | 100% | 2026-04-01 | 2026-04-30 |  |  | Interlocking block pavers for sidewalk/footpath 60mm thick on and including 30mm Sand Bedding, 200mm Aggregate subbase, all in accordance with authority standards and complete as per specifications [2607.48]; Extraover for Pedestrian ramps [6] | 37,290.72 | 37,290.72 | PRO-R11-RD-DL-120 | PRC | DL | Each | DL | RD | PRO | R11 | PROC |
|  | 4 | **Bituminous Construction** |  | 2026-08-13 | 2026-08-27 |  |  |  |  |  |  |  |  |  |  |  |  |  |  |  |  |  |  |
| PRO-R11-RD-DL-160 |  | Material Delivery & Site Inspection for Prime Coat of Road Works | 26d | 2026-08-13 A | 2026-08-27 A | PRO-RD-1DL-120 | 100% | 2026-06-06 | 2026-07-05 |  |  | Bituminous base course(Grading I - Class A), 70mm thick after compaction including Prime Coat (MC1) [184.69]; Bituminous concrete wearing course, 50 mm thick, after compaction(Grading I - Class A), including tack coat (RC) [131.93] | 35,962.81 | 35,962.81 | PRO-R11-RD-DL-160 | PRC | 1DL | Each | 1DL | RD | PRO | R11 | PROC |
| PRO-R11-RD-DL-170 |  | Material Delivery & Site Inspection for Bituminous Base & Wearing Courses of Road Works | 26d | 2026-08-23 A | 2026-08-27 A | PRO-RD-1DL-130, PRO-R11-RD-DL-120 | 100% | 2026-07-06 | 2026-08-04 |  |  | Bituminous base course(Grading I - Class A), 70mm thick after compaction including Prime Coat (MC1) [738.75]; Bituminous concrete wearing course, 50 mm thick, after compaction(Grading I - Class A), including tack coat (RC) [527.73] | 143,851.35 | 143,851.35 | PRO-R11-RD-DL-170 | PRC | 1DL | Each | 1DL | RD | PRO | R11 | PROC |
|  | 3 | **Traffic Signs Boards and Roads Marking** |  | 2026-11-03 | 2026-12-02 |  |  |  |  |  |  |  |  |  |  |  |  |  |  |  |  |  |  |
| PRO-R11-RD-DL-140 |  | Material Delivery & Site Inspection of Traffic Signs Boards For Road Works | 26d | 2026-11-03 | 2026-12-02 | PRO-RD-1DL-160, PRO-R11-RD-DL-170 FF, PRO-R09-RD-DL-140 SS, PRO-R09-RD-DL-140 FF |  |  |  | -21d | 0d | Traffic signs, ground mounted, Sheet Alumenium, (breakaway) Single post, with all accessories [6]; Straight Arrow [16]; Straight-Left Arrow [2] | 2,085.6 |  | PRO-R11-RD-DL-140 | PRC | DL | Each | DL | RD | PRO | R11 | PROC |
| PRO-R11-RD-DL-150 |  | Material Delivery & Site Inspection of Road Markings For Road Works | 26d | 2026-11-03 | 2026-12-02 | PRO-RD-1DL-170, PRO-R11-RD-DL-140 SS, PRO-R09-RD-DL-150 SS, PRO-R09-RD-DL-150 FF |  |  |  | -21d | 143d | Retroreflective Thermoplastic White, Traffic lines [497.42]; Retroreflective Thermoplastic Yellow, Traffic lines [76.22]; Retroreflective raised pavement markers(Type A) [97.24] | 5,868.77 |  | PRO-R11-RD-DL-150 | PRC | DL | Each | DL | RD | PRO | R11 | PROC |
|  | SW | **Sewage Network** |  | 2025-02-11 | 2026-12-09 |  |  |  |  |  |  |  |  |  |  |  |  |  |  |  |  |  |  |
|  | PO | **Issuance of Purchase Orders** |  | 2025-02-11 | 2025-02-17 |  |  |  |  |  |  |  |  |  |  |  |  |  |  |  |  |  |  |
|  | 1 | **Main Line Sections** |  | 2025-02-11 | 2025-02-17 |  |  |  |  |  |  |  |  |  |  |  |  |  |  |  |  |  |  |
| PRO-SW-PO-100 |  | Issuance of Purchase Order for Main Line Pipes of Sewage Network | 6d | 2025-02-11 A | 2025-02-17 A | ENG-MT-SW-ML-A-110, ENG-SH-SW-ML-A-110, ENG-MS-SW-ML-A-110 | 100% |  |  |  |  |  |  |  | PRO-SW-PO-100 | PRC | PO | Each | PO | SW | PRO |  | PROC |
| PRO-SW-PO-110 |  | Issuance of Purchase Order for Manhole of Sewage Network | 6d | 2025-02-11 A | 2025-02-17 A | ENG-MT-SW-ML-A-100, ENG-SH-SW-ML-A-110, ENG-MS-SW-ML-A-110 | 100% | 2025-02-05 | 2025-02-11 |  |  |  |  |  | PRO-SW-PO-110 | PRC | PO | Each | PO | SW | PRO |  | PROC |

| ID | WBS | Activity | Duration | Start | Finish | Predecessors | Complete | Planned start | Planned finish | Resources | Cost | Actual cost | Activity ID N | 02- Network-WBS | 03- Activity | 04-UOM | 05-Discipline | 01- Network | 08 Stage | Discipline | 09 Roads |
| --- | --- | --- | --- | --- | --- | --- | --- | --- | --- | --- | --- | --- | --- | --- | --- | --- | --- | --- | --- | --- | --- |
|  | 3 | **Testing and Finishes** |  | 2025-02-11 | 2025-02-17 |  |  |  |  |  |  |  |  |  |  |  |  |  |  |  |  |
| PRO-SW-PO-120 |  | Issuance of Purchase Order for Manhole Covers of Sewage Network | 6d | 2025-02-11 A | 2025-02-17 A | ENG-MT-SW-TF-A-100, ENG-SH-SW-ML-A-110, ENG-MS-SW-ML-A-110 | 100% |  |  |  |  |  | PRO-SW-PO-120 | PRC | PO | Each | PO | SW | PRO | PROC |  |
| PRO-SW-PO-140 |  | Issuance of Purchase Order for Membrane Insulation of Sewage Network | 6d | 2025-02-11 A | 2025-02-17 A | ENG-MT-SW-TF-A-120, ENG-SH-SW-ML-A-110, ENG-MS-SW-ML-A-110 | 100% |  |  |  |  |  | PRO-SW-PO-140 | PRC | PO | Each | PO | SW | PRO | PROC |  |
|  | MF | **Manufacturing of Material** |  | 2025-02-12 | 2025-05-29 |  |  |  |  |  |  |  |  |  |  |  |  |  |  |  |  |
|  | 1 | **Main Line Sections** |  | 2025-02-12 | 2025-05-13 |  |  |  |  |  |  |  |  |  |  |  |  |  |  |  |  |
| PRO-SW-MF-110 |  | Manufacturing of Manholes for Sewage Network | 30d | 2025-02-12 A | 2025-05-13 A | PRO-SW-PO-110 | 100% | 2025-02-12 | 2025-03-19 |  |  |  | PRO-SW-MF-110 | PRC | MF | Each | MF | SW | PRO | PROC |  |
| PRO-SW-MF-100 |  | Manufacturing of Main Line Pipes for Sewage Network | 30d | 2025-02-15 A | 2025-04-24 A | PRO-SW-PO-100 | 100% | 2025-02-18 | 2025-03-25 |  |  |  | PRO-SW-MF-100 | PRC | MF | Each | MF | SW | PRO | PROC |  |
|  | 3 | **Testing and Finishes** |  | 2025-05-04 | 2025-05-29 |  |  |  |  |  |  |  |  |  |  |  |  |  |  |  |  |
| PRO-SW-MF-140 |  | Manufacturing of Membrane Insulation for Sewage Network | 120d | 2025-05-04 A | 2025-05-26 A | PRO-SW-PO-140 | 100% | 2025-02-18 | 2025-07-17 |  |  |  | PRO-SW-MF-140 | PRC | MF | Each | MF | SW | PRO | PROC |  |
| PRO-SW-MF-120 |  | Manufacturing of Manhole Covers for Sewage Network | 120d | 2025-05-12 A | 2025-05-29 A | PRO-SW-PO-120 | 100% | 2025-02-18 | 2025-07-17 |  |  |  | PRO-SW-MF-120 | PRC | MF | Each | MF | SW | PRO | PROC |  |
|  | 1DL | **1st Material Delivery & Site Inspection** |  | 2025-03-19 | 2025-06-10 |  |  |  |  |  |  |  |  |  |  |  |  |  |  |  |  |
|  | 1 | **Main Line Sections** |  | 2025-03-19 | 2025-05-25 |  |  |  |  |  |  |  |  |  |  |  |  |  |  |  |  |
| PRO-SW-1DL-100 |  | 1ST Material Delivery for Main Line Pipes of Sewage Network | 6d | 2025-03-19 A | 2025-04-26 A | PRO-SW-MF-100 FF | 100% | 2025-03-19 | 2025-03-25 |  |  |  | PRO-SW-1DL-100 | PRC | 1DL | Each | 1DL | SW | PRO | PROC |  |
| PRO-SW-1DL-110 |  | 1ST Material Delivery for Manholes of Sewage Network | 6d | 2025-04-10 A | 2025-05-25 A | PRO-SW-MF-110 | 100% | 2025-03-20 | 2025-03-26 |  |  |  | PRO-SW-1DL-110 | PRC | 1DL | Each | 1DL | SW | PRO | PROC |  |
|  | 3 | **Testing and Finishes** |  | 2025-05-14 | 2025-06-10 |  |  |  |  |  |  |  |  |  |  |  |  |  |  |  |  |
| PRO-SW-1DL-120 |  | 1ST Material Delivery for Manholes Covers of Sewage Network | 6d | 2025-05-14 A | 2025-06-10 A | PRO-SW-MF-120 | 100% | 2025-07-19 | 2025-07-24 |  |  |  | PRO-SW-1DL-120 | PRC | 1DL | Each | 1DL | SW | PRO | PROC |  |
| PRO-SW-1DL-140 |  | 1ST Material Delivery for Membrane Insulation of Sewage Network | 6d | 2025-05-27 A | 2025-06-05 A | PRO-SW-MF-140 | 100% | 2025-07-19 | 2025-07-24 |  |  |  | PRO-SW-1DL-140 | PRC | 1DL | Each | 1DL | SW | PRO | PROC |  |
|  | DL | **Material Delivery & Site Inspection** |  | 2025-04-13 | 2026-12-09 |  |  |  |  |  |  |  |  |  |  |  |  |  |  |  |  |
|  | 1 | **Road 18 Local 1 ( 479 LM )** |  | 2025-04-13 | 2025-06-01 |  |  |  |  |  |  |  |  |  |  |  |  |  |  |  |  |
|  | 1 | **Main Line Sections** |  | 2025-04-13 | 2025-05-27 |  |  |  |  |  |  |  |  |  |  |  |  |  |  |  |  |
| PRO-R18-SW-DL-150 |  | Material Delivery & Site Inspection of Main Line Pipes for Sewage Network | 10d | 2025-04-13 A | 2025-04-28 A | PRO-SW-1DL-100, PRO-R18-SW-DL-160 | 100% | 2025-04-13 | 2025-04-23 | Nominal bore : 160mm; Depth : 1.5m - 2.5m [88]; Nominal bore : 200mm; Depth : 0.0m - 1.5m [23.68]; Nominal bore : 200mm; Depth : 1.5m - 2.5m [44.38]; Nominal bore : 200mm; Depth : 2.5m - 3.5m [111.06]; Nominal bore : 200mm; Depth : 3.5m - 4.5m [81.88]; Nominal bore : 200mm; Depth : 4.5m -5.5m [41.88]; Nominal bore : 200mm; Depth : 5.5m - 6.5m [53.69] | 38,527.46 | 38,527.46 | PRO-R18-SW-DL-150 | PRC | DL | Each | DL | SW | PRO | PROC | R18 |
| PRO-R18-SW-DL-160 |  | Material Delivery & Site Inspection of Manholes for Sewage Network | 10d | 2025-04-22 A | 2025-05-27 A | PRO-SW-1DL-110 | 100% | 2025-03-27 | 2025-04-12 | Depth: not exceeding 1.5m [1]; Depth: 1.5 - 2.5m [10]; Depth: 2.5 - 3.5m [1]; Depth: 5.5 - 6.5m [2]; Depth:6.5 - 7.5m [1] | 50,304.2 | 50,304.2 | PRO-R18-SW-DL-160 | PRC | DL | Each | DL | SW | PRO | PROC | R18 |
|  | 3 | **Testing and Finishes** |  | 2025-05-14 | 2025-06-01 |  |  |  |  |  |  |  |  |  |  |  |  |  |  |  |  |
| PRO-R18-SW-DL-170 |  | Material Delivery & Site Inspection of Manholes Covers for Sewage Network | 26d | 2025-05-14 A | 2025-06-01 A | PRO-SW-1DL-120, PRO-R18-SW-DL-150 | 100% | 2025-07-26 | 2025-08-24 |  |  |  | PRO-R18-SW-DL-170 | PRC | DL | Each | DL | SW | PRO | PROC | R18 |
| PRO-R18-SW-DL-190 |  | Material Delivery & Site Inspection of Membrane Insulation for Sewage Network | 26d | 2025-05-29 A | 2025-06-01 A | PRO-SW-1DL-140, PRO-R18-SW-DL-170 | 100% | 2025-08-25 | 2025-09-24 |  |  |  | PRO-R18-SW-DL-190 | PRC | DL | Each | DL | SW | PRO | PROC | R18 |

| ID | WBS | Activity | Duration | Start | Finish | Predecessors | Complete | Planned start | Planned finish | Total float | Free float | Resources | Cost | Actual cost | Activity ID N | 02- Network-WBS | 03- Activity | 04-UOM | 05-Discipline | 01- Network | 08 Stage | 09 Roads | Discipline |
| --- | --- | --- | --- | --- | --- | --- | --- | --- | --- | --- | --- | --- | --- | --- | --- | --- | --- | --- | --- | --- | --- | --- | --- |
|  | 9 | **Road 17 Local 1 ( 500 LM )** |  | 2025-05-26 | 2026-11-25 |  |  |  |  |  |  |  |  |  |  |  |  |  |  |  |  |  |  |
|  | 1 | **Main Line Sections** |  | 2025-05-26 | 2025-07-03 |  |  |  |  |  |  |  |  |  |  |  |  |  |  |  |  |  |  |
| PRO-R17-SW-DL-100 |  | Material Delivery & Site Inspection of Main Line Pipes for Sewage Network | 14d | 2025-05-26 A | 2025-06-12 A | PRO-SW-1DL-100, PRO-R18-SW-DL-150 | 100% | 2025-04-24 | 2025-05-10 |  |  | Nominal bore : 160mm; Depth : 0.0m - 1.5m [19]; Nominal bore : 160mm; Depth : 1.5m - 2.5m [212]; Nominal bore : 200mm; Depth : 0.0m - 1.5m [24.88]; Nominal bore : 200mm; Depth : 1.5m - 2.5m [45.9]; Nominal bore : 200mm; Depth : 2.5m - 3.5m [113.44]; Nominal bore : 200mm; Depth : 3.5m - 4.5m [84.79]; Nominal bore : 200mm; Depth : 4.5m -5.5m [42.84]; Nominal bore : 200mm; Depth : 5.5m - 6.5m [55.08] | 46,551.89 | 46,551.89 | PRO-R17-SW-DL-100 | PRC | DL | Each | DL | SW | PRO | R17 | PROC |
| PRO-R17-SW-DL-110 |  | Material Delivery & Site Inspection of Manholes for Sewage Network | 15d | 2025-06-10 A | 2025-07-03 A | PRO-SW-1DL-110, PRO-R18-SW-DL-160 | 100% | 2025-04-13 | 2025-04-29 |  |  | Depth: not exceeding 1.5m [2]; Depth: 1.5 - 2.5m [5]; Depth: 2.5 - 3.5m [3]; Depth: 5.5 - 6.5m [1]; Depth:6.5 - 7.5m [1] | 39,368.6 | 39,368.6 | PRO-R17-SW-DL-110 | PRC | DL | Each | DL | SW | PRO | R17 | PROC |
|  | 3 | **Testing and Finishes** |  | 2026-10-27 | 2026-11-25 |  |  |  |  |  |  |  |  |  |  |  |  |  |  |  |  |  |  |
| PRO-R17-SW-DL-120 |  | Material Delivery & Site Inspection of Manholes Covers for Sewage Network | 26d | 2026-10-27 | 2026-11-25 | PRO-SW-1DL-120, PRO-R18-SW-DL-170 SS, PRO-R18-SW-DL-170 FF |  |  |  | -81d | 0d |  |  |  | PRO-R17-SW-DL-120 | PRC | DL | Each | DL | SW | PRO | R17 | PROC |
| PRO-R17-SW-DL-130 |  | Material Delivery & Site Inspection of Membrane Insulation for Sewage Network | 26d | 2026-10-27 | 2026-11-25 | PRO-SW-1DL-140, PRO-R18-SW-DL-190 SS, PRO-R18-SW-DL-190 FF |  |  |  | -78d | 0d |  |  |  | PRO-R17-SW-DL-130 | PRC | DL | Each | DL | SW | PRO | R17 | PROC |
|  | 8 | **Road 16 Local 1 ( 527 LM )** |  | 2025-05-27 | 2026-11-25 |  |  |  |  |  |  |  |  |  |  |  |  |  |  |  |  |  |  |
|  | 1 | **Main Line Sections** |  | 2025-05-27 | 2025-06-04 |  |  |  |  |  |  |  |  |  |  |  |  |  |  |  |  |  |  |
| PRO-R16-SW-DL-100 |  | Material Delivery & Site Inspection of Main Line Pipes for Sewage Network | 14d | 2025-05-27 A | 2025-06-04 A | PRO-SW-1DL-100, PRO-R17-SW-DL-100 | 100% | 2025-05-11 | 2025-05-26 |  |  | Nominal bore : 160mm; Depth : 0.0m - 1.5m [65]; Nominal bore : 200mm; Depth : 0.0m - 1.5m [29.74]; Nominal bore : 200mm; Depth : 1.5m - 2.5m [68.49]; Nominal bore : 200mm; Depth : 2.5m - 3.5m [97.24]; Nominal bore : 200mm; Depth : 3.5m - 4.5m [126.88]; Nominal bore : 200mm; Depth : 4.5m -5.5m [55.06]; Nominal bore : 200mm; Depth : 5.5m - 6.5m [61.92] | 44,427.6 | 44,427.6 | PRO-R16-SW-DL-100 | PRC | DL | Each | DL | SW | PRO | R16 | PROC |
| PRO-R16-SW-DL-110 |  | Material Delivery & Site Inspection of Manholes for Sewage Network | 15d | 2025-05-27 A | 2025-06-04 A | PRO-SW-1DL-110, PRO-R17-SW-DL-110 | 100% | 2025-04-30 | 2025-05-17 |  |  | Depth: not exceeding 1.5m [2]; Depth: 1.5 - 2.5m [5]; Depth: 2.5 - 3.5m [1]; Depth: 5.5 - 6.5m [1]; Depth:6.5 - 7.5m [2] | 41,939.2 | 41,939.2 | PRO-R16-SW-DL-110 | PRC | DL | Each | DL | SW | PRO | R16 | PROC |
|  | 3 | **Testing and Finishes** |  | 2026-10-27 | 2026-11-25 |  |  |  |  |  |  |  |  |  |  |  |  |  |  |  |  |  |  |
| PRO-R16-SW-DL-120 |  | Material Delivery & Site Inspection of Manholes Covers for Sewage Network | 26d | 2026-10-27 | 2026-11-25 | PRO-SW-1DL-120, PRO-R17-SW-DL-120 SS, PRO-R17-SW-DL-120 FF |  |  |  | -81d | 0d |  |  |  | PRO-R16-SW-DL-120 | PRC | DL | Each | DL | SW | PRO | R16 | PROC |
| PRO-R16-SW-DL-130 |  | Material Delivery & Site Inspection of Membrane Insulation for Sewage Network | 26d | 2026-10-27 | 2026-11-25 | PRO-SW-1DL-140, PRO-R17-SW-DL-130 SS, PRO-R17-SW-DL-130 FF |  |  |  | -78d | 0d |  |  |  | PRO-R16-SW-DL-130 | PRC | DL | Each | DL | SW | PRO | R16 | PROC |
|  | 7 | **Road 15 Local 1 ( 556 LM )** |  | 2025-05-09 | 2026-11-25 |  |  |  |  |  |  |  |  |  |  |  |  |  |  |  |  |  |  |
|  | 1 | **Main Line Sections** |  | 2025-05-09 | 2025-06-29 |  |  |  |  |  |  |  |  |  |  |  |  |  |  |  |  |  |  |
| PRO-R15-SW-DL-100 |  | Material Delivery & Site Inspection of Main Line Pipes for Sewage Network | 14d | 2025-05-09 A | 2025-05-29 A | PRO-SW-1DL-100, PRO-R16-SW-DL-100 | 100% | 2025-05-27 | 2025-06-16 |  |  | Nominal bore : 160mm; Depth : 0.0m - 1.5m [94]; Nominal bore : 200mm; Depth : 0.0m - 1.5m [27.42]; Nominal bore : 200mm; Depth : 1.5m - 2.5m [70.64]; Nominal bore : 200mm; Depth : 2.5m - 3.5m [161.04]; Nominal bore : 200mm; Depth : 3.5m - 4.5m [151.16]; Nominal bore : 200mm; Depth : 4.5m -5.5m [111.26]; Nominal bore : 200mm; Depth : 5.5m - 6.5m [80.78] | 61,994.1 | 61,994.1 | PRO-R15-SW-DL-100 | PRC | DL | Each | DL | SW | PRO | R15 | PROC |
| PRO-R15-SW-DL-110 |  | Material Delivery & Site Inspection of Manholes for Sewage Network | 15d | 2025-06-05 A | 2025-06-29 A | PRO-SW-1DL-110, PRO-R16-SW-DL-110 | 100% | 2025-05-18 | 2025-06-03 |  |  | Depth: not exceeding 1.5m [4]; Depth: 1.5 - 2.5m [7]; Depth: 2.5 - 3.5m [2]; Depth: 3.5 - 4.5m [1]; Depth: 5.5 - 6.5m [3]; Depth:6.5 - 7.5m [2] | 72,079.4 | 72,079.4 | PRO-R15-SW-DL-110 | PRC | DL | Each | DL | SW | PRO | R15 | PROC |
|  | 3 | **Testing and Finishes** |  | 2026-10-27 | 2026-11-25 |  |  |  |  |  |  |  |  |  |  |  |  |  |  |  |  |  |  |
| PRO-R15-SW-DL-120 |  | Material Delivery & Site Inspection of Manholes Covers for Sewage Network | 26d | 2026-10-27 | 2026-11-25 | PRO-SW-1DL-120, PRO-R16-SW-DL-120 SS, PRO-R16-SW-DL-120 FF |  |  |  | -81d | 0d |  |  |  | PRO-R15-SW-DL-120 | PRC | DL | Each | DL | SW | PRO | R15 | PROC |
| PRO-R15-SW-DL-130 |  | Material Delivery & Site Inspection of Membrane Insulation for Sewage Network | 26d | 2026-10-27 | 2026-11-25 | PRO-SW-1DL-140, PRO-R16-SW-DL-130 SS, PRO-R16-SW-DL-130 FF |  |  |  | -78d | 0d |  |  |  | PRO-R15-SW-DL-130 | PRC | DL | Each | DL | SW | PRO | R15 | PROC |
|  | 4 | **Road 10 Local 2 ( 2352 LM )** |  | 2025-05-21 | 2026-11-25 |  |  |  |  |  |  |  |  |  |  |  |  |  |  |  |  |  |  |
|  | 1 | **Main Line Sections** |  | 2025-05-21 | 2025-06-04 |  |  |  |  |  |  |  |  |  |  |  |  |  |  |  |  |  |  |
| PRO-R10-SW-DL-100 |  | Material Delivery & Site Inspection of Main Line Pipes for Sewage Network | 14d | 2025-05-21 A | 2025-06-02 A | PRO-SW-1DL-100, PRO-R15-SW-DL-100 | 100% | 2025-06-17 | 2025-07-02 |  |  | Depth : 1.5 - 2.5m [150]; Depth : 2.5 - 3.5m [88.87]; Depth : 3.5 - 4.5m [88.87]; Depth : 5.5 - 6.5m [500]; Depth : 6.5 -7.5m [400]; Depth : 6.5 -7.5m [150]; Depth :more than 7.5m [100] | 345,202.71 | 345,202.71 | PRO-R10-SW-DL-100 | PRC | DL | Each | DL | SW | PRO | R10 | PROC |
| PRO-R10-SW-DL-110 |  | Material Delivery & Site Inspection of Manholes for Sewage Network | 15d | 2025-05-22 A | 2025-06-04 A | PRO-SW-1DL-110, PRO-R15-SW-DL-110 | 100% | 2025-06-04 | 2025-06-25 |  |  | Depth: 1.5 - 2.5m [4]; Depth: 2.5 - 3.5m [10]; Depth: 3.5 - 4.5m [1]; Depth: 4.5 - 5.5m [2]; Depth: 5.5 - 6.5m [3]; Depth:6.5 - 7.5m [4]; Depth: more than 7.5m [1] | 113,896.2 | 113,896.2 | PRO-R10-SW-DL-110 | PRC | DL | Each | DL | SW | PRO | R10 | PROC |

| ID | WBS | Activity | Duration | Start | Finish | Predecessors | Complete | Planned start | Planned finish | Total float | Free float | Resources | Cost | Actual cost | Activity ID N | 02- Network-WBS | 03- Activity | 04-UOM | 05-Discipline | 01- Network | 08 Stage | 09 Roads | Discipline |
| --- | --- | --- | --- | --- | --- | --- | --- | --- | --- | --- | --- | --- | --- | --- | --- | --- | --- | --- | --- | --- | --- | --- | --- |
|  | 3 | **Testing and Finishes** |  | 2026-10-27 | 2026-11-25 |  |  |  |  |  |  |  |  |  |  |  |  |  |  |  |  |  |  |
| PRO-R10-SW-DL-120 |  | Material Delivery & Site Inspection of Manholes Covers for Sewage Network | 26d | 2026-10-27 | 2026-11-25 | PRO-SW-1DL-120, PRO-R15-SW-DL-120 SS, PRO-R15-SW-DL-120 FF |  |  |  | -81d | 0d |  |  |  | PRO-R10-SW-DL-120 | PRC | DL | Each | DL | SW | PRO | R10 | PROC |
| PRO-R10-SW-DL-130 |  | Material Delivery & Site Inspection of Membrane Insulation for Sewage Network | 26d | 2026-10-27 | 2026-11-25 | PRO-SW-1DL-140, PRO-R15-SW-DL-130 SS, PRO-R15-SW-DL-130 FF |  |  |  | -78d | 0d |  |  |  | PRO-R10-SW-DL-130 | PRC | DL | Each | DL | SW | PRO | R10 | PROC |
|  | 6 | **Road 14 Local 1 ( 584 LM )** |  | 2025-06-03 | 2026-11-25 |  |  |  |  |  |  |  |  |  |  |  |  |  |  |  |  |  |  |
|  | 1 | **Main Line Sections** |  | 2025-06-03 | 2025-06-26 |  |  |  |  |  |  |  |  |  |  |  |  |  |  |  |  |  |  |
| PRO-R14-SW-DL-100 |  | Material Delivery & Site Inspection of Main Line Pipes for Sewage Network | 14d | 2025-06-03 A | 2025-06-20 A | PRO-SW-1DL-100, PRO-R10-SW-DL-100 | 100% | 2025-07-03 | 2025-07-19 |  |  | Nominal bore : 160mm; Depth : 0.0m - 1.5m [72]; Nominal bore : 200mm; Depth : 0.0m - 1.5m [117.36]; Nominal bore : 200mm; Depth : 1.5m - 2.5m [120.8]; Nominal bore : 200mm; Depth : 2.5m - 3.5m [200.08]; Nominal bore : 200mm; Depth : 3.5m - 4.5m [197.84]; Nominal bore : 200mm; Depth : 4.5m -5.5m [122.88]; Nominal bore : 200mm; Depth : 5.5m - 6.5m [166.56] | 92,919.44 | 92,919.44 | PRO-R14-SW-DL-100 | PRC | DL | Each | DL | SW | PRO | R14 | PROC |
| PRO-R14-SW-DL-110 |  | Material Delivery & Site Inspection of Manholes for Sewage Network | 15d | 2025-06-05 A | 2025-06-26 A | PRO-SW-1DL-110, PRO-R10-SW-DL-110 | 100% | 2025-06-26 | 2025-07-13 |  |  | Depth: not exceeding 1.5m [4]; Depth: 1.5 - 2.5m [6]; Depth: 3.5 - 4.5m [1]; Depth: 4.5 - 5.5m [1]; Depth: 5.5 - 6.5m [2]; Depth:6.5 - 7.5m [1] | 51,708.4 | 51,708.4 | PRO-R14-SW-DL-110 | PRC | DL | Each | DL | SW | PRO | R14 | PROC |
|  | 3 | **Testing and Finishes** |  | 2026-10-27 | 2026-11-25 |  |  |  |  |  |  |  |  |  |  |  |  |  |  |  |  |  |  |
| PRO-R14-SW-DL-120 |  | Material Delivery & Site Inspection of Manholes Covers for Sewage Network | 26d | 2026-10-27 | 2026-11-25 | PRO-SW-1DL-120, PRO-R10-SW-DL-120 SS, PRO-R10-SW-DL-120 FF |  |  |  | -69d | 0d |  |  |  | PRO-R14-SW-DL-120 | PRC | DL | Each | DL | SW | PRO | R14 | PROC |
| PRO-R14-SW-DL-130 |  | Material Delivery & Site Inspection of Membrane Insulation for Sewage Network | 26d | 2026-10-27 | 2026-11-25 | PRO-SW-1DL-140, PRO-R10-SW-DL-130 SS, PRO-R10-SW-DL-130 FF |  |  |  | -66d | 0d |  |  |  | PRO-R14-SW-DL-130 | PRC | DL | Each | DL | SW | PRO | R14 | PROC |
|  | 2 | **Road 09 Local 2 ( 2278 LM )** |  | 2025-05-10 | 2026-12-09 |  |  |  |  |  |  |  |  |  |  |  |  |  |  |  |  |  |  |
|  | 1 | **Main Line Sections** |  | 2025-05-10 | 2025-06-01 |  |  |  |  |  |  |  |  |  |  |  |  |  |  |  |  |  |  |
| PRO-R09-SW-DL-110 |  | Material Delivery & Site Inspection of Manholes for Rising Main Network | 7d | 2025-05-10 A | 2025-06-01 A | PRO-SW-1DL-110 | 100% | 2025-03-27 | 2025-04-08 |  |  | Depth: 1.5 - 2.5m [8]; Depth: 3.5 - 4.5m [2]; Depth: 4.5 - 5.5m [3]; Depth:6.5 - 7.5m [7]; Depth: more than 7.5m [2]; Depth: 2.5 - 3.5m [5]; Depth: 3.5 - 4.5m [3]; Depth: 4.5 - 5.5m [2]; Depth: 5.5 - 6.5m [2] | 242,098.6 | 242,098.6 | PRO-R09-SW-DL-110 | PRC | DL | Each | DL | SW | PRO | R09 | PROC |
| PRO-R09-SW-DL-100 |  | Material Delivery & Site Inspection of Main Line Pipes for Rising Main Network | 10d | 2025-05-14 A | 2025-05-29 A | PRO-SW-1DL-100 | 100% | 2025-03-26 | 2025-04-10 |  |  | Nominal bore : 160mm; Depth : 1.5m - 2.5m [200]; Nominal bore : 200mm; Depth : 0.0m - 1.5m [109.83]; Nominal bore : 200mm; Depth : 1.5m - 2.5m [301.62]; Nominal bore : 200mm; Depth : 2.5m - 3.5m [441]; Nominal bore : 200mm; Depth : 3.5m - 4.5m [510.14]; Nominal bore : 200mm; Depth : 4.5m -5.5m [251.92]; Nominal bore : 200mm; Depth : 5.5m - 6.5m [326.76]; Nominal bore : 250mm; Depth : 4.5m -5.5m [220]; Nominal bore : 250mm; Depth : 5.5m - 6.5m [180]; Nominal bore : 315mm; Depth : 4.5m -5.5m [180]; Nominal bore : 315mm; Depth : 6.5m - 7.5m [200]; Depth : 6.5 -7.5m [250]; Depth :more than 7.5m [600] | 621,811.4 | 621,811.4 | PRO-R09-SW-DL-100 | PRC | DL | Each | DL | SW | PRO | R09 | PROC |
|  | 3 | **Testing and Finishes** |  | 2026-10-27 | 2026-12-09 |  |  |  |  |  |  |  |  |  |  |  |  |  |  |  |  |  |  |
| PRO-R09-SW-DL-120 |  | Material Delivery & Site Inspection of Manholes Covers for Rising Main Network | 38d | 2026-10-27 | 2026-12-09 | PRO-SW-1DL-120 |  |  |  | -64d | 78d |  |  |  | PRO-R09-SW-DL-120 | PRC | DL | Each | DL | SW | PRO | R09 | PROC |
| PRO-R09-SW-DL-130 |  | Material Delivery & Site Inspection of Membrane Insulation for Rising Main Network | 38d | 2026-10-27 | 2026-12-09 | PRO-SW-1DL-140 |  |  |  | -61d | 81d |  |  |  | PRO-R09-SW-DL-130 | PRC | DL | Each | DL | SW | PRO | R09 | PROC |
|  | 5 | **Road 11 Local 1 ( 670 LM )** |  | 2025-05-06 | 2026-11-25 |  |  |  |  |  |  |  |  |  |  |  |  |  |  |  |  |  |  |
|  | 1 | **Main Line Sections** |  | 2025-05-06 | 2025-06-01 |  |  |  |  |  |  |  |  |  |  |  |  |  |  |  |  |  |  |
| PRO-R11-SW-DL-100 |  | Material Delivery & Site Inspection of Main Line Pipes for Sewage Network | 14d | 2025-05-06 A | 2025-05-29 A | PRO-SW-1DL-100, PRO-R14-SW-DL-100 | 100% | 2025-07-20 | 2025-08-04 |  |  | Nominal bore : 160mm; Depth : 1.5m - 2.5m [150]; Nominal bore : 200mm; Depth : 0.0m - 1.5m [67.09]; Nominal bore : 200mm; Depth : 1.5m - 2.5m [98.17]; Nominal bore : 200mm; Depth : 2.5m - 3.5m [76.14]; Nominal bore : 200mm; Depth : 3.5m - 4.5m [197.31]; Nominal bore : 200mm; Depth : 4.5m -5.5m [74.16]; Nominal bore : 200mm; Depth : 5.5m - 6.5m [155.21]; Depth : 1.5 - 2.5m [50]; Depth : 2.5 - 3.5m [61.13]; Depth : 3.5 - 4.5m [61.13]; Depth : 4.5 - 5.5m [100]; Depth : 5.5 - 6.5m [100]; Depth : 6.5 -7.5m [300]; Depth : 6.5 -7.5m [350]; Depth :more than 7.5m [700] | 541,465.4 | 541,465.4 | PRO-R11-SW-DL-100 | PRC | DL | Each | DL | SW | PRO | R11 | PROC |
| PRO-R11-SW-DL-110 |  | Material Delivery & Site Inspection of Manholes for Sewage Network | 15d | 2025-05-19 A | 2025-06-01 A | PRO-SW-1DL-110, PRO-R14-SW-DL-110 | 100% | 2025-07-14 | 2025-07-30 |  |  | Depth: not exceeding 1.5m [2]; Depth: 1.5 - 2.5m [6]; Depth: 2.5 - 3.5m [2]; Depth: 3.5 - 4.5m [1]; Depth: 4.5 - 5.5m [1]; Depth: 5.5 - 6.5m [4]; Depth:6.5 - 7.5m [3] | 86,116.8 | 86,116.8 | PRO-R11-SW-DL-110 | PRC | DL | Each | DL | SW | PRO | R11 | PROC |
|  | 3 | **Testing and Finishes** |  | 2026-10-27 | 2026-11-25 |  |  |  |  |  |  |  |  |  |  |  |  |  |  |  |  |  |  |
| PRO-R11-SW-DL-120 |  | Material Delivery & Site Inspection of Manholes Covers for Sewage Network | 26d | 2026-10-27 | 2026-11-25 | PRO-SW-1DL-120, PRO-R14-SW-DL-120 SS, PRO-R14-SW-DL-120 FF |  |  |  | -69d | 115d |  |  |  | PRO-R11-SW-DL-120 | PRC | DL | Each | DL | SW | PRO | R11 | PROC |
| PRO-R11-SW-DL-130 |  | Material Delivery & Site Inspection of Membrane Insulation for Sewage Network | 26d | 2026-10-27 | 2026-11-25 | PRO-SW-1DL-140, PRO-R14-SW-DL-130 SS, PRO-R14-SW-DL-130 FF |  |  |  | -66d | 118d |  |  |  | PRO-R11-SW-DL-130 | PRC | DL | Each | DL | SW | PRO | R11 | PROC |

| ID | WBS | Activity | Duration | Start | Finish | Predecessors | Complete | Planned start | Planned finish | Activity ID N | 02- Network-WBS | 03- Activity | 04-UOM | 05-Discipline | 01- Network | 08 Stage | Discipline |
| --- | --- | --- | --- | --- | --- | --- | --- | --- | --- | --- | --- | --- | --- | --- | --- | --- | --- |
|  | SD | **Storm Drainage Network** |  | 2025-02-11 | 2026-12-20 |  |  |  |  |  |  |  |  |  |  |  |  |
|  | MF | **Manufacturing of Material** |  | 2025-02-18 | 2025-07-13 |  |  |  |  |  |  |  |  |  |  |  |  |
|  | 1 | **Main Line Sections** |  | 2025-02-18 | 2025-05-13 |  |  |  |  |  |  |  |  |  |  |  |  |
| PRO-SD-MF-100 |  | Manufacturing of Materials for Manholes of Storm Drainage Network | 50d | 2025-02-18 A | 2025-05-13 A | PRO-SD-PO-100 | 100% | 2025-02-18 | 2025-04-22 | PRO-SD-MF-100 | PRC | MF | Each | MF | SD | PRO | PROC |
| PRO-SD-MF-110 |  | Manufacturing of Materials for Main Line Pipes of Storm Drainage Network | 40d | 2025-02-18 A | 2025-05-11 A | PRO-SD-PO-110 | 100% | 2025-02-18 | 2025-04-10 | PRO-SD-MF-110 | PRC | MF | Each | MF | SD | PRO | PROC |
|  | 2 | **Catch Basin Sections** |  | 2025-02-18 | 2025-07-13 |  |  |  |  |  |  |  |  |  |  |  |  |
| PRO-SD-MF-130 |  | Manufacturing of Materials for Catch Basins of Storm Drainage Network | 50d | 2025-02-18 A | 2025-05-15 A | PRO-SD-PO-130 | 100% | 2025-02-18 | 2025-04-22 | PRO-SD-MF-130 | PRC | MF | Each | MF | SD | PRO | PROC |
| PRO-SD-MF-150 |  | Manufacturing of Materials for Catch Basin Pipes of Storm Drainage Network | 50d | 2025-02-18 A | 2025-07-13 A | PRO-SD-PO-150 | 100% | 2025-02-18 | 2025-04-22 | PRO-SD-MF-150 | PRC | MF | Each | MF | SD | PRO | PROC |
|  | 3 | **Testing and Finishes** |  | 2025-02-18 | 2025-05-29 |  |  |  |  |  |  |  |  |  |  |  |  |
| PRO-SD-MF-120 |  | Manufacturing of Materials for Manhole Covers of Storm Drainage Network | 120d | 2025-02-18 A | 2025-05-27 A | PRO-SD-PO-120 | 100% | 2025-02-18 | 2025-07-17 | PRO-SD-MF-120 | PRC | MF | Each | MF | SD | PRO | PROC |
| PRO-SD-MF-140 |  | Manufacturing of Materials for Catch Basin Covers of Storm Drainage Network | 120d | 2025-02-18 A | 2025-05-29 A | PRO-SD-PO-140 | 100% | 2025-02-18 | 2025-07-17 | PRO-SD-MF-140 | PRC | MF | Each | MF | SD | PRO | PROC |
| PRO-SD-MF-160 |  | Manufacturing of Materials for Epoxy Insulation of Storm Drainage Network | 120d | 2025-02-18 A | 2025-05-28 A | PRO-SD-PO-160 | 100% | 2025-02-18 | 2025-07-17 | PRO-SD-MF-160 | PRC | MF | Each | MF | SD | PRO | PROC |
|  | PO | **Issuance of Purchase Orders** |  | 2025-02-11 | 2025-02-17 |  |  |  |  |  |  |  |  |  |  |  |  |
|  | 1 | **Main Line Sections** |  | 2025-02-11 | 2025-02-17 |  |  |  |  |  |  |  |  |  |  |  |  |
| PRO-SD-PO-100 |  | Issuance of Purchase Order for Manholes of Storm Drainage Network | 6d | 2025-02-11 A | 2025-02-17 A | ENG-MT-SD-ML-A-100, ENG-SH-SD-ML-A-110, ENG-MS-SD-ML-A-110 | 100% |  |  | PRO-SD-PO-100 | PRC | PO | Each | PO | SD | PRO | PROC |
| PRO-SD-PO-110 |  | Issuance of Purchase Order for Main Line Pipes of Storm Drainage Network | 6d | 2025-02-11 A | 2025-02-17 A | ENG-MT-SD-ML-A-110, ENG-SH-SD-ML-A-110, ENG-MS-SD-ML-A-110 | 100% |  |  | PRO-SD-PO-110 | PRC | PO | Each | PO | SD | PRO | PROC |
|  | 2 | **Catch Basin Sections** |  | 2025-02-11 | 2025-02-17 |  |  |  |  |  |  |  |  |  |  |  |  |
| PRO-SD-PO-130 |  | Issuance of Purchase Order for Catch Basins of Storm Drainage Network | 6d | 2025-02-11 A | 2025-02-17 A | ENG-MT-SD-CB-A-100, ENG-SH-SD-CB-A-110, ENG-MS-SD-CB-A-110 | 100% |  |  | PRO-SD-PO-130 | PRC | PO | Each | PO | SD | PRO | PROC |
| PRO-SD-PO-150 |  | Issuance of Purchase Order for Catch Basin Pipes of Storm Drainage Network | 6d | 2025-02-11 A | 2025-02-17 A | ENG-MT-SD-CB-A-110, ENG-SH-SD-CB-A-110, ENG-MS-SD-CB-A-110 | 100% |  |  | PRO-SD-PO-150 | PRC | PO | Each | PO | SD | PRO | PROC |
|  | 3 | **Testing and Finishes** |  | 2025-02-11 | 2025-02-17 |  |  |  |  |  |  |  |  |  |  |  |  |
| PRO-SD-PO-120 |  | Issuance of Purchase Order for Manhole Covers of Storm Drainage Network | 6d | 2025-02-11 A | 2025-02-17 A | ENG-MT-SD-TF-A-100, ENG-SH-SD-ML-A-110, ENG-MS-SD-ML-A-110 | 100% |  |  | PRO-SD-PO-120 | PRC | PO | Each | PO | SD | PRO | PROC |
| PRO-SD-PO-140 |  | Issuance of Purchase Order for Catch Basin Covers of Storm Drainage Network | 6d | 2025-02-11 A | 2025-02-17 A | ENG-MT-SD-TF-A-110, ENG-SH-SD-CB-A-110, ENG-MS-SD-CB-A-110 | 100% |  |  | PRO-SD-PO-140 | PRC | PO | Each | PO | SD | PRO | PROC |
| PRO-SD-PO-160 |  | Issuance of Purchase Order for Epoxy Insulation of Storm Drainage Network | 6d | 2025-02-11 A | 2025-02-17 A | ENG-MT-SD-TF-A-120, ENG-SH-SD-ML-A-110, ENG-MS-SD-ML-A-110 | 100% |  |  | PRO-SD-PO-160 | PRC | PO | Each | PO | SD | PRO | PROC |
|  | 1DL | **1st Material Delivery & Site Inspection** |  | 2025-04-29 | 2026-06-30 |  |  |  |  |  |  |  |  |  |  |  |  |
|  | 1 | **Main Line Sections** |  | 2025-04-29 | 2025-05-29 |  |  |  |  |  |  |  |  |  |  |  |  |
| PRO-SD-1DL-110 |  | 1ST Material Delivery for Main Line Pipes of Storm Drainage Network | 6d | 2025-04-29 A | 2025-04-30 A | PRO-SD-MF-110 | 100% | 2025-04-12 | 2025-04-17 | PRO-SD-1DL-110 | PRC | 1DL | Each | 1DL | SD | PRO | PROC |
| PRO-SD-1DL-100 |  | 1ST Material Delivery for Manholes of Storm Drainage Network | 6d | 2025-05-11 A | 2025-05-29 A | PRO-SD-MF-100 | 100% | 2025-04-23 | 2025-04-29 | PRO-SD-1DL-100 | PRC | 1DL | Each | 1DL | SD | PRO | PROC |

| ID | WBS | Activity | Duration | Start | Finish | Predecessors | Complete | Planned start | Planned finish | Total float | Free float | Resources | Cost | Actual cost | Activity ID N | 02- Network-WBS | 03- Activity | 04-UOM | 05-Discipline | 01- Network | 08 Stage | Discipline | 09 Roads |
| --- | --- | --- | --- | --- | --- | --- | --- | --- | --- | --- | --- | --- | --- | --- | --- | --- | --- | --- | --- | --- | --- | --- | --- |
|  | 2 | **Catch Basin Sections** |  | 2025-05-10 | 2025-05-31 |  |  |  |  |  |  |  |  |  |  |  |  |  |  |  |  |  |  |
| PRO-SD-1DL-120 |  | 1ST Material Delivery for Catch Basin Pipes of Storm Drainage Network | 6d | 2025-05-10 A | 2025-05-20 A | PRO-SD-MF-150 | 100% | 2025-04-23 | 2025-04-29 |  |  |  |  |  | PRO-SD-1DL-120 | PRC | 1DL | Each | 1DL | SD | PRO | PROC |  |
| PRO-SD-1DL-130 |  | 1ST Material Delivery for Catch Basins of Storm Drainage Network | 6d | 2025-05-19 A | 2025-05-31 A | PRO-SD-MF-130 | 100% | 2025-04-23 | 2025-04-29 |  |  |  |  |  | PRO-SD-1DL-130 | PRC | 1DL | Each | 1DL | SD | PRO | PROC |  |
|  | 3 | **Testing and Finishes** |  | 2026-06-17 | 2026-06-30 |  |  |  |  |  |  |  |  |  |  |  |  |  |  |  |  |  |  |
| PRO-SD-1DL-150 |  | 1ST Material Delivery for Catch Basin Covers of Storm Drainage Network | 6d | 2026-06-17 A | 2026-06-30 A | PRO-SD-MF-140 | 100% | 2025-07-19 | 2025-07-24 |  |  |  |  |  | PRO-SD-1DL-150 | PRC | 1DL | Each | 1DL | SD | PRO | PROC |  |
| PRO-SD-1DL-160 |  | 1ST Material Delivery for Epoxy Insulation of Storm Drainage Network | 6d | 2026-06-18 A | 2026-06-30 A | PRO-SD-MF-160 | 100% | 2025-07-19 | 2025-07-24 |  |  |  |  |  | PRO-SD-1DL-160 | PRC | 1DL | Each | 1DL | SD | PRO | PROC |  |
| PRO-SD-1DL-140 |  | 1ST Material Delivery for Manholes Covers of Storm Drainage Network | 6d | 2026-06-24 A | 2026-06-30 A | PRO-SD-MF-120 | 100% | 2025-07-19 | 2025-07-24 |  |  |  |  |  | PRO-SD-1DL-140 | PRC | 1DL | Each | 1DL | SD | PRO | PROC |  |
|  | DL | **Material Delivery & Site Inspection** |  | 2025-05-01 | 2026-12-20 |  |  |  |  |  |  |  |  |  |  |  |  |  |  |  |  |  |  |
|  | 1 | **Road 18 Local 1 ( 479 LM )** |  | 2025-05-01 | 2026-11-25 |  |  |  |  |  |  |  |  |  |  |  |  |  |  |  |  |  |  |
|  | 1 | **Main Line Sections** |  | 2025-05-01 | 2025-05-29 |  |  |  |  |  |  |  |  |  |  |  |  |  |  |  |  |  |  |
| PRO-R18-SD-DL-180 |  | Material Delivery & Site Inspection of Main Line Pipes of Storm Drainage Network | 17d | 2025-05-01 A | 2025-05-29 A | PRO-SD-1DL-110 | 100% | 2025-04-19 | 2025-05-07 |  |  | Pipe with diameter 400mm ; depth: 0.0m - 1.5m [244.27]; Pipe with diameter 400mm ; depth: 1.51m - 2.5m [259.7]; Pipe with diameter 500mm ; depth: 1.51m - 2.5m [401.91]; Pipe with diameter 600mm ; depth: 1.51m - 2.5m [96.5]; Pipe with diameter 700mm ; depth: 1.51m - 2.5m [377.12]; Pipe with diameter 800mm ; depth: 1.51m - 2.5m [150.46]; Pipe with diameter 900mm ; depth: 1.51m - 2.5m [157.67]; Pipe with diameter 900mm ; depth: 2.51 - 3.5m [57]; Pipe with diameter 1000mm ; depth: 1.51m - 2.5m [70]; Pipe with diameter 1000mm ; depth: 2.51 - 3.5m [70] | 244,450.03 | 244,450.03 | PRO-R18-SD-DL-180 | PRC | DL | Each | DL | SD | PRO | PROC | R18 |
| PRO-R18-SD-DL-170 |  | Material Delivery & Site Inspection of Manholes of Storm Drainage Network | 20d | 2025-05-11 A | 2025-05-24 A | PRO-SD-1DL-100 | 100% | 2025-04-30 | 2025-05-22 |  |  | MH ; depth: 0.0m - 1.5m [2]; MH ; depth: 1.51m - 2.5m [4]; MH ; depth: 1.51m - 2.5m [6]; MH ; depth: 1.51m - 2.5m [2]; MH ; depth: 2.51 - 3.5m [2] | 51,818 | 51,818 | PRO-R18-SD-DL-170 | PRC | DL | Each | DL | SD | PRO | PROC | R18 |
|  | 2 | **Catch Basin Sections** |  | 2025-05-21 | 2025-05-31 |  |  |  |  |  |  |  |  |  |  |  |  |  |  |  |  |  |  |
| PRO-R18-SD-DL-200 |  | Material Delivery & Site Inspection of Catch Basins for Storm Drainage Network | 26d | 2025-05-21 A | 2025-05-31 A | PRO-SD-1DL-130 | 100% | 2025-04-30 | 2025-05-29 |  |  | Pipe with diameter 300mm ; depth: 0 - 1.5m [553.74]; Pipe with diameter 400mm ; depth: 0 - 1.5m [33.76]; Single Catch basin [22]; Double Catch basin [10] | 85,742.24 | 85,742.24 | PRO-R18-SD-DL-200 | PRC | DL | Each | DL | SD | PRO | PROC | R18 |
| PRO-R18-SD-DL-220 |  | Material Delivery & Site Inspection of Catch Basin Pipes for Storm Drainage Network | 26d | 2025-05-21 A | 2025-05-29 A | PRO-SD-1DL-120 | 100% | 2025-04-30 | 2025-05-29 |  |  |  |  |  | PRO-R18-SD-DL-220 | PRC | DL | Each | DL | SD | PRO | PROC | R18 |
|  | 3 | **Testing and Finishes** |  | 2026-10-27 | 2026-11-25 |  |  |  |  |  |  |  |  |  |  |  |  |  |  |  |  |  |  |
| PRO-R18-SD-DL-190 |  | Material Delivery & Site Inspection of Manholes Covers for Storm Drainage Network | 26d | 2026-10-27 | 2026-11-25 | PRO-SD-1DL-140 SS |  |  |  | -102d | 0d |  |  |  | PRO-R18-SD-DL-190 | PRC | DL | Each | DL | SD | PRO | PROC | R18 |
| PRO-R18-SD-DL-210 |  | Material Delivery & Site Inspection of Catch Basin Covers for Storm Drainage Network | 26d | 2026-10-27 | 2026-11-25 | PRO-SD-1DL-150 SS |  |  |  | -33d | 0d |  |  |  | PRO-R18-SD-DL-210 | PRC | DL | Each | DL | SD | PRO | PROC | R18 |
| PRO-R18-SD-DL-230 |  | Material Delivery & Site Inspection of Epoxy Insulation for Storm Drainage Network | 26d | 2026-10-27 | 2026-11-25 | PRO-SD-1DL-160 SS |  |  |  | -38d | 0d |  |  |  | PRO-R18-SD-DL-230 | PRC | DL | Each | DL | SD | PRO | PROC | R18 |
|  | 9 | **Road 17 Local 1 ( 500 LM )** |  | 2025-05-15 | 2026-11-25 |  |  |  |  |  |  |  |  |  |  |  |  |  |  |  |  |  |  |
|  | 1 | **Main Line Sections** |  | 2025-05-15 | 2025-05-29 |  |  |  |  |  |  |  |  |  |  |  |  |  |  |  |  |  |  |
| PRO-R17-SD-DL-120 |  | Material Delivery & Site Inspection of Main Line Pipes of Storm Drainage Network | 17d | 2025-05-15 A | 2025-05-29 A | PRO-SD-1DL-110, PRO-R18-SD-DL-180 | 100% | 2025-05-08 | 2025-05-27 |  |  | Pipe with diameter 400mm ; depth: 0.0m - 1.5m [148.29]; Pipe with diameter 400mm ; depth: 1.51m - 2.5m [437.28]; Pipe with diameter 500mm ; depth: 1.51m - 2.5m [292.44]; Pipe with diameter 600mm ; depth: 1.51m - 2.5m [191.98]; Pipe with diameter 700mm ; depth: 1.51m - 2.5m [357.82]; Pipe with diameter 800mm ; depth: 1.51m - 2.5m [160.31]; Pipe with diameter 900mm ; depth: 1.51m - 2.5m [22.85]; Pipe with diameter 1000mm ; depth: 1.51m - 2.5m [61]; Pipe with diameter 1000mm ; depth: 2.51 - 3.5m [61] | 209,769.3 | 209,769.3 | PRO-R17-SD-DL-120 | PRC | DL | Each | DL | SD | PRO | PROC | R17 |
| PRO-R17-SD-DL-100 |  | Material Delivery & Site Inspection of Manholes of Storm Drainage Network | 20d | 2025-05-17 A | 2025-05-27 A | PRO-SD-1DL-100, PRO-R18-SD-DL-170 | 100% | 2025-05-24 | 2025-06-19 |  |  | MH ; depth: 0.0m - 1.5m [2]; MH ; depth: 1.51m - 2.5m [4]; MH ; depth: 2.51 - 3.5m [1]; MH ; depth: 1.51m - 2.5m [2] | 37,665.6 | 37,665.6 | PRO-R17-SD-DL-100 | PRC | DL | Each | DL | SD | PRO | PROC | R17 |
|  | 2 | **Catch Basin Sections** |  | 2025-05-19 | 2025-05-31 |  |  |  |  |  |  |  |  |  |  |  |  |  |  |  |  |  |  |
| PRO-R17-SD-DL-130 |  | Material Delivery & Site Inspection of Catch Basins for Storm Drainage Network | 26d | 2025-05-19 A | 2025-05-31 A | PRO-SD-1DL-130, PRO-R18-SD-DL-200 | 100% | 2025-05-31 | 2025-07-03 |  |  | Pipe with diameter 300mm ; depth: 0 - 1.5m [527.76]; Pipe with diameter 400mm ; depth: 0 - 1.5m [32.18]; Single Catch basin [20]; Double Catch basin [6] | 73,120.24 | 73,120.24 | PRO-R17-SD-DL-130 | PRC | DL | Each | DL | SD | PRO | PROC | R17 |
| PRO-R17-SD-DL-110 |  | Material Delivery & Site Inspection of Catch Basin Pipes for Storm Drainage Network | 26d | 2025-05-22 A | 2025-05-29 A | PRO-SD-1DL-120, PRO-R18-SD-DL-220 | 100% | 2025-05-31 | 2025-07-03 |  |  |  |  |  | PRO-R17-SD-DL-110 | PRC | DL | Each | DL | SD | PRO | PROC | R17 |

| ID | WBS | Activity | Duration | Start | Finish | Predecessors | Complete | Remaining | Planned start | Planned finish | Total float | Free float | Resources | Cost | Actual cost | Activity ID N | 02- Network-WBS | 03- Activity | 04-UOM | 05-Discipline | 01- Network | 08 Stage | 09 Roads | Discipline |
| --- | --- | --- | --- | --- | --- | --- | --- | --- | --- | --- | --- | --- | --- | --- | --- | --- | --- | --- | --- | --- | --- | --- | --- | --- |
|  | 3 | **Testing and Finishes** |  | 2026-06-20 | 2026-11-25 |  |  |  |  |  |  |  |  |  |  |  |  |  |  |  |  |  |  |  |
| PRO-R17-SD-DL-160 |  | Material Delivery & Site Inspection of Epoxy Insulation for Storm Drainage Network | 26d | 2026-06-20 A | 2026-11-25 | PRO-SD-1DL-160 FF, PRO-R18-SD-DL-230 FF | 20% | 5d | 2025-08-25 | 2025-09-24 | -38d | 0d |  |  |  | PRO-R17-SD-DL-160 | PRC | DL | Each | DL | SD | PRO | R17 | PROC |
| PRO-R17-SD-DL-140 |  | Material Delivery & Site Inspection of Manholes Covers for Storm Drainage Network | 26d | 2026-10-27 | 2026-11-25 | PRO-SD-1DL-140 FF, PRO-R18-SD-DL-190 FF, PRO-SD-1DL-140 SS, PRO-R18-SD-DL-190 SS |  |  |  |  | -102d | 0d |  |  |  | PRO-R17-SD-DL-140 | PRC | DL | Each | DL | SD | PRO | R17 | PROC |
| PRO-R17-SD-DL-150 |  | Material Delivery & Site Inspection of Catch Basin Covers for Storm Drainage Network | 26d | 2026-10-27 | 2026-11-25 | PRO-SD-1DL-150 FF, PRO-R18-SD-DL-210 FF, PRO-SD-1DL-150 SS, PRO-R18-SD-DL-210 SS |  |  |  |  | -33d | 0d |  |  |  | PRO-R17-SD-DL-150 | PRC | DL | Each | DL | SD | PRO | R17 | PROC |
|  | 8 | **Road 16 Local 1 ( 527 LM )** |  | 2025-05-20 | 2026-12-20 |  |  |  |  |  |  |  |  |  |  |  |  |  |  |  |  |  |  |  |
|  | 1 | **Main Line Sections** |  | 2025-05-20 | 2025-06-01 |  |  |  |  |  |  |  |  |  |  |  |  |  |  |  |  |  |  |  |
| PRO-R16-SD-DL-100 |  | Material Delivery & Site Inspection of Manholes of Storm Drainage Network | 20d | 2025-05-20 A | 2025-05-28 A | PRO-SD-1DL-100, PRO-R17-SD-DL-100 | 100% |  | 2025-06-21 | 2025-07-13 |  |  | MH ; depth: 0.0m - 1.5m [2]; MH ; depth: 1.51m - 2.5m [4]; MH ; depth: 1.51m - 2.5m [2]; MH ; depth: 2.51 - 3.5m [1] | 39,997.4 | 39,997.4 | PRO-R16-SD-DL-100 | PRC | DL | Each | DL | SD | PRO | R16 | PROC |
| PRO-R16-SD-DL-120 |  | Material Delivery & Site Inspection of Main Line Pipes of Storm Drainage Network | 17d | 2025-05-20 A | 2025-06-01 A | PRO-SD-1DL-110, PRO-R17-SD-DL-120 | 100% |  | 2025-05-28 | 2025-06-21 |  |  | Pipe with diameter 400mm ; depth: 0.0m - 1.5m [216.53]; Pipe with diameter 400mm ; depth: 1.51m - 2.5m [197.85]; Pipe with diameter 500mm ; depth: 1.51m - 2.5m [382.97]; Pipe with diameter 600mm ; depth: 1.51m - 2.5m [87.24]; Pipe with diameter 700mm ; depth: 1.51m - 2.5m [190.66]; Pipe with diameter 800mm ; depth: 1.51m - 2.5m [82.86]; Pipe with diameter 900mm ; depth: 1.51m - 2.5m [22.62]; Pipe with diameter 1000mm ; depth: 1.51m - 2.5m [70]; Pipe with diameter 1000mm ; depth: 2.51 - 3.5m [150] | 178,477.62 | 178,477.62 | PRO-R16-SD-DL-120 | PRC | DL | Each | DL | SD | PRO | R16 | PROC |
|  | 2 | **Catch Basin Sections** |  | 2025-05-21 | 2025-06-01 |  |  |  |  |  |  |  |  |  |  |  |  |  |  |  |  |  |  |  |
| PRO-R16-SD-DL-110 |  | Material Delivery & Site Inspection of Catch Basin Pipes for Storm Drainage Network | 26d | 2025-05-21 A | 2025-05-31 A | PRO-SD-1DL-120, PRO-R17-SD-DL-110 | 100% |  | 2025-07-05 | 2025-08-03 |  |  |  |  |  | PRO-R16-SD-DL-110 | PRC | DL | Each | DL | SD | PRO | R16 | PROC |
| PRO-R16-SD-DL-130 |  | Material Delivery & Site Inspection of Catch Basins for Storm Drainage Network | 26d | 2025-05-26 A | 2025-06-01 A | PRO-SD-1DL-130, PRO-R17-SD-DL-130 | 100% |  | 2025-07-05 | 2025-08-03 |  |  | Pipe with diameter 300mm ; depth: 0 - 1.5m [501.8]; Pipe with diameter 400mm ; depth: 0 - 1.5m [30.6]; Single Catch basin [20]; Double Catch basin [10] | 79,777.6 | 79,777.6 | PRO-R16-SD-DL-130 | PRC | DL | Each | DL | SD | PRO | R16 | PROC |
|  | 3 | **Testing and Finishes** |  | 2026-10-27 | 2026-12-20 |  |  |  |  |  |  |  |  |  |  |  |  |  |  |  |  |  |  |  |
| PRO-R16-SD-DL-140 |  | Material Delivery & Site Inspection of Manholes Covers for Storm Drainage Network | 26d | 2026-10-27 | 2026-11-25 | PRO-SD-1DL-140, PRO-R17-SD-DL-140 SS, PRO-R17-SD-DL-140 FF |  |  |  |  | -102d | 0d |  |  |  | PRO-R16-SD-DL-140 | PRC | DL | Each | DL | SD | PRO | R16 | PROC |
| PRO-R16-SD-DL-150 |  | Material Delivery & Site Inspection of Catch Basin Covers for Storm Drainage Network | 26d | 2026-10-27 | 2026-11-25 | PRO-SD-1DL-150, PRO-R17-SD-DL-150 SS, PRO-R17-SD-DL-150 FF |  |  |  |  | -33d | 0d |  |  |  | PRO-R16-SD-DL-150 | PRC | DL | Each | DL | SD | PRO | R16 | PROC |
| PRO-R16-SD-DL-160 |  | Material Delivery & Site Inspection of Epoxy Insulation for Storm Drainage Network | 26d | 2026-11-21 | 2026-12-20 | PRO-SD-1DL-160, PRO-R17-SD-DL-160 SS, PRO-R17-SD-DL-160 FF |  |  |  |  | -38d | 0d |  |  |  | PRO-R16-SD-DL-160 | PRC | DL | Each | DL | SD | PRO | R16 | PROC |
|  | 7 | **Road 15 Local 1 ( 556 LM )** |  | 2025-05-03 | 2026-12-20 |  |  |  |  |  |  |  |  |  |  |  |  |  |  |  |  |  |  |  |
|  | 1 | **Main Line Sections** |  | 2025-05-03 | 2025-05-31 |  |  |  |  |  |  |  |  |  |  |  |  |  |  |  |  |  |  |  |
| PRO-R15-SD-DL-120 |  | Material Delivery & Site Inspection of Main Line Pipes of Storm Drainage Network | 17d | 2025-05-03 A | 2025-05-31 A | PRO-SD-1DL-110, PRO-R16-SD-DL-120 | 100% |  | 2025-06-22 | 2025-07-10 |  |  | Pipe with diameter 400mm ; depth: 0.0m - 1.5m [197.57]; Pipe with diameter 400mm ; depth: 1.51m - 2.5m [224.41]; Pipe with diameter 500mm ; depth: 1.51m - 2.5m [376.78]; Pipe with diameter 600mm ; depth: 1.51m - 2.5m [204.56]; Pipe with diameter 700mm ; depth: 1.51m - 2.5m [155.22]; Pipe with diameter 900mm ; depth: 1.51m - 2.5m [250.54]; Pipe with diameter 1000mm ; depth: 1.51m - 2.5m [50]; Pipe with diameter 1000mm ; depth: 2.51 - 3.5m [50] | 187,810.28 | 187,810.28 | PRO-R15-SD-DL-120 | PRC | DL | Each | DL | SD | PRO | R15 | PROC |
| PRO-R15-SD-DL-100 |  | Material Delivery & Site Inspection of Manholes of Storm Drainage Network | 25.75d | 2025-05-15 A | 2025-05-31 A | PRO-SD-1DL-100, PRO-R16-SD-DL-100 | 100% |  | 2025-07-14 | 2025-08-12 |  |  | MH ; depth: 0.0m - 1.5m [2]; MH ; depth: 1.51m - 2.5m [4]; MH ; depth: 2.51 - 3.5m [1]; MH ; depth: 1.51m - 2.5m [1]; MH ; depth: 2.51 - 3.5m [4] | 57,126.8 | 57,126.8 | PRO-R15-SD-DL-100 | PRC | DL | Each | DL | SD | PRO | R15 | PROC |
|  | 2 | **Catch Basin Sections** |  | 2025-05-10 | 2025-06-01 |  |  |  |  |  |  |  |  |  |  |  |  |  |  |  |  |  |  |  |
| PRO-R15-SD-DL-110 |  | Material Delivery & Site Inspection of Catch Basin Pipes for Storm Drainage Network | 26d | 2025-05-10 A | 2025-05-29 A | PRO-SD-1DL-120, PRO-R16-SD-DL-110 | 100% |  | 2025-08-04 | 2025-09-02 |  |  |  |  |  | PRO-R15-SD-DL-110 | PRC | DL | Each | DL | SD | PRO | R15 | PROC |
| PRO-R15-SD-DL-130 |  | Material Delivery & Site Inspection of Catch Basins for Storm Drainage Network | 26d | 2025-05-24 A | 2025-06-01 A | PRO-SD-1DL-130, PRO-R16-SD-DL-130 | 100% |  | 2025-08-04 | 2025-09-02 |  |  | Pipe with diameter 300mm ; depth: 0 - 1.5m [485.24]; Pipe with diameter 400mm ; depth: 0 - 1.5m [29.58]; Single Catch basin [18]; Double Catch basin [10] | 76,415.68 | 76,415.68 | PRO-R15-SD-DL-130 | PRC | DL | Each | DL | SD | PRO | R15 | PROC |
|  | 3 | **Testing and Finishes** |  | 2026-10-27 | 2026-12-20 |  |  |  |  |  |  |  |  |  |  |  |  |  |  |  |  |  |  |  |
| PRO-R15-SD-DL-140 |  | Material Delivery & Site Inspection of Manholes Covers for Storm Drainage Network | 26d | 2026-10-27 | 2026-11-25 | PRO-SD-1DL-140, PRO-R16-SD-DL-140 SS, PRO-R16-SD-DL-140 FF |  |  |  |  | -102d | 0d |  |  |  | PRO-R15-SD-DL-140 | PRC | DL | Each | DL | SD | PRO | R15 | PROC |
| PRO-R15-SD-DL-150 |  | Material Delivery & Site Inspection of Catch Basin Covers for Storm Drainage Network | 26d | 2026-10-27 | 2026-11-25 | PRO-SD-1DL-150, PRO-R16-SD-DL-150 SS, PRO-R16-SD-DL-150 FF |  |  |  |  | -33d | 0d |  |  |  | PRO-R15-SD-DL-150 | PRC | DL | Each | DL | SD | PRO | R15 | PROC |
| PRO-R15-SD-DL-160 |  | Material Delivery & Site Inspection of Epoxy Insulation for Storm Drainage Network | 26d | 2026-11-21 | 2026-12-20 | PRO-SD-1DL-160, PRO-R16-SD-DL-160 SS, PRO-R16-SD-DL-160 FF |  |  |  |  | -38d | 134d |  |  |  | PRO-R15-SD-DL-160 | PRC | DL | Each | DL | SD | PRO | R15 | PROC |

| ID | WBS | Activity | Duration | Start | Finish | Predecessors | Complete | Planned start | Planned finish | Total float | Free float | Resources | Cost | Actual cost | Activity ID N | 02- Network-WBS | 03- Activity | 04-UOM | 05-Discipline | 01- Network | 08 Stage | 09 Roads | Discipline |
| --- | --- | --- | --- | --- | --- | --- | --- | --- | --- | --- | --- | --- | --- | --- | --- | --- | --- | --- | --- | --- | --- | --- | --- |
|  | 4 | **Road 10 Local 2 ( 2352 LM )** |  | 2025-06-10 | 2026-11-25 |  |  |  |  |  |  |  |  |  |  |  |  |  |  |  |  |  |  |
|  | 1 | **Main Line Sections** |  | 2025-06-10 | 2025-06-25 |  |  |  |  |  |  |  |  |  |  |  |  |  |  |  |  |  |  |
| PRO-R10-SD-DL-100 |  | Material Delivery & Site Inspection of Manholes of Storm Drainage Network | 26d | 2025-06-10 A | 2025-06-25 A | PRO-SD-1DL-100, PRO-R15-SD-DL-100 | 100% | 2025-08-12 | 2025-09-11 |  |  | MH ; depth: 0.0m - 1.5m [6]; MH ; depth: 1.51m - 2.5m [16]; MH ; depth: 0.0m - 1.5m [4]; MH ; depth: 1.51m - 2.5m with back drop less than 1.0 m [1]; MH ; depth: 0.0m - 1.5m [2]; MH ; depth: 1.51m - 2.5m [6]; MH ; depth: 2.51 - 3.5m [8]; MH ; depth: 3.51 - 4.5m [5] | 261,132.4 | 261,132.4 | PRO-R10-SD-DL-100 | PRC | DL | Each | DL | SD | PRO | R10 | PROC |
| PRO-R10-SD-DL-120 |  | Material Delivery & Site Inspection of Main Line Pipes of Storm Drainage Network | 17d | 2025-06-10 A | 2025-06-25 A | PRO-SD-1DL-110, PRO-R15-SD-DL-120 | 100% | 2025-07-12 | 2025-07-30 |  |  | Pipe with diameter 400mm ; depth: 0.0m - 1.5m [437.98]; Pipe with diameter 400mm ; depth: 1.51m - 2.5m [558.96]; Pipe with diameter 500mm ; depth: 0.0m - 1.5m [50]; Pipe with diameter 500mm ; depth: 1.51m - 2.5m [242]; Pipe with diameter 600mm ; depth: 1.51m - 2.5m [392.9]; Pipe with diameter 600mm ; depth: 2.51m - 3.5m [173]; Pipe with diameter 700mm ; depth: 0.0m - 1.5m [50]; Pipe with diameter 700mm ; depth: 1.51m - 2.5m [921.18]; Pipe with diameter 800mm ; depth: 1.51m - 2.5m [450.17]; Pipe with diameter 900mm ; depth: 1.51m - 2.5m [231.8]; Pipe with diameter 1000mm ; depth: 0.0m - 1.5m [50]; Pipe with diameter 1100mm ; depth: 0.0m - 1.5m [50] | 460,756.71 | 460,756.71 | PRO-R10-SD-DL-120 | PRC | DL | Each | DL | SD | PRO | R10 | PROC |
|  | 2 | **Catch Basin Sections** |  | 2025-06-12 | 2025-07-12 |  |  |  |  |  |  |  |  |  |  |  |  |  |  |  |  |  |  |
| PRO-R10-SD-DL-110 |  | Material Delivery & Site Inspection of Catch Basin Pipes for Storm Drainage Network | 26d | 2025-06-12 A | 2025-07-12 A | PRO-SD-1DL-120, PRO-R15-SD-DL-110 | 100% | 2025-09-03 | 2025-10-04 |  |  |  |  |  | PRO-R10-SD-DL-110 | PRC | DL | Each | DL | SD | PRO | R10 | PROC |
| PRO-R10-SD-DL-130 |  | Material Delivery & Site Inspection of Catch Basins for Storm Drainage Network | 26d | 2025-06-12 A | 2025-06-30 A | PRO-SD-1DL-130, PRO-R15-SD-DL-130 | 100% | 2025-09-03 | 2025-10-04 |  |  | Pipe with diameter 300mm ; depth: 0 - 1.5m [2254.52]; Pipe with diameter 400mm ; depth: 0 - 1.5m [137.48]; Single Catch basin [80]; Double Catch basin [20] | 294,475.52 | 294,475.52 | PRO-R10-SD-DL-130 | PRC | DL | Each | DL | SD | PRO | R10 | PROC |
|  | 3 | **Testing and Finishes** |  | 2026-06-17 | 2026-11-25 |  |  |  |  |  |  |  |  |  |  |  |  |  |  |  |  |  |  |
| PRO-R10-SD-DL-150 |  | Material Delivery & Site Inspection of Catch Basin Covers for Storm Drainage Network | 26d | 2026-06-17 A | 2026-08-30 A | PRO-SD-1DL-150 | 100% | 2026-12-24 | 2027-01-23 |  |  |  |  |  | PRO-R10-SD-DL-150 | PRC | DL | Each | DL | SD | PRO | R10 | PROC |
| PRO-R10-SD-DL-160 |  | Material Delivery & Site Inspection of Epoxy Insulation for Storm Drainage Network | 26d | 2026-06-18 A | 2026-07-30 A | PRO-SD-1DL-160 | 100% | 2026-12-24 | 2027-01-23 |  |  |  |  |  | PRO-R10-SD-DL-160 | PRC | DL | Each | DL | SD | PRO | R10 | PROC |
| PRO-R10-SD-DL-140 |  | Material Delivery & Site Inspection of Manholes Covers for Storm Drainage Network | 26d | 2026-10-27 | 2026-11-25 | PRO-SD-1DL-140, PRO-R15-SD-DL-140 SS, PRO-R15-SD-DL-140 FF |  |  |  | -102d | 0d |  |  |  | PRO-R10-SD-DL-140 | PRC | DL | Each | DL | SD | PRO | R10 | PROC |
|  | 6 | **Road 14 Local 1 ( 584 LM )** |  | 2025-07-15 | 2026-11-25 |  |  |  |  |  |  |  |  |  |  |  |  |  |  |  |  |  |  |
|  | 1 | **Main Line Sections** |  | 2025-07-15 | 2025-11-01 |  |  |  |  |  |  |  |  |  |  |  |  |  |  |  |  |  |  |
| PRO-R14-SD-DL-120 |  | Material Delivery & Site Inspection of Main Line Pipes of Storm Drainage Network | 17d | 2025-07-15 A | 2025-08-02 A | PRO-SD-1DL-110, PRO-R10-SD-DL-120 | 100% | 2025-07-31 | 2025-08-19 |  |  | Pipe with diameter 400mm ; depth: 0.0m - 1.5m [255.61]; Pipe with diameter 400mm ; depth: 1.51m - 2.5m [262.05]; Pipe with diameter 400mm ; depth: 2.51m - 3.5m [50]; Pipe with diameter 500mm ; depth: 1.51m - 2.5m [654.01]; Pipe with diameter 600mm ; depth: 1.51m - 2.5m [241.18]; Pipe with diameter 700mm ; depth: 1.51m - 2.5m [310.56]; Pipe with diameter 1200mm ; depth: 2.51 - 3.5m [483] | 331,242.08 | 331,242.08 | PRO-R14-SD-DL-120 | PRC | DL | Each | DL | SD | PRO | R14 | PROC |
| PRO-R14-SD-DL-100 |  | Material Delivery & Site Inspection of Manholes of Storm Drainage Network | 26d | 2025-10-04 A | 2025-11-01 A | PRO-SD-1DL-100, PRO-R10-SD-DL-100 | 100% | 2025-09-11 | 2025-10-13 |  |  | MH ; depth: 0.0m - 1.5m [4]; MH ; depth: 1.51m - 2.5m [8]; MH ; depth: 2.51 - 3.5m [1]; MH ; depth: 2.51 - 3.5m [2]; MH ; depth: 2.51 - 3.5m with back drop less than 1.0 m [1]; MH ; depth: 1.51m - 2.5m [2]; MH ; depth: 2.51 - 3.5m [4] | 153,552 | 153,552 | PRO-R14-SD-DL-100 | PRC | DL | Each | DL | SD | PRO | R14 | PROC |
|  | 2 | **Catch Basin Sections** |  | 2025-10-04 | 2026-06-15 |  |  |  |  |  |  |  |  |  |  |  |  |  |  |  |  |  |  |
| PRO-R14-SD-DL-130 |  | Material Delivery & Site Inspection of Catch Basins for Storm Drainage Network | 26d | 2025-10-04 A | 2025-11-01 A | PRO-SD-1DL-130, PRO-R10-SD-DL-130 | 100% | 2025-10-05 | 2025-11-03 |  |  | Pipe with diameter 300mm ; depth: 0 - 1.5m [970.86]; Pipe with diameter 400mm ; depth: 0 - 1.5m [59.2]; Single Catch basin [30]; Double Catch basin [24] | 155,002.88 | 155,002.88 | PRO-R14-SD-DL-130 | PRC | DL | Each | DL | SD | PRO | R14 | PROC |
| PRO-R14-SD-DL-110 |  | Material Delivery & Site Inspection of Catch Basin Pipes for Storm Drainage Network | 26d | 2026-06-04 A | 2026-06-15 A | PRO-SD-1DL-120, PRO-R10-SD-DL-110 | 100% | 2025-10-05 | 2025-11-03 |  |  |  |  |  | PRO-R14-SD-DL-110 | PRC | DL | Each | DL | SD | PRO | R14 | PROC |
|  | 3 | **Testing and Finishes** |  | 2026-07-24 | 2026-11-25 |  |  |  |  |  |  |  |  |  |  |  |  |  |  |  |  |  |  |
| PRO-R14-SD-DL-160 |  | Material Delivery & Site Inspection of Epoxy Insulation for Storm Drainage Network | 26d | 2026-07-24 A | 2026-07-30 A | PRO-SD-1DL-160, PRO-R10-SD-DL-160 | 100% | 2026-12-24 | 2027-01-23 |  |  |  |  |  | PRO-R14-SD-DL-160 | PRC | DL | Each | DL | SD | PRO | R14 | PROC |
| PRO-R14-SD-DL-140 |  | Material Delivery & Site Inspection of Manholes Covers for Storm Drainage Network | 26d | 2026-10-27 | 2026-11-25 | PRO-SD-1DL-140, PRO-R10-SD-DL-140 SS, PRO-R10-SD-DL-140 FF |  |  |  | -102d | 0d |  |  |  | PRO-R14-SD-DL-140 | PRC | DL | Each | DL | SD | PRO | R14 | PROC |
| PRO-R14-SD-DL-150 |  | Material Delivery & Site Inspection of Catch Basin Covers for Storm Drainage Network | 26d | 2026-10-27 | 2026-11-25 | PRO-SD-1DL-150, PRO-R10-SD-DL-150 SS, PRO-R10-SD-DL-150 FF |  |  |  | -21d | 0d |  |  |  | PRO-R14-SD-DL-150 | PRC | DL | Each | DL | SD | PRO | R14 | PROC |
|  | 2 | **Road 09 Local 2 ( 2278 LM )** |  | 2025-06-03 | 2026-11-25 |  |  |  |  |  |  |  |  |  |  |  |  |  |  |  |  |  |  |
|  | 1 | **Main Line Sections** |  | 2025-06-03 | 2025-06-30 |  |  |  |  |  |  |  |  |  |  |  |  |  |  |  |  |  |  |
| PRO-R09-SD-DL-120 |  | Material Delivery & Site Inspection of Main Line Pipes of Storm Drainage Network | 17d | 2025-06-03 A | 2025-06-30 A | PRO-SD-1DL-110, PRO-R14-SD-DL-120 | 100% | 2025-08-20 | 2025-09-08 |  |  | Pipe with diameter 400mm ; depth: 0.0m - 1.5m [92.75]; Pipe with diameter 400mm ; depth: 1.51m - 2.5m [92.75]; Pipe with diameter 600mm ; depth: 0.0m - 1.5m [50]; Pipe with diameter 700mm ; depth: 1.51m - 2.5m [100]; Pipe with diameter 700mm ; depth: 2.51m - 3.5m [50]; Pipe with diameter 800mm ; depth: 1.51m - 2.5m [56]; Pipe with diameter 1100mm ; depth: 1.51m - 2.5m [667]; Pipe with diameter 1100mm ; depth: 2.51 - 3.5m [174]; Pipe with diameter 1200mm ; depth: 1.51m - 2.5m [155] | 304,195.65 | 304,195.65 | PRO-R09-SD-DL-120 | PRC | DL | Each | DL | SD | PRO | R09 | PROC |
| PRO-R09-SD-DL-100 |  | Material Delivery & Site Inspection of Manholes of Storm Drainage Network | 12d | 2025-06-14 A | 2025-06-30 A | PRO-SD-1DL-100, PRO-R14-SD-DL-100 | 100% | 2025-10-13 | 2025-10-27 |  |  | MH ; depth: 0.0m - 1.5m [6]; MH ; depth: 1.51m - 2.5m [16]; MH ; depth: 2.51 - 3.5m [4]; MH ; depth: 0.0m - 1.5m [4]; MH ; depth: 2.51 - 3.5m [2]; MH ; depth: 1.51m - 2.5m [8]; MH ; depth: 2.51 - 3.5m [8] | 229,187.2 | 229,187.2 | PRO-R09-SD-DL-100 | PRC | DL | Each | DL | SD | PRO | R09 | PROC |

| ID | WBS | Activity | Duration | Start | Finish | Predecessors | Complete | Planned start | Planned finish | Total float | Free float | Resources | Cost | Actual cost | Activity ID N | 02- Network-WBS | 03- Activity | 04-UOM | 05-Discipline | 01- Network | 08 Stage | 09 Roads | Discipline |
| --- | --- | --- | --- | --- | --- | --- | --- | --- | --- | --- | --- | --- | --- | --- | --- | --- | --- | --- | --- | --- | --- | --- | --- |
|  | 2 | **Catch Basin Sections** |  | 2025-12-01 | 2025-12-08 |  |  |  |  |  |  |  |  |  |  |  |  |  |  |  |  |  |  |
| PRO-R09-SD-DL-110 |  | Material Delivery & Site Inspection of Catch Basin Pipes for Storm Drainage Network | 26d | 2025-12-01 A | 2025-12-08 A | PRO-SD-1DL-120, PRO-R14-SD-DL-110 | 100% | 2025-11-04 | 2025-12-03 |  |  |  |  |  | PRO-R09-SD-DL-110 | PRC | DL | Each | DL | SD | PRO | R09 | PROC |
| PRO-R09-SD-DL-130 |  | Material Delivery & Site Inspection of Catch Basins for Storm Drainage Network | 26d | 2025-12-01 A | 2025-12-07 A | PRO-SD-1DL-130, PRO-R14-SD-DL-130 | 100% | 2025-11-04 | 2025-12-03 |  |  | Pipe with diameter 300mm ; depth: 0 - 1.5m [2248.2]; Pipe with diameter 400mm ; depth: 0 - 1.5m [137.08]; Access opening with dimensions 1000*1000 mm [13]; Single Catch basin [78]; Double Catch basin [25] | 333,516.96 | 333,516.96 | PRO-R09-SD-DL-130 | PRC | DL | Each | DL | SD | PRO | R09 | PROC |
|  | 3 | **Testing and Finishes** |  | 2026-08-24 | 2026-11-25 |  |  |  |  |  |  |  |  |  |  |  |  |  |  |  |  |  |  |
| PRO-R09-SD-DL-160 |  | Material Delivery & Site Inspection of Epoxy Insulation for Storm Drainage Network | 26d | 2026-08-24 A | 2026-08-29 A | PRO-SD-1DL-160, PRO-R14-SD-DL-160 | 100% | 2027-02-24 | 2027-03-29 |  |  |  |  |  | PRO-R09-SD-DL-160 | PRC | DL | Each | DL | SD | PRO | R09 | PROC |
| PRO-R09-SD-DL-140 |  | Material Delivery & Site Inspection of Manholes Covers for Storm Drainage Network | 26d | 2026-10-27 | 2026-11-25 | PRO-SD-1DL-140, PRO-R14-SD-DL-140 SS, PRO-R14-SD-DL-140 FF |  |  |  | -102d | 0d |  |  |  | PRO-R09-SD-DL-140 | PRC | DL | Each | DL | SD | PRO | R09 | PROC |
| PRO-R09-SD-DL-150 |  | Material Delivery & Site Inspection of Catch Basin Covers for Storm Drainage Network | 26d | 2026-10-27 | 2026-11-25 | PRO-SD-1DL-150, PRO-R14-SD-DL-150 SS, PRO-R14-SD-DL-150 FF |  |  |  | -21d | 78d |  |  |  | PRO-R09-SD-DL-150 | PRC | DL | Each | DL | SD | PRO | R09 | PROC |
|  | 5 | **Road 11 Local 1 ( 670 LM )** |  | 2025-07-29 | 2026-11-25 |  |  |  |  |  |  |  |  |  |  |  |  |  |  |  |  |  |  |
|  | 1 | **Main Line Sections** |  | 2025-07-29 | 2026-07-02 |  |  |  |  |  |  |  |  |  |  |  |  |  |  |  |  |  |  |
| PRO-R11-SD-DL-120 |  | Material Delivery & Site Inspection of Main Line Pipes of Storm Drainage Network | 17d | 2025-07-29 A | 2025-08-07 A | PRO-SD-1DL-110, PRO-R09-SD-DL-120 | 100% | 2025-09-09 | 2025-09-29 |  |  | Pipe with diameter 500mm ; depth: 1.51m - 2.5m [639.89]; Pipe with diameter 600mm ; depth: 1.51m - 2.5m [214.64]; Pipe with diameter 700mm ; depth: 1.51m - 2.5m [210.44]; Pipe with diameter 800mm ; depth: 0.0m - 1.5m [50]; Pipe with diameter 800mm ; depth: 1.51m - 2.5m [410.2]; Pipe with diameter 800mm ; depth: 2.51m - 3.5m [70]; Pipe with diameter 900mm ; depth: 0.0m - 1.5m [50]; Pipe with diameter 900mm ; depth: 1.51m - 2.5m [168.52]; Pipe with diameter 1000mm ; depth: 1.51m - 2.5m [176]; Pipe with diameter 1000mm ; depth: 2.51 - 3.5m [176] | 329,435.33 | 329,435.33 | PRO-R11-SD-DL-120 | PRC | DL | Each | DL | SD | PRO | R11 | PROC |
| PRO-R11-SD-DL-100 |  | Material Delivery & Site Inspection of Manholes of Storm Drainage Network | 26d | 2025-11-01 A | 2026-07-02 A | PRO-SD-1DL-100, PRO-R09-SD-DL-100 | 100% | 2025-10-27 | 2025-11-26 |  |  | MH ; depth: 0.0m - 1.5m [2]; MH ; depth: 1.51m - 2.5m [6]; MH ; depth: 2.51 - 3.5m [2]; MH ; depth: 1.51m - 2.5m [4]; MH ; depth: 2.51 - 3.5m [5] | 97,531 | 97,531 | PRO-R11-SD-DL-100 | PRC | DL | Each | DL | SD | PRO | R11 | PROC |
|  | 2 | **Catch Basin Sections** |  | 2025-12-01 | 2026-07-06 |  |  |  |  |  |  |  |  |  |  |  |  |  |  |  |  |  |  |
| PRO-R11-SD-DL-130 |  | Material Delivery & Site Inspection of Catch Basins for Storm Drainage Network | 26d | 2025-12-01 A | 2025-12-08 A | PRO-SD-1DL-130, PRO-R09-SD-DL-130 | 100% | 2025-12-04 | 2026-01-03 |  |  | Pipe with diameter 300mm ; depth: 0 - 1.5m [657.88]; Pipe with diameter 400mm ; depth: 0 - 1.5m [40.12]; Single Catch basin [22]; Double Catch basin [20] | 114,828.88 | 114,828.88 | PRO-R11-SD-DL-130 | PRC | DL | Each | DL | SD | PRO | R11 | PROC |
| PRO-R11-SD-DL-110 |  | Material Delivery & Site Inspection of Catch Basin Pipes for Storm Drainage Network | 26d | 2026-06-14 A | 2026-07-06 A | PRO-SD-1DL-120, PRO-R09-SD-DL-110 | 100% | 2025-12-04 | 2026-01-03 |  |  |  |  |  | PRO-R11-SD-DL-110 | PRC | DL | Each | DL | SD | PRO | R11 | PROC |
|  | 3 | **Testing and Finishes** |  | 2026-06-22 | 2026-11-25 |  |  |  |  |  |  |  |  |  |  |  |  |  |  |  |  |  |  |
| PRO-R11-SD-DL-160 |  | Material Delivery & Site Inspection of Epoxy Insulation for Storm Drainage Network | 26d | 2026-06-22 A | 2026-09-16 A | PRO-SD-1DL-160, PRO-R09-SD-DL-160 | 100% | 2027-03-30 | 2027-04-28 |  |  |  |  |  | PRO-R11-SD-DL-160 | PRC | DL | Each | DL | SD | PRO | R11 | PROC |
| PRO-R11-SD-DL-150 |  | Material Delivery & Site Inspection of Catch Basin Covers for Storm Drainage Network | 26d | 2026-06-27 A | 2026-08-30 A | PRO-SD-1DL-150 | 100% | 2027-03-30 | 2027-04-28 |  |  |  |  |  | PRO-R11-SD-DL-150 | PRC | DL | Each | DL | SD | PRO | R11 | PROC |
| PRO-R11-SD-DL-140 |  | Material Delivery & Site Inspection of Manholes Covers for Storm Drainage Network | 26d | 2026-10-27 | 2026-11-25 | PRO-SD-1DL-140, PRO-R09-SD-DL-140 SS, PRO-R09-SD-DL-140 FF |  |  |  | 14d | 186d |  |  |  | PRO-R11-SD-DL-140 | PRC | DL | Each | DL | SD | PRO | R11 | PROC |
|  | PW | **Potable Water Network** |  | 2025-02-11 | 2026-12-26 |  |  |  |  |  |  |  |  |  |  |  |  |  |  |  |  |  |  |
|  | PO | **Issuance of Purchase Orders** |  | 2025-02-11 | 2025-02-23 |  |  |  |  |  |  |  |  |  |  |  |  |  |  |  |  |  |  |
|  | 1 | **Main Line Sections** |  | 2025-02-11 | 2025-02-17 |  |  |  |  |  |  |  |  |  |  |  |  |  |  |  |  |  |  |
| PRO-PW-PO-100 |  | Issuance of Purchase Order for Main Line Pipes of Potable Water Network | 6d | 2025-02-11 A | 2025-02-17 A | ENG-MT-PW-ML-A-100, ENG-SH-PW-ML-A-110, ENG-MS-PW-ML-A-110, ENG-SH-PW-FH-A-110 | 100% |  |  |  |  |  |  |  | PRO-PW-PO-100 | PRC | PO | Each | PO | PW | PRO |  | PROC |
| PRO-PW-PO-110 |  | Issuance of Purchase Order for Valves of Potable Water Network | 6d | 2025-02-11 A | 2025-02-17 A | ENG-MT-PW-ML-A-110, ENG-SH-PW-ML-A-110, ENG-MS-PW-ML-A-110, ENG-SH-PW-FH-A-110 | 100% |  |  |  |  |  |  |  | PRO-PW-PO-110 | PRC | PO | Each | PO | PW | PRO |  | PROC |
|  | 3 | **Fire Hydrant** |  | 2025-02-11 | 2025-02-23 |  |  |  |  |  |  |  |  |  |  |  |  |  |  |  |  |  |  |
| PRO-PW-PO-120 |  | Issuance of Purchase Order for Fire Hydrants of Potable Water Network | 10d | 2025-02-11 A | 2025-02-23 A | ENG-MT-PW-FH-A-100, ENG-SH-PW-ML-A-110, ENG-MS-PW-ML-A-110, ENG-SH-PW-FH-A-110 | 100% |  |  |  |  |  |  |  | PRO-PW-PO-120 | PRC | PO | Each | PO | PW | PRO |  | PROC |

| ID | WBS | Activity | Duration | Start | Finish | Predecessors | Complete | Planned start | Planned finish | Resources | Cost | Actual cost | Activity ID N | 02- Network-WBS | 03- Activity | 04-UOM | 05-Discipline | 01- Network | 08 Stage | Discipline | 09 Roads |
| --- | --- | --- | --- | --- | --- | --- | --- | --- | --- | --- | --- | --- | --- | --- | --- | --- | --- | --- | --- | --- | --- |
|  | 4 | **Testing and Finishes** |  | 2025-02-11 | 2025-02-23 |  |  |  |  |  |  |  |  |  |  |  |  |  |  |  |  |
| PRO-PW-PO-130 |  | Issuance of Purchase Order for Surface Box of Potable Water Network | 10d | 2025-02-11 A | 2025-02-23 A | ENG-MT-PW-TF-A-100, ENG-SH-PW-ML-A-110, ENG-MS-PW-ML-A-110, ENG-SH-PW-FH-A-110 | 100% | 2025-02-09 | 2025-02-19 |  |  |  | PRO-PW-PO-130 | PRC | PO | Each | PO | PW | PRO | PROC |  |
|  | MF | **Manufacturing of Material** |  | 2025-02-18 | 2025-05-31 |  |  |  |  |  |  |  |  |  |  |  |  |  |  |  |  |
|  | 1 | **Main Line Sections** |  | 2025-02-18 | 2025-05-31 |  |  |  |  |  |  |  |  |  |  |  |  |  |  |  |  |
| PRO-PW-MF-100 |  | Manufacturing of Main Line Pipes for Potable Water Network | 60d | 2025-02-18 A | 2025-05-22 A | PRO-PW-PO-100 | 100% | 2025-02-18 | 2025-05-04 |  |  |  | PRO-PW-MF-100 | PRC | MF | Each | MF | PW | PRO | PROC |  |
| PRO-PW-MF-110 |  | Manufacturing of Valves for Potable Water Network | 60d | 2025-02-18 A | 2025-05-31 A | PRO-PW-PO-110 | 100% | 2025-02-18 | 2025-05-04 |  |  |  | PRO-PW-MF-110 | PRC | MF | Each | MF | PW | PRO | PROC |  |
|  | 3 | **Fire Hydrant** |  | 2025-02-24 | 2025-05-21 |  |  |  |  |  |  |  |  |  |  |  |  |  |  |  |  |
| PRO-PW-MF-120 |  | Manufacturing of Fire Hydrants for Potable Water Network | 60d | 2025-02-24 A | 2025-05-21 A | PRO-PW-PO-120 | 100% | 2025-02-24 | 2025-05-08 |  |  |  | PRO-PW-MF-120 | PRC | MF | Each | MF | PW | PRO | PROC |  |
|  | 4 | **Testing and Finishes** |  | 2025-02-24 | 2025-04-26 |  |  |  |  |  |  |  |  |  |  |  |  |  |  |  |  |
| PRO-PW-MF-130 |  | Manufacturing for Surface Box of Potable Water Network | 80d | 2025-02-24 A | 2025-04-26 A | PRO-PW-PO-130 | 100% | 2025-02-20 | 2025-05-29 |  |  |  | PRO-PW-MF-130 | PRC | MF | Each | MF | PW | PRO | PROC |  |
|  | 1DL | **1st Material Delivery & Site Inspection** |  | 2025-04-29 | 2025-12-01 |  |  |  |  |  |  |  |  |  |  |  |  |  |  |  |  |
|  | 1 | **Main Line Sections** |  | 2025-04-29 | 2025-10-10 |  |  |  |  |  |  |  |  |  |  |  |  |  |  |  |  |
| PRO-PW-1DL-100 |  | 1ST Material Delivery for Main Line Pipes of Potable Water Network | 6d | 2025-04-29 A | 2025-05-28 A | PRO-PW-MF-100 | 100% | 2025-05-05 | 2025-05-11 |  |  |  | PRO-PW-1DL-100 | PRC | 1DL | Each | 1DL | PW | PRO | PROC |  |
| PRO-PW-1DL-110 |  | 1ST Material Delivery for Valves of Potable Water Network | 6d | 2025-06-21 A | 2025-10-10 A | PRO-PW-MF-110 | 100% | 2025-05-05 | 2025-05-11 |  |  |  | PRO-PW-1DL-110 | PRC | 1DL | Each | 1DL | PW | PRO | PROC |  |
|  | 3 | **Fire Hydrant** |  | 2025-11-01 | 2025-11-04 |  |  |  |  |  |  |  |  |  |  |  |  |  |  |  |  |
| PRO-PW-1DL-120 |  | 1ST Material Delivery for Fire Hydrants of Potable Water Network | 6d | 2025-11-01 A | 2025-11-04 A | PRO-PW-MF-120 | 100% | 2025-05-10 | 2025-05-15 |  |  |  | PRO-PW-1DL-120 | PRC | 1DL | Each | 1DL | PW | PRO | PROC |  |
|  | 4 | **Testing and Finishes** |  | 2025-11-24 | 2025-12-01 |  |  |  |  |  |  |  |  |  |  |  |  |  |  |  |  |
| PRO-PW-1DL-130 |  | 1ST Material Delivery for Finishes of Potable Water Network | 6d | 2025-11-24 A | 2025-12-01 A | PRO-PW-MF-130 | 100% | 2026-10-20 | 2026-10-26 |  |  |  | PRO-PW-1DL-130 | PRC | 1DL | Each | 1DL | PW | PRO | PROC |  |
|  | DL | **Material Delivery & Site Inspection** |  | 2025-04-29 | 2026-12-26 |  |  |  |  |  |  |  |  |  |  |  |  |  |  |  |  |
|  | 1 | **Road 18 Local 1 ( 479 LM )** |  | 2025-05-03 | 2026-11-25 |  |  |  |  |  |  |  |  |  |  |  |  |  |  |  |  |
|  | 1 | **Main Line Sections** |  | 2025-05-03 | 2025-11-04 |  |  |  |  |  |  |  |  |  |  |  |  |  |  |  |  |
| PRO-R18-PW-DL-140 |  | Material Delivery & Site Inspection of Main Line Pipes for Potable Water Network | 26d | 2025-05-03 A | 2025-05-28 A | PRO-PW-1DL-100 | 100% | 2025-05-12 | 2025-06-15 | Pipe with diameter 200mm; in depth 0.0m - 1.5m [706.08] | 30,643.87 | 30,643.87 | PRO-R18-PW-DL-140 | PRC | DL | Each | DL | PW | PRO | PROC | R18 |
| PRO-R18-PW-DL-150 |  | Material Delivery & Site Inspection of Valves for Potable Water Network | 26d | 2025-06-21 A | 2025-11-04 A | PRO-PW-1DL-110 | 100% | 2025-05-12 | 2025-06-15 | Gate valves dia(200)mm on pipes with dia (200) mm. [7] | 5,532.8 | 5,532.8 | PRO-R18-PW-DL-150 | PRC | DL | Each | DL | PW | PRO | PROC | R18 |
|  | 3 | **Fire Hydrant** |  | 2026-07-14 | 2026-07-18 |  |  |  |  |  |  |  |  |  |  |  |  |  |  |  |  |
| PRO-R18-PW-DL-160 |  | Material Delivery & Site Inspection of Fire Hydrants for Potable Water Network | 26d | 2026-07-14 A | 2026-07-18 A | PRO-PW-1DL-120 | 100% | 2025-05-17 | 2025-06-19 | 3-outlet fire hydrant (2 x 2.5 inch and 1 x 4 inch) in the form of a separate dry vacuum cylinder [2] | 4,522 | 4,522 | PRO-R18-PW-DL-160 | PRC | DL | Each | DL | PW | PRO | PROC | R18 |

| ID | WBS | Activity | Duration | Start | Finish | Predecessors | Complete | Planned start | Planned finish | Total float | Free float | Resources | Cost | Actual cost | Activity ID N | 02- Network-WBS | 03- Activity | 04-UOM | 05-Discipline | 01- Network | 08 Stage | 09 Roads | Discipline |
| --- | --- | --- | --- | --- | --- | --- | --- | --- | --- | --- | --- | --- | --- | --- | --- | --- | --- | --- | --- | --- | --- | --- | --- |
|  | 4 | **Testing and Finishes** |  | 2026-10-27 | 2026-11-25 |  |  |  |  |  |  |  |  |  |  |  |  |  |  |  |  |  |  |
| PRO-R18-PW-DL-170 |  | Material Delivery & Site Inspection for Finishes of Potable Water Network | 26d | 2026-10-27 | 2026-11-25 | PRO-PW-1DL-130 |  |  |  | -81d | 0d |  |  |  | PRO-R18-PW-DL-170 | PRC | DL | Each | DL | PW | PRO | R18 | PROC |
|  | 9 | **Road 17 Local 1 ( 500 LM )** |  | 2025-05-17 | 2026-11-25 |  |  |  |  |  |  |  |  |  |  |  |  |  |  |  |  |  |  |
|  | 1 | **Main Line Sections** |  | 2025-05-17 | 2026-11-25 |  |  |  |  |  |  |  |  |  |  |  |  |  |  |  |  |  |  |
| PRO-R17-PW-DL-100 |  | Material Delivery & Site Inspection of Main Line Pipes for Potable Water Network | 26d | 2025-05-17 A | 2025-05-31 A | PRO-PW-1DL-100, PRO-R18-PW-DL-140 | 100% | 2025-06-16 | 2025-07-15 |  |  | Pipe with diameter 200mm; in depth 0.0m - 1.5m [623.33] | 27,052.52 | 27,052.52 | PRO-R17-PW-DL-100 | PRC | DL | Each | DL | PW | PRO | R17 | PROC |
| PRO-R17-PW-DL-110 |  | Material Delivery & Site Inspection of Valves for Potable Water Network | 26d | 2026-10-27 | 2026-11-25 | PRO-PW-1DL-110, PRO-R18-PW-DL-150 SS, PRO-R18-PW-DL-150 FF |  |  |  | -121d | 0d | Gate valves dia(200)mm on pipes with dia (200) mm. [7] | 5,532.8 |  | PRO-R17-PW-DL-110 | PRC | DL | Each | DL | PW | PRO | R17 | PROC |
|  | 3 | **Fire Hydrant** |  | 2026-07-14 | 2026-07-18 |  |  |  |  |  |  |  |  |  |  |  |  |  |  |  |  |  |  |
| PRO-R17-PW-DL-120 |  | Material Delivery & Site Inspection of Fire Hydrants for Potable Water Network | 26d | 2026-07-14 A | 2026-07-18 A | PRO-PW-1DL-120, PRO-R18-PW-DL-160 | 100% | 2025-06-21 | 2025-07-20 |  |  | 3-outlet fire hydrant (2 x 2.5 inch and 1 x 4 inch) in the form of a separate dry vacuum cylinder [3] | 6,783 | 6,783 | PRO-R17-PW-DL-120 | PRC | DL | Each | DL | PW | PRO | R17 | PROC |
|  | 4 | **Testing and Finishes** |  | 2026-10-27 | 2026-11-25 |  |  |  |  |  |  |  |  |  |  |  |  |  |  |  |  |  |  |
| PRO-R17-PW-DL-130 |  | Material Delivery & Site Inspection for Finishes of Potable Water Network | 26d | 2026-10-27 | 2026-11-25 | PRO-PW-1DL-130, PRO-R18-PW-DL-170 SS, PRO-R18-PW-DL-170 FF |  |  |  | -81d | 0d |  |  |  | PRO-R17-PW-DL-130 | PRC | DL | Each | DL | PW | PRO | R17 | PROC |
|  | 8 | **Road 16 Local 1 ( 527 LM )** |  | 2025-04-29 | 2026-11-25 |  |  |  |  |  |  |  |  |  |  |  |  |  |  |  |  |  |  |
|  | 1 | **Main Line Sections** |  | 2025-04-29 | 2026-11-25 |  |  |  |  |  |  |  |  |  |  |  |  |  |  |  |  |  |  |
| PRO-R16-PW-DL-100 |  | Material Delivery & Site Inspection of Main Line Pipes for Potable Water Network | 26d | 2025-04-29 A | 2025-05-29 A | PRO-PW-1DL-100, PRO-R17-PW-DL-100 | 100% | 2025-07-16 | 2025-08-14 |  |  | Pipe with diameter 200mm; in depth 0.0m - 1.5m [650.42] | 28,228.23 | 28,228.23 | PRO-R16-PW-DL-100 | PRC | DL | Each | DL | PW | PRO | R16 | PROC |
| PRO-R16-PW-DL-110 |  | Material Delivery & Site Inspection of Valves for Potable Water Network | 26d | 2026-10-27 | 2026-11-25 | PRO-PW-1DL-110, PRO-R17-PW-DL-110 SS, PRO-R17-PW-DL-110 FF |  |  |  | -121d | 0d | Gate valves dia(200)mm on pipes with dia (200) mm. [5] | 3,952 |  | PRO-R16-PW-DL-110 | PRC | DL | Each | DL | PW | PRO | R16 | PROC |
|  | 3 | **Fire Hydrant** |  | 2026-07-14 | 2026-07-18 |  |  |  |  |  |  |  |  |  |  |  |  |  |  |  |  |  |  |
| PRO-R16-PW-DL-120 |  | Material Delivery & Site Inspection of Fire Hydrants for Potable Water Network | 26d | 2026-07-14 A | 2026-07-18 A | PRO-PW-1DL-120, PRO-R17-PW-DL-120 | 100% | 2025-07-21 | 2025-08-19 |  |  | 3-outlet fire hydrant (2 x 2.5 inch and 1 x 4 inch) in the form of a separate dry vacuum cylinder [4] | 9,044 | 9,044 | PRO-R16-PW-DL-120 | PRC | DL | Each | DL | PW | PRO | R16 | PROC |
|  | 4 | **Testing and Finishes** |  | 2026-10-27 | 2026-11-25 |  |  |  |  |  |  |  |  |  |  |  |  |  |  |  |  |  |  |
| PRO-R16-PW-DL-130 |  | Material Delivery & Site Inspection for Finishes of Potable Water Network | 26d | 2026-10-27 | 2026-11-25 | PRO-PW-1DL-130, PRO-R17-PW-DL-130 SS, PRO-R17-PW-DL-130 FF |  |  |  | -81d | 0d |  |  |  | PRO-R16-PW-DL-130 | PRC | DL | Each | DL | PW | PRO | R16 | PROC |
|  | 7 | **Road 15 Local 1 ( 556 LM )** |  | 2025-05-12 | 2026-11-25 |  |  |  |  |  |  |  |  |  |  |  |  |  |  |  |  |  |  |
|  | 1 | **Main Line Sections** |  | 2025-05-12 | 2026-11-25 |  |  |  |  |  |  |  |  |  |  |  |  |  |  |  |  |  |  |
| PRO-R15-PW-DL-100 |  | Material Delivery & Site Inspection of Main Line Pipes for Potable Water Network | 26d | 2025-05-12 A | 2025-05-29 A | PRO-PW-1DL-100, PRO-R16-PW-DL-100 | 100% | 2025-08-16 | 2025-09-14 |  |  | Pipe with diameter 200mm; in depth 0.0m - 1.5m [677.02] | 29,382.67 | 29,382.67 | PRO-R15-PW-DL-100 | PRC | DL | Each | DL | PW | PRO | R15 | PROC |
| PRO-R15-PW-DL-110 |  | Material Delivery & Site Inspection of Valves for Potable Water Network | 26d | 2026-10-27 | 2026-11-25 | PRO-PW-1DL-110, PRO-R16-PW-DL-110 SS, PRO-R16-PW-DL-110 FF |  |  |  | -121d | 0d | Gate valves dia(200)mm on pipes with dia (200) mm. [6] | 4,742.4 |  | PRO-R15-PW-DL-110 | PRC | DL | Each | DL | PW | PRO | R15 | PROC |
|  | 3 | **Fire Hydrant** |  | 2026-07-14 | 2026-07-18 |  |  |  |  |  |  |  |  |  |  |  |  |  |  |  |  |  |  |
| PRO-R15-PW-DL-120 |  | Material Delivery & Site Inspection of Fire Hydrants for Potable Water Network | 26d | 2026-07-14 A | 2026-07-18 A | PRO-PW-1DL-120, PRO-R16-PW-DL-120 | 100% | 2025-08-20 | 2025-09-18 |  |  | 3-outlet fire hydrant (2 x 2.5 inch and 1 x 4 inch) in the form of a separate dry vacuum cylinder [4] | 9,044 | 9,044 | PRO-R15-PW-DL-120 | PRC | DL | Each | DL | PW | PRO | R15 | PROC |

| ID | WBS | Activity | Duration | Start | Finish | Predecessors | Complete | Remaining | Planned start | Planned finish | Total float | Free float | Resources | Cost | Actual cost | Activity ID N | 02- Network-WBS | 03- Activity | 04-UOM | 05-Discipline | 01- Network | 08 Stage | 09 Roads | Discipline |
| --- | --- | --- | --- | --- | --- | --- | --- | --- | --- | --- | --- | --- | --- | --- | --- | --- | --- | --- | --- | --- | --- | --- | --- | --- |
|  | 4 | **Testing and Finishes** |  | 2026-10-27 | 2026-11-25 |  |  |  |  |  |  |  |  |  |  |  |  |  |  |  |  |  |  |  |
| PRO-R15-PW-DL-130 |  | Material Delivery & Site Inspection for Finishes of Potable Water Network | 26d | 2026-10-27 | 2026-11-25 | PRO-PW-1DL-130, PRO-R16-PW-DL-130 SS, PRO-R16-PW-DL-130 FF |  |  |  |  | -81d | 0d |  |  |  | PRO-R15-PW-DL-130 | PRC | DL | Each | DL | PW | PRO | R15 | PROC |
|  | 4 | **Road 10 Local 2 ( 2352 LM )** |  | 2025-05-30 | 2026-11-25 |  |  |  |  |  |  |  |  |  |  |  |  |  |  |  |  |  |  |  |
|  | 1 | **Main Line Sections** |  | 2025-05-30 | 2026-11-25 |  |  |  |  |  |  |  |  |  |  |  |  |  |  |  |  |  |  |  |
| PRO-R10-PW-DL-100 |  | Material Delivery & Site Inspection of Main Line Pipes for Potable Water Network | 26d | 2025-05-30 A | 2025-06-26 A | PRO-PW-1DL-100, PRO-R15-PW-DL-100 | 100% |  | 2025-09-15 | 2025-10-15 |  |  | Pipe with diameter 200mm; in depth 0.0m - 1.5m [2551.31]; Pipe with diameter 560mm; in depth 1.5m - 3.0m [1200]; Pipe with diameter 630mm; in depth 1.5m - 3.0m [2090] | 895,358.85 | 895,358.85 | PRO-R10-PW-DL-100 | PRC | DL | Each | DL | PW | PRO | R10 | PROC |
| PRO-R10-PW-DL-110 |  | Material Delivery & Site Inspection of Valves for Potable Water Network | 26d | 2025-12-13 A | 2026-11-25 | PRO-PW-1DL-110, PRO-R15-PW-DL-110 FF | 80% | 3d | 2025-09-15 | 2025-10-15 | -121d | 0d | Gate valves dia(200)mm on pipes with dia (200) mm. [22]; Butterfly valves with dia (560)mm on pipes with dia (560)mm. [2]; Butterfly valves with dia (630)mm on pipes with dia (630)mm. [5]; Wash out valve with dia (100)mm on pipes with dia (200) mm [1]; Wash out valve with dia (150)mm on pipes with dia (560) mm [1]; Wash out valve with dia (150)mm on pipes with dia (630) mm [3]; Air valves with dia (50mm) mm on pipes with dia(200)mm. [3]; Air valves with dia (65mm) mm on pipes with dia(560)mm. [2]; Air valves with dia (65mm) mm on pipes with dia(630)mm. [4] | 215,514.4 | 172,411.52 | PRO-R10-PW-DL-110 | PRC | DL | Each | DL | PW | PRO | R10 | PROC |
|  | 3 | **Fire Hydrant** |  | 2026-07-14 | 2026-07-18 |  |  |  |  |  |  |  |  |  |  |  |  |  |  |  |  |  |  |  |
| PRO-R10-PW-DL-120 |  | Material Delivery & Site Inspection of Fire Hydrants for Potable Water Network | 26d | 2026-07-14 A | 2026-07-18 A | PRO-PW-1DL-120, PRO-R15-PW-DL-120 | 100% |  | 2025-09-20 | 2025-10-20 |  |  | 3-outlet fire hydrant (2 x 2.5 inch and 1 x 4 inch) in the form of a separate dry vacuum cylinder [15] | 33,915 | 33,915 | PRO-R10-PW-DL-120 | PRC | DL | Each | DL | PW | PRO | R10 | PROC |
|  | 4 | **Testing and Finishes** |  | 2026-10-27 | 2026-11-25 |  |  |  |  |  |  |  |  |  |  |  |  |  |  |  |  |  |  |  |
| PRO-R10-PW-DL-130 |  | Material Delivery & Site Inspection for Finishes of Potable Water Network | 26d | 2026-10-27 | 2026-11-25 | PRO-PW-1DL-130, PRO-R15-PW-DL-130 SS, PRO-R15-PW-DL-130 FF |  |  |  |  | -81d | 62d | Wash out chamber; on 200 mm dia pipeline Depth 1.5 - 3m [2]; Wash out chamber; on 560 mm dia pipeline Depth 1.5 - 3m [1]; Wash out chamber; on 630 mm dia pipeline Depth 1.5 - 3m [3]; Air valve chamber; on 200 mm dia pipeline Depth 1.5 - 3 m [3]; Air valve chamber on 560 mm dia pipeline Depth 1.5 - 3 m [2]; Air valve chamber on 630 mm dia pipeline Depth 1.5 - 3 m [4] | 67,336.6 |  | PRO-R10-PW-DL-130 | PRC | DL | Each | DL | PW | PRO | R10 | PROC |
|  | 3 | **Road 14 Local 1 ( 584 LM )** |  | 2025-07-22 | 2026-11-26 |  |  |  |  |  |  |  |  |  |  |  |  |  |  |  |  |  |  |  |
|  | 1 | **Main Line Sections** |  | 2025-07-22 | 2026-11-26 |  |  |  |  |  |  |  |  |  |  |  |  |  |  |  |  |  |  |  |
| PRO-R14-PW-DL-100 |  | Material Delivery & Site Inspection of Main Line Pipes for Potable Water Network | 26d | 2025-07-22 A | 2025-08-04 A | PRO-PW-1DL-100, PRO-R10-PW-DL-100 | 100% |  | 2025-10-16 | 2025-11-15 |  |  | Pipe with diameter 355mm; in depth 0.0m - 1.5m [1400]; Pipe with diameter 355mm; in depth 1.5m - 3.0m [100] | 132,680 | 132,680 | PRO-R09-PW-DL-100 | PRC | DL | Each | DL | PW | PRO | R14 | PROC |
| PRO-R14-PW-DL-110 |  | Material Delivery & Site Inspection of Valves for Potable Water Network | 26d | 2026-10-10 A | 2026-11-26 | PRO-PW-1DL-110, PRO-R10-PW-DL-110 SS, PRO-R10-PW-DL-110 FF | 10% | 0d | 2027-01-12 | 2027-02-10 | -121d | 0d | Butterfly valves with dia (355)mm on pipes with dia (355)mm. [18]; Air valves with dia (65mm) mm on pipes with dia(355)mm. [1] | 146,233 | 14,623.3 | PRO-R09-PW-DL-110 | PRC | DL | Each | DL | PW | PRO | R14 | PROC |
|  | 3 | **Fire Hydrant** |  | 2025-12-01 | 2026-07-18 |  |  |  |  |  |  |  |  |  |  |  |  |  |  |  |  |  |  |  |
| PRO-R14-PW-DL-120 |  | Material Delivery & Site Inspection of Fire Hydrants for Potable Water Network | 26d | 2025-12-01 A | 2026-07-18 A | PRO-PW-1DL-120, PRO-R10-PW-DL-120 | 100% |  | 2025-10-21 | 2025-11-19 |  |  | 3-outlet fire hydrant (2 x 2.5 inch and 1 x 4 inch) in the form of a separate dry vacuum cylinder [7] | 15,827 | 15,827 | PRO-R09-PW-DL-120 | PRC | DL | Each | DL | PW | PRO | R14 | PROC |
|  | 4 | **Testing and Finishes** |  | 2025-12-01 | 2025-12-08 |  |  |  |  |  |  |  |  |  |  |  |  |  |  |  |  |  |  |  |
| PRO-R14-PW-DL-130 |  | Material Delivery & Site Inspection for Finishes of Potable Water Network | 26d | 2025-12-01 A | 2025-12-08 A | PRO-PW-MF-130 | 100% |  | 2025-11-11 | 2025-12-10 |  |  | In-situ, reinforced single concrete valve chambers on the pipeline, as defined and shown on the drawingss, and all necessary works and equipment (valve measured elsewhere), and supplies construction, cut and installation of pipe cutting, backfilling, in [18]; Air valve chamber on 355 mm dia pipeline Depth 1.5 - 3 m [1] | 152,023 | 152,023 | PRO-R09-PW-DL-130 | PRC | DL | Each | DL | PW | PRO | R14 | PROC |
|  | 2 | **Road 09 Local 2 ( 2278 LM )** |  | 2025-11-01 | 2026-11-25 |  |  |  |  |  |  |  |  |  |  |  |  |  |  |  |  |  |  |  |
|  | 1 | **Main Line Sections** |  | 2025-11-01 | 2026-08-17 |  |  |  |  |  |  |  |  |  |  |  |  |  |  |  |  |  |  |  |
| PRO-R09-PW-DL-100 |  | Material Delivery & Site Inspection of Main Line Pipes for Potable Water Network | 26d | 2025-11-01 A | 2025-11-08 A | PRO-PW-1DL-100, PRO-R14-PW-DL-100 | 100% |  | 2025-11-16 | 2025-12-15 |  |  | Pipe with diameter 160 mm; in depth 1.5m - 3.0m [50]; Pipe with diameter 200mm; in depth 0.0m - 1.5m [2544.71]; Pipe with diameter 200mm; in depth 1.5m - 3.0m [100] | 117,110.41 | 117,110.41 | PRO-R09-PW-DL-100 | PRC | DL | Each | DL | PW | PRO | R09 | PROC |
| PRO-R09-PW-DL-110 |  | Material Delivery & Site Inspection of Valves for Potable Water Network | 26d | 2026-06-30 A | 2026-08-17 A | PRO-PW-1DL-110 | 100% |  | 2027-02-11 | 2027-03-17 |  |  | Gate valves dia(200)mm on pipes with dia (200) mm. [22]; Wash out valve with dia (100)mm on pipes with dia (200) mm [1] | 19,085.2 | 19,085.2 | PRO-R09-PW-DL-110 | PRC | DL | Each | DL | PW | PRO | R09 | PROC |
|  | 3 | **Fire Hydrant** |  | 2026-07-14 | 2026-07-18 |  |  |  |  |  |  |  |  |  |  |  |  |  |  |  |  |  |  |  |
| PRO-R09-PW-DL-120 |  | Material Delivery & Site Inspection of Fire Hydrants for Potable Water Network | 26d | 2026-07-14 A | 2026-07-18 A | PRO-PW-1DL-120, PRO-R14-PW-DL-120 | 100% |  | 2025-11-20 | 2025-12-20 |  |  | 3-outlet fire hydrant (2 x 2.5 inch and 1 x 4 inch) in the form of a separate dry vacuum cylinder [15] | 33,915 | 33,915 | PRO-R09-PW-DL-120 | PRC | DL | Each | DL | PW | PRO | R09 | PROC |

| ID | WBS | Activity | Duration | Start | Finish | Predecessors | Complete | Remaining | Planned start | Planned finish | Total float | Free float | Resources | Cost | Actual cost | Activity ID N | 02- Network-WBS | 03- Activity | 04-UOM | 05-Discipline | 01- Network | 08 Stage | 09 Roads | Discipline |
| --- | --- | --- | --- | --- | --- | --- | --- | --- | --- | --- | --- | --- | --- | --- | --- | --- | --- | --- | --- | --- | --- | --- | --- | --- |
|  | 4 | **Testing and Finishes** |  | 2026-10-27 | 2026-11-25 |  |  |  |  |  |  |  |  |  |  |  |  |  |  |  |  |  |  |  |
| PRO-R09-PW-DL-130 |  | Material Delivery & Site Inspection for Finishes of Potable Water Network | 26d | 2026-10-27 | 2026-11-25 | PRO-PW-1DL-130, PRO-R14-PW-DL-130 SS, PRO-R14-PW-DL-130 FF |  |  |  |  | -69d | 0d |  |  |  | PRO-R09-PW-DL-130 | PRC | DL | Each | DL | PW | PRO | R09 | PROC |
|  | 5 | **Road 11 Local 1 ( 670 LM )** |  | 2025-08-02 | 2026-12-26 |  |  |  |  |  |  |  |  |  |  |  |  |  |  |  |  |  |  |  |
|  | 1 | **Main Line Sections** |  | 2025-08-02 | 2026-12-26 |  |  |  |  |  |  |  |  |  |  |  |  |  |  |  |  |  |  |  |
| PRO-R11-PW-DL-100 |  | Material Delivery & Site Inspection of Main Line Pipes for Potable Water Network | 26d | 2025-08-02 A | 2025-08-09 A | PRO-PW-1DL-100, PRO-R09-PW-DL-100 | 100% |  | 2025-12-16 | 2026-01-14 |  |  | Pipe with diameter 200mm; in depth 0.0m - 1.5m [799.13] | 34,682.24 | 34,682.24 | PRO-R11-PW-DL-100 | PRC | DL | Each | DL | PW | PRO | R11 | PROC |
| PRO-R11-PW-DL-110 |  | Material Delivery & Site Inspection of Valves for Potable Water Network | 26d | 2026-11-26 | 2026-12-26 | PRO-PW-1DL-110, PRO-R09-PW-DL-110 SS, PRO-R09-PW-DL-110 FF, PRO-R14-PW-DL-110 SS, PRO-R14-PW-DL-110 FF |  |  |  |  | -121d | 0d | Gate valves dia(200)mm on pipes with dia (200) mm. [6] | 4,742.4 |  | PRO-R11-PW-DL-110 | PRC | DL | Each | DL | PW | PRO | R11 | PROC |
|  | 3 | **Fire Hydrant** |  | 2026-07-14 | 2026-07-18 |  |  |  |  |  |  |  |  |  |  |  |  |  |  |  |  |  |  |  |
| PRO-R11-PW-DL-120 |  | Material Delivery & Site Inspection of Fire Hydrants for Potable Water Network | 26d | 2026-07-14 A | 2026-07-18 A | PRO-PW-1DL-120, PRO-R09-PW-DL-120 | 100% |  | 2025-12-21 | 2026-01-19 |  |  | 3-outlet fire hydrant (2 x 2.5 inch and 1 x 4 inch) in the form of a separate dry vacuum cylinder [5] | 11,305 | 11,305 | PRO-R11-PW-DL-120 | PRC | DL | Each | DL | PW | PRO | R11 | PROC |
|  | 4 | **Testing and Finishes** |  | 2026-10-27 | 2026-11-25 |  |  |  |  |  |  |  |  |  |  |  |  |  |  |  |  |  |  |  |
| PRO-R11-PW-DL-130 |  | Material Delivery & Site Inspection for Finishes of Potable Water Network | 26d | 2026-10-27 | 2026-11-25 | PRO-PW-1DL-130, PRO-R09-PW-DL-130 SS, PRO-R09-PW-DL-130 FF |  |  |  |  | -69d | 74d |  |  |  | PRO-R11-PW-DL-130 | PRC | DL | Each | DL | PW | PRO | R11 | PROC |
|  | IR | **Irrigation Network** |  | 2025-02-11 | 2026-11-16 |  |  |  |  |  |  |  |  |  |  |  |  |  |  |  |  |  |  |  |
|  | PO | **Issuance of Purchase Orders** |  | 2025-02-11 | 2025-02-17 |  |  |  |  |  |  |  |  |  |  |  |  |  |  |  |  |  |  |  |
|  | 1 | **Main Line Pipes** |  | 2025-02-11 | 2025-02-17 |  |  |  |  |  |  |  |  |  |  |  |  |  |  |  |  |  |  |  |
| PRO-IR-PO-100 |  | Issuance of Purchase Order for Main Line Pipes of Irrigation Network | 6d | 2025-02-11 A | 2025-02-17 A | ENG-MT-IR-ML-A-100, ENG-SH-IR-ML-A-110, ENG-MS-IR-ML-A-110 | 100% |  |  |  |  |  |  |  |  | PRO-IR-PO-100 | PRC | PO | Each | PO | IR | PRO |  | PROC |
| PRO-IR-PO-110 |  | Issuance of Purchase Order for Valves of Irrigation Network | 6d | 2025-02-11 A | 2025-02-17 A | ENG-MT-IR-ML-A-110, ENG-SH-IR-ML-A-110, ENG-MS-IR-ML-A-110 | 100% |  |  |  |  |  |  |  |  | PRO-IR-PO-110 | PRC | PO | Each | PO | IR | PRO |  | PROC |
|  | MF | **Manufacturing of Material** |  | 2025-02-18 | 2025-04-30 |  |  |  |  |  |  |  |  |  |  |  |  |  |  |  |  |  |  |  |
|  | 1 | **Main Line Pipes** |  | 2025-02-18 | 2025-04-30 |  |  |  |  |  |  |  |  |  |  |  |  |  |  |  |  |  |  |  |
| PRO-IR-MF-100 |  | Manufacturing of Main Line Pipes for Irrigation Network | 105d | 2025-02-18 A | 2025-04-30 A | PRO-IR-PO-100 | 100% |  | 2025-02-18 | 2025-06-30 |  |  |  |  |  | PRO-IR-MF-100 | PRC | MF | Each | MF | IR | PRO |  | PROC |
| PRO-IR-MF-110 |  | Manufacturing of Valves for Irrigation Network | 119d | 2025-02-18 A | 2025-04-08 A | PRO-IR-PO-110 | 100% |  | 2025-02-18 | 2025-07-16 |  |  |  |  |  | PRO-IR-MF-110 | PRC | MF | Each | MF | IR | PRO |  | PROC |
|  | 1DL | **1st Material Delivery & Site Inspection** |  | 2025-05-01 | 2026-10-28 |  |  |  |  |  |  |  |  |  |  |  |  |  |  |  |  |  |  |  |
|  | 1 | **Main Line Pipes** |  | 2025-05-01 | 2026-10-28 |  |  |  |  |  |  |  |  |  |  |  |  |  |  |  |  |  |  |  |
| PRO-IR-1DL-100 |  | 1ST Material Delivery for Main Line Pipes of Irrigation Network | 6d | 2025-05-01 A | 2025-05-10 A | PRO-IR-MF-100 | 100% |  | 2025-07-01 | 2025-07-07 |  |  |  |  |  | PRO-IR-1DL-100 | PRC | 1DL | Each | 1DL | IR | PRO |  | PROC |
| PRO-IR-1DL-110 |  | 1ST Material Delivery for Valves of Irrigation Network | 6d | 2025-12-11 A | 2026-10-28 | PRO-IR-MF-110 | 50% | 2d | 2026-10-13 | 2026-10-19 | -212d | 0d |  |  |  | PRO-IR-1DL-110 | PRC | 1DL | Each | 1DL | IR | PRO |  | PROC |
|  | DL | **Material Delivery & Site Inspection** |  | 2025-05-03 | 2026-11-16 |  |  |  |  |  |  |  |  |  |  |  |  |  |  |  |  |  |  |  |
|  | 1 | **Road 18 Local 1 ( 479 LM )** |  | 2025-05-03 | 2026-11-16 |  |  |  |  |  |  |  |  |  |  |  |  |  |  |  |  |  |  |  |
|  | 1 | **Main Line Pipes** |  | 2025-05-03 | 2026-11-16 |  |  |  |  |  |  |  |  |  |  |  |  |  |  |  |  |  |  |  |
| PRO-R18-IR-DL-120 |  | Material Delivery & Site Inspection of Main Line Pipes for Irrigation Network | 16d | 2025-05-03 A | 2025-05-17 A | PRO-IR-1DL-100 | 100% |  | 2025-07-08 | 2025-07-26 |  |  | 125 mm pipe; depth 0.0m - 1.5m [618.39] | 13,728.26 | 13,728.26 | PRO-R18-IR-DL-120 | PRC | DL | Each | DL | IR | PRO | R18 | PROC |
| PRO-R18-IR-DL-130 |  | Material Delivery & Site Inspection of Valves for Irrigation Network | 16d | 2026-10-29 | 2026-11-16 | PRO-IR-1DL-110 |  |  |  |  | -212d | 0d | Gate valves dia (90)mm on pipes with dia (125) mm. [5]; Wash out valve with dia (100)mm on pipes with dia (125) mm [1] | 4,631.8 |  | PRO-R18-IR-DL-130 | PRC | DL | Each | DL | IR | PRO | R18 | PROC |

| ID | WBS | Activity | Duration | Start | Finish | Predecessors | Complete | Planned start | Planned finish | Total float | Free float | Resources | Cost | Actual cost | Activity ID N | 02- Network-WBS | 03- Activity | 04-UOM | 05-Discipline | 01- Network | 08 Stage | 09 Roads | Discipline |
| --- | --- | --- | --- | --- | --- | --- | --- | --- | --- | --- | --- | --- | --- | --- | --- | --- | --- | --- | --- | --- | --- | --- | --- |
|  | 9 | **Road 17 Local 1 ( 500 LM )** |  | 2025-05-05 | 2026-11-16 |  |  |  |  |  |  |  |  |  |  |  |  |  |  |  |  |  |  |
|  | 1 | **Main Line Pipes** |  | 2025-05-05 | 2026-11-16 |  |  |  |  |  |  |  |  |  |  |  |  |  |  |  |  |  |  |
| PRO-R17-IR-DL-100 |  | Material Delivery & Site Inspection of Main Line Pipes for Irrigation Network | 16d | 2025-05-05 A | 2025-05-20 A | PRO-IR-1DL-100, PRO-R18-IR-DL-120 | 100% | 2025-07-27 | 2025-08-13 |  |  | 125 mm pipe; depth 0.0m - 1.5m [639.48]; 355 mm pipe; depth 1.5m - 3.0m [1000] | 136,396.46 | 136,396.46 | PRO-R17-IR-DL-100 | PRC | DL | Each | DL | IR | PRO | R17 | PROC |
| PRO-R17-IR-DL-110 |  | Material Delivery & Site Inspection of Valves for Irrigation Network | 16d | 2026-10-29 | 2026-11-16 | PRO-IR-1DL-110, PRO-R18-IR-DL-130 SS, PRO-R18-IR-DL-130 FF |  |  |  | -212d | 0d | Gate valves dia (90)mm on pipes with dia (125) mm. [5]; Wash out valve with dia (150)mm on pipes with dia (400) mm [2] | 10,795.4 |  | PRO-R17-IR-DL-110 | PRC | DL | Each | DL | IR | PRO | R17 | PROC |
|  | 8 | **Road 16 Local 1 ( 527 LM )** |  | 2025-05-14 | 2026-11-16 |  |  |  |  |  |  |  |  |  |  |  |  |  |  |  |  |  |  |
|  | 1 | **Main Line Pipes** |  | 2025-05-14 | 2026-11-16 |  |  |  |  |  |  |  |  |  |  |  |  |  |  |  |  |  |  |
| PRO-R16-IR-DL-100 |  | Material Delivery & Site Inspection of Main Line Pipes for Irrigation Network | 16d | 2025-05-14 A | 2025-05-31 A | PRO-IR-1DL-100, PRO-R17-IR-DL-100 | 100% | 2025-08-14 | 2025-09-01 |  |  | 125 mm pipe; depth 0.0m - 1.5m [672.58] | 14,931.28 | 14,931.28 | PRO-R16-IR-DL-100 | PRC | DL | Each | DL | IR | PRO | R16 | PROC |
| PRO-R16-IR-DL-110 |  | Material Delivery & Site Inspection of Valves for Irrigation Network | 16d | 2026-10-29 | 2026-11-16 | PRO-IR-1DL-110, PRO-R17-IR-DL-110 SS, PRO-R17-IR-DL-110 FF |  |  |  | -212d | 0d | Gate valves dia (90)mm on pipes with dia (125) mm. [6]; Air valves with dia (50mm) mm on pipes with dia(125)mm. [1] | 5,474.6 |  | PRO-R16-IR-DL-110 | PRC | DL | Each | DL | IR | PRO | R16 | PROC |
|  | 7 | **Road 15 Local 1 ( 556 LM )** |  | 2025-05-06 | 2026-11-16 |  |  |  |  |  |  |  |  |  |  |  |  |  |  |  |  |  |  |
|  | 1 | **Main Line Pipes** |  | 2025-05-06 | 2026-11-16 |  |  |  |  |  |  |  |  |  |  |  |  |  |  |  |  |  |  |
| PRO-R15-IR-DL-100 |  | Material Delivery & Site Inspection of Main Line Pipes for Irrigation Network | 16d | 2025-05-06 A | 2025-05-29 A | PRO-IR-1DL-100, PRO-R16-IR-DL-100 | 100% | 2025-09-02 | 2025-09-20 |  |  | 125 mm pipe; depth 0.0m - 1.5m [705.67] | 15,665.87 | 15,665.87 | PRO-R15-IR-DL-100 | PRC | DL | Each | DL | IR | PRO | R15 | PROC |
| PRO-R15-IR-DL-110 |  | Material Delivery & Site Inspection of Valves for Irrigation Network | 16d | 2026-10-29 | 2026-11-16 | PRO-IR-1DL-110, PRO-R16-IR-DL-110 SS, PRO-R16-IR-DL-110 FF |  |  |  | -212d | 0d | Gate valves dia (90)mm on pipes with dia (125) mm. [6] | 3,570 |  | PRO-R15-IR-DL-110 | PRC | DL | Each | DL | IR | PRO | R15 | PROC |
|  | 4 | **Road 10 Local 2 ( 2352 LM )** |  | 2025-06-19 | 2026-06-01 |  |  |  |  |  |  |  |  |  |  |  |  |  |  |  |  |  |  |
|  | 1 | **Main Line Pipes** |  | 2025-06-19 | 2026-06-01 |  |  |  |  |  |  |  |  |  |  |  |  |  |  |  |  |  |  |
| PRO-R19.2-IR-DL-100 |  | Material Delivery & Site Inspection of Main Line Pipes for Irrigation Network | 16d | 2025-06-19 A | 2025-07-08 A | PRO-IR-1DL-100, PRO-R15-IR-DL-100 | 100% | 2025-09-21 | 2025-10-09 |  |  | 125 mm pipe; depth 0.0m - 1.5m [2873.15]; 400 mm pipe; depth 1.5m - 3.0m [1000]; 500. mm pipe; depth 1.5m - 3.0m [2800] | 648,983.93 | 648,983.93 | PRO-R19.2-IR-DL-100 | PRC | DL | Each | DL | IR | PRO | R10 | PROC |
| PRO-R19.2-IR-DL-110 |  | Material Delivery & Site Inspection of Valves for Irrigation Network | 16d | 2025-12-11 A | 2026-06-01 A | PRO-IR-MF-110 | 100% | 2025-10-08 | 2025-10-26 |  |  | Gate valves dia (90)mm on pipes with dia (125) mm. [22]; Butterfly valves with dia (355)mm on pipes with dia (355)mm. [2]; Butterfly valves with dia (400)mm on pipes with dia (400)mm. [2]; Butterfly valves with dia (500)mm on pipes with dia (500)mm. [6]; Wash out valve with dia (100)mm on pipes with dia (355) mm [1]; Wash out valve with dia (150)mm on pipes with dia (500) mm [5]; Air valves with dia (65mm) mm on pipes with dia(280)mm. [1]; Air valves with dia (65mm) mm on pipes with dia(400)mm. [1]; Air valves with dia (65mm) mm on pipes with dia(500)mm. [6] | 200,352.6 | 200,352.6 | PRO-R19.2-IR-DL-110 | PRC | DL | Each | DL | IR | PRO | R10 | PROC |
|  | 6 | **Road 14 Local 1 ( 584 LM )** |  | 2025-10-13 | 2026-06-01 |  |  |  |  |  |  |  |  |  |  |  |  |  |  |  |  |  |  |
|  | 1 | **Main Line Pipes** |  | 2025-10-13 | 2026-06-01 |  |  |  |  |  |  |  |  |  |  |  |  |  |  |  |  |  |  |
| PRO-R14-IR-DL-100 |  | Material Delivery & Site Inspection of Main Line Pipes for Irrigation Network | 16d | 2025-10-13 A | 2026-06-01 A | PRO-IR-1DL-100, PRO-R19.2-IR-DL-100 | 100% | 2025-10-11 | 2025-10-28 |  |  | 125 mm pipe; depth 0.0m - 1.5m [1237.33]; 280 mm pipe; depth 0.0m - 1.5m [475]; 280 mm pipe; depth 1.5m - 3.0m [50] | 72,793.73 | 72,793.73 | PRO-R14-IR-DL-100 | PRC | DL | Each | DL | IR | PRO | R14 | PROC |
| PRO-R14-IR-DL-110 |  | Material Delivery & Site Inspection of Valves for Irrigation Network | 16d | 2026-05-21 A | 2026-06-01 A | PRO-R19.2-IR-DL-110 | 100% | 2025-10-27 | 2025-11-13 |  |  | Gate valves dia (90)mm on pipes with dia (125) mm. [9]; Gate valves dia (200)mm on pipes with dia (280) mm. [8]; Air valves with dia (50mm) mm on pipes with dia(125)mm. [1] | 14,400.4 | 14,400.4 | PRO-R14-IR-DL-110 | PRC | DL | Each | DL | IR | PRO | R14 | PROC |
|  | 2 | **Road 09 Local 2 ( 2278 LM )** |  | 2025-11-30 | 2026-06-02 |  |  |  |  |  |  |  |  |  |  |  |  |  |  |  |  |  |  |
|  | 1 | **Main Line Pipes** |  | 2025-11-30 | 2026-06-02 |  |  |  |  |  |  |  |  |  |  |  |  |  |  |  |  |  |  |
| PRO-R09-IR-DL-100 |  | Material Delivery & Site Inspection of Main Line Pipes for Irrigation Network | 16d | 2025-11-30 A | 2026-06-02 A | PRO-IR-1DL-100, PRO-R14-IR-DL-100 | 100% | 2025-10-29 | 2025-11-16 |  |  | 125 mm pipe; depth 0.0m - 1.5m [2865] | 63,603 | 63,603 | PRO-R09-IR-DL-100 | PRC | DL | Each | DL | IR | PRO | R09 | PROC |
| PRO-R09-IR-DL-110 |  | Material Delivery & Site Inspection of Valves for Irrigation Network | 16d | 2026-05-21 A | 2026-06-02 A | PRO-R14-IR-DL-110 | 100% | 2025-11-15 | 2025-12-02 |  |  | Gate valves dia (90)mm on pipes with dia (125) mm. [22]; Wash out valve with dia (100)mm on pipes with dia (125) mm [2] | 16,403.6 | 16,403.6 | PRO-R09-IR-DL-110 | PRC | DL | Each | DL | IR | PRO | R09 | PROC |

| ID | WBS | Activity | Duration | Start | Finish | Predecessors | Complete | Planned start | Planned finish | Resources | Cost | Actual cost | Activity ID N | 02- Network-WBS | 03- Activity | 04-UOM | 05-Discipline | 01- Network | 08 Stage | 09 Roads | Discipline |
| --- | --- | --- | --- | --- | --- | --- | --- | --- | --- | --- | --- | --- | --- | --- | --- | --- | --- | --- | --- | --- | --- |
|  | 5 | **Road 11 Local 1 ( 670 LM )** |  | 2025-10-13 | 2026-06-01 |  |  |  |  |  |  |  |  |  |  |  |  |  |  |  |  |
|  | 1 | **Main Line Pipes** |  | 2025-10-13 | 2026-06-01 |  |  |  |  |  |  |  |  |  |  |  |  |  |  |  |  |
| PRO-R11-IR-DL-140 |  | Material Delivery & Site Inspection of Main Line Pipes for Irrigation Network | 16d | 2025-10-13 A | 2026-06-01 A | PRO-IR-1DL-100, PRO-R09-IR-DL-100 | 100% | 2025-11-17 | 2025-12-04 | 125 mm pipe; depth 0.0m - 1.5m [838.4] | 18,612.48 | 18,612.48 | PRO-R11-IR-DL-140 | PRC | DL | Each | DL | IR | PRO | R11 | PROC |
| PRO-R11-IR-DL-150 |  | Material Delivery & Site Inspection of Valves for Irrigation Network | 16d | 2026-05-19 A | 2026-06-01 A | PRO-R09-IR-DL-110 | 100% | 2025-12-03 | 2025-12-21 | Gate valves dia (90)mm on pipes with dia (125) mm. [7]; Air valves with dia (50mm) mm on pipes with dia(125)mm. [2] | 7,974.2 | 7,974.2 | PRO-R11-IR-DL-150 | PRC | DL | Each | DL | IR | PRO | R11 | PROC |
|  | MV | **Medium Voltage Network** |  | 2025-02-11 | 2026-10-07 |  |  |  |  |  |  |  |  |  |  |  |  |  |  |  |  |
|  | PO | **Issuance of Purchase Orders** |  | 2025-02-11 | 2025-03-10 |  |  |  |  |  |  |  |  |  |  |  |  |  |  |  |  |
|  | 1 | **Cabling Works** |  | 2025-02-11 | 2025-02-25 |  |  |  |  |  |  |  |  |  |  |  |  |  |  |  |  |
| PRO-MV-PO-100 |  | Issuance of Purchase Order for Medium Voltage Cables of Medium Voltage Network | 12d | 2025-02-11 A | 2025-02-25 A | ENG-MT-MV-ML-A-100, ENG-SH-MV-A-110, ENG-MS-MV-A-110 | 100% |  |  |  |  |  | PRO-MV-PO-100 | PRC | PO | Each | PO | MV | PRO |  | PROC |
|  | 2 | **RMU Concrete Works** |  | 2025-02-21 | 2025-03-10 |  |  |  |  |  |  |  |  |  |  |  |  |  |  |  |  |
| PRO-MV-PO-110 |  | Issuance of Purchase Order for RMU Concrete Foundations of Medium Voltage Network | 12d | 2025-02-21 A | 2025-03-10 A | ENG-MT-MV-SS-A-100, ENG-SH-MV-A-110, ENG-MS-MV-A-110 | 100% | 2025-02-11 | 2025-02-25 |  |  |  | PRO-MV-PO-110 | PRC | PO | Each | PO | MV | PRO |  | PROC |
|  | 3 | **Termination and Testing Works** |  | 2025-02-11 | 2025-02-25 |  |  |  |  |  |  |  |  |  |  |  |  |  |  |  |  |
| PRO-MV-PO-120 |  | Issuance of Purchase Order for Termination and Joints Kits of Medium Voltage Network | 12d | 2025-02-11 A | 2025-02-25 A | ENG-MT-MV-TF-A-100, ENG-SH-MV-A-110, ENG-MS-MV-A-110 | 100% |  |  |  |  |  | PRO-MV-PO-120 | PRC | PO | Each | PO | MV | PRO |  | PROC |
|  | MF | **Manufacturing of Material** |  | 2025-02-26 | 2025-07-15 |  |  |  |  |  |  |  |  |  |  |  |  |  |  |  |  |
|  | 1 | **Cabling Works** |  | 2025-02-26 | 2025-04-30 |  |  |  |  |  |  |  |  |  |  |  |  |  |  |  |  |
| PRO-MV-MF-100 |  | Manufacturing of Medium Voltage Cables for Medium Voltage Network | 52d | 2025-02-26 A | 2025-04-30 A | PRO-MV-PO-100 | 100% | 2025-02-26 | 2025-05-01 |  |  |  | PRO-MV-MF-100 | PRC | MF | Each | MF | MV | PRO |  | PROC |
|  | 2 | **RMU Concrete Works** |  | 2025-03-11 | 2025-07-15 |  |  |  |  |  |  |  |  |  |  |  |  |  |  |  |  |
| PRO-MV-MF-120 |  | Manufacturing of RMU Concrete Foundations for Medium Voltage Network | 160d | 2025-03-11 A | 2025-07-15 A | PRO-MV-PO-110 | 100% | 2025-02-26 | 2025-09-09 |  |  |  | PRO-MV-MF-120 | PRC | MF | Each | MF | MV | PRO |  | PROC |
|  | 3 | **Termination and Testing Works** |  | 2025-02-26 | 2025-04-29 |  |  |  |  |  |  |  |  |  |  |  |  |  |  |  |  |
| PRO-MV-MF-110 |  | Manufacturing of Termination and Joints Kits for Medium Voltage Network | 52d | 2025-02-26 A | 2025-04-29 A | PRO-MV-PO-120 | 100% | 2025-02-26 | 2025-05-01 |  |  |  | PRO-MV-MF-110 | PRC | MF | Each | MF | MV | PRO |  | PROC |
|  | 1DL | **1st Material Delivery & Site Inspection** |  | 2025-05-01 | 2026-10-05 |  |  |  |  |  |  |  |  |  |  |  |  |  |  |  |  |
|  | 1 | **Cabling Works** |  | 2025-05-01 | 2025-05-15 |  |  |  |  |  |  |  |  |  |  |  |  |  |  |  |  |
| PRO-MV-1DL-100 |  | 1ST Material Delivery for Medium Voltage Cables of Medium Voltage Network | 12d | 2025-05-01 A | 2025-05-15 A | PRO-MV-MF-100 | 100% | 2025-05-03 | 2025-05-15 |  |  |  | PRO-MV-1DL-100 | PRC | 1DL | Each | 1DL | MV | PRO |  | PROC |
|  | 2 | **RMU Concrete Works** |  | 2026-07-07 | 2026-07-13 |  |  |  |  |  |  |  |  |  |  |  |  |  |  |  |  |
| PRO-MV-1DL-110 |  | 1ST Material Delivery for RMU Concrete Foundations of Medium Voltage Network | 52d | 2026-07-07 A | 2026-07-13 A | PRO-MV-MF-120 | 100% | 2026-10-13 | 2026-12-12 |  |  |  | PRO-MV-1DL-110 | PRC | 1DL | Each | 1DL | MV | PRO |  | PROC |

| ID | WBS | Activity | Duration | Start | Finish | Predecessors | Complete | Planned start | Planned finish | Resources | Cost | Actual cost | Activity ID N | 02- Network-WBS | 03- Activity | 04-UOM | 05-Discipline | 01- Network | 08 Stage | Discipline | 09 Roads |
| --- | --- | --- | --- | --- | --- | --- | --- | --- | --- | --- | --- | --- | --- | --- | --- | --- | --- | --- | --- | --- | --- |
|  | 3 | **Termination and Testing Works** |  | 2026-09-03 | 2026-10-05 |  |  |  |  |  |  |  |  |  |  |  |  |  |  |  |  |
| PRO-MV-1DL-120 |  | 1ST Material Delivery for Termination and Joints Kits of Medium Voltage Network | 26d | 2026-09-03 A | 2026-10-05 A | PRO-MV-MF-110, PRO-MV-1DL-100 FF | 100% | 2026-10-20 | 2026-11-18 |  |  |  | PRO-MV-1DL-120 | PRC | 1DL | Each | 1DL | MV | PRO | PROC |  |
|  | DL | **Material Delivery & Site Inspection** |  | 2025-05-16 | 2026-10-07 |  |  |  |  |  |  |  |  |  |  |  |  |  |  |  |  |
|  | 1 | **Road 18 Local 1 ( 479 LM )** |  | 2025-05-16 | 2026-10-07 |  |  |  |  |  |  |  |  |  |  |  |  |  |  |  |  |
|  | 1 | **Cabling Works** |  | 2025-05-16 | 2025-05-27 |  |  |  |  |  |  |  |  |  |  |  |  |  |  |  |  |
| PRO-R18-MV-DL-120 |  | Material Delivery & Site Inspection of Medium Voltage Cables for Medium Voltage Network | 26d | 2025-05-16 A | 2025-05-27 A | PRO-MV-1DL-100 | 100% | 2025-05-17 | 2025-06-19 | Excavation for Trench size 40cm wide and 80cm deep ( Maximum 1 cable 33kv) [171.62]; Excavation for Trench size 60cm wide and 80cm deep ( for Max two cables 33 kv) [9.76]; Excavation for Trench size 90cm wide and 80cm deep ( Maximum 3 cable 33kv) [43.49]; Excavation for Trench size 120cm wide and 80cm deep ( Maximum 4cable 33kv) [14.79]; Excavation for Trench size 150cm wide and 80cm deep ( Maximum 4cable 33kv) [54.74]; Duct bank for (2) 33 kv cables [5.67]; Duct bank for (4) 33 kv cables [39.26]; Duct bank for (6) 33 kv cables [18.03]; 33kv 3Cx400 mmï¿½ Al XLPE / LLDPE /PVC Cable [1153.63]; 33kv 3Cx400 mmï¿½ Al XLPE /LLDPE/PVC [4] | 52,053.33 | 52,053.33 | PRO-R18-MV-DL-120 | PRC | DL | Each | DL | MV | PRO | PROC | R18 |
|  | 3 | **Termination and Testing Works** |  | 2026-10-07 | 2026-10-07 |  |  |  |  |  |  |  |  |  |  |  |  |  |  |  |  |
| PRO-R18-MV-DL-130 |  | Material Delivery & Site Inspection of Termination and Joints Kits for Medium Voltage Network | 26d | 2026-10-07 A | 2026-10-07 A | PRO-R18-MV-DL-120 | 100% | 2026-11-05 | 2026-12-05 | 33kv 3Cx400 mmï¿½ Al XLPE/LLDPE Cable Termination [2] | 1,067.2 | 1,067.2 | PRO-R18-MV-DL-130 | PRC | DL | Each | DL | MV | PRO | PROC | R18 |
|  | 9 | **Road 17 Local 1 ( 500 LM )** |  | 2025-05-16 | 2026-10-07 |  |  |  |  |  |  |  |  |  |  |  |  |  |  |  |  |
|  | 1 | **Cabling Works** |  | 2025-05-16 | 2025-05-27 |  |  |  |  |  |  |  |  |  |  |  |  |  |  |  |  |
| PRO-R17-MV-DL-100 |  | Material Delivery & Site Inspection of Medium Voltage Cables for Medium Voltage Network | 26d | 2025-05-16 A | 2025-05-27 A | PRO-MV-1DL-100, PRO-R18-MV-DL-120 | 100% | 2025-06-21 | 2025-07-20 | Excavation for Trench size 40cm wide and 80cm deep ( Maximum 1 cable 33kv) [177.46]; Excavation for Trench size 60cm wide and 80cm deep ( for Max two cables 33 kv) [10.1]; Excavation for Trench size 90cm wide and 80cm deep ( Maximum 3 cable 33kv) [44.99]; Excavation for Trench size 120cm wide and 80cm deep ( Maximum 4cable 33kv) [15.3]; Excavation for Trench size 150cm wide and 80cm deep ( Maximum 4cable 33kv) [56.6]; Duct bank for (2) 33 kv cables [6.12]; Duct bank for (4) 33 kv cables [40.39]; Duct bank for (6) 33 kv cables [18.36]; 33kv 3Cx400 mmï¿½ Al XLPE / LLDPE /PVC Cable [1193.29]; 33kv 3Cx400 mmï¿½ Al XLPE /LLDPE/PVC [4] | 53,736.33 | 53,736.33 | PRO-R17-MV-DL-100 | PRC | DL | Each | DL | MV | PRO | PROC | R17 |
|  | 2 | **RMU Concrete Works** |  | 2026-07-07 | 2026-10-06 |  |  |  |  |  |  |  |  |  |  |  |  |  |  |  |  |
| PRO-R17-MV-DL-120 |  | Material Delivery & Site Inspection of RMU Concrete Foundations for Medium Voltage Network | 38d | 2026-07-07 A | 2026-10-06 A | PRO-MV-MF-120 | 100% | 2027-01-05 | 2027-02-17 |  |  |  | PRO-R14-MV-DL-120 | PRC | DL | Each | DL | MV | PRO | PROC | R17 |
|  | 3 | **Termination and Testing Works** |  | 2026-10-05 | 2026-10-07 |  |  |  |  |  |  |  |  |  |  |  |  |  |  |  |  |
| PRO-R17-MV-DL-110 |  | Material Delivery & Site Inspection of Termination and Joints Kits for Medium Voltage Network | 26d | 2026-10-05 A | 2026-10-07 A | PRO-R18-MV-DL-130 | 100% | 2026-12-06 | 2027-01-04 | 33kv 3Cx400 mmï¿½ Al XLPE/LLDPE Cable Termination [1] | 533.6 | 533.6 | PRO-R17-MV-DL-110 | PRC | DL | Each | DL | MV | PRO | PROC | R17 |
|  | 3 | **Road 16 Local 1 ( 527 LM )** |  | 2025-05-16 | 2026-10-07 |  |  |  |  |  |  |  |  |  |  |  |  |  |  |  |  |
|  | 1 | **Cabling Works** |  | 2025-05-16 | 2025-05-29 |  |  |  |  |  |  |  |  |  |  |  |  |  |  |  |  |
| PRO-R16-MV-DL-100 |  | Material Delivery & Site Inspection of Medium Voltage Cables for Medium Voltage Network | 26d | 2025-05-16 A | 2025-05-29 A | PRO-MV-1DL-100, PRO-R17-MV-DL-100 | 100% | 2025-07-21 | 2025-08-19 | Excavation for Trench size 40cm wide and 80cm deep ( Maximum 1 cable 33kv) [186.65]; Excavation for Trench size 60cm wide and 80cm deep ( for Max two cables 33 kv) [10.62]; Excavation for Trench size 90cm wide and 80cm deep ( Maximum 3 cable 33kv) [47.31]; Excavation for Trench size 120cm wide and 80cm deep ( Maximum 4cable 33kv) [16.09]; Excavation for Trench size 150cm wide and 80cm deep ( Maximum 4cable 33kv) [59.53]; Duct bank for (2) 33 kv cables [6.44]; Duct bank for (4) 33 kv cables [42.48]; Duct bank for (6) 33 kv cables [19.31]; 33kv 3Cx400 mmï¿½ Al XLPE / LLDPE /PVC Cable [1255.04]; 33kv 3Cx400 mmï¿½ Al XLPE /LLDPE/PVC [4] | 56,406.67 | 56,406.67 | PRO-R09-MV-DL-100 | PRC | DL | Each | DL | MV | PRO | PROC | R16 |
|  | 3 | **Termination and Testing Works** |  | 2026-10-05 | 2026-10-07 |  |  |  |  |  |  |  |  |  |  |  |  |  |  |  |  |
| PRO-R16-MV-DL-110 |  | Material Delivery & Site Inspection of Termination and Joints Kits for Medium Voltage Network | 26d | 2026-10-05 A | 2026-10-07 A | PRO-R17-MV-DL-110 | 100% | 2027-01-05 | 2027-02-03 | 33kv 3Cx400 mmï¿½ Al XLPE/LLDPE Cable Termination [2] | 1,067.2 | 1,067.2 | PRO-R09-MV-DL-110 | PRC | DL | Each | DL | MV | PRO | PROC | R16 |
|  | 7 | **Road 15 Local 1 ( 556 LM )** |  | 2025-05-16 | 2026-10-07 |  |  |  |  |  |  |  |  |  |  |  |  |  |  |  |  |
|  | 1 | **Cabling Works** |  | 2025-05-16 | 2025-05-29 |  |  |  |  |  |  |  |  |  |  |  |  |  |  |  |  |
| PRO-R15-MV-DL-100 |  | Material Delivery & Site Inspection of Medium Voltage Cables for Medium Voltage Network | 26d | 2025-05-16 A | 2025-05-29 A | PRO-MV-1DL-100, PRO-R16-MV-DL-100 | 100% | 2025-08-20 | 2025-09-18 | Excavation for Trench size 40cm wide and 80cm deep ( Maximum 1 cable 33kv) [195.83]; Excavation for Trench size 60cm wide and 80cm deep ( for Max two cables 33 kv) [11.14]; Excavation for Trench size 90cm wide and 80cm deep ( Maximum 3 cable 33kv) [49.63]; Excavation for Trench size 120cm wide and 80cm deep ( Maximum 4cable 33kv) [16.88]; Excavation for Trench size 150cm wide and 80cm deep ( Maximum 4cable 33kv) [62.46]; Duct bank for (2) 33 kv cables [6.75]; Duct bank for (4) 33 kv cables [44.57]; Duct bank for (6) 33 kv cables [20.26]; 33kv 3Cx400 mmï¿½ Al XLPE / LLDPE /PVC Cable [1316.8]; 33kv 3Cx400 mmï¿½ Al XLPE /LLDPE/PVC [4] | 59,077.02 | 59,077.02 | PRO-R15-MV-DL-100 | PRC | DL | Each | DL | MV | PRO | PROC | R15 |
|  | 3 | **Termination and Testing Works** |  | 2026-10-07 | 2026-10-07 |  |  |  |  |  |  |  |  |  |  |  |  |  |  |  |  |
| PRO-R15-MV-DL-110 |  | Material Delivery & Site Inspection of Termination and Joints Kits for Medium Voltage Network | 26d | 2026-10-07 A | 2026-10-07 A | PRO-R16-MV-DL-110 | 100% | 2027-02-04 | 2027-03-07 | 33kv 3Cx400 mmï¿½ Al XLPE/LLDPE Cable Termination [1] | 533.6 | 533.6 | PRO-R15-MV-DL-110 | PRC | DL | Each | DL | MV | PRO | PROC | R15 |

| ID | WBS | Activity | Duration | Start | Finish | Predecessors | Complete | Planned start | Planned finish | Resources | Cost | Actual cost | Activity ID N | 02- Network-WBS | 03- Activity | 04-UOM | 05-Discipline | 01- Network | 08 Stage | 09 Roads | Discipline |
| --- | --- | --- | --- | --- | --- | --- | --- | --- | --- | --- | --- | --- | --- | --- | --- | --- | --- | --- | --- | --- | --- |
|  | 4 | **Road 10 Local 2 ( 2352 LM )** |  | 2025-11-01 | 2026-10-07 |  |  |  |  |  |  |  |  |  |  |  |  |  |  |  |  |
|  | 1 | **Cabling Works** |  | 2025-11-01 | 2025-11-09 |  |  |  |  |  |  |  |  |  |  |  |  |  |  |  |  |
| PRO-R10-MV-DL-100 |  | Material Delivery & Site Inspection of Medium Voltage Cables for Medium Voltage Network | 26d | 2025-11-01 A | 2025-11-09 A | PRO-MV-1DL-100, PRO-R15-MV-DL-100 | 100% | 2025-09-20 | 2025-10-20 | Excavation for Trench size 40cm wide and 80cm deep ( Maximum 1 cable 33kv) [398.67]; Excavation for Trench size 60cm wide and 80cm deep ( for Max two cables 33 kv) [22.68]; Excavation for Trench size 90cm wide and 80cm deep ( Maximum 3 cable 33kv) [101.04]; Excavation for Trench size 120cm wide and 80cm deep ( Maximum 4cable 33kv) [34.37]; Excavation for Trench size 150cm wide and 80cm deep ( Maximum 4cable 33kv) [127.16]; Duct bank for (2) 33 kv cables [13.75]; Duct bank for (4) 33 kv cables [90.73]; Duct bank for (6) 33 kv cables [41.24]; 33kv 3Cx400 mmï¿½ Al XLPE / LLDPE /PVC Cable [2680.69]; 33kv 3Cx400 mmï¿½ Al XLPE /LLDPE/PVC [8] | 120,190.14 | 120,190.14 | PRO-R10-MV-DL-100 | PRC | DL | Each | DL | MV | PRO | R10 | PROC |
|  | 2 | **RMU Concrete Works** |  | 2026-07-15 | 2026-07-16 |  |  |  |  |  |  |  |  |  |  |  |  |  |  |  |  |
| PRO-R10-MV-DL-120 |  | Material Delivery & Site Inspection of RMU Concrete Foundations for Medium Voltage Network | 26d | 2026-07-15 A | 2026-07-16 A | PRO-MV-1DL-110, PRO-R11-MV-DL-100 FF | 100% | 2026-12-13 | 2027-01-11 |  |  |  | PRO-R11-MV-DL-120 | PRC | DL | Each | DL | MV | PRO | R10 | PROC |
|  | 3 | **Termination and Testing Works** |  | 2026-10-07 | 2026-10-07 |  |  |  |  |  |  |  |  |  |  |  |  |  |  |  |  |
| PRO-R10-MV-DL-110 |  | Material Delivery & Site Inspection of Termination and Joints Kits for Medium Voltage Network | 26d | 2026-10-07 A | 2026-10-07 A | PRO-R15-MV-DL-110 | 100% | 2027-03-08 | 2027-04-10 | 33kv 3Cx400 mmï¿½ Al XLPE/LLDPE Cable Termination [4] | 2,134.4 | 2,134.4 | PRO-R10-MV-DL-110 | PRC | DL | Each | DL | MV | PRO | R10 | PROC |
|  | 6 | **Road 14 Local 1 ( 584 LM )** |  | 2025-08-16 | 2026-10-07 |  |  |  |  |  |  |  |  |  |  |  |  |  |  |  |  |
|  | 1 | **Cabling Works** |  | 2025-08-16 | 2025-08-16 |  |  |  |  |  |  |  |  |  |  |  |  |  |  |  |  |
| PRO-R14-MV-DL-100 |  | Material Delivery & Site Inspection of Medium Voltage Cables for Medium Voltage Network | 26d | 2025-08-16 A | 2025-08-16 A | PRO-MV-1DL-100, PRO-R10-MV-DL-100 | 100% | 2025-10-21 | 2025-11-19 | Excavation for Trench size 40cm wide and 80cm deep ( Maximum 1 cable 33kv) [343.35]; Excavation for Trench size 60cm wide and 80cm deep ( for Max two cables 33 kv) [19.54]; Excavation for Trench size 90cm wide and 80cm deep ( Maximum 3 cable 33kv) [87.02]; Excavation for Trench size 120cm wide and 80cm deep ( Maximum 4cable 33kv) [29.6]; Excavation for Trench size 150cm wide and 80cm deep ( Maximum 4cable 33kv) [109.52]; Duct bank for (2) 33 kv cables [11.84]; Duct bank for (4) 33 kv cables [78.14]; Duct bank for (6) 33 kv cables [35.52]; 33kv 3Cx400 mmï¿½ Al XLPE / LLDPE /PVC Cable [2308.74]; 33kv 3Cx400 mmï¿½ Al XLPE /LLDPE/PVC [7] | 103,572.36 | 103,572.36 | PRO-R14-MV-DL-100 | PRC | DL | Each | DL | MV | PRO | R14 | PROC |
|  | 3 | **Termination and Testing Works** |  | 2026-10-07 | 2026-10-07 |  |  |  |  |  |  |  |  |  |  |  |  |  |  |  |  |
| PRO-R14-MV-DL-110 |  | Material Delivery & Site Inspection of Termination and Joints Kits for Medium Voltage Network | 26d | 2026-10-07 A | 2026-10-07 A | PRO-R10-MV-DL-110 | 100% | 2027-04-11 | 2027-05-10 | 33kv 3Cx400 mmï¿½ Al XLPE/LLDPE Cable Termination [2] | 1,067.2 | 1,067.2 | PRO-R14-MV-DL-110 | PRC | DL | Each | DL | MV | PRO | R14 | PROC |
|  | 2 | **Road 09 Local 2 ( 2278 LM )** |  | 2025-12-13 | 2026-10-07 |  |  |  |  |  |  |  |  |  |  |  |  |  |  |  |  |
|  | 1 | **Cabling Works** |  | 2025-12-13 | 2026-09-11 |  |  |  |  |  |  |  |  |  |  |  |  |  |  |  |  |
| PRO-R09-MV-DL-100 |  | Material Delivery & Site Inspection of Medium Voltage Cables for Medium Voltage Network | 26d | 2025-12-13 A | 2026-09-11 A | PRO-MV-1DL-100, PRO-R14-MV-DL-100 | 100% | 2025-11-20 | 2025-12-20 | Excavation for Trench size 40cm wide and 80cm deep ( Maximum 1 cable 33kv) [1193.76]; Excavation for Trench size 60cm wide and 80cm deep ( for Max two cables 33 kv) [67.92]; Excavation for Trench size 90cm wide and 80cm deep ( Maximum 3 cable 33kv) [302.56]; Excavation for Trench size 120cm wide and 80cm deep ( Maximum 4cable 33kv) [102.91]; Excavation for Trench size 150cm wide and 80cm deep ( Maximum 4cable 33kv) [380.77]; Duct bank for (2) 33 kv cables [41.42]; Duct bank for (4) 33 kv cables [270.95]; Duct bank for (6) 33 kv cables [123.25]; 33kv 3Cx400 mmï¿½ Al XLPE / LLDPE /PVC Cable [8027.33]; 33kv 3Cx400 mmï¿½ Al XLPE /LLDPE/PVC [23] | 359,337.77 | 359,337.77 | PRO-R09-MV-DL-100 | PRC | DL | Each | DL | MV | PRO | R09 | PROC |
|  | 3 | **Termination and Testing Works** |  | 2026-10-07 | 2026-10-07 |  |  |  |  |  |  |  |  |  |  |  |  |  |  |  |  |
| PRO-R09-MV-DL-110 |  | Material Delivery & Site Inspection of Termination and Joints Kits for Medium Voltage Network | 26d | 2026-10-07 A | 2026-10-07 A | PRO-R14-MV-DL-110 | 100% | 2027-05-11 | 2027-06-15 | 33kv 3Cx400 mmï¿½ Al XLPE/LLDPE Cable Termination [6] | 3,201.6 | 3,201.6 | PRO-R09-MV-DL-110 | PRC | DL | Each | DL | MV | PRO | R09 | PROC |
|  | 5 | **Road 11 Local 1 ( 670 LM )** |  | 2026-07-08 | 2026-10-07 |  |  |  |  |  |  |  |  |  |  |  |  |  |  |  |  |
|  | 1 | **Cabling Works** |  | 2026-07-08 | 2026-08-13 |  |  |  |  |  |  |  |  |  |  |  |  |  |  |  |  |
| PRO-R11-MV-DL-100 |  | Material Delivery & Site Inspection of Medium Voltage Cables for Medium Voltage Network | 26d | 2026-07-08 A | 2026-08-13 A | PRO-MV-1DL-100 | 100% | 2025-12-21 | 2026-01-19 | Excavation for Trench size 40cm wide and 80cm deep ( Maximum 1 cable 33kv) [232.66]; Excavation for Trench size 60cm wide and 80cm deep ( for Max two cables 33 kv) [13.24]; Excavation for Trench size 90cm wide and 80cm deep ( Maximum 3 cable 33kv) [58.96]; Excavation for Trench size 120cm wide and 80cm deep ( Maximum 4cable 33kv) [20.06]; Excavation for Trench size 150cm wide and 80cm deep ( Maximum 4cable 33kv) [74.22]; Duct bank for (2) 33 kv cables [8.01]; Duct bank for (4) 33 kv cables [53.48]; Duct bank for (6) 33 kv cables [24.03]; 33kv 3Cx400 mmï¿½ Al XLPE / LLDPE /PVC Cable [1564.48]; 33kv 3Cx400 mmï¿½ Al XLPE /LLDPE/PVC [6] | 70,883.52 | 70,883.52 | PRO-R11-MV-DL-100 | PRC | DL | Each | DL | MV | PRO | R11 | PROC |
|  | 3 | **Termination and Testing Works** |  | 2026-10-07 | 2026-10-07 |  |  |  |  |  |  |  |  |  |  |  |  |  |  |  |  |
| PRO-R11-MV-DL-110 |  | Material Delivery & Site Inspection of Termination and Joints Kits for Medium Voltage Network | 26d | 2026-10-07 A | 2026-10-07 A | PRO-R09-MV-DL-110 | 100% | 2027-06-16 | 2027-07-15 | 33kv 3Cx400 mmï¿½ Al XLPE/LLDPE Cable Termination [2] | 1,067.2 | 1,067.2 | PRO-R11-MV-DL-110 | PRC | DL | Each | DL | MV | PRO | R11 | PROC |
|  | SL | **Street Lighting Network** |  | 2025-02-11 | 2026-12-22 |  |  |  |  |  |  |  |  |  |  |  |  |  |  |  |  |
|  | PO | **Issuance of Purchase Orders** |  | 2025-02-11 | 2025-05-31 |  |  |  |  |  |  |  |  |  |  |  |  |  |  |  |  |
|  | 1 | **Cabling Works** |  | 2025-02-11 | 2025-02-17 |  |  |  |  |  |  |  |  |  |  |  |  |  |  |  |  |
| PRO-SL-PO-100 |  | Issuance of Purchase Order for Lighting Cables of Street Lighting Network | 6d | 2025-02-11 A | 2025-02-17 A | ENG-MT-SL-ML-A-100, ENG-SH-SL-A-110, ENG-MS-SL-A-110 | 100% |  |  |  |  |  | PRO-SL-PO-100 | PRC | PO | Each | PO | SL | PRO |  | PROC |

| ID | WBS | Activity | Duration | Start | Finish | Predecessors | Complete | Planned start | Planned finish | Activity ID N | 02- Network-WBS | 03- Activity | 04-UOM | 05-Discipline | 01- Network | 08 Stage | Discipline |
| --- | --- | --- | --- | --- | --- | --- | --- | --- | --- | --- | --- | --- | --- | --- | --- | --- | --- |
|  | 2 | **Lighting Poles Works** |  | 2025-02-11 | 2025-05-20 |  |  |  |  |  |  |  |  |  |  |  |  |
| PRO-SL-PO-110 |  | Issuance of Purchase Order for Lighting Poles Foundations of Street Lighting Network | 12d | 2025-02-11 A | 2025-02-25 A | ENG-MT-SL-A-100, ENG-SH-SL-A-110, ENG-MS-SL-A-110 | 100% |  |  | PRO-SL-PO-110 | PRC | PO | Each | PO | SL | PRO | PROC |
| PRO-SL-PO-120 |  | Issuance of Purchase Order for Lighting Poles of Street Lighting Network | 12d | 2025-02-11 A | 2025-02-25 A | ENG-MT-SL-A-110, ENG-SH-SL-A-110, ENG-MS-SL-A-110 | 100% |  |  | PRO-SL-PO-120 | PRC | PO | Each | PO | SL | PRO | PROC |
| PRO-SL-PO-140 |  | Issuance of Purchase Order for Lighting Fixtures of Street Lighting Network | 12d | 2025-02-26 A | 2025-05-20 A | ENG-MT-SL-A-120, ENG-SH-SL-A-110, ENG-MS-SL-A-110, PRO-SL-PO-120 | 100% | 2025-02-26 | 2025-03-11 | PRO-SL-PO-140 | PRC | PO | Each | PO | SL | PRO | PROC |
|  | 3 | **Distribution Panel Board** |  | 2025-05-07 | 2025-05-31 |  |  |  |  |  |  |  |  |  |  |  |  |
| PRO-SL-PO-160 |  | Issuance of Purchase Order for Distrubution Panel Boards of Street Lighting Network | 10d | 2025-05-07 A | 2025-05-31 A | ENG-MT-SL-DB-A-100, ENG-SH-SL-A-110, ENG-MS-SL-A-110, PRO-SL-PO-140 | 100% | 2025-03-12 | 2025-03-23 | PRO-SL-PO-160 | PRC | PO | Each | PO | SL | PRO | PROC |
|  | 4 | **Earthing System Works** |  | 2025-05-21 | 2025-05-31 |  |  |  |  |  |  |  |  |  |  |  |  |
| PRO-SL-PO-150 |  | Issuance of Purchase Order for Lighting Earthing of Street Lighting Network | 10d | 2025-05-21 A | 2025-05-31 A | ENG-MT-SL-ES-A-100, ENG-SH-SL-A-110, ENG-MS-SL-A-110, PRO-SL-PO-170 SS | 100% | 2025-03-12 | 2025-03-23 | PRO-SL-PO-150 | PRC | PO | Each | PO | SL | PRO | PROC |
|  | 5 | **Termination and Testing Works** |  | 2025-05-12 | 2025-05-29 |  |  |  |  |  |  |  |  |  |  |  |  |
| PRO-SL-PO-170 |  | Issuance of Purchase Order for Cable Lugs of Street Lighting Network | 10d | 2025-05-12 A | 2025-05-18 A | ENG-MT-SL-TF-A-110, ENG-SH-SL-A-110, ENG-MS-SL-A-110, PRO-SL-PO-130 SS | 100% | 2025-03-12 | 2025-03-23 | PRO-SL-PO-170 | PRC | PO | Each | PO | SL | PRO | PROC |
| PRO-SL-PO-130 |  | Issuance of Purchase Order for Fuse Boxes of Street Lighting Network | 10d | 2025-05-20 A | 2025-05-29 A | ENG-MT-SL-TF-A-100, ENG-SH-SL-A-110, ENG-MS-SL-A-110, PRO-SL-PO-160 SS | 100% | 2025-03-12 | 2025-03-23 | PRO-SL-PO-130 | PRC | PO | Each | PO | SL | PRO | PROC |
|  | MF | **Manufacturing of Material** |  | 2025-02-18 | 2026-08-30 |  |  |  |  |  |  |  |  |  |  |  |  |
|  | 1 | **Cabling Works** |  | 2025-02-18 | 2025-05-31 |  |  |  |  |  |  |  |  |  |  |  |  |
| PRO-SL-MF-100 |  | Manufacturing of Lighting Cables for Street Lighting Network | 60d | 2025-02-18 A | 2025-05-31 A | PRO-SL-PO-100 | 100% | 2025-02-18 | 2025-05-04 | PRO-SL-MF-100 | PRC | MF | Each | MF | SL | PRO | PROC |
|  | 2 | **Lighting Poles Works** |  | 2025-02-26 | 2025-06-01 |  |  |  |  |  |  |  |  |  |  |  |  |
| PRO-SL-MF-110 |  | Manufacturing of Lighting Poles Foundations for Street Lighting Network | 60d | 2025-02-26 A | 2025-04-16 A | PRO-SL-PO-110 | 100% | 2025-02-26 | 2025-05-11 | PRO-SL-MF-110 | PRC | MF | Each | MF | SL | PRO | PROC |
| PRO-SL-MF-120 |  | Manufacturing of Lighting Poles for Street Lighting Network | 60d | 2025-02-26 A | 2025-04-30 A | PRO-SL-PO-120 | 100% | 2025-02-26 | 2025-05-11 | PRO-SL-MF-120 | PRC | MF | Each | MF | SL | PRO | PROC |
| PRO-SL-MF-140 |  | Manufacturing of Lighting Fixtures for Street Lighting Network | 60d | 2025-04-30 A | 2025-06-01 A | PRO-SL-PO-140, PRO-SL-MF-120 | 100% | 2025-05-12 | 2025-07-24 | PRO-SL-MF-140 | PRC | MF | Each | MF | SL | PRO | PROC |
|  | 3 | **Distribution Panel Board** |  | 2026-08-25 | 2026-08-30 |  |  |  |  |  |  |  |  |  |  |  |  |
| PRO-SL-MF-160 |  | Manufacturing of Distrubution Panel Boards for Street Lighting Network | 26d | 2026-08-25 A | 2026-08-30 A | PRO-SL-PO-160, PRO-SL-MF-140 FF | 100% | 2025-06-25 | 2025-07-24 | PRO-SL-MF-160 | PRC | MF | Each | MF | SL | PRO | PROC |
|  | 4 | **Earthing System Works** |  | 2026-08-25 | 2026-08-30 |  |  |  |  |  |  |  |  |  |  |  |  |
| PRO-SL-MF-150 |  | Manufacturing of Lighting Earthing for Street Lighting Network | 26d | 2026-08-25 A | 2026-08-30 A | PRO-SL-PO-150, PRO-SL-MF-170 FF | 100% | 2025-06-25 | 2025-07-24 | PRO-SL-MF-150 | PRC | MF | Each | MF | SL | PRO | PROC |
|  | 5 | **Termination and Testing Works** |  | 2026-08-25 | 2026-08-30 |  |  |  |  |  |  |  |  |  |  |  |  |
| PRO-SL-MF-130 |  | Manufacturing of Fuse Boxes for Street Lighting Network | 26d | 2026-08-25 A | 2026-08-30 A | PRO-SL-PO-130, PRO-SL-MF-160 FF | 100% | 2025-06-25 | 2025-07-24 | PRO-SL-MF-130 | PRC | MF | Each | MF | SL | PRO | PROC |
| PRO-SL-MF-170 |  | Manufacturing of Cable Lugs for Street Lighting Network | 26d | 2026-08-25 A | 2026-08-30 A | PRO-SL-PO-170, PRO-SL-MF-130 FF | 100% | 2025-06-25 | 2025-07-24 | PRO-SL-MF-170 | PRC | MF | Each | MF | SL | PRO | PROC |

| ID | WBS | Activity | Duration | Start | Finish | Predecessors | Complete | Planned start | Planned finish | Total float | Free float | Resources | Cost | Actual cost | Activity ID N | 02- Network-WBS | 03- Activity | 04-UOM | 05-Discipline | 01- Network | 08 Stage | Discipline | 09 Roads |
| --- | --- | --- | --- | --- | --- | --- | --- | --- | --- | --- | --- | --- | --- | --- | --- | --- | --- | --- | --- | --- | --- | --- | --- |
|  | 1DL | **1st Material Delivery & Site Inspection** |  | 2025-04-17 | 2026-11-02 |  |  |  |  |  |  |  |  |  |  |  |  |  |  |  |  |  |  |
|  | 1 | **Cabling Works** |  | 2025-06-01 | 2025-06-10 |  |  |  |  |  |  |  |  |  |  |  |  |  |  |  |  |  |  |
| PRO-SL-1DL-100 |  | 1ST Material Delivery for Lighting Cables of Street Lighting Network | 6d | 2025-06-01 A | 2025-06-10 A | PRO-SL-MF-100 | 100% | 2025-05-05 | 2025-05-11 |  |  |  |  |  | PRO-SL-1DL-100 | PRC | 1DL | Each | 1DL | SL | PRO | PROC |  |
|  | 2 | **Lighting Poles Works** |  | 2025-04-17 | 2026-11-02 |  |  |  |  |  |  |  |  |  |  |  |  |  |  |  |  |  |  |
| PRO-SL-1DL-110 |  | 1ST Material Delivery for Lighting Poles Foundations of Street Lighting Network | 6d | 2025-04-17 A | 2025-04-27 A | PRO-SL-MF-110 | 100% | 2025-05-12 | 2025-05-18 |  |  |  |  |  | PRO-SL-1DL-110 | PRC | 1DL | Each | 1DL | SL | PRO | PROC |  |
| PRO-SL-1DL-120 |  | 1ST Material Delivery for Lighting Poles of Street Lighting Network | 6d | 2025-09-01 A | 2025-09-08 A | PRO-SL-MF-120 | 100% | 2025-05-12 | 2025-05-18 |  |  |  |  |  | PRO-SL-1DL-120 | PRC | 1DL | Each | 1DL | SL | PRO | PROC |  |
| PRO-SL-1DL-140 |  | 1ST Material Delivery for Lighting Fixtures of Street Lighting Network | 6d | 2026-10-27 | 2026-11-02 | PRO-SL-MF-140 |  |  |  | -159d | 0d |  |  |  | PRO-SL-1DL-140 | PRC | 1DL | Each | 1DL | SL | PRO | PROC |  |
|  | 3 | **Distribution Panel Board** |  | 2025-10-25 | 2025-10-31 |  |  |  |  |  |  |  |  |  |  |  |  |  |  |  |  |  |  |
| PRO-SL-1DL-160 |  | 1ST Material Delivery for Distrubution Panel Boards of Street Lighting Network | 6d | 2025-10-25 A | 2025-10-31 A | PRO-SL-MF-160 | 100% | 2026-10-20 | 2026-10-26 |  |  |  |  |  | PRO-SL-1DL-160 | PRC | 1DL | Each | 1DL | SL | PRO | PROC |  |
|  | 5 | **Termination and Testing Works** |  | 2026-09-03 | 2026-09-21 |  |  |  |  |  |  |  |  |  |  |  |  |  |  |  |  |  |  |
| PRO-SL-1DL-130 |  | 1ST Material Delivery for Fuse Boxes of Street Lighting Network | 15d | 2026-09-03 A | 2026-09-21 A | PRO-SL-MF-130 | 100% | 2026-10-20 | 2026-11-05 |  |  |  |  |  | PRO-SL-1DL-130 | PRC | 1DL | Each | 1DL | SL | PRO | PROC |  |
| PRO-SL-1DL-170 |  | 1ST Material Delivery for Cable Lugs of Street Lighting Network | 15d | 2026-09-03 A | 2026-09-21 A | PRO-SL-MF-170 | 100% | 2026-10-20 | 2026-11-05 |  |  |  |  |  | PRO-SL-1DL-170 | PRC | 1DL | Each | 1DL | SL | PRO | PROC |  |
|  | 4 | **Earthing System Works** |  | 2026-10-27 | 2026-11-02 |  |  |  |  |  |  |  |  |  |  |  |  |  |  |  |  |  |  |
| PRO-SL-1DL-150 |  | 1ST Material Delivery for Lighting Earthing of Street Lighting Network | 6d | 2026-10-27 | 2026-11-02 | PRO-SL-MF-150 |  |  |  | -141d | 0d |  |  |  | PRO-SL-1DL-150 | PRC | 1DL | Each | 1DL | SL | PRO | PROC |  |
|  | DL | **Material Delivery & Site Inspection** |  | 2025-06-11 | 2026-12-22 |  |  |  |  |  |  |  |  |  |  |  |  |  |  |  |  |  |  |
|  | 1 | **Road 18 Local 1 ( 479 LM )** |  | 2025-06-11 | 2026-11-25 |  |  |  |  |  |  |  |  |  |  |  |  |  |  |  |  |  |  |
|  | 1 | **Cabling Works** |  | 2025-06-11 | 2025-06-30 |  |  |  |  |  |  |  |  |  |  |  |  |  |  |  |  |  |  |
| PRO-R18-SL-DL-180 |  | Material Delivery & Site Inspection of Lighting Cables for Street Lighting Network | 26d | 2025-06-11 A | 2025-06-30 A | PRO-SL-1DL-100 | 100% | 2025-05-12 | 2025-06-15 |  |  | Supply, installation , test and operation of cables, Copper, (4Cx25mmï¿½,Cu/XLPE/SWA/PVC +1x16mmï¿½ PVC/PVC) [1239] | 17,346 | 17,346 | PRO-R18-SL-DL-180 | PRC | DL | Each | DL | SL | PRO | PROC | R18 |
|  | 2 | **Lighting Poles Works** |  | 2025-07-01 | 2026-11-25 |  |  |  |  |  |  |  |  |  |  |  |  |  |  |  |  |  |  |
| PRO-R18-SL-DL-190 |  | Material Delivery & Site Inspection of Lighting Poles Foundations for Street Lighting Network | 26d | 2025-07-01 A | 2025-07-10 A | PRO-SL-1DL-110, PRO-R18-SL-DL-180 | 100% | 2025-06-16 | 2025-07-15 |  |  | Reinforced concrete foundation, for 12m high lighting columns With Drawpits [21] | 2,280.6 | 2,280.6 | PRO-R18-SL-DL-190 | PRC | DL | Each | DL | SL | PRO | PROC | R18 |
| PRO-R18-SL-DL-200 |  | Material Delivery & Site Inspection of Lighting Poles for Street Lighting Network | 26d | 2025-09-09 A | 2025-09-09 A | PRO-SL-1DL-120, PRO-R18-SL-DL-190 | 100% | 2025-07-16 | 2025-08-14 |  |  | Lighting poles with one arm, including the power distribution box, screws, cables, 12 meters in height. [21] | 11,932.2 | 11,932.2 | PRO-R18-SL-DL-200 | PRC | DL | Each | DL | SL | PRO | PROC | R18 |
| PRO-R18-SL-DL-220 |  | Material Delivery & Site Inspection of Lighting Fixtures for Street Lighting Network | 26d | 2026-10-27 | 2026-11-25 | PRO-SL-1DL-140 SS, PRO-R18-SL-DL-200 SS |  |  |  | -159d | 0d | Street Lighting( LED) Luminaire,(Type C) complete with control gear and lamp, ?.17000 Lumen [21] | 3,754.8 |  | PRO-R18-SL-DL-220 | PRC | DL | Each | DL | SL | PRO | PROC | R18 |
|  | 3 | **Distribution Panel Board** |  |  |  |  |  |  |  |  |  |  |  |  |  |  |  |  |  |  |  |  |  |
|  | 4 | **Termination and Testing Works** |  | 2026-10-27 | 2026-11-25 |  |  |  |  |  |  |  |  |  |  |  |  |  |  |  |  |  |  |
| PRO-R18-SL-DL-210 |  | Material Delivery & Site Inspection of Fuse Boxes for Street Lighting Network | 26d | 2026-10-27 | 2026-11-25 | PRO-SL-1DL-130, PRO-R18-SL-DL-220 SS |  |  |  | -147d | 0d | Road crossing ducts, 4 way (4 x 100mm PVC) [46.02]; Drawpit with medium duty steel cover, size 900x900x1200mm, Type 4 [4] | 4,757.16 |  | PRO-R18-SL-DL-210 | PRC | DL | Each | DL | SL | PRO | PROC | R18 |
| PRO-R18-SL-DL-250 |  | Material Delivery & Site Inspection of Cable Lugs for Street Lighting Network | 26d | 2026-10-27 | 2026-11-25 | PRO-SL-1DL-170, PRO-R18-SL-DL-210 SS |  |  |  | -113d | 0d |  |  |  | PRO-R18-SL-DL-250 | PRC | DL | Each | DL | SL | PRO | PROC | R18 |

| ID | WBS | Activity | Duration | Start | Finish | Predecessors | Complete | Planned start | Planned finish | Total float | Free float | Resources | Cost | Actual cost | Activity ID N | 02- Network-WBS | 03- Activity | 04-UOM | 05-Discipline | 01- Network | 08 Stage | 09 Roads | Discipline |
| --- | --- | --- | --- | --- | --- | --- | --- | --- | --- | --- | --- | --- | --- | --- | --- | --- | --- | --- | --- | --- | --- | --- | --- |
|  | 5 | **Earthing System Works** |  |  |  |  |  |  |  |  |  |  |  |  |  |  |  |  |  |  |  |  |  |
|  | 9 | **Road 17 Local 1 ( 500 LM )** |  | 2025-06-11 | 2026-11-25 |  |  |  |  |  |  |  |  |  |  |  |  |  |  |  |  |  |  |
|  | 1 | **Cabling Works** |  | 2025-06-11 | 2025-06-30 |  |  |  |  |  |  |  |  |  |  |  |  |  |  |  |  |  |  |
| PRO-R17-SL-DL-100 |  | Material Delivery & Site Inspection of Lighting Cables for Street Lighting Network | 26d | 2025-06-11 A | 2025-06-30 A | PRO-SL-1DL-100, PRO-R18-SL-DL-180 | 100% | 2025-06-16 | 2025-07-15 |  |  | Supply, installation , test and operation of cables, Copper, (4Cx25mmï¿½,Cu/XLPE/SWA/PVC +1x16mmï¿½ PVC/PVC) [1281] | 17,934 | 17,934 | PRO-R17-SL-DL-100 | PRC | DL | Each | DL | SL | PRO | R17 | PROC |
|  | 2 | **Lighting Poles Works** |  | 2025-07-11 | 2026-11-25 |  |  |  |  |  |  |  |  |  |  |  |  |  |  |  |  |  |  |
| PRO-R17-SL-DL-110 |  | Material Delivery & Site Inspection of Lighting Poles Foundations for Street Lighting Network | 26d | 2025-07-11 A | 2025-07-20 A | PRO-SL-1DL-110, PRO-R18-SL-DL-190 | 100% | 2025-07-16 | 2025-08-14 |  |  | Reinforced concrete foundation, for 12m high lighting columns With Drawpits [26] | 2,823.6 | 2,823.6 | PRO-R17-SL-DL-110 | PRC | DL | Each | DL | SL | PRO | R17 | PROC |
| PRO-R17-SL-DL-120 |  | Material Delivery & Site Inspection of Lighting Poles for Street Lighting Network | 26d | 2025-09-10 A | 2025-09-10 A | PRO-SL-1DL-120, PRO-R18-SL-DL-200 | 100% | 2025-08-16 | 2025-09-14 |  |  | Lighting poles with one arm, including the power distribution box, screws, cables, 12 meters in height. [22] | 12,500.4 | 12,500.4 | PRO-R17-SL-DL-120 | PRC | DL | Each | DL | SL | PRO | R17 | PROC |
| PRO-R17-SL-DL-140 |  | Material Delivery & Site Inspection of Lighting Fixtures for Street Lighting Network | 26d | 2026-10-27 | 2026-11-25 | PRO-SL-1DL-140 SS, PRO-R18-SL-DL-220 SS, PRO-R18-SL-DL-220 FF |  |  |  | -159d | 0d | Street Lighting( LED) Luminaire,(Type C) complete with control gear and lamp, ?.17000 Lumen [22] | 3,933.6 |  | PRO-R17-SL-DL-140 | PRC | DL | Each | DL | SL | PRO | R17 | PROC |
|  | 3 | **Distribution Panel Board** |  |  |  |  |  |  |  |  |  |  |  |  |  |  |  |  |  |  |  |  |  |
|  | 4 | **Termination and Testing Works** |  | 2026-10-27 | 2026-11-25 |  |  |  |  |  |  |  |  |  |  |  |  |  |  |  |  |  |  |
| PRO-R17-SL-DL-130 |  | Material Delivery & Site Inspection of Fuse Boxes for Street Lighting Network | 26d | 2026-10-27 | 2026-11-25 | PRO-SL-1DL-130, PRO-R18-SL-DL-210 SS, PRO-R18-SL-DL-210 FF |  |  |  | -147d | 0d | Road crossing ducts, 4 way (4 x 100mm PVC) [48.08]; Drawpit with medium duty steel cover, size 900x900x1200mm, Type 4 [3] | 4,080.62 |  | PRO-R17-SL-DL-130 | PRC | DL | Each | DL | SL | PRO | R17 | PROC |
| PRO-R17-SL-DL-170 |  | Material Delivery & Site Inspection of Cable Lugs for Street Lighting Network | 26d | 2026-10-27 | 2026-11-25 | PRO-SL-1DL-170, PRO-R18-SL-DL-250 SS, PRO-R18-SL-DL-250 FF |  |  |  | -113d | 0d |  |  |  | PRO-R17-SL-DL-170 | PRC | DL | Each | DL | SL | PRO | R17 | PROC |
|  | 5 | **Earthing System Works** |  |  |  |  |  |  |  |  |  |  |  |  |  |  |  |  |  |  |  |  |  |
|  | 8 | **Road 16 Local 1 ( 527 LM )** |  | 2025-06-11 | 2026-11-25 |  |  |  |  |  |  |  |  |  |  |  |  |  |  |  |  |  |  |
|  | 1 | **Cabling Works** |  | 2025-06-11 | 2025-06-30 |  |  |  |  |  |  |  |  |  |  |  |  |  |  |  |  |  |  |
| PRO-R16-SL-DL-100 |  | Material Delivery & Site Inspection of Lighting Cables for Street Lighting Network | 26d | 2025-06-11 A | 2025-06-30 A | PRO-SL-1DL-100, PRO-R17-SL-DL-100 | 100% | 2025-07-16 | 2025-08-14 |  |  | Supply, installation , test and operation of cables, Copper, (4Cx25mmï¿½,Cu/XLPE/SWA/PVC +1x16mmï¿½ PVC/PVC) [1344] | 18,816 | 18,816 | PRO-R16-SL-DL-100 | PRC | DL | Each | DL | SL | PRO | R16 | PROC |
|  | 2 | **Lighting Poles Works** |  | 2025-09-01 | 2026-11-25 |  |  |  |  |  |  |  |  |  |  |  |  |  |  |  |  |  |  |
| PRO-R16-SL-DL-110 |  | Material Delivery & Site Inspection of Lighting Poles Foundations for Street Lighting Network | 26d | 2025-09-01 A | 2025-09-02 A | PRO-SL-1DL-110, PRO-R17-SL-DL-110 | 100% | 2025-08-16 | 2025-09-14 |  |  | Reinforced concrete foundation, for 12m high lighting columns With Drawpits [23] | 2,497.8 | 2,497.8 | PRO-R16-SL-DL-110 | PRC | DL | Each | DL | SL | PRO | R16 | PROC |
| PRO-R16-SL-DL-120 |  | Material Delivery & Site Inspection of Lighting Poles for Street Lighting Network | 26d | 2025-09-11 A | 2025-09-11 A | PRO-SL-1DL-120, PRO-R17-SL-DL-120 | 100% | 2025-09-15 | 2025-10-15 |  |  | Lighting poles with one arm, including the power distribution box, screws, cables, 12 meters in height. [23] | 13,068.6 | 13,068.6 | PRO-R16-SL-DL-120 | PRC | DL | Each | DL | SL | PRO | R16 | PROC |
| PRO-R16-SL-DL-140 |  | Material Delivery & Site Inspection of Lighting Fixtures for Street Lighting Network | 26d | 2026-10-27 | 2026-11-25 | PRO-SL-1DL-140 SS, PRO-R17-SL-DL-140 SS, PRO-R17-SL-DL-140 FF |  |  |  | -159d | 0d | Street Lighting( LED) Luminaire,(Type C) complete with control gear and lamp, ?.17000 Lumen [23] | 4,112.4 |  | PRO-R16-SL-DL-140 | PRC | DL | Each | DL | SL | PRO | R16 | PROC |
|  | 3 | **Distribution Panel Board** |  |  |  |  |  |  |  |  |  |  |  |  |  |  |  |  |  |  |  |  |  |
|  | 4 | **Termination and Testing Works** |  | 2026-10-27 | 2026-11-25 |  |  |  |  |  |  |  |  |  |  |  |  |  |  |  |  |  |  |
| PRO-R16-SL-DL-130 |  | Material Delivery & Site Inspection of Fuse Boxes for Street Lighting Network | 26d | 2026-10-27 | 2026-11-25 | PRO-SL-1DL-130, PRO-R17-SL-DL-130 SS, PRO-R17-SL-DL-130 FF |  |  |  | -147d | 0d | Road crossing ducts, 4 way (4 x 100mm PVC) [49.92]; Drawpit with medium duty steel cover, size 900x900x1200mm, Type 4 [3] | 4,150.18 |  | PRO-R16-SL-DL-130 | PRC | DL | Each | DL | SL | PRO | R16 | PROC |
| PRO-R16-SL-DL-170 |  | Material Delivery & Site Inspection of Cable Lugs for Street Lighting Network | 26d | 2026-10-27 | 2026-11-25 | PRO-SL-1DL-170, PRO-R17-SL-DL-170 SS, PRO-R17-SL-DL-170 FF |  |  |  | -113d | 0d |  |  |  | PRO-R16-SL-DL-170 | PRC | DL | Each | DL | SL | PRO | R16 | PROC |

| ID | WBS | Activity | Duration | Start | Finish | Predecessors | Complete | Remaining | Planned start | Planned finish | Total float | Free float | Resources | Cost | Actual cost | Activity ID N | 02- Network-WBS | 03- Activity | 04-UOM | 05-Discipline | 01- Network | 08 Stage | 09 Roads | Discipline |
| --- | --- | --- | --- | --- | --- | --- | --- | --- | --- | --- | --- | --- | --- | --- | --- | --- | --- | --- | --- | --- | --- | --- | --- | --- |
|  | 5 | **Earthing System Works** |  |  |  |  |  |  |  |  |  |  |  |  |  |  |  |  |  |  |  |  |  |  |
|  | 7 | **Road 15 Local 1 ( 556 LM )** |  | 2025-06-11 | 2026-11-25 |  |  |  |  |  |  |  |  |  |  |  |  |  |  |  |  |  |  |  |
|  | 1 | **Cabling Works** |  | 2025-06-11 | 2025-06-30 |  |  |  |  |  |  |  |  |  |  |  |  |  |  |  |  |  |  |  |
| PRO-R15-SL-DL-100 |  | Material Delivery & Site Inspection of Lighting Cables for Street Lighting Network | 26d | 2025-06-11 A | 2025-06-30 A | PRO-SL-1DL-100, PRO-R16-SL-DL-100 | 100% |  | 2025-08-16 | 2025-09-14 |  |  | Supply, installation , test and operation of cables, Copper, (4Cx25mmï¿½,Cu/XLPE/SWA/PVC +1x16mmï¿½ PVC/PVC) [1428] | 19,992 | 19,992 | PRO-R15-SL-DL-100 | PRC | DL | Each | DL | SL | PRO | R15 | PROC |
|  | 2 | **Lighting Poles Works** |  | 2025-07-28 | 2026-11-25 |  |  |  |  |  |  |  |  |  |  |  |  |  |  |  |  |  |  |  |
| PRO-R15-SL-DL-110 |  | Material Delivery & Site Inspection of Lighting Poles Foundations for Street Lighting Network | 26d | 2025-07-28 A | 2025-08-03 A | PRO-SL-1DL-110, PRO-R16-SL-DL-110 | 100% |  | 2025-09-15 | 2025-10-15 |  |  | Reinforced concrete foundation, for 12m high lighting columns With Drawpits [25] | 2,715 | 2,715 | PRO-R15-SL-DL-110 | PRC | DL | Each | DL | SL | PRO | R15 | PROC |
| PRO-R15-SL-DL-120 |  | Material Delivery & Site Inspection of Lighting Poles for Street Lighting Network | 26d | 2025-09-13 A | 2025-09-13 A | PRO-SL-1DL-120, PRO-R16-SL-DL-120 | 100% |  | 2025-10-16 | 2025-11-15 |  |  | Lighting poles with one arm, including the power distribution box, screws, cables, 12 meters in height. [25] | 14,205 | 14,205 | PRO-R15-SL-DL-120 | PRC | DL | Each | DL | SL | PRO | R15 | PROC |
| PRO-R15-SL-DL-140 |  | Material Delivery & Site Inspection of Lighting Fixtures for Street Lighting Network | 26d | 2026-10-27 | 2026-11-25 | PRO-SL-1DL-140 SS, PRO-R16-SL-DL-140 SS, PRO-R16-SL-DL-140 FF |  |  |  |  | -159d | 0d | Street Lighting( LED) Luminaire,(Type C) complete with control gear and lamp, ?.17000 Lumen [25] | 4,470 |  | PRO-R15-SL-DL-140 | PRC | DL | Each | DL | SL | PRO | R15 | PROC |
|  | 3 | **Distribution Panel Board** |  |  |  |  |  |  |  |  |  |  |  |  |  |  |  |  |  |  |  |  |  |  |
|  | 4 | **Termination and Testing Works** |  | 2026-10-27 | 2026-11-25 |  |  |  |  |  |  |  |  |  |  |  |  |  |  |  |  |  |  |  |
| PRO-R15-SL-DL-130 |  | Material Delivery & Site Inspection of Fuse Boxes for Street Lighting Network | 26d | 2026-10-27 | 2026-11-25 | PRO-SL-1DL-130, PRO-R16-SL-DL-130 SS, PRO-R16-SL-DL-130 FF |  |  |  |  | -147d | 0d | Road crossing ducts, 4 way (4 x 100mm PVC) [53.04]; Drawpit with medium duty steel cover, size 900x900x1200mm, Type 4 [4] | 5,022.51 |  | PRO-R15-SL-DL-130 | PRC | DL | Each | DL | SL | PRO | R15 | PROC |
| PRO-R15-SL-DL-170 |  | Material Delivery & Site Inspection of Cable Lugs for Street Lighting Network | 26d | 2026-10-27 | 2026-11-25 | PRO-SL-1DL-170, PRO-R16-SL-DL-170 SS, PRO-R16-SL-DL-170 FF |  |  |  |  | -113d | 0d |  |  |  | PRO-R15-SL-DL-170 | PRC | DL | Each | DL | SL | PRO | R15 | PROC |
|  | 5 | **Earthing System Works** |  |  |  |  |  |  |  |  |  |  |  |  |  |  |  |  |  |  |  |  |  |  |
|  | 4 | **Road 10 Local 2 ( 2352 LM )** |  | 2025-06-15 | 2026-12-02 |  |  |  |  |  |  |  |  |  |  |  |  |  |  |  |  |  |  |  |
|  | 1 | **Cabling Works** |  | 2025-06-15 | 2025-06-30 |  |  |  |  |  |  |  |  |  |  |  |  |  |  |  |  |  |  |  |
| PRO-R10-SL-DL-100 |  | Material Delivery & Site Inspection of Lighting Cables for Street Lighting Network | 26d | 2025-06-15 A | 2025-06-30 A | PRO-SL-1DL-100, PRO-R15-SL-DL-100 | 100% |  | 2025-09-15 | 2025-10-15 |  |  | Supply, installation , test and operation of cables, Copper, (4Cx25mmï¿½,Cu/XLPE/SWA/PVC +1x16mmï¿½ PVC/PVC) [5775] | 80,850 | 80,850 | PRO-R10-SL-DL-100 | PRC | DL | Each | DL | SL | PRO | R10 | PROC |
|  | 2 | **Lighting Poles Works** |  | 2026-08-27 | 2026-11-25 |  |  |  |  |  |  |  |  |  |  |  |  |  |  |  |  |  |  |  |
| PRO-R10-SL-DL-110 |  | Material Delivery & Site Inspection of Lighting Poles Foundations for Street Lighting Network | 26d | 2026-08-27 A | 2026-08-29 A | PRO-SL-1DL-110, PRO-R15-SL-DL-110 | 100% |  | 2025-10-16 | 2025-11-15 |  |  | Reinforced concrete foundation, for 12m high lighting columns With Drawpits [96]; Reinforced concrete base With fence for Distribution substation in accordance with SEC Specifications [3] | 23,349 | 23,349 | PRO-R10-SL-DL-110 | PRC | DL | Each | DL | SL | PRO | R10 | PROC |
| PRO-R10-SL-DL-120 |  | Material Delivery & Site Inspection of Lighting Poles for Street Lighting Network | 26d | 2026-08-27 A | 2026-08-29 A | PRO-SL-1DL-120, PRO-R15-SL-DL-120 | 100% |  | 2025-11-16 | 2025-12-15 |  |  | Lighting poles with one arm, including the power distribution box, screws, cables, 12 meters in height. [96] | 54,547.2 | 54,547.2 | PRO-R10-SL-DL-120 | PRC | DL | Each | DL | SL | PRO | R10 | PROC |
| PRO-R10-SL-DL-140 |  | Material Delivery & Site Inspection of Lighting Fixtures for Street Lighting Network | 26d | 2026-10-27 | 2026-11-25 | PRO-SL-1DL-140 SS, PRO-R15-SL-DL-140 SS, PRO-R15-SL-DL-140 FF |  |  |  |  | -134.5d | 0d | Street Lighting( LED) Luminaire,(Type C) complete with control gear and lamp, ?.17000 Lumen [96] | 17,164.8 |  | PRO-R10-SL-DL-140 | PRC | DL | Each | DL | SL | PRO | R10 | PROC |
|  | 3 | **Distribution Panel Board** |  | 2026-09-21 | 2026-10-29 |  |  |  |  |  |  |  |  |  |  |  |  |  |  |  |  |  |  |  |
| PRO-R10-SL-DL-160 |  | Material Delivery & Site Inspection of Distrubution Panel Boards for Street Lighting Network | 26d | 2026-09-21 A | 2026-10-29 | PRO-SL-1DL-160 FF | 80% | 3d | 2025-08-02 | 2025-08-31 | -97d | 65d | Package Substation 33000/400V, 500kVA with RMU [3]; Street Lighting Feeder pillars , Includes foundation and draw pits [3] | 103,537.2 | 82,829.76 | PRO-R10-SL-DL-160 | PRC | DL | Each | DL | SL | PRO | R10 | PROC |
|  | 4 | **Termination and Testing Works** |  | 2026-09-21 | 2026-11-25 |  |  |  |  |  |  |  |  |  |  |  |  |  |  |  |  |  |  |  |
| PRO-R10-SL-DL-130 |  | Material Delivery & Site Inspection of Fuse Boxes for Street Lighting Network | 26d | 2026-09-21 A | 2026-11-25 | PRO-SL-1DL-130 FF, PRO-R15-SL-DL-130 FF | 80% | 3d | 2026-01-15 | 2026-02-14 | -147d | 0d | Road crossing ducts, 4 way (4 x 100mm PVC) [214.5]; Drawpit with medium duty steel cover, size 600x600x1000mm, Type 18 [3]; Drawpit with medium duty steel cover, size 900x900x1200mm, Type 4 [20] | 25,217.5 | 20,174 | PRO-R10-SL-DL-130 | PRC | DL | Each | DL | SL | PRO | R10 | PROC |
| PRO-R10-SL-DL-170 |  | Material Delivery & Site Inspection of Cable Lugs for Street Lighting Network | 26d | 2026-09-21 A | 2026-11-25 | PRO-SL-1DL-170 FF, PRO-R15-SL-DL-170 FF | 80% | 3d | 2026-02-15 | 2026-03-16 | -113d | 0d |  |  |  | PRO-R10-SL-DL-170 | PRC | DL | Each | DL | SL | PRO | R10 | PROC |

| ID | WBS | Activity | Duration | Start | Finish | Predecessors | Complete | Planned start | Planned finish | Total float | Free float | Resources | Cost | Actual cost | Activity ID N | 02- Network-WBS | 03- Activity | 04-UOM | 05-Discipline | 01- Network | 08 Stage | 09 Roads | Discipline |
| --- | --- | --- | --- | --- | --- | --- | --- | --- | --- | --- | --- | --- | --- | --- | --- | --- | --- | --- | --- | --- | --- | --- | --- |
|  | 5 | **Earthing System Works** |  | 2026-11-03 | 2026-12-02 |  |  |  |  |  |  |  |  |  |  |  |  |  |  |  |  |  |  |
| PRO-R10-SL-DL-150 |  | Material Delivery & Site Inspection of Lighting Earthing for Street Lighting Network | 26d | 2026-11-03 | 2026-12-02 | PRO-SL-1DL-150 |  |  |  | -141d | 47d | Earthing installation, lighting plants. [3]; Earthing installation, for Street lighting circuits, including earth rod in plastic chamber [25]; Earthing installation Lighting Panales [3] | 3,518 |  | PRO-R10-SL-DL-150 | PRC | DL | Each | DL | SL | PRO | R10 | PROC |
|  | 6 | **Road 14 Local 1 ( 584 LM )** |  | 2025-11-01 | 2026-12-22 |  |  |  |  |  |  |  |  |  |  |  |  |  |  |  |  |  |  |
|  | 1 | **Cabling Works** |  | 2025-11-01 | 2025-11-04 |  |  |  |  |  |  |  |  |  |  |  |  |  |  |  |  |  |  |
| PRO-R14-SL-DL-100 |  | Material Delivery & Site Inspection of Lighting Cables for Street Lighting Network | 26d | 2025-11-01 A | 2025-11-04 A | PRO-SL-1DL-100, PRO-R10-SL-DL-100 | 100% | 2025-10-16 | 2025-11-15 |  |  | Supply, installation , test and operation of cables, Copper, (4Cx25mmï¿½,Cu/XLPE/SWA/PVC +1x16mmï¿½ PVC/PVC) [2478] | 34,692 | 34,692 | PRO-R14-SL-DL-100 | PRC | DL | Each | DL | SL | PRO | R14 | PROC |
|  | 2 | **Lighting Poles Works** |  | 2026-08-26 | 2026-11-25 |  |  |  |  |  |  |  |  |  |  |  |  |  |  |  |  |  |  |
| PRO-R14-SL-DL-110 |  | Material Delivery & Site Inspection of Lighting Poles Foundations for Street Lighting Network | 26d | 2026-08-26 A | 2026-08-31 A | PRO-SL-1DL-110, PRO-R10-SL-DL-110 | 100% | 2025-11-16 | 2025-12-15 |  |  | Reinforced concrete foundation, for 12m high lighting columns With Drawpits [42] | 4,561.2 | 4,561.2 | PRO-R14-SL-DL-110 | PRC | DL | Each | DL | SL | PRO | R14 | PROC |
| PRO-R14-SL-DL-120 |  | Material Delivery & Site Inspection of Lighting Poles for Street Lighting Network | 26d | 2026-08-26 A | 2026-08-31 A | PRO-SL-1DL-120, PRO-R10-SL-DL-120 | 100% | 2025-12-16 | 2026-01-14 |  |  | Lighting poles with one arm, including the power distribution box, screws, cables, 12 meters in height. [42]; Lighting poles complete with two arms, including the power distribution box, screws, cables, 12 meters in height. [4] | 26,380.4 | 26,380.4 | PRO-R14-SL-DL-120 | PRC | DL | Each | DL | SL | PRO | R14 | PROC |
| PRO-R14-SL-DL-140 |  | Material Delivery & Site Inspection of Lighting Fixtures for Street Lighting Network | 26d | 2026-10-27 | 2026-11-25 | PRO-SL-1DL-140 SS, PRO-R10-SL-DL-140 SS, PRO-R10-SL-DL-140 FF |  |  |  | -134.5d | 0d | Street Lighting( LED) Luminaire,(Type C) complete with control gear and lamp, ?.17000 Lumen [42]; Street Lighting( LED) Luminaire,(Type B) complete with control gear and lamp, ?.40600 Lumen [8] | 9,812 |  | PRO-R14-SL-DL-140 | PRC | DL | Each | DL | SL | PRO | R14 | PROC |
|  | 3 | **Distribution Panel Board** |  |  |  |  |  |  |  |  |  |  |  |  |  |  |  |  |  |  |  |  |  |
|  | 4 | **Termination and Testing Works** |  | 2026-11-23 | 2026-12-22 |  |  |  |  |  |  |  |  |  |  |  |  |  |  |  |  |  |  |
| PRO-R14-SL-DL-130 |  | Material Delivery & Site Inspection of Fuse Boxes for Street Lighting Network | 26d | 2026-11-23 | 2026-12-22 | PRO-SL-1DL-130, PRO-R10-SL-DL-130 SS, PRO-R10-SL-DL-130 FF |  |  |  | -145.5d | 0d | Road crossing ducts, 4 way (4 x 100mm PVC) [92.04]; Drawpit with medium duty steel cover, size 900x900x1200mm, Type 4 [6] | 8,005.51 |  | PRO-R14-SL-DL-130 | PRC | DL | Each | DL | SL | PRO | R14 | PROC |
| PRO-R14-SL-DL-170 |  | Material Delivery & Site Inspection of Cable Lugs for Street Lighting Network | 26d | 2026-11-23 | 2026-12-22 | PRO-SL-1DL-170, PRO-R10-SL-DL-170 SS, PRO-R10-SL-DL-170 FF |  |  |  | -113d | 0d |  |  |  | PRO-R14-SL-DL-170 | PRC | DL | Each | DL | SL | PRO | R14 | PROC |
|  | 5 | **Earthing System Works** |  |  |  |  |  |  |  |  |  |  |  |  |  |  |  |  |  |  |  |  |  |
|  | 2 | **Road 09 Local 2 ( 2278 LM )** |  | 2025-10-31 | 2026-12-22 |  |  |  |  |  |  |  |  |  |  |  |  |  |  |  |  |  |  |
|  | 1 | **Cabling Works** |  | 2026-02-17 | 2026-02-22 |  |  |  |  |  |  |  |  |  |  |  |  |  |  |  |  |  |  |
| PRO-R09-SL-DL-100 |  | Material Delivery & Site Inspection of Lighting Cables for Street Lighting Network | 26d | 2026-02-17 A | 2026-02-22 A | PRO-SL-1DL-100, PRO-R14-SL-DL-100 | 100% | 2025-11-16 | 2025-12-15 |  |  | Supply, installation , test and operation of cables, Copper, (4Cx25mmï¿½,Cu/XLPE/SWA/PVC +1x16mmï¿½ PVC/PVC) [5754] | 80,556 | 80,556 | PRO-R09-SL-DL-100 | PRC | DL | Each | DL | SL | PRO | R09 | PROC |
|  | 2 | **Lighting Poles Works** |  | 2026-02-17 | 2026-11-25 |  |  |  |  |  |  |  |  |  |  |  |  |  |  |  |  |  |  |
| PRO-R09-SL-DL-110 |  | Material Delivery & Site Inspection of Lighting Poles Foundations for Street Lighting Network | 26d | 2026-02-17 A | 2026-02-22 A | PRO-SL-1DL-110, PRO-R14-SL-DL-110 | 100% | 2025-12-16 | 2026-01-14 |  |  | Reinforced concrete foundation, for 12m high lighting columns With Drawpits [98]; Reinforced concrete base With fence for Distribution substation in accordance with SEC Specifications [3] | 23,566.2 | 23,566.2 | PRO-R09-SL-DL-110 | PRC | DL | Each | DL | SL | PRO | R09 | PROC |
| PRO-R09-SL-DL-120 |  | Material Delivery & Site Inspection of Lighting Poles for Street Lighting Network | 26d | 2026-02-17 A | 2026-02-22 A | PRO-SL-1DL-120, PRO-R14-SL-DL-120 | 100% | 2026-01-15 | 2026-02-14 |  |  | Lighting poles with one arm, including the power distribution box, screws, cables, 12 meters in height. [98] | 55,683.6 | 55,683.6 | PRO-R09-SL-DL-120 | PRC | DL | Each | DL | SL | PRO | R09 | PROC |
| PRO-R09-SL-DL-140 |  | Material Delivery & Site Inspection of Lighting Fixtures for Street Lighting Network | 26d | 2026-10-27 | 2026-11-25 | PRO-SL-1DL-140 SS, PRO-R14-SL-DL-140 SS, PRO-R14-SL-DL-140 FF |  |  |  | -134.5d | 0d | Street Lighting( LED) Luminaire,(Type C) complete with control gear and lamp, ?.17000 Lumen [98] | 17,522.4 |  | PRO-R09-SL-DL-140 | PRC | DL | Each | DL | SL | PRO | R09 | PROC |
|  | 3 | **Distribution Panel Board** |  | 2025-10-31 | 2026-02-20 |  |  |  |  |  |  |  |  |  |  |  |  |  |  |  |  |  |  |
| PRO-R09-SL-DL-160 |  | Material Delivery & Site Inspection of Distrubution Panel Boards for Street Lighting Network | 26d | 2025-10-31 A | 2026-02-20 A | MS-CS-PS | 100% | 2025-08-02 | 2025-08-31 |  |  | Package Substation 33000/400V, 500kVA with RMU [3]; Street Lighting Feeder pillars , Includes foundation and draw pits [3] | 103,537.2 | 103,537.2 | PRO-R09-SL-DL-160 | PRC | DL | Each | DL | SL | PRO | R09 | PROC |
|  | 4 | **Termination and Testing Works** |  | 2026-11-23 | 2026-12-22 |  |  |  |  |  |  |  |  |  |  |  |  |  |  |  |  |  |  |
| PRO-R09-SL-DL-130 |  | Material Delivery & Site Inspection of Fuse Boxes for Street Lighting Network | 26d | 2026-11-23 | 2026-12-22 | PRO-SL-1DL-130, PRO-R14-SL-DL-130 SS, PRO-R14-SL-DL-130 FF |  |  |  | -145.5d | 0d | Road crossing ducts, 4 way (4 x 100mm PVC) [214]; Drawpit with medium duty steel cover, size 600x600x1000mm, Type 18 [3]; Drawpit with medium duty steel cover, size 900x900x1200mm, Type 4 [20] | 25,198.6 |  | PRO-R09-SL-DL-130 | PRC | DL | Each | DL | SL | PRO | R09 | PROC |
| PRO-R09-SL-DL-170 |  | Material Delivery & Site Inspection of Cable Lugs for Street Lighting Network | 26d | 2026-11-23 | 2026-12-22 | PRO-SL-1DL-170, PRO-R14-SL-DL-170 SS, PRO-R14-SL-DL-170 FF |  |  |  | -113d | 0d |  |  |  | PRO-R09-SL-DL-170 | PRC | DL | Each | DL | SL | PRO | R09 | PROC |

| ID | WBS | Activity | Duration | Start | Finish | Predecessors | Complete | Planned start | Planned finish | Total float | Free float | Resources | Cost | Actual cost | Activity ID N | 02- Network-WBS | 03- Activity | 04-UOM | 05-Discipline | 01- Network | 08 Stage | 09 Roads | Discipline |
| --- | --- | --- | --- | --- | --- | --- | --- | --- | --- | --- | --- | --- | --- | --- | --- | --- | --- | --- | --- | --- | --- | --- | --- |
|  | 5 | **Earthing System Works** |  | 2026-11-03 | 2026-12-02 |  |  |  |  |  |  |  |  |  |  |  |  |  |  |  |  |  |  |
| PRO-R09-SL-DL-150 |  | Material Delivery & Site Inspection of Lighting Earthing for Street Lighting Network | 26d | 2026-11-03 | 2026-12-02 | PRO-SL-1DL-150 |  |  |  | -116.5d | 79d | Earthing installation, lighting plants. [3]; Earthing installation, for Street lighting circuits, including earth rod in plastic chamber [25]; Earthing installation Lighting Panales [3] | 3,518 |  | PRO-R09-SL-DL-150 | PRC | DL | Each | DL | SL | PRO | R09 | PROC |
|  | 5 | **Road 11 Local 1 ( 670 LM )** |  | 2026-07-07 | 2026-12-22 |  |  |  |  |  |  |  |  |  |  |  |  |  |  |  |  |  |  |
|  | 1 | **Cabling Works** |  | 2026-07-09 | 2026-07-25 |  |  |  |  |  |  |  |  |  |  |  |  |  |  |  |  |  |  |
| PRO-R11-SL-DL-100 |  | Material Delivery & Site Inspection of Lighting Cables for Street Lighting Network | 26d | 2026-07-09 A | 2026-07-25 A | PRO-SL-1DL-100, PRO-R09-SL-DL-100 | 100% | 2025-12-16 | 2026-01-14 |  |  | Supply, installation , test and operation of cables, Copper, (4Cx25mmï¿½,Cu/XLPE/SWA/PVC +1x16mmï¿½ PVC/PVC) [1701] | 23,814 | 23,814 | PRO-R11-SL-DL-100 | PRC | DL | Each | DL | SL | PRO | R11 | PROC |
|  | 2 | **Lighting Poles Works** |  | 2026-07-07 | 2026-11-25 |  |  |  |  |  |  |  |  |  |  |  |  |  |  |  |  |  |  |
| PRO-R11-SL-DL-110 |  | Material Delivery & Site Inspection of Lighting Poles Foundations for Street Lighting Network | 26d | 2026-07-07 A | 2026-08-22 A | PRO-SL-1DL-110, PRO-R09-SL-DL-110 | 100% | 2026-01-15 | 2026-02-14 |  |  | Reinforced concrete foundation, for 12m high lighting columns With Drawpits [28] | 3,040.8 | 3,040.8 | PRO-R11-SL-DL-110 | PRC | DL | Each | DL | SL | PRO | R11 | PROC |
| PRO-R11-SL-DL-120 |  | Material Delivery & Site Inspection of Lighting Poles for Street Lighting Network | 26d | 2026-07-07 A | 2026-08-22 A | PRO-SL-1DL-120, PRO-R09-SL-DL-120 | 100% | 2026-02-15 | 2026-03-16 |  |  | Lighting poles with one arm, including the power distribution box, screws, cables, 12 meters in height. [28] | 15,909.6 | 15,909.6 | PRO-R11-SL-DL-120 | PRC | DL | Each | DL | SL | PRO | R11 | PROC |
| PRO-R11-SL-DL-140 |  | Material Delivery & Site Inspection of Lighting Fixtures for Street Lighting Network | 26d | 2026-10-27 | 2026-11-25 | PRO-SL-1DL-140 SS, PRO-R09-SL-DL-140 SS, PRO-R09-SL-DL-140 FF |  |  |  | -55.5d | 45d | Street Lighting( LED) Luminaire,(Type C) complete with control gear and lamp, ?.17000 Lumen [28] | 5,006.4 |  | PRO-R11-SL-DL-140 | PRC | DL | Each | DL | SL | PRO | R11 | PROC |
|  | 3 | **Distribution Panel Board** |  |  |  |  |  |  |  |  |  |  |  |  |  |  |  |  |  |  |  |  |  |
|  | 4 | **Termination and Testing Works** |  | 2026-11-23 | 2026-12-22 |  |  |  |  |  |  |  |  |  |  |  |  |  |  |  |  |  |  |
| PRO-R11-SL-DL-130 |  | Material Delivery & Site Inspection of Fuse Boxes for Street Lighting Network | 26d | 2026-11-23 | 2026-12-22 | PRO-SL-1DL-130, PRO-R09-SL-DL-130 SS, PRO-R09-SL-DL-130 FF |  |  |  | -109d | 30d | Road crossing ducts, 4 way (4 x 100mm PVC) [62.4]; Drawpit with medium duty steel cover, size 900x900x1200mm, Type 4 [4] | 5,376.32 |  | PRO-R11-SL-DL-130 | PRC | DL | Each | DL | SL | PRO | R11 | PROC |
| PRO-R11-SL-DL-170 |  | Material Delivery & Site Inspection of Cable Lugs for Street Lighting Network | 26d | 2026-11-23 | 2026-12-22 | PRO-SL-1DL-170, PRO-R09-SL-DL-170 SS, PRO-R09-SL-DL-170 FF |  |  |  | -113d | 93d |  |  |  | PRO-R11-SL-DL-170 | PRC | DL | Each | DL | SL | PRO | R11 | PROC |
|  | 5 | **Earthing System Works** |  |  |  |  |  |  |  |  |  |  |  |  |  |  |  |  |  |  |  |  |  |
|  | TE | **Telecom Network** |  | 2025-02-11 | 2026-08-16 |  |  |  |  |  |  |  |  |  |  |  |  |  |  |  |  |  |  |
|  | PO | **Issuance of Purchase Orders** |  | 2025-02-11 | 2025-02-17 |  |  |  |  |  |  |  |  |  |  |  |  |  |  |  |  |  |  |
|  | 1 | **Ducts Works** |  | 2025-02-11 | 2025-02-17 |  |  |  |  |  |  |  |  |  |  |  |  |  |  |  |  |  |  |
| PRO-TE-PO-100 |  | Issuance of Purchase Order for Ducts forTelecom Network | 6d | 2025-02-11 A | 2025-02-17 A | ENG-MT-TE-A-100 | 100% |  |  |  |  |  |  |  | PRO-TE-PO-100 | PRC | PO | Each | PO | TE | PRO |  | PROC |
|  | 3 | **Manholes Works** |  | 2025-02-11 | 2025-02-17 |  |  |  |  |  |  |  |  |  |  |  |  |  |  |  |  |  |  |
| PRO-TE-PO-110 |  | Issuance of Purchase Order for Manholes forTelecom Network | 6d | 2025-02-11 A | 2025-02-17 A | ENG-MT-TE-A-110 | 100% |  |  |  |  |  |  |  | PRO-TE-PO-110 | PRC | PO | Each | PO | TE | PRO |  | PROC |
|  | MF | **Manufacturing of Material** |  | 2025-02-18 | 2025-05-21 |  |  |  |  |  |  |  |  |  |  |  |  |  |  |  |  |  |  |
|  | 1 | **Ducts Works** |  | 2025-02-18 | 2025-05-21 |  |  |  |  |  |  |  |  |  |  |  |  |  |  |  |  |  |  |
| PRO-TE-MF-100 |  | Manufacturing of Ducts for Telecom Network | 60d | 2025-02-18 A | 2025-05-21 A | PRO-TE-PO-100 | 100% | 2025-02-18 | 2025-05-04 |  |  |  |  |  | PRO-TE-MF-100 | PRC | MF | Each | MF | TE | PRO |  | PROC |
|  | 3 | **Manholes Works** |  | 2025-02-18 | 2025-05-20 |  |  |  |  |  |  |  |  |  |  |  |  |  |  |  |  |  |  |
| PRO-TE-MF-110 |  | Manufacturing of Manholes for Telecom Network | 60d | 2025-02-18 A | 2025-05-20 A | PRO-TE-PO-110 | 100% | 2025-02-18 | 2025-05-04 |  |  |  |  |  | PRO-TE-MF-110 | PRC | MF | Each | MF | TE | PRO |  | PROC |

| ID | WBS | Activity | Duration | Start | Finish | Predecessors | Complete | Planned start | Planned finish | Resources | Cost | Actual cost | Activity ID N | 02- Network-WBS | 03- Activity | 04-UOM | 05-Discipline | 01- Network | 08 Stage | Discipline | 09 Roads |
| --- | --- | --- | --- | --- | --- | --- | --- | --- | --- | --- | --- | --- | --- | --- | --- | --- | --- | --- | --- | --- | --- |
|  | 1DL | **1st Material Delivery & Site Inspection** |  | 2025-05-21 | 2025-05-30 |  |  |  |  |  |  |  |  |  |  |  |  |  |  |  |  |
|  | 1 | **Ducts Works** |  | 2025-05-22 | 2025-05-30 |  |  |  |  |  |  |  |  |  |  |  |  |  |  |  |  |
| PRO-TE-1DL-100 |  | 1ST Material Delivery for Ducts of Telecom Network | 6d | 2025-05-22 A | 2025-05-30 A | PRO-TE-MF-100 | 100% | 2025-05-05 | 2025-05-11 |  |  |  | PRO-TE-1DL-100 | PRC | 1DL | Each | 1DL | TE | PRO | PROC |  |
|  | 3 | **Manholes Works** |  | 2025-05-21 | 2025-05-29 |  |  |  |  |  |  |  |  |  |  |  |  |  |  |  |  |
| PRO-TE-1DL-110 |  | 1ST Material Delivery for Manholes of Telecom Network | 6d | 2025-05-21 A | 2025-05-29 A | PRO-TE-MF-110 | 100% | 2025-05-05 | 2025-05-11 |  |  |  | PRO-TE-1DL-110 | PRC | 1DL | Each | 1DL | TE | PRO | PROC |  |
|  | DL | **Material Delivery & Site Inspection** |  | 2025-06-01 | 2026-08-16 |  |  |  |  |  |  |  |  |  |  |  |  |  |  |  |  |
|  | 1 | **Road 18 Local 1 ( 479 LM )** |  | 2025-06-01 | 2025-06-30 |  |  |  |  |  |  |  |  |  |  |  |  |  |  |  |  |
|  | 1 | **Ducts Works** |  | 2025-06-01 | 2025-06-30 |  |  |  |  |  |  |  |  |  |  |  |  |  |  |  |  |
| PRO-R18-TE-DL-120 |  | Material Delivery & Site Inspection for Ducts of Telecom Network | 26d | 2025-06-01 A | 2025-06-30 A | PRO-TE-1DL-100 | 100% | 2025-05-12 | 2025-06-15 | 6-way ducts, 50mm dia. HDPE [384.8]; Road crossing ducts (6-way) [33.06] | 17,045 | 17,045 | PRO-R18-TE-DL-120 | PRC | DL | Each | DL | TE | PRO | PROC | R18 |
|  | 3 | **Manholes Works** |  | 2025-06-01 | 2025-06-10 |  |  |  |  |  |  |  |  |  |  |  |  |  |  |  |  |
| PRO-R18-TE-DL-130 |  | Material Delivery & Site Inspection of Manholes for Telecom Network | 26d | 2025-06-01 A | 2025-06-10 A | PRO-TE-1DL-110 | 100% | 2025-05-12 | 2025-06-15 | Manhole Type 1 (2000x1000x1000) [2]; Manhole Type 2 (2000x1000x1000) [4]; Manhole Type 3 (2000x1000x1000) [1] | 6,558.2 | 6,558.2 | PRO-R18-TE-DL-130 | PRC | DL | Each | DL | TE | PRO | PROC | R18 |
|  | 9 | **Road 17 Local 1 ( 500 LM )** |  | 2025-06-01 | 2025-06-30 |  |  |  |  |  |  |  |  |  |  |  |  |  |  |  |  |
|  | 1 | **Ducts Works** |  | 2025-06-01 | 2025-06-30 |  |  |  |  |  |  |  |  |  |  |  |  |  |  |  |  |
| PRO-R17-TE-DL-100 |  | Material Delivery & Site Inspection for Ducts of Telecom Network | 26d | 2025-06-01 A | 2025-06-30 A | PRO-TE-1DL-100, PRO-R18-TE-DL-120 | 100% | 2025-06-16 | 2025-07-15 | 6-way ducts, 50mm dia. HDPE [398.1]; Road crossing ducts (6-way) [33.97] | 17,622.5 | 17,622.5 | PRO-R17-TE-DL-100 | PRC | DL | Each | DL | TE | PRO | PROC | R17 |
|  | 3 | **Manholes Works** |  | 2025-06-11 | 2025-06-14 |  |  |  |  |  |  |  |  |  |  |  |  |  |  |  |  |
| PRO-R17-TE-DL-110 |  | Material Delivery & Site Inspection of Manholes for Telecom Network | 26d | 2025-06-11 A | 2025-06-14 A | PRO-TE-1DL-110, PRO-R18-TE-DL-130 | 100% | 2025-06-16 | 2025-07-15 | Manhole Type 1 (2000x1000x1000) [2]; Manhole Type 2 (2000x1000x1000) [2] | 3,736.4 | 3,736.4 | PRO-R17-TE-DL-110 | PRC | DL | Each | DL | TE | PRO | PROC | R17 |
|  | 8 | **Road 16 Local 1 ( 527 LM )** |  | 2025-06-01 | 2025-06-30 |  |  |  |  |  |  |  |  |  |  |  |  |  |  |  |  |
|  | 1 | **Ducts Works** |  | 2025-06-01 | 2025-06-30 |  |  |  |  |  |  |  |  |  |  |  |  |  |  |  |  |
| PRO-R16-TE-DL-100 |  | Material Delivery & Site Inspection for Ducts of Telecom Network | 26d | 2025-06-01 A | 2025-06-30 A | PRO-TE-1DL-100, PRO-R17-TE-DL-100 | 100% | 2025-07-16 | 2025-08-14 | 6-way ducts, 50mm dia. HDPE [418.6]; Road crossing ducts (6-way) [35.42] | 18,515 | 18,515 | PRO-R16-TE-DL-100 | PRC | DL | Each | DL | TE | PRO | PROC | R16 |
|  | 3 | **Manholes Works** |  | 2025-06-15 | 2025-06-19 |  |  |  |  |  |  |  |  |  |  |  |  |  |  |  |  |
| PRO-R16-TE-DL-110 |  | Material Delivery & Site Inspection of Manholes for Telecom Network | 26d | 2025-06-15 A | 2025-06-19 A | PRO-TE-1DL-110, PRO-R17-TE-DL-110 | 100% | 2025-07-16 | 2025-08-14 | Manhole Type 1 (2000x1000x1000) [2]; Manhole Type 2 (2000x1000x1000) [4] | 5,612.4 | 5,612.4 | PRO-R16-TE-DL-110 | PRC | DL | Each | DL | TE | PRO | PROC | R16 |
|  | 7 | **Road 15 Local 1 ( 556 LM )** |  | 2025-06-01 | 2025-06-30 |  |  |  |  |  |  |  |  |  |  |  |  |  |  |  |  |
|  | 1 | **Ducts Works** |  | 2025-06-01 | 2025-06-30 |  |  |  |  |  |  |  |  |  |  |  |  |  |  |  |  |
| PRO-R15-TE-DL-100 |  | Material Delivery & Site Inspection for Ducts of Telecom Network | 26d | 2025-06-01 A | 2025-06-30 A | PRO-TE-1DL-100, PRO-R16-TE-DL-100 | 100% | 2025-08-16 | 2025-09-14 | 6-way ducts, 50mm dia. HDPE [438.75]; Road crossing ducts (6-way) [37.12] | 19,406.25 | 19,406.25 | PRO-R15-TE-DL-100 | PRC | DL | Each | DL | TE | PRO | PROC | R15 |

| ID | WBS | Activity | Duration | Start | Finish | Predecessors | Complete | Planned start | Planned finish | Resources | Cost | Actual cost | Activity ID N | 02- Network-WBS | 03- Activity | 04-UOM | 05-Discipline | 01- Network | 08 Stage | 09 Roads | Discipline |
| --- | --- | --- | --- | --- | --- | --- | --- | --- | --- | --- | --- | --- | --- | --- | --- | --- | --- | --- | --- | --- | --- |
|  | 3 | **Manholes Works** |  | 2025-06-21 | 2025-06-26 |  |  |  |  |  |  |  |  |  |  |  |  |  |  |  |  |
| PRO-R15-TE-DL-110 |  | Material Delivery & Site Inspection of Manholes for Telecom Network | 26d | 2025-06-21 A | 2025-06-26 A | PRO-TE-1DL-110, PRO-R16-TE-DL-110 | 100% | 2025-08-16 | 2025-09-14 | Manhole Type 1 (2000x1000x1000) [2]; Manhole Type 2 (2000x1000x1000) [4] | 5,612.4 | 5,612.4 | PRO-R15-TE-DL-110 | PRC | DL | Each | DL | TE | PRO | R15 | PROC |
|  | 4 | **Road 10 Local 2 ( 2352 LM )** |  | 2025-11-01 | 2026-08-16 |  |  |  |  |  |  |  |  |  |  |  |  |  |  |  |  |
|  | 1 | **Ducts Works** |  | 2025-11-01 | 2025-11-10 |  |  |  |  |  |  |  |  |  |  |  |  |  |  |  |  |
| PRO-R10-TE-DL-100 |  | Material Delivery & Site Inspection for Ducts of Telecom Network | 26d | 2025-11-01 A | 2025-11-10 A | PRO-TE-1DL-100, PRO-R15-TE-DL-100 | 100% | 2025-09-15 | 2025-10-15 | 6-way ducts, 50mm dia. HDPE [1786.85]; Road crossing ducts (6-way) [151.19] | 79,033.75 | 79,033.75 | PRO-R10-TE-DL-100 | PRC | DL | Each | DL | TE | PRO | R10 | PROC |
|  | 3 | **Manholes Works** |  | 2026-08-01 | 2026-08-16 |  |  |  |  |  |  |  |  |  |  |  |  |  |  |  |  |
| PRO-R10-TE-DL-110 |  | Material Delivery & Site Inspection of Manholes for Telecom Network | 26d | 2026-08-01 A | 2026-08-16 A | PRO-TE-1DL-110, PRO-R15-TE-DL-110 | 100% | 2025-09-15 | 2025-10-15 | Manhole Type 1 (2000x1000x1000) [6]; Manhole Type 2 (2000x1000x1000) [14] | 18,713.2 | 18,713.2 | PRO-R10-TE-DL-110 | PRC | DL | Each | DL | TE | PRO | R10 | PROC |
|  | 6 | **Road 14 Local 1 ( 584 LM )** |  | 2025-11-01 | 2026-08-16 |  |  |  |  |  |  |  |  |  |  |  |  |  |  |  |  |
|  | 1 | **Ducts Works** |  | 2025-11-01 | 2025-11-10 |  |  |  |  |  |  |  |  |  |  |  |  |  |  |  |  |
| PRO-R14-TE-DL-100 |  | Material Delivery & Site Inspection for Ducts of Telecom Network | 26d | 2025-11-01 A | 2025-11-10 A | PRO-TE-1DL-100, PRO-R10-TE-DL-100 | 100% | 2025-10-16 | 2025-11-15 | 6-way ducts, 50mm dia. HDPE [769.6]; Road crossing ducts (6-way) [65.12] | 34,040 | 34,040 | PRO-R14-TE-DL-100 | PRC | DL | Each | DL | TE | PRO | R14 | PROC |
|  | 3 | **Manholes Works** |  | 2026-08-01 | 2026-08-16 |  |  |  |  |  |  |  |  |  |  |  |  |  |  |  |  |
| PRO-R14-TE-DL-110 |  | Material Delivery & Site Inspection of Manholes for Telecom Network | 26d | 2026-08-01 A | 2026-08-16 A | PRO-TE-1DL-110, PRO-R10-TE-DL-110 | 100% | 2025-10-16 | 2025-11-15 | Manhole Type 1 (2000x1000x1000) [4]; Manhole Type 2 (2000x1000x1000) [6] | 9,348.8 | 9,348.8 | PRO-R14-TE-DL-110 | PRC | DL | Each | DL | TE | PRO | R14 | PROC |
|  | 2 | **Road 09 Local 2 ( 2278 LM )** |  | 2026-08-01 | 2026-08-16 |  |  |  |  |  |  |  |  |  |  |  |  |  |  |  |  |
|  | 1 | **Ducts Works** |  | 2026-08-01 | 2026-08-16 |  |  |  |  |  |  |  |  |  |  |  |  |  |  |  |  |
| PRO-R09-TE-DL-110 |  | Material Delivery & Site Inspection of Manholes for Telecom Network | 26d | 2026-08-01 A | 2026-08-16 A | PRO-TE-1DL-110, PRO-R14-TE-DL-110 | 100% | 2025-11-16 | 2025-12-15 | Manhole Type 1 (2000x1000x1000) [5]; Manhole Type 2 (2000x1000x1000) [14]; Manhole Type 3 (2000x1000x1000) [3] | 20,620.4 | 20,620.4 | PRO-R09-TE-DL-110 | PRC | DL | Each | DL | TE | PRO | R09 | PROC |
|  | 3 | **Manholes Works** |  | 2026-08-01 | 2026-08-16 |  |  |  |  |  |  |  |  |  |  |  |  |  |  |  |  |
| PRO-R09-TE-DL-100 |  | Material Delivery & Site Inspection for Ducts of Telecom Network | 26d | 2026-08-01 A | 2026-08-16 A | PRO-TE-1DL-100, PRO-R14-TE-DL-100 | 100% | 2025-11-16 | 2025-12-15 | 6-way ducts, 50mm dia. HDPE [1782]; Road crossing ducts (6-way) [150] | 78,780 | 78,780 | PRO-R09-TE-DL-100 | PRC | DL | Each | DL | TE | PRO | R09 | PROC |
|  | 5 | **Road 11 Local 1 ( 670 LM )** |  | 2026-07-09 | 2026-08-16 |  |  |  |  |  |  |  |  |  |  |  |  |  |  |  |  |
|  | 1 | **Ducts Works** |  | 2026-07-09 | 2026-08-16 |  |  |  |  |  |  |  |  |  |  |  |  |  |  |  |  |
| PRO-R11-TE-DL-100 |  | Material Delivery & Site Inspection for Ducts of Telecom Network | 26d | 2026-07-09 A | 2026-08-16 A | PRO-TE-1DL-100, PRO-R09-TE-DL-100 | 100% | 2025-12-16 | 2026-01-14 | 6-way ducts, 50mm dia. HDPE [521.3]; Road crossing ducts (6-way) [44.11] | 23,057.5 | 23,057.5 | PRO-R11-TE-DL-100 | PRC | DL | Each | DL | TE | PRO | R11 | PROC |
|  | 3 | **Manholes Works** |  | 2026-08-01 | 2026-08-16 |  |  |  |  |  |  |  |  |  |  |  |  |  |  |  |  |
| PRO-R11-TE-DL-110 |  | Material Delivery & Site Inspection of Manholes for Telecom Network | 26d | 2026-08-01 A | 2026-08-16 A | PRO-TE-1DL-110, PRO-R09-TE-DL-110 | 100% | 2025-12-16 | 2026-01-14 | Manhole Type 1 (2000x1000x1000) [2]; Manhole Type 2 (2000x1000x1000) [4] | 5,612.4 | 5,612.4 | PRO-R11-TE-DL-110 | PRC | DL | Each | DL | TE | PRO | R11 | PROC |
|  | 1 | **Superstructure Works** |  | 2025-02-18 | 2026-11-02 |  |  |  |  |  |  |  |  |  |  |  |  |  |  |  |  |
|  | 1 | **Issuance of Purchase Orders** |  | 2025-02-18 | 2025-03-30 |  |  |  |  |  |  |  |  |  |  |  |  |  |  |  |  |
|  | SL | **Sewage Pump Stations ( PS 06 )** |  | 2025-02-18 | 2025-03-06 |  |  |  |  |  |  |  |  |  |  |  |  |  |  |  |  |
| PRO-SPS-CV-PO-10 |  | Issuance of Purchase Order for Civil Works for Sewage Pump Stations | 12d | 2025-02-18 A | 2025-03-06 A | ENG-MT-SPS-CV-A-110, ENG-MS-SPS-A-110, ENG-SH-SPS-A-110, PRO-SW-PO-100, PRO-SW-PO-110 | 100% | 2025-02-18 | 2025-03-04 |  |  |  | PRO-SPS-CV-PO-10 | DSN | DSS | Each | S | SL | PRO |  | PROC |

| ID | WBS | Activity | Duration | Start | Finish | Predecessors | Complete | Remaining | Planned start | Planned finish | Total float | Free float | Resources | Cost | Actual cost | Activity ID N | 02- Network-WBS | 03- Activity | 04-UOM | 05-Discipline | 01- Network | 08 Stage | Discipline |
| --- | --- | --- | --- | --- | --- | --- | --- | --- | --- | --- | --- | --- | --- | --- | --- | --- | --- | --- | --- | --- | --- | --- | --- |
|  | TE | **Storm Drainage Ponds ( PO-J1 , PO-J2 )** |  | 2025-03-19 | 2025-03-30 |  |  |  |  |  |  |  |  |  |  |  |  |  |  |  |  |  |  |
| PRO-DPO-CV-PO-10 |  | Issuance of Purchase Order for Civil Works for Storm Drainage Ponds | 12d | 2025-03-19 A | 2025-03-30 A | ENG-SH-SPS-A-110, ENG-MT-DPO-CV-A-110, ENG-MS-DPO-A-110, ENG-SH-DPO-A-110, PRO-SD-PO-100, PRO-SD-PO-110, PRO-SD-PO-130, PRO-SD-PO-150, PRO-SD-PO-120, PRO-SD-PO-140, PRO-SD-PO-160, PRO-SPS-CV-PO-10 | 100% |  | 2025-03-05 | 2025-03-18 |  |  |  |  |  | PRO-DPO-CV-PO-10 | DSN | DSS | Each | S | TE | PRO | PROC |
|  | 2 | **Manufacturing of Material** |  | 2025-03-07 | 2026-08-09 |  |  |  |  |  |  |  |  |  |  |  |  |  |  |  |  |  |  |
|  | SL | **Sewage Pump Stations ( PS 06 )** |  | 2025-03-07 | 2025-07-17 |  |  |  |  |  |  |  |  |  |  |  |  |  |  |  |  |  |  |
| PRO-SPS-CV-MF-10 |  | Manufacturing of Civil Works for Sewage Pump Stations ( PS06 ) | 130d | 2025-03-07 A | 2025-07-17 A | PRO-SPS-CV-PO-10 | 100% |  | 2025-03-05 | 2025-08-12 |  |  |  |  |  | PRO-SPS-CV-MF-10 | DSN | DSS | Each | S | SL | PRO | PROC |
|  | TE | **Storm Drainage Ponds ( PO-J1 , PO-J2 )** |  | 2025-04-01 | 2026-08-09 |  |  |  |  |  |  |  |  |  |  |  |  |  |  |  |  |  |  |
| PRO-DPO-CV-MF-10 |  | Manufacturing of Civil Works for Storm Drainage Ponds ( PO-J1 ) | 120d | 2025-04-01 A | 2025-07-17 A | PRO-DPO-CV-PO-10 | 100% |  | 2025-03-19 | 2025-08-14 |  |  |  |  |  | PRO-DPO-CV-MF-10 | DSN | DSS | Each | S | TE | PRO | PROC |
| PRO-DPO-CV-MF-20 |  | Manufacturing of Civil Works for Storm Drainage Ponds ( PO-J2 ) | 60d | 2026-06-01 A | 2026-08-09 A | PRO-DPO-CV-MF-10 | 100% |  | 2026-10-20 | 2026-12-28 |  |  |  |  |  | PRO-DPO-CV-MF-20 | DSN | DSS | Each | S | TE | PRO | PROC |
|  | 3 | **1st Material Delivery & Site Inspection** |  | 2025-05-19 | 2026-09-08 |  |  |  |  |  |  |  |  |  |  |  |  |  |  |  |  |  |  |
|  | SL | **Sewage Pump Stations ( PS 06 )** |  | 2025-10-13 | 2025-11-29 |  |  |  |  |  |  |  |  |  |  |  |  |  |  |  |  |  |  |
| PRO-SPS-CV-1DL-10 |  | 1ST Material Delivery for Civil Works for Sewage Pump Stations ( PS 06 ) | 40d | 2025-10-13 A | 2025-11-29 A | PRO-SPS-CV-MF-10 | 100% |  | 2026-10-20 | 2026-12-05 |  |  |  |  |  | PRO-SPS-CV-1DL-10 | DSN | DSS | Each | S | SL | PRO | PROC |
|  | TE | **Storm Drainage Ponds ( PO-J1 , PO-J2 )** |  | 2025-05-19 | 2026-09-08 |  |  |  |  |  |  |  |  |  |  |  |  |  |  |  |  |  |  |
| PRO-DPO-CV-1DL-10 |  | 1ST Material Delivery for Civil Works for Storm Drainage Ponds ( PO-J1 ) | 26d | 2025-05-19 A | 2025-10-23 A | PRO-DPO-CV-MF-10 | 100% |  | 2025-08-16 | 2025-09-14 |  |  |  |  |  | PRO-DPO-CV-1DL-10 | DSN | DSS | Each | S | TE | PRO | PROC |
| PRO-DPO-CV-1DL-20 |  | 1ST Material Delivery for Civil Works for Storm Drainage Ponds ( PO-J2 ) | 26d | 2026-08-10 A | 2026-09-08 A | PRO-DPO-CV-MF-20 | 100% |  | 2026-12-29 | 2027-01-27 |  |  |  |  |  | PRO-DPO-CV-1DL-20 | DSN | DSS | Each | S | TE | PRO | PROC |
|  | 4 | **Material Delivery & Site Inspection** |  | 2025-10-29 | 2026-11-02 |  |  |  |  |  |  |  |  |  |  |  |  |  |  |  |  |  |  |
|  | SL | **Sewage Pump Stations ( PS 06 )** |  | 2025-11-29 | 2025-12-01 |  |  |  |  |  |  |  |  |  |  |  |  |  |  |  |  |  |  |
| PRO-SPS-CV-DL-10 |  | Material Delivery & Site Inspection for Civil Works for Sewage Pump Stations ( PS 06 ) | 70d | 2025-11-29 A | 2025-12-01 A | PRO-SPS-CV-MF-10 | 100% |  | 2025-09-30 | 2025-12-20 |  |  | HDPE force main DN 800mm diameter, in trenches depth: 0- 1.5m [100]; HDPE force main DN 800mm diameter, in trenches depth: 1.51- 2.5m [2237]; Washout valve 200mm, on 800mm dia. pipe [2]; Air release valve 110 mm dia, on 800mm dia. pipe [3]; Washout valve chamber [2]; Air release valve chamber [3]; Wet well structure internal size (5.5*4.0m) at 11.0m depth [1]; Valve chamber [1]; for the pump station [1]; basket screen [1]; CMU walls with thickness 200mm [150]; Waterproofing for foundation [60]; Roof Insulation [45]; Acrylic paint on elevations including plastering [150]; Acrylic paint on internal wallsand ceiling including plastering [190]; Epoxy paint on floors [40]; Supply and install 2000*3000 mm double leaf manufacturer label shall pass the test requirements complete with accessories as per door schedule and material as approved by the Client. [1] | 1,213,097 | 1,213,097 | PRO-SPS-CV-DL-10 | DSN | DSS | Each | S | SL | PRO | PROC |
|  | TE | **Storm Drainage Ponds ( PO-J1 , PO-J2 )** |  | 2025-10-29 | 2026-11-02 |  |  |  |  |  |  |  |  |  |  |  |  |  |  |  |  |  |  |
| PRO-DPO-CV-DL-10 |  | Material Delivery & Site Inspection for Civil Works for Storm Drainage Ponds ( PO-J1 ) | 70d | 2025-10-29 A | 2026-10-28 | PRO-DPO-CV-1DL-10 | 97% | 2d | 2025-09-15 | 2025-12-06 | -28d | 131d | Excavation in all type of soil for any depth including levelling, compaction and disposal of surplus material [49955]; Reinforced Concrete lining including blinding concrete, construction, isolation layers and expansion joints as shown in drawings. [40] | 508,118 | 492,874.46 | PRO-DPO-CV-DL-10 | DSN | DSS | Each | S | TE | PRO | PROC |
| PRO-DPO-CV-DL-20 |  | Material Delivery & Site Inspection for Civil Works for Storm Drainage Ponds ( PO-J2 ) | 70d | 2026-09-09 A | 2026-11-02 | PRO-DPO-CV-1DL-20 FF | 85% | 6d | 2025-11-25 | 2026-02-14 | -116d | 36d | Excavation in all type of soil to increase the depth of the existing pond for any depth including levelling, compaction and disposal of surplus material [20425]; Reinforced Concrete lining including blinding concrete, construction, isolation layers and expansion joints as shown in drawings. [18] | 85,555.6 | 72,722.26 | PRO-DPO-CV-DL-20 | DSN | DSA | Each | A | TE | PRO | PROC |
|  | LL | **Long Lead Time Items** |  | 2025-02-11 | 2026-11-12 |  |  |  |  |  |  |  |  |  |  |  |  |  |  |  |  |  |  |
|  | 2 | **Infrastructure Networks** |  | 2025-02-11 | 2026-09-20 |  |  |  |  |  |  |  |  |  |  |  |  |  |  |  |  |  |  |
|  | 1 | **RMU Works of Medium Voltage Network** |  | 2025-02-11 | 2026-09-20 |  |  |  |  |  |  |  |  |  |  |  |  |  |  |  |  |  |  |
|  | PO | **Issuance of Purchase Orders** |  | 2025-02-11 | 2025-05-05 |  |  |  |  |  |  |  |  |  |  |  |  |  |  |  |  |  |  |
| PRO-MV-LL-PO-10 |  | Issuance of Purchase Order for RMU of Medium Voltage Network | 30d | 2025-02-11 A | 2025-05-05 A | ENG-MT-MV-A-10, ENG-SH-MV-A-110, ENG-MS-MV-A-110 | 100% |  | 2025-02-10 | 2025-03-17 |  |  |  |  |  | PRO-MV-LL-PO-10 | PRC | PO | Each | PO | MV | PRO | PROC |

| ID | WBS | Activity | Duration | Start | Finish | Predecessors | Complete | Remaining | Planned start | Planned finish | Total float | Free float | Resources | Cost | Actual cost | Activity ID N | 02- Network-WBS | 03- Activity | 04-UOM | 05-Discipline | 01- Network | 08 Stage | Discipline | Seq | New Seq | 07-Weightage System | 09 Roads | 10 side Walk |
| --- | --- | --- | --- | --- | --- | --- | --- | --- | --- | --- | --- | --- | --- | --- | --- | --- | --- | --- | --- | --- | --- | --- | --- | --- | --- | --- | --- | --- |
|  | MF | **Manufacturing of Material** |  | 2025-06-01 | 2026-06-20 |  |  |  |  |  |  |  |  |  |  |  |  |  |  |  |  |  |  |  |  |  |  |  |
| PRO-MV-LL-MF-10 |  | Manufacturing of RMU for Medium Voltage Network | 150d | 2025-06-01 A | 2026-06-20 A | PRO-MV-LL-PO-10 | 100% |  | 2025-03-18 | 2025-09-17 |  |  |  |  |  | PRO-MV-LL-MF-10 | PRC | MF | Each | MF | MV | PRO | PROC |  |  |  |  |  |
|  | 1DL | **Material Shipping/Custom Clearance/Delivery** |  | 2026-05-15 | 2026-05-28 |  |  |  |  |  |  |  |  |  |  |  |  |  |  |  |  |  |  |  |  |  |  |  |
| PRO-MV-LL-SH/DL-10 |  | Material Delivery for RMU of Medium Voltage Network | 90d | 2026-05-15 A | 2026-05-28 A | PRO-MV-LL-MF-10 | 100% |  | 2025-09-18 | 2026-01-01 |  |  |  |  |  | PRO-MV-LL-SH/DL-10 | PRC | 1DL | Each | 1DL | MV | PRO | PROC |  |  |  |  |  |
|  | DL | **Material Site Inspection** |  | 2026-08-01 | 2026-09-20 |  |  |  |  |  |  |  |  |  |  |  |  |  |  |  |  |  |  |  |  |  |  |  |
|  | DL4 | **Road 10 Local 2 ( 2352 LM )** |  | 2026-08-01 | 2026-08-06 |  |  |  |  |  |  |  |  |  |  |  |  |  |  |  |  |  |  |  |  |  |  |  |
| PRO-R10-MV-LL-MSI-10 |  | Material Site Inspection of RMU for Medium Voltage Network | 30d | 2026-08-01 A | 2026-08-06 A | PRO-MV-LL-SH/DL-10 | 100% |  | 2026-01-03 | 2026-02-05 |  |  | Supply & installation of (33) kv MV Switch (RMU) for Normally-open Points (NOP) according to the Saudi Electric Company specification [2] | 47,914.64 | 47,914.64 | PRO-R10-MV-LL-MSI-10 | PRC | DL | Each | DL | MV | PRO | PROC |  |  |  |  |  |
|  | DL9111 | **Road 17 Local 1 ( 500 LM )** |  | 2026-09-15 | 2026-09-20 |  |  |  |  |  |  |  |  |  |  |  |  |  |  |  |  |  |  |  |  |  |  |  |
| PRO-R17-MV-LL-MSI-40 |  | Material Site Inspection of RMU for Medium Voltage Network | 30d | 2026-09-15 A | 2026-09-20 A | PRO-MV-LL-SH/DL-10 | 100% |  | 2026-01-03 | 2026-02-05 |  |  | Supply & installation of (33) kv MV Switch (RMU) for Normally-open Points (NOP) according to the Saudi Electric Company specification [1] | 23,957.32 | 23,957.32 | PRO-R18-MV-LL-MSI-40 | PRC | DL | Each | DL | MV | PRO | PROC |  |  |  |  |  |
|  | 1 | **Superstructure Works** |  | 2025-06-01 | 2026-11-12 |  |  |  |  |  |  |  |  |  |  |  |  |  |  |  |  |  |  |  |  |  |  |  |
|  | SL | **Sewage Pump Stations ( PS 06 )** |  | 2025-06-01 | 2026-11-12 |  |  |  |  |  |  |  |  |  |  |  |  |  |  |  |  |  |  |  |  |  |  |  |
|  | 1 | **Issuance of Purchase Orders** |  | 2025-06-01 | 2025-06-05 |  |  |  |  |  |  |  |  |  |  |  |  |  |  |  |  |  |  |  |  |  |  |  |
| PRO-SPS-LL-PO-10 |  | Issuance of Purchase Order for Electromechanical Works for Sewage Pump Stations | 60d | 2025-06-01 A | 2025-06-05 A | ENG-MS-SPS-A-110, ENG-SH-SPS-A-110, ENG-MT-SPS-MC-A-110, PRO-MV-LL-PO-10, PRO-MV-LL-MF-10 | 100% |  | 2025-09-18 | 2025-11-27 |  |  |  |  |  | PRO-SPS-LL-PO-10 | DSN | DSS | Each | S | SL | PRO | PROC |  |  |  |  |  |
|  | 2 | **Manufacturing of Material** |  | 2025-06-01 | 2026-06-30 |  |  |  |  |  |  |  |  |  |  |  |  |  |  |  |  |  |  |  |  |  |  |  |
| PRO-SPS7-LL-MF-10 |  | Manufacturing of Electromechanical Works for Sewage Pump Stations ( PS 06 ) | 100d | 2025-06-01 A | 2026-06-30 A | PRO-SPS-LL-PO-10, PRO-MV-LL-MF-10 | 100% |  | 2025-11-29 | 2026-03-28 |  |  |  |  |  | PRO-SPS7-LL-MF-10 | DSN | DSS | Each | S | SL | PRO | PROC |  |  |  |  |  |
|  | 3 | **Material Shipping/Custom Clearance/Delivery** |  | 2026-07-05 | 2026-08-06 |  |  |  |  |  |  |  |  |  |  |  |  |  |  |  |  |  |  |  |  |  |  |  |
| PRO-SPS7-LL-SH/DL-10 |  | Material Delivery for Electromechanical Works for Sewage Pump Stations ( PS 06 ) | 80d | 2026-07-05 A | 2026-08-06 A | PRO-SPS7-LL-MF-10 | 100% |  | 2026-12-03 | 2027-03-07 |  |  |  |  |  | PRO-SPS7-LL-SH/DL-10 | DSN | DSS | Each | S | SL | PRO | PROC |  |  |  |  |  |
|  | 4 | **Material Site Inspection** |  | 2026-10-05 | 2026-11-12 |  |  |  |  |  |  |  |  |  |  |  |  |  |  |  |  |  |  |  |  |  |  |  |
| PRO-SPS7-LL-MSI-10 |  | Material Site Inspection for Electromechanical Works for Sewage Pump Stations ( PS06 ) | 50d | 2026-10-05 A | 2026-11-12 | PRO-SPS7-LL-SH/DL-10 | 40% | 15d | 2026-07-05 | 2026-08-31 | -25d | 79d | Constant speed drive, sewage pumps, centrifugal submersible type; 2 duty / 1 standby capable of delivering a flow rate of flow 424 l/s against a total head of 22m, rate includes provision of MCC [1]; Odour control system [1]; Gate valves for the pump station [3]; Non return valves for the pump station [3]; Penstok for the pump station [1]; Standby Diesel Generator Set 400/230KVA, 3P, 60Hz in Sound Attenuated Enclosure KVA rating by contractor as per total load onsite after pumps selection [1]; Supply, install, test and commission of manually operated fuel pump, The pump should be supplied with all accessories as specified. [1]; Supply, install, test and commission of Fuel pump with capacity of not less than 1 hour to fill the daily tank of generator at required head. [1]; supply, install, test & commission Automatic Transfer Switch ATS panel including all accessories & works required. [1]; Supply, install, test and commission under ground fuel tank for 3 days of continuous operation of the standby generator at full load. The tank should be supplied with all accessories such as black steel pipes, float switches with two contactors ï¿½etc. as [1]; 4Cx 185mm2 Cu/XLPE//PVC from nearest power supply (SEC) and generator to the ATS and from ATS to MCC-SPS [600]; 4Cx 95mm2 Cu/XLPE//PVC from nearest power supply (SEC) and generator to the ATS and from ATS to MCC-SPS [400]; 4Cx 10mm2 Cu/XLPE/SWA/PVC from MCC-SPS to ELP [50]; 4Cx 150mm2 + 1Cx25mm2 SUBMERGED RUBBER INSULATED FLEXIBLE CABLE from MCC to PUMP1& PUMP2. [210]; 4Cx 10mm2 + 1Cx10mm2 Cu/XLPE/PVC FROM MCC-SPS to DB-SPS [50]; 4Cx 10mm2 + 1Cx10mm2 Cu/XLPE/PVC FROM MCC-SPS to Penstok [100]; 4Cx 10mm2 + 1Cx10mm2 Cu/XLPE/PVC FROM MCC-SPS to Odor Control Unit [100]; 4Cx 6mm2 + 1Cx6mm2 Cu/XLPE/PVC FROM MCC-SPS to the mechanical bar screen [80]; 3Cx 6mm2 Cu/XLPE/PVC FROM MCC-SPS to the two fuel pumps. [100]; 3Cx 4mm2 Cu/XLPE/PVC to the AC. [80]; MCC [1]; Surge protection system study [1]; Surge protection system [1]; Local Control Panel, IP 65 [4]; Isolator/disconnect switches IP65 [16]; DB-SPS Panel [4]; ELP Panel: phtocell , timer,40 Ampere, 3P, IP66,60Hz incomer MCCB & 5ways outgoing MCCB [4]; Electrical Hand Hole 600mm x 600mm x 800mm concrete hand hole with hot dip galvanized heavy duty steel cover [10]; Electrical Hand Hole 400mm x 400mm x 600mm concrete hand hole with hot dip galvanized heavy duty steel cover [10]; Surfaced Mounted Light [8]; 13A DOUBLE SWITCH SOCKET OUTLET (WEATHER PROOF) [8]; 20A SWITCH SOCKET OUTLET (FOR SPLIT UNIT), (WEATHER PROOF) [8]; Supply, install and test the following grounding and lightning system including ground wires, ground rods, inspection pits, terminations, bonding/clamping, civil works and all materials and accessories required to complete the work according to specificat [2]; Supply and install telephone and fire alarm system including smoke detector, cabinet, control panel, cables, conduits, switches, and other accessories to complete as per drawings and specifications. [1]; Supply, installation, testing and commissioning of all control, instrumentation( as shown on the P & ID drawings cable schedule) including all installation accessories such as termination kits, lugs, glands, cable containments, junction boxes , conduits, [2]; Supply, installation, testing and commissioning of all field instruments such as hydrostatic level meter, level switches, flow switch, and all necessary instruments including all installation accessories, etc. all as per specifications and design drawings [2]; DX wall mounted Split/AC [2]; CO2 fire extinguishers [2]; Powder fire extinguishers [2]; Flood lights shall be high pole with 250 watt HPS luminaire [4]; 1 - way duct - not exceeding 1.5m deep [1]; 2 - way duct - not exceeding 1.5m deep [1]; 8 - way duct - not exceeding 1.5m deep [1]; Earth pits [1]; Cable draw pit, 600x600mm [1]; Supply, installation, testing and commissioning of PLC system [2] | 1,035,904 | 414,361.6 | PRO-SPS7-LL-MSI-10 | DSN | DSS | Each | S | SL | PRO | PROC |  |  |  |  |  |
|  | CON | **Construction Works** |  | 2025-02-11 | 2027-08-24 |  |  |  |  |  |  |  |  |  |  |  |  |  |  |  |  |  |  |  |  |  |  |  |
|  | INF | **Infrastructure Networks** |  | 2025-02-11 | 2027-08-24 |  |  |  |  |  |  |  |  |  |  |  |  |  |  |  |  |  |  |  |  |  |  |  |
|  | 1 | **Phase 2 Block "J"** |  | 2025-02-11 | 2027-06-08 |  |  |  |  |  |  |  |  |  |  |  |  |  |  |  |  |  |  |  |  |  |  |  |
|  | SW | **Rising Main Network** |  | 2025-12-27 | 2026-11-15 |  |  |  |  |  |  |  |  |  |  |  |  |  |  |  |  |  |  |  |  |  |  |  |
|  | ML | **Main Line Sections** |  | 2025-12-27 | 2026-11-15 |  |  |  |  |  |  |  |  |  |  |  |  |  |  |  |  |  |  |  |  |  |  |  |
| CO-RM-SW-290 |  | Trench Excavation and Bedding Works for Main Lines of Rising Main Network | 21d | 2025-12-27 A | 2026-01-05 A | CO-R09.S01-SW-130 | 100% |  | 2025-09-01 | 2025-09-25 |  |  | Skilled Labor/Surveyor [51 h]; Foreman [51 h]; Excavator [288 h]; HDPE force main DN 800mm diameter, in trenches depth: 0- 1.5m [10]; HDPE force main DN 800mm diameter, in trenches depth: 1.51- 2.5m [223.7] | 334,021.46 | 334,021.46 | CO-RM-SW-290 | ML | Ex | LM | ML | SW | CON | SW | 11 | 11 | EX | RM | S01 |
| CO-RM-SW-300 |  | Pipes Laying Works for Main Lines of Rising Main Network | 21d | 2026-02-25 A | 2026-10-13 A | CO-RM-SW-290 | 100% |  | 2025-09-27 | 2025-10-20 |  |  | Labor/Helper [1344 h]; Skilled Labor/Surveyor [48 h]; Foreman [68 h]; Plumber [672 h]; Excavator [384 h]; HDPE force main DN 800mm diameter, in trenches depth: 0- 1.5m [35]; HDPE force main DN 800mm diameter, in trenches depth: 1.51- 2.5m [782.95] | 1,169,075.13 | 1,169,075.13 | CO-RM-SW-300 | ML | PL | LM | ML | SW | CON | SW | 11 | 11 | PIPE | RM | S01 |
| CO-RM-SW-310 |  | Trench Backfilling and Compaction Works for Main Lines of Rising Main Network | 21d | 2026-09-01 A | 2026-11-15 | CO-RM-SW-300 SS, CO-RM-SW-370 FF, CO-RM-SW-440 FF | 98% | 3d | 2025-10-21 | 2025-11-13 | 49d | 244.5d | Skilled Labor/Surveyor [51 h]; Foreman [51 h]; Excavator [288 h]; HDPE force main DN 800mm diameter, in trenches depth: 0- 1.5m [5]; HDPE force main DN 800mm diameter, in trenches depth: 1.51- 2.5m [111.85] | 167,010.73 | 163,670.52 | CO-RM-SW-310 | ML | BF | LM | ML | SW | CON | SW | 11 | 11 | BACK | RM | S01 |

| ID | WBS | Activity | Duration | Start | Finish | Predecessors | Complete | Remaining | Planned start | Planned finish | Total float | Free float | Resources | Cost | Actual cost | Activity ID N | Seq | New Seq | 01- Network | 07-Weightage System | 08 Stage | 09 Roads | 10 side Walk | Discipline | 02- Network-WBS | 03- Activity | 04-UOM | 05-Discipline |
| --- | --- | --- | --- | --- | --- | --- | --- | --- | --- | --- | --- | --- | --- | --- | --- | --- | --- | --- | --- | --- | --- | --- | --- | --- | --- | --- | --- | --- |
|  | MH | **Manholes** |  | 2026-01-08 | 2026-11-07 |  |  |  |  |  |  |  |  |  |  |  |  |  |  |  |  |  |  |  |  |  |  |  |
| CO-RM-SW-320 |  | Excavation Works for Main Line Manholes of Rising Main Network | 1d | 2026-01-08 A | 2026-01-15 A | CO-RM-SW-290 SS | 100% |  | 2025-09-27 | 2025-09-27 |  |  | Labor/Helper [8 h]; Skilled Labor/Surveyor [4 h]; Excavator [8 h]; HDPE force main DN 800mm diameter, in trenches depth: 0- 1.5m [6]; HDPE force main DN 800mm diameter, in trenches depth: 1.51- 2.5m [134.22] | 200,412.88 | 200,412.88 | CO-RM-SW-320 | 11 | 11 | SW | EX | CON | RM | S01 | SW |  |  |  |  |
| CO-RM-SW-330 |  | Installation RC Footing Works for Main Line Manholes of Rising Main Network | 3d | 2026-01-17 A | 2026-10-27 | CO-RM-SW-320 | 97% | 1d | 2025-09-28 | 2025-09-30 | 56d | 0d | Cons. Carpenter [48 h]; Steel Fixer [48 h]; HDPE force main DN 800mm diameter, in trenches depth: 0- 1.5m [2]; HDPE force main DN 800mm diameter, in trenches depth: 1.51- 2.5m [44.74] | 66,804.29 | 64,800.16 | CO-RM-SW-330 | 11 | 11 | SW | RC F | CON | RM | S01 | SW |  |  |  |  |
| CO-RM-SW-340 |  | Install Grp Liner Wall Works for Main Line Manholes of Rising Main Network | 6d | 2026-01-17 A | 2026-10-27 | CO-RM-SW-330 SS, CO-RM-SW-330 FF | 98% | 1d | 2025-10-01 | 2025-10-07 | 56d | 0d | Labor/Helper [96 h]; Plumber [96 h]; HDPE force main DN 800mm diameter, in trenches depth: 0- 1.5m [15]; HDPE force main DN 800mm diameter, in trenches depth: 1.51- 2.5m [335.55] | 501,032.2 | 491,011.55 | CO-RM-SW-340 | 11 | 11 | SW | LP | CON | RM | S01 | SW |  |  |  |  |
| CO-RM-SW-350 |  | Pouring Grp Liner Wall Works for Main Line Manholes of Rising Main Network | 3d | 2026-09-18 A | 2026-10-28 | CO-RM-SW-340 SS, CO-RM-SW-340 FF | 90% | 2d | 2025-10-08 | 2025-10-11 | 56d | 0d | Cons. Carpenter [48 h]; Steel Fixer [48 h]; HDPE force main DN 800mm diameter, in trenches depth: 0- 1.5m [2]; HDPE force main DN 800mm diameter, in trenches depth: 1.51- 2.5m [44.74] | 66,804.29 | 60,123.86 | CO-RM-SW-350 | 11 | 11 | SW | (New) | CON | RM | S01 | SW |  |  |  |  |
| CO-RM-SW-360 |  | Backfilling Works for Main Line Manholes of Rising Main Network | 5d | 2026-09-21 A | 2026-10-28 | CO-RM-SW-350 SS, CO-RM-SW-350 FF | 80% | 2d | 2025-10-12 | 2025-10-16 | 56d | 0d | Labor/Helper [40 h]; Skilled Labor/Surveyor [20 h]; Excavator [40 h]; HDPE force main DN 800mm diameter, in trenches depth: 0- 1.5m [3]; HDPE force main DN 800mm diameter, in trenches depth: 1.51- 2.5m [67.11] | 100,206.44 | 80,165.15 | CO-RM-SW-360 | 11 | 11 | SW | BACK | CON | RM | S01 | SW |  |  |  |  |
| CO-RM-SW-370 |  | Testing Works for Main Line Manholes of Rising Main Network | 1d | 2026-10-01 A | 2026-11-07 | CO-RM-SW-360 SS, CO-RM-SW-360 FF | 80% | 10d | 2026-12-07 | 2026-12-07 | 56d | 7d | Labor/Helper [8 h]; Plumber [8 h]; HDPE force main DN 800mm diameter, in trenches depth: 0- 1.5m [3]; HDPE force main DN 800mm diameter, in trenches depth: 1.51- 2.5m [67.11] | 100,206.44 | 80,165.15 | CO-RM-SW-370 | 11 | 11 | SW | T&COV | CON | RM | S01 | SW |  |  |  |  |
|  | VC | **Valves Chamber** |  | 2026-05-02 | 2026-11-15 |  |  |  |  |  |  |  |  |  |  |  |  |  |  |  |  |  |  |  |  |  |  |  |
| CO-RM-SW-380 |  | Excavation Works for Valve Chambers and Washout chamber of Rising Main Network | 1d | 2026-05-02 A | 2026-05-09 A | CO-RM-SW-300 SS | 100% |  | 2025-09-27 | 2025-09-27 |  |  | Labor/Helper [32 h]; Skilled Labor/Surveyor [16 h]; Excavator [32 h]; HDPE force main DN 800mm diameter, in trenches depth: 0- 1.5m [4]; HDPE force main DN 800mm diameter, in trenches depth: 1.51- 2.5m [89.48]; Washout valve 200mm, on 800mm dia. pipe [0.4]; Air release valve 110 mm dia, on 800mm dia. pipe [0.6]; Washout valve chamber [0.4]; Air release valve chamber [0.6] | 173,090.88 | 173,090.88 | CO-RM-SW-380 |  |  | SW | EX | CON | RM |  | SW |  |  |  |  |
| CO-RM-SW-390 |  | RC Footing Works for Valve Chambers and Washout chamber of Rising Main Network | 6d | 2026-05-09 A | 2026-05-12 A | CO-RM-SW-380 | 100% |  | 2025-09-28 | 2025-10-04 |  |  | Cons. Carpenter [192 h]; Steel Fixer [192 h]; HDPE force main DN 800mm diameter, in trenches depth: 0- 1.5m [1]; HDPE force main DN 800mm diameter, in trenches depth: 1.51- 2.5m [22.37]; Washout valve 200mm, on 800mm dia. pipe [0.1]; Air release valve 110 mm dia, on 800mm dia. pipe [0.15]; Washout valve chamber [0.1]; Air release valve chamber [0.15] | 43,272.72 | 43,272.72 | CO-RM-SW-390 |  |  | SW | RC F | CON | RM |  | SW |  |  |  |  |
| CO-RM-SW-400 |  | RC Wall Works for Valve Chambers and Washout chamber of Rising Main Network | 7d | 2026-05-14 A | 2026-10-27 | CO-RM-SW-390 | 70% | 0d | 2025-10-05 | 2025-10-12 | 49d | 0d | Cons. Carpenter [224 h]; Steel Fixer [224 h]; HDPE force main DN 800mm diameter, in trenches depth: 0- 1.5m [9]; HDPE force main DN 800mm diameter, in trenches depth: 1.51- 2.5m [201.33]; Washout valve 200mm, on 800mm dia. pipe [0.9]; Air release valve 110 mm dia, on 800mm dia. pipe [1.35]; Washout valve chamber [0.9]; Air release valve chamber [1.35] | 389,454.48 | 272,618.14 | CO-RM-SW-400 |  |  | SW | RC W | CON | RM |  | SW |  |  |  |  |
| CO-RM-SW-410 |  | RC Slab Works for Valve Chambers and Washout chamber of Rising Main Network | 7d | 2026-10-27 | 2026-11-03 | CO-RM-SW-400 |  |  |  |  | 49d | 0d | Cons. Carpenter [224 h]; Steel Fixer [224 h]; HDPE force main DN 800mm diameter, in trenches depth: 0- 1.5m [1]; HDPE force main DN 800mm diameter, in trenches depth: 1.51- 2.5m [22.37]; Washout valve 200mm, on 800mm dia. pipe [0.1]; Air release valve 110 mm dia, on 800mm dia. pipe [0.15]; Washout valve chamber [0.1]; Air release valve chamber [0.15] | 43,272.72 |  | CO-RM-SW-410 |  |  | SW | RC S | CON | RM |  | SW |  |  |  |  |
| CO-RM-SW-420 |  | Insulation Works for Valve Chambers and Washout chamber of Rising Main Network | 2d | 2026-11-04 | 2026-11-05 | CO-RM-SW-410 |  |  |  |  | 49d | 0d | Labor/Helper [64 h]; Plumber [64 h]; HDPE force main DN 800mm diameter, in trenches depth: 0- 1.5m [1]; HDPE force main DN 800mm diameter, in trenches depth: 1.51- 2.5m [22.37]; Washout valve 200mm, on 800mm dia. pipe [0.1]; Air release valve 110 mm dia, on 800mm dia. pipe [0.15]; Washout valve chamber [0.1]; Air release valve chamber [0.15] | 43,272.72 |  | CO-RM-SW-420 |  |  | SW | INSUL | CON | RM |  | SW |  |  |  |  |
| CO-RM-SW-430 |  | Backfilling Works for Valve Chambers and Washout chamber of Rising Main Network | 5d | 2026-11-07 | 2026-11-11 | CO-RM-SW-420 |  |  |  |  | 49d | 0d | Labor/Helper [80 h]; Skilled Labor/Surveyor [40 h]; Excavator [80 h]; HDPE force main DN 800mm diameter, in trenches depth: 0- 1.5m [1]; HDPE force main DN 800mm diameter, in trenches depth: 1.51- 2.5m [22.37]; Washout valve 200mm, on 800mm dia. pipe [0.2]; Air release valve 110 mm dia, on 800mm dia. pipe [0.3]; Washout valve chamber [0.2]; Air release valve chamber [0.3] | 53,143.29 |  | CO-RM-SW-430 |  |  | SW | BACK | CON | RM |  | SW |  |  |  |  |
| CO-RM-SW-440 |  | Testing and Covering Works for Valve Chambers and Washout chamber of Rising Main Network | 3d | 2026-11-12 | 2026-11-15 | CO-RM-SW-430 |  |  |  |  | 49d | 0d | Labor/Helper [72 h]; Plumber [72 h]; HDPE force main DN 800mm diameter, in trenches depth: 0- 1.5m [2]; HDPE force main DN 800mm diameter, in trenches depth: 1.51- 2.5m [44.74]; Washout valve 200mm, on 800mm dia. pipe [0.2]; Air release valve 110 mm dia, on 800mm dia. pipe [0.3]; Washout valve chamber [0.2]; Air release valve chamber [0.3] | 86,545.44 |  | CO-RM-SW-440 |  |  | SW | T&COVER | CON | RM |  | SW |  |  |  |  |
|  | 2 | **Road 09 Local 2 ( 2278 LM )** |  | 2025-03-26 | 2027-06-08 |  |  |  |  |  |  |  |  |  |  |  |  |  |  |  |  |  |  |  |  |  |  |  |
|  | SW_1 | **SW_1** |  | 2025-03-26 | 2027-05-30 |  |  |  |  |  |  |  |  |  |  |  |  |  |  |  |  |  |  |  |  |  |  |  |
|  | EW | **Earthworks** |  | 2025-03-26 | 2025-05-31 |  |  |  |  |  |  |  |  |  |  |  |  |  |  |  |  |  |  |  |  |  |  |  |
|  | EW | **Earthworks** |  | 2025-03-26 | 2025-05-31 |  |  |  |  |  |  |  |  |  |  |  |  |  |  |  |  |  |  |  |  |  |  |  |
| CO-R09.S01-EW-110 |  | Embankments Works Upto Design Level for Earthworks-[Road 09] -[SW-1] | 10d | 2025-03-26 A | 2025-05-03 A | CO-R09.S01-EW-100, ENG-MS-RD-A-10, ENG-SH-RD-A-100 | 100% |  | 2025-06-28 | 2025-07-08 |  |  | Labor/Helper [1040 h]; Skilled Labor/Surveyor [130 h]; Foreman [130 h]; Water Tank [1560 h]; Dozer [1560 h]; Embankments to the ROW, with suitable material other than top soil or rock according to specifications [53596.5] | 434,131.89 | 434,131.89 | CO-R09.S01-EW-110 | 11 | 11 | EW |  | CON | R09 | S01 | EW | EW | BF | Cub.m | EW |
| CO-R09.S01-EW-100 |  | Roadway Excavation Works Upto Design Level for Earthworks-[Road 09] -[SW-1] | 10d | 2025-05-25 A | 2025-05-31 A | MS-CF-MOB, MS-CF-EBL, MS-CF-ENG, ENG-MS-RD-A-10, ENG-SH-RD-A-100, CO-R10.S04-ES-EW-100 | 100% |  | 2025-06-16 | 2025-06-26 |  |  | Labor/Helper [960 h]; Skilled Labor/Surveyor [120 h]; Foreman [120 h]; Water Tank [1152 h]; Dozer [1152 h]; Roadway Excavation for cuttings; on any type of material for all depths including trimming and Preparation of excavated surfaces and disposal. [31838.6] | 200,583.31 | 200,583.31 | CO-R09.S01-EW-100 | 11 | 11 | EW |  | CON | R09 | S01 | EW | EW | Ex | Cub.m | EW |
|  | SW | **Sewage Network** |  | 2025-09-01 | 2026-10-13 |  |  |  |  |  |  |  |  |  |  |  |  |  |  |  |  |  |  |  |  |  |  |  |
|  | ML | **Main Line Sections** |  | 2025-09-01 | 2026-05-05 |  |  |  |  |  |  |  |  |  |  |  |  |  |  |  |  |  |  |  |  |  |  |  |
| CO-R09.S01-SW-100 |  | Trench Excavation and Bedding Works for Main Lines of Sewage Network-[Road 09] -[SW-1] | 10d | 2025-09-01 A | 2025-09-04 A | CO-R09.S01-EW-110, ENG-MS-SW-ML-A-110, ENG-SH-SW-ML-A-110, CO-R10.S04-ES-SW-100 | 100% |  | 2025-07-09 | 2025-07-20 |  |  | Skilled Labor/Surveyor [24 h]; Foreman [24 h]; Excavator [288 h]; Nominal bore : 160mm; Depth : 1.5m - 2.5m [40]; Nominal bore : 200mm; Depth : 0.0m - 1.5m [10.97]; Nominal bore : 200mm; Depth : 1.5m - 2.5m [30.16]; Nominal bore : 200mm; Depth : 2.5m - 3.5m [44.1]; Nominal bore : 200mm; Depth : 3.5m - 4.5m [51.01]; Nominal bore : 200mm; Depth : 4.5m -5.5m [25.19]; Nominal bore : 200mm; Depth : 5.5m - 6.5m [32.68]; Nominal bore : 250mm; Depth : 4.5m -5.5m [44]; Nominal bore : 250mm; Depth : 5.5m - 6.5m [36]; Nominal bore : 315mm; Depth : 4.5m -5.5m [36]; Nominal bore : 315mm; Depth : 6.5m - 7.5m [40]; Depth : 6.5 -7.5m [50]; Depth :more than 7.5m [120] | 353,398.99 | 353,398.99 | CO-R09.S01-SW-100 | 11 | 11 | SW | EX | CON | R09 | S01 | SW | ML | Ex | LM | ML |
| CO-R09.S01-SW-120 |  | Pipes Laying Works for Main Lines of Sewage Network-[Road 09] -[SW-1] | 12d | 2025-09-06 A | 2025-09-15 A | PRO-SW-1DL-100, MS-CS-SW, CO-R09.S01-SW-100, PRO-R09-SW-DL-100 | 100% |  | 2025-07-21 | 2025-08-03 |  |  | Labor/Helper [768 h]; Skilled Labor/Surveyor [39 h]; Foreman [39 h]; Plumber [384 h]; Excavator [384 h]; Nominal bore : 160mm; Depth : 0.0m - 1.5m [788.46]; Nominal bore : 160mm; Depth : 1.5m - 2.5m [120]; Nominal bore : 200mm; Depth : 0.0m - 1.5m [32.9]; Nominal bore : 200mm; Depth : 1.5m - 2.5m [90.49]; Nominal bore : 200mm; Depth : 2.5m - 3.5m [132.3]; Nominal bore : 200mm; Depth : 3.5m - 4.5m [153.04]; Nominal bore : 200mm; Depth : 4.5m -5.5m [75.58]; Nominal bore : 200mm; Depth : 5.5m - 6.5m [98.03]; Nominal bore : 250mm; Depth : 4.5m -5.5m [132]; Nominal bore : 250mm; Depth : 5.5m - 6.5m [108]; Nominal bore : 315mm; Depth : 4.5m -5.5m [108]; Nominal bore : 315mm; Depth : 6.5m - 7.5m [120]; Depth : 6.5 -7.5m [150]; Depth :more than 7.5m [360] | 1,184,868.87 | 1,184,868.87 | CO-R09.S01-SW-120 | 11 | 11 | SW | PIPE | CON | R09 | S01 | SW | ML | PL | LM | ML |
| CO-R09.S01-SW-130 |  | Trench Backfilling and Compaction Works for Main Lines of Sewage Network-[Road 09] -[SW-1] | 12d | 2025-10-24 A | 2026-05-05 A | ENG-SH-SW-ML-A-110 FF, ENG-MS-SW-ML-A-110 FF, CO-R09.S01-SW-120 | 100% |  | 2025-08-04 | 2025-08-17 |  |  | Skilled Labor/Surveyor [29 h]; Foreman [29 h]; Excavator [288 h]; Nominal bore : 160mm; Depth : 1.5m - 2.5m [20]; Nominal bore : 200mm; Depth : 0.0m - 1.5m [5.48]; Nominal bore : 200mm; Depth : 1.5m - 2.5m [15.08]; Nominal bore : 200mm; Depth : 2.5m - 3.5m [22.05]; Nominal bore : 200mm; Depth : 3.5m - 4.5m [25.51]; Nominal bore : 200mm; Depth : 4.5m -5.5m [12.6]; Nominal bore : 200mm; Depth : 5.5m - 6.5m [16.34]; Nominal bore : 250mm; Depth : 4.5m -5.5m [22]; Nominal bore : 250mm; Depth : 5.5m - 6.5m [18]; Nominal bore : 315mm; Depth : 4.5m -5.5m [18]; Nominal bore : 315mm; Depth : 6.5m - 7.5m [20]; Depth : 6.5 -7.5m [25]; Depth :more than 7.5m [60] | 176,699.49 | 176,699.49 | CO-R09.S01-SW-130 | 11 | 11 | SW | BACK | CON | R09 | S01 | SW | ML | BF | LM | ML |

| ID | WBS | Activity | Duration | Start | Finish | Predecessors | Complete | Remaining | Planned start | Planned finish | Total float | Free float | Resources | Cost | Actual cost | Activity ID N | Seq | New Seq | 01- Network | 07-Weightage System | 08 Stage | 09 Roads | 10 side Walk | Discipline | 02- Network-WBS | 03- Activity | 04-UOM | 05-Discipline |
| --- | --- | --- | --- | --- | --- | --- | --- | --- | --- | --- | --- | --- | --- | --- | --- | --- | --- | --- | --- | --- | --- | --- | --- | --- | --- | --- | --- | --- |
|  | MH | **Manholes** |  | 2025-10-12 | 2026-10-13 |  |  |  |  |  |  |  |  |  |  |  |  |  |  |  |  |  |  |  |  |  |  |  |
| CO-R09.S01-SW-160 |  | Excavation Works for Main Line Manholes of Sewage Network-[Road 09] -[SW-1] | 1d | 2025-10-12 A | 2025-10-15 A | CO-R09.S01-SW-100 SS, CO-R09.S01-SW-120 SS, PRO-R09-SW-DL-110 | 100% |  | 2025-07-21 | 2025-07-21 |  |  | Labor/Helper [8 h]; Skilled Labor/Surveyor [4 h]; Excavator [8 h]; Depth: 1.5 - 2.5m [0.75]; Depth: 3.5 - 4.5m [0.15]; Depth: 4.5 - 5.5m [0.3]; Depth:6.5 - 7.5m [0.75]; Depth: more than 7.5m [0.3]; Depth: 2.5 - 3.5m [0.75]; Depth: 3.5 - 4.5m [0.45]; Depth: 5.5 - 6.5m [0.3]; Depth:6.5 - 7.5m [1.05] | 106,483.27 | 106,483.27 | CO-R09.S01-SW-160 | 11 | 11 | SW | EX | CON | R09 | S01 | SW |  |  |  |  |
| CO-R09.S01-SW-170 |  | Installation RC Footing Works for Main Line Manholes of Sewage Network-[Road 09] -[SW-1] | 3d | 2025-10-13 A | 2025-10-16 A | CO-R09.S01-SW-160 | 100% |  | 2025-07-22 | 2025-07-24 |  |  | Cons. Carpenter [48 h]; Steel Fixer [48 h]; Depth: 1.5 - 2.5m [0.5]; Depth: 3.5 - 4.5m [0.1]; Depth: 4.5 - 5.5m [0.2]; Depth:6.5 - 7.5m [0.5]; Depth: more than 7.5m [0.2]; Depth: 2.5 - 3.5m [0.5]; Depth: 3.5 - 4.5m [0.3]; Depth: 5.5 - 6.5m [0.2]; Depth:6.5 - 7.5m [0.7] | 70,988.84 | 70,988.84 | CO-R09.S01-SW-170 | 11 | 11 | SW | RC F | CON | R09 | S01 | SW |  |  |  |  |
| CO-R09.S01-SW-180 |  | Install Grp Liner Wall Works for Main Line Manholes of Sewage Network-[Road 09] -[SW-1] | 6d | 2025-10-13 A | 2025-10-16 A | CO-R09.S01-SW-170 | 100% |  | 2025-07-26 | 2025-07-31 |  |  | Labor/Helper [96 h]; Plumber [96 h]; Depth: 1.5 - 2.5m [2]; Depth: 3.5 - 4.5m [0.4]; Depth: 4.5 - 5.5m [0.8]; Depth:6.5 - 7.5m [2]; Depth: more than 7.5m [0.8]; Depth: 2.5 - 3.5m [2]; Depth: 3.5 - 4.5m [1.2]; Depth: 5.5 - 6.5m [0.8]; Depth:6.5 - 7.5m [2.8] | 283,955.38 | 283,955.38 | CO-R09.S01-SW-180 | 11 | 11 | SW | LP | CON | R09 | S01 | SW |  |  |  |  |
| CO-R09.S01-SW-190 |  | Pouring Grp Liner Wall Works for Main Line Manholes of Sewage Network-[Road 09] -[SW-1] | 3d | 2025-10-14 A | 2025-10-18 A | CO-R09.S01-SW-180 | 100% |  | 2025-08-02 | 2025-08-04 |  |  | Cons. Carpenter [48 h]; Steel Fixer [48 h]; Depth: 1.5 - 2.5m [0.25]; Depth: 3.5 - 4.5m [0.05]; Depth: 4.5 - 5.5m [0.1]; Depth:6.5 - 7.5m [0.25]; Depth: more than 7.5m [0.1]; Depth: 2.5 - 3.5m [0.25]; Depth: 3.5 - 4.5m [0.15]; Depth: 5.5 - 6.5m [0.1]; Depth:6.5 - 7.5m [0.35] | 35,494.42 | 35,494.42 | CO-R09.S01-SW-190 | 11 | 11 | SW | (New) | CON | R09 | S01 | SW |  |  |  |  |
| CO-R09.S01-SW-200 |  | Backfilling Works for Main Line Manholes of Sewage Network-[Road 09] -[SW-1] | 5d | 2025-10-15 A | 2025-10-20 A | CO-R09.S01-SW-190 | 100% |  | 2025-08-05 | 2025-08-10 |  |  | Labor/Helper [40 h]; Skilled Labor/Surveyor [20 h]; Excavator [40 h]; Depth: 1.5 - 2.5m [0.75]; Depth: 3.5 - 4.5m [0.15]; Depth: 4.5 - 5.5m [0.3]; Depth:6.5 - 7.5m [0.75]; Depth: more than 7.5m [0.3]; Depth: 2.5 - 3.5m [0.75]; Depth: 3.5 - 4.5m [0.45]; Depth: 5.5 - 6.5m [0.3]; Depth:6.5 - 7.5m [1.05] | 106,483.27 | 106,483.27 | CO-R09.S01-SW-200 | 11 | 11 | SW | BACK | CON | R09 | S01 | SW |  |  |  |  |
| CO-R09.S01-SW-210 |  | Testing Works for Main Line Manholes of Sewage Network-[Road 09] -[SW-1] | 1d | 2026-10-13 A | 2026-10-13 A | CO-R09.S01-SW-200 | 100% |  |  |  |  |  | Labor/Helper [8 h]; Plumber [8 h]; Depth: 1.5 - 2.5m [0.25]; Depth: 3.5 - 4.5m [0.05]; Depth: 4.5 - 5.5m [0.1]; Depth:6.5 - 7.5m [0.25]; Depth: more than 7.5m [0.1]; Depth: 2.5 - 3.5m [0.25]; Depth: 3.5 - 4.5m [0.15]; Depth: 5.5 - 6.5m [0.1]; Depth:6.5 - 7.5m [0.35] | 35,494.42 | 35,494.42 | CO-R09.S01-SW-210 | 11 | 11 | SW | T&COV | CON | R09 | S01 | SW |  |  |  |  |
|  | SD | **Storm Drainage Network** |  | 2025-10-16 | 2026-11-15 |  |  |  |  |  |  |  |  |  |  |  |  |  |  |  |  |  |  |  |  |  |  |  |
|  | ML | **Main Line Sections** |  | 2025-10-16 | 2026-03-11 |  |  |  |  |  |  |  |  |  |  |  |  |  |  |  |  |  |  |  |  |  |  |  |
| CO-R09.S01-SD-100 |  | Trench Excavation and Bedding Works for Main Lines of Storm Drainage Network-[Road 09] -[SW-1] | 10d | 2025-10-16 A | 2026-03-10 A | ENG-SH-SD-ML-A-110, CO-R09.S01-EW-110, CO-R09.S01-EW-100, MS-CS-PS SS, ENG-MS-SD-ML-A-110, CO-R09.S01-SW-130 SS+3d, CO-R09.S01-SW-130 FF+3d, CO-R10.S04-ES-SD-100 | 100% |  | 2025-09-08 | 2025-09-18 |  |  | Skilled Labor/Surveyor [8 h]; Foreman [8 h]; Excavator [160 h]; Pipe with diameter 400mm ; depth: 0.0m - 1.5m [18.55]; Pipe with diameter 600mm ; depth: 0.0m - 1.5m [10]; Pipe with diameter 700mm ; depth: 1.51m - 2.5m [20]; Pipe with diameter 700mm ; depth: 2.51m - 3.5m [10]; Pipe with diameter 800mm ; depth: 1.51m - 2.5m [11.2]; Pipe with diameter 1100mm ; depth: 1.51m - 2.5m [66.7]; Pipe with diameter 1100mm ; depth: 2.51 - 3.5m [17.4] | 100,408.21 | 100,408.21 | CO-R09.S01-SD-100 | 11 | 11 | SD | EX | CON | R09 | S01 | SD | ML | Ex | LM | ML |
| CO-R09.S01-SD-120 |  | Pipes Laying Works for Main Lines of Storm Drainage Network-[Road 09] -[SW-1] | 10d | 2025-10-18 A | 2026-03-11 A | PRO-SD-1DL-110, CO-R09.S01-SD-100, CO-R09.S01-SW-120 | 100% |  | 2025-09-20 | 2025-10-01 |  |  | Labor/Helper [320 h]; Skilled Labor/Surveyor [16 h]; Foreman [16 h]; Plumber [160 h]; Excavator [336 h]; Pipe with diameter 400mm ; depth: 0.0m - 1.5m [55.65]; Pipe with diameter 600mm ; depth: 0.0m - 1.5m [30]; Pipe with diameter 700mm ; depth: 1.51m - 2.5m [60]; Pipe with diameter 700mm ; depth: 2.51m - 3.5m [30]; Pipe with diameter 800mm ; depth: 1.51m - 2.5m [33.6]; Pipe with diameter 1000mm ; depth: 2.51 - 3.5m [354.81]; Pipe with diameter 1100mm ; depth: 1.51m - 2.5m [200.1]; Pipe with diameter 1100mm ; depth: 2.51 - 3.5m [52.2]; Pipe encasement dia 300 mm [44.96]; Pipe encasement dia 400 mm [23.04]; Pipe encasement dia 500 mm [16.72]; Pipe encasement dia 600 mm [8.22]; Pipe encasement dia 700 mm [14.54]; Pipe encasement dia 800 mm [7.4]; Pipe encasement dia 900 mm [4.94]; Pipe encasement dia 1000 mm [5.2]; Pipe encasement dia 1100 mm [4.66]; Pipe encasement dia 1200 mm [2.74]; Box Conduit with dimensions 1200*1200 mm ; depth: 0.0m - 1.5m [75]; Box Conduit with dimensions 1200*1200 mm ; depth: 2.51m - 3.5m [678]; Box Conduit with dimensions 1500*1200 mm ; depth: 2.51m - 3.5m [543]; Box Conduit with dimensions 1500*1500 mm ; depth: 2.51m - 3.5m [270]; Box Conduit with dimensions 2000*1200 mm ; depth: 2.51m - 3.5m [485] | 8,367,296.97 | 8,367,296.97 | CO-R09.S01-SD-120 | 11 | 11 | SD | PIPE | CON | R09 | S01 | SD | ML | PL | LM | ML |
| CO-R09.S01-SD-130 |  | Trench Backfilling and Compaction Works for Main Lines of Storm Drainage Network-[Road 09] -[SW-1] | 20d | 2025-12-18 A | 2026-03-11 A | ENG-SH-SD-ML-A-110 FF, ENG-MS-SD-ML-A-110 FF, CO-R09.S01-SD-120, CO-R09.S01-SD-220 FF, CO-R09.S01-SW-130 | 100% |  | 2025-10-27 | 2025-11-18 |  |  | Skilled Labor/Surveyor [16 h]; Foreman [16 h]; Excavator [160 h]; Pipe with diameter 400mm ; depth: 0.0m - 1.5m [9.28]; Pipe with diameter 600mm ; depth: 0.0m - 1.5m [5]; Pipe with diameter 700mm ; depth: 1.51m - 2.5m [10]; Pipe with diameter 700mm ; depth: 2.51m - 3.5m [5]; Pipe with diameter 800mm ; depth: 1.51m - 2.5m [5.6]; Pipe with diameter 1100mm ; depth: 1.51m - 2.5m [33.35]; Pipe with diameter 1100mm ; depth: 2.51 - 3.5m [8.7] | 50,204.1 | 50,204.1 | CO-R09.S01-SD-130 | 11 | 11 | SD | BACK | CON | R09 | S01 | SD | ML | BF | LM | ML |
|  | MH | **Manholes** |  | 2025-12-11 | 2026-11-15 |  |  |  |  |  |  |  |  |  |  |  |  |  |  |  |  |  |  |  |  |  |  |  |
| CO-R09.S01-SD-180 |  | Trench Excavation and Bedding Works for Manholes of Storm Drainage Network-[Road 09] -[SW-1] | 2d | 2025-12-11 A | 2025-12-15 A | CO-R09.S01-SD-120 SS, PRO-SD-1DL-100, MS-CS-SD, CO-R09.S01-SD-100 | 100% |  | 2025-09-20 | 2025-09-21 |  |  | Labor/Helper [48 h]; Skilled Labor/Surveyor [24 h]; Excavator [48 h]; MH ; depth: 0.0m - 1.5m [0.45]; MH ; depth: 1.51m - 2.5m [1.2]; MH ; depth: 2.51 - 3.5m [0.3]; MH ; depth: 0.0m - 1.5m [0.3]; MH ; depth: 2.51 - 3.5m [0.15]; MH ; depth: 1.51m - 2.5m [0.6]; MH ; depth: 2.51 - 3.5m [0.6] | 57,583.28 | 57,583.28 | CO-R09.S01-SD-180 | 11 | 11 | SD | EX | CON | R09 | S01 | SD |  |  |  |  |
| CO-R09.S01-SD-190 |  | Install RC Footing Works for Manholes of Storm Drainage Network-[Road 09] -[SW-1] | 3d | 2025-12-11 A | 2025-12-15 A | CO-R09.S01-SD-180 | 100% |  | 2025-09-22 | 2025-09-25 |  |  | Cons. Carpenter [144 h]; Steel Fixer [144 h]; MH ; depth: 0.0m - 1.5m [0.15]; MH ; depth: 1.51m - 2.5m [0.4]; MH ; depth: 2.51 - 3.5m [0.1]; MH ; depth: 0.0m - 1.5m [0.1]; MH ; depth: 2.51 - 3.5m [0.05]; MH ; depth: 1.51m - 2.5m [0.2]; MH ; depth: 2.51 - 3.5m [0.2] | 19,194.43 | 19,194.43 | CO-R09.S01-SD-190 | 11 | 11 | SD | RC F | CON | R09 | S01 | SD |  |  |  |  |
| CO-R09.S01-SD-200 |  | Install RC Wall Rings & Slab Works for Manholes of Storm Drainage Network-[Road 09] -[SW-1] | 7d | 2025-12-11 A | 2025-12-15 A | CO-R09.S01-SD-190 | 100% |  | 2025-09-27 | 2025-10-04 |  |  | Cons. Carpenter [224 h]; Steel Fixer [224 h]; MH ; depth: 0.0m - 1.5m [1.35]; MH ; depth: 1.51m - 2.5m [3.6]; MH ; depth: 2.51 - 3.5m [0.9]; MH ; depth: 0.0m - 1.5m [0.9]; MH ; depth: 2.51 - 3.5m [0.45]; MH ; depth: 1.51m - 2.5m [1.8]; MH ; depth: 2.51 - 3.5m [1.8] | 172,749.85 | 172,749.85 | CO-R09.S01-SD-200 | 11 | 11 | SD | RC W | CON | R09 | S01 | SD |  |  |  |  |
| CO-R09.S01-SD-220 |  | Backfilling Works for Manholes of Storm Drainage Network-[Road 09] -[SW-1] | 7d | 2026-05-02 A | 2026-05-09 A | CO-R09.S01-SD-200 | 100% |  | 2025-10-07 | 2025-10-14 |  |  | Labor/Helper [112 h]; Skilled Labor/Surveyor [56 h]; Excavator [112 h]; MH ; depth: 0.0m - 1.5m [0.6]; MH ; depth: 1.51m - 2.5m [1.6]; MH ; depth: 2.51 - 3.5m [0.4]; MH ; depth: 0.0m - 1.5m [0.4]; MH ; depth: 2.51 - 3.5m [0.2]; MH ; depth: 1.51m - 2.5m [0.8]; MH ; depth: 2.51 - 3.5m [0.8] | 76,777.71 | 76,777.71 | CO-R09.S01-SD-220 | 11 | 11 | SD | BACK | CON | R09 | S01 | SD |  |  |  |  |
| CO-R09.S01-SD-210 |  | Testing Works for Manholes of Storm Drainage Network-[Road 09] -[SW-1] | 2d | 2026-10-07 A | 2026-11-15 | CO-R09.S01-SD-200, CO-R09.S02-SD-210 SS+2d | 60% | 17d | 2026-10-07 | 2026-10-08 | 23d | 195d | Labor/Helper [48 h]; Plumber [48 h]; MH ; depth: 0.0m - 1.5m [0.3]; MH ; depth: 1.51m - 2.5m [0.8]; MH ; depth: 2.51 - 3.5m [0.2]; MH ; depth: 0.0m - 1.5m [0.2]; MH ; depth: 2.51 - 3.5m [0.1]; MH ; depth: 1.51m - 2.5m [0.4]; MH ; depth: 2.51 - 3.5m [0.4] | 38,388.86 | 23,033.31 | CO-R09.S01-SD-210 | 11 | 11 | SD | T&COV | CON | R09 | S01 | SD |  |  |  |  |
|  | CB | **Catch Basin Sections** |  | 2026-06-14 | 2026-10-31 |  |  |  |  |  |  |  |  |  |  |  |  |  |  |  |  |  |  |  |  |  |  |  |
| CO-R09.S01-SD-160 |  | Testing Works for Catch Basins of Storm Drainage Network-[Road 09] -[SW-1] | 7d | 2026-06-14 A | 2026-10-31 | CO-R09.S01-SD-120 SS+3d, CO-R09.S01-SD-120 FF+3d, PRO-SD-1DL-120, CO-R09.S01-SD-150 FF+1d | 90% | 4d | 2026-10-14 | 2026-10-21 | -138d | 0d | Labor/Helper [112 h]; Skilled Labor/Surveyor [6 h]; Foreman [6 h]; Plumber [56 h]; Excavator [56 h]; Pipe with diameter 300mm ; depth: 0 - 1.5m [112.41]; Pipe with diameter 400mm ; depth: 0 - 1.5m [6.85] | 27,719.4 | 24,947.46 | CO-R09.S01-SD-160 | 11 | 11 | SD | TEST | CON | R09 | S01 | SD | CB | PL | Each | CB |
| CO-R09.S01-SD-140 |  | Trench Excavation and Bedding Works for Catch Basins of Storm Drainage Network-[Road 09] -[SW-1] | 6d | 2026-06-27 A | 2026-10-29 | CO-R09.S01-EW-110, ENG-SH-SD-CB-A-110, ENG-MS-SD-CB-A-110, CO-R09.S01-SD-220, CO-R09.S02-SD-140 SS+2d, CO-R09.S02-SD-140 FF+2d | 90% | 1d | 2025-10-15 | 2025-10-21 | -138d | 0d | Skilled Labor/Surveyor [5 h]; Foreman [5 h]; Excavator [80 h]; Pipe with diameter 300mm ; depth: 0 - 1.5m [168.62]; Pipe with diameter 400mm ; depth: 0 - 1.5m [10.28] | 41,579.1 | 37,421.19 | CO-R09.S01-SD-140 | 11 | 11 | SD | EX | CON | R09 | S01 | SD | CB | Ex | Each | CB |
| CO-R09.S01-SD-150 |  | Installation and Pipes Laying Connection Works for Catch Basins of Storm Drainage Network-[Road 09] -[SW-1] | 7d | 2026-06-29 A | 2026-10-29 | CO-R09.S01-SD-140 SS, PRO-SD-1DL-130, CO-R09.S02-SD-150 SS+2d, CO-R09.S01-SD-140 FF | 90% | 1d | 2025-10-22 | 2025-10-29 | -138d | 0d | Labor/Helper [112 h]; Skilled Labor/Surveyor [6 h]; Foreman [6 h]; Excavator [80 h]; Pipe with diameter 300mm ; depth: 0 - 1.5m [505.85]; Pipe with diameter 400mm ; depth: 0 - 1.5m [30.84] | 124,737.3 | 112,263.57 | CO-R09.S01-SD-150 | 11 | 11 | SD | INSTALL | CON | R09 | S01 | SD | CB | CB | Each | CB |
| CO-R09.S01-SD-170 |  | Trench Backfilling and Compaction Works for Catch Basins of Storm Drainage Network-[Road 09] -[SW-1] | 10d | 2026-08-03 A | 2026-10-31 | CO-R09.S01-SD-160 FF, CO-R09.S02-SD-170 SS+2d | 90% | 1d | 2025-11-08 | 2025-11-18 | -138d | 42d | Skilled Labor/Surveyor [8 h]; Foreman [8 h]; Excavator [80 h]; Pipe with diameter 300mm ; depth: 0 - 1.5m [224.82]; Pipe with diameter 400mm ; depth: 0 - 1.5m [13.71] | 55,438.8 | 49,894.92 | CO-R09.S01-SD-170 | 11 | 11 | SD | BACK | CON | R09 | S01 | SD | CB | BF | Each | CB |
|  | IR | **Irrigation Network** |  | 2025-11-29 | 2026-11-03 |  |  |  |  |  |  |  |  |  |  |  |  |  |  |  |  |  |  |  |  |  |  |  |
|  | ML | **Main Line Pipes** |  | 2025-11-29 | 2026-11-03 |  |  |  |  |  |  |  |  |  |  |  |  |  |  |  |  |  |  |  |  |  |  |  |
| CO-R09.S01-IR-100 |  | Trench Excavation and Bedding Works for Main Lines of Irrigation Network-[Road 09] -[SW-1] | 7d | 2025-11-29 A | 2025-12-01 A | ENG-SH-IR-ML-A-110, CO-R09.S01-EW-110, ENG-MS-IR-ML-A-110 | 100% |  | 2025-11-19 | 2025-11-26 |  |  | Skilled Labor/Surveyor [6 h]; Foreman [6 h]; Excavator [56 h]; 125 mm pipe; depth 0.0m - 1.5m [573] | 42,614.01 | 42,614.01 | CO-R09.S01-IR-100 | 11 | 11 | IR | EX | CON | R09 | S01 | IR | ML | Ex | LM | ML |
| CO-R09.S01-IR-110 |  | Pipes Laying Works for Main Lines of Irrigation Network-[Road 09] -[SW-1] | 10d | 2025-11-30 A | 2026-04-04 A | CO-R09.S01-IR-100, PRO-IR-1DL-100, MS-CS-IR, CO-R09.S01-SD-120, PRO-R09-IR-DL-100 FF+3d | 100% |  | 2025-11-27 | 2025-12-08 |  |  | Labor/Helper [160 h]; Skilled Labor/Surveyor [8 h]; Foreman [8 h]; Plumber [80 h]; Excavator [80 h]; 125 mm pipe; depth 0.0m - 1.5m [8075.76]; 500. mm pipe; depth 1.5m - 3.0m [1455.88] | 1,419,965.83 | 1,419,965.83 | CO-R09.S01-IR-110 | 11 | 11 | IR | PIPE | CON | R09 | S01 | IR | ML | PL | LM | ML |
| CO-R09.S01-IR-140 |  | Trench Backfilling and Compaction Works for Main Lines of Irrigation Network-[Road 09] -[SW-1] | 10d | 2026-04-09 A | 2026-04-19 A | CO-R09.S01-IR-110 | 100% |  | 2026-10-21 | 2026-11-01 |  |  | Skilled Labor/Surveyor [8 h]; Foreman [8 h]; Excavator [80 h]; 125 mm pipe; depth 0.0m - 1.5m [286.5] | 21,307.01 | 21,307.01 | CO-R09.S01-IR-140 | 11 | 11 | IR | BACK | CON | R09 | S01 | IR | ML | BF | LM | ML |
| CO-R09.S01-IR-120 |  | Installation Works for Main Line Valves of Irrigation Network-[Road 09] -[SW-1] | 7d | 2026-10-27 | 2026-11-03 | CO-R09.S01-IR-110, PRO-IR-1DL-110 FF, PRO-R09-IR-DL-110 FF+3d |  |  |  |  | -195.5d | 0d | Labor/Helper [112 h]; Skilled Labor/Surveyor [6 h]; Foreman [6 h]; Plumber [112 h]; Gate valves dia (90)mm on pipes with dia (125) mm. [22]; Wash out valve with dia (100)mm on pipes with dia (125) mm [2]; Wash out chamber; on 125 mm dia pipeline Depth 1.5 - 3m [2] | 118,783.66 |  | CO-R09.S01-IR-120 | 11 | 11 | IR | VALV | CON | R09 | S01 | IR | ML | VI | Each | ML |

| ID | WBS | Activity | Duration | Start | Finish | Predecessors | Complete | Remaining | Planned start | Planned finish | Total float | Free float | Resources | Cost | Actual cost | Activity ID N | Seq | New Seq | 02- Network-WBS | 03- Activity | 04-UOM | 05-Discipline | 01- Network | 07-Weightage System | 08 Stage | 09 Roads | 10 side Walk | Discipline |
| --- | --- | --- | --- | --- | --- | --- | --- | --- | --- | --- | --- | --- | --- | --- | --- | --- | --- | --- | --- | --- | --- | --- | --- | --- | --- | --- | --- | --- |
|  | SL | **Street Lighting Network** |  | 2026-11-04 | 2027-04-27 |  |  |  |  |  |  |  |  |  |  |  |  |  |  |  |  |  |  |  |  |  |  |  |
|  | LP | **Lighting Poles Works** |  | 2026-11-04 | 2027-01-24 |  |  |  |  |  |  |  |  |  |  |  |  |  |  |  |  |  |  |  |  |  |  |  |
| CO-R09.S01-SL-100 |  | Foundation Excavation Works for Lighting Poles of Street Lighting Network-[Road 09] -[SW-1] | 10d | 2026-11-04 | 2026-11-15 | CO-R09.S01-EW-110, ENG-SH-SL-A-110, CO-R09.S01-EW-100, PRO-SL-1DL-110, ENG-MS-SL-A-110, CO-R09.S01-IR-100 SS+3d, CO-R09.S01-IR-140, CO-R09.S01-IR-120 |  |  |  |  | -195.5d | 0d | Labor/Helper [160 h]; Skilled Labor/Surveyor [80 h]; Excavator [160 h]; Lighting poles with one arm, including the power distribution box, screws, cables, 12 meters in height. [2.45] | 4,663.5 |  | CO-R09.S01-SL-100 | 11 | 11 | LP | Ex | Each | POL | SL | EX | CON | R09 | S01 | SL |
| CO-R09.S01-SL-110 |  | Installation Works for Lighting Poles Foundation of Street Lighting Network-[Road 09] -[SW-1] | 12d | 2026-11-16 | 2026-11-29 | PRO-SL-1DL-110, CO-R09.S01-SL-100, MS-CS-SL |  |  |  |  | -195.5d | 0d | Labor/Helper [192 h]; Skilled Labor/Surveyor [10 h]; Foreman [10 h]; Eq. Operator [10 h]; Loader [24 h]; Reinforced concrete foundation, for 12m high lighting columns With Drawpits [49] | 17,826.69 |  | CO-R09.S01-SL-110 | 11 | 11 | LP | LPF | Each | POL | SL | INSTALL | CON | R09 | S01 | SL |
| CO-R09.S01-SL-120 |  | Installation Works for Lighting Poles of Street Lighting Network-[Road 09] -[SW-1] | 11d | 2026-12-23 | 2027-01-04 | PRO-SL-1DL-120, CO-R09.S01-SL-160 |  |  |  |  | -195.5d | 0d | Labor/Helper [88 h]; Electrician [88 h]; Lighting poles with one arm, including the power distribution box, screws, cables, 12 meters in height. [26.95] | 51,298.52 |  | CO-R09.S01-SL-120 | 11 | 11 | LP | LP | Each | POL | SL | POLES | CON | R09 | S01 | SL |
| CO-R09.S01-SL-210 |  | Backfilling Works for Lighting Poles of Street Lighting Network-[Road 09] -[SW-1] | 12d | 2027-01-05 | 2027-01-18 | CO-R09.S01-SL-120, CO-R09.S01-SL-120 FF, CO-R10.S04-ES-SL-210 |  |  |  |  | -195.5d | 0d | Labor/Helper [96 h]; Skilled Labor/Surveyor [48 h]; Excavator [96 h]; Lighting poles with one arm, including the power distribution box, screws, cables, 12 meters in height. [9.8] | 18,654.01 |  | CO-R09.S01-SL-210 | 11 | 11 |  |  |  |  | SL | BACK | CON | R09 | S01 | SL |
| CO-R09.S01-SL-130 |  | Installation Works for Lighting Fixtures With Drop Wire of Street Lighting Network-[Road 09] -[SW-1] | 12d | 2027-01-11 | 2027-01-24 | PRO-SL-1DL-140, CO-R09.S01-SL-120, CO-R09.S01-SL-200 FF |  |  |  |  | -189.5d | 6d | Labor/Helper [96 h]; Electrician [96 h]; Manlift [96 h]; Street Lighting( LED) Luminaire,(Type C) complete with control gear and lamp, ?.17000 Lumen [49] | 29,350.02 |  | CO-R09.S01-SL-130 | 11 | 11 | LP | LPA | Each | POL | SL | INSTALL | CON | R09 | S01 | SL |
| CO-R09.S01-SL-200 |  | Testing Works for Lighting Poles of Street Lighting Network-[Road 09] -[SW-1] | 5d | 2027-01-19 | 2027-01-24 | CO-R09.S01-SL-210, CO-R09.S01-SL-120 |  |  |  |  | -189.5d | 0d | Labor/Helper [40 h]; Electrician [40 h]; Lighting poles with one arm, including the power distribution box, screws, cables, 12 meters in height. [9.8] | 18,654.01 |  | CO-R09.S01-SL-200 | 11 | 11 |  |  |  |  | SL | TESTING | CON | R09 | S01 | SL |
|  | CW | **Cabling Works** |  | 2026-11-18 | 2026-12-22 |  |  |  |  |  |  |  |  |  |  |  |  |  |  |  |  |  |  |  |  |  |  |  |
| CO-R09.S01-SL-140 |  | Trench Excavation and Bedding Works for Street Lighting Network-[Road 09] -[SW-1] | 10d | 2026-11-18 | 2026-11-29 | ENG-SH-SL-A-110, CO-R09.S01-SL-110 SS, ENG-MS-SL-A-110, CO-R09.S01-SL-110 FF |  |  |  |  | -195.5d | 0d | Labor/Helper [80 h]; Skilled Labor/Surveyor [40 h]; Excavator [80 h] |  |  | CO-R09.S01-SL-140 | 11 | 11 | CW | Ex | LM | CB | SL | EXC | CON | R09 | S01 | SL |
| CO-R09.S01-SL-150 |  | Cable Laying Works for Street Lighting Network-[Road 09] -[SW-1] | 10d | 2026-11-30 | 2026-12-10 | PRO-SL-1DL-100, CO-R09.S01-SL-140 |  |  |  |  | -195.5d | 0d | Labor/Helper [80 h]; Electrician [80 h]; Low Current Technician [80 h]; Supply, installation , test and operation of cables, Copper, (4Cx25mmï¿½,Cu/XLPE/SWA/PVC +1x16mmï¿½ PVC/PVC) [1870.05] | 87,705.35 |  | CO-R09.S01-SL-150 | 11 | 11 | CW | CL | LM | CB | SL | LAYING | CON | R09 | S01 | SL |
| CO-R09.S01-SL-160 |  | Trench Backfilling and Compaction Works for Street Lighting Network-[Road 09] -[SW-1] | 10d | 2026-12-12 | 2026-12-22 | CO-R09.S01-SL-150, CO-R09.S01-IR-140, CO-R09.S01-IR-120 |  |  |  |  | -195.5d | 0d | Skilled Labor/Surveyor [8 h]; Foreman [8 h]; Excavator [80 h]; Water Tank [20 h]; Supply, installation , test and operation of cables, Copper, (4Cx25mmï¿½,Cu/XLPE/SWA/PVC +1x16mmï¿½ PVC/PVC) [143.85] | 6,746.56 |  | CO-R09.S01-SL-160 | 11 | 11 | CW | BF | LM | CB | SL | BACK | CON | R09 | S01 | SL |
|  | DPB | **Distrubution Panel Boards** |  | 2027-03-14 | 2027-04-27 |  |  |  |  |  |  |  |  |  |  |  |  |  |  |  |  |  |  |  |  |  |  |  |
| CO-R09.S01-SL-170 |  | Foundation Excavation Works For Panel Boards of Street Lighting Network-[Road 09] -[SW-1] | 15d | 2027-03-14 | 2027-03-30 | CO-R09-SL-ES-100, CO-R09.S01-EW-110, ENG-SH-SL-A-110, ENG-MS-SL-A-110 |  |  |  |  | -195.5d | 0d | Labor/Helper [120 h]; Skilled Labor/Surveyor [60 h]; Excavator [120 h] |  |  | CO-R09.S01-SL-170 | 11 | 11 | DB | Ex | Each | DS | SL | EXC | CON | R09 | S01 | SL |
| CO-R09.S01-SL-180 |  | Installation Works for Panel Board Concrete Foundations of Street Lighting Network-[Road 09] -[SW-1] | 12d | 2027-03-31 | 2027-04-13 | CO-R09.S01-SL-170 |  |  |  |  | -195.5d | 0d | Skilled Labor/Surveyor [10 h]; Foreman [10 h]; Excavator [96 h]; Water Tank [24 h] |  |  | CO-R09.S01-SL-180 | 11 | 11 | DB | PBF | Each | DS | SL | INSTALL | CON | R09 | S01 | SL |
| CO-R09.S01-SL-190 |  | Installation Works for Lighting Panel Boards of Street Lighting Network-[Road 09] -[SW-1] | 12d | 2027-04-14 | 2027-04-27 | CO-R09.S01-SL-180, PRO-SL-1DL-160 |  |  |  |  | -195.5d | 0d | Labor/Helper [96 h]; Electrician [96 h] |  |  | CO-R09.S01-SL-190 | 11 | 11 | DB | PB | Each | DS | SL | INST BO | CON | R09 | S01 | SL |
| CO-R09.S01-SL-220 |  | A wall of concrete blocks to install the KWH meter of Street Lighting Network-[Road 09] -[SW-1] | 12d | 2027-04-14 | 2027-04-27 | CO-R09.S01-SL-180 |  |  |  |  | -195.5d | 0d | Block Mason [96 h]; Road crossing ducts, 4 way (4 x 100mm PVC) [107]; Drawpit with medium duty steel cover, size 900x900x1200mm, Type 4 [10] | 38,821.81 |  | CO-R09.S01-SL-220 | 11 | 11 | DB |  | Each | DS | SL | wall | CON | R09 | S01 | SL |
|  | MV | **Medium Voltage Network** |  | 2026-09-30 | 2027-01-11 |  |  |  |  |  |  |  |  |  |  |  |  |  |  |  |  |  |  |  |  |  |  |  |
|  | CW | **Cabling Works** |  | 2026-09-30 | 2027-01-11 |  |  |  |  |  |  |  |  |  |  |  |  |  |  |  |  |  |  |  |  |  |  |  |
| CO-R09.S01-MV-100 |  | Trench Excavation and Bedding Works for Medium Voltage Network-[Road 09] -[SW-1] | 4d | 2026-09-30 A | 2026-12-22 | ENG-SH-MV-A-110, CO-R09.S01-SD-170 SS+3d, CO-R09.S01-SD-170 FF+3d, CO-R09.S01-EW-110, ENG-MS-MV-A-110, CO-R09.S01-SL-160 FF | 85% | 1d | 2026-02-14 | 2026-02-17 | -180d | 0d | Skilled Labor/Surveyor [4 h]; Foreman [4 h]; Excavator [32 h]; Excavation for Trench size 40cm wide and 80cm deep ( Maximum 1 cable 33kv) [1193.76]; Excavation for Trench size 60cm wide and 80cm deep ( for Max two cables 33 kv) [67.92]; Excavation for Trench size 90cm wide and 80cm deep ( Maximum 3 cable 33kv) [302.56]; Excavation for Trench size 120cm wide and 80cm deep ( Maximum 4cable 33kv) [102.91]; Excavation for Trench size 150cm wide and 80cm deep ( Maximum 4cable 33kv) [380.77]; Duct bank for (2) 33 kv cables [41.42]; Duct bank for (4) 33 kv cables [270.95]; Duct bank for (6) 33 kv cables [123.25] | 138,631.25 | 117,836.56 | CO-R09.S01-MV-100 | 11 | 11 | CW | Ex | LM | CW | MV | EXC | CON | R09 | S01 | MV |
| CO-R09.S01-MV-110 |  | Cable Laying Works for Medium Voltage Network-[Road 09] -[SW-1] | 5d | 2026-10-07 A | 2027-01-10 | PRO-MV-1DL-100, CO-R09.S01-MV-100 SS, PRO-R09-MV-DL-100 FF+3d, CO-R09.S01-MV-100 FF | 85% | 17d | 2027-03-01 | 2027-03-06 | -180d | 0d | Labor/Helper [40 h]; Electrician [40 h]; Low Current Technician [40 h]; 33kv 3Cx400 mmï¿½ Al XLPE / LLDPE /PVC Cable [5619.13]; 33kv 3Cx400 mmï¿½ Al XLPE /LLDPE/PVC [16.1] | 745,612.1 | 633,770.28 | CO-R09.S01-MV-110 | 11 | 11 | CW | CL | LM | CW | MV | LAY | CON | R09 | S01 | MV |
| CO-R09.S01-MV-120 |  | Trench Backfilling and Compaction Works for Medium Voltage Network-[Road 09] -[SW-1] | 7d | 2026-10-13 A | 2027-01-11 | CO-R09.S01-MV-110 SS, CO-R09.S01-MV-110 FF+1d | 85% | 17d | 2026-12-14 | 2026-12-21 | -180d | 0d | Skilled Labor/Surveyor [6 h]; Foreman [6 h]; Excavator [56 h]; Water Tank [14 h]; 33kv 3Cx400 mmï¿½ Al XLPE / LLDPE /PVC Cable [2408.2]; 33kv 3Cx400 mmï¿½ Al XLPE /LLDPE/PVC [6.9] | 319,548.04 | 271,615.84 | CO-R09.S01-MV-120 | 11 | 11 | CW | BF | LM | CW | MV | BACK | CON | R09 | S01 | MV |
|  | TE | **Telecom Network** |  | 2027-01-12 | 2027-02-25 |  |  |  |  |  |  |  |  |  |  |  |  |  |  |  |  |  |  |  |  |  |  |  |
|  | PD | **Ducts Works** |  | 2027-01-12 | 2027-01-25 |  |  |  |  |  |  |  |  |  |  |  |  |  |  |  |  |  |  |  |  |  |  |  |
| CO-R09.S01-TE-100 |  | Trench Excavation and Bedding Works for Ducts of Telecom Network-[Road 09] -[SW-1] | 2d | 2027-01-12 | 2027-01-13 | ENG-SH-TE-A-110, CO-R09.S01-IR-140 SS+3d, CO-R09.S01-IR-140 FF+3d, CO-R09.S01-SL-160 SS+5d, CO-R09.S01-SL-160 FF+5d, CO-R09.S01-EW-110, ENG-MS-TE-A-110, CO-R09.S01-MV-120, CO-R10.S04-ES-TE-100, CO-R09.S01-IR-120 FS+3d |  |  |  |  | -180d | 0d | Skilled Labor/Surveyor [2 h]; Foreman [2 h]; Excavator [16 h]; 6-way ducts, 50mm dia. HDPE [89]; Road crossing ducts (6-way) [8] | 13,266 |  | CO-R09.S01-TE-100 | 11 | 11 | PD | Ex | LM | DC | TE | DUCTS | CON | R09 | S01 | TE |
| CO-R09.S01-TE-110 |  | Pipes Laying Works for Ducts of Telecom Network-[Road 09] -[SW-1] | 4d | 2027-01-14 | 2027-01-18 | PRO-TE-1DL-100, CO-R09.S01-TE-100, MS-CS-TE |  |  |  |  | -167d | 0d | Labor/Helper [128 h]; Skilled Labor/Surveyor [7 h]; Foreman [7 h]; Plumber [64 h]; Excavator [64 h]; JCB [32 h]; Truck [64 h]; 6-way ducts, 50mm dia. HDPE [535]; Road crossing ducts (6-way) [45] | 79,227.5 |  | CO-R09.S01-TE-110 | 11 | 11 | PD | PL | LM | DC | TE | DUCTS | CON | R09 | S01 | TE |
| CO-R09.S01-TE-120 |  | Pouring Plain Concrete Above Ducts of Telecom Network-[Road 09] -[SW-1] | 2d | 2027-01-19 | 2027-01-20 | CO-R09.S01-TE-110 |  |  |  |  | -166d | 0d | Skilled Labor/Surveyor [2 h]; Foreman [2 h]; Cons. Carpenter [32 h]; Block Mason [16 h]; 6-way ducts, 50mm dia. HDPE [89]; Road crossing ducts (6-way) [8] | 13,266 |  | CO-R09.S01-TE-120 | 11 | 11 | PD | PC | LM | DC | TE | DUCTS | CON | R09 | S01 | TE |
| CO-R09.S01-TE-130 |  | Trench Backfilling and Compaction Works for Ducts of Telecom Network-[Road 09] -[SW-1] | 4d | 2027-01-21 | 2027-01-25 | CO-R09.S01-TE-120 |  |  |  |  | -166d | 9d | Skilled Labor/Surveyor [4 h]; Foreman [4 h]; Excavator [32 h]; 6-way ducts, 50mm dia. HDPE [178]; Road crossing ducts (6-way) [15] | 26,364.5 |  | CO-R09.S01-TE-130 | 11 | 11 | PD | BF | LM | DC | TE | DUCTS | CON | R09 | S01 | TE |

| ID | WBS | Activity | Duration | Start | Finish | Predecessors | Complete | Remaining | Planned start | Planned finish | Total float | Free float | Resources | Cost | Actual cost | Activity ID N | Seq | New Seq | 02- Network-WBS | 03- Activity | 04-UOM | 05-Discipline | 01- Network | 07-Weightage System | 08 Stage | 09 Roads | 10 side Walk | Discipline |
| --- | --- | --- | --- | --- | --- | --- | --- | --- | --- | --- | --- | --- | --- | --- | --- | --- | --- | --- | --- | --- | --- | --- | --- | --- | --- | --- | --- | --- |
|  | MH | **Manholes Works** |  | 2027-01-14 | 2027-02-25 |  |  |  |  |  |  |  |  |  |  |  |  |  |  |  |  |  |  |  |  |  |  |  |
| CO-R09.S01-TE-140 |  | Excavation Works for Manholes of Telecom Network-[Road 09] -[SW-1] | 12d | 2027-01-14 | 2027-01-27 | ENG-SH-TE-A-110, ENG-MS-TE-A-110, CO-R09.S01-TE-100 |  |  |  |  | -180d | 0d | Skilled Labor/Surveyor [10 h]; Foreman [10 h]; Excavator [96 h]; Manhole Type 1 (2000x1000x1000) [1]; Manhole Type 2 (2000x1000x1000) [1.4] | 7,515.39 |  | CO-R09.S01-TE-140 | 11 | 11 | MH | Ex | Each | MNH | TE | EXC | CON | R09 | S01 | TE |
| CO-R09.S01-TE-150 |  | Installation Works for Manholes of Telecom Network-[Road 09] -[SW-1] | 12d | 2027-01-28 | 2027-02-10 | PRO-TE-1DL-110, CO-R09.S01-TE-140 |  |  |  |  | -180d | 0d | Skilled Labor/Surveyor [10 h]; Foreman [10 h]; Excavator [96 h]; Manhole Type 1 (2000x1000x1000) [2]; Manhole Type 2 (2000x1000x1000) [4.2] | 19,430 |  | CO-R09.S01-TE-150 | 11 | 11 | MH | HH | Each | MNH | TE | INSTALL-1 | CON | R09 | S01 | TE |
| CO-R09.S01-TE-160 |  | Backfilling Works for Manholes of Telecom Network-[Road 09] -[SW-1] | 12d | 2027-02-11 | 2027-02-25 | CO-R09.S01-TE-150, CO-R09.S01-TE-130 |  |  |  |  | -180d | 0d | Skilled Labor/Surveyor [10 h]; Foreman [10 h]; Excavator [96 h]; Manhole Type 1 (2000x1000x1000) [1]; Manhole Type 2 (2000x1000x1000) [1.4] | 7,515.39 |  | CO-R09.S01-TE-160 | 11 | 11 | MH | BF | Each | MNH | TE | (New)-2 | CON | R09 | S01 | TE |
|  | RD | **Road Works** |  | 2026-06-10 | 2027-05-30 |  |  |  |  |  |  |  |  |  |  |  |  |  |  |  |  |  |  |  |  |  |  |  |
|  | RD | **Pre-Bituminous Construction** |  | 2026-06-10 | 2027-03-02 |  |  |  |  |  |  |  |  |  |  |  |  |  |  |  |  |  |  |  |  |  |  |  |
| CO-R09.S01-RD-P-100 |  | Capping and Subgrade Layer for Road Works-[Road 09] -[SW-1] | 21d | 2026-06-10 A | 2027-02-25 | ENG-SH-RD-A-100, PRO-RD-1DL-100, CO-R09.S01-SD-130, CO-R09.S01-SW-130, CO-R09.S01-SL-160 FF+3d, ENG-MS-RD-A-10, CO-R09.S01-MV-120 FF+3d, CO-R09.S01-TE-130 FF, CO-R09.S01-TE-160 FF, CO-R09.S02-SW-130 SS | 60% | 17d | 2026-06-21 | 2026-07-14 | -180d | 0d | Labor/Helper [1344 h]; Skilled Labor/Surveyor [672 h]; Loader [672 h]; Grader [672 h]; Road Roller [672 h]; Water Tank [672 h]; 300mm capping layer underneath subgrade , CBR?15% [6762.42]; 300mm thick Subgrade, including subgrade preparation, CBR?25% [6762.42] | 524,763.79 | 314,858.28 | CO-R09.S01-RD-P-100 | 11 | 11 | AB | SG | Sq.m | BS | RD |  | CON | R09 | S01 | RD |
| CO-R09.S01-RD-P-110 |  | Aggregate Base Course Layer for Road Works-[Road 09] -[SW-1] | 21d | 2027-02-06 | 2027-03-02 | PRO-RD-1DL-110, CO-R09.S01-RD-P-100 SS+3d, CO-R09.S01-RD-P-100 FF+3d, CO-R09.S01-SD-170 SS+3d, CO-R09.S01-SD-170 FF+3d, MS-CS-RD |  |  |  |  | -100d | 15d | Labor/Helper [672 h]; Skilled Labor/Surveyor [336 h]; Foreman [336 h]; Loader [336 h]; Grader [336 h]; Road Roller [336 h]; Aggregate base course 200mm thick after compaction in two layers(Grading 1); CBR?80%; including watering, compaction and testing [4508.74] | 365,523.55 |  | CO-R09.S01-RD-P-110 | 11 | 11 | AB | BA | Sq.m | BS | RD |  | CON | R09 | S01 | RD |
|  | LS | **Pavement Works** |  | 2026-08-25 | 2027-05-30 |  |  |  |  |  |  |  |  |  |  |  |  |  |  |  |  |  |  |  |  |  |  |  |
| CO-R09.S01-RD-P-120 |  | Fixing of Curbstone for Sidewalks Pavement-[Road 09] -[SW-1] | 18d | 2026-08-25 A | 2026-08-31 A | ENG-SH-HS-A-110, ENG-MS-HS-A-10, ENG-MT-RD-A-150 | 100% |  | 2026-07-19 | 2026-08-08 |  |  | Labor/Helper [1152 h]; Block Mason [3456 h]; Precast Concrete Kerb, Type K1 [2494.95]; Precast Concrete Kerb, Type L1 [4950.29] | 299,298.65 | 299,298.65 | CO-R09.S01-RD-P-120 | 11 | 11 | LS | CR | LM | LAND | RD |  | CON | R09 | S01 | RD |
| CO-R09.S01-RD-P-130 |  | Fixing of Interlock Tiles for Sidewalks Pavement-[Road 09] -[SW-1] | 12d | 2027-05-10 | 2027-05-30 | PRO-RD-1DL-140 FF, CO-R09.S01-RD-P-120 SS, CO-R09-PW-TF-100 FF, CO-R09-PW-TF-110 FF, CO-R09-PW-TF-120 FF, CO-R09-SW-TF-100 SS, CO-R09-SW-TF-110 FF, CO-R09-SW-TF-120 FF, CO-R09-SL-TF-100 FF, CO-R09-SL-TF-110 FF, CO-R09-SL-ES-100 FF, CO-R09-SL-ES-110 FF, CO-R09-IR-TF-100 FF, CO-R09-MV-TF-100 FF |  |  |  |  | -195.5d | 0d | Labor/Helper [864 h]; Block Mason [2592 h]; Interlocking block pavers for sidewalk/footpath 60mm thick on and including 30mm Sand Bedding, 200mm Aggregate subbase, all in accordance with authority standards and complete as per specifications [4455.27]; Extraover for Pedestrian ramps [11] | 213,779.51 |  | CO-R09.S01-RD-P-130 | 11 | 11 | LS | IL | Sq.m | LAND | RD |  | CON | R09 | S01 | RD |
|  | SW_2 | **SW_2** |  | 2025-04-17 | 2027-06-08 |  |  |  |  |  |  |  |  |  |  |  |  |  |  |  |  |  |  |  |  |  |  |  |
|  | EW | **Earthworks** |  | 2025-04-17 | 2025-05-03 |  |  |  |  |  |  |  |  |  |  |  |  |  |  |  |  |  |  |  |  |  |  |  |
|  | EW | **Earthworks** |  | 2025-04-17 | 2025-05-03 |  |  |  |  |  |  |  |  |  |  |  |  |  |  |  |  |  |  |  |  |  |  |  |
| CO-R09.S02-EW-110 |  | Roadway Excavation Works Upto Design Level for Earthworks-[Road 09]-[SW-2] | 10d | 2025-04-17 A | 2025-04-26 A | CO-R09.S01-EW-100, ENG-MS-RD-A-10, ENG-SH-RD-A-100, CO-R09.S01-EW-100 FF | 100% |  | 2025-06-28 | 2025-07-08 |  |  | Labor/Helper [640 h]; Skilled Labor/Surveyor [80 h]; Foreman [80 h]; Water Tank [1152 h]; Dozer [1152 h]; Roadway Excavation for cuttings; on any type of material for all depths including trimming and Preparation of excavated surfaces and disposal. [31838.6] | 200,583.31 | 200,583.31 | CO-R09.S02-EW-110 | 12 | 12 | EW | Ex | Cub.m | EW | EW |  | CON | R09 | S02 | EW |
| CO-R09.S02-EW-120 |  | Embankments Works Upto Design Level for Earthworks-[Road 09]-[SW-2] | 10d | 2025-04-17 A | 2025-05-03 A | CO-R09.S02-EW-110, ENG-MS-RD-A-10, ENG-SH-RD-A-100 | 100% |  | 2025-07-09 | 2025-07-20 |  |  | Labor/Helper [1040 h]; Skilled Labor/Surveyor [130 h]; Foreman [130 h]; Water Tank [1248 h]; Dozer [1248 h]; Embankments to the ROW, with suitable material other than top soil or rock according to specifications [53596.5] | 434,131.89 | 434,131.89 | CO-R09.S02-EW-120 | 12 | 12 | EW | BF | Cub.m | EW | EW |  | CON | R09 | S02 | EW |
|  | SW | **Sewage Network** |  | 2025-11-10 | 2026-10-27 |  |  |  |  |  |  |  |  |  |  |  |  |  |  |  |  |  |  |  |  |  |  |  |
|  | ML | **Main Line Sections** |  | 2025-11-10 | 2026-10-27 |  |  |  |  |  |  |  |  |  |  |  |  |  |  |  |  |  |  |  |  |  |  |  |
| CO-R09.S02-SW-100 |  | Trench Excavation and Bedding Works for Main Lines of Sewage Network-[Road 09]-[SW-2] | 12d | 2025-11-10 A | 2026-10-27 | CO-R09.S02-EW-120, ENG-MS-SW-ML-A-110, ENG-SH-SW-ML-A-110, CO-R09.S01-SW-100 SS+2d | 98% | 1d | 2025-07-21 | 2025-08-03 | -93d | 0d | Skilled Labor/Surveyor [29 h]; Foreman [58 h]; Nominal bore : 200mm; Depth : 0.0m - 1.5m [11]; Nominal bore : 200mm; Depth : 1.5m - 2.5m [30.16]; Nominal bore : 200mm; Depth : 2.5m - 3.5m [44.1]; Nominal bore : 200mm; Depth : 3.5m - 4.5m [51.01]; Nominal bore : 200mm; Depth : 4.5m -5.5m [25.19]; Nominal bore : 200mm; Depth : 5.5m - 6.5m [29] | 63,214.84 | 61,950.55 | CO-R09.S01-SW-100 | 12 | 12 | ML | Ex | LM | ML | SW | EX | CON | R09 | S02 | SW |
| CO-R09.S02-SW-120 |  | Pipes Laying Works for Main Lines of Sewage Network-[Road 09]-[SW-2] | 12d | 2026-02-15 A | 2026-10-27 | CO-R09.S02-SW-100 SS, CO-R09.S01-SW-120 SS+2d, CO-R09.S02-SW-100 FF | 98% | 1d | 2025-08-04 | 2025-08-17 | -93d | 0d | Labor/Helper [768 h]; Skilled Labor/Surveyor [39 h]; Foreman [39 h]; Plumber [384 h]; Nominal bore : 200mm; Depth : 0.0m - 1.5m [33]; Nominal bore : 200mm; Depth : 1.5m - 2.5m [90.49]; Nominal bore : 200mm; Depth : 2.5m - 3.5m [132.3]; Nominal bore : 200mm; Depth : 3.5m - 4.5m [153.04]; Nominal bore : 200mm; Depth : 4.5m -5.5m [75.58]; Nominal bore : 200mm; Depth : 5.5m - 6.5m [98.03] | 189,643.95 | 185,851.07 | CO-R09.S01-SW-120 | 12 | 12 | ML | PL | LM | ML | SW | PIPE | CON | R09 | S02 | SW |
| CO-R09.S02-SW-130 |  | Trench Backfilling and Compaction Works for Main Lines of Sewage Network-[Road 09]-[SW-2] | 12d | 2026-05-02 A | 2026-10-27 | CO-R09.S02-SW-120 SS, CO-R09.S02-SW-210 FF, CO-R09.S01-SW-130 SS+2d, CO-R09.S02-SW-120 FF | 98% | 1d | 2025-08-18 | 2025-08-31 | -93d | 87d | Skilled Labor/Surveyor [29 h]; Foreman [58 h]; Nominal bore : 200mm; Depth : 0.0m - 1.5m [5.5]; Nominal bore : 200mm; Depth : 1.5m - 2.5m [15.27]; Nominal bore : 200mm; Depth : 2.5m - 3.5m [22.05]; Nominal bore : 200mm; Depth : 3.5m - 4.5m [25.51]; Nominal bore : 200mm; Depth : 4.5m -5.5m [12.6]; Nominal bore : 200mm; Depth : 5.5m - 6.5m [29] | 31,642.78 | 31,009.92 | CO-R09.S01-SW-130 | 12 | 12 | ML | BF | LM | ML | SW | BACK | CON | R09 | S02 | SW |
|  | MH | **Manholes** |  | 2026-05-02 | 2026-10-27 |  |  |  |  |  |  |  |  |  |  |  |  |  |  |  |  |  |  |  |  |  |  |  |
| CO-R09.S02-SW-160 |  | Excavation Works for Main Line Manholes of Sewage Network-[Road 09]-[SW-2] | 1d | 2026-05-02 A | 2026-05-10 A | CO-R09.S02-SW-100 SS, CO-R09.S02-SW-120 SS | 100% |  | 2025-08-04 | 2025-08-04 |  |  | Labor/Helper [8 h]; Skilled Labor/Surveyor [4 h]; Depth: 1.5 - 2.5m [0.45]; Depth: 3.5 - 4.5m [0.15]; Depth: 4.5 - 5.5m [0.15]; Depth:6.5 - 7.5m [0.3] | 15,171.28 | 15,171.28 | CO-R09.S01-SW-160 | 12 | 12 |  |  |  |  | SW | EX | CON | R09 | S02 | SW |
| CO-R09.S02-SW-170 |  | Installation RC Footing Works for Main Line Manholes of Sewage Network-[Road 09]-[SW-2] | 3d | 2026-05-02 A | 2026-05-10 A | CO-R09.S02-SW-160 | 100% |  | 2025-08-05 | 2025-08-07 |  |  | Cons. Carpenter [48 h]; Steel Fixer [48 h]; Depth: 1.5 - 2.5m [0.3]; Depth: 3.5 - 4.5m [0.1]; Depth: 4.5 - 5.5m [0.1]; Depth:6.5 - 7.5m [0.2] | 10,114.19 | 10,114.19 | CO-R09.S01-SW-170 | 12 | 12 |  |  |  |  | SW | RC F | CON | R09 | S02 | SW |
| CO-R09.S02-SW-180 |  | Install Grp Liner Wall Works for Main Line Manholes of Sewage Network-[Road 09]-[SW-2] | 6d | 2026-05-02 A | 2026-05-10 A | CO-R09.S02-SW-170 | 100% |  | 2025-08-09 | 2025-08-14 |  |  | Labor/Helper [96 h]; Plumber [96 h]; Depth: 1.5 - 2.5m [1.2]; Depth: 3.5 - 4.5m [0.4]; Depth: 4.5 - 5.5m [0.4]; Depth:6.5 - 7.5m [0.8] | 40,456.74 | 40,456.74 | CO-R09.S01-SW-180 | 12 | 12 |  |  |  |  | SW | LP | CON | R09 | S02 | SW |
| CO-R09.S02-SW-190 |  | Pouring Grp Liner Wall Works for Main Line Manholes of Sewage Network-[Road 09]-[SW-2] | 3d | 2026-07-01 A | 2026-07-05 A | CO-R09.S02-SW-180 | 100% |  | 2025-08-16 | 2025-08-18 |  |  | Cons. Carpenter [48 h]; Steel Fixer [48 h]; Depth: 1.5 - 2.5m [0.15]; Depth: 3.5 - 4.5m [0.05]; Depth: 4.5 - 5.5m [0.05]; Depth:6.5 - 7.5m [0.1] | 5,057.09 | 5,057.09 | CO-R09.S01-SW-190 | 12 | 12 |  |  |  |  | SW | (New) | CON | R09 | S02 | SW |
| CO-R09.S02-SW-200 |  | Backfilling Works for Main Line Manholes of Sewage Network-[Road 09]-[SW-2] | 5d | 2026-07-05 A | 2026-07-06 A | CO-R09.S02-SW-190 | 100% |  | 2025-08-19 | 2025-08-24 |  |  | Labor/Helper [40 h]; Skilled Labor/Surveyor [20 h]; Depth: 1.5 - 2.5m [0.45]; Depth: 3.5 - 4.5m [0.15]; Depth: 4.5 - 5.5m [0.15]; Depth:6.5 - 7.5m [0.3] | 15,171.28 | 15,171.28 | CO-R09.S01-SW-200 | 12 | 12 |  |  |  |  | SW | BACK | CON | R09 | S02 | SW |
| CO-R09.S02-SW-210 |  | Testing Works for Main Line Manholes of Sewage Network-[Road 09]-[SW-2] | 1d | 2026-10-27 | 2026-10-27 | CO-R09.S02-SW-200, CO-R09.S01-SW-210 SS+2d |  |  |  |  | -93d | 0d | Labor/Helper [8 h]; Plumber [8 h]; Depth: 1.5 - 2.5m [0.15]; Depth: 3.5 - 4.5m [0.05]; Depth: 4.5 - 5.5m [0.05]; Depth:6.5 - 7.5m [0.1] | 5,057.09 |  | CO-R09.S01-SW-210 | 12 | 12 |  |  |  |  | SW | T&COV | CON | R09 | S02 | SW |

| ID | WBS | Activity | Duration | Start | Finish | Predecessors | Complete | Remaining | Planned start | Planned finish | Total float | Free float | Resources | Cost | Actual cost | Activity ID N | Seq | New Seq | 02- Network-WBS | 03- Activity | 04-UOM | 05-Discipline | 01- Network | 07-Weightage System | 08 Stage | 09 Roads | 10 side Walk | Discipline |
| --- | --- | --- | --- | --- | --- | --- | --- | --- | --- | --- | --- | --- | --- | --- | --- | --- | --- | --- | --- | --- | --- | --- | --- | --- | --- | --- | --- | --- |
|  | SD | **Storm Drainage Network** |  | 2025-12-25 | 2026-11-15 |  |  |  |  |  |  |  |  |  |  |  |  |  |  |  |  |  |  |  |  |  |  |  |
|  | ML | **Main Line Sections** |  | 2025-12-25 | 2026-10-07 |  |  |  |  |  |  |  |  |  |  |  |  |  |  |  |  |  |  |  |  |  |  |  |
| CO-R09.S02-SD-100 |  | Trench Excavation and Bedding Works for Main Lines of Storm Drainage Network-[Road 09]-[SW-2] | 10d | 2025-12-25 A | 2025-12-29 A | CO-R09.S02-EW-120, CO-R09.S02-EW-110, CO-R09.S01-SD-100 | 100% |  | 2025-09-20 | 2025-10-01 |  |  | Skilled Labor/Surveyor [8 h]; Foreman [8 h]; Excavator [112 h]; Pipe with diameter 400mm ; depth: 1.51m - 2.5m [18.55]; Pipe with diameter 1100mm ; depth: 1.51m - 2.5m [66.7]; Pipe with diameter 1100mm ; depth: 2.51 - 3.5m [17.4]; Pipe with diameter 1200mm ; depth: 1.51m - 2.5m [31] | 103,402.88 | 103,402.88 | CO-R09.S02-SD-100 | 12 | 12 | ML | Ex | LM | ML | SD | EX | CON | R09 | S02 | SD |
| CO-R09.S02-SD-120 |  | Pipes Laying Works for Main Lines of Storm Drainage Network-[Road 09]-[SW-2] | 10d | 2025-12-27 A | 2025-12-29 A | PRO-R09-SD-DL-120 FF+3d, CO-R09.S02-SD-100, CO-R09.S01-SD-120 | 100% |  | 2025-10-02 | 2025-10-13 |  |  | Labor/Helper [320 h]; Skilled Labor/Surveyor [16 h]; Foreman [16 h]; Plumber [160 h]; Excavator [240 h]; Pipe with diameter 400mm ; depth: 1.51m - 2.5m [55.65]; Pipe with diameter 1100mm ; depth: 1.51m - 2.5m [200.1]; Pipe with diameter 1100mm ; depth: 2.51 - 3.5m [52.2]; Pipe with diameter 1200mm ; depth: 1.51m - 2.5m [93] | 310,208.63 | 310,208.63 | CO-R09.S02-SD-120 | 12 | 12 | ML | PL | LM | ML | SD | PIPE | CON | R09 | S02 | SD |
| CO-R09.S02-SD-130 |  | Trench Backfilling and Compaction Works for Main Lines of Storm Drainage Network-[Road 09]-[SW-2] | 15d | 2026-01-22 A | 2026-10-07 A | CO-R09.S02-SD-120 | 100% |  | 2025-10-16 | 2025-11-02 |  |  | Skilled Labor/Surveyor [12 h]; Foreman [12 h]; Excavator [120 h]; Pipe with diameter 400mm ; depth: 1.51m - 2.5m [9.28]; Pipe with diameter 1100mm ; depth: 1.51m - 2.5m [33.35]; Pipe with diameter 1100mm ; depth: 2.51 - 3.5m [8.7]; Pipe with diameter 1200mm ; depth: 1.51m - 2.5m [15.5] | 51,701.44 | 51,701.44 | CO-R09.S02-SD-130 | 12 | 12 | ML | BF | LM | ML | SD | BACK | CON | R09 | S02 | SD |
|  | MH | **Manholes** |  | 2026-03-01 | 2026-11-15 |  |  |  |  |  |  |  |  |  |  |  |  |  |  |  |  |  |  |  |  |  |  |  |
| CO-R09.S02-SD-180 |  | Trench Excavation and Bedding Works for Manholes of Storm Drainage Network-[Road 09]-[SW-2] | 1d | 2026-03-01 A | 2026-03-09 A | CO-R09.S02-SD-120 SS, PRO-SD-1DL-100, CO-R09.S01-SD-220 | 100% |  | 2025-10-15 | 2025-10-15 |  |  | Labor/Helper [8 h]; Skilled Labor/Surveyor [4 h]; Excavator [8 h]; MH ; depth: 0.0m - 1.5m [0.45]; MH ; depth: 1.51m - 2.5m [1.2]; MH ; depth: 2.51 - 3.5m [0.3]; MH ; depth: 0.0m - 1.5m [0.3]; MH ; depth: 2.51 - 3.5m [0.15]; MH ; depth: 1.51m - 2.5m [0.6]; MH ; depth: 2.51 - 3.5m [0.6] | 57,583.28 | 57,583.28 | CO-R09.S02-SD-180 | 12 | 12 |  |  |  |  | SD | EX | CON | R09 | S02 | SD |
| CO-R09.S02-SD-190 |  | Install RC Footing Works for Manholes of Storm Drainage Network-[Road 09]-[SW-2] | 2d | 2026-03-01 A | 2026-03-09 A | CO-R09.S02-SD-180 | 100% |  | 2025-10-16 | 2025-10-18 |  |  | Cons. Carpenter [32 h]; Steel Fixer [32 h]; MH ; depth: 0.0m - 1.5m [0.15]; MH ; depth: 1.51m - 2.5m [0.4]; MH ; depth: 2.51 - 3.5m [0.1]; MH ; depth: 0.0m - 1.5m [0.1]; MH ; depth: 2.51 - 3.5m [0.05]; MH ; depth: 1.51m - 2.5m [0.2]; MH ; depth: 2.51 - 3.5m [0.2] | 19,194.43 | 19,194.43 | CO-R09.S02-SD-190 | 12 | 12 |  |  |  |  | SD | RC F | CON | R09 | S02 | SD |
| CO-R09.S02-SD-200 |  | Install RC Wall Rings & Slab Works for Manholes of Storm Drainage Network-[Road 09]-[SW-2] | 4d | 2026-03-01 A | 2026-03-09 A | CO-R09.S02-SD-190 | 100% |  | 2025-10-19 | 2025-10-22 |  |  | Cons. Carpenter [64 h]; Steel Fixer [64 h]; MH ; depth: 0.0m - 1.5m [1.35]; MH ; depth: 1.51m - 2.5m [3.6]; MH ; depth: 2.51 - 3.5m [0.9]; MH ; depth: 0.0m - 1.5m [0.9]; MH ; depth: 2.51 - 3.5m [0.45]; MH ; depth: 1.51m - 2.5m [1.8]; MH ; depth: 2.51 - 3.5m [1.8] | 172,749.85 | 172,749.85 | CO-R09.S02-SD-200 | 12 | 12 |  |  |  |  | SD | RC W | CON | R09 | S02 | SD |
| CO-R09.S02-SD-220 |  | Backfilling Works for Manholes of Storm Drainage Network-[Road 09]-[SW-2] | 7d | 2026-03-05 A | 2026-10-27 | MS-CS-PS | 90% | 0d | 2025-10-26 | 2025-11-02 | -138d | 0d | Labor/Helper [56 h]; Skilled Labor/Surveyor [28 h]; Excavator [56 h]; MH ; depth: 0.0m - 1.5m [0.6]; MH ; depth: 1.51m - 2.5m [1.6]; MH ; depth: 2.51 - 3.5m [0.4]; MH ; depth: 0.0m - 1.5m [0.4]; MH ; depth: 2.51 - 3.5m [0.2]; MH ; depth: 1.51m - 2.5m [0.8]; MH ; depth: 2.51 - 3.5m [0.8] | 76,777.71 | 69,099.94 | CO-R09.S02-SD-220 | 12 | 12 |  |  |  |  | SD | BACK | CON | R09 | S02 | SD |
| CO-R09.S02-SD-210 |  | Testing Works for Manholes of Storm Drainage Network-[Road 09]-[SW-2] | 2d | 2026-09-25 A | 2026-11-15 | CO-R09.S02-SD-200 | 90% | 17d | 2026-10-13 | 2026-10-14 | -94d | 0d | Labor/Helper [16 h]; Plumber [16 h]; MH ; depth: 0.0m - 1.5m [0.3]; MH ; depth: 1.51m - 2.5m [0.8]; MH ; depth: 2.51 - 3.5m [0.2]; MH ; depth: 0.0m - 1.5m [0.2]; MH ; depth: 2.51 - 3.5m [0.1]; MH ; depth: 1.51m - 2.5m [0.4]; MH ; depth: 2.51 - 3.5m [0.4] | 38,388.86 | 34,549.97 | CO-R09.S02-SD-210 | 12 | 12 |  |  |  |  | SD | T&COV | CON | R09 | S02 | SD |
|  | CB | **Catch Basin Sections** |  | 2026-06-24 | 2026-10-28 |  |  |  |  |  |  |  |  |  |  |  |  |  |  |  |  |  |  |  |  |  |  |  |
| CO-R09.S02-SD-140 |  | Trench Excavation and Bedding Works for Catch Basins of Storm Drainage Network-[Road 09]-[SW-2] | 6d | 2026-06-24 A | 2026-10-27 | CO-R09.S02-EW-120, CO-R09.S02-SD-220 SS, CO-R09.S02-SD-220 FF+1d | 90% | 1d | 2025-11-03 | 2025-11-09 | -138d | 0d | Skilled Labor/Surveyor [5 h]; Foreman [5 h]; Excavator [48 h]; Pipe with diameter 300mm ; depth: 0 - 1.5m [168.62]; Pipe with diameter 400mm ; depth: 0 - 1.5m [10.28] | 41,579.1 | 37,421.19 | CO-R09.S02-SD-140 | 12 | 12 | CB | Ex | Each | CB | SD | EX | CON | R09 | S02 | SD |
| CO-R09.S02-SD-150 |  | Installation and Pipes Laying Connection Works for Catch Basins of Storm Drainage Network-[Road 09]-[SW-2] | 7d | 2026-06-25 A | 2026-10-27 | CO-R09.S02-SD-140 SS, PRO-R09-SD-DL-130 FF+3d, CO-R09.S02-SD-140 FF | 90% | 1d | 2025-11-30 | 2025-12-07 | -136d | 0d | Labor/Helper [224 h]; Skilled Labor/Surveyor [12 h]; Foreman [12 h]; Excavator [112 h]; Pipe with diameter 300mm ; depth: 0 - 1.5m [505.85]; Pipe with diameter 400mm ; depth: 0 - 1.5m [30.84] | 124,737.3 | 112,263.57 | CO-R09.S02-SD-150 | 12 | 12 | CB | CB | Each | CB | SD | INSTALL | CON | R09 | S02 | SD |
| CO-R09.S02-SD-170 |  | Trench Backfilling and Compaction Works for Catch Basins of Storm Drainage Network-[Road 09]-[SW-2] | 7d | 2026-06-28 A | 2026-10-28 | CO-R09.S02-SD-160 FF | 90% | 1d | 2025-12-13 | 2025-12-20 | -136d | 2d | Skilled Labor/Surveyor [6 h]; Foreman [6 h]; Excavator [56 h]; Pipe with diameter 300mm ; depth: 0 - 1.5m [224.82]; Pipe with diameter 400mm ; depth: 0 - 1.5m [13.71] | 55,438.8 | 49,894.92 | CO-R09.S02-SD-170 | 12 | 12 | CB | BF | Each | CB | SD | BACK | CON | R09 | S02 | SD |
| CO-R09.S02-SD-160 |  | Testing Works for Catch Basins of Storm Drainage Network-[Road 09]-[SW-2] | 4d | 2026-07-17 A | 2026-10-28 | CO-R09.S02-SD-120, PRO-R09-SD-DL-110 FF+3d, CO-R09.S01-SD-160 SS+2d, CO-R09.S02-SD-150 SS, CO-R09.S02-SD-150 FF+1d | 90% | 2d | 2026-10-17 | 2026-10-20 | -136d | 0d | Labor/Helper [64 h]; Skilled Labor/Surveyor [4 h]; Foreman [4 h]; Plumber [32 h]; Excavator [32 h]; Pipe with diameter 300mm ; depth: 0 - 1.5m [112.41]; Pipe with diameter 400mm ; depth: 0 - 1.5m [6.85] | 27,719.4 | 24,947.46 | CO-R09.S02-SD-160 | 12 | 12 | CB | PL | Each | CB | SD | TEST | CON | R09 | S02 | SD |
|  | PW | **Potable Water Network** |  | 2026-06-27 | 2026-11-15 |  |  |  |  |  |  |  |  |  |  |  |  |  |  |  |  |  |  |  |  |  |  |  |
|  | ML | **Main Line Sections** |  | 2026-06-27 | 2026-11-15 |  |  |  |  |  |  |  |  |  |  |  |  |  |  |  |  |  |  |  |  |  |  |  |
| CO-R09.S02-PW-100 |  | Trench Excavation and Bedding Works for Main Lines of Potable Water Network-[Road 09]-[SW-2] | 7d | 2026-06-27 A | 2026-10-27 | CO-R09.S02-EW-120, CO-R09.S02-EW-110, CO-R09.S02-SD-130 SS | 95% | 1d | 2025-11-03 | 2025-11-10 | -177.5d | 0d | Skilled Labor/Surveyor [6 h]; Foreman [6 h]; Excavator [56 h]; Pipe with diameter 160 mm; in depth 1.5m - 3.0m [10]; Pipe with diameter 200mm; in depth 0.0m - 1.5m [508.94]; Pipe with diameter 200mm; in depth 1.5m - 3.0m [20] | 78,463.98 | 74,540.78 | CO-R09.S02-PW-100 | 12 | 12 | ML | Ex | LM | ML | PW | EX | CON | R09 | S02 | PW |
| CO-R09.S02-PW-110 |  | Pipes Laying and accessories for Main Lines of Potable Water Network-[Road 09]-[SW-2] | 8d | 2026-06-30 A | 2026-11-02 | CO-R09.S02-PW-100 SS, PRO-R09-PW-DL-100 FF+3d, PRO-R09-PW-DL-110 FF+3d, MS-CS-PW SS | 90% | 6d | 2025-12-10 | 2025-12-18 | -166.5d | 11d | Labor/Helper [256 h]; Skilled Labor/Surveyor [13 h]; Foreman [13 h]; Plumber [128 h]; Excavator [128 h]; Pipe with diameter 160 mm; in depth 1.5m - 3.0m [25]; Pipe with diameter 200mm; in depth 0.0m - 1.5m [584.55]; Pipe with diameter 200mm; in depth 1.5m - 3.0m [50] | 96,160.67 | 86,544.6 | CO-R09.S02-PW-110 | 12 | 12 | ML | PL | LM | ML | PW | PIPE | CON | R09 | S02 | PW |
| CO-R09.S02-PW-130 |  | Trench Backfilling and Compaction Works for Main Lines of Potable Water Network-[Road 09]-[SW-2] | 8d | 2026-07-01 A | 2026-11-15 | CO-R09.S02-PW-110 SS, CO-R09.S02-PW-160 FF, CO-R09.S02-PW-210 FF, CO-R09.S02-PW-110 FF | 90% | 2d | 2025-12-21 | 2025-12-29 | -177.5d | 0d | Skilled Labor/Surveyor [7 h]; Foreman [7 h]; Eq. Operator [7 h]; Loader [64 h]; Compactor [64 h]; Water Tank [16 h]; Pipe with diameter 160 mm; in depth 1.5m - 3.0m [25]; Pipe with diameter 200mm; in depth 0.0m - 1.5m [508.94]; Pipe with diameter 200mm; in depth 1.5m - 3.0m [20] | 80,283.03 | 72,254.72 | CO-R09.S02-PW-130 | 12 | 12 | ML | BF | LM | ML | PW | BACK | CON | R09 | S02 | PW |
|  | VC | **Valve Chamber** |  | 2026-10-28 | 2026-11-03 |  |  |  |  |  |  |  |  |  |  |  |  |  |  |  |  |  |  |  |  |  |  |  |
| CO-R09.S02-PW-210 |  | Installation Works for Main Line Valves and Valve Chambers of Potable Water Network-[Road 09]-[SW-2] | 6d | 2026-10-28 | 2026-11-03 | CO-R09.S02-PW-100 |  |  |  |  | -167.5d | 10d | Labor/Helper [144 h]; Plumber [144 h]; Gate valves dia(200)mm on pipes with dia (200) mm. [22]; Wash out valve with dia (100)mm on pipes with dia (200) mm [1] | 63,935.42 |  | CO-R09.S02-PW-210 | 12 | 12 | ML | VI | Each | ML | PW | INSUL | CON | R09 | S02 | PW |
|  | FH | **Fire Hydrant** |  | 2026-10-28 | 2026-11-15 |  |  |  |  |  |  |  |  |  |  |  |  |  |  |  |  |  |  |  |  |  |  |  |
| CO-R09.S02-PW-140 |  | Excavation Works for Fire Hydrants of Potable Water Network-[Road 09]-[SW-2] | 5d | 2026-10-28 | 2026-11-02 | CO-R09.S02-EW-120, CO-R09.S02-PW-100 |  |  |  |  | -177.5d | 0d | Skilled Labor/Surveyor [4 h]; Foreman [4 h]; Excavator [40 h]; 3-outlet fire hydrant (2 x 2.5 inch and 1 x 4 inch) in the form of a separate dry vacuum cylinder [2.25] | 17,042.29 |  | CO-R09.S02-PW-140 | 12 | 12 | FH | Ex | Each | FH | PW | EX | CON | R09 | S02 | PW |
| CO-R09.S02-PW-150 |  | Installation Works for Fire Hydrant of Potable Water Network-[Road 09]-[SW-2] | 6d | 2026-11-03 | 2026-11-09 | CO-R09.S02-PW-140, PRO-R09-PW-DL-120 FF+3d |  |  |  |  | -177.5d | 0d | Labor/Helper [96 h]; Skilled Labor/Surveyor [5 h]; Foreman [5 h]; Plumber [96 h]; 3-outlet fire hydrant (2 x 2.5 inch and 1 x 4 inch) in the form of a separate dry vacuum cylinder [9.75] | 73,849.91 |  | CO-R09.S02-PW-150 | 12 | 12 | FH | FH | Each | FH | PW | INSTALL | CON | R09 | S02 | PW |
| CO-R09.S02-PW-160 |  | Trench Backfilling and Compaction Works for Fire Hydrants of Potable Water Network-[Road 09]-[SW-2] | 5d | 2026-11-10 | 2026-11-15 | CO-R09.S02-PW-150 |  |  |  |  | -177.5d | 0d | Skilled Labor/Surveyor [4 h]; Foreman [4 h]; Excavator [40 h]; 3-outlet fire hydrant (2 x 2.5 inch and 1 x 4 inch) in the form of a separate dry vacuum cylinder [3] | 22,723.05 |  | CO-R09.S02-PW-160 | 12 | 12 | FH | BF | Each | FH | PW | BACK | CON | R09 | S02 | PW |

| ID | WBS | Activity | Duration | Start | Finish | Predecessors | Total float | Free float | Resources | Cost | Activity ID N | Seq | New Seq | 02- Network-WBS | 03- Activity | 04-UOM | 05-Discipline | 01- Network | 07-Weightage System | 08 Stage | 09 Roads | 10 side Walk | Discipline |
| --- | --- | --- | --- | --- | --- | --- | --- | --- | --- | --- | --- | --- | --- | --- | --- | --- | --- | --- | --- | --- | --- | --- | --- |
|  | SL | **Street Lighting Network** |  | 2026-11-16 | 2027-05-25 |  |  |  |  |  |  |  |  |  |  |  |  |  |  |  |  |  |  |
|  | LP | **Lighting Poles Works** |  | 2026-11-16 | 2027-02-08 |  |  |  |  |  |  |  |  |  |  |  |  |  |  |  |  |  |  |
| CO-R09.S02-SL-100 |  | Foundation Excavation Works for Lighting Poles of Street Lighting Network-[Road 09]-[SW-2] | 9d | 2026-11-16 | 2026-11-25 | CO-R09.S02-EW-120, CO-R09.S02-EW-110, CO-R09.S02-PW-130, CO-R09.S01-SL-100 SS+2d | -177.5d | 0d | Labor/Helper [144 h]; Skilled Labor/Surveyor [72 h]; Excavator [144 h]; Lighting poles with one arm, including the power distribution box, screws, cables, 12 meters in height. [2.45] | 4,663.5 | CO-R09.S02-SL-100 | 12 | 12 | LP | Ex | Each | POL | SL | EX | CON | R09 | S02 | SL |
| CO-R09.S02-SL-110 |  | Installation Works for Lighting Poles Foundation of Street Lighting Network-[Road 09]-[SW-2] | 9d | 2026-11-26 | 2026-12-06 | CO-R09.S02-SL-100, PRO-R09-SL-DL-110 FF+3d, CO-R09.S01-SL-110 SS+2d, CO-R09.S01-SL-110 FF+2d | -177.5d | 16d | Labor/Helper [144 h]; Skilled Labor/Surveyor [8 h]; Foreman [8 h]; Eq. Operator [8 h]; Loader [18 h]; Reinforced concrete foundation, for 12m high lighting columns With Drawpits [49] | 17,826.69 | CO-R09.S02-SL-110 | 12 | 12 | LP | LPF | Each | POL | SL | INSTALL | CON | R09 | S02 | SL |
| CO-R09.S02-SL-120 |  | Installation Works for Lighting Poles of Street Lighting Network-[Road 09]-[SW-2] | 9d | 2026-12-26 | 2027-01-04 | CO-R09.S02-SL-110, PRO-R09-SL-DL-120 FF+3d, CO-R09.S01-SL-120 SS+2d | -193.5d | 0d | Labor/Helper [72 h]; Electrician [72 h]; Lighting poles with one arm, including the power distribution box, screws, cables, 12 meters in height. [26.95] | 51,298.52 | CO-R09.S02-SL-120 | 12 | 12 | LP | LP | Each | POL | SL | POLES | CON | R09 | S02 | SL |
| CO-R09.S02-SL-210 |  | Backfilling Works for Lighting Poles of Street Lighting Network-[Road 09]-[SW-2] | 20d | 2027-01-07 | 2027-01-30 | CO-R09.S02-SL-120, CO-R09.S01-SL-210 SS+2d | -195.5d | 0d | Labor/Helper [160 h]; Skilled Labor/Surveyor [80 h]; Excavator [160 h]; Lighting poles with one arm, including the power distribution box, screws, cables, 12 meters in height. [9.8] | 18,654.01 | CO-R09.S02-SL-210 | 12 | 12 |  |  |  |  | SL | BACK | CON | R09 | S02 | SL |
| CO-R09.S02-SL-130 |  | Installation Works for Lighting Fixtures With Drop Wire of Street Lighting Network-[Road 09]-[SW-2] | 17d | 2027-01-20 | 2027-02-08 | CO-R09.S02-SL-120, PRO-R09-SL-DL-140 FF+3d, CO-R09.S02-SL-200 FF, CO-R09.S01-SL-130 SS+2d | -195.5d | 0d | Labor/Helper [136 h]; Electrician [136 h]; Manlift [136 h]; Street Lighting( LED) Luminaire,(Type C) complete with control gear and lamp, ?.17000 Lumen [49] | 29,350.02 | CO-R09.S02-SL-130 | 12 | 12 | LP | LPA | Each | POL | SL | INSTALL | CON | R09 | S02 | SL |
| CO-R09.S02-SL-200 |  | Testing Works for Lighting Poles of Street Lighting Network-[Road 09]-[SW-2] | 8d | 2027-01-31 | 2027-02-08 | CO-R09.S02-SL-210, CO-R09.S02-SL-120, CO-R09.S01-SL-200 SS+2d | -195.5d | 0d | Labor/Helper [128 h]; Electrician [128 h]; Lighting poles with one arm, including the power distribution box, screws, cables, 12 meters in height. [9.8] | 18,654.01 | CO-R09.S02-SL-200 | 12 | 12 |  |  |  |  | SL | TESTING | CON | R09 | S02 | SL |
|  | CW | **Cabling Works** |  | 2027-01-05 | 2027-02-08 |  |  |  |  |  |  |  |  |  |  |  |  |  |  |  |  |  |  |
| CO-R09.S02-SL-140 |  | Trench Excavation and Bedding Works for Street Lighting Network-[Road 09]-[SW-2] | 10d | 2027-01-05 | 2027-01-16 | CO-R09.S02-EW-120, CO-R09.S02-SL-120, CO-R09.S02-SL-110, CO-R09.S01-SL-140 SS+2d | -169d | 0d | Labor/Helper [80 h]; Skilled Labor/Surveyor [40 h]; Excavator [80 h] |  | CO-R09.S02-SL-140 | 12 | 12 | CW | Ex | LM | CB | SL | EXC | CON | R09 | S02 | SL |
| CO-R09.S02-SL-150 |  | Cable Laying Works for Street Lighting Network-[Road 09]-[SW-2] | 10d | 2027-01-17 | 2027-01-27 | CO-R09.S02-SL-140, PRO-R09-SL-DL-100 FF+3d, CO-R09.S01-SL-150 SS+2d | -169d | 0d | Labor/Helper [80 h]; Electrician [80 h]; Low Current Technician [80 h]; Supply, installation , test and operation of cables, Copper, (4Cx25mmï¿½,Cu/XLPE/SWA/PVC +1x16mmï¿½ PVC/PVC) [1870.05] | 87,705.35 | CO-R09.S02-SL-150 | 12 | 12 | CW | CL | LM | CB | SL | LAYING | CON | R09 | S02 | SL |
| CO-R09.S02-SL-160 |  | Trench Backfilling and Compaction Works for Street Lighting Network-[Road 09]-[SW-2] | 10d | 2027-01-28 | 2027-02-08 | CO-R09.S02-SL-150, CO-R09.S01-SL-160 SS+2d | -169d | 11d | Skilled Labor/Surveyor [8 h]; Foreman [8 h]; Excavator [80 h]; Water Tank [20 h]; Supply, installation , test and operation of cables, Copper, (4Cx25mmï¿½,Cu/XLPE/SWA/PVC +1x16mmï¿½ PVC/PVC) [143.85] | 6,746.56 | CO-R09.S02-SL-160 | 12 | 12 | CW | BF | LM | CB | SL | BACK | CON | R09 | S02 | SL |
|  | DPB | **Distrubution Panel Boards** |  | 2027-03-16 | 2027-05-25 |  |  |  |  |  |  |  |  |  |  |  |  |  |  |  |  |  |  |
| CO-R09.S02-SL-170 |  | Foundation Excavation Works For Panel Boards of Street Lighting Network-[Road 09]-[SW-2] | 10d | 2027-03-16 | 2027-03-27 | CO-R09.S02-EW-120, CO-R09.S02-SL-160 SS, CO-R09-SL-ES-100, CO-R09.S01-SL-170 SS+2d | -187.25d | 5d | Labor/Helper [80 h]; Skilled Labor/Surveyor [40 h]; Reinforced concrete base With fence for Distribution substation in accordance with SEC Specifications [3] | 43,293.39 | CO-R09.S02-SL-170 | 12 | 12 | DB | Ex | Each | DS | SL | EXC | CON | R09 | S02 | SL |
| CO-R09.S02-SL-180 |  | Installation Works for Panel Board Concrete Foundations of Street Lighting Network-[Road 09]-[SW-2] | 10d | 2027-04-03 | 2027-04-13 | CO-R09.S02-SL-170, CO-R09.S01-SL-180 SS+2d | -192.25d | 2d | Skilled Labor/Surveyor [16 h]; Foreman [16 h]; Excavator [160 h]; Water Tank [40 h]; Package Substation 33000/400V, 500kVA with RMU [0.45] | 48,506.22 | CO-R09.S02-SL-180 | 12 | 12 | DB | PBF | Each | DS | SL | INSTALL | CON | R09 | S02 | SL |
| CO-R09.S02-SL-190 |  | Installation Works for Lighting Panel Boards of Street Lighting Network-[Road 09]-[SW-2] | 10d | 2027-04-17 | 2027-04-27 | CO-R09.S02-SL-180, PRO-R09-SL-DL-160 FF+3d, CO-R09.S01-SL-190 SS+2d | -194.25d | 0d | Labor/Helper [160 h]; Electrician [160 h]; Package Substation 33000/400V, 500kVA with RMU [1.65] | 177,856.16 | CO-R09.S02-SL-190 | 12 | 12 | DB | PB | Each | DS | SL | INST BO | CON | R09 | S02 | SL |
| CO-R09.S02-SL-220 |  | A wall of concrete blocks to install the KWH meter of Street Lighting Network-[Road 09]-[SW-2] | 18.25d | 2027-04-28 | 2027-05-25 | CO-R09.S02-SL-180, CO-R09.S02-SL-190, CO-R09.S01-SL-220 SS+2d | -194.25d | 0d | Block Mason [144 h]; Road crossing ducts, 4 way (4 x 100mm PVC) [107]; Drawpit with medium duty steel cover, size 600x600x1000mm, Type 18 [3]; Drawpit with medium duty steel cover, size 900x900x1200mm, Type 4 [10]; Street Lighting Feeder pillars , Includes foundation and draw pits [3] | 69,068.29 | CO-R09.S02-SL-220 | 12 | 12 | DB |  | Each | DS | SL | wall | CON | R09 | S02 | SL |
|  | TE | **Telecom Network** |  | 2027-01-14 | 2027-02-21 |  |  |  |  |  |  |  |  |  |  |  |  |  |  |  |  |  |  |
|  | PD | **Ducts Works** |  | 2027-01-14 | 2027-02-10 |  |  |  |  |  |  |  |  |  |  |  |  |  |  |  |  |  |  |
| CO-R09.S02-TE-100 |  | Trench Excavation and Bedding Works for Ducts of Telecom Network-[Road 09]-[SW-2] | 3d | 2027-01-14 | 2027-01-17 | CO-R09.S01-TE-100 SS+2d | -168d | 0d | Skilled Labor/Surveyor [3 h]; Foreman [3 h]; Excavator [56 h]; 6-way ducts, 50mm dia. HDPE [89]; Road crossing ducts (6-way) [8] | 13,266 | CO-R09.S02-TE-100 | 12 | 12 | PD | Ex | LM | DC | TE | DUCTS | CON | R09 | S02 | TE |
| CO-R09.S02-TE-110 |  | Pipes Laying Works for Ducts of Telecom Network-[Road 09]-[SW-2] | 7d | 2027-01-18 | 2027-01-25 | CO-R09.S02-TE-100, PRO-R09-TE-DL-100 FF+3d, CO-R09.S01-TE-110 SS+2d | -168d | 0d | Labor/Helper [112 h]; Skilled Labor/Surveyor [6 h]; Foreman [6 h]; Plumber [56 h]; Excavator [56 h]; JCB [28 h]; Truck [56 h]; 6-way ducts, 50mm dia. HDPE [535]; Road crossing ducts (6-way) [45] | 79,227.5 | CO-R09.S02-TE-110 | 12 | 12 | PD | PL | LM | DC | TE | DUCTS | CON | R09 | S02 | TE |
| CO-R09.S02-TE-120 |  | Pouring Plain Concrete Above Ducts of Telecom Network-[Road 09]-[SW-2] | 7d | 2027-01-26 | 2027-02-02 | CO-R09.S02-TE-110, CO-R09.S01-TE-120 SS+2d | -168d | 0d | Skilled Labor/Surveyor [6 h]; Foreman [6 h]; Cons. Carpenter [112 h]; Block Mason [56 h]; 6-way ducts, 50mm dia. HDPE [89]; Road crossing ducts (6-way) [8] | 13,266 | CO-R09.S02-TE-120 | 12 | 12 | PD | PC | LM | DC | TE | DUCTS | CON | R09 | S02 | TE |
| CO-R09.S02-TE-130 |  | Trench Backfilling and Compaction Works for Ducts of Telecom Network-[Road 09]-[SW-2] | 7d | 2027-02-03 | 2027-02-10 | CO-R09.S02-TE-120, CO-R09.S01-TE-130 SS+2d | -168d | 9d | Skilled Labor/Surveyor [6 h]; Foreman [6 h]; Excavator [56 h]; 6-way ducts, 50mm dia. HDPE [178]; Road crossing ducts (6-way) [15] | 26,364.5 | CO-R09.S02-TE-130 | 12 | 12 | PD | BF | LM | DC | TE | DUCTS | CON | R09 | S02 | TE |
|  | MH | **Manholes Works** |  | 2027-01-18 | 2027-02-21 |  |  |  |  |  |  |  |  |  |  |  |  |  |  |  |  |  |  |
| CO-R09.S02-TE-140 |  | Excavation Works for Manholes of Telecom Network-[Road 09]-[SW-2] | 7d | 2027-01-18 | 2027-01-25 | CO-R09.S02-TE-100, CO-R09.S01-TE-140 SS+2d | -168d | 4d | Skilled Labor/Surveyor [6 h]; Foreman [6 h]; Excavator [56 h]; Manhole Type 2 (2000x1000x1000) [1.4]; Manhole Type 3 (2000x1000x1000) [0.6] | 6,300.28 | CO-R09.S02-TE-140 | 12 | 12 | MH | Ex | Each | MNH | TE | EXC | CON | R09 | S02 | TE |
| CO-R09.S02-TE-150 |  | Installation Works for Manholes of Telecom Network-[Road 09]-[SW-2] | 7d | 2027-01-31 | 2027-02-07 | CO-R09.S02-TE-140, PRO-R09-TE-DL-110 FF+3d, CO-R09.S01-TE-150 SS+2d | -172d | 5d | Skilled Labor/Surveyor [6 h]; Foreman [6 h]; Excavator [56 h]; Manhole Type 1 (2000x1000x1000) [1]; Manhole Type 2 (2000x1000x1000) [4.2]; Manhole Type 3 (2000x1000x1000) [1.8] | 22,017 | CO-R09.S02-TE-150 | 12 | 12 | MH | HH | Each | MNH | TE | INSTALL-1 | CON | R09 | S02 | TE |
| CO-R09.S02-TE-160 |  | Backfilling Works for Manholes of Telecom Network-[Road 09]-[SW-2] | 7d | 2027-02-14 | 2027-02-21 | CO-R09.S02-TE-150, CO-R09.S01-TE-160 SS+2d | -177d | 0d | Skilled Labor/Surveyor [6 h]; Foreman [6 h]; Excavator [56 h]; Manhole Type 2 (2000x1000x1000) [1.4]; Manhole Type 3 (2000x1000x1000) [0.6] | 6,300.28 | CO-R09.S02-TE-160 | 12 | 12 | MH | BF | Each | MNH | TE | (New)-2 | CON | R09 | S02 | TE |

| ID | WBS | Activity | Duration | Start | Finish | Predecessors | Complete | Remaining | Planned start | Planned finish | Total float | Free float | Resources | Cost | Actual cost | Activity ID N | Seq | New Seq | 02- Network-WBS | 03- Activity | 04-UOM | 05-Discipline | 01- Network | 08 Stage | 09 Roads | 10 side Walk | Discipline | 07-Weightage System |
| --- | --- | --- | --- | --- | --- | --- | --- | --- | --- | --- | --- | --- | --- | --- | --- | --- | --- | --- | --- | --- | --- | --- | --- | --- | --- | --- | --- | --- |
|  | RD | **Road Works** |  | 2026-06-10 | 2027-06-08 |  |  |  |  |  |  |  |  |  |  |  |  |  |  |  |  |  |  |  |  |  |  |  |
|  | RD | **Pre-Bituminous Construction** |  | 2026-06-10 | 2027-03-22 |  |  |  |  |  |  |  |  |  |  |  |  |  |  |  |  |  |  |  |  |  |  |  |
| CO-R09.S02-RD-P-100 |  | Capping and Subgrade Layer for Road Works-[Road 09]-[SW-2] | 12d | 2026-06-10 A | 2027-02-25 | CO-R09.S02-SD-130 FF, CO-R09.S02-SL-160 FF+3d, PRO-R09-RD-DL-100 FF+3d, CO-R09.S01-RD-P-100 SS+2d, CO-R09.S02-PW-130 FF+1d, CO-R09.S02-SD-210 FF+1d, CO-R09.S02-SD-220 SS, CO-R09.S02-SD-220 FF+1d | 60% | 17d | 2027-02-03 | 2027-02-16 | -180d | 0d | Labor/Helper [768 h]; Skilled Labor/Surveyor [348 h]; Loader [576 h]; Grader [576 h]; Road Roller [576 h]; Water Tank [576 h]; 300mm capping layer underneath subgrade , CBR?15% [6762.42]; 300mm thick Subgrade, including subgrade preparation, CBR?25% [6762.42] | 524,763.79 | 314,858.28 | CO-R09.S02-RD-P-100 | 12 | 12 | AB | SG | Sq.m | BS | RD | CON | R09 | S02 | RD |  |
| CO-R09.S02-RD-P-110 |  | Aggregate Base Course Layer for Road Works-[Road 09]-[SW-2] | 18d | 2027-02-27 | 2027-03-22 | CO-R09.S02-RD-P-100 SS+3d, CO-R09.S02-RD-P-100 FF+3d, CO-R09.S02-SD-170 SS+3d, CO-R09.S02-SD-170 FF+3d, PRO-R09-RD-DL-110 FF+3d, CO-R09.S01-RD-P-110 SS+2d, CO-R09.S02-PW-160 FS+3d, CO-R09.S02-SL-160 SS+6d, CO-R09.S02-TE-130 FS+3d, CO-R09.S02-TE-160 FS+3d |  |  |  |  | -98d | 97.5d | Labor/Helper [576 h]; Skilled Labor/Surveyor [288 h]; Foreman [288 h]; Loader [288 h]; Grader [288 h]; Road Roller [288 h]; Aggregate base course 200mm thick after compaction in two layers(Grading 1); CBR?80%; including watering, compaction and testing [4508.74] | 365,523.55 |  | CO-R09.S02-RD-P-110 | 12 | 12 | AB | BA | Sq.m | BS | RD | CON | R09 | S02 | RD |  |
|  | LS | **Pavement Works** |  | 2026-08-25 | 2027-06-08 |  |  |  |  |  |  |  |  |  |  |  |  |  |  |  |  |  |  |  |  |  |  |  |
| CO-R09.S02-RD-P-120 |  | Fixing of Curbstone for Sidewalks Pavement-[Road 09]-[SW-2] | 18d | 2026-08-25 A | 2026-08-31 A | PRO-R09-RD-DL-130 FF+3d | 100% |  | 2026-07-22 | 2026-08-11 |  |  | Labor/Helper [1152 h]; Block Mason [3456 h]; Precast Concrete Kerb, Type K1 [2494.95]; Precast Concrete Kerb, Type L1 [4950.29] | 299,298.65 | 299,298.65 | CO-R09.S02-RD-P-120 | 12 | 12 | LS | CR | LM | LAND | RD | CON | R09 | S02 | RD |  |
| CO-R09.S02-RD-P-130 |  | Fixing of Interlock Tiles for Sidewalks Pavement-[Road 09]-[SW-2] | 18d | 2027-05-12 | 2027-06-08 | PRO-R09-RD-DL-120 FF+3d, CO-R09.S02-RD-P-120 SS, CO-R09.S02-RD-P-120 FF+3d, CO-R09-PW-TF-110 FF, CO-R09-PW-TF-120 FF, CO-R09-SW-TF-100 SS, CO-R09-SW-TF-110 FF, CO-R09-SW-TF-120 FF, CO-R09-SL-TF-100 FF, CO-R09-SL-TF-110 FF, CO-R09-SL-ES-100 FF, CO-R09-SL-ES-110 FF, CO-R09-IR-TF-100 FF, CO-R09-MV-TF-100 FF, CO-R09.S01-RD-P-130 SS+2d |  |  |  |  | -195.5d | 0d | Labor/Helper [1296 h]; Block Mason [3888 h]; Interlocking block pavers for sidewalk/footpath 60mm thick on and including 30mm Sand Bedding, 200mm Aggregate subbase, all in accordance with authority standards and complete as per specifications [4455.27]; Extraover for Pedestrian ramps [11] | 213,779.51 |  | CO-R09.S02-RD-P-130 | 12 | 12 | LS | IL | Sq.m | LAND | RD | CON | R09 | S02 | RD |  |
|  | 4 | **Road 10 Local 2 ( 2352 LM )** |  | 2025-03-15 | 2027-04-15 |  |  |  |  |  |  |  |  |  |  |  |  |  |  |  |  |  |  |  |  |  |  |  |
|  | 1 | **SW-3** |  | 2025-03-15 | 2027-04-06 |  |  |  |  |  |  |  |  |  |  |  |  |  |  |  |  |  |  |  |  |  |  |  |
|  | SW_3 | **SW_3-East** |  | 2025-03-15 | 2027-04-06 |  |  |  |  |  |  |  |  |  |  |  |  |  |  |  |  |  |  |  |  |  |  |  |
|  | EW | **Earthworks** |  | 2025-03-15 | 2025-03-24 |  |  |  |  |  |  |  |  |  |  |  |  |  |  |  |  |  |  |  |  |  |  |  |
|  | EW | **Earthworks** |  | 2025-03-15 | 2025-03-24 |  |  |  |  |  |  |  |  |  |  |  |  |  |  |  |  |  |  |  |  |  |  |  |
| CO-R10.S03-ES-EW-100 |  | Roadway Excavation Works Upto Design Level for Earthworks-[Road 10]-[SW-3] | 10d | 2025-03-15 A | 2025-03-22 A | ENG-MS-RD-A-10, ENG-SH-RD-A-100, CO-R15.S10-EW-100 | 100% |  | 2025-05-19 | 2025-05-29 |  |  | Labor/Helper [192 h]; Skilled Labor/Surveyor [24 h]; Foreman [24 h]; Water Tank [192 h]; Dozer [192 h]; Roadway Excavation for cuttings; on any type of material for all depths including trimming and Preparation of excavated surfaces and disposal. [15964.1] | 100,573.89 | 100,573.89 | CO-R10.S03-EW-100 | 9 | 9 | EW | Ex | Cub.m | EW | EW | CON | R10 | S03 | EW |  |
| CO-R10.S03-ES-EW-110 |  | Embankments Works Upto Design Level for Earthworks-[Road 10]-[SW-3] | 12d | 2025-03-18 A | 2025-03-24 A | CO-R10.S03-ES-EW-100, ENG-MS-RD-A-10, ENG-SH-RD-A-100 | 100% |  | 2025-05-31 | 2025-06-17 |  |  | Labor/Helper [720 h]; Skilled Labor/Surveyor [90 h]; Foreman [90 h]; Water Tank [720 h]; Dozer [720 h]; Embankments to the ROW, with suitable material other than top soil or rock according to specifications [26873.7] | 217,676.81 | 217,676.81 | CO-R10.S03-EW-110 | 9 | 9 | EW | BF | Cub.m | EW | EW | CON | R10 | S03 | EW |  |
|  | SD | **Storm Drainage Network** |  | 2025-08-02 | 2026-10-10 |  |  |  |  |  |  |  |  |  |  |  |  |  |  |  |  |  |  |  |  |  |  |  |
|  | ML | **Main Line Sections** |  | 2025-08-02 | 2025-08-21 |  |  |  |  |  |  |  |  |  |  |  |  |  |  |  |  |  |  |  |  |  |  |  |
| CO-R10.S03-ES-SD-100 |  | Trench Excavation and Bedding Works for Main Lines of Storm Drainage Network-[Road 10]-[SW-3] | 10d | 2025-08-02 A | 2025-08-07 A | ENG-SH-SD-ML-A-110, CO-R10.S03-ES-EW-110, CO-R10.S03-ES-EW-100, ENG-MS-SD-ML-A-110, CO-R15.S10-SD-100 | 100% |  | 2025-08-16 | 2025-08-26 |  |  | Skilled Labor/Surveyor [12 h]; Foreman [12 h]; Excavator [112 h]; Pipe with diameter 500mm ; depth: 0.0m - 1.5m [5]; Pipe with diameter 600mm ; depth: 1.51m - 2.5m [19.65]; Pipe with diameter 600mm ; depth: 2.51m - 3.5m [17.3]; Pipe with diameter 700mm ; depth: 1.51m - 2.5m [56.06] | 45,128.75 | 45,128.75 | CO-R10.S03-SD-100 | 9 | 9 | ML | Ex | LM | ML | SD | CON | R10 | S03 | SD | EX |
| CO-R10.S03-ES-SD-120 |  | Pipes Laying Works for Main Lines of Storm Drainage Network-[Road 10]-[SW-3] | 15d | 2025-08-09 A | 2025-08-14 A | CO-R10.S03-ES-SD-100, CO-R15.S10-SD-120 | 100% |  | 2025-09-02 | 2025-09-18 |  |  | Labor/Helper [240 h]; Skilled Labor/Surveyor [12 h]; Foreman [12 h]; Plumber [120 h]; Excavator [120 h]; Pipe with diameter 500mm ; depth: 0.0m - 1.5m [15]; Pipe with diameter 600mm ; depth: 1.51m - 2.5m [58.94]; Pipe with diameter 600mm ; depth: 2.51m - 3.5m [51.9]; Pipe with diameter 700mm ; depth: 1.51m - 2.5m [168.18] | 135,386.25 | 135,386.25 | CO-R10.S03-SD-120 | 9 | 9 | ML | PL | LM | ML | SD | CON | R10 | S03 | SD | PIPE |
| CO-R10.S03-ES-SD-130 |  | Trench Backfilling and Compaction Works for Main Lines of Storm Drainage Network-[Road 10]-[SW-3] | 15d | 2025-08-16 A | 2025-08-21 A | ENG-SH-SD-ML-A-110 FF, ENG-MS-SD-ML-A-110 FF, CO-R10.S03-ES-SD-120, CO-R10.S03-ES-SD-220 FF | 100% |  | 2025-09-20 | 2025-10-07 |  |  | Skilled Labor/Surveyor [12 h]; Foreman [12 h]; Excavator [120 h]; Pipe with diameter 500mm ; depth: 0.0m - 1.5m [2.5]; Pipe with diameter 600mm ; depth: 1.51m - 2.5m [9.82]; Pipe with diameter 600mm ; depth: 2.51m - 3.5m [8.65]; Pipe with diameter 700mm ; depth: 1.51m - 2.5m [28.03] | 22,564.37 | 22,564.37 | CO-R10.S03-SD-130 | 9 | 9 | ML | BF | LM | ML | SD | CON | R10 | S03 | SD | BACK |
|  | MH | **Manholes** |  | 2025-11-01 | 2026-10-07 |  |  |  |  |  |  |  |  |  |  |  |  |  |  |  |  |  |  |  |  |  |  |  |
| CO-R10.S03-ES-SD-180 |  | Trench Excavation and Bedding Works for Manholes of Storm Drainage Network-[Road 10]-[SW-3] | 1d | 2025-11-01 A | 2025-11-06 A | CO-R10.S03-ES-SD-120 SS, PRO-SD-1DL-100 | 100% |  | 2025-09-02 | 2025-09-02 |  |  | Labor/Helper [40 h]; Skilled Labor/Surveyor [20 h]; Excavator [40 h]; MH ; depth: 0.0m - 1.5m [0.23]; MH ; depth: 1.51m - 2.5m [0.6]; MH ; depth: 0.0m - 1.5m [0.15]; MH ; depth: 0.0m - 1.5m [0.07]; MH ; depth: 1.51m - 2.5m [0.23]; MH ; depth: 2.51 - 3.5m [0.3]; MH ; depth: 3.51 - 4.5m [0.15] | 30,528.13 | 30,528.13 | CO-R10.S03-SD-180 | 9 | 9 |  |  |  |  | SD | CON | R10 | S03 | SD | EX |
| CO-R10.S03-ES-SD-190 |  | Install RC Footing Works for Manholes of Storm Drainage Network-[Road 10]-[SW-3] | 1d | 2025-11-05 A | 2025-11-13 A | CO-R10.S03-ES-SD-180 | 100% |  | 2025-09-03 | 2025-09-03 |  |  | Cons. Carpenter [80 h]; Steel Fixer [80 h]; MH ; depth: 0.0m - 1.5m [0.07]; MH ; depth: 1.51m - 2.5m [0.2]; MH ; depth: 0.0m - 1.5m [0.05]; MH ; depth: 0.0m - 1.5m [0.03]; MH ; depth: 1.51m - 2.5m [0.07]; MH ; depth: 2.51 - 3.5m [0.1]; MH ; depth: 3.51 - 4.5m [0.05] | 10,176.04 | 10,176.04 | CO-R10.S03-SD-190 | 9 | 9 |  |  |  |  | SD | CON | R10 | S03 | SD | RC F |
| CO-R10.S03-ES-SD-200 |  | Install RC Wall Rings & Slab Works for Manholes of Storm Drainage Network-[Road 10]-[SW-3] | 4d | 2025-11-11 A | 2025-11-22 A | CO-R10.S03-ES-SD-190 | 100% |  | 2025-09-04 | 2025-09-08 |  |  | Cons. Carpenter [128 h]; Steel Fixer [128 h]; MH ; depth: 0.0m - 1.5m [0.68]; MH ; depth: 1.51m - 2.5m [1.8]; MH ; depth: 0.0m - 1.5m [0.45]; MH ; depth: 0.0m - 1.5m [0.23]; MH ; depth: 1.51m - 2.5m [0.68]; MH ; depth: 2.51 - 3.5m [0.9]; MH ; depth: 3.51 - 4.5m [0.45] | 91,584.39 | 91,584.39 | CO-R10.S03-SD-200 | 9 | 9 |  |  |  |  | SD | CON | R10 | S03 | SD | RC W |
| CO-R10.S03-ES-SD-220 |  | Backfilling Works for Manholes of Storm Drainage Network-[Road 10]-[SW-3] | 7d | 2025-11-16 A | 2025-11-24 A | CO-R10.S03-ES-SD-210 | 100% |  | 2025-09-10 | 2025-09-17 |  |  | Labor/Helper [280 h]; Skilled Labor/Surveyor [140 h]; Excavator [280 h]; MH ; depth: 0.0m - 1.5m [0.3]; MH ; depth: 1.51m - 2.5m [0.8]; MH ; depth: 0.0m - 1.5m [0.2]; MH ; depth: 0.0m - 1.5m [0.1]; MH ; depth: 1.51m - 2.5m [0.3]; MH ; depth: 2.51 - 3.5m [0.4]; MH ; depth: 3.51 - 4.5m [0.2] | 40,704.18 | 40,704.18 | CO-R10.S03-SD-220 | 9 | 9 |  |  |  |  | SD | CON | R10 | S03 | SD | BACK |
| CO-R10.S03-ES-SD-210 |  | Testing Works for Manholes of Storm Drainage Network-[Road 10]-[SW-3] | 1d | 2026-09-15 A | 2026-10-07 A | CO-R10.S03-ES-SD-200 | 100% |  | 2025-09-09 | 2025-09-09 |  |  | Labor/Helper [40 h]; Plumber [40 h]; MH ; depth: 0.0m - 1.5m [0.15]; MH ; depth: 1.51m - 2.5m [0.4]; MH ; depth: 0.0m - 1.5m [0.1]; MH ; depth: 0.0m - 1.5m [0.05]; MH ; depth: 1.51m - 2.5m [0.15]; MH ; depth: 2.51 - 3.5m [0.2]; MH ; depth: 3.51 - 4.5m [0.1] | 20,352.09 | 20,352.09 | CO-R10.S03-SD-210 | 9 | 9 |  |  |  |  | SD | CON | R10 | S03 | SD | T&COV |

| ID | WBS | Activity | Duration | Start | Finish | Predecessors | Complete | Planned start | Planned finish | Total float | Free float | Resources | Cost | Actual cost | Activity ID N | Seq | New Seq | 02- Network-WBS | 03- Activity | 04-UOM | 05-Discipline | 01- Network | 07-Weightage System | 08 Stage | 09 Roads | 10 side Walk | Discipline |
| --- | --- | --- | --- | --- | --- | --- | --- | --- | --- | --- | --- | --- | --- | --- | --- | --- | --- | --- | --- | --- | --- | --- | --- | --- | --- | --- | --- |
|  | CB | **Catch Basin Sections** |  | 2025-08-20 | 2026-10-10 |  |  |  |  |  |  |  |  |  |  |  |  |  |  |  |  |  |  |  |  |  |  |
| CO-R10.S03-ES-SD-140 |  | Trench Excavation and Bedding Works for Catch Basins of Storm Drainage Network-[Road 10]-[SW-3] | 6d | 2025-08-20 A | 2025-08-25 A | CO-R10.S03-ES-EW-110, ENG-SH-SD-CB-A-110, ENG-MS-SD-CB-A-110, CO-R10.S03-ES-SD-220, CO-R15.S10-SD-140 | 100% | 2025-09-18 | 2025-09-25 |  |  | Skilled Labor/Surveyor [5 h]; Foreman [5 h]; Excavator [48 h]; Pipe with diameter 300mm ; depth: 0 - 1.5m [84.55]; Pipe with diameter 400mm ; depth: 0 - 1.5m [5.16] | 20,848.43 | 20,848.43 | CO-R10.S03-SD-140 | 9 | 9 | CB | Ex | Each | CB | SD | EX | CON | R10 | S03 | SD |
| CO-R10.S03-ES-SD-150 |  | Installation and Pipes Laying Connection Works for Catch Basins of Storm Drainage Network-[Road 10]-[SW-3] | 7d | 2025-08-26 A | 2025-08-28 A | CO-R10.S03-ES-SD-140, CO-R15.S10-SD-150 | 100% | 2025-09-27 | 2025-10-04 |  |  | Labor/Helper [224 h]; Skilled Labor/Surveyor [12 h]; Foreman [12 h]; Excavator [112 h]; Pipe with diameter 300mm ; depth: 0 - 1.5m [253.63]; Pipe with diameter 400mm ; depth: 0 - 1.5m [15.47] | 62,544.75 | 62,544.75 | CO-R10.S03-SD-150 | 9 | 9 | CB | CB | Each | CB | SD | INSTALL | CON | R10 | S03 | SD |
| CO-R10.S03-ES-SD-170 |  | Trench Backfilling and Compaction Works for Catch Basins of Storm Drainage Network-[Road 10]-[SW-3] | 7d | 2025-08-30 A | 2025-09-02 A | CO-R10.S03-ES-SD-160 | 100% | 2025-10-16 | 2025-10-23 |  |  | Skilled Labor/Surveyor [6 h]; Foreman [6 h]; Excavator [56 h]; Pipe with diameter 300mm ; depth: 0 - 1.5m [112.73]; Pipe with diameter 400mm ; depth: 0 - 1.5m [6.87] | 27,797.55 | 27,797.55 | CO-R10.S03-SD-170 | 9 | 9 | CB | BF | Each | CB | SD | BACK | CON | R10 | S03 | SD |
| CO-R10.S03-ES-SD-160 |  | Testing Works for Catch Basins of Storm Drainage Network-[Road 10]-[SW-3] | 10d | 2026-09-15 A | 2026-10-10 A | CO-R10.S03-ES-SD-150, CO-R10.S03-ES-SD-120 | 100% | 2025-10-05 | 2025-10-15 |  |  | Labor/Helper [160 h]; Skilled Labor/Surveyor [8 h]; Foreman [8 h]; Plumber [80 h]; Excavator [80 h]; Pipe with diameter 300mm ; depth: 0 - 1.5m [56.36]; Pipe with diameter 400mm ; depth: 0 - 1.5m [3.44] | 13,898.77 | 13,898.77 | CO-R10.S03-SD-160 | 9 | 9 | CB | PL | Each | CB | SD | TEST | CON | R10 | S03 | SD |
|  | PW | **Potable Water Network** |  | 2025-07-07 | 2026-11-12 |  |  |  |  |  |  |  |  |  |  |  |  |  |  |  |  |  |  |  |  |  |  |
|  | ML | **Main Line Sections** |  | 2025-08-05 | 2025-08-16 |  |  |  |  |  |  |  |  |  |  |  |  |  |  |  |  |  |  |  |  |  |  |
| CO-R10.S03-ES-PW-100 |  | Trench Excavation and Bedding Works for Main Lines of Potable Water Network-[Road 10]-[SW-3] | 6d | 2025-08-05 A | 2025-08-07 A | ENG-SH-PW-ML-A-110, CO-R10.S03-ES-EW-110, CO-R10.S03-ES-EW-100, ENG-MS-PW-ML-A-110, ENG-SH-PW-FH-A-110, CO-R10.S03-ES-SD-130 | 100% | 2025-10-08 | 2025-10-14 |  |  | Skilled Labor/Surveyor [5 h]; Foreman [5 h]; Excavator [48 h]; Pipe with diameter 200mm; in depth 0.0m - 1.5m [255.13] | 37,093.64 | 37,093.64 | CO-R10.S03-PW-100 | 9 | 9 | ML | Ex | LM | ML | PW | EX | CON | R10 | S03 | PW |
| CO-R10.S03-ES-PW-110 |  | Pipes Laying and accessories for Main Lines of Potable Water Network-[Road 10]-[SW-3] | 6d | 2025-08-09 A | 2025-08-12 A | CO-R10.S03-ES-PW-100 | 100% | 2025-10-15 | 2025-10-21 |  |  | Labor/Helper [192 h]; Skilled Labor/Surveyor [10 h]; Foreman [10 h]; Plumber [96 h]; Excavator [96 h]; Pipe with diameter 200mm; in depth 0.0m - 1.5m [637.83] | 92,734.1 | 92,734.1 | CO-R10.S03-PW-110 | 9 | 9 | ML | PL | LM | ML | PW | PIPE | CON | R10 | S03 | PW |
| CO-R10.S03-ES-PW-130 |  | Trench Backfilling and Compaction Works for Main Lines of Potable Water Network-[Road 10]-[SW-3] | 6d | 2025-08-13 A | 2025-08-16 A | CO-R10.S03-ES-PW-110 SS+3d, CO-R10.S03-ES-PW-110 FF+3d | 100% | 2025-10-29 | 2025-11-04 |  |  | Skilled Labor/Surveyor [5 h]; Foreman [5 h]; Eq. Operator [5 h]; Loader [48 h]; Compactor [48 h]; Water Tank [12 h]; Pipe with diameter 200mm; in depth 0.0m - 1.5m [255.13] | 37,093.64 | 37,093.64 | CO-R10.S03-PW-130 | 9 | 9 | ML | BF | LM | ML | PW | BACK | CON | R10 | S03 | PW |
|  | VC | **Valve Chamber** |  | 2025-07-07 | 2026-07-16 |  |  |  |  |  |  |  |  |  |  |  |  |  |  |  |  |  |  |  |  |  |  |
| CO-R10.S03-ES-PW-170 |  | Excavation Works for Main Line Valves and Valve Chambers of Potable Water Network-[Road 10]-[SW-3] | 1d | 2025-07-07 A | 2026-07-16 A | CO-R10.S03-ES-PW-100 | 100% | 2026-10-20 | 2026-10-20 |  |  | Labor/Helper [16 h]; Skilled Labor/Surveyor [8 h]; Excavator [16 h]; Air valve chamber; on 200 mm dia pipeline Depth 1.5 - 3 m [0.15] | 1,160.87 | 1,160.87 | CO-R10.S03-PW-170 | 9 | 9 | ML | VI | Each | ML | PW | EX | CON | R10 | S03 | PW |
| CO-R10.S03-ES-PW-180 |  | RC Footing Works for Main Line Valves and Valve Chambers of Potable Water Network-[Road 10]-[SW-3] | 3d | 2025-07-07 A | 2026-07-16 A | CO-R10.S03-ES-PW-170 | 100% | 2026-10-21 | 2026-10-24 |  |  | Cons. Carpenter [48 h]; Steel Fixer [48 h]; Wash out chamber; on 200 mm dia pipeline Depth 1.5 - 3m [0.15]; Air valve chamber; on 200 mm dia pipeline Depth 1.5 - 3 m [0.23] | 6,528.67 | 6,528.67 | CO-R10.S03-PW-180 | 9 | 9 | ML | VI | Each | ML | PW | RC F | CON | R10 | S03 | PW |
| CO-R10.S03-ES-PW-190 |  | RC Wall Works for Main Line Valves and Valve Chambers of Potable Water Network-[Road 10]-[SW-3] | 6d | 2025-07-07 A | 2026-07-16 A | CO-R10.S03-ES-PW-180 | 100% | 2026-10-25 | 2026-10-31 |  |  | Cons. Carpenter [96 h]; Steel Fixer [96 h]; Wash out chamber; on 200 mm dia pipeline Depth 1.5 - 3m [0.35]; Air valve chamber; on 200 mm dia pipeline Depth 1.5 - 3 m [0.53] | 15,233.56 | 15,233.56 | CO-R10.S03-PW-190 | 9 | 9 | ML | VI | Each | ML | PW | RC W | CON | R10 | S03 | PW |
| CO-R10.S03-ES-PW-200 |  | RC Slab Works for Main Line Valves and Valve Chambers of Potable Water Network-[Road 10]-[SW-3] | 2d | 2025-07-07 A | 2026-07-16 A | CO-R10.S03-ES-PW-190 | 100% | 2026-11-01 | 2026-11-02 |  |  | Cons. Carpenter [64 h]; Steel Fixer [64 h]; Wash out chamber; on 200 mm dia pipeline Depth 1.5 - 3m [0.2]; Air valve chamber; on 200 mm dia pipeline Depth 1.5 - 3 m [0.3] | 8,704.89 | 8,704.89 | CO-R10.S03-PW-200 | 9 | 9 | ML | VI | Each | ML | PW | RC S | CON | R10 | S03 | PW |
| CO-R10.S03-ES-PW-210 |  | Insulation Works for Main Line Valves and Valve Chambers of Potable Water Network-[Road 10]-[SW-3] | 1d | 2025-07-07 A | 2026-07-16 A | CO-R10.S03-ES-PW-200 | 100% | 2026-11-03 | 2026-11-03 |  |  | Labor/Helper [16 h]; Plumber [16 h]; Gate valves dia(200)mm on pipes with dia (200) mm. [11]; Wash out valve with dia (100)mm on pipes with dia (200) mm [0.5]; Air valves with dia (50mm) mm on pipes with dia(200)mm. [1.5] | 41,688.07 | 41,688.07 | CO-R10.S03-PW-210 | 9 | 9 | ML | VI | Each | ML | PW | INSUL | CON | R10 | S03 | PW |
| CO-R10.S03-ES-PW-220 |  | Backfilling Works for Main Line Valves and Valve Chambers of Potable Water Network-[Road 10]-[SW-3] | 3d | 2025-07-07 A | 2026-07-16 A | CO-R10.S03-ES-PW-210 | 100% | 2026-11-04 | 2026-11-07 |  |  | Labor/Helper [24 h]; Skilled Labor/Surveyor [12 h]; Excavator [24 h]; Wash out chamber; on 200 mm dia pipeline Depth 1.5 - 3m [0.2]; Air valve chamber; on 200 mm dia pipeline Depth 1.5 - 3 m [0.3] | 8,704.89 | 8,704.89 | CO-R10.S03-PW-220 | 9 | 9 | ML | VI | Each | ML | PW | BACK | CON | R10 | S03 | PW |
|  | FH | **Fire Hydrant** |  | 2026-10-27 | 2026-11-12 |  |  |  |  |  |  |  |  |  |  |  |  |  |  |  |  |  |  |  |  |  |  |
| CO-R10.S03-ES-PW-140 |  | Excavation Works for Fire Hydrants of Potable Water Network-[Road 10]-[SW-3] | 6d | 2026-10-27 | 2026-11-02 | CO-R10.S03-ES-PW-110 SS+3d, CO-R10.S03-ES-PW-110 FF+3d, CO-R10.S03-ES-EW-110 |  |  |  | -94d | 0d | Skilled Labor/Surveyor [5 h]; Foreman [5 h]; Excavator [48 h]; 3-outlet fire hydrant (2 x 2.5 inch and 1 x 4 inch) in the form of a separate dry vacuum cylinder [1.12] | 8,521.14 |  | CO-R10.S03-PW-140 | 9 | 9 | FH | Ex | Each | FH | PW | EX | CON | R10 | S03 | PW |
| CO-R10.S03-ES-PW-150 |  | Installation Works for Fire Hydrant of Potable Water Network-[Road 10]-[SW-3] | 6d | 2026-11-03 | 2026-11-09 | CO-R10.S03-ES-PW-140 |  |  |  | -94d | 0d | Labor/Helper [96 h]; Skilled Labor/Surveyor [5 h]; Foreman [5 h]; Plumber [96 h]; 3-outlet fire hydrant (2 x 2.5 inch and 1 x 4 inch) in the form of a separate dry vacuum cylinder [4.88] | 36,924.96 |  | CO-R10.S03-PW-150 | 9 | 9 | FH | FH | Each | FH | PW | INSTALL | CON | R10 | S03 | PW |
| CO-R10.S03-ES-PW-160 |  | Trench Backfilling and Compaction Works for Fire Hydrants of Potable Water Network-[Road 10]-[SW-3] | 6d | 2026-11-07 | 2026-11-12 | CO-R10.S03-ES-PW-150 SS+3d, CO-R10.S03-ES-PW-150 FF+3d |  |  |  | -94d | 61d | Skilled Labor/Surveyor [5 h]; Foreman [5 h]; Excavator [48 h]; 3-outlet fire hydrant (2 x 2.5 inch and 1 x 4 inch) in the form of a separate dry vacuum cylinder [1.5] | 11,361.52 |  | CO-R10.S03-PW-160 | 9 | 9 | FH | BF | Each | FH | PW | BACK | CON | R10 | S03 | PW |
|  | IR | **Irrigation Network** |  | 2025-07-20 | 2026-10-28 |  |  |  |  |  |  |  |  |  |  |  |  |  |  |  |  |  |  |  |  |  |  |
|  | ML | **Main Line Pipes** |  | 2025-07-20 | 2026-10-28 |  |  |  |  |  |  |  |  |  |  |  |  |  |  |  |  |  |  |  |  |  |  |
| CO-R10.S03-ES-IR-100 |  | Trench Excavation and Bedding Works for Main Lines of Irrigation Network-[Road 10]-[SW-3] | 7d | 2025-07-20 A | 2025-07-24 A | ENG-SH-IR-ML-A-110, CO-R10.S03-ES-EW-110, CO-R10.S03-ES-PW-130, CO-R10.S03-ES-SD-170, ENG-MS-IR-ML-A-110 | 100% | 2025-11-05 | 2025-11-12 |  |  | Skilled Labor/Surveyor [6 h]; Foreman [6 h]; Excavator [56 h]; 355 mm pipe; depth 1.5m - 3.0m [100]; 400 mm pipe; depth 1.5m - 3.0m [100]; 500. mm pipe; depth 1.5m - 3.0m [280] | 236,979 | 236,979 | CO-R10.S03-IR-100 | 9 | 9 | ML | Ex | LM | ML | IR | EX | CON | R10 | S03 | IR |
| CO-R10.S03-ES-IR-110 |  | Pipes Laying Works for Main Lines of Irrigation Network-[Road 10]-[SW-3] | 7d | 2025-07-26 A | 2025-07-31 A | CO-R10.S03-ES-IR-100, PRO-R19.2-IR-DL-100 FF+3d | 100% | 2025-11-13 | 2025-11-20 |  |  | Labor/Helper [112 h]; Skilled Labor/Surveyor [6 h]; Foreman [6 h]; Plumber [56 h]; Excavator [56 h]; 355 mm pipe; depth 1.5m - 3.0m [300]; 400 mm pipe; depth 1.5m - 3.0m [300] | 238,185 | 238,185 | CO-R10.S03-IR-110 | 9 | 9 | ML | PL | LM | ML | IR | PIPE | CON | R10 | S03 | IR |
| CO-R10.S03-ES-IR-130 |  | Trench Backfilling and Compaction Works for Main Lines of Irrigation Network-[Road 10]-[SW-3] | 7d | 2025-08-20 A | 2025-08-21 A | CO-R10.S03-ES-IR-110 | 100% | 2025-11-24 | 2025-12-01 |  |  | Skilled Labor/Surveyor [6 h]; Foreman [6 h]; Excavator [56 h]; 355 mm pipe; depth 1.5m - 3.0m [50]; 400 mm pipe; depth 1.5m - 3.0m [50] | 39,697.5 | 39,697.5 | CO-R10.S03-IR-130 | 9 | 9 | ML | BF | LM | ML | IR | BACK | CON | R10 | S03 | IR |
| CO-R10.S03-ES-IR-120 |  | Installation Works for Main Line Valves of Irrigation Network-[Road 10]-[SW-3] | 2d | 2026-10-27 | 2026-10-28 | CO-R10.S03-ES-IR-110 |  |  |  | 0d | 163d | Labor/Helper [64 h]; Skilled Labor/Surveyor [4 h]; Foreman [4 h]; Plumber [64 h]; Butterfly valves with dia (355)mm on pipes with dia (355)mm. [1]; Butterfly valves with dia (400)mm on pipes with dia (400)mm. [1]; Butterfly valves with dia (500)mm on pipes with dia (500)mm. [3]; Wash out valve with dia (100)mm on pipes with dia (355) mm [1]; Wash out valve with dia (150)mm on pipes with dia (400) mm [1]; Wash out valve with dia (150)mm on pipes with dia (500) mm [3]; Air valves with dia (65mm) mm on pipes with dia(280)mm. [1]; Air valves with dia (65mm) mm on pipes with dia(400)mm. [1]; Air valves with dia (65mm) mm on pipes with dia(500)mm. [3]; Wash out chamber; on 355 mm dia pipeline Depth 1.5 - 3m [1]; Wash out chamber; on 400 mm dia pipeline Depth 1.5 - 3m [1]; Wash out chamber; on 500 mm dia pipeline Depth 1.5 - 3m [3] | 544,074.3 |  | CO-R10.S03-IR-120 | 9 | 9 | ML | VI | Each | ML | IR | VALV | CON | R10 | S03 | IR |

| ID | WBS | Activity | Duration | Start | Finish | Predecessors | Total float | Free float | Resources | Cost | Activity ID N | Seq | New Seq | 02- Network-WBS | 03- Activity | 04-UOM | 05-Discipline | 01- Network | 07-Weightage System | 08 Stage | 09 Roads | 10 side Walk | Discipline |
| --- | --- | --- | --- | --- | --- | --- | --- | --- | --- | --- | --- | --- | --- | --- | --- | --- | --- | --- | --- | --- | --- | --- | --- |
|  | SL | **Street Lighting Network** |  | 2026-10-27 | 2027-02-24 |  |  |  |  |  |  |  |  |  |  |  |  |  |  |  |  |  |  |
|  | LP | **Lighting Poles Works** |  | 2026-10-27 | 2026-12-03 |  |  |  |  |  |  |  |  |  |  |  |  |  |  |  |  |  |  |
| CO-R10.S03-ES-SL-100 |  | Foundation Excavation Works for Lighting Poles of Street Lighting Network-[Road 10]-[SW-3] | 12d | 2026-10-27 | 2026-11-09 | CO-R10.S03-ES-EW-110, ENG-SH-SL-A-110, CO-R10.S03-ES-EW-100, ENG-MS-SL-A-110, CO-R10.S03-ES-IR-130 | -188d | 0d | Labor/Helper [192 h]; Skilled Labor/Surveyor [96 h]; Excavator [192 h]; Lighting poles with one arm, including the power distribution box, screws, cables, 12 meters in height. [1.2] | 2,284.16 | CO-R10.S03-SL-100 | 9 | 9 | LP | Ex | Each | POL | SL | EX | CON | R10 | S03 | SL |
| CO-R10.S03-ES-SL-110 |  | Installation Works for Lighting Poles Foundation of Street Lighting Network-[Road 10]-[SW-3] | 12d | 2026-11-02 | 2026-11-15 | CO-R10.S03-ES-SL-100 SS+5d, CO-R10.S03-ES-SL-100 FF+5d | -188d | 0d | Labor/Helper [384 h]; Skilled Labor/Surveyor [20 h]; Foreman [20 h]; Eq. Operator [20 h]; Loader [48 h]; Reinforced concrete foundation, for 12m high lighting columns With Drawpits [24] | 8,731.44 | CO-R10.S03-SL-110 | 9 | 9 | LP | LPF | Each | POL | SL | INSTALL | CON | R10 | S03 | SL |
| CO-R10.S03-ES-SL-120 |  | Installation Works for Lighting Poles of Street Lighting Network-[Road 10]-[SW-3] | 18d | 2026-11-08 | 2026-11-28 | CO-R10.S03-ES-SL-110 SS+5d, CO-R10.S03-ES-SL-110 FF+5d | -188d | 0d | Labor/Helper [144 h]; Electrician [144 h]; Lighting poles with one arm, including the power distribution box, screws, cables, 12 meters in height. [13.2] | 25,125.8 | CO-R10.S03-SL-120 | 9 | 9 | LP | LP | Each | POL | SL | POLES | CON | R10 | S03 | SL |
| CO-R10.S03-ES-SL-130 |  | Installation Works for Lighting Fixtures With Drop Wire of Street Lighting Network-[Road 10]-[SW-3] | 18d | 2026-11-14 | 2026-12-03 | CO-R10.S03-ES-SL-120 SS+5d, CO-R10.S03-ES-SL-120 FF+5d, CO-R10.S03-ES-SL-200 FF | -163d | 25d | Labor/Helper [144 h]; Electrician [144 h]; Manlift [144 h]; Street Lighting( LED) Luminaire,(Type C) complete with control gear and lamp, ?.17000 Lumen [24] | 14,375.52 | CO-R10.S03-SL-130 | 9 | 9 | LP | LPA | Each | POL | SL | INSTALL | CON | R10 | S03 | SL |
| CO-R10.S03-ES-SL-210 |  | Backfilling Works for Lighting Poles of Street Lighting Network-[Road 10]-[SW-3] | 12d | 2026-11-15 | 2026-11-28 | CO-R10.S03-ES-SL-120 SS, CO-R10.S03-ES-SL-120 FF, CO-R15.S10-SL-210 | -178.5d | 0d | Labor/Helper [192 h]; Skilled Labor/Surveyor [96 h]; Excavator [192 h]; Lighting poles with one arm, including the power distribution box, screws, cables, 12 meters in height. [4.8] | 9,136.66 | CO-R10.S03-SL-210 | 9 | 9 |  |  |  |  | SL | BACK | CON | R10 | S03 | SL |
| CO-R10.S03-ES-SL-200 |  | Testing Works for Lighting Poles of Street Lighting Network-[Road 10]-[SW-3] | 5d | 2026-11-29 | 2026-12-03 | CO-R10.S03-ES-SL-210, CO-R10.S03-ES-SL-120 | -163d | 0d | Labor/Helper [160 h]; Electrician [160 h]; Lighting poles with one arm, including the power distribution box, screws, cables, 12 meters in height. [4.8] | 9,136.66 | CO-R10.S03-SL-200 | 9 | 9 |  |  |  |  | SL | TESTING | CON | R10 | S03 | SL |
|  | CW | **Cabling Works** |  | 2026-11-29 | 2027-01-02 |  |  |  |  |  |  |  |  |  |  |  |  |  |  |  |  |  |  |
| CO-R10.S03-ES-SL-140 |  | Trench Excavation and Bedding Works for Street Lighting Network-[Road 10]-[SW-3] | 10d | 2026-11-29 | 2026-12-09 | ENG-SH-SL-A-110, CO-R10.S03-ES-IR-130, CO-R10.S03-ES-EW-110, CO-R10.S03-ES-SL-120, CO-R10.S03-ES-SL-110, ENG-MS-SL-A-110 | -188d | 0d | Labor/Helper [80 h]; Skilled Labor/Surveyor [40 h]; Excavator [80 h] |  | CO-R10.S03-SL-140 | 9 | 9 | CW | Ex | LM | CB | SL | EXC | CON | R10 | S03 | SL |
| CO-R10.S03-ES-SL-150 |  | Cable Laying Works for Street Lighting Network-[Road 10]-[SW-3] | 10d | 2026-12-10 | 2026-12-21 | CO-R10.S03-ES-SL-140 | -188d | 0d | Labor/Helper [80 h]; Electrician [80 h]; Low Current Technician [80 h]; Supply, installation , test and operation of cables, Copper, (4Cx25mmï¿½,Cu/XLPE/SWA/PVC +1x16mmï¿½ PVC/PVC) [938.44] | 44,012.74 | CO-R10.S03-SL-150 | 9 | 9 | CW | CL | LM | CB | SL | LAYING | CON | R10 | S03 | SL |
| CO-R10.S03-ES-SL-160 |  | Trench Backfilling and Compaction Works for Street Lighting Network-[Road 10]-[SW-3] | 10d | 2026-12-22 | 2027-01-02 | CO-R10.S03-ES-SL-150, CO-R10.S03-ES-IR-130 | -188d | 0d | Skilled Labor/Surveyor [8 h]; Foreman [8 h]; Excavator [80 h]; Water Tank [20 h]; Supply, installation , test and operation of cables, Copper, (4Cx25mmï¿½,Cu/XLPE/SWA/PVC +1x16mmï¿½ PVC/PVC) [72.19] | 3,385.62 | CO-R10.S03-SL-160 | 9 | 9 | CW | BF | LM | CB | SL | BACK | CON | R10 | S03 | SL |
|  | DPB | **Distrubution Panel Boards** |  | 2027-01-31 | 2027-02-24 |  |  |  |  |  |  |  |  |  |  |  |  |  |  |  |  |  |  |
| CO-R10.S03-ES-SL-170 |  | Foundation Excavation Works For Panel Boards of Street Lighting Network-[Road 10]-[SW-3] | 12d | 2027-01-31 | 2027-02-13 | CO-R10-SL-ES-140, CO-R10.S03-ES-EW-110, ENG-SH-SL-A-110, ENG-MS-SL-A-110 | -188d | 0d | Labor/Helper [96 h]; Skilled Labor/Surveyor [48 h]; Excavator [96 h]; Reinforced concrete base With fence for Distribution substation in accordance with SEC Specifications [1.5] | 21,646.69 | CO-R10.S03-SL-170 | 9 | 9 | DB | Ex | Each | DS | SL | EXC | CON | R10 | S03 | SL |
| CO-R10.S03-ES-SL-180 |  | Installation Works for Panel Board Concrete Foundations of Street Lighting Network-[Road 10]-[SW-3] | 12d | 2027-02-07 | 2027-02-20 | CO-R10-SL-ES-150 SS+3d, CO-R10-SL-ES-150 FF+3d, CO-R10.S03-ES-SL-170 SS+3d, CO-R10.S03-ES-SL-170 FF+3d | -188d | 0d | Skilled Labor/Surveyor [10 h]; Foreman [10 h]; Excavator [96 h]; Water Tank [24 h]; Package Substation 33000/400V, 500kVA with RMU [0.45] | 48,506.22 | CO-R10.S03-SL-180 | 9 | 9 | DB | PBF | Each | DS | SL | INSTALL | CON | R10 | S03 | SL |
| CO-R10.S03-ES-SL-220 |  | A wall of concrete blocks to install the KWH meter of Street Lighting Network-[Road 10]-[SW-3] | 12d | 2027-02-07 | 2027-02-20 | CO-R10.S03-ES-SL-180 SS, CO-R10.S03-ES-SL-180 FF | -185d | 18d | Block Mason [96 h]; Road crossing ducts, 4 way (4 x 100mm PVC) [53.63]; Drawpit with medium duty steel cover, size 600x600x1000mm, Type 18 [1.5]; Drawpit with medium duty steel cover, size 900x900x1200mm, Type 4 [5]; Street Lighting Feeder pillars , Includes foundation and draw pits [1.5] | 34,550.61 | CO-R10.S03-SL-220 | 9 | 9 | DB |  | Each | DS | SL | wall | CON | R10 | S03 | SL |
| CO-R10.S03-ES-SL-190 |  | Installation Works for Lighting Panel Boards of Street Lighting Network-[Road 10]-[SW-3] | 12d | 2027-02-10 | 2027-02-24 | CO-R10.S03-ES-SL-180 SS+3d, CO-R10.S03-ES-SL-180 FF+3d | -188d | 15d | Labor/Helper [96 h]; Electrician [96 h]; Package Substation 33000/400V, 500kVA with RMU [1.65] | 177,856.16 | CO-R10.S03-SL-190 | 9 | 9 | DB | PB | Each | DS | SL | INST BO | CON | R10 | S03 | SL |
|  | TE | **Telecom Network** |  | 2026-12-22 | 2027-01-23 |  |  |  |  |  |  |  |  |  |  |  |  |  |  |  |  |  |  |
|  | PD | **Ducts Works** |  | 2026-12-22 | 2027-01-23 |  |  |  |  |  |  |  |  |  |  |  |  |  |  |  |  |  |  |
| CO-R10.S03-ES-TE-100 |  | Trench Excavation and Bedding Works for Ducts of Telecom Network-[Road 10]-[SW-3] | 7d | 2026-12-22 | 2026-12-29 | CO-R10.S03-ES-IR-130, CO-R10.S03-ES-SL-160 SS, CO-R15.S10-TE-100 | -176d | 0d | Skilled Labor/Surveyor [6 h]; Foreman [6 h]; Excavator [56 h]; 6-way ducts, 50mm dia. HDPE [45]; Road crossing ducts (6-way) [4] | 6,700 | CO-R10.S03-TE-100 | 9 | 9 | PD | Ex | LM | DC | TE | DUCTS | CON | R10 | S03 | TE |
| CO-R10.S03-ES-TE-110 |  | Pipes Laying Works for Ducts of Telecom Network-[Road 10]-[SW-3] | 7d | 2026-12-30 | 2027-01-06 | CO-R10.S03-ES-TE-100 | -155d | 0d | Labor/Helper [112 h]; Skilled Labor/Surveyor [6 h]; Foreman [6 h]; Plumber [56 h]; Excavator [56 h]; JCB [28 h]; Truck [56 h]; 6-way ducts, 50mm dia. HDPE [268]; Road crossing ducts (6-way) [23] | 39,764.5 | CO-R10.S03-TE-110 | 9 | 9 | PD | PL | LM | DC | TE | DUCTS | CON | R10 | S03 | TE |
| CO-R10.S03-ES-TE-120 |  | Pouring Plain Concrete Above Ducts of Telecom Network-[Road 10]-[SW-3] | 7d | 2027-01-07 | 2027-01-14 | CO-R10.S03-ES-TE-110 | -155d | 0d | Skilled Labor/Surveyor [6 h]; Foreman [6 h]; Cons. Carpenter [112 h]; Block Mason [56 h]; 6-way ducts, 50mm dia. HDPE [45]; Road crossing ducts (6-way) [4] | 6,700 | CO-R10.S03-TE-120 | 9 | 9 | PD | PC | LM | DC | TE | DUCTS | CON | R10 | S03 | TE |
| CO-R10.S03-ES-TE-130 |  | Trench Backfilling and Compaction Works for Ducts of Telecom Network-[Road 10]-[SW-3] | 7d | 2027-01-16 | 2027-01-23 | CO-R10.S03-ES-TE-120 | -155d | 0d | Skilled Labor/Surveyor [6 h]; Foreman [6 h]; Excavator [56 h]; 6-way ducts, 50mm dia. HDPE [89]; Road crossing ducts (6-way) [8] | 13,266 | CO-R10.S03-TE-130 | 9 | 9 | PD | BF | LM | DC | TE | DUCTS | CON | R10 | S03 | TE |
|  | MH | **Manholes Works** |  | 2026-12-30 | 2027-01-23 |  |  |  |  |  |  |  |  |  |  |  |  |  |  |  |  |  |  |
| CO-R10.S03-ES-TE-140 |  | Excavation Works for Manholes of Telecom Network-[Road 10]-[SW-3] | 7d | 2026-12-30 | 2027-01-06 | CO-R10.S03-ES-TE-100 | -162d | 0d | Skilled Labor/Surveyor [6 h]; Foreman [6 h]; Excavator [56 h]; Manhole Type 2 (2000x1000x1000) [0.7] | 2,199.61 | CO-R10.S03-TE-140 | 9 | 9 | MH | Ex | Each | MNH | TE | EXC | CON | R10 | S03 | TE |
| CO-R10.S03-ES-TE-150 |  | Installation Works for Manholes of Telecom Network-[Road 10]-[SW-3] | 7d | 2027-01-07 | 2027-01-14 | CO-R10.S03-ES-TE-140 | -155d | 0d | Skilled Labor/Surveyor [6 h]; Foreman [6 h]; Excavator [56 h]; Manhole Type 1 (2000x1000x1000) [1]; Manhole Type 2 (2000x1000x1000) [2.1] | 9,715 | CO-R10.S03-TE-150 | 9 | 9 | MH | HH | Each | MNH | TE | INSTALL-1 | CON | R10 | S03 | TE |
| CO-R10.S03-ES-TE-160 |  | Backfilling Works for Manholes of Telecom Network-[Road 10]-[SW-3] | 7d | 2027-01-16 | 2027-01-23 | CO-R10.S03-ES-TE-150 | -155d | 0d | Skilled Labor/Surveyor [6 h]; Foreman [6 h]; Excavator [56 h]; Manhole Type 2 (2000x1000x1000) [0.7] | 2,199.61 | CO-R10.S03-TE-160 | 9 | 9 | MH | BF | Each | MNH | TE | (New)-2 | CON | R10 | S03 | TE |

| ID | WBS | Activity | Duration | Start | Finish | Predecessors | Complete | Remaining | Planned start | Planned finish | Total float | Free float | Resources | Cost | Actual cost | Activity ID N | Seq | New Seq | 02- Network-WBS | 03- Activity | 04-UOM | 05-Discipline | 01- Network | 07-Weightage System | 08 Stage | 09 Roads | 10 side Walk | Discipline |
| --- | --- | --- | --- | --- | --- | --- | --- | --- | --- | --- | --- | --- | --- | --- | --- | --- | --- | --- | --- | --- | --- | --- | --- | --- | --- | --- | --- | --- |
|  | MV | **Medium Voltage Network** |  | 2026-07-09 | 2026-10-12 |  |  |  |  |  |  |  |  |  |  |  |  |  |  |  |  |  |  |  |  |  |  |  |
|  | CW | **Cabling Works** |  | 2026-09-09 | 2026-10-12 |  |  |  |  |  |  |  |  |  |  |  |  |  |  |  |  |  |  |  |  |  |  |  |
| CO-R10.S03-ES-MV-100 |  | Trench Excavation and Bedding Works for Medium Voltage Network-[Road 10]-[SW-3] | 18d | 2026-09-09 A | 2026-10-08 A | ENG-SH-MV-A-110, CO-R10.S03-ES-SD-170 SS+3d, CO-R10.S03-ES-SD-170 FF+3d, CO-R10.S03-ES-EW-110, ENG-MS-MV-A-110 | 100% |  | 2026-02-24 | 2026-03-16 |  |  | Skilled Labor/Surveyor [15 h]; Foreman [15 h]; Excavator [144 h]; Excavation for Trench size 40cm wide and 80cm deep ( Maximum 1 cable 33kv) [199.34]; Excavation for Trench size 60cm wide and 80cm deep ( for Max two cables 33 kv) [11.34]; Excavation for Trench size 90cm wide and 80cm deep ( Maximum 3 cable 33kv) [50.52]; Excavation for Trench size 120cm wide and 80cm deep ( Maximum 4cable 33kv) [17.19]; Excavation for Trench size 150cm wide and 80cm deep ( Maximum 4cable 33kv) [63.58]; Duct bank for (2) 33 kv cables [6.88]; Duct bank for (4) 33 kv cables [45.37]; Duct bank for (6) 33 kv cables [20.62] | 23,183.87 | 23,183.87 | CO-R10.S03-MV-100 | 9 | 9 | CW | Ex | LM | CW | MV | EXC | CON | R10 | S03 | MV |
| CO-R10.S03-ES-MV-110 |  | Cable Laying Works for Medium Voltage Network-[Road 10]-[SW-3] | 18d | 2026-09-13 A | 2026-10-10 A | CO-R10.S03-ES-MV-100 SS+3d, CO-R10.S03-ES-MV-100 FF+3d, PRO-R10-MV-DL-100 FF+3d | 100% |  | 2026-02-28 | 2026-03-19 |  |  | Labor/Helper [288 h]; Electrician [288 h]; Low Current Technician [288 h]; 33kv 3Cx400 mmï¿½ Al XLPE / LLDPE /PVC Cable [938.25]; 33kv 3Cx400 mmï¿½ Al XLPE /LLDPE/PVC [2.8] | 124,697.05 | 124,697.05 | CO-R10.S03-MV-110 | 9 | 9 | CW | CL | LM | CW | MV | LAY | CON | R10 | S03 | MV |
| CO-R10.S03-ES-MV-120 |  | Trench Backfilling and Compaction Works for Medium Voltage Network-[Road 10]-[SW-3] | 18d | 2026-09-16 A | 2026-10-12 A | CO-R10.S03-ES-MV-110 SS+3d, CO-R10.S03-ES-MV-110 FF+3d, CO-R10.S03-ES-PW-130 FF+3d | 100% |  | 2026-03-03 | 2026-03-26 |  |  | Skilled Labor/Surveyor [15 h]; Foreman [15 h]; Excavator [144 h]; Water Tank [36 h]; 33kv 3Cx400 mmï¿½ Al XLPE / LLDPE /PVC Cable [402.11]; 33kv 3Cx400 mmï¿½ Al XLPE /LLDPE/PVC [1.2] | 53,441.59 | 53,441.59 | CO-R10.S03-MV-120 | 9 | 9 | CW | BF | LM | CW | MV | BACK | CON | R10 | S03 | MV |
|  | SS | **RMU Works** |  | 2026-07-09 | 2026-07-13 |  |  |  |  |  |  |  |  |  |  |  |  |  |  |  |  |  |  |  |  |  |  |  |
| CO-R10.S03-ES-MV-130 |  | Foundation Excavation Works for RMU of Medium Voltage Network-[Road 10]-[SW-3] | 12d | 2026-07-09 A | 2026-07-13 A | ENG-SH-MV-A-110, ENG-MS-MV-A-110, CO-R10.S03-ES-EW-100, CO-R10.S03-ES-EW-110, CO-R10.S03-ES-MV-120 | 100% |  | 2026-03-28 | 2026-04-09 |  |  | Supply & installation of (33) kv MV Switch (RMU) for Normally-open Points (NOP) according to the Saudi Electric Company specification [0.1] | 8,025.7 | 8,025.7 | CO-R11.S05-MV-130 | 9 | 9 | RMU | Ex | Each | RMU | MV | EXC | CON | R10 | S03 | MV |
| CO-R10.S03-ES-MV-150 |  | Installation Works for RMU Concrete Foundations of Medium Voltage Network-[Road 10]-[SW-3] | 18d | 2026-07-09 A | 2026-07-13 A | CO-R10.S03-ES-MV-130 | 100% |  | 2026-04-11 | 2026-04-30 |  |  | Supply & installation of (33) kv MV Switch (RMU) for Normally-open Points (NOP) according to the Saudi Electric Company specification [0.25] | 20,064.26 | 20,064.26 | CO-R11.S05-MV-150 | 9 | 9 | RMU | RMUF | Each | RMU | MV | INSTALL | CON | R10 | S03 | MV |
| CO-R10.S03-ES-MV-170 |  | Installation Works for RMU of Medium Voltage Network-[Road 10]-[SW-3] | 6d | 2026-07-09 A | 2026-07-13 A | CO-R10.S03-ES-MV-150, ENG-SH-MV-A-110, ENG-MS-MV-A-110, PRO-MV-LL-SH/DL-10, PRO-R10-MV-LL-MSI-10 | 100% |  | 2026-05-02 | 2026-05-07 |  |  | Supply & installation of (33) kv MV Switch (RMU) for Normally-open Points (NOP) according to the Saudi Electric Company specification [0.45] | 36,115.66 | 36,115.66 | CO-R11.S05-MV-170 | 9 | 9 | RMU | RMU | Each | RMU | MV | INS RMU | CON | R10 | S03 | MV |
| CO-R10.S03-ES-MV-180 |  | Termination Works for RMU of Medium Voltage Network-[Road 10]-[SW-3] | 5d | 2026-07-09 A | 2026-07-13 A | CO-R10.S03-ES-MV-170 | 100% |  | 2026-05-09 | 2026-05-13 |  |  | Supply & installation of (33) kv MV Switch (RMU) for Normally-open Points (NOP) according to the Saudi Electric Company specification [0.1] | 8,025.7 | 8,025.7 | CO-R11.S05-MV-SS-150 | 9 | 9 |  |  |  |  | MV | TER RMU | CON | R10 | S03 | MV |
| CO-R10.S03-ES-MV-190 |  | Testing Works for RMU of Medium Voltage Network-[Road 10]-[SW-3] | 5d | 2026-07-09 A | 2026-07-13 A | CO-R10.S03-ES-MV-180 | 100% |  | 2026-05-14 | 2026-05-19 |  |  | Supply & installation of (33) kv MV Switch (RMU) for Normally-open Points (NOP) according to the Saudi Electric Company specification [0.1] | 8,025.7 | 8,025.7 | CO-R11.S05-MV-SS-160 | 9 | 9 |  |  |  |  | MV | BACK RM | CON | R10 | S03 | MV |
|  | RD | **Road Works** |  | 2026-08-25 | 2027-04-06 |  |  |  |  |  |  |  |  |  |  |  |  |  |  |  |  |  |  |  |  |  |  |  |
|  | RD | **Pre-Bituminous Construction** |  | 2026-09-10 | 2027-02-16 |  |  |  |  |  |  |  |  |  |  |  |  |  |  |  |  |  |  |  |  |  |  |  |
| CO-R10.S03-ES-RD-100 |  | Capping and Subgrade Layer for Road Works-[Road 10]-[SW-3] | 18d | 2026-09-10 A | 2027-01-05 | ENG-SH-RD-A-100, CO-R10.S03-ES-SD-130, CO-R10.S03-ES-PW-130, CO-R10.S03-ES-SL-160 FF+3d, ENG-MS-RD-A-10, CO-R10.S03-ES-MV-120 FF+3d | 70% | 17d | 2027-01-10 | 2027-01-30 | -128d | 15d | Labor/Helper [288 h]; Skilled Labor/Surveyor [144 h]; Loader [144 h]; Grader [144 h]; Road Roller [144 h]; Water Tank [144 h]; 300mm capping layer underneath subgrade , CBR?15% [3390.73]; 300mm thick Subgrade, including subgrade preparation, CBR?25% [3390.73] | 263,120.65 | 184,184.45 | CO-R10.S03-RD-P-100 | 9 | 9 | AB | SG | Sq.m | BS | RD |  | CON | R10 | S03 | RD |
| CO-R10.S03-ES-RD-110 |  | Aggregate Base Course Layer for Road Works-[Road 10]-[SW-3] | 18d | 2027-01-27 | 2027-02-16 | CO-R10.S03-ES-RD-100 SS+3d, CO-R10.S03-ES-RD-100 FF+3d, CO-R10.S03-ES-SD-170 SS+3d, CO-R10.S03-ES-SD-170 FF+3d, CO-R10.S03-ES-PW-160 FS+3d, CO-R10.S03-ES-SL-160 SS+6d, CO-R10.S03-ES-TE-130 FS+3d, CO-R10.S03-ES-TE-160 FS+3d |  |  |  |  | -85d | 79d | Labor/Helper [288 h]; Skilled Labor/Surveyor [144 h]; Foreman [144 h]; Loader [144 h]; Grader [144 h]; Road Roller [144 h]; Aggregate base course 200mm thick after compaction in two layers(Grading 1); CBR?80%; including watering, compaction and testing [2260.72] | 183,276.57 |  | CO-R10.S03-RD-P-110 | 9 | 9 | AB | BA | Sq.m | BS | RD |  | CON | R10 | S03 | RD |
|  | LS | **Pavement Works** |  | 2026-08-25 | 2027-04-06 |  |  |  |  |  |  |  |  |  |  |  |  |  |  |  |  |  |  |  |  |  |  |  |
| CO-R10.S03-ES-RD-120 |  | Fixing of Curbstone for Sidewalks Pavement-[Road 10]-[SW-3] | 18d | 2026-08-25 A | 2026-08-31 A | CO-R10.S03-ES-SD-170 | 100% |  | 2026-03-14 | 2026-04-06 |  |  | Labor/Helper [288 h]; Block Mason [864 h]; Precast Concrete Kerb, Type K1 [1250.99]; Precast Concrete Kerb, Type L1 [2482.11] | 150,070.62 | 150,070.62 | CO-R10.S03-RD-P-120 | 9 | 9 | LS | CR | LM | LAND | RD |  | CON | R10 | S03 | RD |
| CO-R10.S03-ES-RD-130 |  | Fixing of Interlock Tiles for Sidewalks Pavement-[Road 10]-[SW-3] | 10d | 2027-03-27 | 2027-04-06 | CO-R10.S03-ES-RD-120 SS, CO-R10.S03-ES-RD-120 FF+3d, CO-R10-PW-TF-100 FF, CO-R10-PW-TF-110 FF, CO-R10-PW-TF-120 FF, CO-R10-SW-TF-100 FF, CO-R10-SW-TF-110 FF, CO-R10-SW-TF-130 FF, CO-R10-SD-TF-100, CO-R10-SL-TF-140 FF, CO-R10-SL-TF-150 FF, CO-R10-SL-ES-140 FF, CO-R10-SL-ES-150 FF, CO-R10-IR-TF-120 FF, CO-R10-MV-TF-140 FF |  |  |  |  | -158d | 1d | Labor/Helper [432 h]; Block Mason [1296 h]; Interlocking block pavers for sidewalk/footpath 60mm thick on and including 30mm Sand Bedding, 200mm Aggregate subbase, all in accordance with authority standards and complete as per specifications [2233.91]; Extraover for Pedestrian ramps [5.5] | 107,184.05 |  | CO-R10.S03-RD-P-130 | 9 | 9 | LS | IL | Sq.m | LAND | RD |  | CON | R10 | S03 | RD |
|  | SW_31 | **SW_3-West** |  | 2025-04-08 | 2027-04-06 |  |  |  |  |  |  |  |  |  |  |  |  |  |  |  |  |  |  |  |  |  |  |  |
|  | EW | **Earthworks** |  | 2025-04-08 | 2025-04-14 |  |  |  |  |  |  |  |  |  |  |  |  |  |  |  |  |  |  |  |  |  |  |  |
|  | EW | **Earthworks** |  | 2025-04-08 | 2025-04-14 |  |  |  |  |  |  |  |  |  |  |  |  |  |  |  |  |  |  |  |  |  |  |  |
| CO-R10.S03-WE-EW-100 |  | Roadway Excavation Works Upto Design Level for Earthworks-[Road 10]-[SW-3] | 12d | 2025-04-08 A | 2025-04-14 A | CO-R09.S02-EW-110, ENG-MS-RD-A-10, ENG-SH-RD-A-100, CO-R11.S06-EW-100 | 100% |  | 2025-09-01 | 2025-09-14 |  |  | Labor/Helper [192 h]; Skilled Labor/Surveyor [24 h]; Foreman [24 h]; Water Tank [192 h]; Dozer [192 h]; Roadway Excavation for cuttings; on any type of material for all depths including trimming and Preparation of excavated surfaces and disposal. [15964.1] | 100,573.89 | 100,573.89 | CO-R10.S03-EW-100 | 9 | 9 | EW | Ex | Cub.m | EW | EW |  | CON | R10 | S03 | EW |
| CO-R10.S03-WE-EW-110 |  | Embankments Works Upto Design Level for Earthworks-[Road 10]-[SW-3] | 12d | 2025-04-08 A | 2025-04-14 A | CO-R10.S03-WE-EW-100, ENG-MS-RD-A-10, ENG-SH-RD-A-100 | 100% |  | 2025-09-15 | 2025-09-29 |  |  | Labor/Helper [720 h]; Skilled Labor/Surveyor [90 h]; Foreman [90 h]; Water Tank [720 h]; Dozer [720 h]; Embankments to the ROW, with suitable material other than top soil or rock according to specifications [26873.7] | 217,676.81 | 217,676.81 | CO-R10.S03-EW-110 | 9 | 9 | EW | BF | Cub.m | EW | EW |  | CON | R10 | S03 | EW |
|  | SD | **Storm Drainage Network** |  | 2025-08-07 | 2026-10-10 |  |  |  |  |  |  |  |  |  |  |  |  |  |  |  |  |  |  |  |  |  |  |  |
|  | ML | **Main Line Sections** |  | 2025-08-07 | 2025-08-28 |  |  |  |  |  |  |  |  |  |  |  |  |  |  |  |  |  |  |  |  |  |  |  |
| CO-R10.S03-WE-SD-100 |  | Trench Excavation and Bedding Works for Main Lines of Storm Drainage Network-[Road 10]-[SW-3] | 10d | 2025-08-07 A | 2025-08-10 A | ENG-SH-SD-ML-A-110, CO-R10.S03-WE-EW-110, CO-R10.S03-WE-EW-100, ENG-MS-SD-ML-A-110, CO-R11.S06-SD-100 | 100% |  | 2025-11-18 | 2025-11-29 |  |  | Skilled Labor/Surveyor [12 h]; Foreman [12 h]; Excavator [112 h]; Pipe with diameter 500mm ; depth: 0.0m - 1.5m [5]; Pipe with diameter 600mm ; depth: 1.51m - 2.5m [19.65]; Pipe with diameter 600mm ; depth: 2.51m - 3.5m [17.3]; Pipe with diameter 700mm ; depth: 1.51m - 2.5m [56.06] | 45,128.75 | 45,128.75 | CO-R10.S03-SD-100 | 9 | 9 | ML | Ex | LM | ML | SD | EX | CON | R10 | S03 | SD |
| CO-R10.S03-WE-SD-120 |  | Pipes Laying Works for Main Lines of Storm Drainage Network-[Road 10]-[SW-3] | 10d | 2025-08-11 A | 2025-08-14 A | CO-R10.S03-WE-SD-100, CO-R11.S06-SD-120 | 100% |  | 2025-11-30 | 2025-12-10 |  |  | Labor/Helper [240 h]; Skilled Labor/Surveyor [12 h]; Foreman [12 h]; Plumber [120 h]; Excavator [120 h]; Pipe with diameter 500mm ; depth: 0.0m - 1.5m [15]; Pipe with diameter 600mm ; depth: 1.51m - 2.5m [58.94]; Pipe with diameter 600mm ; depth: 2.51m - 3.5m [51.9]; Pipe with diameter 700mm ; depth: 1.51m - 2.5m [168.18] | 135,386.25 | 135,386.25 | CO-R10.S03-SD-120 | 9 | 9 | ML | PL | LM | ML | SD | PIPE | CON | R10 | S03 | SD |
| CO-R10.S03-WE-SD-130 |  | Trench Backfilling and Compaction Works for Main Lines of Storm Drainage Network-[Road 10]-[SW-3] | 15d | 2025-08-19 A | 2025-08-28 A | ENG-SH-SD-ML-A-110 FF, ENG-MS-SD-ML-A-110 FF, CO-R10.S03-WE-SD-120, CO-R10.S03-WE-SD-220 FF | 100% |  | 2025-12-11 | 2025-12-28 |  |  | Skilled Labor/Surveyor [12 h]; Foreman [12 h]; Excavator [120 h]; Pipe with diameter 500mm ; depth: 0.0m - 1.5m [2.5]; Pipe with diameter 600mm ; depth: 1.51m - 2.5m [9.82]; Pipe with diameter 600mm ; depth: 2.51m - 3.5m [8.65]; Pipe with diameter 700mm ; depth: 1.51m - 2.5m [28.03] | 22,564.37 | 22,564.37 | CO-R10.S03-SD-130 | 9 | 9 | ML | BF | LM | ML | SD | BACK | CON | R10 | S03 | SD |

| ID | WBS | Activity | Duration | Start | Finish | Predecessors | Complete | Planned start | Planned finish | Total float | Free float | Resources | Cost | Actual cost | Activity ID N | Seq | New Seq | 01- Network | 07-Weightage System | 08 Stage | 09 Roads | 10 side Walk | Discipline | 02- Network-WBS | 03- Activity | 04-UOM | 05-Discipline |
| --- | --- | --- | --- | --- | --- | --- | --- | --- | --- | --- | --- | --- | --- | --- | --- | --- | --- | --- | --- | --- | --- | --- | --- | --- | --- | --- | --- |
|  | MH | **Manholes** |  | 2025-11-06 | 2026-10-10 |  |  |  |  |  |  |  |  |  |  |  |  |  |  |  |  |  |  |  |  |  |  |
| CO-R10.S03-WE-SD-180 |  | Trench Excavation and Bedding Works for Manholes of Storm Drainage Network-[Road 10]-[SW-3] | 1d | 2025-11-06 A | 2025-11-15 A | CO-R10.S03-WE-SD-120 SS, PRO-SD-1DL-100 | 100% | 2025-11-30 | 2025-11-30 |  |  | Labor/Helper [40 h]; Skilled Labor/Surveyor [20 h]; Excavator [40 h]; MH ; depth: 0.0m - 1.5m [0.23]; MH ; depth: 1.51m - 2.5m [0.6]; MH ; depth: 0.0m - 1.5m [0.15]; MH ; depth: 0.0m - 1.5m [0.07]; MH ; depth: 1.51m - 2.5m [0.23]; MH ; depth: 2.51 - 3.5m [0.3]; MH ; depth: 3.51 - 4.5m [0.3] | 37,105.86 | 37,105.86 | CO-R10.S03-SD-180 | 9 | 9 | SD | EX | CON | R10 | S03 | SD |  |  |  |  |
| CO-R10.S03-WE-SD-190 |  | Install RC Footing Works for Manholes of Storm Drainage Network-[Road 10]-[SW-3] | 1d | 2025-11-08 A | 2025-11-16 A | CO-R10.S03-WE-SD-180 | 100% | 2025-12-01 | 2025-12-01 |  |  | Cons. Carpenter [80 h]; Steel Fixer [80 h]; MH ; depth: 0.0m - 1.5m [0.07]; MH ; depth: 1.51m - 2.5m [0.2]; MH ; depth: 0.0m - 1.5m [0.05]; MH ; depth: 0.0m - 1.5m [0.03]; MH ; depth: 1.51m - 2.5m [0.07]; MH ; depth: 2.51 - 3.5m [0.1]; MH ; depth: 3.51 - 4.5m [0.1] | 12,368.62 | 12,368.62 | CO-R10.S03-SD-190 | 9 | 9 | SD | RC F | CON | R10 | S03 | SD |  |  |  |  |
| CO-R10.S03-WE-SD-200 |  | Install RC Wall Rings & Slab Works for Manholes of Storm Drainage Network-[Road 10]-[SW-3] | 4d | 2025-11-09 A | 2025-11-16 A | CO-R10.S03-WE-SD-190 | 100% | 2025-12-02 | 2025-12-06 |  |  | Cons. Carpenter [128 h]; Steel Fixer [128 h]; MH ; depth: 0.0m - 1.5m [0.68]; MH ; depth: 1.51m - 2.5m [1.8]; MH ; depth: 0.0m - 1.5m [0.45]; MH ; depth: 0.0m - 1.5m [0.23]; MH ; depth: 1.51m - 2.5m [0.68]; MH ; depth: 2.51 - 3.5m [0.9]; MH ; depth: 3.51 - 4.5m [0.9] | 111,317.57 | 111,317.57 | CO-R10.S03-SD-200 | 9 | 9 | SD | RC W | CON | R10 | S03 | SD |  |  |  |  |
| CO-R10.S03-WE-SD-220 |  | Backfilling Works for Manholes of Storm Drainage Network-[Road 10]-[SW-3] | 7d | 2025-11-11 A | 2025-11-20 A | CO-R10.S03-WE-SD-210 | 100% | 2025-12-08 | 2025-12-15 |  |  | Labor/Helper [280 h]; Skilled Labor/Surveyor [140 h]; Excavator [280 h]; MH ; depth: 0.0m - 1.5m [0.3]; MH ; depth: 1.51m - 2.5m [0.8]; MH ; depth: 0.0m - 1.5m [0.2]; MH ; depth: 0.0m - 1.5m [0.1]; MH ; depth: 1.51m - 2.5m [0.3]; MH ; depth: 2.51 - 3.5m [0.4]; MH ; depth: 3.51 - 4.5m [0.4] | 49,474.47 | 49,474.47 | CO-R10.S03-SD-220 | 9 | 9 | SD | BACK | CON | R10 | S03 | SD |  |  |  |  |
| CO-R10.S03-WE-SD-210 |  | Testing Works for Manholes of Storm Drainage Network-[Road 10]-[SW-3] | 1d | 2026-10-10 A | 2026-10-10 A | CO-R10.S03-WE-SD-200 | 100% | 2026-11-21 | 2026-11-21 |  |  | Labor/Helper [40 h]; Plumber [40 h]; MH ; depth: 0.0m - 1.5m [0.15]; MH ; depth: 1.51m - 2.5m [0.4]; MH ; depth: 0.0m - 1.5m [0.1]; MH ; depth: 0.0m - 1.5m [0.05]; MH ; depth: 1.51m - 2.5m [0.15]; MH ; depth: 2.51 - 3.5m [0.2]; MH ; depth: 3.51 - 4.5m [0.2] | 24,737.24 | 24,737.24 | CO-R10.S03-SD-210 | 9 | 9 | SD | T&COV | CON | R10 | S03 | SD |  |  |  |  |
|  | CB | **Catch Basin Sections** |  | 2025-09-01 | 2026-10-10 |  |  |  |  |  |  |  |  |  |  |  |  |  |  |  |  |  |  |  |  |  |  |
| CO-R10.S03-WE-SD-140 |  | Trench Excavation and Bedding Works for Catch Basins of Storm Drainage Network-[Road 10]-[SW-3] | 6d | 2025-09-01 A | 2025-09-04 A | CO-R10.S03-WE-EW-110, ENG-SH-SD-CB-A-110, ENG-MS-SD-CB-A-110, CO-R10.S03-WE-SD-220 | 100% | 2025-12-16 | 2025-12-22 |  |  | Skilled Labor/Surveyor [5 h]; Foreman [5 h]; Excavator [48 h]; Pipe with diameter 300mm ; depth: 0 - 1.5m [84.55]; Pipe with diameter 400mm ; depth: 0 - 1.5m [5.16] | 20,848.43 | 20,848.43 | CO-R10.S03-SD-140 | 9 | 9 | SD | EX | CON | R10 | S03 | SD | CB | Ex | Each | CB |
| CO-R10.S03-WE-SD-150 |  | Installation and Pipes Laying Connection Works for Catch Basins of Storm Drainage Network-[Road 10]-[SW-3] | 7d | 2025-09-06 A | 2025-09-07 A | CO-R10.S03-WE-SD-140 | 100% | 2025-12-23 | 2025-12-30 |  |  | Labor/Helper [224 h]; Skilled Labor/Surveyor [12 h]; Foreman [12 h]; Excavator [112 h]; Pipe with diameter 300mm ; depth: 0 - 1.5m [253.63]; Pipe with diameter 400mm ; depth: 0 - 1.5m [15.47] | 62,544.75 | 62,544.75 | CO-R10.S03-SD-150 | 9 | 9 | SD | INSTALL | CON | R10 | S03 | SD | CB | CB | Each | CB |
| CO-R10.S03-WE-SD-170 |  | Trench Backfilling and Compaction Works for Catch Basins of Storm Drainage Network-[Road 10]-[SW-3] | 7d | 2025-09-08 A | 2025-09-09 A | CO-R10.S03-WE-SD-160 | 100% | 2026-01-12 | 2026-01-19 |  |  | Skilled Labor/Surveyor [6 h]; Foreman [6 h]; Excavator [56 h]; Pipe with diameter 300mm ; depth: 0 - 1.5m [112.73]; Pipe with diameter 400mm ; depth: 0 - 1.5m [6.87] | 27,797.55 | 27,797.55 | CO-R10.S03-SD-170 | 9 | 9 | SD | BACK | CON | R10 | S03 | SD | CB | BF | Each | CB |
| CO-R10.S03-WE-SD-160 |  | Testing Works for Catch Basins of Storm Drainage Network-[Road 10]-[SW-3] | 10d | 2026-10-10 A | 2026-10-10 A | CO-R10.S03-WE-SD-150, CO-R10.S03-WE-SD-120 | 100% | 2026-11-22 | 2026-12-02 |  |  | Labor/Helper [160 h]; Skilled Labor/Surveyor [8 h]; Foreman [8 h]; Plumber [80 h]; Excavator [80 h]; Pipe with diameter 300mm ; depth: 0 - 1.5m [56.36]; Pipe with diameter 400mm ; depth: 0 - 1.5m [3.44] | 13,898.77 | 13,898.77 | CO-R10.S03-SD-160 | 9 | 9 | SD | TEST | CON | R10 | S03 | SD | CB | PL | Each | CB |
|  | PW | **Potable Water Network** |  | 2025-08-05 | 2026-11-12 |  |  |  |  |  |  |  |  |  |  |  |  |  |  |  |  |  |  |  |  |  |  |
|  | ML | **Main Line Sections** |  | 2025-08-05 | 2025-08-16 |  |  |  |  |  |  |  |  |  |  |  |  |  |  |  |  |  |  |  |  |  |  |
| CO-R10.S03-WE-PW-100 |  | Trench Excavation and Bedding Works for Main Lines of Potable Water Network-[Road 10]-[SW-3] | 6d | 2025-08-05 A | 2025-08-07 A | ENG-SH-PW-ML-A-110, CO-R10.S03-WE-EW-110, CO-R10.S03-WE-EW-100, ENG-MS-PW-ML-A-110, ENG-SH-PW-FH-A-110, CO-R10.S03-WE-SD-130 | 100% | 2025-12-29 | 2026-01-04 |  |  | Skilled Labor/Surveyor [5 h]; Foreman [5 h]; Excavator [48 h]; Pipe with diameter 200mm; in depth 0.0m - 1.5m [255.13] | 37,093.64 | 37,093.64 | CO-R10.S03-PW-100 | 9 | 9 | PW | EX | CON | R10 | S03 | PW | ML | Ex | LM | ML |
| CO-R10.S03-WE-PW-110 |  | Pipes Laying and accessories for Main Lines of Potable Water Network-[Road 10]-[SW-3] | 6d | 2025-08-09 A | 2025-08-12 A | CO-R10.S03-WE-PW-100 | 100% | 2026-01-05 | 2026-01-11 |  |  | Labor/Helper [192 h]; Skilled Labor/Surveyor [10 h]; Foreman [10 h]; Plumber [96 h]; Excavator [96 h]; Pipe with diameter 200mm; in depth 0.0m - 1.5m [637.83] | 92,734.1 | 92,734.1 | CO-R10.S03-PW-110 | 9 | 9 | PW | PIPE | CON | R10 | S03 | PW | ML | PL | LM | ML |
| CO-R10.S03-WE-PW-130 |  | Trench Backfilling and Compaction Works for Main Lines of Potable Water Network-[Road 10]-[SW-3] | 6d | 2025-08-13 A | 2025-08-16 A | CO-R10.S03-WE-PW-110 SS+3d, CO-R10.S03-WE-PW-110 FF+3d | 100% | 2026-01-19 | 2026-01-25 |  |  | Skilled Labor/Surveyor [5 h]; Foreman [5 h]; Eq. Operator [5 h]; Loader [48 h]; Compactor [48 h]; Water Tank [12 h]; Pipe with diameter 200mm; in depth 0.0m - 1.5m [255.13] | 37,093.64 | 37,093.64 | CO-R10.S03-PW-130 | 9 | 9 | PW | BACK | CON | R10 | S03 | PW | ML | BF | LM | ML |
|  | VC | **Valve Chamber** |  | 2026-07-07 | 2026-07-17 |  |  |  |  |  |  |  |  |  |  |  |  |  |  |  |  |  |  |  |  |  |  |
| CO-R10.S03-WE-PW-170 |  | Excavation Works for Main Line Valves and Valve Chambers of Potable Water Network-[Road 10]-[SW-3] | 1d | 2026-07-07 A | 2026-07-17 A | CO-R10.S03-WE-PW-100 | 100% | 2026-10-20 | 2026-10-20 |  |  | Labor/Helper [16 h]; Skilled Labor/Surveyor [8 h]; Excavator [16 h]; Wash out chamber; on 200 mm dia pipeline Depth 1.5 - 3m [0.1]; Air valve chamber; on 200 mm dia pipeline Depth 1.5 - 3 m [0.15] | 4,352.44 | 4,352.44 | CO-R10.S03-PW-170 | 9 | 9 | PW | EX | CON | R10 | S03 | PW | ML | VI | Each | ML |
| CO-R10.S03-WE-PW-180 |  | RC Footing Works for Main Line Valves and Valve Chambers of Potable Water Network-[Road 10]-[SW-3] | 3d | 2026-07-07 A | 2026-07-17 A | CO-R10.S03-WE-PW-170 | 100% | 2026-10-21 | 2026-10-24 |  |  | Cons. Carpenter [48 h]; Steel Fixer [48 h]; Wash out chamber; on 200 mm dia pipeline Depth 1.5 - 3m [0.15]; Air valve chamber; on 200 mm dia pipeline Depth 1.5 - 3 m [0.23] | 6,528.67 | 6,528.67 | CO-R10.S03-PW-180 | 9 | 9 | PW | RC F | CON | R10 | S03 | PW | ML | VI | Each | ML |
| CO-R10.S03-WE-PW-190 |  | RC Wall Works for Main Line Valves and Valve Chambers of Potable Water Network-[Road 10]-[SW-3] | 6d | 2026-07-07 A | 2026-07-17 A | CO-R10.S03-WE-PW-180 | 100% | 2026-10-25 | 2026-10-31 |  |  | Cons. Carpenter [96 h]; Steel Fixer [96 h]; Wash out chamber; on 200 mm dia pipeline Depth 1.5 - 3m [0.35]; Air valve chamber; on 200 mm dia pipeline Depth 1.5 - 3 m [0.53] | 15,233.56 | 15,233.56 | CO-R10.S03-PW-190 | 9 | 9 | PW | RC W | CON | R10 | S03 | PW | ML | VI | Each | ML |
| CO-R10.S03-WE-PW-200 |  | RC Slab Works for Main Line Valves and Valve Chambers of Potable Water Network-[Road 10]-[SW-3] | 2d | 2026-07-07 A | 2026-07-17 A | CO-R10.S03-WE-PW-190 | 100% | 2026-11-01 | 2026-11-02 |  |  | Cons. Carpenter [64 h]; Steel Fixer [64 h]; Wash out chamber; on 200 mm dia pipeline Depth 1.5 - 3m [0.2]; Air valve chamber; on 200 mm dia pipeline Depth 1.5 - 3 m [0.3] | 8,704.89 | 8,704.89 | CO-R10.S03-PW-200 | 9 | 9 | PW | RC S | CON | R10 | S03 | PW | ML | VI | Each | ML |
| CO-R10.S03-WE-PW-210 |  | Insulation Works for Main Line Valves and Valve Chambers of Potable Water Network-[Road 10]-[SW-3] | 1d | 2026-07-07 A | 2026-07-17 A | CO-R10.S03-WE-PW-200 | 100% | 2026-11-03 | 2026-11-03 |  |  | Labor/Helper [16 h]; Plumber [16 h]; Gate valves dia(200)mm on pipes with dia (200) mm. [11]; Wash out valve with dia (100)mm on pipes with dia (200) mm [0.5]; Air valves with dia (50mm) mm on pipes with dia(200)mm. [1.5] | 41,688.07 | 41,688.07 | CO-R10.S03-PW-210 | 9 | 9 | PW | INSUL | CON | R10 | S03 | PW | ML | VI | Each | ML |
| CO-R10.S03-WE-PW-220 |  | Backfilling Works for Main Line Valves and Valve Chambers of Potable Water Network-[Road 10]-[SW-3] | 3d | 2026-07-07 A | 2026-07-17 A | CO-R10.S03-WE-PW-210 | 100% | 2026-11-04 | 2026-11-07 |  |  | Labor/Helper [24 h]; Skilled Labor/Surveyor [12 h]; Excavator [24 h]; Wash out chamber; on 200 mm dia pipeline Depth 1.5 - 3m [0.2]; Air valve chamber; on 200 mm dia pipeline Depth 1.5 - 3 m [0.3] | 8,704.89 | 8,704.89 | CO-R10.S03-PW-220 | 9 | 9 | PW | BACK | CON | R10 | S03 | PW | ML | VI | Each | ML |
|  | FH | **Fire Hydrant** |  | 2026-10-27 | 2026-11-12 |  |  |  |  |  |  |  |  |  |  |  |  |  |  |  |  |  |  |  |  |  |  |
| CO-R10.S03-WE-PW-140 |  | Excavation Works for Fire Hydrants of Potable Water Network-[Road 10]-[SW-3] | 6d | 2026-10-27 | 2026-11-02 | CO-R10.S03-WE-PW-110 SS+3d, CO-R10.S03-WE-PW-110 FF+3d, CO-R10.S03-WE-EW-110 |  |  |  | -94d | 0d | Skilled Labor/Surveyor [5 h]; Foreman [5 h]; Excavator [48 h]; 3-outlet fire hydrant (2 x 2.5 inch and 1 x 4 inch) in the form of a separate dry vacuum cylinder [1.12] | 8,521.14 |  | CO-R10.S03-PW-140 | 9 | 9 | PW | EX | CON | R10 | S03 | PW | FH | Ex | Each | FH |
| CO-R10.S03-WE-PW-150 |  | Installation Works for Fire Hydrant of Potable Water Network-[Road 10]-[SW-3] | 6d | 2026-11-03 | 2026-11-09 | CO-R10.S03-WE-PW-140 |  |  |  | -94d | 0d | Labor/Helper [96 h]; Skilled Labor/Surveyor [5 h]; Foreman [5 h]; Plumber [96 h]; 3-outlet fire hydrant (2 x 2.5 inch and 1 x 4 inch) in the form of a separate dry vacuum cylinder [4.88] | 36,924.96 |  | CO-R10.S03-PW-150 | 9 | 9 | PW | INSTALL | CON | R10 | S03 | PW | FH | FH | Each | FH |
| CO-R10.S03-WE-PW-160 |  | Trench Backfilling and Compaction Works for Fire Hydrants of Potable Water Network-[Road 10]-[SW-3] | 6d | 2026-11-07 | 2026-11-12 | CO-R10.S03-WE-PW-150 SS+3d, CO-R10.S03-WE-PW-150 FF+3d |  |  |  | -94d | 57d | Skilled Labor/Surveyor [5 h]; Foreman [5 h]; Excavator [48 h]; 3-outlet fire hydrant (2 x 2.5 inch and 1 x 4 inch) in the form of a separate dry vacuum cylinder [1.5] | 11,361.52 |  | CO-R10.S03-PW-160 | 9 | 9 | PW | BACK | CON | R10 | S03 | PW | FH | BF | Each | FH |

| ID | WBS | Activity | Duration | Start | Finish | Predecessors | Complete | Planned start | Planned finish | Total float | Free float | Resources | Cost | Actual cost | Activity ID N | Seq | New Seq | 02- Network-WBS | 03- Activity | 04-UOM | 05-Discipline | 01- Network | 07-Weightage System | 08 Stage | 09 Roads | 10 side Walk | Discipline |
| --- | --- | --- | --- | --- | --- | --- | --- | --- | --- | --- | --- | --- | --- | --- | --- | --- | --- | --- | --- | --- | --- | --- | --- | --- | --- | --- | --- |
|  | IR | **Irrigation Network** |  | 2025-08-10 | 2026-10-28 |  |  |  |  |  |  |  |  |  |  |  |  |  |  |  |  |  |  |  |  |  |  |
|  | ML | **Main Line Pipes** |  | 2025-08-10 | 2026-10-28 |  |  |  |  |  |  |  |  |  |  |  |  |  |  |  |  |  |  |  |  |  |  |
| CO-R10.S03-WE-IR-100 |  | Trench Excavation and Bedding Works for Main Lines of Irrigation Network-[Road 10]-[SW-3] | 7d | 2025-08-10 A | 2025-08-14 A | ENG-SH-IR-ML-A-110, CO-R10.S03-WE-EW-110, CO-R10.S03-WE-PW-130, CO-R10.S03-WE-SD-170, ENG-MS-IR-ML-A-110 | 100% | 2026-01-26 | 2026-02-02 |  |  | Skilled Labor/Surveyor [6 h]; Foreman [6 h]; Excavator [56 h]; 355 mm pipe; depth 1.5m - 3.0m [100]; 400 mm pipe; depth 1.5m - 3.0m [100]; 500. mm pipe; depth 1.5m - 3.0m [280] | 236,979 | 236,979 | CO-R10.S03-IR-100 | 9 | 9 | ML | Ex | LM | ML | IR | EX | CON | R10 | S03 | IR |
| CO-R10.S03-WE-IR-110 |  | Pipes Laying Works for Main Lines of Irrigation Network-[Road 10]-[SW-3] | 7d | 2025-08-16 A | 2025-08-19 A | CO-R10.S03-WE-IR-100, PRO-R19.2-IR-DL-100 FF+3d | 100% | 2026-02-03 | 2026-02-10 |  |  | Labor/Helper [112 h]; Skilled Labor/Surveyor [6 h]; Foreman [6 h]; Plumber [56 h]; Excavator [56 h]; 355 mm pipe; depth 1.5m - 3.0m [300]; 400 mm pipe; depth 1.5m - 3.0m [300] | 238,185 | 238,185 | CO-R10.S03-IR-110 | 9 | 9 | ML | PL | LM | ML | IR | PIPE | CON | R10 | S03 | IR |
| CO-R10.S03-WE-IR-130 |  | Trench Backfilling and Compaction Works for Main Lines of Irrigation Network-[Road 10]-[SW-3] | 7d | 2025-08-20 A | 2025-08-24 A | CO-R10.S03-WE-IR-110 | 100% | 2026-02-14 | 2026-02-21 |  |  | Skilled Labor/Surveyor [6 h]; Foreman [6 h]; Excavator [56 h]; 355 mm pipe; depth 1.5m - 3.0m [50]; 400 mm pipe; depth 1.5m - 3.0m [50] | 39,697.5 | 39,697.5 | CO-R10.S03-IR-130 | 9 | 9 | ML | BF | LM | ML | IR | BACK | CON | R10 | S03 | IR |
| CO-R10.S03-WE-IR-120 |  | Installation Works for Main Line Valves of Irrigation Network-[Road 10]-[SW-3] | 2d | 2026-10-27 | 2026-10-28 | CO-R10.S03-WE-IR-110 |  |  |  | 0d | 163d | Labor/Helper [64 h]; Skilled Labor/Surveyor [4 h]; Foreman [4 h]; Plumber [64 h]; Butterfly valves with dia (355)mm on pipes with dia (355)mm. [1]; Butterfly valves with dia (400)mm on pipes with dia (400)mm. [1]; Butterfly valves with dia (500)mm on pipes with dia (500)mm. [3]; Wash out valve with dia (150)mm on pipes with dia (400) mm [1]; Wash out valve with dia (150)mm on pipes with dia (500) mm [3]; Air valves with dia (65mm) mm on pipes with dia(500)mm. [3]; Wash out chamber; on 400 mm dia pipeline Depth 1.5 - 3m [1]; Wash out chamber; on 500 mm dia pipeline Depth 1.5 - 3m [2] | 439,744.99 |  | CO-R10.S03-IR-120 | 9 | 9 | ML | VI | Each | ML | IR | VALV | CON | R10 | S03 | IR |
|  | SL | **Street Lighting Network** |  | 2026-10-27 | 2027-02-24 |  |  |  |  |  |  |  |  |  |  |  |  |  |  |  |  |  |  |  |  |  |  |
|  | LP | **Lighting Poles Works** |  | 2026-10-27 | 2026-12-03 |  |  |  |  |  |  |  |  |  |  |  |  |  |  |  |  |  |  |  |  |  |  |
| CO-R10.S03-WE-SL-100 |  | Foundation Excavation Works for Lighting Poles of Street Lighting Network-[Road 10]-[SW-3] | 12d | 2026-10-27 | 2026-11-09 | CO-R10.S03-WE-EW-110, ENG-SH-SL-A-110, CO-R10.S03-WE-EW-100, ENG-MS-SL-A-110, CO-R10.S03-WE-IR-130 |  |  |  | -188d | 0d | Labor/Helper [192 h]; Skilled Labor/Surveyor [96 h]; Excavator [192 h]; Lighting poles with one arm, including the power distribution box, screws, cables, 12 meters in height. [1.2] | 2,284.16 |  | CO-R10.S03-SL-100 | 9 | 9 | LP | Ex | Each | POL | SL | EX | CON | R10 | S03 | SL |
| CO-R10.S03-WE-SL-110 |  | Installation Works for Lighting Poles Foundation of Street Lighting Network-[Road 10]-[SW-3] | 12d | 2026-11-02 | 2026-11-15 | CO-R10.S03-WE-SL-100 SS+5d, CO-R10.S03-WE-SL-100 FF+5d |  |  |  | -188d | 0d | Labor/Helper [384 h]; Skilled Labor/Surveyor [20 h]; Foreman [20 h]; Eq. Operator [20 h]; Loader [48 h]; Reinforced concrete foundation, for 12m high lighting columns With Drawpits [24] | 8,731.44 |  | CO-R10.S03-SL-110 | 9 | 9 | LP | LPF | Each | POL | SL | INSTALL | CON | R10 | S03 | SL |
| CO-R10.S03-WE-SL-120 |  | Installation Works for Lighting Poles of Street Lighting Network-[Road 10]-[SW-3] | 18d | 2026-11-08 | 2026-11-28 | CO-R10.S03-WE-SL-110 SS+5d, CO-R10.S03-WE-SL-110 FF+5d |  |  |  | -188d | 0d | Labor/Helper [144 h]; Electrician [144 h]; Lighting poles with one arm, including the power distribution box, screws, cables, 12 meters in height. [13.2] | 25,125.8 |  | CO-R10.S03-SL-120 | 9 | 9 | LP | LP | Each | POL | SL | POLES | CON | R10 | S03 | SL |
| CO-R10.S03-WE-SL-130 |  | Installation Works for Lighting Fixtures With Drop Wire of Street Lighting Network-[Road 10]-[SW-3] | 18d | 2026-11-14 | 2026-12-03 | CO-R10.S03-WE-SL-120 SS+5d, CO-R10.S03-WE-SL-120 FF+5d, CO-R10.S03-WE-SL-200 FF |  |  |  | -163d | 25d | Labor/Helper [144 h]; Electrician [144 h]; Manlift [144 h]; Street Lighting( LED) Luminaire,(Type C) complete with control gear and lamp, ?.17000 Lumen [24] | 14,375.52 |  | CO-R10.S03-SL-130 | 9 | 9 | LP | LPA | Each | POL | SL | INSTALL | CON | R10 | S03 | SL |
| CO-R10.S03-WE-SL-210 |  | Backfilling Works for Lighting Poles of Street Lighting Network-[Road 10]-[SW-3] | 12d | 2026-11-15 | 2026-11-28 | CO-R10.S03-WE-SL-120 SS, CO-R10.S03-WE-SL-120 FF |  |  |  | -163d | 0d | Labor/Helper [192 h]; Skilled Labor/Surveyor [96 h]; Excavator [192 h]; Lighting poles with one arm, including the power distribution box, screws, cables, 12 meters in height. [4.8] | 9,136.66 |  | CO-R10.S03-SL-210 | 9 | 9 |  |  |  |  | SL | BACK | CON | R10 | S03 | SL |
| CO-R10.S03-WE-SL-200 |  | Testing Works for Lighting Poles of Street Lighting Network-[Road 10]-[SW-3] | 5d | 2026-11-29 | 2026-12-03 | CO-R10.S03-WE-SL-210, CO-R10.S03-WE-SL-120 |  |  |  | -163d | 0d | Labor/Helper [160 h]; Electrician [160 h]; Lighting poles with one arm, including the power distribution box, screws, cables, 12 meters in height. [4.8] | 9,136.66 |  | CO-R10.S03-SL-200 | 9 | 9 |  |  |  |  | SL | TESTING | CON | R10 | S03 | SL |
|  | CW | **Cabling Works** |  | 2026-11-29 | 2027-01-02 |  |  |  |  |  |  |  |  |  |  |  |  |  |  |  |  |  |  |  |  |  |  |
| CO-R10.S03-WE-SL-140 |  | Trench Excavation and Bedding Works for Street Lighting Network-[Road 10]-[SW-3] | 10d | 2026-11-29 | 2026-12-09 | ENG-SH-SL-A-110, CO-R10.S03-WE-IR-130, CO-R10.S03-WE-EW-110, CO-R10.S03-WE-SL-120, CO-R10.S03-WE-SL-110, ENG-MS-SL-A-110 |  |  |  | -188d | 0d | Labor/Helper [80 h]; Skilled Labor/Surveyor [40 h]; Excavator [80 h] |  |  | CO-R10.S03-SL-140 | 9 | 9 | CW | Ex | LM | CB | SL | EXC | CON | R10 | S03 | SL |
| CO-R10.S03-WE-SL-150 |  | Cable Laying Works for Street Lighting Network-[Road 10]-[SW-3] | 10d | 2026-12-10 | 2026-12-21 | CO-R10.S03-WE-SL-140 |  |  |  | -188d | 0d | Labor/Helper [80 h]; Electrician [80 h]; Low Current Technician [80 h]; Supply, installation , test and operation of cables, Copper, (4Cx25mmï¿½,Cu/XLPE/SWA/PVC +1x16mmï¿½ PVC/PVC) [938.44] | 44,012.74 |  | CO-R10.S03-SL-150 | 9 | 9 | CW | CL | LM | CB | SL | LAYING | CON | R10 | S03 | SL |
| CO-R10.S03-WE-SL-160 |  | Trench Backfilling and Compaction Works for Street Lighting Network-[Road 10]-[SW-3] | 10d | 2026-12-22 | 2027-01-02 | CO-R10.S03-WE-SL-150, CO-R10.S03-WE-IR-130 |  |  |  | -188d | 0d | Skilled Labor/Surveyor [8 h]; Foreman [8 h]; Excavator [80 h]; Water Tank [20 h]; Supply, installation , test and operation of cables, Copper, (4Cx25mmï¿½,Cu/XLPE/SWA/PVC +1x16mmï¿½ PVC/PVC) [72.19] | 3,385.62 |  | CO-R10.S03-SL-160 | 9 | 9 | CW | BF | LM | CB | SL | BACK | CON | R10 | S03 | SL |
|  | DPB | **Distrubution Panel Boards** |  | 2027-01-31 | 2027-02-24 |  |  |  |  |  |  |  |  |  |  |  |  |  |  |  |  |  |  |  |  |  |  |
| CO-R10.S03-WE-SL-170 |  | Foundation Excavation Works For Panel Boards of Street Lighting Network-[Road 10]-[SW-3] | 12d | 2027-01-31 | 2027-02-13 | CO-R10-SL-ES-140, CO-R10.S03-WE-EW-110, ENG-SH-SL-A-110, ENG-MS-SL-A-110 |  |  |  | -188d | 0d | Labor/Helper [96 h]; Skilled Labor/Surveyor [48 h]; Excavator [96 h]; Reinforced concrete base With fence for Distribution substation in accordance with SEC Specifications [1.5] | 21,646.69 |  | CO-R10.S03-SL-170 | 9 | 9 | DB | Ex | Each | DS | SL | EXC | CON | R10 | S03 | SL |
| CO-R10.S03-WE-SL-180 |  | Installation Works for Panel Board Concrete Foundations of Street Lighting Network-[Road 10]-[SW-3] | 12d | 2027-02-07 | 2027-02-20 | CO-R10-SL-ES-150 SS+3d, CO-R10-SL-ES-150 FF+3d, CO-R10.S03-WE-SL-170 SS+3d, CO-R10.S03-WE-SL-170 FF+3d |  |  |  | -188d | 0d | Skilled Labor/Surveyor [10 h]; Foreman [10 h]; Excavator [96 h]; Water Tank [24 h] |  |  | CO-R10.S03-SL-180 | 9 | 9 | DB | PBF | Each | DS | SL | INSTALL | CON | R10 | S03 | SL |
| CO-R10.S03-WE-SL-220 |  | A wall of concrete blocks to install the KWH meter of Street Lighting Network-[Road 10]-[SW-3] | 12d | 2027-02-07 | 2027-02-20 | CO-R10.S03-WE-SL-180 SS, CO-R10.S03-WE-SL-180 FF |  |  |  | -185d | 18d | Block Mason [96 h]; Road crossing ducts, 4 way (4 x 100mm PVC) [53.63]; Drawpit with medium duty steel cover, size 600x600x1000mm, Type 18 [1.5]; Drawpit with medium duty steel cover, size 900x900x1200mm, Type 4 [5]; Street Lighting Feeder pillars , Includes foundation and draw pits [1.5] | 34,550.61 |  | CO-R10.S03-SL-220 | 9 | 9 | DB |  | Each | DS | SL | wall | CON | R10 | S03 | SL |
| CO-R10.S03-WE-SL-190 |  | Installation Works for Lighting Panel Boards of Street Lighting Network-[Road 10]-[SW-3] | 12d | 2027-02-10 | 2027-02-24 | CO-R10.S03-WE-SL-180 SS+3d, CO-R10.S03-WE-SL-180 FF+3d |  |  |  | -188d | 15d | Labor/Helper [96 h]; Electrician [96 h] |  |  | CO-R10.S03-SL-190 | 9 | 9 | DB | PB | Each | DS | SL | INST BO | CON | R10 | S03 | SL |
|  | TE | **Telecom Network** |  | 2026-12-22 | 2027-01-18 |  |  |  |  |  |  |  |  |  |  |  |  |  |  |  |  |  |  |  |  |  |  |
|  | PD | **Ducts Works** |  | 2026-12-22 | 2027-01-18 |  |  |  |  |  |  |  |  |  |  |  |  |  |  |  |  |  |  |  |  |  |  |
| CO-R10.S03-WE-TE-100 |  | Trench Excavation and Bedding Works for Ducts of Telecom Network-[Road 10]-[SW-3] | 3d | 2026-12-22 | 2026-12-24 | CO-R10.S03-WE-IR-130, CO-R10.S03-WE-SL-160 SS, CO-R11.S06-TE-100 |  |  |  | -158d | 0d | Skilled Labor/Surveyor [6 h]; Foreman [6 h]; Excavator [56 h]; 6-way ducts, 50mm dia. HDPE [45]; Road crossing ducts (6-way) [4] | 6,700 |  | CO-R10.S03-TE-100 | 9 | 9 | PD | Ex | LM | DC | TE | DUCTS | CON | R10 | S03 | TE |
| CO-R10.S03-WE-TE-110 |  | Pipes Laying Works for Ducts of Telecom Network-[Road 10]-[SW-3] | 7d | 2026-12-26 | 2027-01-02 | CO-R10.S03-WE-TE-100 |  |  |  | -151d | 0d | Labor/Helper [112 h]; Skilled Labor/Surveyor [6 h]; Foreman [6 h]; Plumber [56 h]; Excavator [56 h]; JCB [28 h]; Truck [56 h]; 6-way ducts, 50mm dia. HDPE [268]; Road crossing ducts (6-way) [23] | 39,764.5 |  | CO-R10.S03-TE-110 | 9 | 9 | PD | PL | LM | DC | TE | DUCTS | CON | R10 | S03 | TE |
| CO-R10.S03-WE-TE-120 |  | Pouring Plain Concrete Above Ducts of Telecom Network-[Road 10]-[SW-3] | 7d | 2027-01-03 | 2027-01-10 | CO-R10.S03-WE-TE-110 |  |  |  | -151d | 0d | Skilled Labor/Surveyor [6 h]; Foreman [6 h]; Cons. Carpenter [112 h]; Block Mason [56 h]; 6-way ducts, 50mm dia. HDPE [45]; Road crossing ducts (6-way) [4] | 6,700 |  | CO-R10.S03-TE-120 | 9 | 9 | PD | PC | LM | DC | TE | DUCTS | CON | R10 | S03 | TE |
| CO-R10.S03-WE-TE-130 |  | Trench Backfilling and Compaction Works for Ducts of Telecom Network-[Road 10]-[SW-3] | 7d | 2027-01-11 | 2027-01-18 | CO-R10.S03-WE-TE-120 |  |  |  | -151d | 0d | Skilled Labor/Surveyor [6 h]; Foreman [6 h]; Excavator [56 h]; 6-way ducts, 50mm dia. HDPE [89]; Road crossing ducts (6-way) [8] | 13,266 |  | CO-R10.S03-TE-130 | 9 | 9 | PD | BF | LM | DC | TE | DUCTS | CON | R10 | S03 | TE |

| ID | WBS | Activity | Duration | Start | Finish | Predecessors | Complete | Remaining | Planned start | Planned finish | Total float | Free float | Resources | Cost | Actual cost | Activity ID N | Seq | New Seq | 02- Network-WBS | 03- Activity | 04-UOM | 05-Discipline | 01- Network | 07-Weightage System | 08 Stage | 09 Roads | 10 side Walk | Discipline |
| --- | --- | --- | --- | --- | --- | --- | --- | --- | --- | --- | --- | --- | --- | --- | --- | --- | --- | --- | --- | --- | --- | --- | --- | --- | --- | --- | --- | --- |
|  | MH | **Manholes Works** |  | 2026-12-26 | 2027-01-18 |  |  |  |  |  |  |  |  |  |  |  |  |  |  |  |  |  |  |  |  |  |  |  |
| CO-R10.S03-WE-TE-140 |  | Excavation Works for Manholes of Telecom Network-[Road 10]-[SW-3] | 7d | 2026-12-26 | 2027-01-02 | CO-R10.S03-WE-TE-100 |  |  |  |  | -158d | 0d | Skilled Labor/Surveyor [6 h]; Foreman [6 h]; Excavator [56 h]; Manhole Type 2 (2000x1000x1000) [0.7] | 2,199.61 |  | CO-R10.S03-TE-140 | 9 | 9 | MH | Ex | Each | MNH | TE | EXC | CON | R10 | S03 | TE |
| CO-R10.S03-WE-TE-150 |  | Installation Works for Manholes of Telecom Network-[Road 10]-[SW-3] | 7d | 2027-01-03 | 2027-01-10 | CO-R10.S03-WE-TE-140 |  |  |  |  | -151d | 0d | Skilled Labor/Surveyor [6 h]; Foreman [6 h]; Excavator [56 h]; Manhole Type 1 (2000x1000x1000) [1]; Manhole Type 2 (2000x1000x1000) [2.1] | 9,715 |  | CO-R10.S03-TE-150 | 9 | 9 | MH | HH | Each | MNH | TE | INSTALL-1 | CON | R10 | S03 | TE |
| CO-R10.S03-WE-TE-160 |  | Backfilling Works for Manholes of Telecom Network-[Road 10]-[SW-3] | 7d | 2027-01-11 | 2027-01-18 | CO-R10.S03-WE-TE-150 |  |  |  |  | -151d | 0d | Skilled Labor/Surveyor [6 h]; Foreman [6 h]; Excavator [56 h]; Manhole Type 2 (2000x1000x1000) [0.7] | 2,199.61 |  | CO-R10.S03-TE-160 | 9 | 9 | MH | BF | Each | MNH | TE | (New)-2 | CON | R10 | S03 | TE |
|  | MV | **Medium Voltage Network** |  | 2026-07-09 | 2026-10-10 |  |  |  |  |  |  |  |  |  |  |  |  |  |  |  |  |  |  |  |  |  |  |  |
|  | CW | **Cabling Works** |  | 2026-09-22 | 2026-10-10 |  |  |  |  |  |  |  |  |  |  |  |  |  |  |  |  |  |  |  |  |  |  |  |
| CO-R10.S03-WE-MV-100 |  | Trench Excavation and Bedding Works for Medium Voltage Network-[Road 10]-[SW-3] | 10d | 2026-09-22 A | 2026-10-10 A | ENG-SH-MV-A-110, CO-R10.S03-WE-SD-170 SS+3d, CO-R10.S03-WE-SD-170 FF+3d, CO-R10.S03-WE-EW-110, ENG-MS-MV-A-110 | 100% |  | 2026-07-11 | 2026-07-21 |  |  | Skilled Labor/Surveyor [15 h]; Foreman [15 h]; Excavator [144 h]; Excavation for Trench size 40cm wide and 80cm deep ( Maximum 1 cable 33kv) [199.34]; Excavation for Trench size 60cm wide and 80cm deep ( for Max two cables 33 kv) [11.34]; Excavation for Trench size 90cm wide and 80cm deep ( Maximum 3 cable 33kv) [50.52]; Excavation for Trench size 120cm wide and 80cm deep ( Maximum 4cable 33kv) [17.19]; Excavation for Trench size 150cm wide and 80cm deep ( Maximum 4cable 33kv) [63.58]; Duct bank for (2) 33 kv cables [6.88]; Duct bank for (4) 33 kv cables [45.37]; Duct bank for (6) 33 kv cables [20.62] | 23,183.87 | 23,183.87 | CO-R10.S03-MV-100 | 9 | 9 | CW | Ex | LM | CW | MV | EXC | CON | R10 | S03 | MV |
| CO-R10.S03-WE-MV-110 |  | Cable Laying Works for Medium Voltage Network-[Road 10]-[SW-3] | 10d | 2026-09-22 A | 2026-10-10 A | CO-R10.S03-WE-MV-100 SS+3d, CO-R10.S03-WE-MV-100 FF+3d, PRO-R10-MV-DL-100 FF+3d | 100% |  | 2026-07-14 | 2026-07-25 |  |  | Labor/Helper [80 h]; Electrician [80 h]; Low Current Technician [80 h]; 33kv 3Cx400 mmï¿½ Al XLPE / LLDPE /PVC Cable [938.25]; 33kv 3Cx400 mmï¿½ Al XLPE /LLDPE/PVC [2.8] | 124,697.05 | 124,697.05 | CO-R10.S03-MV-110 | 9 | 9 | CW | CL | LM | CW | MV | LAY | CON | R10 | S03 | MV |
| CO-R10.S03-WE-MV-120 |  | Trench Backfilling and Compaction Works for Medium Voltage Network-[Road 10]-[SW-3] | 10d | 2026-09-22 A | 2026-10-10 A | CO-R10.S03-WE-MV-110 SS+3d, CO-R10.S03-WE-MV-110 FF+3d, CO-R10.S03-WE-PW-130 FF+3d | 100% |  | 2026-07-18 | 2026-07-28 |  |  | Skilled Labor/Surveyor [15 h]; Foreman [15 h]; Excavator [144 h]; Water Tank [36 h]; 33kv 3Cx400 mmï¿½ Al XLPE / LLDPE /PVC Cable [402.11]; 33kv 3Cx400 mmï¿½ Al XLPE /LLDPE/PVC [1.2] | 53,441.59 | 53,441.59 | CO-R10.S03-MV-120 | 9 | 9 | CW | BF | LM | CW | MV | BACK | CON | R10 | S03 | MV |
|  | SS | **RMU Works** |  | 2026-07-09 | 2026-07-13 |  |  |  |  |  |  |  |  |  |  |  |  |  |  |  |  |  |  |  |  |  |  |  |
| CO-R10.S03-WE-MV-130 |  | Foundation Excavation Works for RMU of Medium Voltage Network-[Road 10]-[SW-3] | 10d | 2026-07-09 A | 2026-07-13 A | ENG-SH-MV-A-110, ENG-MS-MV-A-110, CO-R10.S03-WE-EW-100, CO-R10.S03-WE-EW-110, CO-R10.S03-WE-MV-120 | 100% |  | 2026-07-29 | 2026-08-09 |  |  | Supply & installation of (33) kv MV Switch (RMU) for Normally-open Points (NOP) according to the Saudi Electric Company specification [0.1] | 8,025.7 | 8,025.7 | CO-R11.S05-MV-130 | 9 | 9 | RMU | Ex | Each | RMU | MV | EXC | CON | R10 | S03 | MV |
| CO-R10.S03-WE-MV-150 |  | Installation Works for RMU Concrete Foundations of Medium Voltage Network-[Road 10]-[SW-3] | 10d | 2026-07-09 A | 2026-07-13 A | CO-R10.S03-WE-MV-130 | 100% |  | 2026-08-10 | 2026-08-20 |  |  | Supply & installation of (33) kv MV Switch (RMU) for Normally-open Points (NOP) according to the Saudi Electric Company specification [0.25] | 20,064.26 | 20,064.26 | CO-R11.S05-MV-150 | 9 | 9 | RMU | RMUF | Each | RMU | MV | INSTALL | CON | R10 | S03 | MV |
| CO-R10.S03-WE-MV-170 |  | Installation Works for RMU of Medium Voltage Network-[Road 10]-[SW-3] | 6d | 2026-07-09 A | 2026-07-13 A | CO-R10.S03-WE-MV-150, ENG-SH-MV-A-110, ENG-MS-MV-A-110, PRO-MV-LL-SH/DL-10, PRO-R10-MV-LL-MSI-10 | 100% |  | 2026-08-22 | 2026-08-27 |  |  | Supply & installation of (33) kv MV Switch (RMU) for Normally-open Points (NOP) according to the Saudi Electric Company specification [0.45] | 36,115.66 | 36,115.66 | CO-R11.S05-MV-170 | 9 | 9 | RMU | RMU | Each | RMU | MV | INS RMU | CON | R10 | S03 | MV |
| CO-R10.S03-WE-MV-180 |  | Termination Works for RMU of Medium Voltage Network-[Road 10]-[SW-3] | 5d | 2026-07-09 A | 2026-07-13 A | CO-R10.S03-WE-MV-170 | 100% |  | 2026-08-29 | 2026-09-02 |  |  | Supply & installation of (33) kv MV Switch (RMU) for Normally-open Points (NOP) according to the Saudi Electric Company specification [0.1] | 8,025.7 | 8,025.7 | CO-R11.S05-MV-SS-150 | 9 | 9 |  |  |  |  | MV | TER RMU | CON | R10 | S03 | MV |
| CO-R10.S03-WE-MV-190 |  | Testing Works for RMU of Medium Voltage Network-[Road 10]-[SW-3] | 5d | 2026-07-09 A | 2026-07-13 A | CO-R10.S03-WE-MV-180 | 100% |  | 2026-09-03 | 2026-09-08 |  |  | Supply & installation of (33) kv MV Switch (RMU) for Normally-open Points (NOP) according to the Saudi Electric Company specification [0.1] | 8,025.7 | 8,025.7 | CO-R11.S05-MV-SS-160 | 9 | 9 |  |  |  |  | MV | BACK RM | CON | R10 | S03 | MV |
|  | RD | **Road Works** |  | 2026-08-22 | 2027-04-06 |  |  |  |  |  |  |  |  |  |  |  |  |  |  |  |  |  |  |  |  |  |  |  |
|  | RD | **Pre-Bituminous Construction** |  | 2026-08-22 | 2027-02-11 |  |  |  |  |  |  |  |  |  |  |  |  |  |  |  |  |  |  |  |  |  |  |  |
| CO-R10.S03-WE-RD-100 |  | Capping and Subgrade Layer for Road Works-[Road 10]-[SW-3] | 12d | 2026-08-22 A | 2027-01-05 | ENG-SH-RD-A-100, CO-R10.S03-WE-SD-130, CO-R10.S03-WE-PW-130, CO-R10.S03-WE-SL-160 FF+3d, ENG-MS-RD-A-10, CO-R10.S03-WE-MV-120 FF+3d | 70% | 17d | 2027-01-05 | 2027-01-18 | -128d | 15d | Labor/Helper [288 h]; Skilled Labor/Surveyor [144 h]; Loader [144 h]; Grader [144 h]; Road Roller [144 h]; Water Tank [144 h]; 300mm capping layer underneath subgrade , CBR?15% [3390.73]; 300mm thick Subgrade, including subgrade preparation, CBR?25% [3390.73] | 263,120.65 | 184,184.45 | CO-R10.S03-RD-P-100 | 9 | 9 | AB | SG | Sq.m | BS | RD |  | CON | R10 | S03 | RD |
| CO-R10.S03-WE-RD-110 |  | Aggregate Base Course Layer for Road Works-[Road 10]-[SW-3] | 18d | 2027-01-23 | 2027-02-11 | CO-R10.S03-WE-RD-100 SS+3d, CO-R10.S03-WE-RD-100 FF+3d, CO-R10.S03-WE-SD-170 SS+3d, CO-R10.S03-WE-SD-170 FF+3d, CO-R10.S03-WE-PW-160 FS+3d, CO-R10.S03-WE-SL-160 SS+6d, CO-R10.S03-WE-TE-130 FS+3d, CO-R10.S03-WE-TE-160 FS+3d |  |  |  |  | -81d | 83d | Labor/Helper [288 h]; Skilled Labor/Surveyor [144 h]; Foreman [144 h]; Loader [144 h]; Grader [144 h]; Road Roller [144 h]; Aggregate base course 200mm thick after compaction in two layers(Grading 1); CBR?80%; including watering, compaction and testing [2260.72] | 183,276.57 |  | CO-R10.S03-RD-P-110 | 9 | 9 | AB | BA | Sq.m | BS | RD |  | CON | R10 | S03 | RD |
|  | LS | **Pavement Works** |  | 2026-08-25 | 2027-04-06 |  |  |  |  |  |  |  |  |  |  |  |  |  |  |  |  |  |  |  |  |  |  |  |
| CO-R10.S03-WE-RD-120 |  | Fixing of Curbstone for Sidewalks Pavement-[Road 10]-[SW-3] | 18d | 2026-08-25 A | 2026-08-31 A | CO-R10.S03-WE-SD-170 | 100% |  | 2026-07-28 | 2026-08-17 |  |  | Labor/Helper [288 h]; Block Mason [864 h]; Precast Concrete Kerb, Type K1 [1250.99]; Precast Concrete Kerb, Type L1 [2482.11] | 150,070.62 | 150,070.62 | CO-R10.S03-RD-P-120 | 9 | 9 | LS | CR | LM | LAND | RD |  | CON | R10 | S03 | RD |
| CO-R10.S03-WE-RD-130 |  | Fixing of Interlock Tiles for Sidewalks Pavement-[Road 10]-[SW-3] | 10d | 2027-03-27 | 2027-04-06 | CO-R10.S03-WE-RD-120 SS, CO-R10.S03-WE-RD-120 FF+3d, CO-R10-PW-TF-100 FF, CO-R10-PW-TF-110 FF, CO-R10-PW-TF-120 FF, CO-R10-SW-TF-100 FF, CO-R10-SW-TF-110 FF, CO-R10-SW-TF-130 FF, CO-R10-SD-TF-100, CO-R10-SL-TF-140 FF, CO-R10-SL-TF-150 FF, CO-R10-SL-ES-140 FF, CO-R10-SL-ES-150 FF, CO-R10-IR-TF-120 FF, CO-R10-MV-TF-140 FF |  |  |  |  | -158d | 1d | Labor/Helper [432 h]; Block Mason [1296 h]; Interlocking block pavers for sidewalk/footpath 60mm thick on and including 30mm Sand Bedding, 200mm Aggregate subbase, all in accordance with authority standards and complete as per specifications [2233.91]; Extraover for Pedestrian ramps [5.5] | 107,184.05 |  | CO-R10.S03-RD-P-130 | 9 | 9 | LS | IL | Sq.m | LAND | RD |  | CON | R10 | S03 | RD |
|  | 2 | **SW-4** |  | 2025-04-01 | 2027-04-15 |  |  |  |  |  |  |  |  |  |  |  |  |  |  |  |  |  |  |  |  |  |  |  |
|  | SW_4 | **SW_4-East** |  | 2025-04-01 | 2027-04-13 |  |  |  |  |  |  |  |  |  |  |  |  |  |  |  |  |  |  |  |  |  |  |  |
|  | EW | **Earthworks** |  | 2025-04-01 | 2025-04-13 |  |  |  |  |  |  |  |  |  |  |  |  |  |  |  |  |  |  |  |  |  |  |  |
|  | EW | **Earthworks** |  | 2025-04-01 | 2025-04-13 |  |  |  |  |  |  |  |  |  |  |  |  |  |  |  |  |  |  |  |  |  |  |  |
| CO-R10.S04-ES-EW-100 |  | Roadway Excavation Works Upto Design Level for Earthworks-[Road 10]-[SW-4] | 10d | 2025-04-01 A | 2025-04-12 A | ENG-MS-RD-A-10, ENG-SH-RD-A-100, CO-R10.S03-ES-EW-100 | 100% |  | 2025-05-31 | 2025-06-15 |  |  | Labor/Helper [192 h]; Skilled Labor/Surveyor [24 h]; Foreman [24 h]; Water Tank [192 h]; Dozer [192 h]; Roadway Excavation for cuttings; on any type of material for all depths including trimming and Preparation of excavated surfaces and disposal. [15964.1] | 100,573.89 | 100,573.89 | CO-R10.S04-EW-100 | 10 | 10 | EW | Ex | Cub.m | EW | EW |  | CON | R10 | S04 | EW |
| CO-R10.S04-ES-EW-110 |  | Embankments Works Upto Design Level for Earthworks-[Road 10]-[SW-4] | 10d | 2025-04-01 A | 2025-04-13 A | CO-R10.S04-ES-EW-100, ENG-MS-RD-A-10, ENG-SH-RD-A-100 | 100% |  | 2025-06-16 | 2025-06-26 |  |  | Labor/Helper [480 h]; Skilled Labor/Surveyor [60 h]; Foreman [60 h]; Water Tank [480 h]; Dozer [480 h]; Embankments to the ROW, with suitable material other than top soil or rock according to specifications [26873.7] | 217,676.81 | 217,676.81 | CO-R10.S04-EW-110 | 10 | 10 | EW | BF | Cub.m | EW | EW |  | CON | R10 | S04 | EW |

| ID | WBS | Activity | Duration | Start | Finish | Predecessors | Complete | Planned start | Planned finish | Resources | Cost | Actual cost | Activity ID N | Seq | New Seq | 02- Network-WBS | 03- Activity | 04-UOM | 05-Discipline | 01- Network | 07-Weightage System | 08 Stage | 09 Roads | 10 side Walk | Discipline |
| --- | --- | --- | --- | --- | --- | --- | --- | --- | --- | --- | --- | --- | --- | --- | --- | --- | --- | --- | --- | --- | --- | --- | --- | --- | --- |
|  | SW | **Sewage Network** |  | 2025-08-17 | 2025-11-21 |  |  |  |  |  |  |  |  |  |  |  |  |  |  |  |  |  |  |  |  |
|  | ML | **Main Line Sections** |  | 2025-08-17 | 2025-08-28 |  |  |  |  |  |  |  |  |  |  |  |  |  |  |  |  |  |  |  |  |
| CO-R10.S04-ES-SW-100 |  | Trench Excavation and Bedding Works for Main Lines of Sewage Network-[Road 10]-[SW-4] | 10d | 2025-08-17 A | 2025-08-20 A | CO-R10.S04-ES-EW-110, ENG-MS-SW-ML-A-110, ENG-SH-SW-ML-A-110 | 100% | 2025-06-28 | 2025-07-08 | Labor/Helper [96 h]; Foreman [96 h]; Excavator [96 h]; Depth : 1.5 - 2.5m [15]; Depth : 2.5 - 3.5m [8.89]; Depth : 3.5 - 4.5m [8.89]; Depth : 5.5 - 6.5m [50]; Depth : 6.5 -7.5m [40]; Depth : 6.5 -7.5m [15]; Depth :more than 7.5m [10] | 115,643.81 | 115,643.81 | CO-R10.S04-SW-100 | 10 | 10 | ML | Ex | LM | ML | SW | EX | CON | R10 | S04 | SW |
| CO-R10.S04-ES-SW-120 |  | Pipes Laying Works for Main Lines of Sewage Network-[Road 10]-[SW-4] | 12d | 2025-08-21 A | 2025-08-24 A | PRO-R10-SW-DL-100 FF+3d, CO-R10.S04-ES-SW-100 | 100% | 2025-07-09 | 2025-07-22 | Labor/Helper [192 h]; Skilled Labor/Surveyor [10 h]; Foreman [10 h]; Plumber [96 h]; Excavator [96 h]; Depth : 1.5 - 2.5m [45]; Depth : 2.5 - 3.5m [26.66]; Depth : 3.5 - 4.5m [26.66]; Depth : 5.5 - 6.5m [150]; Depth : 6.5 -7.5m [120]; Depth : 6.5 -7.5m [45]; Depth :more than 7.5m [30] | 346,931.42 | 346,931.42 | CO-R10.S04-SW-120 | 10 | 10 | ML | PL | LM | ML | SW | PIPE | CON | R10 | S04 | SW |
| CO-R10.S04-ES-SW-130 |  | Trench Backfilling and Compaction Works for Main Lines of Sewage Network-[Road 10]-[SW-4] | 12d | 2025-08-25 A | 2025-08-28 A | CO-R10.S04-ES-SW-120 | 100% | 2025-07-23 | 2025-08-05 | Skilled Labor/Surveyor [10 h]; Foreman [10 h]; Excavator [96 h]; Depth : 1.5 - 2.5m [7.5]; Depth : 2.5 - 3.5m [4.44]; Depth : 3.5 - 4.5m [4.44]; Depth : 5.5 - 6.5m [25]; Depth : 6.5 -7.5m [20]; Depth : 6.5 -7.5m [7.5]; Depth :more than 7.5m [5] | 57,821.9 | 57,821.9 | CO-R10.S04-SW-130 | 10 | 10 | ML | BF | LM | ML | SW | BACK | CON | R10 | S04 | SW |
|  | 1 | **Manholes** |  | 2025-11-06 | 2025-11-21 |  |  |  |  |  |  |  |  |  |  |  |  |  |  |  |  |  |  |  |  |
| CO-R10.S04-ES-SW-160 |  | Excavation Works for Main Line Manholes of Sewage Network-[Road 10]-[SW-4] | 1d | 2025-11-06 A | 2025-11-13 A | CO-R10.S04-ES-SW-120 SS | 100% | 2025-07-09 | 2025-07-09 | Labor/Helper [16 h]; Skilled Labor/Surveyor [8 h]; Excavator [16 h]; Depth: 1.5 - 2.5m [0.3]; Depth: 2.5 - 3.5m [0.75]; Depth: 3.5 - 4.5m [0.07]; Depth: 4.5 - 5.5m [0.15]; Depth: 5.5 - 6.5m [0.23]; Depth:6.5 - 7.5m [0.3] | 26,439.84 | 26,439.84 | CO-R10.S04-SW-160 | 10 | 10 |  |  |  |  | SW | EX | CON | R10 | S04 | SW |
| CO-R10.S04-ES-SW-170 |  | Installation RC Footing Works for Main Line Manholes of Sewage Network-[Road 10]-[SW-4] | 2d | 2025-11-06 A | 2025-11-16 A | CO-R10.S04-ES-SW-160, PRO-R10-SW-DL-110 FF+3d | 100% | 2025-07-10 | 2025-07-12 | Cons. Carpenter [64 h]; Steel Fixer [64 h]; Depth: 1.5 - 2.5m [0.2]; Depth: 2.5 - 3.5m [0.5]; Depth: 3.5 - 4.5m [0.05]; Depth: 4.5 - 5.5m [0.1]; Depth: 5.5 - 6.5m [0.15]; Depth:6.5 - 7.5m [0.2] | 17,626.56 | 17,626.56 | CO-R10.S04-SW-170 | 10 | 10 |  |  |  |  | SW | RC F | CON | R10 | S04 | SW |
| CO-R10.S04-ES-SW-180 |  | Install Grp Liner Wall Works for Main Line Manholes of Sewage Network-[Road 10]-[SW-4] | 4d | 2025-11-06 A | 2025-11-17 A | CO-R10.S04-ES-SW-170 | 100% | 2025-07-13 | 2025-07-16 | Labor/Helper [64 h]; Plumber [64 h]; Depth: 1.5 - 2.5m [0.8]; Depth: 2.5 - 3.5m [2]; Depth: 3.5 - 4.5m [0.2]; Depth: 4.5 - 5.5m [0.4]; Depth: 5.5 - 6.5m [0.6]; Depth:6.5 - 7.5m [0.8] | 70,506.24 | 70,506.24 | CO-R10.S04-SW-180 | 10 | 10 |  |  |  |  | SW | LP | CON | R10 | S04 | SW |
| CO-R10.S04-ES-SW-190 |  | Pouring Grp Liner Wall Works for Main Line Manholes of Sewage Network-[Road 10]-[SW-4] | 1d | 2025-11-06 A | 2025-11-20 A | CO-R10.S04-ES-SW-180 | 100% | 2025-07-17 | 2025-07-17 | Cons. Carpenter [32 h]; Steel Fixer [32 h]; Depth: 1.5 - 2.5m [0.1]; Depth: 2.5 - 3.5m [0.25]; Depth: 3.5 - 4.5m [0.03]; Depth: 4.5 - 5.5m [0.05]; Depth: 5.5 - 6.5m [0.07]; Depth:6.5 - 7.5m [0.1] | 8,813.28 | 8,813.28 | CO-R10.S04-SW-190 | 10 | 10 |  |  |  |  | SW | (New) | CON | R10 | S04 | SW |
| CO-R10.S04-ES-SW-200 |  | Backfilling Works for Main Line Manholes of Sewage Network-[Road 10]-[SW-4] | 4d | 2025-11-06 A | 2025-11-21 A | CO-R10.S04-ES-SW-190 | 100% | 2025-07-19 | 2025-07-22 | Labor/Helper [64 h]; Skilled Labor/Surveyor [32 h]; Excavator [64 h]; Depth: 1.5 - 2.5m [0.3]; Depth: 2.5 - 3.5m [0.75]; Depth: 3.5 - 4.5m [0.07]; Depth: 4.5 - 5.5m [0.15]; Depth: 5.5 - 6.5m [0.23]; Depth:6.5 - 7.5m [0.3] | 26,439.84 | 26,439.84 | CO-R10.S04-SW-200 | 10 | 10 |  |  |  |  | SW | BACK | CON | R10 | S04 | SW |
| CO-R10.S04-ES-SW-210 |  | Testing Works for Main Line Manholes of Sewage Network-[Road 10]-[SW-4] | 1d | 2025-11-06 A | 2025-11-21 A | CO-R10.S04-ES-SW-200 | 100% | 2026-10-13 | 2026-10-13 | Labor/Helper [16 h]; Plumber [16 h]; Depth: 1.5 - 2.5m [0.1]; Depth: 2.5 - 3.5m [0.25]; Depth: 3.5 - 4.5m [0.03]; Depth: 4.5 - 5.5m [0.05]; Depth: 5.5 - 6.5m [0.07]; Depth:6.5 - 7.5m [0.1] | 8,813.28 | 8,813.28 | CO-R10.S04-SW-210 | 10 | 10 |  |  |  |  | SW | T&COV | CON | R10 | S04 | SW |
|  | SD | **Storm Drainage Network** |  | 2025-08-25 | 2026-10-13 |  |  |  |  |  |  |  |  |  |  |  |  |  |  |  |  |  |  |  |  |
|  | ML | **Main Line Sections** |  | 2025-08-25 | 2025-09-07 |  |  |  |  |  |  |  |  |  |  |  |  |  |  |  |  |  |  |  |  |
| CO-R10.S04-ES-SD-100 |  | Trench Excavation and Bedding Works for Main Lines of Storm Drainage Network-[Road 10]-[SW-4] | 10d | 2025-08-25 A | 2025-08-28 A | CO-R10.S04-ES-EW-110, CO-R10.S04-ES-EW-100, CO-R10.S04-ES-SW-130 SS+3d, CO-R10.S04-ES-SW-130 FF+3d, CO-R10.S03-ES-SD-100 | 100% | 2025-08-27 | 2025-09-07 | Skilled Labor/Surveyor [12 h]; Foreman [12 h]; Excavator [120 h]; Pipe with diameter 400mm ; depth: 0.0m - 1.5m [43.8]; Pipe with diameter 400mm ; depth: 1.51m - 2.5m [55.9]; Pipe with diameter 500mm ; depth: 1.51m - 2.5m [24.2]; Pipe with diameter 600mm ; depth: 1.51m - 2.5m [19.65]; Pipe with diameter 700mm ; depth: 0.0m - 1.5m [5]; Pipe with diameter 700mm ; depth: 1.51m - 2.5m [36.06]; Pipe with diameter 800mm ; depth: 1.51m - 2.5m [45.02]; Pipe with diameter 900mm ; depth: 1.51m - 2.5m [23.18]; Pipe with diameter 1000mm ; depth: 0.0m - 1.5m [5]; Pipe with diameter 1100mm ; depth: 0.0m - 1.5m [5] | 109,227.08 | 109,227.08 | CO-R10.S04-SD-100 | 10 | 10 | ML | Ex | LM | ML | SD | EX | CON | R10 | S04 | SD |
| CO-R10.S04-ES-SD-120 |  | Pipes Laying Works for Main Lines of Storm Drainage Network-[Road 10]-[SW-4] | 10d | 2025-08-30 A | 2025-09-03 A | PRO-R10-SD-DL-120 FF+3d, CO-R10.S04-ES-SD-100, CO-R10.S03-ES-SD-120, CO-R10.S03-WE-SD-120 | 100% | 2025-12-11 | 2025-12-22 | Labor/Helper [240 h]; Skilled Labor/Surveyor [12 h]; Foreman [12 h]; Plumber [120 h]; Excavator [120 h]; Pipe with diameter 400mm ; depth: 0.0m - 1.5m [131.39]; Pipe with diameter 400mm ; depth: 1.51m - 2.5m [167.69]; Pipe with diameter 500mm ; depth: 1.51m - 2.5m [72.6]; Pipe with diameter 600mm ; depth: 1.51m - 2.5m [58.94]; Pipe with diameter 700mm ; depth: 0.0m - 1.5m [15]; Pipe with diameter 700mm ; depth: 1.51m - 2.5m [108.18]; Pipe with diameter 800mm ; depth: 1.51m - 2.5m [135.05]; Pipe with diameter 900mm ; depth: 1.51m - 2.5m [69.54]; Pipe with diameter 1000mm ; depth: 0.0m - 1.5m [15]; Pipe with diameter 1100mm ; depth: 0.0m - 1.5m [15] | 327,681.23 | 327,681.23 | CO-R10.S04-SD-120 | 10 | 10 | ML | PL | LM | ML | SD | PIPE | CON | R10 | S04 | SD |
| CO-R10.S04-ES-SD-130 |  | Trench Backfilling and Compaction Works for Main Lines of Storm Drainage Network-[Road 10]-[SW-4] | 10d | 2025-09-04 A | 2025-09-07 A | CO-R10.S04-ES-SD-120 SS+3d, CO-R10.S04-ES-SD-120 FF+3d, CO-R10.S04-ES-SD-120, CO-R10.S04-ES-SD-220 FF | 100% | 2025-12-23 | 2026-01-03 | Skilled Labor/Surveyor [12 h]; Foreman [12 h]; Excavator [120 h]; Pipe with diameter 400mm ; depth: 0.0m - 1.5m [21.9]; Pipe with diameter 400mm ; depth: 1.51m - 2.5m [27.95]; Pipe with diameter 500mm ; depth: 1.51m - 2.5m [12.1]; Pipe with diameter 600mm ; depth: 1.51m - 2.5m [9.82]; Pipe with diameter 700mm ; depth: 0.0m - 1.5m [2.5]; Pipe with diameter 700mm ; depth: 1.51m - 2.5m [18.03]; Pipe with diameter 800mm ; depth: 1.51m - 2.5m [22.51]; Pipe with diameter 900mm ; depth: 1.51m - 2.5m [11.59]; Pipe with diameter 1000mm ; depth: 0.0m - 1.5m [2.5]; Pipe with diameter 1100mm ; depth: 0.0m - 1.5m [2.5] | 54,613.54 | 54,613.54 | CO-R10.S04-SD-130 | 10 | 10 | ML | BF | LM | ML | SD | BACK | CON | R10 | S04 | SD |
|  | MH | **Manholes** |  | 2026-03-17 | 2026-10-13 |  |  |  |  |  |  |  |  |  |  |  |  |  |  |  |  |  |  |  |  |
| CO-R10.S04-ES-SD-180 |  | Trench Excavation and Bedding Works for Manholes of Storm Drainage Network-[Road 10]-[SW-4] | 1d | 2026-03-17 A | 2026-03-17 A | CO-R10.S04-ES-SD-120 SS, PRO-SD-1DL-100 | 100% | 2025-12-11 | 2025-12-11 | Labor/Helper [24 h]; Skilled Labor/Surveyor [12 h]; Excavator [24 h]; MH ; depth: 0.0m - 1.5m [0.23]; MH ; depth: 1.51m - 2.5m [0.6]; MH ; depth: 0.0m - 1.5m [0.15]; MH ; depth: 0.0m - 1.5m [0.07]; MH ; depth: 1.51m - 2.5m [0.23]; MH ; depth: 2.51 - 3.5m [0.3]; MH ; depth: 3.51 - 4.5m [0.15] | 30,528.13 | 30,528.13 | CO-R10.S04-SD-180 | 10 | 10 |  |  |  |  | SD | EX | CON | R10 | S04 | SD |
| CO-R10.S04-ES-SD-190 |  | Install RC Footing Works for Manholes of Storm Drainage Network-[Road 10]-[SW-4] | 1d | 2026-03-18 A | 2026-03-18 A | CO-R10.S04-ES-SD-180 | 100% | 2025-12-13 | 2025-12-13 | Cons. Carpenter [48 h]; Steel Fixer [48 h]; MH ; depth: 0.0m - 1.5m [0.07]; MH ; depth: 1.51m - 2.5m [0.2]; MH ; depth: 0.0m - 1.5m [0.05]; MH ; depth: 0.0m - 1.5m [0.03]; MH ; depth: 1.51m - 2.5m [0.07]; MH ; depth: 2.51 - 3.5m [0.1]; MH ; depth: 3.51 - 4.5m [0.05] | 10,176.04 | 10,176.04 | CO-R10.S04-SD-190 | 10 | 10 |  |  |  |  | SD | RC F | CON | R10 | S04 | SD |
| CO-R10.S04-ES-SD-200 |  | Install RC Wall Rings & Slab Works for Manholes of Storm Drainage Network-[Road 10]-[SW-4] | 4d | 2026-03-19 A | 2026-03-26 A | CO-R10.S04-ES-SD-190 | 100% | 2025-12-14 | 2025-12-17 | Cons. Carpenter [192 h]; Steel Fixer [192 h]; MH ; depth: 0.0m - 1.5m [0.68]; MH ; depth: 1.51m - 2.5m [1.8]; MH ; depth: 0.0m - 1.5m [0.45]; MH ; depth: 0.0m - 1.5m [0.23]; MH ; depth: 1.51m - 2.5m [0.68]; MH ; depth: 2.51 - 3.5m [0.9]; MH ; depth: 3.51 - 4.5m [0.45] | 91,584.39 | 91,584.39 | CO-R10.S04-SD-200 | 10 | 10 |  |  |  |  | SD | RC W | CON | R10 | S04 | SD |
| CO-R10.S04-ES-SD-220 |  | Backfilling Works for Manholes of Storm Drainage Network-[Road 10]-[SW-4] | 7d | 2026-03-28 A | 2026-04-04 A | CO-R10.S04-ES-SD-200 | 100% | 2025-12-20 | 2025-12-27 | Labor/Helper [112 h]; Skilled Labor/Surveyor [56 h]; Excavator [112 h]; MH ; depth: 0.0m - 1.5m [0.3]; MH ; depth: 1.51m - 2.5m [0.8]; MH ; depth: 0.0m - 1.5m [0.2]; MH ; depth: 0.0m - 1.5m [0.1]; MH ; depth: 1.51m - 2.5m [0.3]; MH ; depth: 2.51 - 3.5m [0.4]; MH ; depth: 3.51 - 4.5m [0.2] | 40,704.18 | 40,704.18 | CO-R10.S04-SD-220 | 10 | 10 |  |  |  |  | SD | BACK | CON | R10 | S04 | SD |
| CO-R10.S04-ES-SD-210 |  | Testing Works for Manholes of Storm Drainage Network-[Road 10]-[SW-4] | 1d | 2026-10-13 A | 2026-10-13 A | CO-R10.S04-ES-SD-200 | 100% |  |  | Labor/Helper [24 h]; Plumber [24 h]; MH ; depth: 0.0m - 1.5m [0.15]; MH ; depth: 1.51m - 2.5m [0.4]; MH ; depth: 0.0m - 1.5m [0.1]; MH ; depth: 0.0m - 1.5m [0.05]; MH ; depth: 1.51m - 2.5m [0.15]; MH ; depth: 2.51 - 3.5m [0.2]; MH ; depth: 3.51 - 4.5m [0.1] | 20,352.09 | 20,352.09 | CO-R10.S04-SD-210 | 10 | 10 |  |  |  |  | SD | T&COV | CON | R10 | S04 | SD |
|  | CB | **Catch Basin Sections** |  | 2025-09-06 | 2026-10-13 |  |  |  |  |  |  |  |  |  |  |  |  |  |  |  |  |  |  |  |  |
| CO-R10.S04-ES-SD-140 |  | Trench Excavation and Bedding Works for Catch Basins of Storm Drainage Network-[Road 10]-[SW-4] | 6d | 2025-09-06 A | 2025-09-08 A | CO-R10.S04-ES-EW-110, CO-R10.S04-ES-SD-220 | 100% | 2025-12-28 | 2026-01-03 | Skilled Labor/Surveyor [5 h]; Foreman [5 h]; Excavator [48 h]; Pipe with diameter 300mm ; depth: 0 - 1.5m [84.55]; Pipe with diameter 400mm ; depth: 0 - 1.5m [5.16] | 20,848.43 | 20,848.43 | CO-R10.S04-SD-140 | 10 | 10 | CB | Ex | Each | CB | SD | EX | CON | R10 | S04 | SD |
| CO-R10.S04-ES-SD-150 |  | Installation and Pipes Laying Connection Works for Catch Basins of Storm Drainage Network-[Road 10]-[SW-4] | 7d | 2025-09-09 A | 2025-09-11 A | CO-R10.S04-ES-SD-140, PRO-R10-SD-DL-130 FF+3d | 100% | 2026-01-04 | 2026-01-11 | Labor/Helper [224 h]; Skilled Labor/Surveyor [12 h]; Foreman [12 h]; Excavator [112 h]; Pipe with diameter 300mm ; depth: 0 - 1.5m [253.63]; Pipe with diameter 400mm ; depth: 0 - 1.5m [15.47] | 62,544.75 | 62,544.75 | CO-R10.S04-SD-150 | 10 | 10 | CB | CB | Each | CB | SD | INSTALL | CON | R10 | S04 | SD |
| CO-R10.S04-ES-SD-170 |  | Trench Backfilling and Compaction Works for Catch Basins of Storm Drainage Network-[Road 10]-[SW-4] | 7d | 2025-09-13 A | 2025-09-15 A | CO-R10.S04-ES-SD-150 | 100% | 2026-01-19 | 2026-01-26 | Skilled Labor/Surveyor [6 h]; Foreman [6 h]; Excavator [56 h]; Pipe with diameter 300mm ; depth: 0 - 1.5m [112.73]; Pipe with diameter 400mm ; depth: 0 - 1.5m [6.87] | 27,797.55 | 27,797.55 | CO-R10.S04-SD-170 | 10 | 10 | CB | BF | Each | CB | SD | BACK | CON | R10 | S04 | SD |
| CO-R10.S04-ES-SD-160 |  | Testing Works for Catch Basins of Storm Drainage Network-[Road 10]-[SW-4] | 10d | 2026-10-13 A | 2026-10-13 A | CO-R10.S04-ES-SD-150, CO-R10.S04-ES-SD-120, PRO-R10-SD-DL-110 FF+3d | 100% | 2026-10-13 | 2026-10-24 | Labor/Helper [160 h]; Skilled Labor/Surveyor [8 h]; Foreman [8 h]; Plumber [80 h]; Excavator [80 h]; Pipe with diameter 300mm ; depth: 0 - 1.5m [56.36]; Pipe with diameter 400mm ; depth: 0 - 1.5m [3.44] | 13,898.77 | 13,898.77 | CO-R10.S04-SD-160 | 10 | 10 | CB | PL | Each | CB | SD | TEST | CON | R10 | S04 | SD |

| ID | WBS | Activity | Duration | Start | Finish | Predecessors | Complete | Planned start | Planned finish | Total float | Free float | Resources | Cost | Actual cost | Activity ID N | Seq | New Seq | 02- Network-WBS | 03- Activity | 04-UOM | 05-Discipline | 01- Network | 07-Weightage System | 08 Stage | 09 Roads | 10 side Walk | Discipline |
| --- | --- | --- | --- | --- | --- | --- | --- | --- | --- | --- | --- | --- | --- | --- | --- | --- | --- | --- | --- | --- | --- | --- | --- | --- | --- | --- | --- |
|  | PW | **Potable Water Network** |  | 2025-10-01 | 2026-11-19 |  |  |  |  |  |  |  |  |  |  |  |  |  |  |  |  |  |  |  |  |  |  |
|  | ML | **Main Line Sections** |  | 2025-10-01 | 2025-10-07 |  |  |  |  |  |  |  |  |  |  |  |  |  |  |  |  |  |  |  |  |  |  |
| CO-R10.S04-ES-PW-100 |  | Trench Excavation and Bedding Works for Main Lines of Potable Water Network-[Road 10]-[SW-4] | 10d | 2025-10-01 A | 2025-10-07 A | CO-R10.S04-ES-EW-110, CO-R10.S04-ES-EW-100, CO-R10.S04-ES-SD-130 | 100% | 2026-01-04 | 2026-01-14 |  |  | Skilled Labor/Surveyor [8 h]; Foreman [8 h]; Excavator [80 h]; Pipe with diameter 560mm; in depth 1.5m - 3.0m [120]; Pipe with diameter 630mm; in depth 1.5m - 3.0m [209] | 262,851.72 | 262,851.72 | CO-R10.S04-PW-100 | 10 | 10 | ML | Ex | LM | ML | PW | EX | CON | R10 | S04 | PW |
| CO-R10.S04-ES-PW-110 |  | Pipes Laying and accessories for Main Lines of Potable Water Network-[Road 10]-[SW-4] | 10d | 2025-10-02 A | 2025-10-07 A | CO-R10.S04-ES-PW-100, PRO-R10-PW-DL-100 FF+3d | 100% | 2026-01-15 | 2026-01-26 |  |  | Labor/Helper [160 h]; Skilled Labor/Surveyor [8 h]; Foreman [8 h]; Plumber [80 h]; Excavator [80 h]; Pipe with diameter 560mm; in depth 1.5m - 3.0m [300]; Pipe with diameter 630mm; in depth 1.5m - 3.0m [522.5] | 657,129.3 | 657,129.3 | CO-R10.S04-PW-110 | 10 | 10 | ML | PL | LM | ML | PW | PIPE | CON | R10 | S04 | PW |
| CO-R10.S04-ES-PW-130 |  | Trench Backfilling and Compaction Works for Main Lines of Potable Water Network-[Road 10]-[SW-4] | 7d | 2025-10-04 A | 2025-10-07 A | CO-R10.S04-ES-PW-110 | 100% | 2026-02-04 | 2026-02-11 |  |  | Skilled Labor/Surveyor [8 h]; Foreman [8 h]; Eq. Operator [8 h]; Loader [80 h]; Compactor [80 h]; Water Tank [20 h]; Pipe with diameter 560mm; in depth 1.5m - 3.0m [120]; Pipe with diameter 630mm; in depth 1.5m - 3.0m [209] | 262,851.72 | 262,851.72 | CO-R10.S04-PW-130 | 10 | 10 | ML | BF | LM | ML | PW | BACK | CON | R10 | S04 | PW |
|  | VC | **Valve Chamber** |  | 2026-07-07 | 2026-07-16 |  |  |  |  |  |  |  |  |  |  |  |  |  |  |  |  |  |  |  |  |  |  |
| CO-R10.S04-ES-PW-170 |  | Excavation Works for Main Line Valves and Valve Chambers of Potable Water Network-[Road 10]-[SW-4] | 1d | 2026-07-07 A | 2026-07-16 A | CO-R10.S04-ES-PW-100 | 100% | 2026-10-20 | 2026-10-20 |  |  | Labor/Helper [8 h]; Skilled Labor/Surveyor [4 h]; Excavator [8 h]; Wash out chamber; on 200 mm dia pipeline Depth 1.5 - 3m [0.1]; Wash out chamber; on 560 mm dia pipeline Depth 1.5 - 3m [0.05]; Wash out chamber; on 630 mm dia pipeline Depth 1.5 - 3m [0.2]; Air valve chamber on 560 mm dia pipeline Depth 1.5 - 3 m [0.1]; Air valve chamber on 630 mm dia pipeline Depth 1.5 - 3 m [0.2] | 16,109.01 | 16,109.01 | CO-R10.S04-PW-170 | 10 | 10 | ML | VI | Each | ML | PW | EX | CON | R10 | S04 | PW |
| CO-R10.S04-ES-PW-180 |  | RC Footing Works for Main Line Valves and Valve Chambers of Potable Water Network-[Road 10]-[SW-4] | 3d | 2026-07-07 A | 2026-07-16 A | CO-R10.S04-ES-PW-170 | 100% | 2026-10-21 | 2026-10-24 |  |  | Cons. Carpenter [48 h]; Steel Fixer [48 h]; Wash out chamber; on 560 mm dia pipeline Depth 1.5 - 3m [0.07]; Wash out chamber; on 630 mm dia pipeline Depth 1.5 - 3m [0.3]; Air valve chamber on 560 mm dia pipeline Depth 1.5 - 3 m [0.15]; Air valve chamber on 630 mm dia pipeline Depth 1.5 - 3 m [0.3] | 19,376.15 | 19,376.15 | CO-R10.S04-PW-180 | 10 | 10 | ML | VI | Each | ML | PW | RC F | CON | R10 | S04 | PW |
| CO-R10.S04-ES-PW-190 |  | RC Wall Works for Main Line Valves and Valve Chambers of Potable Water Network-[Road 10]-[SW-4] | 6d | 2026-07-07 A | 2026-07-16 A | CO-R10.S04-ES-PW-180 | 100% | 2026-10-25 | 2026-10-31 |  |  | Cons. Carpenter [96 h]; Steel Fixer [96 h]; Wash out chamber; on 560 mm dia pipeline Depth 1.5 - 3m [0.17]; Wash out chamber; on 630 mm dia pipeline Depth 1.5 - 3m [0.7]; Air valve chamber on 560 mm dia pipeline Depth 1.5 - 3 m [0.35]; Air valve chamber on 630 mm dia pipeline Depth 1.5 - 3 m [0.7] | 45,211 | 45,211 | CO-R10.S04-PW-190 | 10 | 10 | ML | VI | Each | ML | PW | RC W | CON | R10 | S04 | PW |
| CO-R10.S04-ES-PW-200 |  | RC Slab Works for Main Line Valves and Valve Chambers of Potable Water Network-[Road 10]-[SW-4] | 2d | 2026-07-07 A | 2026-07-16 A | CO-R10.S04-ES-PW-190 | 100% | 2026-11-01 | 2026-11-02 |  |  | Cons. Carpenter [32 h]; Steel Fixer [32 h]; Wash out chamber; on 560 mm dia pipeline Depth 1.5 - 3m [0.1]; Wash out chamber; on 630 mm dia pipeline Depth 1.5 - 3m [0.4]; Air valve chamber on 560 mm dia pipeline Depth 1.5 - 3 m [0.2]; Air valve chamber on 630 mm dia pipeline Depth 1.5 - 3 m [0.4] | 25,834.86 | 25,834.86 | CO-R10.S04-PW-200 | 10 | 10 | ML | VI | Each | ML | PW | RC S | CON | R10 | S04 | PW |
| CO-R10.S04-ES-PW-210 |  | Insulation Works for Main Line Valves and Valve Chambers of Potable Water Network-[Road 10]-[SW-4] | 1d | 2026-07-07 A | 2026-07-16 A | CO-R10.S04-ES-PW-200 FF | 100% | 2026-01-29 | 2026-01-29 |  |  | Labor/Helper [8 h]; Plumber [8 h]; Butterfly valves with dia (560)mm on pipes with dia (560)mm. [1]; Butterfly valves with dia (630)mm on pipes with dia (630)mm. [2.5]; Wash out valve with dia (150)mm on pipes with dia (560) mm [0.5]; Wash out valve with dia (150)mm on pipes with dia (630) mm [1.5]; Air valves with dia (65mm) mm on pipes with dia(560)mm. [1]; Air valves with dia (65mm) mm on pipes with dia(630)mm. [2] | 319,298.55 | 319,298.55 | CO-R10.S04-PW-210 | 10 | 10 | ML | VI | Each | ML | PW | INSUL | CON | R10 | S04 | PW |
| CO-R10.S04-ES-PW-220 |  | Backfilling Works for Main Line Valves and Valve Chambers of Potable Water Network-[Road 10]-[SW-4] | 3d | 2026-07-07 A | 2026-07-16 A | CO-R10.S04-ES-PW-210 | 100% | 2026-11-03 | 2026-11-05 |  |  | Labor/Helper [24 h]; Skilled Labor/Surveyor [12 h]; Excavator [24 h]; Wash out chamber; on 560 mm dia pipeline Depth 1.5 - 3m [0.1]; Wash out chamber; on 630 mm dia pipeline Depth 1.5 - 3m [0.4]; Air valve chamber on 560 mm dia pipeline Depth 1.5 - 3 m [0.2]; Air valve chamber on 630 mm dia pipeline Depth 1.5 - 3 m [0.4] | 25,834.86 | 25,834.86 | CO-R10.S04-PW-220 | 10 | 10 | ML | VI | Each | ML | PW | BACK | CON | R10 | S04 | PW |
|  | FH | **Fire Hydrant** |  | 2026-10-27 | 2026-11-19 |  |  |  |  |  |  |  |  |  |  |  |  |  |  |  |  |  |  |  |  |  |  |
| CO-R10.S04-ES-PW-140 |  | Excavation Works for Fire Hydrants of Potable Water Network-[Road 10]-[SW-4] | 7d | 2026-10-27 | 2026-11-03 | CO-R10.S04-ES-PW-110 SS+3d, CO-R10.S04-ES-EW-110, CO-R10.S04-ES-SW-130 SS+3d, CO-R10.S04-ES-SW-130 FF+3d, CO-R10.S04-ES-PW-170 |  |  |  | -100d | 0d | Skilled Labor/Surveyor [6 h]; Foreman [6 h]; Excavator [56 h] |  |  | CO-R10.S04-PW-140 | 10 | 10 | FH | Ex | Each | FH | PW | EX | CON | R10 | S04 | PW |
| CO-R10.S04-ES-PW-150 |  | Installation Works for Fire Hydrant of Potable Water Network-[Road 10]-[SW-4] | 7d | 2026-11-04 | 2026-11-11 | CO-R10.S04-ES-PW-140, PRO-R10-PW-DL-120 FF+3d |  |  |  | -100d | 0d | Labor/Helper [112 h]; Skilled Labor/Surveyor [6 h]; Foreman [6 h]; Plumber [112 h] |  |  | CO-R10.S04-PW-150 | 10 | 10 | FH | FH | Each | FH | PW | INSTALL | CON | R10 | S04 | PW |
| CO-R10.S04-ES-PW-160 |  | Trench Backfilling and Compaction Works for Fire Hydrants of Potable Water Network-[Road 10]-[SW-4] | 7d | 2026-11-12 | 2026-11-19 | CO-R10.S04-ES-PW-150 |  |  |  | -100d | 62d | Skilled Labor/Surveyor [6 h]; Foreman [6 h]; Excavator [56 h] |  |  | CO-R10.S04-PW-160 | 10 | 10 | FH | BF | Each | FH | PW | BACK | CON | R10 | S04 | PW |
|  | IR | **Irrigation Network** |  | 2026-06-10 | 2026-10-31 |  |  |  |  |  |  |  |  |  |  |  |  |  |  |  |  |  |  |  |  |  |  |
|  | ML | **Main Line Pipes** |  | 2026-06-10 | 2026-10-31 |  |  |  |  |  |  |  |  |  |  |  |  |  |  |  |  |  |  |  |  |  |  |
| CO-R10.S04-ES-IR-100 |  | Trench Excavation and Bedding Works for Main Lines of Irrigation Network-[Road 10]-[SW-4] | 6d | 2026-06-10 A | 2026-06-20 A | CO-R10.S04-ES-EW-110, CO-R10.S04-ES-PW-130, CO-R10.S04-ES-SD-170 | 100% | 2026-02-12 | 2026-02-18 |  |  | Skilled Labor/Surveyor [5 h]; Foreman [5 h]; Excavator [48 h]; 125 mm pipe; depth 0.0m - 1.5m [287.31] | 21,367.62 | 21,367.62 | CO-R10.S04-IR-100 | 10 | 10 | ML | Ex | LM | ML | IR | EX | CON | R10 | S04 | IR |
| CO-R10.S04-ES-IR-110 |  | Pipes Laying Works for Main Lines of Irrigation Network-[Road 10]-[SW-4] | 7d | 2026-06-10 A | 2026-06-20 A | CO-R10.S04-ES-IR-100, PRO-R19.2-IR-DL-100 FF+3d | 100% | 2026-02-19 | 2026-02-26 |  |  | Labor/Helper [112 h]; Skilled Labor/Surveyor [6 h]; Foreman [6 h]; Plumber [56 h]; Excavator [56 h]; 125 mm pipe; depth 0.0m - 1.5m [861.95] | 64,102.85 | 64,102.85 | CO-R10.S04-IR-110 | 10 | 10 | ML | PL | LM | ML | IR | PIPE | CON | R10 | S04 | IR |
| CO-R10.S04-ES-IR-130 |  | Trench Backfilling and Compaction Works for Main Lines of Irrigation Network-[Road 10]-[SW-4] | 5d | 2026-06-10 A | 2026-06-20 A | CO-R10.S04-ES-IR-110 | 100% | 2026-03-04 | 2026-03-09 |  |  | Skilled Labor/Surveyor [4 h]; Foreman [4 h]; Excavator [40 h]; 125 mm pipe; depth 0.0m - 1.5m [143.66] | 10,683.85 | 10,683.85 | CO-R10.S04-IR-130 | 10 | 10 | ML | BF | LM | ML | IR | BACK | CON | R10 | S04 | IR |
| CO-R10.S04-ES-IR-120 |  | Installation Works for Main Line Valves of Irrigation Network-[Road 10]-[SW-4] | 4d | 2026-10-27 | 2026-10-31 | CO-R10.S04-ES-IR-110, PRO-R19.2-IR-DL-110 FF+3d |  |  |  | -2d | 161d | Labor/Helper [128 h]; Skilled Labor/Surveyor [7 h]; Foreman [7 h]; Plumber [128 h]; Gate valves dia (90)mm on pipes with dia (125) mm. [11]; Air valve chamber on 280 mm dia pipeline Depth 1.5 - 3 m [1] | 30,065.35 |  | CO-R10.S04-IR-120 | 10 | 10 | ML | VI | Each | ML | IR | VALV | CON | R10 | S04 | IR |
|  | SL | **Street Lighting Network** |  | 2026-10-27 | 2027-01-24 |  |  |  |  |  |  |  |  |  |  |  |  |  |  |  |  |  |  |  |  |  |  |
|  | LP | **Lighting Poles Works** |  | 2026-10-27 | 2026-12-23 |  |  |  |  |  |  |  |  |  |  |  |  |  |  |  |  |  |  |  |  |  |  |
| CO-R10.S04-ES-SL-100 |  | Foundation Excavation Works for Lighting Poles of Street Lighting Network-[Road 10]-[SW-4] | 7d | 2026-10-27 | 2026-11-03 | CO-R10.S04-ES-EW-110, CO-R10.S04-ES-EW-100, CO-R10.S04-ES-IR-130 |  |  |  | -171d | 0d | Labor/Helper [112 h]; Skilled Labor/Surveyor [144 h]; Excavator [112 h]; Lighting poles with one arm, including the power distribution box, screws, cables, 12 meters in height. [1.2] | 2,284.16 |  | CO-R10.S04-SL-100 | 10 | 10 | LP | Ex | Each | POL | SL | EX | CON | R10 | S04 | SL |
| CO-R10.S04-ES-SL-110 |  | Installation Works for Lighting Poles Foundation of Street Lighting Network-[Road 10]-[SW-4] | 7d | 2026-11-02 | 2026-11-09 | CO-R10.S04-ES-SL-100 SS+5d, CO-R10.S04-ES-SL-100 FF+5d, PRO-R10-SL-DL-110 FF+3d |  |  |  | -171d | 0d | Labor/Helper [192 h]; Skilled Labor/Surveyor [10 h]; Foreman [10 h]; Eq. Operator [10 h]; Loader [24 h]; Reinforced concrete foundation, for 12m high lighting columns With Drawpits [24] | 8,731.44 |  | CO-R10.S04-SL-110 | 10 | 10 | LP | LPF | Each | POL | SL | INSTALL | CON | R10 | S04 | SL |
| CO-R10.S04-ES-SL-120 |  | Installation Works for Lighting Poles of Street Lighting Network-[Road 10]-[SW-4] | 7d | 2026-11-08 | 2026-11-15 | CO-R10.S04-ES-SL-110 SS+5d, CO-R10.S04-ES-SL-110 FF+5d, PRO-R10-SL-DL-120 FF+3d |  |  |  | -171d | 0d | Labor/Helper [144 h]; Electrician [144 h]; Lighting poles with one arm, including the power distribution box, screws, cables, 12 meters in height. [13.2] | 25,125.8 |  | CO-R10.S04-SL-120 | 10 | 10 | LP | LP | Each | POL | SL | POLES | CON | R10 | S04 | SL |
| CO-R10.S04-ES-SL-210 |  | Backfilling Works for Lighting Poles of Street Lighting Network-[Road 10]-[SW-4] | 15d | 2026-11-29 | 2026-12-15 | CO-R10.S04-ES-SL-120 SS, CO-R10.S04-ES-SL-120 FF, CO-R10.S03-ES-SL-210 |  |  |  | -178.5d | 0d | Labor/Helper [240 h]; Skilled Labor/Surveyor [120 h]; Excavator [240 h]; Lighting poles with one arm, including the power distribution box, screws, cables, 12 meters in height. [4.8] | 9,136.66 |  | CO-R10.S04-SL-210 | 10 | 10 |  |  |  |  | SL | BACK | CON | R10 | S04 | SL |
| CO-R10.S04-ES-SL-130 |  | Installation Works for Lighting Fixtures With Drop Wire of Street Lighting Network-[Road 10]-[SW-4] | 18d | 2026-12-03 | 2026-12-23 | CO-R10.S04-ES-SL-120 SS+5d, CO-R10.S04-ES-SL-120 FF+5d, PRO-R10-SL-DL-140 FF+3d, CO-R10.S04-ES-SL-200 FF |  |  |  | -94.5d | 6d | Labor/Helper [261 h]; Electrician [262 h]; Manlift [261 h]; Street Lighting( LED) Luminaire,(Type C) complete with control gear and lamp, ?.17000 Lumen [24] | 14,375.52 |  | CO-R10.S04-SL-130 | 10 | 10 | LP | LPA | Each | POL | SL | INSTALL | CON | R10 | S04 | SL |
| CO-R10.S04-ES-SL-200 |  | Testing Works for Lighting Poles of Street Lighting Network-[Road 10]-[SW-4] | 7d | 2026-12-16 | 2026-12-23 | CO-R10.S04-ES-SL-210, CO-R10.S04-ES-SL-120 |  |  |  | -94.5d | 0d | Labor/Helper [168 h]; Electrician [168 h]; Lighting poles with one arm, including the power distribution box, screws, cables, 12 meters in height. [4.8] | 9,136.66 |  | CO-R10.S04-SL-200 | 10 | 10 |  |  |  |  | SL | TESTING | CON | R10 | S04 | SL |

| ID | WBS | Activity | Duration | Start | Finish | Predecessors | Complete | Remaining | Planned start | Planned finish | Total float | Free float | Resources | Cost | Actual cost | Activity ID N | Seq | New Seq | 02- Network-WBS | 03- Activity | 04-UOM | 05-Discipline | 01- Network | 07-Weightage System | 08 Stage | 09 Roads | 10 side Walk | Discipline |
| --- | --- | --- | --- | --- | --- | --- | --- | --- | --- | --- | --- | --- | --- | --- | --- | --- | --- | --- | --- | --- | --- | --- | --- | --- | --- | --- | --- | --- |
|  | CW | **Cabling Works** |  | 2026-11-16 | 2026-12-09 |  |  |  |  |  |  |  |  |  |  |  |  |  |  |  |  |  |  |  |  |  |  |  |
| CO-R10.S04-ES-SL-140 |  | Trench Excavation and Bedding Works for Street Lighting Network-[Road 10]-[SW-4] | 7d | 2026-11-16 | 2026-11-23 | CO-R10.S04-ES-IR-130, CO-R10.S04-ES-EW-110, CO-R10.S04-ES-SL-120, CO-R10.S04-ES-SL-110 |  |  |  |  | -171d | 0d | Labor/Helper [80 h]; Skilled Labor/Surveyor [40 h]; Excavator [80 h] |  |  | CO-R10.S04-SL-140 | 10 | 10 | CW | Ex | LM | CB | SL | EXC | CON | R10 | S04 | SL |
| CO-R10.S04-ES-SL-150 |  | Cable Laying Works for Street Lighting Network-[Road 10]-[SW-4] | 7d | 2026-11-24 | 2026-12-01 | CO-R10.S04-ES-SL-140, PRO-R10-SL-DL-100 FF+3d |  |  |  |  | -171d | 0d | Labor/Helper [80 h]; Electrician [80 h]; Low Current Technician [80 h]; Supply, installation , test and operation of cables, Copper, (4Cx25mmï¿½,Cu/XLPE/SWA/PVC +1x16mmï¿½ PVC/PVC) [938.44] | 44,012.74 |  | CO-R10.S04-SL-150 | 10 | 10 | CW | CL | LM | CB | SL | LAYING | CON | R10 | S04 | SL |
| CO-R10.S04-ES-SL-160 |  | Trench Backfilling and Compaction Works for Street Lighting Network-[Road 10]-[SW-4] | 7d | 2026-12-02 | 2026-12-09 | CO-R10.S04-ES-SL-150, CO-R10.S04-ES-IR-130 |  |  |  |  | -171d | 0d | Skilled Labor/Surveyor [8 h]; Foreman [8 h]; Excavator [80 h]; Water Tank [20 h]; Supply, installation , test and operation of cables, Copper, (4Cx25mmï¿½,Cu/XLPE/SWA/PVC +1x16mmï¿½ PVC/PVC) [72.19] | 3,385.62 |  | CO-R10.S04-SL-160 | 10 | 10 | CW | BF | LM | CB | SL | BACK | CON | R10 | S04 | SL |
|  | DPB | **Distrubution Panel Boards** |  | 2026-12-10 | 2027-01-24 |  |  |  |  |  |  |  |  |  |  |  |  |  |  |  |  |  |  |  |  |  |  |  |
| CO-R10.S04-ES-SL-170 |  | Foundation Excavation Works For Panel Boards of Street Lighting Network-[Road 10]-[SW-4] | 18d | 2026-12-10 | 2026-12-30 | CO-R10.S04-ES-EW-110, CO-R10.S04-ES-SL-160 |  |  |  |  | -171d | 0d | Labor/Helper [144 h]; Skilled Labor/Surveyor [72 h]; Excavator [144 h] |  |  | CO-R10.S04-SL-170 | 10 | 10 | DB | Ex | Each | DS | SL | EXC | CON | R10 | S04 | SL |
| CO-R10.S04-ES-SL-180 |  | Installation Works for Panel Board Concrete Foundations of Street Lighting Network-[Road 10]-[SW-4] | 12d | 2026-12-21 | 2027-01-03 | CO-R10.S04-ES-SL-170 SS+3d, CO-R10.S04-ES-SL-170 FF+3d |  |  |  |  | -162d | 0d | Skilled Labor/Surveyor [10 h]; Foreman [10 h]; Excavator [96 h]; Water Tank [24 h] |  |  | CO-R10.S04-SL-180 | 10 | 10 | DB | PBF | Each | DS | SL | INSTALL | CON | R10 | S04 | SL |
| CO-R10.S04-ES-SL-190 |  | Installation Works for Lighting Panel Boards of Street Lighting Network-[Road 10]-[SW-4] | 12d | 2027-01-04 | 2027-01-17 | CO-R10.S04-ES-SL-180, PRO-R10-SL-DL-160 FF+3d |  |  |  |  | -162d | 50d | Labor/Helper [96 h]; Electrician [96 h] |  |  | CO-R10.S04-SL-190 | 10 | 10 | DB | PB | Each | DS | SL | INST BO | CON | R10 | S04 | SL |
| CO-R10.S04-ES-SL-220 |  | A wall of concrete blocks to install the KWH meter of Street Lighting Network-[Road 10]-[SW-4] | 18d | 2027-01-04 | 2027-01-24 | CO-R10.S04-ES-SL-180 |  |  |  |  | -162d | 41d | Block Mason [144 h]; Road crossing ducts, 4 way (4 x 100mm PVC) [53.63]; Drawpit with medium duty steel cover, size 900x900x1200mm, Type 4 [5] | 19,427.37 |  | CO-R10.S04-SL-220 | 10 | 10 | DB |  | Each | DS | SL | wall | CON | R10 | S04 | SL |
|  | TE | **Telecom Network** |  | 2026-12-30 | 2027-01-31 |  |  |  |  |  |  |  |  |  |  |  |  |  |  |  |  |  |  |  |  |  |  |  |
|  | PD | **Ducts Works** |  | 2026-12-30 | 2027-01-31 |  |  |  |  |  |  |  |  |  |  |  |  |  |  |  |  |  |  |  |  |  |  |  |
| CO-R10.S04-ES-TE-100 |  | Trench Excavation and Bedding Works for Ducts of Telecom Network-[Road 10]-[SW-4] | 7d | 2026-12-30 | 2027-01-06 | CO-R10.S04-ES-IR-130 SS+3d, CO-R10.S04-ES-IR-130 FF+3d, CO-R10.S04-ES-SL-160 SS+5d, CO-R10.S04-ES-SL-160 FF+5d, CO-R10.S04-ES-EW-110, CO-R10.S03-ES-TE-100 |  |  |  |  | -176d | 0d | Skilled Labor/Surveyor [6 h]; Foreman [6 h]; Excavator [56 h]; 6-way ducts, 50mm dia. HDPE [45]; Road crossing ducts (6-way) [4] | 6,700 |  | CO-R10.S04-TE-100 | 10 | 10 | PD | Ex | LM | DC | TE | DUCTS | CON | R10 | S04 | TE |
| CO-R10.S04-ES-TE-110 |  | Pipes Laying Works for Ducts of Telecom Network-[Road 10]-[SW-4] | 7d | 2027-01-07 | 2027-01-14 | CO-R10.S04-ES-TE-100, PRO-R10-TE-DL-100 FF+3d |  |  |  |  | -162d | 0d | Labor/Helper [224 h]; Skilled Labor/Surveyor [12 h]; Foreman [12 h]; Plumber [112 h]; Excavator [56 h]; JCB [28 h]; Truck [56 h]; 6-way ducts, 50mm dia. HDPE [268]; Road crossing ducts (6-way) [23] | 39,764.5 |  | CO-R10.S04-TE-110 | 10 | 10 | PD | PL | LM | DC | TE | DUCTS | CON | R10 | S04 | TE |
| CO-R10.S04-ES-TE-120 |  | Pouring Plain Concrete Above Ducts of Telecom Network-[Road 10]-[SW-4] | 7d | 2027-01-16 | 2027-01-23 | CO-R10.S04-ES-TE-110 |  |  |  |  | -162d | 0d | Skilled Labor/Surveyor [6 h]; Foreman [6 h]; Cons. Carpenter [112 h]; Block Mason [56 h]; 6-way ducts, 50mm dia. HDPE [45]; Road crossing ducts (6-way) [4] | 6,700 |  | CO-R10.S04-TE-120 | 10 | 10 | PD | PC | LM | DC | TE | DUCTS | CON | R10 | S04 | TE |
| CO-R10.S04-ES-TE-130 |  | Trench Backfilling and Compaction Works for Ducts of Telecom Network-[Road 10]-[SW-4] | 7d | 2027-01-24 | 2027-01-31 | CO-R10.S04-ES-TE-120 |  |  |  |  | -162d | 0d | Skilled Labor/Surveyor [6 h]; Foreman [6 h]; Excavator [56 h]; 6-way ducts, 50mm dia. HDPE [89]; Road crossing ducts (6-way) [8] | 13,266 |  | CO-R10.S04-TE-130 | 10 | 10 | PD | BF | LM | DC | TE | DUCTS | CON | R10 | S04 | TE |
|  | MH | **Manholes Works** |  | 2027-01-07 | 2027-01-31 |  |  |  |  |  |  |  |  |  |  |  |  |  |  |  |  |  |  |  |  |  |  |  |
| CO-R10.S04-ES-TE-140 |  | Excavation Works for Manholes of Telecom Network-[Road 10]-[SW-4] | 7d | 2027-01-07 | 2027-01-14 | CO-R10.S03-ES-TE-140, CO-R10.S04-ES-TE-100, CO-R10.S03-WE-TE-140 |  |  |  |  | -162d | 0d | Skilled Labor/Surveyor [6 h]; Foreman [6 h]; Excavator [56 h]; Manhole Type 2 (2000x1000x1000) [0.7] | 2,199.61 |  | CO-R10.S04-TE-140 | 10 | 10 | MH | Ex | Each | MNH | TE | EXC | CON | R10 | S04 | TE |
| CO-R10.S04-ES-TE-150 |  | Installation Works for Manholes of Telecom Network-[Road 10]-[SW-4] | 7d | 2027-01-16 | 2027-01-23 | CO-R10.S04-ES-TE-140, PRO-R10-TE-DL-110 FF+3d |  |  |  |  | -162d | 0d | Skilled Labor/Surveyor [6 h]; Foreman [6 h]; Excavator [56 h]; Manhole Type 1 (2000x1000x1000) [1]; Manhole Type 2 (2000x1000x1000) [2.1] | 9,715 |  | CO-R10.S04-TE-150 | 10 | 10 | MH | HH | Each | MNH | TE | INSTALL-1 | CON | R10 | S04 | TE |
| CO-R10.S04-ES-TE-160 |  | Backfilling Works for Manholes of Telecom Network-[Road 10]-[SW-4] | 7d | 2027-01-24 | 2027-01-31 | CO-R10.S04-ES-TE-150 |  |  |  |  | -162d | 0d | Skilled Labor/Surveyor [6 h]; Foreman [6 h]; Excavator [56 h]; Manhole Type 2 (2000x1000x1000) [0.7] | 2,199.61 |  | CO-R10.S04-TE-160 | 10 | 10 | MH | BF | Each | MNH | TE | (New)-2 | CON | R10 | S04 | TE |
|  | RD | **Road Works** |  | 2026-08-25 | 2027-04-13 |  |  |  |  |  |  |  |  |  |  |  |  |  |  |  |  |  |  |  |  |  |  |  |
|  | RD | **Pre-Bituminous Construction** |  | 2026-09-20 | 2027-02-17 |  |  |  |  |  |  |  |  |  |  |  |  |  |  |  |  |  |  |  |  |  |  |  |
| CO-R10.S04-ES-RD-100 |  | Capping and Subgrade Layer for Road Works-[Road 10]-[SW-4] | 14d | 2026-09-20 A | 2026-12-13 | CO-R10.S04-ES-SD-130, CO-R10.S04-ES-SW-130, CO-R10.S04-ES-PW-130, CO-R10.S04-ES-SL-160 FF+3d, PRO-R10-RD-DL-100 FF+3d, CO-R10.S04-ES-SW-210, CO-R10.S04-ES-PW-220, CO-R10.S04-ES-SD-210 FF | 85% | 17d | 2027-01-18 | 2027-02-02 | -108d | 54d | Labor/Helper [896 h]; Skilled Labor/Surveyor [304 h]; Loader [144 h]; Grader [144 h]; Road Roller [144 h]; Water Tank [144 h]; 300mm capping layer underneath subgrade , CBR?15% [3390.73]; 300mm thick Subgrade, including subgrade preparation, CBR?25% [3390.73] | 263,120.65 | 223,652.55 | CO-R10.S04-RD-P-100 | 10 | 10 | AB | SG | Sq.m | BS | RD |  | CON | R10 | S04 | RD |
| CO-R10.S04-ES-RD-110 |  | Aggregate Base Course Layer for Road Works-[Road 10]-[SW-4] | 12d | 2027-02-04 | 2027-02-17 | CO-R10.S04-ES-RD-100 SS+3d, CO-R10.S04-ES-RD-100 FF+3d, CO-R10.S04-ES-SD-170 SS+3d, CO-R10.S04-ES-SD-170 FF+3d, PRO-R10-RD-DL-110 FF+3d, CO-R10.S04-ES-SD-160, CO-R10.S04-ES-PW-160 FS+3d, CO-R10.S04-ES-SL-160 SS+6d, CO-R10.S04-ES-TE-130 FS+3d, CO-R10.S04-ES-TE-160 FS+3d |  |  |  |  | -83d | 80d | Labor/Helper [384 h]; Skilled Labor/Surveyor [192 h]; Foreman [192 h]; Loader [144 h]; Grader [144 h]; Road Roller [144 h]; Aggregate base course 200mm thick after compaction in two layers(Grading 1); CBR?80%; including watering, compaction and testing [2260.72] | 183,276.57 |  | CO-R10.S04-RD-P-110 | 10 | 10 | AB | BA | Sq.m | BS | RD |  | CON | R10 | S04 | RD |
|  | LS | **Pavement Works** |  | 2026-08-25 | 2027-04-13 |  |  |  |  |  |  |  |  |  |  |  |  |  |  |  |  |  |  |  |  |  |  |  |
| CO-R10.S04-ES-RD-120 |  | Fixing of Curbstone for Sidewalks Pavement-[Road 10]-[SW-4] | 12d | 2026-08-25 A | 2026-08-31 A | PRO-R10-RD-DL-130 FF+3d | 100% |  | 2026-08-02 | 2026-08-15 |  |  | Labor/Helper [768 h]; Block Mason [2304 h]; Precast Concrete Kerb, Type K1 [1250.99]; Precast Concrete Kerb, Type L1 [2482.11] | 150,070.62 | 150,070.62 | CO-R10.S04-RD-P-120 | 10 | 10 | LS | CR | LM | LAND | RD |  | CON | R10 | S04 | RD |
| CO-R10.S04-ES-RD-130 |  | Fixing of Interlock Tiles for Sidewalks Pavement-[Road 10]-[SW-4] | 10d | 2027-04-03 | 2027-04-13 | PRO-R10-RD-DL-120 FF+3d, CO-R10.S04-ES-RD-120 SS, CO-R10.S04-ES-RD-120 FF+3d, CO-R10-PW-TF-100 FF, CO-R10-PW-TF-110 FF, CO-R10-PW-TF-120 FF, CO-R10-SW-TF-100 FF, CO-R10-SW-TF-110 FF, CO-R10-SW-TF-130 FF, CO-R10-SD-TF-100, CO-R10-SD-TF-120 SS, CO-R10-SL-TF-140 FF, CO-R10-SL-TF-150 FF, CO-R10-SL-ES-140 FF, CO-R10-SL-ES-150 FF, CO-R10-IR-TF-120 FF, CO-R10-MV-TF-140 FF, CO-R10-SL-TF-380 FF |  |  |  |  | -162d | 2d | Labor/Helper [720 h]; Block Mason [2160 h]; Interlocking block pavers for sidewalk/footpath 60mm thick on and including 30mm Sand Bedding, 200mm Aggregate subbase, all in accordance with authority standards and complete as per specifications [2233.91]; Extraover for Pedestrian ramps [5.5] | 107,184.05 |  | CO-R10.S04-RD-P-130 | 10 | 10 | LS | IL | Sq.m | LAND | RD |  | CON | R10 | S04 | RD |

| ID | WBS | Activity | Duration | Start | Finish | Predecessors | Complete | Planned start | Planned finish | Resources | Cost | Actual cost | Activity ID N | Seq | New Seq | 02- Network-WBS | 03- Activity | 04-UOM | 05-Discipline | 01- Network | 08 Stage | 09 Roads | 10 side Walk | Discipline | 07-Weightage System |
| --- | --- | --- | --- | --- | --- | --- | --- | --- | --- | --- | --- | --- | --- | --- | --- | --- | --- | --- | --- | --- | --- | --- | --- | --- | --- |
|  | SW_41 | **SW_4-West** |  | 2025-04-08 | 2027-04-15 |  |  |  |  |  |  |  |  |  |  |  |  |  |  |  |  |  |  |  |  |
|  | EW | **Earthworks** |  | 2025-04-08 | 2025-04-12 |  |  |  |  |  |  |  |  |  |  |  |  |  |  |  |  |  |  |  |  |
|  | EW | **Earthworks** |  | 2025-04-08 | 2025-04-12 |  |  |  |  |  |  |  |  |  |  |  |  |  |  |  |  |  |  |  |  |
| CO-R10.S04-WE-EW-100 |  | Roadway Excavation Works Upto Design Level for Earthworks-[Road 10]-[SW-4] | 12d | 2025-04-08 A | 2025-04-12 A | ENG-MS-RD-A-10, ENG-SH-RD-A-100, CO-R10.S03-WE-EW-100 | 100% | 2025-09-15 | 2025-09-29 | Labor/Helper [1152 h]; Skilled Labor/Surveyor [144 h]; Foreman [144 h]; Water Tank [192 h]; Dozer [192 h]; Roadway Excavation for cuttings; on any type of material for all depths including trimming and Preparation of excavated surfaces and disposal. [15964.1] | 100,573.89 | 100,573.89 | CO-R10.S04-EW-100 | 10 | 10 | EW | Ex | Cub.m | EW | EW | CON | R10 | S04 | EW |  |
| CO-R10.S04-WE-EW-110 |  | Embankments Works Upto Design Level for Earthworks-[Road 10]-[SW-4] | 12d | 2025-04-08 A | 2025-04-12 A | CO-R10.S04-WE-EW-100, ENG-MS-RD-A-10, ENG-SH-RD-A-100 | 100% | 2025-09-30 | 2025-10-13 | Labor/Helper [1248 h]; Skilled Labor/Surveyor [156 h]; Foreman [156 h]; Water Tank [480 h]; Dozer [480 h]; Embankments to the ROW, with suitable material other than top soil or rock according to specifications [26873.7] | 217,676.81 | 217,676.81 | CO-R10.S04-EW-110 | 10 | 10 | EW | BF | Cub.m | EW | EW | CON | R10 | S04 | EW |  |
|  | SW | **Sewage Network** |  | 2025-08-16 | 2026-07-04 |  |  |  |  |  |  |  |  |  |  |  |  |  |  |  |  |  |  |  |  |
|  | ML | **Main Line Sections** |  | 2025-08-16 | 2025-08-25 |  |  |  |  |  |  |  |  |  |  |  |  |  |  |  |  |  |  |  |  |
| CO-R10.S04-WE-SW-100 |  | Trench Excavation and Bedding Works for Main Lines of Sewage Network-[Road 10]-[SW-4] | 12d | 2025-08-16 A | 2025-08-18 A | CO-R10.S04-WE-EW-110, ENG-MS-SW-ML-A-110, ENG-SH-SW-ML-A-110, CO-R11.S06-SW-100 | 100% | 2025-10-14 | 2025-10-27 | Labor/Helper [96 h]; Foreman [96 h]; Excavator [96 h]; Depth : 1.5 - 2.5m [15]; Depth : 2.5 - 3.5m [8.89]; Depth : 3.5 - 4.5m [8.89]; Depth : 5.5 - 6.5m [50]; Depth : 6.5 -7.5m [40]; Depth : 6.5 -7.5m [15]; Depth :more than 7.5m [10] | 115,643.81 | 115,643.81 | CO-R10.S04-SW-100 | 10 | 10 | ML | Ex | LM | ML | SW | CON | R10 | S04 | SW | EX |
| CO-R10.S04-WE-SW-120 |  | Pipes Laying Works for Main Lines of Sewage Network-[Road 10]-[SW-4] | 12d | 2025-08-19 A | 2025-08-21 A | PRO-R10-SW-DL-100 FF+3d, CO-R10.S04-WE-SW-100 | 100% | 2025-10-28 | 2025-11-10 | Labor/Helper [768 h]; Skilled Labor/Surveyor [39 h]; Foreman [39 h]; Plumber [384 h]; Excavator [96 h]; Depth : 1.5 - 2.5m [45]; Depth : 2.5 - 3.5m [26.66]; Depth : 3.5 - 4.5m [26.66]; Depth : 5.5 - 6.5m [150]; Depth : 6.5 -7.5m [120]; Depth : 6.5 -7.5m [45]; Depth :more than 7.5m [30] | 346,931.42 | 346,931.42 | CO-R10.S04-SW-120 | 10 | 10 | ML | PL | LM | ML | SW | CON | R10 | S04 | SW | PIPE |
| CO-R10.S04-WE-SW-130 |  | Trench Backfilling and Compaction Works for Main Lines of Sewage Network-[Road 10]-[SW-4] | 12d | 2025-08-23 A | 2025-08-25 A | CO-R10.S04-WE-SW-120 | 100% | 2025-11-11 | 2025-11-24 | Skilled Labor/Surveyor [10 h]; Foreman [10 h]; Excavator [96 h]; Depth : 1.5 - 2.5m [7.5]; Depth : 2.5 - 3.5m [4.44]; Depth : 3.5 - 4.5m [4.44]; Depth : 5.5 - 6.5m [25]; Depth : 6.5 -7.5m [20]; Depth : 6.5 -7.5m [7.5]; Depth :more than 7.5m [5] | 57,821.9 | 57,821.9 | CO-R10.S04-SW-130 | 10 | 10 | ML | BF | LM | ML | SW | CON | R10 | S04 | SW | BACK |
|  | 1 | **Manholes** |  | 2026-06-27 | 2026-07-04 |  |  |  |  |  |  |  |  |  |  |  |  |  |  |  |  |  |  |  |  |
| CO-R10.S04-WE-SW-160 |  | Excavation Works for Main Line Manholes of Sewage Network-[Road 10]-[SW-4] | 1d | 2026-06-27 A | 2026-07-04 A | CO-R10.S04-WE-SW-120 SS | 100% | 2025-10-28 | 2025-10-28 | Labor/Helper [16 h]; Skilled Labor/Surveyor [8 h]; Excavator [16 h]; Depth: 1.5 - 2.5m [0.3]; Depth: 2.5 - 3.5m [0.75]; Depth: 3.5 - 4.5m [0.07]; Depth: 4.5 - 5.5m [0.15]; Depth: 5.5 - 6.5m [0.23]; Depth:6.5 - 7.5m [0.3]; Depth: more than 7.5m [0.15] | 30,793 | 30,793 | CO-R10.S04-SW-160 | 10 | 10 |  |  |  |  | SW | CON | R10 | S04 | SW | EX |
| CO-R10.S04-WE-SW-170 |  | Installation RC Footing Works for Main Line Manholes of Sewage Network-[Road 10]-[SW-4] | 2d | 2026-06-27 A | 2026-07-04 A | CO-R10.S04-WE-SW-160, PRO-R10-SW-DL-110 FF+3d | 100% | 2025-10-29 | 2025-10-30 | Cons. Carpenter [64 h]; Steel Fixer [64 h]; Depth: 1.5 - 2.5m [0.2]; Depth: 2.5 - 3.5m [0.5]; Depth: 3.5 - 4.5m [0.05]; Depth: 4.5 - 5.5m [0.1]; Depth: 5.5 - 6.5m [0.15]; Depth:6.5 - 7.5m [0.2]; Depth: more than 7.5m [0.1] | 20,528.67 | 20,528.67 | CO-R10.S04-SW-170 | 10 | 10 |  |  |  |  | SW | CON | R10 | S04 | SW | RC F |
| CO-R10.S04-WE-SW-180 |  | Install Grp Liner Wall Works for Main Line Manholes of Sewage Network-[Road 10]-[SW-4] | 4d | 2026-06-27 A | 2026-07-04 A | CO-R10.S04-WE-SW-170 | 100% | 2025-11-01 | 2025-11-04 | Labor/Helper [64 h]; Plumber [64 h]; Depth: 1.5 - 2.5m [0.8]; Depth: 2.5 - 3.5m [2]; Depth: 3.5 - 4.5m [0.2]; Depth: 4.5 - 5.5m [0.4]; Depth: 5.5 - 6.5m [0.6]; Depth:6.5 - 7.5m [0.8]; Depth: more than 7.5m [0.4] | 82,114.66 | 82,114.66 | CO-R10.S04-SW-180 | 10 | 10 |  |  |  |  | SW | CON | R10 | S04 | SW | LP |
| CO-R10.S04-WE-SW-190 |  | Pouring Grp Liner Wall Works for Main Line Manholes of Sewage Network-[Road 10]-[SW-4] | 1d | 2026-06-27 A | 2026-07-04 A | CO-R10.S04-WE-SW-180 | 100% | 2025-11-05 | 2025-11-05 | Cons. Carpenter [32 h]; Steel Fixer [32 h]; Depth: 1.5 - 2.5m [0.1]; Depth: 2.5 - 3.5m [0.25]; Depth: 3.5 - 4.5m [0.03]; Depth: 4.5 - 5.5m [0.05]; Depth: 5.5 - 6.5m [0.07]; Depth:6.5 - 7.5m [0.1]; Depth: more than 7.5m [0.05] | 10,264.33 | 10,264.33 | CO-R10.S04-SW-190 | 10 | 10 |  |  |  |  | SW | CON | R10 | S04 | SW | (New) |
| CO-R10.S04-WE-SW-200 |  | Backfilling Works for Main Line Manholes of Sewage Network-[Road 10]-[SW-4] | 4d | 2026-06-27 A | 2026-07-04 A | CO-R10.S04-WE-SW-190 | 100% | 2025-11-06 | 2025-11-10 | Labor/Helper [64 h]; Skilled Labor/Surveyor [32 h]; Excavator [64 h]; Depth: 1.5 - 2.5m [0.3]; Depth: 2.5 - 3.5m [0.75]; Depth: 3.5 - 4.5m [0.07]; Depth: 4.5 - 5.5m [0.15]; Depth: 5.5 - 6.5m [0.23]; Depth:6.5 - 7.5m [0.3]; Depth: more than 7.5m [0.15] | 30,793 | 30,793 | CO-R10.S04-SW-200 | 10 | 10 |  |  |  |  | SW | CON | R10 | S04 | SW | BACK |
| CO-R10.S04-WE-SW-210 |  | Testing Works for Main Line Manholes of Sewage Network-[Road 10]-[SW-4] | 1d | 2026-06-27 A | 2026-07-04 A | CO-R10.S04-WE-SW-200 | 100% | 2026-10-13 | 2026-10-13 | Labor/Helper [16 h]; Plumber [16 h]; Depth: 1.5 - 2.5m [0.1]; Depth: 2.5 - 3.5m [0.25]; Depth: 3.5 - 4.5m [0.03]; Depth: 4.5 - 5.5m [0.05]; Depth: 5.5 - 6.5m [0.07]; Depth:6.5 - 7.5m [0.1]; Depth: more than 7.5m [0.05] | 10,264.33 | 10,264.33 | CO-R10.S04-SW-210 | 10 | 10 |  |  |  |  | SW | CON | R10 | S04 | SW | T&COV |
|  | SD | **Storm Drainage Network** |  | 2025-08-23 | 2026-10-19 |  |  |  |  |  |  |  |  |  |  |  |  |  |  |  |  |  |  |  |  |
|  | ML | **Main Line Sections** |  | 2025-08-23 | 2025-09-02 |  |  |  |  |  |  |  |  |  |  |  |  |  |  |  |  |  |  |  |  |
| CO-R10.S04-WE-SD-100 |  | Trench Excavation and Bedding Works for Main Lines of Storm Drainage Network-[Road 10]-[SW-4] | 10d | 2025-08-23 A | 2025-08-25 A | CO-R10.S04-WE-EW-110, CO-R10.S04-WE-EW-100, CO-R10.S04-WE-SW-130 SS+3d, CO-R10.S04-WE-SW-130 FF+3d, CO-R10.S03-WE-SD-100 | 100% | 2025-11-30 | 2025-12-10 | Skilled Labor/Surveyor [12 h]; Foreman [12 h]; Excavator [120 h]; Pipe with diameter 400mm ; depth: 0.0m - 1.5m [43.8]; Pipe with diameter 400mm ; depth: 1.51m - 2.5m [55.9]; Pipe with diameter 500mm ; depth: 1.51m - 2.5m [24.2]; Pipe with diameter 600mm ; depth: 1.51m - 2.5m [19.65]; Pipe with diameter 700mm ; depth: 0.0m - 1.5m [5]; Pipe with diameter 700mm ; depth: 1.51m - 2.5m [36.06]; Pipe with diameter 800mm ; depth: 1.51m - 2.5m [45.02]; Pipe with diameter 900mm ; depth: 1.51m - 2.5m [23.18]; Pipe with diameter 1000mm ; depth: 0.0m - 1.5m [5]; Pipe with diameter 1100mm ; depth: 0.0m - 1.5m [5] | 109,227.08 | 109,227.08 | CO-R10.S04-SD-100 | 10 | 10 | ML | Ex | LM | ML | SD | CON | R10 | S04 | SD | EX |
| CO-R10.S04-WE-SD-120 |  | Pipes Laying Works for Main Lines of Storm Drainage Network-[Road 10]-[SW-4] | 10d | 2025-08-26 A | 2025-08-28 A | PRO-R10-SD-DL-120 FF+3d, CO-R10.S04-WE-SD-100 | 100% | 2025-12-11 | 2025-12-22 | Labor/Helper [240 h]; Skilled Labor/Surveyor [12 h]; Foreman [12 h]; Plumber [120 h]; Excavator [120 h]; Pipe with diameter 400mm ; depth: 0.0m - 1.5m [131.39]; Pipe with diameter 400mm ; depth: 1.51m - 2.5m [167.69]; Pipe with diameter 500mm ; depth: 1.51m - 2.5m [72.6]; Pipe with diameter 600mm ; depth: 1.51m - 2.5m [58.94]; Pipe with diameter 700mm ; depth: 0.0m - 1.5m [15]; Pipe with diameter 700mm ; depth: 1.51m - 2.5m [108.18]; Pipe with diameter 800mm ; depth: 1.51m - 2.5m [135.05]; Pipe with diameter 900mm ; depth: 1.51m - 2.5m [69.54]; Pipe with diameter 1000mm ; depth: 0.0m - 1.5m [15]; Pipe with diameter 1100mm ; depth: 0.0m - 1.5m [15] | 327,681.23 | 327,681.23 | CO-R10.S04-SD-120 | 10 | 10 | ML | PL | LM | ML | SD | CON | R10 | S04 | SD | PIPE |
| CO-R10.S04-WE-SD-130 |  | Trench Backfilling and Compaction Works for Main Lines of Storm Drainage Network-[Road 10]-[SW-4] | 10d | 2025-08-30 A | 2025-09-02 A | CO-R10.S04-WE-SD-120 SS+3d, CO-R10.S04-WE-SD-120 FF+3d, CO-R10.S04-WE-SD-120, CO-R10.S04-WE-SD-220 FF | 100% | 2025-12-23 | 2026-01-03 | Skilled Labor/Surveyor [12 h]; Foreman [12 h]; Excavator [120 h]; Pipe with diameter 400mm ; depth: 0.0m - 1.5m [21.9]; Pipe with diameter 400mm ; depth: 1.51m - 2.5m [27.95]; Pipe with diameter 500mm ; depth: 1.51m - 2.5m [12.1]; Pipe with diameter 600mm ; depth: 1.51m - 2.5m [9.82]; Pipe with diameter 700mm ; depth: 0.0m - 1.5m [2.5]; Pipe with diameter 700mm ; depth: 1.51m - 2.5m [18.03]; Pipe with diameter 800mm ; depth: 1.51m - 2.5m [22.51]; Pipe with diameter 900mm ; depth: 1.51m - 2.5m [11.59]; Pipe with diameter 1000mm ; depth: 0.0m - 1.5m [2.5]; Pipe with diameter 1100mm ; depth: 0.0m - 1.5m [2.5] | 54,613.54 | 54,613.54 | CO-R10.S04-SD-130 | 10 | 10 | ML | BF | LM | ML | SD | CON | R10 | S04 | SD | BACK |
|  | MH | **Manholes** |  | 2025-11-09 | 2026-10-14 |  |  |  |  |  |  |  |  |  |  |  |  |  |  |  |  |  |  |  |  |
| CO-R10.S04-WE-SD-180 |  | Trench Excavation and Bedding Works for Manholes of Storm Drainage Network-[Road 10]-[SW-4] | 1d | 2025-11-09 A | 2025-11-15 A | CO-R10.S04-WE-SD-120 SS, PRO-SD-1DL-100 | 100% | 2025-12-11 | 2025-12-11 | Labor/Helper [24 h]; Skilled Labor/Surveyor [12 h]; Excavator [24 h]; MH ; depth: 0.0m - 1.5m [0.23]; MH ; depth: 1.51m - 2.5m [0.6]; MH ; depth: 0.0m - 1.5m [0.15]; MH ; depth: 1.51m - 2.5m with back drop less than 1.0 m [0.15]; MH ; depth: 0.0m - 1.5m [0.07]; MH ; depth: 1.51m - 2.5m [0.23]; MH ; depth: 2.51 - 3.5m [0.3]; MH ; depth: 3.51 - 4.5m [0.15] | 33,056.91 | 33,056.91 | CO-R10.S04-SD-180 | 10 | 10 |  |  |  |  | SD | CON | R10 | S04 | SD | EX |
| CO-R10.S04-WE-SD-190 |  | Install RC Footing Works for Manholes of Storm Drainage Network-[Road 10]-[SW-4] | 1d | 2025-11-10 A | 2025-11-17 A | CO-R10.S04-WE-SD-180 | 100% | 2025-12-13 | 2025-12-13 | Cons. Carpenter [48 h]; Steel Fixer [48 h]; MH ; depth: 0.0m - 1.5m [0.07]; MH ; depth: 1.51m - 2.5m [0.2]; MH ; depth: 0.0m - 1.5m [0.05]; MH ; depth: 1.51m - 2.5m with back drop less than 1.0 m [0.05]; MH ; depth: 0.0m - 1.5m [0.03]; MH ; depth: 1.51m - 2.5m [0.07]; MH ; depth: 2.51 - 3.5m [0.1]; MH ; depth: 3.51 - 4.5m [0.05] | 11,018.97 | 11,018.97 | CO-R10.S04-SD-190 | 10 | 10 |  |  |  |  | SD | CON | R10 | S04 | SD | RC F |
| CO-R10.S04-WE-SD-200 |  | Install RC Wall Rings & Slab Works for Manholes of Storm Drainage Network-[Road 10]-[SW-4] | 4d | 2025-11-11 A | 2025-11-18 A | CO-R10.S04-WE-SD-190 | 100% | 2025-12-14 | 2025-12-17 | Cons. Carpenter [192 h]; Steel Fixer [192 h]; MH ; depth: 0.0m - 1.5m [0.68]; MH ; depth: 1.51m - 2.5m [1.8]; MH ; depth: 0.0m - 1.5m [0.45]; MH ; depth: 1.51m - 2.5m with back drop less than 1.0 m [0.45]; MH ; depth: 0.0m - 1.5m [0.23]; MH ; depth: 1.51m - 2.5m [0.68]; MH ; depth: 2.51 - 3.5m [0.9]; MH ; depth: 3.51 - 4.5m [0.45] | 99,170.74 | 99,170.74 | CO-R10.S04-SD-200 | 10 | 10 |  |  |  |  | SD | CON | R10 | S04 | SD | RC W |
| CO-R10.S04-WE-SD-210 |  | Testing Works for Manholes of Storm Drainage Network-[Road 10]-[SW-4] | 1d | 2026-10-13 A | 2026-10-13 A | CO-R10.S04-WE-SD-200 | 100% |  |  | Labor/Helper [24 h]; Plumber [24 h]; MH ; depth: 0.0m - 1.5m [0.15]; MH ; depth: 1.51m - 2.5m [0.4]; MH ; depth: 0.0m - 1.5m [0.1]; MH ; depth: 1.51m - 2.5m with back drop less than 1.0 m [0.1]; MH ; depth: 0.0m - 1.5m [0.05]; MH ; depth: 1.51m - 2.5m [0.15]; MH ; depth: 2.51 - 3.5m [0.2]; MH ; depth: 3.51 - 4.5m [0.1] | 22,037.94 | 22,037.94 | CO-R10.S04-SD-210 | 10 | 10 |  |  |  |  | SD | CON | R10 | S04 | SD | T&COV |
| CO-R10.S04-WE-SD-220 |  | Backfilling Works for Manholes of Storm Drainage Network-[Road 10]-[SW-4] | 7d | 2026-10-14 A | 2026-10-14 A | MS-CS-PS | 100% | 2025-12-20 | 2025-12-27 | Labor/Helper [112 h]; Skilled Labor/Surveyor [56 h]; Excavator [112 h]; MH ; depth: 0.0m - 1.5m [0.3]; MH ; depth: 1.51m - 2.5m [0.8]; MH ; depth: 0.0m - 1.5m [0.2]; MH ; depth: 1.51m - 2.5m with back drop less than 1.0 m [0.2]; MH ; depth: 0.0m - 1.5m [0.1]; MH ; depth: 1.51m - 2.5m [0.3]; MH ; depth: 2.51 - 3.5m [0.4]; MH ; depth: 3.51 - 4.5m [0.2] | 44,075.88 | 44,075.88 | CO-R10.S04-SD-220 | 10 | 10 |  |  |  |  | SD | CON | R10 | S04 | SD | BACK |

| ID | WBS | Activity | Duration | Start | Finish | Predecessors | Complete | Remaining | Planned start | Planned finish | Total float | Free float | Resources | Cost | Actual cost | Activity ID N | Seq | New Seq | 02- Network-WBS | 03- Activity | 04-UOM | 05-Discipline | 01- Network | 07-Weightage System | 08 Stage | 09 Roads | 10 side Walk | Discipline |
| --- | --- | --- | --- | --- | --- | --- | --- | --- | --- | --- | --- | --- | --- | --- | --- | --- | --- | --- | --- | --- | --- | --- | --- | --- | --- | --- | --- | --- |
|  | CB | **Catch Basin Sections** |  | 2026-06-17 | 2026-10-19 |  |  |  |  |  |  |  |  |  |  |  |  |  |  |  |  |  |  |  |  |  |  |  |
| CO-R10.S04-WE-SD-140 |  | Trench Excavation and Bedding Works for Catch Basins of Storm Drainage Network-[Road 10]-[SW-4] | 6d | 2026-06-17 A | 2026-10-14 A | CO-R10.S04-WE-EW-110, CO-R10.S04-WE-SD-220, CO-R10.S03-ES-SD-140 | 100% |  | 2025-12-28 | 2026-01-03 |  |  | Skilled Labor/Surveyor [5 h]; Foreman [5 h]; Excavator [48 h]; Pipe with diameter 300mm ; depth: 0 - 1.5m [84.55]; Pipe with diameter 400mm ; depth: 0 - 1.5m [5.16] | 20,848.43 | 20,848.43 | CO-R10.S04-SD-140 | 10 | 10 | CB | Ex | Each | CB | SD | EX | CON | R10 | S04 | SD |
| CO-R10.S04-WE-SD-150 |  | Installation and Pipes Laying Connection Works for Catch Basins of Storm Drainage Network-[Road 10]-[SW-4] | 7d | 2026-06-20 A | 2026-10-15 A | CO-R10.S04-WE-SD-140 SS, PRO-R10-SD-DL-130 FF+3d | 100% |  | 2026-01-04 | 2026-01-11 |  |  | Labor/Helper [224 h]; Skilled Labor/Surveyor [12 h]; Foreman [12 h]; Excavator [112 h]; Pipe with diameter 300mm ; depth: 0 - 1.5m [253.63]; Pipe with diameter 400mm ; depth: 0 - 1.5m [15.47] | 62,544.75 | 62,544.75 | CO-R10.S04-SD-150 | 10 | 10 | CB | CB | Each | CB | SD | INSTALL | CON | R10 | S04 | SD |
| CO-R10.S04-WE-SD-160 |  | Testing Works for Catch Basins of Storm Drainage Network-[Road 10]-[SW-4] | 10d | 2026-06-23 A | 2026-10-17 A | CO-R10.S04-WE-SD-150 SS, CO-R10.S04-WE-SD-120, PRO-R10-SD-DL-110 FF+3d | 100% |  | 2026-01-12 | 2026-01-22 |  |  | Labor/Helper [160 h]; Skilled Labor/Surveyor [8 h]; Foreman [8 h]; Plumber [80 h]; Excavator [80 h]; Pipe with diameter 300mm ; depth: 0 - 1.5m [56.36]; Pipe with diameter 400mm ; depth: 0 - 1.5m [3.44] | 13,898.77 | 13,898.77 | CO-R10.S04-SD-160 | 10 | 10 | CB | PL | Each | CB | SD | TEST | CON | R10 | S04 | SD |
| CO-R10.S04-WE-SD-170 |  | Trench Backfilling and Compaction Works for Catch Basins of Storm Drainage Network-[Road 10]-[SW-4] | 7d | 2026-10-13 A | 2026-10-19 A | CO-R10.S04-WE-SD-160 SS+3d, CO-R10.S04-WE-SD-160 FF+3d | 100% |  | 2026-10-13 | 2026-10-20 |  |  | Skilled Labor/Surveyor [6 h]; Foreman [6 h]; Excavator [56 h]; Pipe with diameter 300mm ; depth: 0 - 1.5m [112.73]; Pipe with diameter 400mm ; depth: 0 - 1.5m [6.87] | 27,797.55 | 27,797.55 | CO-R10.S04-SD-170 | 10 | 10 | CB | BF | Each | CB | SD | BACK | CON | R10 | S04 | SD |
|  | PW | **Potable Water Network** |  | 2025-10-01 | 2026-11-21 |  |  |  |  |  |  |  |  |  |  |  |  |  |  |  |  |  |  |  |  |  |  |  |
|  | ML | **Main Line Sections** |  | 2025-10-01 | 2026-06-24 |  |  |  |  |  |  |  |  |  |  |  |  |  |  |  |  |  |  |  |  |  |  |  |
| CO-R10.S04-WE-PW-100 |  | Trench Excavation and Bedding Works for Main Lines of Potable Water Network-[Road 10]-[SW-4] | 10d | 2025-10-01 A | 2025-10-07 A | CO-R10.S04-WE-EW-110, CO-R10.S04-WE-EW-100, CO-R10.S04-WE-SD-130 | 100% |  | 2026-01-04 | 2026-01-14 |  |  | Skilled Labor/Surveyor [8 h]; Foreman [8 h]; Excavator [80 h]; Pipe with diameter 560mm; in depth 1.5m - 3.0m [120]; Pipe with diameter 630mm; in depth 1.5m - 3.0m [209] | 262,851.72 | 262,851.72 | CO-R10.S04-PW-100 | 10 | 10 | ML | Ex | LM | ML | PW | EX | CON | R10 | S04 | PW |
| CO-R10.S04-WE-PW-110 |  | Pipes Laying and accessories for Main Lines of Potable Water Network-[Road 10]-[SW-4] | 10d | 2025-10-02 A | 2026-06-18 A | CO-R10.S04-WE-PW-100, PRO-R10-PW-DL-100 FF+3d | 100% |  | 2026-01-15 | 2026-01-26 |  |  | Labor/Helper [160 h]; Skilled Labor/Surveyor [8 h]; Foreman [8 h]; Plumber [80 h]; Excavator [80 h]; Pipe with diameter 560mm; in depth 1.5m - 3.0m [300]; Pipe with diameter 630mm; in depth 1.5m - 3.0m [522.5] | 657,129.3 | 657,129.3 | CO-R10.S04-PW-110 | 10 | 10 | ML | PL | LM | ML | PW | PIPE | CON | R10 | S04 | PW |
| CO-R10.S04-WE-PW-130 |  | Trench Backfilling and Compaction Works for Main Lines of Potable Water Network-[Road 10]-[SW-4] | 10d | 2026-06-11 A | 2026-06-24 A | CO-R10.S04-WE-PW-110 | 100% |  | 2026-02-01 | 2026-02-11 |  |  | Skilled Labor/Surveyor [8 h]; Foreman [8 h]; Eq. Operator [8 h]; Loader [80 h]; Compactor [80 h]; Water Tank [20 h]; Pipe with diameter 560mm; in depth 1.5m - 3.0m [120]; Pipe with diameter 630mm; in depth 1.5m - 3.0m [209] | 262,851.72 | 262,851.72 | CO-R10.S04-PW-130 | 10 | 10 | ML | BF | LM | ML | PW | BACK | CON | R10 | S04 | PW |
|  | VC | **Valve Chamber** |  | 2026-06-21 | 2026-11-12 |  |  |  |  |  |  |  |  |  |  |  |  |  |  |  |  |  |  |  |  |  |  |  |
| CO-R10.S04-WE-PW-210 |  | Insulation Works for Main Line Valves and Valve Chambers of Potable Water Network-[Road 10]-[SW-4] | 1d | 2026-06-21 A | 2026-11-09 | CO-R10.S04-WE-PW-200 FF | 60% | 1d | 2026-01-29 | 2026-01-29 | -94d | 0d | Labor/Helper [8 h]; Plumber [8 h]; Butterfly valves with dia (560)mm on pipes with dia (560)mm. [1]; Butterfly valves with dia (630)mm on pipes with dia (630)mm. [2.5]; Wash out valve with dia (150)mm on pipes with dia (560) mm [0.5]; Wash out valve with dia (150)mm on pipes with dia (630) mm [1.5]; Air valves with dia (65mm) mm on pipes with dia(560)mm. [1]; Air valves with dia (65mm) mm on pipes with dia(630)mm. [2] | 319,298.55 | 191,579.13 | CO-R10.S04-PW-210 | 10 | 10 | ML | VI | Each | ML | PW | INSUL | CON | R10 | S04 | PW |
| CO-R10.S04-WE-PW-170 |  | Excavation Works for Main Line Valves and Valve Chambers of Potable Water Network-[Road 10]-[SW-4] | 1d | 2026-10-27 | 2026-10-27 | CO-R10.S04-WE-PW-100 |  |  |  |  | -101d | 0d | Labor/Helper [8 h]; Skilled Labor/Surveyor [4 h]; Excavator [8 h]; Wash out chamber; on 560 mm dia pipeline Depth 1.5 - 3m [0.05]; Wash out chamber; on 630 mm dia pipeline Depth 1.5 - 3m [0.1]; Air valve chamber on 560 mm dia pipeline Depth 1.5 - 3 m [0.1]; Air valve chamber on 630 mm dia pipeline Depth 1.5 - 3 m [0.2] | 8,679.15 |  | CO-R10.S04-PW-170 | 10 | 10 | ML | VI | Each | ML | PW | EX | CON | R10 | S04 | PW |
| CO-R10.S04-WE-PW-180 |  | RC Footing Works for Main Line Valves and Valve Chambers of Potable Water Network-[Road 10]-[SW-4] | 3d | 2026-10-28 | 2026-10-31 | CO-R10.S04-WE-PW-170 |  |  |  |  | -94d | 0d | Cons. Carpenter [48 h]; Steel Fixer [48 h]; Wash out chamber; on 560 mm dia pipeline Depth 1.5 - 3m [0.07]; Wash out chamber; on 630 mm dia pipeline Depth 1.5 - 3m [0.15]; Air valve chamber on 560 mm dia pipeline Depth 1.5 - 3 m [0.15]; Air valve chamber on 630 mm dia pipeline Depth 1.5 - 3 m [0.3] | 13,018.73 |  | CO-R10.S04-PW-180 | 10 | 10 | ML | VI | Each | ML | PW | RC F | CON | R10 | S04 | PW |
| CO-R10.S04-WE-PW-190 |  | RC Wall Works for Main Line Valves and Valve Chambers of Potable Water Network-[Road 10]-[SW-4] | 6d | 2026-11-01 | 2026-11-07 | CO-R10.S04-WE-PW-180 |  |  |  |  | -94d | 0d | Cons. Carpenter [96 h]; Steel Fixer [96 h]; Wash out chamber; on 560 mm dia pipeline Depth 1.5 - 3m [0.17]; Wash out chamber; on 630 mm dia pipeline Depth 1.5 - 3m [0.35]; Air valve chamber on 560 mm dia pipeline Depth 1.5 - 3 m [0.35]; Air valve chamber on 630 mm dia pipeline Depth 1.5 - 3 m [0.7] | 30,377.03 |  | CO-R10.S04-PW-190 | 10 | 10 | ML | VI | Each | ML | PW | RC W | CON | R10 | S04 | PW |
| CO-R10.S04-WE-PW-200 |  | RC Slab Works for Main Line Valves and Valve Chambers of Potable Water Network-[Road 10]-[SW-4] | 2d | 2026-11-08 | 2026-11-09 | CO-R10.S04-WE-PW-190 |  |  |  |  | -94d | 0d | Cons. Carpenter [32 h]; Steel Fixer [32 h]; Wash out chamber; on 560 mm dia pipeline Depth 1.5 - 3m [0.1]; Wash out chamber; on 630 mm dia pipeline Depth 1.5 - 3m [0.2]; Air valve chamber on 560 mm dia pipeline Depth 1.5 - 3 m [0.2]; Air valve chamber on 630 mm dia pipeline Depth 1.5 - 3 m [0.4] | 17,358.3 |  | CO-R10.S04-PW-200 | 10 | 10 | ML | VI | Each | ML | PW | RC S | CON | R10 | S04 | PW |
| CO-R10.S04-WE-PW-220 |  | Backfilling Works for Main Line Valves and Valve Chambers of Potable Water Network-[Road 10]-[SW-4] | 3d | 2026-11-10 | 2026-11-12 | CO-R10.S04-WE-PW-210 |  |  |  |  | -94d | 90d | Labor/Helper [24 h]; Skilled Labor/Surveyor [12 h]; Excavator [24 h]; Wash out chamber; on 560 mm dia pipeline Depth 1.5 - 3m [0.1]; Wash out chamber; on 630 mm dia pipeline Depth 1.5 - 3m [0.2]; Air valve chamber on 560 mm dia pipeline Depth 1.5 - 3 m [0.2]; Air valve chamber on 630 mm dia pipeline Depth 1.5 - 3 m [0.4] | 17,358.3 |  | CO-R10.S04-PW-220 | 10 | 10 | ML | VI | Each | ML | PW | BACK | CON | R10 | S04 | PW |
|  | FH | **Fire Hydrant** |  | 2026-10-28 | 2026-11-21 |  |  |  |  |  |  |  |  |  |  |  |  |  |  |  |  |  |  |  |  |  |  |  |
| CO-R10.S04-WE-PW-140 |  | Excavation Works for Fire Hydrants of Potable Water Network-[Road 10]-[SW-4] | 7d | 2026-10-28 | 2026-11-04 | CO-R10.S04-WE-PW-110 SS+3d, CO-R10.S04-WE-EW-110, CO-R10.S04-WE-SW-130 SS+3d, CO-R10.S04-WE-SW-130 FF+3d, CO-R10.S04-WE-PW-170 |  |  |  |  | -101d | 0d | Skilled Labor/Surveyor [6 h]; Foreman [6 h]; Excavator [56 h] |  |  | CO-R10.S04-PW-140 | 10 | 10 | FH | Ex | Each | FH | PW | EX | CON | R10 | S04 | PW |
| CO-R10.S04-WE-PW-150 |  | Installation Works for Fire Hydrant of Potable Water Network-[Road 10]-[SW-4] | 7d | 2026-11-05 | 2026-11-12 | CO-R10.S04-WE-PW-140, PRO-R10-PW-DL-120 FF+3d |  |  |  |  | -101d | 0d | Labor/Helper [112 h]; Skilled Labor/Surveyor [6 h]; Foreman [6 h]; Plumber [112 h] |  |  | CO-R10.S04-PW-150 | 10 | 10 | FH | FH | Each | FH | PW | INSTALL | CON | R10 | S04 | PW |
| CO-R10.S04-WE-PW-160 |  | Trench Backfilling and Compaction Works for Fire Hydrants of Potable Water Network-[Road 10]-[SW-4] | 7d | 2026-11-14 | 2026-11-21 | CO-R10.S04-WE-PW-150 |  |  |  |  | -101d | 83d | Skilled Labor/Surveyor [6 h]; Foreman [6 h]; Excavator [56 h] |  |  | CO-R10.S04-PW-160 | 10 | 10 | FH | BF | Each | FH | PW | BACK | CON | R10 | S04 | PW |
|  | IR | **Irrigation Network** |  | 2026-10-13 | 2026-11-19 |  |  |  |  |  |  |  |  |  |  |  |  |  |  |  |  |  |  |  |  |  |  |  |
|  | ML | **Main Line Pipes** |  | 2026-10-13 | 2026-11-19 |  |  |  |  |  |  |  |  |  |  |  |  |  |  |  |  |  |  |  |  |  |  |  |
| CO-R10.S04-WE-IR-100 |  | Trench Excavation and Bedding Works for Main Lines of Irrigation Network-[Road 10]-[SW-4] | 6d | 2026-10-13 A | 2026-10-29 | CO-R10.S04-WE-EW-110, CO-R10.S04-WE-PW-130, CO-R10.S04-WE-SD-170 SS | 70% | 3d | 2026-10-13 | 2026-10-19 | -198d | 0d | Skilled Labor/Surveyor [5 h]; Foreman [5 h]; Excavator [48 h]; 125 mm pipe; depth 0.0m - 1.5m [287.32] | 21,367.69 | 14,957.38 | CO-R10.S04-IR-100 | 10 | 10 | ML | Ex | LM | ML | IR | EX | CON | R10 | S04 | IR |
| CO-R10.S04-WE-IR-110 |  | Pipes Laying Works for Main Lines of Irrigation Network-[Road 10]-[SW-4] | 7d | 2026-10-15 A | 2026-10-31 | PRO-R19.2-IR-DL-100 FF+3d, CO-R10.S04-WE-IR-100 SS, CO-R10.S04-WE-IR-100 FF+1d | 70% | 3d | 2026-10-20 | 2026-10-27 | -198d | 0d | Labor/Helper [112 h]; Skilled Labor/Surveyor [6 h]; Foreman [6 h]; Plumber [56 h]; Excavator [56 h]; 125 mm pipe; depth 0.0m - 1.5m [861.95] | 64,103.07 | 44,872.15 | CO-R10.S04-IR-110 | 10 | 10 | ML | PL | LM | ML | IR | PIPE | CON | R10 | S04 | IR |
| CO-R10.S04-WE-IR-130 |  | Trench Backfilling and Compaction Works for Main Lines of Irrigation Network-[Road 10]-[SW-4] | 5d | 2026-10-17 A | 2026-11-01 | CO-R10.S04-WE-IR-110 SS, CO-R10.S04-WE-IR-110 FF+1d | 70% | 2d | 2027-01-03 | 2027-01-07 | -196d | 16d | Skilled Labor/Surveyor [4 h]; Foreman [4 h]; Excavator [40 h]; 125 mm pipe; depth 0.0m - 1.5m [143.66] | 10,683.85 | 7,478.69 | CO-R10.S04-IR-130 | 10 | 10 | ML | BF | LM | ML | IR | BACK | CON | R10 | S04 | IR |
| CO-R10.S04-WE-IR-120 |  | Installation Works for Main Line Valves of Irrigation Network-[Road 10]-[SW-4] | 3d | 2026-11-17 | 2026-11-19 | CO-R10.S04-WE-IR-110, PRO-R19.2-IR-DL-110 FF+3d, PRO-R15-IR-DL-110 |  |  |  |  | -212d | 0d | Labor/Helper [128 h]; Skilled Labor/Surveyor [7 h]; Foreman [7 h]; Plumber [128 h]; Gate valves dia (90)mm on pipes with dia (125) mm. [11] | 21,925.75 |  | CO-R10.S04-IR-120 | 10 | 10 | ML | VI | Each | ML | IR | VALV | CON | R10 | S04 | IR |

| ID | WBS | Activity | Duration | Start | Finish | Predecessors | Total float | Free float | Resources | Cost | Activity ID N | Seq | New Seq | 02- Network-WBS | 03- Activity | 04-UOM | 05-Discipline | 01- Network | 07-Weightage System | 08 Stage | 09 Roads | 10 side Walk | Discipline |
| --- | --- | --- | --- | --- | --- | --- | --- | --- | --- | --- | --- | --- | --- | --- | --- | --- | --- | --- | --- | --- | --- | --- | --- |
|  | SL | **Street Lighting Network** |  | 2026-11-21 | 2027-03-17 |  |  |  |  |  |  |  |  |  |  |  |  |  |  |  |  |  |  |
|  | LP | **Lighting Poles Works** |  | 2026-11-21 | 2026-12-30 |  |  |  |  |  |  |  |  |  |  |  |  |  |  |  |  |  |  |
| CO-R10.S04-WE-SL-100 |  | Foundation Excavation Works for Lighting Poles of Street Lighting Network-[Road 10]-[SW-4] | 10d | 2026-11-21 | 2026-12-01 | CO-R10.S04-WE-EW-110, CO-R10.S04-WE-EW-100, CO-R10.S04-WE-IR-130, CO-R10.S04-WE-IR-120 | -212d | 0d | Labor/Helper [288 h]; Skilled Labor/Surveyor [144 h]; Excavator [288 h]; Lighting poles with one arm, including the power distribution box, screws, cables, 12 meters in height. [1.2] | 2,284.16 | CO-R10.S04-SL-100 | 10 | 10 | LP | Ex | Each | POL | SL | EX | CON | R10 | S04 | SL |
| CO-R10.S04-WE-SL-110 |  | Installation Works for Lighting Poles Foundation of Street Lighting Network-[Road 10]-[SW-4] | 10d | 2026-11-26 | 2026-12-07 | CO-R10.S04-WE-SL-100 SS+5d, CO-R10.S04-WE-SL-100 FF+5d, PRO-R10-SL-DL-110 FF+3d | -212d | 0d | Labor/Helper [192 h]; Skilled Labor/Surveyor [10 h]; Foreman [10 h]; Eq. Operator [10 h]; Loader [24 h]; Reinforced concrete foundation, for 12m high lighting columns With Drawpits [24] | 8,731.44 | CO-R10.S04-SL-110 | 10 | 10 | LP | LPF | Each | POL | SL | INSTALL | CON | R10 | S04 | SL |
| CO-R10.S04-WE-SL-120 |  | Installation Works for Lighting Poles of Street Lighting Network-[Road 10]-[SW-4] | 18d | 2026-12-02 | 2026-12-22 | CO-R10.S04-WE-SL-110 SS+5d, CO-R10.S04-WE-SL-110 FF+5d, PRO-R10-SL-DL-120 FF+3d | -212d | 0d | Labor/Helper [144 h]; Electrician [144 h]; Lighting poles with one arm, including the power distribution box, screws, cables, 12 meters in height. [13.2] | 25,125.8 | CO-R10.S04-SL-120 | 10 | 10 | LP | LP | Each | POL | SL | POLES | CON | R10 | S04 | SL |
| CO-R10.S04-WE-SL-210 |  | Backfilling Works for Lighting Poles of Street Lighting Network-[Road 10]-[SW-4] | 15d | 2026-12-06 | 2026-12-22 | CO-R10.S04-WE-SL-120 SS, CO-R10.S04-WE-SL-120 FF, CO-R10.S03-WE-SL-210 | -100.5d | 0d | Labor/Helper [240 h]; Skilled Labor/Surveyor [120 h]; Excavator [240 h]; Lighting poles with one arm, including the power distribution box, screws, cables, 12 meters in height. [4.8] | 9,136.66 | CO-R10.S04-SL-210 | 10 | 10 |  |  |  |  | SL | BACK | CON | R10 | S04 | SL |
| CO-R10.S04-WE-SL-130 |  | Installation Works for Lighting Fixtures With Drop Wire of Street Lighting Network-[Road 10]-[SW-4] | 18d | 2026-12-10 | 2026-12-30 | CO-R10.S04-WE-SL-120 SS+5d, CO-R10.S04-WE-SL-120 FF+5d, PRO-R10-SL-DL-140 FF+3d, CO-R10.S04-WE-SL-200 FF | -100.5d | 0d | Labor/Helper [288 h]; Electrician [288 h]; Manlift [288 h]; Street Lighting( LED) Luminaire,(Type C) complete with control gear and lamp, ?.17000 Lumen [24] | 14,375.52 | CO-R10.S04-SL-130 | 10 | 10 | LP | LPA | Each | POL | SL | INSTALL | CON | R10 | S04 | SL |
| CO-R10.S04-WE-SL-200 |  | Testing Works for Lighting Poles of Street Lighting Network-[Road 10]-[SW-4] | 7d | 2026-12-23 | 2026-12-30 | CO-R10.S04-WE-SL-210, CO-R10.S04-WE-SL-120 | -100.5d | 0d | Labor/Helper [168 h]; Electrician [168 h]; Lighting poles with one arm, including the power distribution box, screws, cables, 12 meters in height. [4.8] | 9,136.66 | CO-R10.S04-SL-200 | 10 | 10 |  |  |  |  | SL | TESTING | CON | R10 | S04 | SL |
|  | CW | **Cabling Works** |  | 2026-12-23 | 2027-01-26 |  |  |  |  |  |  |  |  |  |  |  |  |  |  |  |  |  |  |
| CO-R10.S04-WE-SL-140 |  | Trench Excavation and Bedding Works for Street Lighting Network-[Road 10]-[SW-4] | 10d | 2026-12-23 | 2027-01-03 | CO-R10.S04-WE-IR-130, CO-R10.S04-WE-EW-110, CO-R10.S04-WE-SL-120, CO-R10.S04-WE-SL-110, CO-R10.S04-WE-IR-120 | -212d | 0d | Labor/Helper [80 h]; Skilled Labor/Surveyor [40 h]; Excavator [80 h] |  | CO-R10.S04-SL-140 | 10 | 10 | CW | Ex | LM | CB | SL | EXC | CON | R10 | S04 | SL |
| CO-R10.S04-WE-SL-150 |  | Cable Laying Works for Street Lighting Network-[Road 10]-[SW-4] | 10d | 2027-01-04 | 2027-01-14 | CO-R10.S04-WE-SL-140, PRO-R10-SL-DL-100 FF+3d | -212d | 0d | Labor/Helper [80 h]; Electrician [80 h]; Low Current Technician [80 h]; Supply, installation , test and operation of cables, Copper, (4Cx25mmï¿½,Cu/XLPE/SWA/PVC +1x16mmï¿½ PVC/PVC) [938.44] | 44,012.74 | CO-R10.S04-SL-150 | 10 | 10 | CW | CL | LM | CB | SL | LAYING | CON | R10 | S04 | SL |
| CO-R10.S04-WE-SL-160 |  | Trench Backfilling and Compaction Works for Street Lighting Network-[Road 10]-[SW-4] | 10d | 2027-01-16 | 2027-01-26 | CO-R10.S04-WE-SL-150, CO-R10.S04-WE-IR-130, CO-R10.S04-WE-IR-120 | -212d | 0d | Skilled Labor/Surveyor [8 h]; Foreman [8 h]; Excavator [80 h]; Water Tank [20 h]; Supply, installation , test and operation of cables, Copper, (4Cx25mmï¿½,Cu/XLPE/SWA/PVC +1x16mmï¿½ PVC/PVC) [72.19] | 3,385.62 | CO-R10.S04-SL-160 | 10 | 10 | CW | BF | LM | CB | SL | BACK | CON | R10 | S04 | SL |
|  | DPB | **Distrubution Panel Boards** |  | 2027-01-27 | 2027-03-17 |  |  |  |  |  |  |  |  |  |  |  |  |  |  |  |  |  |  |
| CO-R10.S04-WE-SL-170 |  | Foundation Excavation Works For Panel Boards of Street Lighting Network-[Road 10]-[SW-4] | 18d | 2027-01-27 | 2027-02-16 | CO-R10.S04-WE-EW-110, CO-R10.S04-WE-SL-160 | -212d | 0d | Labor/Helper [144 h]; Skilled Labor/Surveyor [72 h]; Excavator [144 h] |  | CO-R10.S04-SL-170 | 10 | 10 | DB | Ex | Each | DS | SL | EXC | CON | R10 | S04 | SL |
| CO-R10.S04-WE-SL-180 |  | Installation Works for Panel Board Concrete Foundations of Street Lighting Network-[Road 10]-[SW-4] | 12d | 2027-02-07 | 2027-02-20 | CO-R10.S04-WE-SL-170 SS+3d, CO-R10.S04-WE-SL-170 FF+3d | -203d | 0d | Skilled Labor/Surveyor [10 h]; Foreman [10 h]; Excavator [96 h]; Water Tank [24 h] |  | CO-R10.S04-SL-180 | 10 | 10 | DB | PBF | Each | DS | SL | INSTALL | CON | R10 | S04 | SL |
| CO-R10.S04-WE-SL-190 |  | Installation Works for Lighting Panel Boards of Street Lighting Network-[Road 10]-[SW-4] | 12d | 2027-02-21 | 2027-03-07 | CO-R10.S04-WE-SL-180, PRO-R10-SL-DL-160 FF+3d | -203d | 9d | Labor/Helper [96 h]; Electrician [96 h] |  | CO-R10.S04-SL-190 | 10 | 10 | DB | PB | Each | DS | SL | INST BO | CON | R10 | S04 | SL |
| CO-R10.S04-WE-SL-220 |  | A wall of concrete blocks to install the KWH meter of Street Lighting Network-[Road 10]-[SW-4] | 18d | 2027-02-21 | 2027-03-17 | CO-R10.S04-WE-SL-180 | -203d | 0d | Block Mason [144 h]; Road crossing ducts, 4 way (4 x 100mm PVC) [53.63]; Drawpit with medium duty steel cover, size 900x900x1200mm, Type 4 [5] | 19,427.37 | CO-R10.S04-SL-220 | 10 | 10 | DB |  | Each | DS | SL | wall | CON | R10 | S04 | SL |
|  | TE | **Telecom Network** |  | 2027-01-25 | 2027-02-27 |  |  |  |  |  |  |  |  |  |  |  |  |  |  |  |  |  |  |
|  | PD | **Ducts Works** |  | 2027-01-25 | 2027-02-27 |  |  |  |  |  |  |  |  |  |  |  |  |  |  |  |  |  |  |
| CO-R10.S04-WE-TE-100 |  | Trench Excavation and Bedding Works for Ducts of Telecom Network-[Road 10]-[SW-4] | 7d | 2027-01-25 | 2027-02-01 | CO-R10.S04-WE-IR-130 SS+3d, CO-R10.S04-WE-IR-130 FF+3d, CO-R10.S04-WE-SL-160 SS+5d, CO-R10.S04-WE-SL-160 FF+5d, CO-R10.S04-WE-EW-110, CO-R10.S03-WE-TE-100, CO-R10.S04-WE-IR-120 FS+3d | -184d | 0d | Skilled Labor/Surveyor [6 h]; Foreman [6 h]; Excavator [56 h]; 6-way ducts, 50mm dia. HDPE [45]; Road crossing ducts (6-way) [4] | 6,700 | CO-R10.S04-TE-100 | 10 | 10 | PD | Ex | LM | DC | TE | DUCTS | CON | R10 | S04 | TE |
| CO-R10.S04-WE-TE-110 |  | Pipes Laying Works for Ducts of Telecom Network-[Road 10]-[SW-4] | 7d | 2027-02-02 | 2027-02-09 | CO-R10.S04-WE-TE-100, PRO-R10-TE-DL-100 FF+3d | -184d | 0d | Labor/Helper [112 h]; Skilled Labor/Surveyor [6 h]; Foreman [6 h]; Plumber [56 h]; Excavator [56 h]; JCB [28 h]; Truck [56 h]; 6-way ducts, 50mm dia. HDPE [268]; Road crossing ducts (6-way) [23] | 39,764.5 | CO-R10.S04-TE-110 | 10 | 10 | PD | PL | LM | DC | TE | DUCTS | CON | R10 | S04 | TE |
| CO-R10.S04-WE-TE-120 |  | Pouring Plain Concrete Above Ducts of Telecom Network-[Road 10]-[SW-4] | 7d | 2027-02-10 | 2027-02-17 | CO-R10.S04-WE-TE-110 | -184d | 0d | Skilled Labor/Surveyor [6 h]; Foreman [6 h]; Cons. Carpenter [112 h]; Block Mason [56 h]; 6-way ducts, 50mm dia. HDPE [45]; Road crossing ducts (6-way) [4] | 6,700 | CO-R10.S04-TE-120 | 10 | 10 | PD | PC | LM | DC | TE | DUCTS | CON | R10 | S04 | TE |
| CO-R10.S04-WE-TE-130 |  | Trench Backfilling and Compaction Works for Ducts of Telecom Network-[Road 10]-[SW-4] | 7d | 2027-02-18 | 2027-02-27 | CO-R10.S04-WE-TE-120 | -184d | 0d | Skilled Labor/Surveyor [6 h]; Foreman [6 h]; Excavator [56 h]; 6-way ducts, 50mm dia. HDPE [89]; Road crossing ducts (6-way) [8] | 13,266 | CO-R10.S04-TE-130 | 10 | 10 | PD | BF | LM | DC | TE | DUCTS | CON | R10 | S04 | TE |
|  | MH | **Manholes Works** |  | 2027-02-02 | 2027-02-27 |  |  |  |  |  |  |  |  |  |  |  |  |  |  |  |  |  |  |
| CO-R10.S04-WE-TE-140 |  | Excavation Works for Manholes of Telecom Network-[Road 10]-[SW-4] | 7d | 2027-02-02 | 2027-02-09 | CO-R10.S03-ES-TE-140, CO-R10.S04-WE-TE-100, CO-R10.S03-WE-TE-140 | -184d | 0d | Skilled Labor/Surveyor [6 h]; Foreman [6 h]; Excavator [56 h]; Manhole Type 2 (2000x1000x1000) [0.7] | 2,199.61 | CO-R10.S04-TE-140 | 10 | 10 | MH | Ex | Each | MNH | TE | EXC | CON | R10 | S04 | TE |
| CO-R10.S04-WE-TE-150 |  | Installation Works for Manholes of Telecom Network-[Road 10]-[SW-4] | 7d | 2027-02-10 | 2027-02-17 | CO-R10.S04-WE-TE-140, PRO-R10-TE-DL-110 FF+3d | -184d | 0d | Skilled Labor/Surveyor [6 h]; Foreman [6 h]; Excavator [56 h]; Manhole Type 1 (2000x1000x1000) [1]; Manhole Type 2 (2000x1000x1000) [2.1] | 9,715 | CO-R10.S04-TE-150 | 10 | 10 | MH | HH | Each | MNH | TE | INSTALL-1 | CON | R10 | S04 | TE |
| CO-R10.S04-WE-TE-160 |  | Backfilling Works for Manholes of Telecom Network-[Road 10]-[SW-4] | 7d | 2027-02-18 | 2027-02-27 | CO-R10.S04-WE-TE-150 | -184d | 0d | Skilled Labor/Surveyor [6 h]; Foreman [6 h]; Excavator [56 h]; Manhole Type 2 (2000x1000x1000) [0.7] | 2,199.61 | CO-R10.S04-TE-160 | 10 | 10 | MH | BF | Each | MNH | TE | (New)-2 | CON | R10 | S04 | TE |

| ID | WBS | Activity | Duration | Start | Finish | Predecessors | Complete | Remaining | Planned start | Planned finish | Total float | Free float | Resources | Cost | Actual cost | Activity ID N | Seq | New Seq | 02- Network-WBS | 03- Activity | 04-UOM | 05-Discipline | 01- Network | 08 Stage | 09 Roads | 10 side Walk | Discipline | 07-Weightage System |
| --- | --- | --- | --- | --- | --- | --- | --- | --- | --- | --- | --- | --- | --- | --- | --- | --- | --- | --- | --- | --- | --- | --- | --- | --- | --- | --- | --- | --- |
|  | RD | **Road Works** |  | 2026-07-30 | 2027-04-15 |  |  |  |  |  |  |  |  |  |  |  |  |  |  |  |  |  |  |  |  |  |  |  |
|  | RD | **Pre-Bituminous Construction** |  | 2026-07-30 | 2027-03-20 |  |  |  |  |  |  |  |  |  |  |  |  |  |  |  |  |  |  |  |  |  |  |  |
| CO-R10.S04-WE-RD-100 |  | Capping and Subgrade Layer for Road Works-[Road 10]-[SW-4] | 12d | 2026-07-30 A | 2027-01-30 | CO-R10.S04-WE-SD-130, CO-R10.S04-WE-SW-130, CO-R10.S04-WE-PW-130, CO-R10.S04-WE-SL-160 FF+3d, PRO-R10-RD-DL-100 FF+3d, CO-R10.S04-WE-SW-210, CO-R10.S04-WE-SD-210 FF | 70% | 6d | 2027-04-21 | 2027-05-04 | -152d | 23d | Labor/Helper [288 h]; Skilled Labor/Surveyor [144 h]; Loader [144 h]; Grader [144 h]; Road Roller [144 h]; Water Tank [144 h]; 300mm capping layer underneath subgrade , CBR?15% [3390.73]; 300mm thick Subgrade, including subgrade preparation, CBR?25% [3390.73] | 263,120.65 | 184,184.45 | CO-R10.S04-RD-P-100 | 10 | 10 | AB | SG | Sq.m | BS | RD | CON | R10 | S04 | RD |  |
| CO-R10.S04-WE-RD-110 |  | Aggregate Base Course Layer for Road Works-[Road 10]-[SW-4] | 12d | 2027-03-03 | 2027-03-20 | CO-R10.S04-WE-RD-100 SS+3d, CO-R10.S04-WE-RD-100 FF+3d, CO-R10.S04-WE-SD-170 SS+3d, CO-R10.S04-WE-SD-170 FF+3d, PRO-R10-RD-DL-110 FF+3d, CO-R10.S04-WE-PW-160 FS+3d, CO-R10.S04-WE-SL-160 SS+6d, CO-R10.S04-WE-TE-130 FS+3d, CO-R10.S04-WE-TE-160 FS+3d, CO-R10.S04-WE-PW-220 FS+3d |  |  |  |  | -105d | 58d | Labor/Helper [288 h]; Skilled Labor/Surveyor [144 h]; Foreman [144 h]; Loader [144 h]; Grader [144 h]; Road Roller [144 h]; Aggregate base course 200mm thick after compaction in two layers(Grading 1); CBR?80%; including watering, compaction and testing [2260.72] | 183,276.57 |  | CO-R10.S04-RD-P-110 | 10 | 10 | AB | BA | Sq.m | BS | RD | CON | R10 | S04 | RD |  |
|  | LS | **Pavement Works** |  | 2026-08-25 | 2027-04-15 |  |  |  |  |  |  |  |  |  |  |  |  |  |  |  |  |  |  |  |  |  |  |  |
| CO-R10.S04-WE-RD-120 |  | Fixing of Curbstone for Sidewalks Pavement-[Road 10]-[SW-4] | 12d | 2026-08-25 A | 2026-08-31 A | PRO-R10-RD-DL-130 FF+3d | 100% |  | 2026-07-30 | 2026-08-12 |  |  | Labor/Helper [768 h]; Block Mason [2304 h]; Precast Concrete Kerb, Type K1 [1250.99]; Precast Concrete Kerb, Type L1 [2482.11] | 150,070.62 | 150,070.62 | CO-R10.S04-RD-P-120 | 10 | 10 | LS | CR | LM | LAND | RD | CON | R10 | S04 | RD |  |
| CO-R10.S04-WE-RD-130 |  | Fixing of Interlock Tiles for Sidewalks Pavement-[Road 10]-[SW-4] | 12d | 2027-04-03 | 2027-04-15 | PRO-R10-RD-DL-120 FF+3d, CO-R10.S04-WE-RD-120 SS, CO-R10.S04-WE-RD-120 FF+3d, CO-R10-PW-TF-100 FF, CO-R10-PW-TF-110 FF, CO-R10-PW-TF-120 FF, CO-R10-SW-TF-100 FF, CO-R10-SW-TF-110 FF, CO-R10-SW-TF-130 FF, CO-R10-SD-TF-100, CO-R10-SD-TF-120 SS, CO-R10-SL-TF-140 FF, CO-R10-SL-TF-150 FF, CO-R10-SL-ES-140 FF, CO-R10-SL-ES-150 FF, CO-R10-IR-TF-120 FF, CO-R10-MV-TF-140 FF, CO-R10-SL-TF-380 FF |  |  |  |  | -164d | 0d | Labor/Helper [864 h]; Block Mason [2592 h]; Interlocking block pavers for sidewalk/footpath 60mm thick on and including 30mm Sand Bedding, 200mm Aggregate subbase, all in accordance with authority standards and complete as per specifications [2233.91]; Extraover for Pedestrian ramps [5.5] | 107,184.05 |  | CO-R10.S04-RD-P-130 | 10 | 10 | LS | IL | Sq.m | LAND | RD | CON | R10 | S04 | RD |  |
|  | 5 | **Road 11 Local 1 ( 670 LM )** |  | 2025-04-23 | 2027-04-04 |  |  |  |  |  |  |  |  |  |  |  |  |  |  |  |  |  |  |  |  |  |  |  |
|  | SW_5 | **SW_5** |  | 2025-04-26 | 2027-01-31 |  |  |  |  |  |  |  |  |  |  |  |  |  |  |  |  |  |  |  |  |  |  |  |
|  | EW | **Earthworks** |  | 2025-04-26 | 2025-05-03 |  |  |  |  |  |  |  |  |  |  |  |  |  |  |  |  |  |  |  |  |  |  |  |
|  | EW | **Earthworks** |  | 2025-04-26 | 2025-05-03 |  |  |  |  |  |  |  |  |  |  |  |  |  |  |  |  |  |  |  |  |  |  |  |
| CO-R11.S05-EW-100 |  | Roadway Excavation Works Upto Design Level for Earthworks-[Road 11]-[SW-5] | 12d | 2025-04-26 A | 2025-04-27 A | ENG-MS-RD-A-10, ENG-SH-RD-A-100, CO-R14.S08-EW-100 | 100% |  | 2025-08-04 | 2025-08-17 |  |  | Labor/Helper [192 h]; Skilled Labor/Surveyor [24 h]; Foreman [24 h]; Water Tank [192 h]; Dozer [192 h]; Roadway Excavation for cuttings; on any type of material for all depths including trimming and Preparation of excavated surfaces and disposal. [9316.87] | 58,696.28 | 58,696.28 | CO-R11.S05-EW-100 | 15 | 15 | EW | Ex | Cub.m | EW | EW | CON | R11 | S05 | EW |  |
| CO-R11.S05-EW-110 |  | Embankments Works Upto Design Level for Earthworks-[Road 11]-[SW-5] | 12d | 2025-04-26 A | 2025-05-03 A | CO-R11.S05-EW-100, ENG-MS-RD-A-10, ENG-SH-RD-A-100 | 100% |  | 2025-08-18 | 2025-08-31 |  |  | Labor/Helper [720 h]; Skilled Labor/Surveyor [90 h]; Foreman [90 h]; Water Tank [720 h]; Dozer [720 h]; Embankments to the ROW, with suitable material other than top soil or rock according to specifications [15683.9] | 127,039.18 | 127,039.18 | CO-R11.S05-EW-110 | 15 | 15 | EW | BF | Cub.m | EW | EW | CON | R11 | S05 | EW |  |
|  | SW | **Sewage Network** |  | 2025-08-12 | 2026-08-31 |  |  |  |  |  |  |  |  |  |  |  |  |  |  |  |  |  |  |  |  |  |  |  |
|  | ML | **Main Line Sections** |  | 2025-08-12 | 2026-04-06 |  |  |  |  |  |  |  |  |  |  |  |  |  |  |  |  |  |  |  |  |  |  |  |
| CO-R11.S05-SW-100 |  | Trench Excavation and Bedding Works for Main Lines of Sewage Network-[Road 11]-[SW-5] | 12d | 2025-08-12 A | 2025-08-14 A | CO-R11.S05-EW-110, ENG-MS-SW-ML-A-110, ENG-SH-SW-ML-A-110, CO-R14.S08-SW-100 | 100% |  | 2025-09-01 | 2025-09-14 |  |  | Labor/Helper [192 h]; Foreman [192 h]; Excavator [192 h]; Nominal bore : 160mm; Depth : 1.5m - 2.5m [30]; Depth : 1.5 - 2.5m [10]; Depth : 2.5 - 3.5m [12.23]; Depth : 3.5 - 4.5m [12.23]; Depth : 4.5 - 5.5m [20]; Depth : 5.5 - 6.5m [20]; Depth : 6.5 -7.5m [60]; Depth : 6.5 -7.5m [70]; Depth :more than 7.5m [140] | 316,901.49 | 316,901.49 | CO-R11.S05-SW-100 | 15 | 15 | ML | Ex | LM | ML | SW | CON | R11 | S05 | SW | EX |
| CO-R11.S05-SW-120 |  | Pipes Laying Works for Main Lines of Sewage Network-[Road 11]-[SW-5] | 12d | 2025-09-16 A | 2026-04-05 A | CO-R11.S05-SW-100, PRO-R11-SW-DL-100 FF+3d | 100% |  | 2025-09-15 | 2025-09-29 |  |  | Labor/Helper [384 h]; Skilled Labor/Surveyor [20 h]; Foreman [20 h]; Plumber [192 h]; Excavator [192 h]; Nominal bore : 160mm; Depth : 1.5m - 2.5m [90]; Depth : 1.5 - 2.5m [30]; Depth : 2.5 - 3.5m [36.67]; Depth : 3.5 - 4.5m [36.67]; Depth : 4.5 - 5.5m [60]; Depth : 5.5 - 6.5m [60]; Depth : 6.5 -7.5m [180]; Depth : 6.5 -7.5m [210]; Depth :more than 7.5m [420] | 950,696.36 | 950,696.36 | CO-R11.S05-SW-120 | 15 | 15 | ML | PL | LM | ML | SW | CON | R11 | S05 | SW | PIPE |
| CO-R11.S05-SW-130 |  | Trench Backfilling and Compaction Works for Main Lines of Sewage Network-[Road 11]-[SW-5] | 12d | 2025-09-18 A | 2026-04-06 A | ENG-SH-SW-ML-A-110 FF, ENG-MS-SW-ML-A-110 FF, CO-R11.S05-SW-120, CO-R11.S05-SW-210 FF | 100% |  | 2025-09-30 | 2025-10-13 |  |  | Skilled Labor/Surveyor [20 h]; Foreman [20 h]; Excavator [192 h]; Nominal bore : 160mm; Depth : 1.5m - 2.5m [15]; Depth : 1.5 - 2.5m [5]; Depth : 2.5 - 3.5m [6.11]; Depth : 3.5 - 4.5m [6.11]; Depth : 4.5 - 5.5m [10]; Depth : 5.5 - 6.5m [10]; Depth : 6.5 -7.5m [30]; Depth : 6.5 -7.5m [35]; Depth :more than 7.5m [70] | 158,450.74 | 158,450.74 | CO-R11.S05-SW-130 | 15 | 15 | ML | BF | LM | ML | SW | CON | R11 | S05 | SW | BACK |
|  | 1 | **Manholes** |  | 2026-08-20 | 2026-08-31 |  |  |  |  |  |  |  |  |  |  |  |  |  |  |  |  |  |  |  |  |  |  |  |
| CO-R11.S05-SW-160 |  | Excavation Works for Main Line Manholes of Sewage Network-[Road 11]-[SW-5] | 1d | 2026-08-20 A | 2026-08-20 A | CO-R11.S05-SW-120 SS | 100% |  | 2025-09-15 | 2025-09-15 |  |  | Labor/Helper [24 h]; Skilled Labor/Surveyor [12 h]; Excavator [24 h]; Depth: not exceeding 1.5m [0.15]; Depth: 1.5 - 2.5m [0.45]; Depth: 3.5 - 4.5m [0.15]; Depth: 4.5 - 5.5m [0.15]; Depth:6.5 - 7.5m [0.3] | 16,128.54 | 16,128.54 | CO-R11.S05-SW-160 | 15 | 15 |  |  |  |  | SW | CON | R11 | S05 | SW | EX |
| CO-R11.S05-SW-170 |  | Installation RC Footing Works for Main Line Manholes of Sewage Network-[Road 11]-[SW-5] | 2d | 2026-08-22 A | 2026-08-23 A | CO-R11.S05-SW-160, PRO-R11-SW-DL-110 FF+3d | 100% |  | 2025-09-16 | 2025-09-17 |  |  | Cons. Carpenter [96 h]; Steel Fixer [96 h]; Depth: not exceeding 1.5m [0.1]; Depth: 1.5 - 2.5m [0.3]; Depth: 3.5 - 4.5m [0.1]; Depth: 4.5 - 5.5m [0.1]; Depth:6.5 - 7.5m [0.2] | 10,752.36 | 10,752.36 | CO-R11.S05-SW-170 | 15 | 15 |  |  |  |  | SW | CON | R11 | S05 | SW | RC F |
| CO-R11.S05-SW-180 |  | Install Grp Liner Wall Works for Main Line Manholes of Sewage Network-[Road 11]-[SW-5] | 4d | 2026-08-24 A | 2026-08-27 A | CO-R11.S05-SW-170 | 100% |  | 2025-09-18 | 2025-09-22 |  |  | Labor/Helper [96 h]; Plumber [96 h]; Depth: not exceeding 1.5m [0.4]; Depth: 1.5 - 2.5m [1.2]; Depth: 3.5 - 4.5m [0.4]; Depth: 4.5 - 5.5m [0.4]; Depth:6.5 - 7.5m [0.8] | 43,009.44 | 43,009.44 | CO-R11.S05-SW-180 | 15 | 15 |  |  |  |  | SW | CON | R11 | S05 | SW | LP |
| CO-R11.S05-SW-190 |  | Pouring Grp Liner Wall Works for Main Line Manholes of Sewage Network-[Road 11]-[SW-5] | 1d | 2026-08-28 A | 2026-08-28 A | CO-R11.S05-SW-180 | 100% |  | 2025-09-24 | 2025-09-24 |  |  | Cons. Carpenter [48 h]; Steel Fixer [48 h]; Depth: not exceeding 1.5m [0.05]; Depth: 1.5 - 2.5m [0.15]; Depth: 3.5 - 4.5m [0.05]; Depth: 4.5 - 5.5m [0.05]; Depth:6.5 - 7.5m [0.1] | 5,376.18 | 5,376.18 | CO-R11.S05-SW-190 | 15 | 15 |  |  |  |  | SW | CON | R11 | S05 | SW | (New) |
| CO-R11.S05-SW-200 |  | Backfilling Works for Main Line Manholes of Sewage Network-[Road 11]-[SW-5] | 4d | 2026-08-29 A | 2026-08-30 A | CO-R11.S05-SW-190 | 100% |  | 2025-09-25 | 2025-09-29 |  |  | Labor/Helper [96 h]; Skilled Labor/Surveyor [48 h]; Excavator [96 h]; Depth: not exceeding 1.5m [0.15]; Depth: 1.5 - 2.5m [0.45]; Depth: 3.5 - 4.5m [0.15]; Depth: 4.5 - 5.5m [0.15]; Depth:6.5 - 7.5m [0.3] | 16,128.54 | 16,128.54 | CO-R11.S05-SW-200 | 15 | 15 |  |  |  |  | SW | CON | R11 | S05 | SW | BACK |
| CO-R11.S05-SW-210 |  | Testing Works for Main Line Manholes of Sewage Network-[Road 11]-[SW-5] | 1d | 2026-08-30 A | 2026-08-31 A | CO-R11.S05-SW-200 | 100% |  | 2025-09-30 | 2025-09-30 |  |  | Labor/Helper [24 h]; Plumber [24 h]; Depth: not exceeding 1.5m [0.05]; Depth: 1.5 - 2.5m [0.15]; Depth: 3.5 - 4.5m [0.05]; Depth: 4.5 - 5.5m [0.05]; Depth:6.5 - 7.5m [0.1] | 5,376.18 | 5,376.18 | CO-R11.S05-SW-210 | 15 | 15 |  |  |  |  | SW | CON | R11 | S05 | SW | T&COV |

| ID | WBS | Activity | Duration | Start | Finish | Predecessors | Complete | Remaining | Planned start | Planned finish | Total float | Free float | Resources | Cost | Actual cost | Activity ID N | Seq | New Seq | 02- Network-WBS | 03- Activity | 04-UOM | 05-Discipline | 01- Network | 07-Weightage System | 08 Stage | 09 Roads | 10 side Walk | Discipline |
| --- | --- | --- | --- | --- | --- | --- | --- | --- | --- | --- | --- | --- | --- | --- | --- | --- | --- | --- | --- | --- | --- | --- | --- | --- | --- | --- | --- | --- |
|  | SD | **Storm Drainage Network** |  | 2025-07-29 | 2026-04-30 |  |  |  |  |  |  |  |  |  |  |  |  |  |  |  |  |  |  |  |  |  |  |  |
|  | ML | **Main Line Sections** |  | 2025-07-29 | 2025-08-20 |  |  |  |  |  |  |  |  |  |  |  |  |  |  |  |  |  |  |  |  |  |  |  |
| CO-R11.S05-SD-100 |  | Trench Excavation and Bedding Works for Main Lines of Storm Drainage Network-[Road 11]-[SW-5] | 10d | 2025-07-29 A | 2025-08-03 A | ENG-SH-SD-ML-A-110, CO-R11.S05-EW-110, CO-R11.S05-EW-100, CO-R11.S05-SW-130 SS+3d, CO-R11.S05-SW-130 FF+3d, ENG-MS-SD-ML-A-110, CO-R14.S08-SD-100 | 100% |  | 2025-10-26 | 2025-11-05 |  |  | Skilled Labor/Surveyor [12 h]; Foreman [12 h]; Excavator [112 h]; Pipe with diameter 600mm ; depth: 1.51m - 2.5m [31.46]; Pipe with diameter 700mm ; depth: 1.51m - 2.5m [21.04]; Pipe with diameter 800mm ; depth: 0.0m - 1.5m [10]; Pipe with diameter 800mm ; depth: 1.51m - 2.5m [41.02]; Pipe with diameter 800mm ; depth: 2.51m - 3.5m [14]; Pipe with diameter 900mm ; depth: 0.0m - 1.5m [10]; Pipe with diameter 900mm ; depth: 1.51m - 2.5m [33.7] | 86,846.06 | 86,846.06 | CO-R11.S05-SD-100 | 15 | 15 | ML | Ex | LM | ML | SD | EX | CON | R11 | S05 | SD |
| CO-R11.S05-SD-120 |  | Pipes Laying Works for Main Lines of Storm Drainage Network-[Road 11]-[SW-5] | 10d | 2025-08-12 A | 2025-08-14 A | CO-R11.S05-SD-100, CO-R14.S08-SD-120 | 100% |  | 2025-11-06 | 2025-11-17 |  |  | Labor/Helper [240 h]; Skilled Labor/Surveyor [12 h]; Foreman [12 h]; Plumber [120 h]; Excavator [120 h]; Pipe with diameter 600mm ; depth: 1.51m - 2.5m [94.39]; Pipe with diameter 700mm ; depth: 1.51m - 2.5m [63.13]; Pipe with diameter 800mm ; depth: 0.0m - 1.5m [30]; Pipe with diameter 800mm ; depth: 1.51m - 2.5m [123.06]; Pipe with diameter 800mm ; depth: 2.51m - 3.5m [42]; Pipe with diameter 900mm ; depth: 0.0m - 1.5m [30]; Pipe with diameter 900mm ; depth: 1.51m - 2.5m [101.11] | 260,538.19 | 260,538.19 | CO-R11.S05-SD-120 | 15 | 15 | ML | PL | LM | ML | SD | PIPE | CON | R11 | S05 | SD |
| CO-R11.S05-SD-130 |  | Trench Backfilling and Compaction Works for Main Lines of Storm Drainage Network-[Road 11]-[SW-5] | 15d | 2025-08-13 A | 2025-08-20 A | CO-R11.S05-SD-120 SS+3d, CO-R11.S05-SD-120 FF+3d, ENG-SH-SD-ML-A-110 FF, CO-R10.S03-ES-SD-130, ENG-MS-SD-ML-A-110 FF, CO-R11.S05-SD-120, CO-R11.S05-SD-220 FF, CO-R10.S03-WE-SD-130 | 100% |  | 2025-12-29 | 2026-01-14 |  |  | Skilled Labor/Surveyor [12 h]; Foreman [12 h]; Excavator [120 h]; Pipe with diameter 600mm ; depth: 1.51m - 2.5m [15.73]; Pipe with diameter 700mm ; depth: 1.51m - 2.5m [10.52]; Pipe with diameter 800mm ; depth: 0.0m - 1.5m [5]; Pipe with diameter 800mm ; depth: 1.51m - 2.5m [20.51]; Pipe with diameter 800mm ; depth: 2.51m - 3.5m [7]; Pipe with diameter 900mm ; depth: 0.0m - 1.5m [5]; Pipe with diameter 900mm ; depth: 1.51m - 2.5m [16.85] | 43,423.03 | 43,423.03 | CO-R11.S05-SD-130 | 15 | 15 | ML | BF | LM | ML | SD | BACK | CON | R11 | S05 | SD |
|  | MH | **Manholes** |  | 2026-03-22 | 2026-04-07 |  |  |  |  |  |  |  |  |  |  |  |  |  |  |  |  |  |  |  |  |  |  |  |
| CO-R11.S05-SD-180 |  | Trench Excavation and Bedding Works for Manholes of Storm Drainage Network-[Road 11]-[SW-5] | 1d | 2026-03-22 A | 2026-03-31 A | CO-R11.S05-SD-120 SS, PRO-SD-1DL-100 | 100% |  | 2025-11-06 | 2025-11-06 |  |  | Labor/Helper [24 h]; Skilled Labor/Surveyor [12 h]; Excavator [24 h]; MH ; depth: 0.0m - 1.5m [0.15]; MH ; depth: 1.51m - 2.5m [0.45]; MH ; depth: 2.51 - 3.5m [0.15]; MH ; depth: 1.51m - 2.5m [0.3]; MH ; depth: 2.51 - 3.5m [0.45]; MH ; depth: 2.51 - 3.5m [0.3] | 38,006.79 | 38,006.79 | CO-R11.S05-SD-180 | 15 | 15 |  |  |  |  | SD | EX | CON | R11 | S05 | SD |
| CO-R11.S05-SD-190 |  | Install RC Footing Works for Manholes of Storm Drainage Network-[Road 11]-[SW-5] | 1d | 2026-04-01 A | 2026-04-01 A | CO-R11.S05-SD-180 | 100% |  | 2025-11-08 | 2025-11-08 |  |  | Cons. Carpenter [48 h]; Steel Fixer [48 h]; MH ; depth: 0.0m - 1.5m [0.05]; MH ; depth: 1.51m - 2.5m [0.15]; MH ; depth: 2.51 - 3.5m [0.05]; MH ; depth: 1.51m - 2.5m [0.1]; MH ; depth: 2.51 - 3.5m [0.15]; MH ; depth: 2.51 - 3.5m [0.1] | 12,668.93 | 12,668.93 | CO-R11.S05-SD-190 | 15 | 15 |  |  |  |  | SD | RC F | CON | R11 | S05 | SD |
| CO-R11.S05-SD-200 |  | Install RC Wall Rings & Slab Works for Manholes of Storm Drainage Network-[Road 11]-[SW-5] | 4d | 2026-04-02 A | 2026-04-04 A | CO-R11.S05-SD-190 | 100% |  | 2025-11-09 | 2025-11-12 |  |  | Cons. Carpenter [192 h]; Steel Fixer [192 h]; MH ; depth: 0.0m - 1.5m [0.45]; MH ; depth: 1.51m - 2.5m [1.35]; MH ; depth: 2.51 - 3.5m [0.45]; MH ; depth: 1.51m - 2.5m [0.9]; MH ; depth: 2.51 - 3.5m [1.35]; MH ; depth: 2.51 - 3.5m [0.9] | 114,020.37 | 114,020.37 | CO-R11.S05-SD-200 | 15 | 15 |  |  |  |  | SD | RC W | CON | R11 | S05 | SD |
| CO-R11.S05-SD-210 |  | Testing Works for Manholes of Storm Drainage Network-[Road 11]-[SW-5] | 1d | 2026-04-05 A | 2026-04-06 A | CO-R11.S05-SD-200 | 100% |  | 2025-11-13 | 2025-11-13 |  |  | Labor/Helper [24 h]; Plumber [24 h]; MH ; depth: 0.0m - 1.5m [0.1]; MH ; depth: 1.51m - 2.5m [0.3]; MH ; depth: 2.51 - 3.5m [0.1]; MH ; depth: 1.51m - 2.5m [0.2]; MH ; depth: 2.51 - 3.5m [0.3]; MH ; depth: 2.51 - 3.5m [0.2] | 25,337.86 | 25,337.86 | CO-R11.S05-SD-210 | 15 | 15 |  |  |  |  | SD | T&COV | CON | R11 | S05 | SD |
| CO-R11.S05-SD-220 |  | Backfilling Works for Manholes of Storm Drainage Network-[Road 11]-[SW-5] | 7d | 2026-04-06 A | 2026-04-07 A | CO-R11.S05-SD-210 | 100% |  | 2025-11-15 | 2025-11-22 |  |  | Labor/Helper [168 h]; Skilled Labor/Surveyor [84 h]; Excavator [168 h]; MH ; depth: 0.0m - 1.5m [0.2]; MH ; depth: 1.51m - 2.5m [0.6]; MH ; depth: 2.51 - 3.5m [0.2]; MH ; depth: 1.51m - 2.5m [0.4]; MH ; depth: 2.51 - 3.5m [0.6]; MH ; depth: 2.51 - 3.5m [0.4] | 50,675.72 | 50,675.72 | CO-R11.S05-SD-220 | 15 | 15 |  |  |  |  | SD | BACK | CON | R11 | S05 | SD |
|  | CB | **Catch Basin Sections** |  | 2026-04-25 | 2026-04-30 |  |  |  |  |  |  |  |  |  |  |  |  |  |  |  |  |  |  |  |  |  |  |  |
| CO-R11.S05-SD-140 |  | Trench Excavation and Bedding Works for Catch Basins of Storm Drainage Network-[Road 11]-[SW-5] | 6d | 2026-04-25 A | 2026-04-30 A | CO-R11.S05-EW-110, ENG-SH-SD-CB-A-110, ENG-MS-SD-CB-A-110, CO-R11.S05-SD-220, CO-R14.S08-SD-140 | 100% |  | 2025-11-24 | 2025-11-30 |  |  | Skilled Labor/Surveyor [5 h]; Foreman [5 h]; Excavator [48 h]; Pipe with diameter 300mm ; depth: 0 - 1.5m [49.34]; Pipe with diameter 400mm ; depth: 0 - 1.5m [3.01] | 12,167.25 | 12,167.25 | CO-R11.S05-SD-140 | 15 | 15 | CB | Ex | Each | CB | SD | EX | CON | R11 | S05 | SD |
| CO-R11.S05-SD-150 |  | Installation and Pipes Laying Connection Works for Catch Basins of Storm Drainage Network-[Road 11]-[SW-5] | 7d | 2026-04-25 A | 2026-04-30 A | CO-R11.S05-SD-140 | 100% |  | 2025-12-01 | 2025-12-08 |  |  | Labor/Helper [224 h]; Skilled Labor/Surveyor [12 h]; Foreman [12 h]; Excavator [112 h]; Pipe with diameter 300mm ; depth: 0 - 1.5m [148.02]; Pipe with diameter 400mm ; depth: 0 - 1.5m [9.03] | 36,501.76 | 36,501.76 | CO-R11.S05-SD-150 | 15 | 15 | CB | CB | Each | CB | SD | INSTALL | CON | R11 | S05 | SD |
| CO-R11.S05-SD-160 |  | Testing Works for Catch Basins of Storm Drainage Network-[Road 11]-[SW-5] | 10d | 2026-04-25 A | 2026-04-30 A | CO-R11.S05-SD-150, CO-R11.S05-SD-120 | 100% |  | 2025-12-09 | 2025-12-20 |  |  | Labor/Helper [160 h]; Skilled Labor/Surveyor [8 h]; Foreman [8 h]; Plumber [80 h]; Excavator [80 h]; Pipe with diameter 300mm ; depth: 0 - 1.5m [32.89]; Pipe with diameter 400mm ; depth: 0 - 1.5m [2.01] | 8,111.5 | 8,111.5 | CO-R11.S05-SD-160 | 15 | 15 | CB | PL | Each | CB | SD | TEST | CON | R11 | S05 | SD |
| CO-R11.S05-SD-170 |  | Trench Backfilling and Compaction Works for Catch Basins of Storm Drainage Network-[Road 11]-[SW-5] | 7d | 2026-04-25 A | 2026-04-30 A | CO-R11.S05-SD-160 | 100% |  | 2025-12-21 | 2025-12-28 |  |  | Skilled Labor/Surveyor [6 h]; Foreman [6 h]; Excavator [56 h]; Pipe with diameter 300mm ; depth: 0 - 1.5m [65.79]; Pipe with diameter 400mm ; depth: 0 - 1.5m [4.01] | 16,223 | 16,223 | CO-R11.S05-SD-170 | 15 | 15 | CB | BF | Each | CB | SD | BACK | CON | R11 | S05 | SD |
|  | IR | **Irrigation Network** |  | 2026-04-25 | 2026-11-09 |  |  |  |  |  |  |  |  |  |  |  |  |  |  |  |  |  |  |  |  |  |  |  |
|  | ML | **Main Line Pipes** |  | 2026-04-25 | 2026-11-09 |  |  |  |  |  |  |  |  |  |  |  |  |  |  |  |  |  |  |  |  |  |  |  |
| CO-R11.S05-IR-100 |  | Trench Excavation and Bedding Works for Main Lines of Irrigation Network-[Road 11]-[SW-5] | 4d | 2026-04-25 A | 2026-04-30 A | ENG-SH-IR-ML-A-110, CO-R11.S05-EW-110, CO-R11.S05-SD-170, ENG-MS-IR-ML-A-110 | 100% |  | 2025-12-29 | 2026-01-01 |  |  | Skilled Labor/Surveyor [4 h]; Foreman [4 h]; Excavator [32 h]; 125 mm pipe; depth 0.0m - 1.5m [167.68] | 12,470.36 | 12,470.36 | CO-R11.S05-IR-100 | 15 | 15 | ML | Ex | LM | ML | IR | EX | CON | R11 | S05 | IR |
| CO-R11.S05-IR-110 |  | Pipes Laying Works for Main Lines of Irrigation Network-[Road 11]-[SW-5] | 7d | 2026-04-25 A | 2026-10-28 | CO-R11.S05-IR-100 SS, PRO-R11-IR-DL-140 FF+3d | 70% | 2d | 2026-01-03 | 2026-01-10 | -60d | 0d | Labor/Helper [112 h]; Skilled Labor/Surveyor [6 h]; Foreman [6 h]; Plumber [56 h]; Excavator [56 h]; 125 mm pipe; depth 0.0m - 1.5m [503.04] | 37,411.08 | 26,187.76 | CO-R11.S05-IR-110 | 15 | 15 | ML | PL | LM | ML | IR | PIPE | CON | R11 | S05 | IR |
| CO-R11.S05-IR-120 |  | Installation Works for Main Line Valves of Irrigation Network-[Road 11]-[SW-5] | 3d | 2026-10-29 | 2026-11-01 | CO-R11.S05-IR-110, PRO-R11-IR-DL-150 FF+3d |  |  |  |  | -60d | 0d | Labor/Helper [96 h]; Skilled Labor/Surveyor [5 h]; Foreman [5 h]; Plumber [96 h]; Gate valves dia (90)mm on pipes with dia (125) mm. [7]; Air valves with dia (50mm) mm on pipes with dia(125)mm. [2]; Air valve chamber; on 125 mm dia pipeline Depth 1.5 - 3 m [2] | 42,350.17 |  | CO-R11.S05-IR-120 | 15 | 15 | ML | VI | Each | ML | IR | VALV | CON | R11 | S05 | IR |
| CO-R11.S05-IR-130 |  | Trench Backfilling and Compaction Works for Main Lines of Irrigation Network-[Road 11]-[SW-5] | 7d | 2026-11-02 | 2026-11-09 | CO-R11.S05-IR-120, CO-R11.S05-IR-110 |  |  |  |  | -60d | 103d | Skilled Labor/Surveyor [6 h]; Foreman [6 h]; Excavator [56 h]; 125 mm pipe; depth 0.0m - 1.5m [83.84] | 6,235.18 |  | CO-R11.S05-IR-130 | 15 | 15 | ML | BF | LM | ML | IR | BACK | CON | R11 | S05 | IR |
|  | TE | **Telecom Network** |  | 2026-07-08 | 2027-01-31 |  |  |  |  |  |  |  |  |  |  |  |  |  |  |  |  |  |  |  |  |  |  |  |
|  | PD | **Ducts Works** |  | 2026-07-08 | 2026-07-13 |  |  |  |  |  |  |  |  |  |  |  |  |  |  |  |  |  |  |  |  |  |  |  |
| CO-R11.S05-TE-100 |  | Trench Excavation and Bedding Works for Ducts of Telecom Network-[Road 11]-[SW-5] | 3d | 2026-07-08 A | 2026-07-13 A | CO-R11.S05-EW-110 | 100% |  | 2026-06-10 | 2026-06-13 |  |  | Skilled Labor/Surveyor [6 h]; Foreman [6 h]; Excavator [56 h]; 6-way ducts, 50mm dia. HDPE [26]; Road crossing ducts (6-way) [2] | 3,819 | 3,819 | CO-R11.S05-TE-100 | 15 | 15 | PD | Ex | LM | DC | TE | DUCTS | CON | R11 | S05 | TE |
| CO-R11.S05-TE-110 |  | Pipes Laying Works for Ducts of Telecom Network-[Road 11]-[SW-5] | 7d | 2026-07-08 A | 2026-07-13 A | CO-R11.S05-TE-100 | 100% |  | 2026-06-29 | 2026-07-06 |  |  | Labor/Helper [112 h]; Skilled Labor/Surveyor [6 h]; Foreman [6 h]; Plumber [56 h]; Excavator [56 h]; JCB [28 h]; Truck [56 h]; 6-way ducts, 50mm dia. HDPE [156]; Road crossing ducts (6-way) [13] | 23,081.5 | 23,081.5 | CO-R11.S05-TE-110 | 15 | 15 | PD | PL | LM | DC | TE | DUCTS | CON | R11 | S05 | TE |
| CO-R11.S05-TE-120 |  | Pouring Plain Concrete Above Ducts of Telecom Network-[Road 11]-[SW-5] | 7d | 2026-07-08 A | 2026-07-13 A | CO-R11.S05-TE-110 | 100% |  | 2026-07-07 | 2026-07-14 |  |  | Skilled Labor/Surveyor [6 h]; Foreman [6 h]; Cons. Carpenter [112 h]; Block Mason [56 h]; 6-way ducts, 50mm dia. HDPE [26]; Road crossing ducts (6-way) [2] | 3,819 | 3,819 | CO-R11.S05-TE-120 | 15 | 15 | PD | PC | LM | DC | TE | DUCTS | CON | R11 | S05 | TE |
| CO-R11.S05-TE-130 |  | Trench Backfilling and Compaction Works for Ducts of Telecom Network-[Road 11]-[SW-5] | 7d | 2026-07-08 A | 2026-07-13 A | CO-R11.S05-TE-120, CO-R11.S05-TE-120 FF+3d | 100% |  | 2026-07-15 | 2026-07-22 |  |  | Skilled Labor/Surveyor [6 h]; Foreman [6 h]; Excavator [56 h]; 6-way ducts, 50mm dia. HDPE [52]; Road crossing ducts (6-way) [4] | 7,638 | 7,638 | CO-R11.S05-TE-130 | 15 | 15 | PD | BF | LM | DC | TE | DUCTS | CON | R11 | S05 | TE |

| ID | WBS | Activity | Duration | Start | Finish | Predecessors | Complete | Planned start | Planned finish | Total float | Free float | Resources | Cost | Actual cost | Activity ID N | Seq | New Seq | 02- Network-WBS | 03- Activity | 04-UOM | 05-Discipline | 01- Network | 07-Weightage System | 08 Stage | 09 Roads | 10 side Walk | Discipline |
| --- | --- | --- | --- | --- | --- | --- | --- | --- | --- | --- | --- | --- | --- | --- | --- | --- | --- | --- | --- | --- | --- | --- | --- | --- | --- | --- | --- |
|  | MH | **Manholes Works** |  | 2027-01-07 | 2027-01-31 |  |  |  |  |  |  |  |  |  |  |  |  |  |  |  |  |  |  |  |  |  |  |
| CO-R11.S05-TE-140 |  | Excavation Works for Manholes of Telecom Network-[Road 11]-[SW-5] | 7d | 2027-01-07 | 2027-01-14 | CO-R10.S03-ES-TE-140, CO-R11.S05-TE-100, CO-R10.S03-WE-TE-140 |  |  |  | -143d | 0d | Skilled Labor/Surveyor [6 h]; Foreman [6 h]; Excavator [56 h]; Manhole Type 2 (2000x1000x1000) [0.4] | 1,256.92 |  | CO-R11.S05-TE-140 | 15 | 15 | MH | Ex | Each | MNH | TE | EXC | CON | R11 | S05 | TE |
| CO-R11.S05-TE-150 |  | Installation Works for Manholes of Telecom Network-[Road 11]-[SW-5] | 7d | 2027-01-16 | 2027-01-23 | CO-R11.S05-TE-140, CO-R10.S03-ES-TE-150, CO-R10.S03-WE-TE-150 |  |  |  | -136d | 0d | Skilled Labor/Surveyor [6 h]; Foreman [6 h]; Excavator [56 h]; Manhole Type 1 (2000x1000x1000) [1]; Manhole Type 2 (2000x1000x1000) [1.2] | 6,886.93 |  | CO-R11.S05-TE-150 | 15 | 15 | MH | HH | Each | MNH | TE | INSTALL-1 | CON | R11 | S05 | TE |
| CO-R11.S05-TE-160 |  | Backfilling Works for Manholes of Telecom Network-[Road 11]-[SW-5] | 7d | 2027-01-24 | 2027-01-31 | CO-R11.S05-TE-150, CO-R10.S03-ES-TE-160, CO-R10.S03-WE-TE-160 |  |  |  | -136d | 5d | Skilled Labor/Surveyor [6 h]; Foreman [6 h]; Excavator [56 h]; Manhole Type 2 (2000x1000x1000) [0.4] | 1,256.92 |  | CO-R11.S05-TE-160 | 15 | 15 | MH | BF | Each | MNH | TE | (New)-2 | CON | R11 | S05 | TE |
|  | MV | **Medium Voltage Network** |  | 2026-07-08 | 2026-07-13 |  |  |  |  |  |  |  |  |  |  |  |  |  |  |  |  |  |  |  |  |  |  |
|  | CW | **Cabling Works** |  | 2026-07-08 | 2026-07-13 |  |  |  |  |  |  |  |  |  |  |  |  |  |  |  |  |  |  |  |  |  |  |
| CO-R11.S05-MV-100 |  | Trench Excavation and Bedding Works for Medium Voltage Network-[Road 11]-[SW-5] | 18d | 2026-07-08 A | 2026-07-13 A | ENG-SH-MV-A-110, CO-R11.S05-SD-170 SS+3d, CO-R11.S05-SD-170 FF+3d, CO-R10.S03-ES-MV-100, ENG-MS-MV-A-110, CO-R10.S03-WE-MV-100 | 100% | 2026-07-22 | 2026-08-11 |  |  | Skilled Labor/Surveyor [15 h]; Foreman [15 h]; Excavator [144 h]; Excavation for Trench size 40cm wide and 80cm deep ( Maximum 1 cable 33kv) [116.33]; Excavation for Trench size 60cm wide and 80cm deep ( for Max two cables 33 kv) [6.62]; Excavation for Trench size 90cm wide and 80cm deep ( Maximum 3 cable 33kv) [29.48]; Excavation for Trench size 120cm wide and 80cm deep ( Maximum 4cable 33kv) [10.03]; Excavation for Trench size 150cm wide and 80cm deep ( Maximum 4cable 33kv) [37.11]; Duct bank for (2) 33 kv cables [4.01]; Duct bank for (4) 33 kv cables [26.48]; Duct bank for (6) 33 kv cables [12.03] | 13,528.75 | 13,528.75 | CO-R11.S05-MV-100 | 15 | 15 | CW | Ex | LM | CW | MV | EXC | CON | R11 | S05 | MV |
| CO-R11.S05-MV-110 |  | Cable Laying Works for Medium Voltage Network-[Road 11]-[SW-5] | 18d | 2026-07-08 A | 2026-07-13 A | CO-R11.S05-MV-100 SS+3d, CO-R11.S05-MV-100 FF+3d, CO-R10.S03-ES-MV-110, CO-R10.S03-WE-MV-110 | 100% | 2026-07-26 | 2026-08-15 |  |  | Labor/Helper [288 h]; Electrician [288 h]; Low Current Technician [288 h]; 33kv 3Cx400 mmï¿½ Al XLPE / LLDPE /PVC Cable [547.57]; 33kv 3Cx400 mmï¿½ Al XLPE /LLDPE/PVC [2.1] | 73,607.1 | 73,607.1 | CO-R11.S05-MV-110 | 15 | 15 | CW | CL | LM | CW | MV | LAY | CON | R11 | S05 | MV |
| CO-R11.S05-MV-120 |  | Trench Backfilling and Compaction Works for Medium Voltage Network-[Road 11]-[SW-5] | 18d | 2026-07-08 A | 2026-07-13 A | CO-R11.S05-MV-110 SS+3d, CO-R11.S05-MV-110 FF+3d, CO-R10.S03-ES-MV-120, CO-R10.S03-WE-MV-120 | 100% | 2026-07-29 | 2026-08-18 |  |  | Skilled Labor/Surveyor [15 h]; Foreman [15 h]; Excavator [144 h]; Water Tank [36 h]; 33kv 3Cx400 mmï¿½ Al XLPE / LLDPE /PVC Cable [234.67]; 33kv 3Cx400 mmï¿½ Al XLPE /LLDPE/PVC [0.9] | 31,545.9 | 31,545.9 | CO-R11.S05-MV-120 | 15 | 15 | CW | BF | LM | CW | MV | BACK | CON | R11 | S05 | MV |
|  | RD | **Road Works** |  | 2026-03-29 | 2026-09-10 |  |  |  |  |  |  |  |  |  |  |  |  |  |  |  |  |  |  |  |  |  |  |
|  | RD | **Pre-Bituminous Construction** |  | 2026-03-29 | 2026-04-21 |  |  |  |  |  |  |  |  |  |  |  |  |  |  |  |  |  |  |  |  |  |  |
| CO-R11.S05-RD-P-100 |  | Capping and Subgrade Layer for Road Works-[Road 11]-[SW-5] | 18d | 2026-03-29 A | 2026-04-04 A | ENG-SH-RD-A-100, CO-R11.S05-SD-130, CO-R11.S05-SW-130, ENG-MS-RD-A-10, CO-R11.S05-TE-130, CO-R11.S05-MV-120 SS+3d, CO-R11.S05-MV-120 FF+3d | 100% | 2026-08-02 | 2026-08-22 |  |  | Labor/Helper [288 h]; Skilled Labor/Surveyor [144 h]; Loader [144 h]; Grader [144 h]; Road Roller [144 h]; Water Tank [144 h]; 300mm capping layer underneath subgrade , CBR?15% [1978.87]; 300mm thick Subgrade, including subgrade preparation, CBR?25% [1978.87] | 153,560.31 | 153,560.31 | CO-R11.S05-RD-P-100 | 15 | 15 | AB | SG | Sq.m | BS | RD |  | CON | R11 | S05 | RD |
| CO-R11.S05-RD-P-110 |  | Aggregate Base Course Layer for Road Works-[Road 11]-[SW-5] | 18d | 2026-04-09 A | 2026-04-21 A | CO-R11.S05-RD-P-100 SS+3d, CO-R11.S05-RD-P-100 FF+3d, CO-R11.S05-SD-170 SS+3d, CO-R11.S05-SD-170 FF+3d | 100% | 2026-08-15 | 2026-09-03 |  |  | Labor/Helper [288 h]; Skilled Labor/Surveyor [144 h]; Foreman [144 h]; Loader [144 h]; Grader [144 h]; Road Roller [144 h]; Aggregate base course 200mm thick after compaction in two layers(Grading 1); CBR?80%; including watering, compaction and testing [1319.38] | 106,962.14 | 106,962.14 | CO-R11.S05-RD-P-110 | 15 | 15 | AB | BA | Sq.m | BS | RD |  | CON | R11 | S05 | RD |
|  | LS | **Pavement Works** |  | 2026-08-25 | 2026-09-10 |  |  |  |  |  |  |  |  |  |  |  |  |  |  |  |  |  |  |  |  |  |  |
| CO-R11.S05-RD-P-120 |  | Fixing of Curbstone for Sidewalks Pavement-[Road 11]-[SW-5] | 18d | 2026-08-25 A | 2026-08-31 A | CO-R10.S03-ES-RD-120, CO-R11.S05-RD-P-110 SS+3d, CO-R11.S05-RD-P-110 FF+3d, CO-R10.S03-WE-RD-120 | 100% | 2026-08-18 | 2026-09-07 |  |  | Labor/Helper [288 h]; Block Mason [864 h]; Precast Concrete Kerb, Type K1 [730.09]; Precast Concrete Kerb, Type L1 [1448.59] | 87,582.94 | 87,582.94 | CO-R11.S05-RD-P-120 | 15 | 15 | LS | CR | LM | LAND | RD |  | CON | R11 | S05 | RD |
| CO-R11.S05-RD-P-130 |  | Fixing of Interlock Tiles for Sidewalks Pavement-[Road 11]-[SW-5] | 10d | 2026-08-25 A | 2026-09-10 A | CO-R11.S05-RD-P-120 SS, CO-R11.S05-RD-P-120 FF+3d, CO-R11-SD-TF-100 | 100% | 2026-09-30 | 2026-10-11 |  |  | Labor/Helper [432 h]; Block Mason [720 h]; Interlocking block pavers for sidewalk/footpath 60mm thick on and including 30mm Sand Bedding, 200mm Aggregate subbase, all in accordance with authority standards and complete as per specifications [1303.74]; Extraover for Pedestrian ramps [3] | 62,461.96 | 62,461.96 | CO-R11.S05-RD-P-130 | 15 | 15 | LS | IL | Sq.m | LAND | RD |  | CON | R11 | S05 | RD |
|  | SW_6 | **SW_6** |  | 2025-04-23 | 2027-04-04 |  |  |  |  |  |  |  |  |  |  |  |  |  |  |  |  |  |  |  |  |  |  |
|  | EW | **Earthworks** |  | 2025-04-23 | 2025-05-03 |  |  |  |  |  |  |  |  |  |  |  |  |  |  |  |  |  |  |  |  |  |  |
|  | EW | **Earthworks** |  | 2025-04-23 | 2025-05-03 |  |  |  |  |  |  |  |  |  |  |  |  |  |  |  |  |  |  |  |  |  |  |
| CO-R11.S06-EW-100 |  | Roadway Excavation Works Upto Design Level for Earthworks-[Road 11]-[SW-6] | 12d | 2025-04-23 A | 2025-04-27 A | ENG-MS-RD-A-10, ENG-SH-RD-A-100, CO-R11.S05-EW-100 | 100% | 2025-08-18 | 2025-08-31 |  |  | Labor/Helper [192 h]; Skilled Labor/Surveyor [24 h]; Foreman [24 h]; Water Tank [192 h]; Dozer [192 h]; Roadway Excavation for cuttings; on any type of material for all depths including trimming and Preparation of excavated surfaces and disposal. [9316.87] | 58,696.28 | 58,696.28 | CO-R11.S06-EW-100 | 16 | 16 | EW | Ex | Cub.m | EW | EW |  | CON | R11 | S06 | EW |
| CO-R11.S06-EW-110 |  | Embankments Works Upto Design Level for Earthworks-[Road 11]-[SW-6] | 12d | 2025-04-26 A | 2025-05-03 A | CO-R11.S06-EW-100, ENG-MS-RD-A-10, ENG-SH-RD-A-100 | 100% | 2025-09-01 | 2025-09-14 |  |  | Labor/Helper [480 h]; Skilled Labor/Surveyor [60 h]; Foreman [60 h]; Water Tank [480 h]; Dozer [480 h]; Embankments to the ROW, with suitable material other than top soil or rock according to specifications [15683.9] | 127,039.18 | 127,039.18 | CO-R11.S06-EW-110 | 16 | 16 | EW | BF | Cub.m | EW | EW |  | CON | R11 | S06 | EW |
|  | SW | **Sewage Network** |  | 2025-09-16 | 2026-07-09 |  |  |  |  |  |  |  |  |  |  |  |  |  |  |  |  |  |  |  |  |  |  |
|  | ML | **Main Line Sections** |  | 2025-09-16 | 2026-07-05 |  |  |  |  |  |  |  |  |  |  |  |  |  |  |  |  |  |  |  |  |  |  |
| CO-R11.S06-SW-100 |  | Trench Excavation and Bedding Works for Main Lines of Sewage Network-[Road 11]-[SW-6] | 12d | 2025-09-16 A | 2026-07-01 A | CO-R11.S06-EW-110, ENG-MS-SW-ML-A-110, ENG-SH-SW-ML-A-110, CO-R11.S05-SW-100 | 100% | 2025-09-15 | 2025-09-29 |  |  | Nominal bore : 200mm; Depth : 0.0m - 1.5m [13.42]; Nominal bore : 200mm; Depth : 1.5m - 2.5m [19.63]; Nominal bore : 200mm; Depth : 2.5m - 3.5m [15.23]; Nominal bore : 200mm; Depth : 3.5m - 4.5m [39.46]; Nominal bore : 200mm; Depth : 4.5m -5.5m [14.83]; Nominal bore : 200mm; Depth : 5.5m - 6.5m [31.04] | 45,880.33 | 45,880.33 | CO-R11.S05-SW-100 | 16 | 16 | ML | Ex | LM | ML | SW | EX | CON | R11 | S06 | SW |
| CO-R11.S06-SW-120 |  | Pipes Laying Works for Main Lines of Sewage Network-[Road 11]-[SW-6] | 12d | 2025-09-20 A | 2026-06-30 A | CO-R11.S06-SW-100, PRO-R11-SW-DL-100 FF+3d | 100% | 2025-09-30 | 2025-10-13 |  |  | Nominal bore : 200mm; Depth : 0.0m - 1.5m [40.25]; Nominal bore : 200mm; Depth : 1.5m - 2.5m [58.9]; Nominal bore : 200mm; Depth : 2.5m - 3.5m [45.68]; Nominal bore : 200mm; Depth : 3.5m - 4.5m [118.39]; Nominal bore : 200mm; Depth : 4.5m -5.5m [44.5]; Nominal bore : 200mm; Depth : 5.5m - 6.5m [93.13] | 137,641 | 137,641 | CO-R11.S05-SW-120 | 16 | 16 | ML | PL | LM | ML | SW | PIPE | CON | R11 | S06 | SW |
| CO-R11.S06-SW-130 |  | Trench Backfilling and Compaction Works for Main Lines of Sewage Network-[Road 11]-[SW-6] | 10d | 2025-09-29 A | 2026-07-05 A | CO-R11.S06-SW-120 | 100% | 2025-10-14 | 2025-10-25 |  |  | Nominal bore : 200mm; Depth : 0.0m - 1.5m [6.71]; Nominal bore : 200mm; Depth : 1.5m - 2.5m [9.82]; Nominal bore : 200mm; Depth : 2.5m - 3.5m [7.61]; Nominal bore : 200mm; Depth : 3.5m - 4.5m [19.73]; Nominal bore : 200mm; Depth : 4.5m -5.5m [7.42]; Nominal bore : 200mm; Depth : 5.5m - 6.5m [15.52] | 22,940.17 | 22,940.17 | CO-R11.S05-SW-130 | 16 | 16 | ML | BF | LM | ML | SW | BACK | CON | R11 | S06 | SW |

| ID | WBS | Activity | Duration | Start | Finish | Predecessors | Complete | Planned start | Planned finish | Resources | Cost | Actual cost | Activity ID N | Seq | New Seq | 01- Network | 07-Weightage System | 08 Stage | 09 Roads | 10 side Walk | Discipline | 02- Network-WBS | 03- Activity | 04-UOM | 05-Discipline |
| --- | --- | --- | --- | --- | --- | --- | --- | --- | --- | --- | --- | --- | --- | --- | --- | --- | --- | --- | --- | --- | --- | --- | --- | --- | --- |
|  | 1 | **Manholes** |  | 2026-04-01 | 2026-07-09 |  |  |  |  |  |  |  |  |  |  |  |  |  |  |  |  |  |  |  |  |
| CO-R11.S06-SW-160 |  | Excavation Works for Main Line Manholes of Sewage Network-[Road 11]-[SW-6] | 1d | 2026-04-01 A | 2026-04-05 A | CO-R11.S06-SW-120 SS | 100% | 2025-09-30 | 2025-09-30 | Depth: not exceeding 1.5m [0.15]; Depth: 1.5 - 2.5m [0.45]; Depth: 2.5 - 3.5m [0.3]; Depth: 5.5 - 6.5m [0.6]; Depth:6.5 - 7.5m [0.15] | 27,145.15 | 27,145.15 | CO-R11.S05-SW-160 | 16 | 16 | SW | EX | CON | R11 | S06 | SW |  |  |  |  |
| CO-R11.S06-SW-170 |  | Installation RC Footing Works for Main Line Manholes of Sewage Network-[Road 11]-[SW-6] | 2d | 2026-04-01 A | 2026-04-06 A | CO-R11.S06-SW-160, PRO-R11-SW-DL-110 FF+3d | 100% | 2025-10-01 | 2025-10-02 | Depth: not exceeding 1.5m [0.1]; Depth: 1.5 - 2.5m [0.3]; Depth: 2.5 - 3.5m [0.2]; Depth: 5.5 - 6.5m [0.4]; Depth:6.5 - 7.5m [0.1] | 18,096.77 | 18,096.77 | CO-R11.S05-SW-170 | 16 | 16 | SW | RC F | CON | R11 | S06 | SW |  |  |  |  |
| CO-R11.S06-SW-180 |  | Install Grp Liner Wall Works for Main Line Manholes of Sewage Network-[Road 11]-[SW-6] | 4d | 2026-04-02 A | 2026-07-01 A | CO-R11.S06-SW-170 SS | 100% | 2025-10-04 | 2025-10-07 | Depth: not exceeding 1.5m [0.4]; Depth: 1.5 - 2.5m [1.2]; Depth: 2.5 - 3.5m [0.8]; Depth: 5.5 - 6.5m [1.6]; Depth:6.5 - 7.5m [0.4] | 72,387.07 | 72,387.07 | CO-R11.S05-SW-180 | 16 | 16 | SW | LP | CON | R11 | S06 | SW |  |  |  |  |
| CO-R11.S06-SW-190 |  | Pouring Grp Liner Wall Works for Main Line Manholes of Sewage Network-[Road 11]-[SW-6] | 1d | 2026-07-01 A | 2026-07-06 A | CO-R11.S06-SW-170 | 100% | 2025-10-08 | 2025-10-08 | Depth: not exceeding 1.5m [0.05]; Depth: 1.5 - 2.5m [0.15]; Depth: 2.5 - 3.5m [0.1]; Depth: 5.5 - 6.5m [0.2]; Depth:6.5 - 7.5m [0.05] | 9,048.38 | 9,048.38 | CO-R11.S05-SW-190 | 16 | 16 | SW | (New) | CON | R11 | S06 | SW |  |  |  |  |
| CO-R11.S06-SW-200 |  | Backfilling Works for Main Line Manholes of Sewage Network-[Road 11]-[SW-6] | 4d | 2026-07-01 A | 2026-07-09 A | CO-R11.S06-SW-190 | 100% | 2025-10-09 | 2025-10-13 | Depth: not exceeding 1.5m [0.15]; Depth: 1.5 - 2.5m [0.45]; Depth: 2.5 - 3.5m [0.3]; Depth: 5.5 - 6.5m [0.6]; Depth:6.5 - 7.5m [0.15] | 27,145.15 | 27,145.15 | CO-R11.S05-SW-200 | 16 | 16 | SW | BACK | CON | R11 | S06 | SW |  |  |  |  |
| CO-R11.S06-SW-210 |  | Testing Works for Main Line Manholes of Sewage Network-[Road 11]-[SW-6] | 1d | 2026-07-01 A | 2026-07-09 A | CO-R11.S06-SW-200, CO-R11.S06-SW-180 | 100% | 2026-10-15 | 2026-10-15 | Depth: not exceeding 1.5m [0.05]; Depth: 1.5 - 2.5m [0.15]; Depth: 2.5 - 3.5m [0.1]; Depth: 5.5 - 6.5m [0.2]; Depth:6.5 - 7.5m [0.05] | 9,048.38 | 9,048.38 | CO-R11.S05-SW-210 | 16 | 16 | SW | T&COV | CON | R11 | S06 | SW |  |  |  |  |
|  | SD | **Storm Drainage Network** |  | 2025-08-05 | 2026-07-07 |  |  |  |  |  |  |  |  |  |  |  |  |  |  |  |  |  |  |  |  |
|  | ML | **Main Line Sections** |  | 2025-08-05 | 2025-08-14 |  |  |  |  |  |  |  |  |  |  |  |  |  |  |  |  |  |  |  |  |
| CO-R11.S06-SD-100 |  | Trench Excavation and Bedding Works for Main Lines of Storm Drainage Network-[Road 11]-[SW-6] | 10d | 2025-08-05 A | 2025-08-06 A | CO-R11.S06-EW-110, CO-R11.S06-EW-100, CO-R11.S06-SW-130 SS+3d, CO-R11.S06-SW-130 FF+3d, CO-R11.S05-SD-100 | 100% | 2025-11-06 | 2025-11-17 | Skilled Labor/Surveyor [12 h]; Foreman [12 h]; Excavator [112 h]; Pipe with diameter 500mm ; depth: 1.51m - 2.5m [127.98]; Pipe with diameter 600mm ; depth: 1.51m - 2.5m [11.46]; Pipe with diameter 700mm ; depth: 1.51m - 2.5m [21.04]; Pipe with diameter 800mm ; depth: 1.51m - 2.5m [41.02]; Pipe with diameter 1000mm ; depth: 1.51m - 2.5m [35.2]; Pipe with diameter 1000mm ; depth: 2.51 - 3.5m [35.2] | 133,875.61 | 133,875.61 | CO-R11.S06-SD-100 | 16 | 16 | SD | EX | CON | R11 | S06 | SD | ML | Ex | LM | ML |
| CO-R11.S06-SD-120 |  | Pipes Laying Works for Main Lines of Storm Drainage Network-[Road 11]-[SW-6] | 10d | 2025-08-07 A | 2025-08-09 A | PRO-R11-SD-DL-120 FF+3d, CO-R11.S06-SD-100, CO-R11.S05-SD-120 | 100% | 2025-11-18 | 2025-11-29 | Labor/Helper [240 h]; Skilled Labor/Surveyor [12 h]; Foreman [12 h]; Plumber [120 h]; Excavator [120 h]; Pipe with diameter 500mm ; depth: 1.51m - 2.5m [383.93]; Pipe with diameter 600mm ; depth: 1.51m - 2.5m [34.39]; Pipe with diameter 700mm ; depth: 1.51m - 2.5m [63.13]; Pipe with diameter 800mm ; depth: 1.51m - 2.5m [123.06]; Pipe with diameter 1000mm ; depth: 1.51m - 2.5m [105.6]; Pipe with diameter 1000mm ; depth: 2.51 - 3.5m [105.6] | 401,626.83 | 401,626.83 | CO-R11.S06-SD-120 | 16 | 16 | SD | PIPE | CON | R11 | S06 | SD | ML | PL | LM | ML |
| CO-R11.S06-SD-130 |  | Trench Backfilling and Compaction Works for Main Lines of Storm Drainage Network-[Road 11]-[SW-6] | 15d | 2025-08-10 A | 2025-08-14 A | CO-R11.S06-SD-120 SS+3d, CO-R11.S06-SD-120 FF+3d, CO-R10.S04-ES-SD-130, CO-R11.S06-SD-120, CO-R11.S06-SD-220 FF, CO-R10.S04-WE-SD-130 | 100% | 2026-01-04 | 2026-01-20 | Skilled Labor/Surveyor [12 h]; Foreman [12 h]; Excavator [120 h]; Pipe with diameter 500mm ; depth: 1.51m - 2.5m [63.99]; Pipe with diameter 600mm ; depth: 1.51m - 2.5m [5.73]; Pipe with diameter 700mm ; depth: 1.51m - 2.5m [10.52]; Pipe with diameter 800mm ; depth: 1.51m - 2.5m [20.51]; Pipe with diameter 1000mm ; depth: 1.51m - 2.5m [17.6]; Pipe with diameter 1000mm ; depth: 2.51 - 3.5m [17.6] | 66,937.8 | 66,937.8 | CO-R11.S06-SD-130 | 16 | 16 | SD | BACK | CON | R11 | S06 | SD | ML | BF | LM | ML |
|  | MH | **Manholes** |  | 2026-03-31 | 2026-04-06 |  |  |  |  |  |  |  |  |  |  |  |  |  |  |  |  |  |  |  |  |
| CO-R11.S06-SD-180 |  | Trench Excavation and Bedding Works for Manholes of Storm Drainage Network-[Road 11]-[SW-6] | 1d | 2026-03-31 A | 2026-03-31 A | CO-R11.S06-SD-120 SS, PRO-SD-1DL-100 | 100% | 2025-11-18 | 2025-11-18 | Labor/Helper [24 h]; Skilled Labor/Surveyor [12 h]; Excavator [24 h]; MH ; depth: 0.0m - 1.5m [0.15]; MH ; depth: 1.51m - 2.5m [0.45]; MH ; depth: 2.51 - 3.5m [0.15]; MH ; depth: 1.51m - 2.5m [0.3]; MH ; depth: 2.51 - 3.5m [0.3] | 34,921.54 | 34,921.54 | CO-R11.S06-SD-180 | 16 | 16 | SD | EX | CON | R11 | S06 | SD |  |  |  |  |
| CO-R11.S06-SD-190 |  | Install RC Footing Works for Manholes of Storm Drainage Network-[Road 11]-[SW-6] | 1d | 2026-04-01 A | 2026-04-01 A | CO-R11.S06-SD-180 | 100% | 2025-11-19 | 2025-11-19 | Cons. Carpenter [48 h]; Steel Fixer [48 h]; MH ; depth: 0.0m - 1.5m [0.05]; MH ; depth: 1.51m - 2.5m [0.15]; MH ; depth: 2.51 - 3.5m [0.05]; MH ; depth: 1.51m - 2.5m [0.1]; MH ; depth: 2.51 - 3.5m [0.1] | 11,640.51 | 11,640.51 | CO-R11.S06-SD-190 | 16 | 16 | SD | RC F | CON | R11 | S06 | SD |  |  |  |  |
| CO-R11.S06-SD-200 |  | Install RC Wall Rings & Slab Works for Manholes of Storm Drainage Network-[Road 11]-[SW-6] | 4d | 2026-04-02 A | 2026-04-05 A | CO-R11.S06-SD-190 | 100% | 2025-11-20 | 2025-11-24 | Cons. Carpenter [128 h]; Steel Fixer [128 h]; MH ; depth: 0.0m - 1.5m [0.45]; MH ; depth: 1.51m - 2.5m [1.35]; MH ; depth: 2.51 - 3.5m [0.45]; MH ; depth: 1.51m - 2.5m [0.9]; MH ; depth: 2.51 - 3.5m [0.9] | 104,764.62 | 104,764.62 | CO-R11.S06-SD-200 | 16 | 16 | SD | RC W | CON | R11 | S06 | SD |  |  |  |  |
| CO-R11.S06-SD-210 |  | Testing Works for Manholes of Storm Drainage Network-[Road 11]-[SW-6] | 1d | 2026-04-05 A | 2026-04-06 A | CO-R11.S06-SD-200 | 100% | 2025-11-25 | 2025-11-25 | Labor/Helper [24 h]; Plumber [24 h]; MH ; depth: 0.0m - 1.5m [0.1]; MH ; depth: 1.51m - 2.5m [0.3]; MH ; depth: 2.51 - 3.5m [0.1]; MH ; depth: 1.51m - 2.5m [0.2]; MH ; depth: 2.51 - 3.5m [0.2] | 23,281.03 | 23,281.03 | CO-R11.S06-SD-210 | 16 | 16 | SD | T&COV | CON | R11 | S06 | SD |  |  |  |  |
| CO-R11.S06-SD-220 |  | Backfilling Works for Manholes of Storm Drainage Network-[Road 11]-[SW-6] | 7d | 2026-04-05 A | 2026-04-06 A | CO-R11.S06-SD-210 | 100% | 2025-11-26 | 2025-12-03 | Labor/Helper [112 h]; Skilled Labor/Surveyor [56 h]; Excavator [112 h]; MH ; depth: 0.0m - 1.5m [0.2]; MH ; depth: 1.51m - 2.5m [0.6]; MH ; depth: 2.51 - 3.5m [0.2]; MH ; depth: 1.51m - 2.5m [0.4]; MH ; depth: 2.51 - 3.5m [0.4] | 46,562.05 | 46,562.05 | CO-R11.S06-SD-220 | 16 | 16 | SD | BACK | CON | R11 | S06 | SD |  |  |  |  |
|  | CB | **Catch Basin Sections** |  | 2026-06-14 | 2026-07-07 |  |  |  |  |  |  |  |  |  |  |  |  |  |  |  |  |  |  |  |  |
| CO-R11.S06-SD-160 |  | Testing Works for Catch Basins of Storm Drainage Network-[Road 11]-[SW-6] | 6d | 2026-06-14 A | 2026-06-20 A | CO-R11.S06-SD-150, CO-R11.S06-SD-120, PRO-R11-SD-DL-110 FF+3d | 100% | 2026-01-07 | 2026-01-13 | Labor/Helper [96 h]; Skilled Labor/Surveyor [5 h]; Foreman [5 h]; Plumber [48 h]; Excavator [48 h]; Pipe with diameter 300mm ; depth: 0 - 1.5m [32.89]; Pipe with diameter 400mm ; depth: 0 - 1.5m [2.01] | 8,111.5 | 8,111.5 | CO-R11.S06-SD-160 | 16 | 16 | SD | TEST | CON | R11 | S06 | SD | CB | PL | Each | CB |
| CO-R11.S06-SD-140 |  | Trench Excavation and Bedding Works for Catch Basins of Storm Drainage Network-[Road 11]-[SW-6] | 7d | 2026-06-24 A | 2026-07-01 A | CO-R11.S06-EW-110, CO-R11.S06-SD-220, CO-R11.S05-SD-140 | 100% | 2025-12-04 | 2025-12-11 | Skilled Labor/Surveyor [6 h]; Foreman [6 h]; Excavator [56 h]; Pipe with diameter 300mm ; depth: 0 - 1.5m [49.34]; Pipe with diameter 400mm ; depth: 0 - 1.5m [3.01] | 12,167.25 | 12,167.25 | CO-R11.S06-SD-140 | 16 | 16 | SD | EX | CON | R11 | S06 | SD | CB | Ex | Each | CB |
| CO-R11.S06-SD-150 |  | Installation and Pipes Laying Connection Works for Catch Basins of Storm Drainage Network-[Road 11]-[SW-6] | 7d | 2026-06-27 A | 2026-07-01 A | CO-R11.S06-SD-140, PRO-R11-SD-DL-130 FF+3d | 100% | 2025-12-30 | 2026-01-06 | Labor/Helper [160 h]; Skilled Labor/Surveyor [8 h]; Foreman [8 h]; Excavator [80 h]; Pipe with diameter 300mm ; depth: 0 - 1.5m [148.02]; Pipe with diameter 400mm ; depth: 0 - 1.5m [9.03] | 36,501.76 | 36,501.76 | CO-R11.S06-SD-150 | 16 | 16 | SD | INSTALL | CON | R11 | S06 | SD | CB | CB | Each | CB |
| CO-R11.S06-SD-170 |  | Trench Backfilling and Compaction Works for Catch Basins of Storm Drainage Network-[Road 11]-[SW-6] | 7d | 2026-06-30 A | 2026-07-07 A | CO-R11.S06-SD-160 | 100% | 2026-01-14 | 2026-01-21 | Skilled Labor/Surveyor [6 h]; Foreman [6 h]; Excavator [56 h]; Pipe with diameter 300mm ; depth: 0 - 1.5m [65.79]; Pipe with diameter 400mm ; depth: 0 - 1.5m [4.01] | 16,223 | 16,223 | CO-R11.S06-SD-170 | 16 | 16 | SD | BACK | CON | R11 | S06 | SD | CB | BF | Each | CB |
|  | PW | **Potable Water Network** |  | 2025-08-14 | 2027-01-19 |  |  |  |  |  |  |  |  |  |  |  |  |  |  |  |  |  |  |  |  |
|  | ML | **Main Line Sections** |  | 2025-08-14 | 2025-08-21 |  |  |  |  |  |  |  |  |  |  |  |  |  |  |  |  |  |  |  |  |
| CO-R11.S06-PW-100 |  | Trench Excavation and Bedding Works for Main Lines of Potable Water Network-[Road 11]-[SW-6] | 6d | 2025-08-14 A | 2025-08-16 A | CO-R11.S06-EW-110, CO-R11.S06-EW-100, CO-R11.S06-SD-130 | 100% | 2026-01-21 | 2026-01-27 | Skilled Labor/Surveyor [5 h]; Foreman [5 h]; Excavator [48 h]; Pipe with diameter 200mm; in depth 0.0m - 1.5m [159.83] | 23,237.1 | 23,237.1 | CO-R11.S06-PW-100 | 16 | 16 | PW | EX | CON | R11 | S06 | PW | ML | Ex | LM | ML |
| CO-R11.S06-PW-110 |  | Pipes Laying and accessories for Main Lines of Potable Water Network-[Road 11]-[SW-6] | 10d | 2025-08-17 A | 2025-08-18 A | CO-R11.S06-PW-100, CO-R10.S04-ES-PW-110 SS, PRO-R11-PW-DL-100 FF+3d, CO-R10.S04-WE-PW-110 SS | 100% | 2026-01-28 | 2026-02-08 | Labor/Helper [160 h]; Skilled Labor/Surveyor [8 h]; Foreman [8 h]; Plumber [80 h]; Excavator [80 h]; Pipe with diameter 200mm; in depth 0.0m - 1.5m [399.56] | 58,092.76 | 58,092.76 | CO-R11.S06-PW-110 | 16 | 16 | PW | PIPE | CON | R11 | S06 | PW | ML | PL | LM | ML |
| CO-R11.S06-PW-130 |  | Trench Backfilling and Compaction Works for Main Lines of Potable Water Network-[Road 11]-[SW-6] | 10d | 2025-08-19 A | 2025-08-21 A | CO-R11.S06-PW-110, CO-R10.S04-ES-PW-130, CO-R10.S04-WE-PW-130 | 100% | 2026-02-17 | 2026-02-28 | Skilled Labor/Surveyor [8 h]; Foreman [8 h]; Eq. Operator [8 h]; Loader [80 h]; Compactor [80 h]; Water Tank [20 h]; Pipe with diameter 200mm; in depth 0.0m - 1.5m [159.83] | 23,237.1 | 23,237.1 | CO-R11.S06-PW-130 | 16 | 16 | PW | BACK | CON | R11 | S06 | PW | ML | BF | LM | ML |

| ID | WBS | Activity | Duration | Start | Finish | Predecessors | Complete | Planned start | Planned finish | Total float | Free float | Resources | Cost | Actual cost | Activity ID N | Seq | New Seq | 02- Network-WBS | 03- Activity | 04-UOM | 05-Discipline | 01- Network | 07-Weightage System | 08 Stage | 09 Roads | 10 side Walk | Discipline |
| --- | --- | --- | --- | --- | --- | --- | --- | --- | --- | --- | --- | --- | --- | --- | --- | --- | --- | --- | --- | --- | --- | --- | --- | --- | --- | --- | --- |
|  | VC | **Valve Chamber** |  | 2026-10-27 | 2026-11-02 |  |  |  |  |  |  |  |  |  |  |  |  |  |  |  |  |  |  |  |  |  |  |
| CO-R11.S06-PW-210 |  | Installation Works for Main Line Valves and Valve Chambers of Potable Water Network-[Road 11]-[SW-6] | 6d | 2026-10-27 | 2026-11-02 | CO-R11.S06-PW-100 |  |  |  | -54d | 109d | Labor/Helper [8 h]; Plumber [8 h]; Gate valves dia(200)mm on pipes with dia (200) mm. [6] | 15,887.04 |  | CO-R11.S06-PW-210 | 16 | 16 | ML | VI | Each | ML | PW | INSUL | CON | R11 | S06 | PW |
|  | FH | **Fire Hydrant** |  | 2026-12-27 | 2027-01-19 |  |  |  |  |  |  |  |  |  |  |  |  |  |  |  |  |  |  |  |  |  |  |
| CO-R11.S06-PW-140 |  | Excavation Works for Fire Hydrants of Potable Water Network-[Road 11]-[SW-6] | 7d | 2026-12-27 | 2027-01-03 | CO-R11.S06-PW-110 SS+3d, CO-R11.S06-PW-110 FF+3d, CO-R11.S06-EW-110, PRO-R11-PW-DL-110 |  |  |  | -121d | 0d | Skilled Labor/Surveyor [6 h]; Foreman [6 h]; Excavator [56 h]; 3-outlet fire hydrant (2 x 2.5 inch and 1 x 4 inch) in the form of a separate dry vacuum cylinder [0.75] | 5,680.76 |  | CO-R11.S06-PW-140 | 16 | 16 | FH | Ex | Each | FH | PW | EX | CON | R11 | S06 | PW |
| CO-R11.S06-PW-150 |  | Installation Works for Fire Hydrant of Potable Water Network-[Road 11]-[SW-6] | 7d | 2027-01-04 | 2027-01-11 | CO-R11.S06-PW-140, PRO-R11-PW-DL-120 FF+3d |  |  |  | -121d | 0d | Labor/Helper [112 h]; Skilled Labor/Surveyor [6 h]; Foreman [6 h]; Plumber [112 h]; 3-outlet fire hydrant (2 x 2.5 inch and 1 x 4 inch) in the form of a separate dry vacuum cylinder [3.25] | 24,616.64 |  | CO-R11.S06-PW-150 | 16 | 16 | FH | FH | Each | FH | PW | INSTALL | CON | R11 | S06 | PW |
| CO-R11.S06-PW-160 |  | Trench Backfilling and Compaction Works for Fire Hydrants of Potable Water Network-[Road 11]-[SW-6] | 7d | 2027-01-12 | 2027-01-19 | CO-R11.S06-PW-150 |  |  |  | -121d | 42d | Skilled Labor/Surveyor [6 h]; Foreman [6 h]; Excavator [56 h]; 3-outlet fire hydrant (2 x 2.5 inch and 1 x 4 inch) in the form of a separate dry vacuum cylinder [1] | 7,574.35 |  | CO-R11.S06-PW-160 | 16 | 16 | FH | BF | Each | FH | PW | BACK | CON | R11 | S06 | PW |
|  | SL | **Street Lighting Network** |  | 2026-07-07 | 2027-04-04 |  |  |  |  |  |  |  |  |  |  |  |  |  |  |  |  |  |  |  |  |  |  |
|  | LP | **Lighting Poles Works** |  | 2026-07-07 | 2027-01-20 |  |  |  |  |  |  |  |  |  |  |  |  |  |  |  |  |  |  |  |  |  |  |
| CO-R11.S06-SL-100 |  | Foundation Excavation Works for Lighting Poles of Street Lighting Network-[Road 11]-[SW-6] | 12d | 2026-07-07 A | 2026-07-13 A | CO-R11.S06-EW-110, CO-R11.S06-EW-100, CO-R11.S06-PW-130 | 100% | 2026-03-01 | 2026-03-14 |  |  | Labor/Helper [288 h]; Skilled Labor/Surveyor [144 h]; Excavator [288 h]; Lighting poles with one arm, including the power distribution box, screws, cables, 12 meters in height. [1.4] | 2,664.86 | 2,664.86 | CO-R11.S06-SL-100 | 16 | 16 | LP | Ex | Each | POL | SL | EX | CON | R11 | S06 | SL |
| CO-R11.S06-SL-110 |  | Installation Works for Lighting Poles Foundation of Street Lighting Network-[Road 11]-[SW-6] | 10d | 2026-07-07 A | 2026-07-13 A | CO-R11.S06-SL-100, PRO-R11-SL-DL-110 FF+3d | 100% | 2026-03-30 | 2026-04-09 |  |  | Labor/Helper [384 h]; Skilled Labor/Surveyor [20 h]; Foreman [20 h]; Eq. Operator [20 h]; Loader [48 h]; Reinforced concrete foundation, for 12m high lighting columns With Drawpits [28] | 10,186.68 | 10,186.68 | CO-R11.S06-SL-110 | 16 | 16 | LP | LPF | Each | POL | SL | INSTALL | CON | R11 | S06 | SL |
| CO-R11.S06-SL-120 |  | Installation Works for Lighting Poles of Street Lighting Network-[Road 11]-[SW-6] | 18d | 2026-07-07 A | 2026-07-13 A | CO-R11.S06-SL-110 SS+5d, CO-R11.S06-SL-110 FF+5d, PRO-R11-SL-DL-120 FF+3d | 100% | 2026-04-05 | 2026-04-25 |  |  | Labor/Helper [144 h]; Electrician [144 h]; Lighting poles with one arm, including the power distribution box, screws, cables, 12 meters in height. [15.4] | 29,313.44 | 29,313.44 | CO-R11.S06-SL-120 | 16 | 16 | LP | LP | Each | POL | SL | POLES | CON | R11 | S06 | SL |
| CO-R11.S06-SL-210 |  | Backfilling Works for Lighting Poles of Street Lighting Network-[Road 11]-[SW-6] | 15d | 2026-10-27 | 2026-11-12 | CO-R11.S06-SL-120 SS, CO-R11.S06-SL-120 FF, CO-R14.S08-SL-210 |  |  |  | -48.5d | 0d | Labor/Helper [240 h]; Skilled Labor/Surveyor [120 h]; Excavator [240 h]; Lighting poles with one arm, including the power distribution box, screws, cables, 12 meters in height. [5.6] | 10,659.43 |  | CO-R11.S06-SL-210 | 16 | 16 |  |  |  |  | SL | BACK | CON | R11 | S06 | SL |
| CO-R11.S06-SL-200 |  | Testing Works for Lighting Poles of Street Lighting Network-[Road 11]-[SW-6] | 7d | 2026-11-14 | 2026-11-21 | CO-R11.S06-SL-210, CO-R11.S06-SL-120 |  |  |  | -48.5d | 52d | Labor/Helper [168 h]; Electrician [168 h]; Lighting poles with one arm, including the power distribution box, screws, cables, 12 meters in height. [5.6] | 10,659.43 |  | CO-R11.S06-SL-200 | 16 | 16 |  |  |  |  | SL | TESTING | CON | R11 | S06 | SL |
| CO-R11.S06-SL-130 |  | Installation Works for Lighting Fixtures With Drop Wire of Street Lighting Network-[Road 11]-[SW-6] | 18d | 2026-12-31 | 2027-01-20 | CO-R11.S06-SL-120, CO-R10.S04-ES-SL-130, PRO-R11-SL-DL-140 FF+3d, CO-R11.S06-SL-200 FF, CO-R10.S04-WE-SL-130 |  |  |  | -100.5d | 0d | Labor/Helper [288 h]; Electrician [288 h]; Manlift [288 h]; Street Lighting( LED) Luminaire,(Type C) complete with control gear and lamp, ?.17000 Lumen [28] | 16,771.44 |  | CO-R11.S06-SL-130 | 16 | 16 | LP | LPA | Each | POL | SL | INSTALL | CON | R11 | S06 | SL |
|  | CW | **Cabling Works** |  | 2026-07-09 | 2026-11-07 |  |  |  |  |  |  |  |  |  |  |  |  |  |  |  |  |  |  |  |  |  |  |
| CO-R11.S06-SL-140 |  | Trench Excavation and Bedding Works for Street Lighting Network-[Road 11]-[SW-6] | 10d | 2026-07-09 A | 2026-07-13 A | CO-R11.S06-EW-110, CO-R11.S06-SL-120, CO-R11.S06-SL-110 | 100% | 2026-04-26 | 2026-05-06 |  |  | Labor/Helper [80 h]; Skilled Labor/Surveyor [40 h]; Excavator [80 h] |  |  | CO-R11.S06-SL-140 | 16 | 16 | CW | Ex | LM | CB | SL | EXC | CON | R11 | S06 | SL |
| CO-R11.S06-SL-150 |  | Cable Laying Works for Street Lighting Network-[Road 11]-[SW-6] | 10d | 2026-07-09 A | 2026-07-13 A | CO-R11.S06-SL-140, PRO-R11-SL-DL-100 FF+3d | 100% | 2026-05-07 | 2026-05-18 |  |  | Labor/Helper [80 h]; Electrician [80 h]; Low Current Technician [80 h]; Supply, installation , test and operation of cables, Copper, (4Cx25mmï¿½,Cu/XLPE/SWA/PVC +1x16mmï¿½ PVC/PVC) [1105.65] | 51,854.99 | 51,854.99 | CO-R11.S06-SL-150 | 16 | 16 | CW | CL | LM | CB | SL | LAYING | CON | R11 | S06 | SL |
| CO-R11.S06-SL-160 |  | Trench Backfilling and Compaction Works for Street Lighting Network-[Road 11]-[SW-6] | 10d | 2026-10-27 | 2026-11-07 | CO-R11.S06-SL-150 |  |  |  | -84d | 81d | Skilled Labor/Surveyor [8 h]; Foreman [8 h]; Excavator [80 h]; Water Tank [20 h]; Supply, installation , test and operation of cables, Copper, (4Cx25mmï¿½,Cu/XLPE/SWA/PVC +1x16mmï¿½ PVC/PVC) [85.05] | 3,988.84 |  | CO-R11.S06-SL-160 | 16 | 16 | CW | BF | LM | CB | SL | BACK | CON | R11 | S06 | SL |
|  | DPB | **Distrubution Panel Boards** |  | 2027-02-17 | 2027-04-04 |  |  |  |  |  |  |  |  |  |  |  |  |  |  |  |  |  |  |  |  |  |  |
| CO-R11.S06-SL-170 |  | Foundation Excavation Works For Panel Boards of Street Lighting Network-[Road 11]-[SW-6] | 12d | 2027-02-17 | 2027-03-03 | CO-R11.S06-EW-110, CO-R10.S04-ES-SL-170, CO-R10.S04-WE-SL-170 |  |  |  | -212d | 0d | Labor/Helper [96 h]; Skilled Labor/Surveyor [48 h]; Excavator [96 h] |  |  | CO-R11.S06-SL-170 | 16 | 16 | DB | Ex | Each | DS | SL | EXC | CON | R11 | S06 | SL |
| CO-R11.S06-SL-180 |  | Installation Works for Panel Board Concrete Foundations of Street Lighting Network-[Road 11]-[SW-6] | 12d | 2027-03-04 | 2027-03-21 | CO-R11.S06-SL-170, CO-R10.S04-ES-SL-180, CO-R10.S04-WE-SL-180 |  |  |  | -212d | 0d | Skilled Labor/Surveyor [10 h]; Foreman [10 h]; Excavator [96 h]; Water Tank [24 h] |  |  | CO-R11.S06-SL-180 | 16 | 16 | DB | PBF | Each | DS | SL | INSTALL | CON | R11 | S06 | SL |
| CO-R11.S06-SL-190 |  | Installation Works for Lighting Panel Boards of Street Lighting Network-[Road 11]-[SW-6] | 12d | 2027-03-22 | 2027-04-04 | CO-R11.S06-SL-180, CO-R10.S04-ES-SL-190, CO-R10.S04-WE-SL-190 |  |  |  | -212d | 0d | Labor/Helper [96 h]; Electrician [96 h] |  |  | CO-R11.S06-SL-190 | 16 | 16 | DB | PB | Each | DS | SL | INST BO | CON | R11 | S06 | SL |
| CO-R11.S06-SL-220 |  | A wall of concrete blocks to install the KWH meter of Street Lighting Network-[Road 11]-[SW-6] | 12d | 2027-03-22 | 2027-04-04 | CO-R11.S06-SL-180 |  |  |  | -206d | 0d | Block Mason [288 h]; Road crossing ducts, 4 way (4 x 100mm PVC) [62.4]; Drawpit with medium duty steel cover, size 900x900x1200mm, Type 4 [4] | 18,010.67 |  | CO-R11.S06-SL-220 | 16 | 16 | DB |  | Each | DS | SL | wall | CON | R11 | S06 | SL |
|  | TE | **Telecom Network** |  | 2026-07-09 | 2027-03-07 |  |  |  |  |  |  |  |  |  |  |  |  |  |  |  |  |  |  |  |  |  |  |
|  | PD | **Ducts Works** |  | 2026-07-09 | 2026-07-12 |  |  |  |  |  |  |  |  |  |  |  |  |  |  |  |  |  |  |  |  |  |  |
| CO-R11.S06-TE-100 |  | Trench Excavation and Bedding Works for Ducts of Telecom Network-[Road 11]-[SW-6] | 3d | 2026-07-09 A | 2026-07-12 A | CO-R11.S06-EW-110, CO-R11.S05-TE-100 | 100% | 2026-06-14 | 2026-06-16 |  |  | Skilled Labor/Surveyor [6 h]; Foreman [6 h]; Excavator [56 h]; 6-way ducts, 50mm dia. HDPE [26]; Road crossing ducts (6-way) [2] | 3,819 | 3,819 | CO-R11.S06-TE-100 | 16 | 16 | PD | Ex | LM | DC | TE | DUCTS | CON | R11 | S06 | TE |
| CO-R11.S06-TE-110 |  | Pipes Laying Works for Ducts of Telecom Network-[Road 11]-[SW-6] | 7d | 2026-07-09 A | 2026-07-12 A | CO-R11.S06-TE-100, PRO-R11-TE-DL-100 FF+3d | 100% | 2026-07-07 | 2026-07-14 |  |  | Labor/Helper [224 h]; Skilled Labor/Surveyor [12 h]; Foreman [12 h]; Plumber [112 h]; Excavator [112 h]; JCB [56 h]; Truck [112 h]; 6-way ducts, 50mm dia. HDPE [156]; Road crossing ducts (6-way) [13] | 23,081.5 | 23,081.5 | CO-R11.S06-TE-110 | 16 | 16 | PD | PL | LM | DC | TE | DUCTS | CON | R11 | S06 | TE |
| CO-R11.S06-TE-120 |  | Pouring Plain Concrete Above Ducts of Telecom Network-[Road 11]-[SW-6] | 7d | 2026-07-09 A | 2026-07-12 A | CO-R11.S06-TE-110 | 100% | 2026-07-15 | 2026-07-22 |  |  | Skilled Labor/Surveyor [6 h]; Foreman [6 h]; Cons. Carpenter [112 h]; Block Mason [56 h]; 6-way ducts, 50mm dia. HDPE [26]; Road crossing ducts (6-way) [2] | 3,819 | 3,819 | CO-R11.S06-TE-120 | 16 | 16 | PD | PC | LM | DC | TE | DUCTS | CON | R11 | S06 | TE |
| CO-R11.S06-TE-130 |  | Trench Backfilling and Compaction Works for Ducts of Telecom Network-[Road 11]-[SW-6] | 7d | 2026-07-09 A | 2026-07-12 A | CO-R11.S06-TE-120 | 100% | 2026-07-23 | 2026-07-30 |  |  | Skilled Labor/Surveyor [6 h]; Foreman [6 h]; Excavator [56 h]; 6-way ducts, 50mm dia. HDPE [52]; Road crossing ducts (6-way) [4] | 7,638 | 7,638 | CO-R11.S06-TE-130 | 16 | 16 | PD | BF | LM | DC | TE | DUCTS | CON | R11 | S06 | TE |

| ID | WBS | Activity | Duration | Start | Finish | Predecessors | Complete | Planned start | Planned finish | Total float | Free float | Resources | Cost | Actual cost | Activity ID N | Seq | New Seq | 02- Network-WBS | 03- Activity | 04-UOM | 05-Discipline | 01- Network | 07-Weightage System | 08 Stage | 09 Roads | 10 side Walk | Discipline |
| --- | --- | --- | --- | --- | --- | --- | --- | --- | --- | --- | --- | --- | --- | --- | --- | --- | --- | --- | --- | --- | --- | --- | --- | --- | --- | --- | --- |
|  | MH | **Manholes Works** |  | 2027-02-10 | 2027-03-07 |  |  |  |  |  |  |  |  |  |  |  |  |  |  |  |  |  |  |  |  |  |  |
| CO-R11.S06-TE-140 |  | Excavation Works for Manholes of Telecom Network-[Road 11]-[SW-6] | 7d | 2027-02-10 | 2027-02-17 | CO-R10.S04-ES-TE-140, CO-R11.S05-TE-140 SS, CO-R11.S06-TE-100 SS+6d, CO-R11.S06-TE-100 FF+6d, CO-R10.S04-WE-TE-140, CO-R11.S06-SL-160 |  |  |  | -165d | 0d | Skilled Labor/Surveyor [6 h]; Foreman [6 h]; Excavator [56 h]; Manhole Type 2 (2000x1000x1000) [0.4] | 1,256.92 |  | CO-R11.S06-TE-140 | 16 | 16 | MH | Ex | Each | MNH | TE | EXC | CON | R11 | S06 | TE |
| CO-R11.S06-TE-150 |  | Installation Works for Manholes of Telecom Network-[Road 11]-[SW-6] | 7d | 2027-02-18 | 2027-02-27 | CO-R11.S06-TE-140, CO-R10.S04-ES-TE-150, PRO-R11-TE-DL-110 FF+3d, CO-R10.S04-WE-TE-150 |  |  |  | -165d | 0d | Skilled Labor/Surveyor [6 h]; Foreman [6 h]; Excavator [56 h]; Manhole Type 1 (2000x1000x1000) [1]; Manhole Type 2 (2000x1000x1000) [1.2] | 6,886.93 |  | CO-R11.S06-TE-150 | 16 | 16 | MH | HH | Each | MNH | TE | INSTALL-1 | CON | R11 | S06 | TE |
| CO-R11.S06-TE-160 |  | Backfilling Works for Manholes of Telecom Network-[Road 11]-[SW-6] | 7d | 2027-02-28 | 2027-03-07 | CO-R11.S06-TE-150, CO-R10.S04-ES-TE-160, CO-R10.S04-WE-TE-160 |  |  |  | -165d | 0d | Skilled Labor/Surveyor [6 h]; Foreman [6 h]; Excavator [56 h]; Manhole Type 2 (2000x1000x1000) [0.4] | 1,256.92 |  | CO-R11.S06-TE-160 | 16 | 16 | MH | BF | Each | MNH | TE | (New)-2 | CON | R11 | S06 | TE |
|  | MV | **Medium Voltage Network** |  | 2026-07-08 | 2026-07-13 |  |  |  |  |  |  |  |  |  |  |  |  |  |  |  |  |  |  |  |  |  |  |
|  | CW | **Cabling Works** |  | 2026-07-08 | 2026-07-13 |  |  |  |  |  |  |  |  |  |  |  |  |  |  |  |  |  |  |  |  |  |  |
| CO-R11.S06-MV-100 |  | Trench Excavation and Bedding Works for Medium Voltage Network-[Road 11]-[SW-6] | 12d | 2026-07-08 A | 2026-07-13 A | CO-R11.S06-SD-170 SS+3d, CO-R11.S06-SD-170 FF+3d, CO-R11.S06-EW-110, CO-R11.S06-TE-130 SS+3d, CO-R11.S06-TE-130 FF+3d, CO-R11.S05-MV-100 SS | 100% | 2026-07-27 | 2026-08-09 |  |  | Skilled Labor/Surveyor [15 h]; Foreman [15 h]; Excavator [144 h]; Excavation for Trench size 40cm wide and 80cm deep ( Maximum 1 cable 33kv) [116.33]; Excavation for Trench size 60cm wide and 80cm deep ( for Max two cables 33 kv) [6.62]; Excavation for Trench size 90cm wide and 80cm deep ( Maximum 3 cable 33kv) [29.48]; Excavation for Trench size 120cm wide and 80cm deep ( Maximum 4cable 33kv) [10.03]; Excavation for Trench size 150cm wide and 80cm deep ( Maximum 4cable 33kv) [37.11]; Duct bank for (2) 33 kv cables [4]; Duct bank for (4) 33 kv cables [27]; Duct bank for (6) 33 kv cables [12] | 13,626.94 | 13,626.94 | CO-R11.S06-MV-100 | 16 | 16 | CW | Ex | LM | CW | MV | EXC | CON | R11 | S06 | MV |
| CO-R11.S06-MV-110 |  | Cable Laying Works for Medium Voltage Network-[Road 11]-[SW-6] | 12d | 2026-07-08 A | 2026-07-13 A | CO-R11.S06-MV-100 SS+3d, CO-R11.S06-MV-100 FF+3d, PRO-R11-MV-DL-100 FF+3d | 100% | 2026-07-30 | 2026-08-12 |  |  | Labor/Helper [288 h]; Electrician [288 h]; Low Current Technician [288 h]; 33kv 3Cx400 mmï¿½ Al XLPE / LLDPE /PVC Cable [547.57]; 33kv 3Cx400 mmï¿½ Al XLPE /LLDPE/PVC [2.1] | 73,607.1 | 73,607.1 | CO-R11.S06-MV-110 | 16 | 16 | CW | CL | LM | CW | MV | LAY | CON | R11 | S06 | MV |
| CO-R11.S06-MV-120 |  | Trench Backfilling and Compaction Works for Medium Voltage Network-[Road 11]-[SW-6] | 12d | 2026-07-08 A | 2026-07-13 A | CO-R11.S06-MV-110 SS+3d, CO-R11.S06-MV-110 FF+3d, CO-R11.S06-PW-130 FF+3d | 100% | 2026-08-03 | 2026-08-16 |  |  | Skilled Labor/Surveyor [15 h]; Foreman [15 h]; Excavator [144 h]; Water Tank [36 h]; 33kv 3Cx400 mmï¿½ Al XLPE / LLDPE /PVC Cable [234.67]; 33kv 3Cx400 mmï¿½ Al XLPE /LLDPE/PVC [0.9] | 31,545.9 | 31,545.9 | CO-R11.S06-MV-120 | 16 | 16 | CW | BF | LM | CW | MV | BACK | CON | R11 | S06 | MV |
|  | RD | **Road Works** |  | 2026-04-01 | 2026-09-10 |  |  |  |  |  |  |  |  |  |  |  |  |  |  |  |  |  |  |  |  |  |  |
|  | RD | **Pre-Bituminous Construction** |  | 2026-04-01 | 2026-04-16 |  |  |  |  |  |  |  |  |  |  |  |  |  |  |  |  |  |  |  |  |  |  |
| CO-R11.S06-RD-P-100 |  | Capping and Subgrade Layer for Road Works-[Road 11]-[SW-6] | 12d | 2026-04-01 A | 2026-04-07 A | CO-R11.S06-SD-130, CO-R11.S06-PW-130, PRO-R11-RD-DL-100 FF+3d, CO-R11.S06-TE-130, CO-R11.S06-MV-120 SS+3d, CO-R11.S06-MV-120 FF+3d, CO-R11.S06-SW-130 | 100% | 2026-08-06 | 2026-08-19 |  |  | Labor/Helper [288 h]; Skilled Labor/Surveyor [144 h]; Loader [144 h]; Grader [144 h]; Road Roller [144 h]; Water Tank [144 h]; 300mm capping layer underneath subgrade , CBR?15% [1978.87]; 300mm thick Subgrade, including subgrade preparation, CBR?25% [1978.87] | 153,560.31 | 153,560.31 | CO-R11.S06-RD-P-100 | 16 | 16 | AB | SG | Sq.m | BS | RD |  | CON | R11 | S06 | RD |
| CO-R11.S06-RD-P-110 |  | Aggregate Base Course Layer for Road Works-[Road 11]-[SW-6] | 18d | 2026-04-08 A | 2026-04-16 A | CO-R11.S06-RD-P-100 SS+3d, CO-R11.S06-RD-P-100 FF+3d, CO-R11.S06-SD-170 SS+3d, CO-R11.S06-SD-170 FF+3d, PRO-R11-RD-DL-110 FF+3d | 100% | 2026-08-12 | 2026-09-01 |  |  | Labor/Helper [288 h]; Skilled Labor/Surveyor [144 h]; Foreman [144 h]; Loader [144 h]; Grader [144 h]; Road Roller [144 h]; Aggregate base course 200mm thick after compaction in two layers(Grading 1); CBR?80%; including watering, compaction and testing [1319.38] | 106,962.14 | 106,962.14 | CO-R11.S06-RD-P-110 | 16 | 16 | AB | BA | Sq.m | BS | RD |  | CON | R11 | S06 | RD |
|  | LS | **Pavement Works** |  | 2026-06-01 | 2026-09-10 |  |  |  |  |  |  |  |  |  |  |  |  |  |  |  |  |  |  |  |  |  |  |
| CO-R11.S06-RD-P-120 |  | Fixing of Curbstone for Sidewalks Pavement-[Road 11]-[SW-6] | 18d | 2026-06-01 A | 2026-08-31 A | PRO-R11-RD-DL-130 FF+3d, CO-R10.S04-ES-RD-120, CO-R11.S06-RD-P-110 SS+3d, CO-R11.S06-RD-P-110 FF+3d, CO-R10.S04-WE-RD-120 | 100% | 2026-08-16 | 2026-09-05 |  |  | Labor/Helper [288 h]; Block Mason [864 h]; Precast Concrete Kerb, Type K1 [730.09]; Precast Concrete Kerb, Type L1 [1448.59] | 87,582.94 | 87,582.94 | CO-R11.S06-RD-P-120 | 16 | 16 | LS | CR | LM | LAND | RD |  | CON | R11 | S06 | RD |
| CO-R11.S06-RD-P-130 |  | Fixing of Interlock Tiles for Sidewalks Pavement-[Road 11]-[SW-6] | 10d | 2026-08-25 A | 2026-09-10 A | PRO-R11-RD-DL-120 FF+3d, CO-R11.S06-RD-P-120 SS+3d, CO-R11.S06-RD-P-120 FF+3d, CO-R11-SD-TF-100, CO-R11-SD-TF-120 SS | 100% | 2026-10-03 | 2026-10-13 |  |  | Labor/Helper [240 h]; Block Mason [720 h]; Interlocking block pavers for sidewalk/footpath 60mm thick on and including 30mm Sand Bedding, 200mm Aggregate subbase, all in accordance with authority standards and complete as per specifications [1303.74]; Extraover for Pedestrian ramps [3] | 62,461.96 | 62,461.96 | CO-R11.S06-RD-P-130 | 16 | 16 | LS | IL | Sq.m | LAND | RD |  | CON | R11 | S06 | RD |
|  | 6 | **Road 14 Local 1 ( 584 LM )** |  | 2025-04-17 | 2027-05-09 |  |  |  |  |  |  |  |  |  |  |  |  |  |  |  |  |  |  |  |  |  |  |
|  | SW_7 | **SW_7** |  | 2025-04-17 | 2027-05-09 |  |  |  |  |  |  |  |  |  |  |  |  |  |  |  |  |  |  |  |  |  |  |
|  | EW | **Earthworks** |  | 2025-04-17 | 2025-05-03 |  |  |  |  |  |  |  |  |  |  |  |  |  |  |  |  |  |  |  |  |  |  |
|  | EW | **Earthworks** |  | 2025-04-17 | 2025-05-03 |  |  |  |  |  |  |  |  |  |  |  |  |  |  |  |  |  |  |  |  |  |  |
| CO-R14.S07-EW-100 |  | Roadway Excavation Works Upto Design Level for Earthworks-[Road 14]-[SW-7] | 10d | 2025-04-17 A | 2025-04-27 A | ENG-MS-RD-A-10, ENG-SH-RD-A-100, CO-R09.S02-EW-110 | 100% | 2025-07-09 | 2025-07-20 |  |  | Labor/Helper [3625 h]; Skilled Labor/Surveyor [536 h]; Foreman [536 h]; Roadway Excavation for cuttings; on any type of material for all depths including trimming and Preparation of excavated surfaces and disposal. [13749.1] | 86,619.2 | 86,619.2 | CO-R11.S07-EW-100 | 13 | 13 | EW | Ex | Cub.m | EW | EW |  | CON | R14 | S07 | EW |
| CO-R14.S07-EW-110 |  | Embankments Works Upto Design Level for Earthworks-[Road 14]-[SW-7] | 10d | 2025-04-19 A | 2025-05-03 A | CO-R14.S07-EW-100 SS+2d, CO-R14.S07-EW-100 FF+2d, CO-R14.S07-EW-100, ENG-MS-RD-A-10, ENG-SH-RD-A-100 | 100% | 2025-07-21 | 2025-07-31 |  |  | Labor/Helper [3256 h]; Skilled Labor/Surveyor [205 h]; Foreman [205 h]; Embankments to the ROW, with suitable material other than top soil or rock according to specifications [23144.9] | 187,474.01 | 187,474.01 | CO-R11.S07-EW-110 | 13 | 13 | EW | BF | Cub.m | EW | EW |  | CON | R14 | S07 | EW |
|  | SW | **Sewage Network** |  | 2025-08-10 | 2026-10-27 |  |  |  |  |  |  |  |  |  |  |  |  |  |  |  |  |  |  |  |  |  |  |
|  | ML | **Main Line Sections** |  | 2025-08-10 | 2025-08-21 |  |  |  |  |  |  |  |  |  |  |  |  |  |  |  |  |  |  |  |  |  |  |
| CO-R14.S07-SW-100 |  | Trench Excavation and Bedding Works for Main Lines of Sewage Network-[Road 14]-[SW-7] | 12d | 2025-08-10 A | 2025-08-14 A | CO-R14.S07-EW-110, ENG-MS-SW-ML-A-110, ENG-SH-SW-ML-A-110 | 100% | 2025-08-04 | 2025-08-17 |  |  | Nominal bore : 160mm; Depth : 0.0m - 1.5m [7.2]; Nominal bore : 200mm; Depth : 0.0m - 1.5m [11.74]; Nominal bore : 200mm; Depth : 1.5m - 2.5m [12.08]; Nominal bore : 200mm; Depth : 2.5m - 3.5m [20.01]; Nominal bore : 200mm; Depth : 3.5m - 4.5m [19.78]; Nominal bore : 200mm; Depth : 4.5m -5.5m [12.29]; Nominal bore : 200mm; Depth : 5.5m - 6.5m [16.66] | 31,128.01 | 31,128.01 | CO-R11.S07-SW-100 | 13 | 13 | ML | Ex | LM | ML | SW | EX | CON | R14 | S07 | SW |
| CO-R14.S07-SW-120 |  | Pipes Laying Works for Main Lines of Sewage Network-[Road 14]-[SW-7] | 12d | 2025-08-16 A | 2025-08-18 A | CO-R14.S07-SW-100, PRO-R14-SW-DL-100 FF+3d | 100% | 2025-08-18 | 2025-08-31 |  |  | Nominal bore : 160mm; Depth : 0.0m - 1.5m [21.6]; Nominal bore : 200mm; Depth : 0.0m - 1.5m [35.21]; Nominal bore : 200mm; Depth : 1.5m - 2.5m [36.24]; Nominal bore : 200mm; Depth : 2.5m - 3.5m [60.02]; Nominal bore : 200mm; Depth : 3.5m - 4.5m [59.35]; Nominal bore : 200mm; Depth : 4.5m -5.5m [36.86]; Nominal bore : 200mm; Depth : 5.5m - 6.5m [49.97] | 93,384.04 | 93,384.04 | CO-R11.S07-SW-120 | 13 | 13 | ML | PL | LM | ML | SW | PIPE | CON | R14 | S07 | SW |
| CO-R14.S07-SW-130 |  | Trench Backfilling and Compaction Works for Main Lines of Sewage Network-[Road 14]-[SW-7] | 12d | 2025-08-19 A | 2025-08-21 A | ENG-SH-SW-ML-A-110 FF, ENG-MS-SW-ML-A-110 FF, CO-R14.S07-SW-120 | 100% | 2025-09-01 | 2025-09-14 |  |  | Nominal bore : 160mm; Depth : 0.0m - 1.5m [3.6]; Nominal bore : 200mm; Depth : 0.0m - 1.5m [5.87]; Nominal bore : 200mm; Depth : 1.5m - 2.5m [6.04]; Nominal bore : 200mm; Depth : 2.5m - 3.5m [10]; Nominal bore : 200mm; Depth : 3.5m - 4.5m [9.89]; Nominal bore : 200mm; Depth : 4.5m -5.5m [6.14]; Nominal bore : 200mm; Depth : 5.5m - 6.5m [8.33] | 15,564.01 | 15,564.01 | CO-R11.S07-SW-130 | 13 | 13 | ML | BF | LM | ML | SW | BACK | CON | R14 | S07 | SW |

| ID | WBS | Activity | Duration | Start | Finish | Predecessors | Complete | Planned start | Planned finish | Total float | Free float | Resources | Cost | Actual cost | Activity ID N | Seq | New Seq | 01- Network | 07-Weightage System | 08 Stage | 09 Roads | 10 side Walk | Discipline | 02- Network-WBS | 03- Activity | 04-UOM | 05-Discipline |
| --- | --- | --- | --- | --- | --- | --- | --- | --- | --- | --- | --- | --- | --- | --- | --- | --- | --- | --- | --- | --- | --- | --- | --- | --- | --- | --- | --- |
|  | 1 | **Manholes** |  | 2025-08-19 | 2026-10-27 |  |  |  |  |  |  |  |  |  |  |  |  |  |  |  |  |  |  |  |  |  |  |
| CO-R14.S07-SW-160 |  | Excavation Works for Main Line Manholes of Sewage Network-[Road 14]-[SW-7] | 1d | 2025-08-19 A | 2025-08-21 A | CO-R14.S07-SW-120 SS | 100% | 2025-08-18 | 2025-08-18 |  |  | Depth: not exceeding 1.5m [0.3]; Depth: 1.5 - 2.5m [0.45]; Depth: 3.5 - 4.5m [0.15]; Depth: 5.5 - 6.5m [0.3]; Depth:6.5 - 7.5m [0.15] | 18,958.12 | 18,958.12 | CO-R11.S07-SW-160 | 13 | 13 | SW | EX | CON | R14 | S07 | SW |  |  |  |  |
| CO-R14.S07-SW-170 |  | Installation RC Footing Works for Main Line Manholes of Sewage Network-[Road 14]-[SW-7] | 2d | 2025-08-23 A | 2025-08-25 A | CO-R14.S07-SW-160, PRO-R14-SW-DL-110 FF+3d | 100% | 2025-08-19 | 2025-08-20 |  |  | Depth: not exceeding 1.5m [0.2]; Depth: 1.5 - 2.5m [0.3]; Depth: 3.5 - 4.5m [0.1]; Depth: 5.5 - 6.5m [0.2]; Depth:6.5 - 7.5m [0.1] | 12,638.75 | 12,638.75 | CO-R11.S07-SW-170 | 13 | 13 | SW | RC F | CON | R14 | S07 | SW |  |  |  |  |
| CO-R14.S07-SW-180 |  | Install Grp Liner Wall Works for Main Line Manholes of Sewage Network-[Road 14]-[SW-7] | 4d | 2025-08-26 A | 2025-08-28 A | CO-R14.S07-SW-170 | 100% | 2025-08-21 | 2025-08-25 |  |  | Depth: not exceeding 1.5m [0.8]; Depth: 1.5 - 2.5m [1.2]; Depth: 3.5 - 4.5m [0.4]; Depth: 5.5 - 6.5m [0.8]; Depth:6.5 - 7.5m [0.4] | 50,554.98 | 50,554.98 | CO-R11.S07-SW-180 | 13 | 13 | SW | LP | CON | R14 | S07 | SW |  |  |  |  |
| CO-R14.S07-SW-200 |  | Backfilling Works for Main Line Manholes of Sewage Network-[Road 14]-[SW-7] | 4d | 2025-08-30 A | 2025-08-31 A | CO-R14.S07-SW-190 | 100% | 2025-08-27 | 2025-08-31 |  |  | Depth: not exceeding 1.5m [0.3]; Depth: 1.5 - 2.5m [0.45]; Depth: 3.5 - 4.5m [0.15]; Depth: 5.5 - 6.5m [0.3]; Depth:6.5 - 7.5m [0.15] | 18,958.12 | 18,958.12 | CO-R11.S07-SW-200 | 13 | 13 | SW | BACK | CON | R14 | S07 | SW |  |  |  |  |
| CO-R14.S07-SW-190 |  | Pouring Grp Liner Wall Works for Main Line Manholes of Sewage Network-[Road 14]-[SW-7] | 1d | 2026-07-01 A | 2026-07-07 A | CO-R14.S07-SW-180 | 100% | 2025-08-26 | 2025-08-26 |  |  | Depth: not exceeding 1.5m [0.1]; Depth: 1.5 - 2.5m [0.15]; Depth: 3.5 - 4.5m [0.05]; Depth: 5.5 - 6.5m [0.1]; Depth:6.5 - 7.5m [0.05] | 6,319.37 | 6,319.37 | CO-R11.S07-SW-190 | 13 | 13 | SW | (New) | CON | R14 | S07 | SW |  |  |  |  |
| CO-R14.S07-SW-210 |  | Testing Works for Main Line Manholes of Sewage Network-[Road 14]-[SW-7] | 1d | 2026-10-27 | 2026-10-27 | CO-R14.S07-SW-200 |  |  |  | -41d | 143d | Depth: not exceeding 1.5m [0.1]; Depth: 1.5 - 2.5m [0.15]; Depth: 3.5 - 4.5m [0.05]; Depth: 5.5 - 6.5m [0.1]; Depth:6.5 - 7.5m [0.05] | 6,319.37 |  | CO-R11.S07-SW-210 | 13 | 13 | SW | T&COV | CON | R14 | S07 | SW |  |  |  |  |
|  | SD | **Storm Drainage Network** |  | 2025-08-10 | 2026-06-04 |  |  |  |  |  |  |  |  |  |  |  |  |  |  |  |  |  |  |  |  |  |  |
|  | ML | **Main Line Sections** |  | 2025-08-10 | 2025-08-28 |  |  |  |  |  |  |  |  |  |  |  |  |  |  |  |  |  |  |  |  |  |  |
| CO-R14.S07-SD-100 |  | Trench Excavation and Bedding Works for Main Lines of Storm Drainage Network-[Road 14]-[SW-7] | 10d | 2025-08-10 A | 2025-08-14 A | ENG-SH-SD-ML-A-110, CO-R14.S07-EW-110, CO-R14.S07-EW-100, CO-R14.S07-SW-130 SS+3d, CO-R14.S07-SW-130 FF+3d, ENG-MS-SD-ML-A-110, CO-R09.S02-SD-100 | 100% | 2025-10-02 | 2025-10-13 |  |  | Pipe with diameter 600mm ; depth: 1.51m - 2.5m [24.12]; Pipe with diameter 700mm ; depth: 1.51m - 2.5m [31.06]; Pipe with diameter 1200mm ; depth: 2.51 - 3.5m [96.6] | 122,198.87 | 122,198.87 | CO-R11.S07-SD-100 | 13 | 13 | SD | EX | CON | R14 | S07 | SD | ML | Ex | LM | ML |
| CO-R14.S07-SD-120 |  | Pipes Laying Works for Main Lines of Storm Drainage Network-[Road 14]-[SW-7] | 10d | 2025-08-16 A | 2025-08-18 A | CO-R14.S07-SD-100, CO-R09.S02-SD-120 | 100% | 2025-10-14 | 2025-10-25 |  |  | Pipe with diameter 600mm ; depth: 1.51m - 2.5m [72.35]; Pipe with diameter 700mm ; depth: 1.51m - 2.5m [93.17]; Pipe with diameter 1200mm ; depth: 2.51 - 3.5m [289.8] | 366,596.62 | 366,596.62 | CO-R11.S07-SD-120 | 13 | 13 | SD | PIPE | CON | R14 | S07 | SD | ML | PL | LM | ML |
| CO-R14.S07-SD-130 |  | Trench Backfilling and Compaction Works for Main Lines of Storm Drainage Network-[Road 14]-[SW-7] | 15d | 2025-08-27 A | 2025-08-28 A | CO-R14.S07-SD-120 SS+3d, CO-R14.S07-SD-120 FF+3d, ENG-SH-SD-ML-A-110 FF, CO-R11.S05-SD-130, ENG-MS-SD-ML-A-110 FF, CO-R14.S07-SD-120, CO-R14.S07-SD-220 FF | 100% | 2026-01-15 | 2026-02-01 |  |  | Pipe with diameter 600mm ; depth: 1.51m - 2.5m [12.06]; Pipe with diameter 700mm ; depth: 1.51m - 2.5m [15.53]; Pipe with diameter 1200mm ; depth: 2.51 - 3.5m [48.3] | 61,099.44 | 61,099.44 | CO-R11.S07-SD-130 | 13 | 13 | SD | BACK | CON | R14 | S07 | SD | ML | BF | LM | ML |
|  | MH | **Manholes** |  | 2025-08-16 | 2026-06-04 |  |  |  |  |  |  |  |  |  |  |  |  |  |  |  |  |  |  |  |  |  |  |
| CO-R14.S07-SD-180 |  | Trench Excavation and Bedding Works for Manholes of Storm Drainage Network-[Road 14]-[SW-7] | 1d | 2025-08-16 A | 2025-08-17 A | PRO-SD-1DL-100, CO-R14.S07-SD-100 | 100% | 2025-10-14 | 2025-10-14 |  |  | MH ; depth: 0.0m - 1.5m [0.3]; MH ; depth: 1.51m - 2.5m [0.6]; MH ; depth: 1.51m - 2.5m [0.15] | 19,292.78 | 19,292.78 | CO-R11.S07-SD-180 | 13 | 13 | SD | EX | CON | R14 | S07 | SD |  |  |  |  |
| CO-R14.S07-SD-190 |  | Install RC Footing Works for Manholes of Storm Drainage Network-[Road 14]-[SW-7] | 1d | 2025-08-18 A | 2025-08-20 A | CO-R14.S07-SD-180 | 100% | 2025-10-15 | 2025-10-15 |  |  | MH ; depth: 0.0m - 1.5m [0.1]; MH ; depth: 1.51m - 2.5m [0.2]; MH ; depth: 1.51m - 2.5m [0.05] | 6,430.93 | 6,430.93 | CO-R11.S07-SD-190 | 13 | 13 | SD | RC F | CON | R14 | S07 | SD |  |  |  |  |
| CO-R14.S07-SD-200 |  | Install RC Wall Rings & Slab Works for Manholes of Storm Drainage Network-[Road 14]-[SW-7] | 4d | 2025-08-21 A | 2025-08-23 A | CO-R14.S07-SD-190 | 100% | 2025-10-16 | 2025-10-20 |  |  | MH ; depth: 0.0m - 1.5m [0.9]; MH ; depth: 1.51m - 2.5m [1.8]; MH ; depth: 1.51m - 2.5m [0.45] | 57,878.35 | 57,878.35 | CO-R11.S07-SD-200 | 13 | 13 | SD | RC W | CON | R14 | S07 | SD |  |  |  |  |
| CO-R14.S07-SD-220 |  | Backfilling Works for Manholes of Storm Drainage Network-[Road 14]-[SW-7] | 7d | 2025-08-24 A | 2025-08-26 A | CO-R14.S07-SD-210 | 100% | 2025-10-22 | 2025-10-29 |  |  | MH ; depth: 0.0m - 1.5m [0.4]; MH ; depth: 1.51m - 2.5m [0.8]; MH ; depth: 1.51m - 2.5m [0.2] | 25,723.71 | 25,723.71 | CO-R11.S07-SD-220 | 13 | 13 | SD | BACK | CON | R14 | S07 | SD |  |  |  |  |
| CO-R14.S07-SD-210 |  | Testing Works for Manholes of Storm Drainage Network-[Road 14]-[SW-7] | 1d | 2026-06-04 A | 2026-06-04 A | CO-R14.S07-SD-200 | 100% | 2025-10-21 | 2025-10-21 |  |  | MH ; depth: 0.0m - 1.5m [0.2]; MH ; depth: 1.51m - 2.5m [0.4]; MH ; depth: 1.51m - 2.5m [0.1] | 12,861.86 | 12,861.86 | CO-R11.S07-SD-210 | 13 | 13 | SD | T&COV | CON | R14 | S07 | SD |  |  |  |  |
|  | CB | **Catch Basin Sections** |  | 2025-12-01 | 2025-12-08 |  |  |  |  |  |  |  |  |  |  |  |  |  |  |  |  |  |  |  |  |  |  |
| CO-R14.S07-SD-140 |  | Trench Excavation and Bedding Works for Catch Basins of Storm Drainage Network-[Road 14]-[SW-7] | 6d | 2025-12-01 A | 2025-12-08 A | CO-R14.S07-EW-110, ENG-SH-SD-CB-A-110, ENG-MS-SD-CB-A-110, CO-R14.S07-SD-220 | 100% | 2025-11-10 | 2025-11-16 |  |  | Pipe with diameter 300mm ; depth: 0 - 1.5m [72.81]; Pipe with diameter 400mm ; depth: 0 - 1.5m [4.44] | 17,955.67 | 17,955.67 | CO-R11.S07-SD-140 | 13 | 13 | SD | EX | CON | R14 | S07 | SD | CB | Ex | Each | CB |
| CO-R14.S07-SD-150 |  | Installation and Pipes Laying Connection Works for Catch Basins of Storm Drainage Network-[Road 14]-[SW-7] | 7d | 2025-12-01 A | 2025-12-08 A | CO-R14.S07-SD-140 | 100% | 2025-11-17 | 2025-11-24 |  |  | Pipe with diameter 300mm ; depth: 0 - 1.5m [218.44]; Pipe with diameter 400mm ; depth: 0 - 1.5m [13.32] | 53,866.77 | 53,866.77 | CO-R11.S07-SD-150 | 13 | 13 | SD | INSTALL | CON | R14 | S07 | SD | CB | CB | Each | CB |
| CO-R14.S07-SD-160 |  | Testing Works for Catch Basins of Storm Drainage Network-[Road 14]-[SW-7] | 4d | 2025-12-01 A | 2025-12-08 A | CO-R14.S07-SD-150 FS+3d, CO-R14.S07-SD-120 | 100% | 2025-11-29 | 2025-12-02 |  |  | Pipe with diameter 300mm ; depth: 0 - 1.5m [48.54]; Pipe with diameter 400mm ; depth: 0 - 1.5m [2.96] | 11,970.37 | 11,970.37 | CO-R11.S07-SD-160 | 13 | 13 | SD | TEST | CON | R14 | S07 | SD | CB | PL | Each | CB |
| CO-R14.S07-SD-170 |  | Trench Backfilling and Compaction Works for Catch Basins of Storm Drainage Network-[Road 14]-[SW-7] | 7d | 2025-12-01 A | 2025-12-08 A | CO-R14.S07-SD-160 | 100% | 2025-12-03 | 2025-12-10 |  |  | Pipe with diameter 300mm ; depth: 0 - 1.5m [97.09]; Pipe with diameter 400mm ; depth: 0 - 1.5m [5.92] | 23,940.73 | 23,940.73 | CO-R11.S07-SD-170 | 13 | 13 | SD | BACK | CON | R14 | S07 | SD | CB | BF | Each | CB |
|  | IR | **Irrigation Network** |  | 2025-10-11 | 2026-11-03 |  |  |  |  |  |  |  |  |  |  |  |  |  |  |  |  |  |  |  |  |  |  |
|  | ML | **Main Line Pipes** |  | 2025-10-11 | 2026-11-03 |  |  |  |  |  |  |  |  |  |  |  |  |  |  |  |  |  |  |  |  |  |  |
| CO-R14.S07-IR-130 |  | Trench Backfilling and Compaction Works for Main Lines of Irrigation Network-[Road 14]-[SW-7] | 10d | 2025-10-11 A | 2025-10-12 A | CO-R14.S07-IR-110 | 100% | 2026-01-08 | 2026-01-19 |  |  | 125 mm pipe; depth 0.0m - 1.5m [123.8]; 280 mm pipe; depth 0.0m - 1.5m [47.5]; 280 mm pipe; depth 1.5m - 3.0m [5] | 24,390.81 | 24,390.81 | CO-R11.S07-IR-130 | 13 | 13 | IR | BACK | CON | R14 | S07 | IR | ML | BF | LM | ML |
| CO-R14.S07-IR-100 |  | Trench Excavation and Bedding Works for Main Lines of Irrigation Network-[Road 14]-[SW-7] | 7d | 2025-10-13 A | 2025-10-13 A | ENG-SH-IR-ML-A-110, CO-R14.S07-EW-110, CO-R14.S07-SD-170, ENG-MS-IR-ML-A-110 | 100% | 2025-12-11 | 2025-12-18 |  |  | 125 mm pipe; depth 0.0m - 1.5m [247.45]; 280 mm pipe; depth 0.0m - 1.5m [95]; 280 mm pipe; depth 1.5m - 3.0m [10] | 48,770.61 | 48,770.61 | CO-R11.S07-IR-100 | 13 | 13 | IR | EX | CON | R14 | S07 | IR | ML | Ex | LM | ML |
| CO-R14.S07-IR-110 |  | Pipes Laying Works for Main Lines of Irrigation Network-[Road 14]-[SW-7] | 10d | 2025-10-13 A | 2025-10-13 A | CO-R14.S07-IR-100, CO-R14.S07-IR-100 FF+3d, PRO-R11-IR-DL-140 FF+3d, PRO-R14-IR-DL-100 FS+3d | 100% | 2025-12-20 | 2025-12-30 |  |  | 125 mm pipe; depth 0.0m - 1.5m [742.35]; 280 mm pipe; depth 0.0m - 1.5m [285]; 280 mm pipe; depth 1.5m - 3.0m [30] | 146,311.82 | 146,311.82 | CO-R11.S07-IR-110 | 13 | 13 | IR | PIPE | CON | R14 | S07 | IR | ML | PL | LM | ML |
| CO-R14.S07-IR-120 |  | Installation Works for Main Line Valves of Irrigation Network-[Road 14]-[SW-7] | 7d | 2026-10-27 | 2026-11-03 | CO-R14.S07-IR-110, PRO-R11-IR-DL-150 FF+3d, PRO-R14-IR-DL-110 |  |  |  | -5d | 158d | Gate valves dia (90)mm on pipes with dia (125) mm. [9]; Gate valves dia (200)mm on pipes with dia (280) mm. [8]; Air valves with dia (50mm) mm on pipes with dia(125)mm. [1]; Air valve chamber; on 125 mm dia pipeline Depth 1.5 - 3 m [1] | 56,059.64 |  | CO-R11.S07-IR-120 | 13 | 13 | IR | VALV | CON | R14 | S07 | IR | ML | VI | Each | ML |

| ID | WBS | Activity | Duration | Start | Finish | Predecessors | Complete | Planned start | Planned finish | Total float | Free float | Resources | Cost | Actual cost | Activity ID N | Seq | New Seq | 02- Network-WBS | 03- Activity | 04-UOM | 05-Discipline | 01- Network | 07-Weightage System | 08 Stage | 09 Roads | 10 side Walk | Discipline |
| --- | --- | --- | --- | --- | --- | --- | --- | --- | --- | --- | --- | --- | --- | --- | --- | --- | --- | --- | --- | --- | --- | --- | --- | --- | --- | --- | --- |
|  | SL | **Street Lighting Network** |  | 2026-09-29 | 2026-11-23 |  |  |  |  |  |  |  |  |  |  |  |  |  |  |  |  |  |  |  |  |  |  |
|  | LP | **Lighting Poles Works** |  | 2026-10-06 | 2026-11-16 |  |  |  |  |  |  |  |  |  |  |  |  |  |  |  |  |  |  |  |  |  |  |
| CO-R14.S07-SL-100 |  | Foundation Excavation Works for Lighting Poles of Street Lighting Network-[Road 14]-[SW-7] | 12d | 2026-10-06 A | 2026-10-12 A | CO-R14.S07-EW-110, ENG-SH-SL-A-110, CO-R14.S07-EW-100, ENG-MS-SL-A-110, CO-R14.S07-IR-130 | 100% | 2026-12-27 | 2027-01-09 |  |  | Lighting poles complete with two arms, including the power distribution box, screws, cables, 12 meters in height. [0.2] | 421.43 | 421.43 | CO-R11.S07-SL-100 | 13 | 13 | LP | Ex | Each | POL | SL | EX | CON | R14 | S07 | SL |
| CO-R14.S07-SL-110 |  | Installation Works for Lighting Poles Foundation of Street Lighting Network-[Road 14]-[SW-7] | 12d | 2026-10-06 A | 2026-10-12 A | CO-R14.S07-SL-100 | 100% | 2027-01-10 | 2027-01-23 |  |  | Lighting poles complete with two arms, including the power distribution box, screws, cables, 12 meters in height. [0.8]; Reinforced concrete foundation, for 12m high lighting columns With Drawpits [4] | 3,140.96 | 3,140.96 | CO-R11.S07-SL-110 | 13 | 13 | LP | LPF | Each | POL | SL | INSTALL | CON | R14 | S07 | SL |
| CO-R14.S07-SL-120 |  | Installation Works for Lighting Poles of Street Lighting Network-[Road 14]-[SW-7] | 17.5d | 2026-10-06 A | 2026-10-12 A | CO-R14.S07-SL-110 | 100% | 2027-01-24 | 2027-02-13 |  |  | Lighting poles complete with two arms, including the power distribution box, screws, cables, 12 meters in height. [1.8] | 3,792.87 | 3,792.87 | CO-R11.S07-SL-120 | 13 | 13 | LP | LP | Each | POL | SL | POLES | CON | R14 | S07 | SL |
| CO-R14.S07-SL-210 |  | Backfilling Works for Lighting Poles of Street Lighting Network-[Road 14]-[SW-7] | 12d | 2026-10-06 A | 2026-10-12 A | CO-R14.S07-SL-120 SS, CO-R14.S07-SL-120 FF | 100% | 2027-06-23 | 2027-07-06 |  |  | Lighting poles complete with two arms, including the power distribution box, screws, cables, 12 meters in height. [0.4] | 842.86 | 842.86 | CO-R11.S07-SL-210 | 13 | 13 |  |  |  |  | SL | BACK | CON | R14 | S07 | SL |
| CO-R14.S07-SL-130 |  | Installation Works for Lighting Fixtures With Drop Wire of Street Lighting Network-[Road 14]-[SW-7] | 18d | 2026-10-27 | 2026-11-16 | CO-R14.S07-SL-120 SS+5d, CO-R14.S07-SL-120 FF+5d, CO-R14.S07-SL-200 FF |  |  |  | -75d | 64d | Street Lighting( LED) Luminaire,(Type B) complete with control gear and lamp, ?.40600 Lumen [8] | 7,713.04 |  | CO-R11.S07-SL-130 | 13 | 13 | LP | LPA | Each | POL | SL | INSTALL | CON | R14 | S07 | SL |
| CO-R14.S07-SL-200 |  | Testing Works for Lighting Poles of Street Lighting Network-[Road 14]-[SW-7] | 5d | 2026-10-27 | 2026-11-01 | CO-R14.S07-SL-210, CO-R14.S07-SL-120 |  |  |  | -62d | 13d | Lighting poles complete with two arms, including the power distribution box, screws, cables, 12 meters in height. [0.8] | 1,685.72 |  | CO-R11.S07-SL-200 | 13 | 13 |  |  |  |  | SL | TESTING | CON | R14 | S07 | SL |
|  | CW | **Cabling Works** |  | 2026-09-29 | 2026-10-04 |  |  |  |  |  |  |  |  |  |  |  |  |  |  |  |  |  |  |  |  |  |  |
| CO-R14.S07-SL-140 |  | Trench Excavation and Bedding Works for Street Lighting Network-[Road 14]-[SW-7] | 10d | 2026-09-29 A | 2026-10-04 A | ENG-SH-SL-A-110, CO-R14.S07-IR-130, CO-R14.S07-EW-110, CO-R14.S07-SL-120, CO-R14.S07-SL-110, ENG-MS-SL-A-110 | 100% | 2026-03-09 | 2026-03-24 |  |  |  |  |  | CO-R11.S07-SL-140 | 13 | 13 | CW | Ex | LM | CB | SL | EXC | CON | R14 | S07 | SL |
| CO-R14.S07-SL-150 |  | Cable Laying Works for Street Lighting Network-[Road 14]-[SW-7] | 10d | 2026-09-29 A | 2026-10-04 A | CO-R14.S07-SL-140 | 100% | 2026-03-24 | 2026-04-05 |  |  |  |  |  | CO-R11.S07-SL-150 | 13 | 13 | CW | CL | LM | CB | SL | LAYING | CON | R14 | S07 | SL |
| CO-R14.S07-SL-160 |  | Trench Backfilling and Compaction Works for Street Lighting Network-[Road 14]-[SW-7] | 10d | 2026-09-29 A | 2026-10-04 A | CO-R14.S07-SL-150, CO-R14.S07-IR-130 | 100% | 2026-04-05 | 2026-04-16 |  |  |  |  |  | CO-R11.S07-SL-160 | 13 | 13 | CW | BF | LM | CB | SL | BACK | CON | R14 | S07 | SL |
|  | DPB | **Distrubution Panel Boards** |  | 2026-10-27 | 2026-11-23 |  |  |  |  |  |  |  |  |  |  |  |  |  |  |  |  |  |  |  |  |  |  |
| CO-R14.S07-SL-170 |  | Foundation Excavation Works For Panel Boards of Street Lighting Network-[Road 14]-[SW-7] | 18d | 2026-10-27 | 2026-11-16 | CO-R14.S07-EW-110, ENG-SH-SL-A-110, ENG-MS-SL-A-110 |  |  |  | -85d | 0d |  |  |  | CO-R11.S07-SL-170 | 13 | 13 | DB | Ex | Each | DS | SL | EXC | CON | R14 | S07 | SL |
| CO-R14.S07-SL-180 |  | Installation Works for Panel Board Concrete Foundations of Street Lighting Network-[Road 14]-[SW-7] | 18d | 2026-10-31 | 2026-11-19 | CO-R14.S07-SL-170 SS+3d, CO-R14.S07-SL-170 FF+3d |  |  |  | -85d | 0d |  |  |  | CO-R11.S07-SL-180 | 13 | 13 | DB | PBF | Each | DS | SL | INSTALL | CON | R14 | S07 | SL |
| CO-R14.S07-SL-220 |  | A wall of concrete blocks to install the KWH meter of Street Lighting Network-[Road 14]-[SW-7] | 18d | 2026-10-31 | 2026-11-19 | CO-R14.S07-SL-180 SS, CO-R14.S07-SL-180 FF |  |  |  | -82d | 130d |  |  |  | CO-R11.S07-SL-220 | 13 | 13 | DB |  | Each | DS | SL | wall | CON | R14 | S07 | SL |
| CO-R14.S07-SL-190 |  | Installation Works for Lighting Panel Boards of Street Lighting Network-[Road 14]-[SW-7] | 18d | 2026-11-03 | 2026-11-23 | CO-R14.S07-SL-180 SS+3d, CO-R14.S07-SL-180 FF+3d |  |  |  | -85d | 127d |  |  |  | CO-R11.S07-SL-190 | 13 | 13 | DB | PB | Each | DS | SL | INST BO | CON | R14 | S07 | SL |
|  | TE | **Telecom Network** |  | 2027-01-18 | 2027-02-14 |  |  |  |  |  |  |  |  |  |  |  |  |  |  |  |  |  |  |  |  |  |  |
|  | PD | **Ducts Works** |  | 2027-01-18 | 2027-02-14 |  |  |  |  |  |  |  |  |  |  |  |  |  |  |  |  |  |  |  |  |  |  |
| CO-R14.S07-TE-100 |  | Trench Excavation and Bedding Works for Ducts of Telecom Network-[Road 14]-[SW-7] | 3d | 2027-01-18 | 2027-01-20 | CO-R14.S07-IR-130 SS+3d, CO-R14.S07-IR-130 FF+3d, CO-R14.S07-SL-160 SS+5d, CO-R14.S07-SL-160 FF+5d, CO-R14.S07-EW-110, CO-R09.S02-TE-100 |  |  |  | -148d | 0d | 6-way ducts, 50mm dia. HDPE [38]; Road crossing ducts (6-way) [3] | 5,594.5 |  | CO-R11.S07-TE-100 | 13 | 13 | PD | Ex | LM | DC | TE | DUCTS | CON | R14 | S07 | TE |
| CO-R14.S07-TE-110 |  | Pipes Laying Works for Ducts of Telecom Network-[Road 14]-[SW-7] | 7d | 2027-01-21 | 2027-01-28 | CO-R14.S07-TE-100, CO-R11.S05-TE-110 |  |  |  | -141d | 0d | 6-way ducts, 50mm dia. HDPE [231]; Road crossing ducts (6-way) [20] | 34,304 |  | CO-R11.S07-TE-110 | 13 | 13 | PD | PL | LM | DC | TE | DUCTS | CON | R14 | S07 | TE |
| CO-R14.S07-TE-120 |  | Pouring Plain Concrete Above Ducts of Telecom Network-[Road 14]-[SW-7] | 7d | 2027-01-30 | 2027-02-06 | CO-R14.S07-TE-110, CO-R11.S05-TE-120 |  |  |  | -141d | 0d | 6-way ducts, 50mm dia. HDPE [38]; Road crossing ducts (6-way) [3] | 5,594.5 |  | CO-R11.S07-TE-120 | 13 | 13 | PD | PC | LM | DC | TE | DUCTS | CON | R14 | S07 | TE |
| CO-R14.S07-TE-130 |  | Trench Backfilling and Compaction Works for Ducts of Telecom Network-[Road 14]-[SW-7] | 7d | 2027-02-07 | 2027-02-14 | CO-R14.S07-TE-120, CO-R11.S05-TE-130 |  |  |  | -141d | 24d | 6-way ducts, 50mm dia. HDPE [77]; Road crossing ducts (6-way) [7] | 11,490.5 |  | CO-R11.S07-TE-130 | 13 | 13 | PD | BF | LM | DC | TE | DUCTS | CON | R14 | S07 | TE |
|  | MH | **Manholes Works** |  | 2027-01-21 | 2027-02-14 |  |  |  |  |  |  |  |  |  |  |  |  |  |  |  |  |  |  |  |  |  |  |
| CO-R14.S07-TE-140 |  | Excavation Works for Manholes of Telecom Network-[Road 14]-[SW-7] | 7d | 2027-01-21 | 2027-01-28 | CO-R11.S05-TE-140, CO-R14.S07-TE-100 |  |  |  | -148d | 0d | Manhole Type 2 (2000x1000x1000) [0.6] | 1,885.38 |  | CO-R11.S07-TE-140 | 13 | 13 | MH | Ex | Each | MNH | TE | EXC | CON | R14 | S07 | TE |
| CO-R14.S07-TE-150 |  | Installation Works for Manholes of Telecom Network-[Road 14]-[SW-7] | 7d | 2027-01-30 | 2027-02-06 | CO-R14.S07-TE-140, CO-R11.S05-TE-150 |  |  |  | -141d | 0d | Manhole Type 1 (2000x1000x1000) [1]; Manhole Type 2 (2000x1000x1000) [1.8] | 8,772.31 |  | CO-R11.S07-TE-150 | 13 | 13 | MH | HH | Each | MNH | TE | INSTALL-1 | CON | R14 | S07 | TE |
| CO-R14.S07-TE-160 |  | Backfilling Works for Manholes of Telecom Network-[Road 14]-[SW-7] | 7d | 2027-02-07 | 2027-02-14 | CO-R14.S07-TE-150, CO-R11.S05-TE-160 |  |  |  | -141d | 24d | Manhole Type 2 (2000x1000x1000) [0.6] | 1,885.38 |  | CO-R11.S07-TE-160 | 13 | 13 | MH | BF | Each | MNH | TE | (New)-2 | CON | R14 | S07 | TE |

| ID | WBS | Activity | Duration | Start | Finish | Predecessors | Complete | Planned start | Planned finish | Total float | Free float | Resources | Cost | Actual cost | Activity ID N | Seq | New Seq | 02- Network-WBS | 03- Activity | 04-UOM | 05-Discipline | 01- Network | 08 Stage | 09 Roads | 10 side Walk | Discipline | 07-Weightage System |
| --- | --- | --- | --- | --- | --- | --- | --- | --- | --- | --- | --- | --- | --- | --- | --- | --- | --- | --- | --- | --- | --- | --- | --- | --- | --- | --- | --- |
|  | RD | **Road Works** |  | 2026-08-18 | 2027-05-09 |  |  |  |  |  |  |  |  |  |  |  |  |  |  |  |  |  |  |  |  |  |  |
|  | RD | **Pre-Bituminous Construction** |  | 2026-08-18 | 2026-09-09 |  |  |  |  |  |  |  |  |  |  |  |  |  |  |  |  |  |  |  |  |  |  |
| CO-R14.S07-RD-P-100 |  | Capping and Subgrade Layer for Road Works-[Road 14]-[SW-7] | 18d | 2026-08-18 A | 2026-08-23 A | ENG-SH-RD-A-100, CO-R14.S07-SD-130, CO-R14.S07-SW-130, CO-R14.S07-SL-160 SS+3d, CO-R14.S07-SL-160 FF+3d, ENG-MS-RD-A-10 | 100% | 2026-08-01 | 2026-08-20 |  |  | 300mm capping layer underneath subgrade , CBR?15% [2920.26]; 300mm thick Subgrade, including subgrade preparation, CBR?25% [2920.26] | 226,612.18 | 226,612.18 | CO-R11.S07-RD-P-100 | 13 | 13 | AB | SG | Sq.m | BS | RD | CON | R14 | S07 | RD |  |
| CO-R14.S07-RD-P-110 |  | Aggregate Base Course Layer for Road Works-[Road 14]-[SW-7] | 18d | 2026-09-05 A | 2026-09-09 A | CO-R14.S07-RD-P-100 SS+3d, CO-R14.S07-RD-P-100 FF+3d, CO-R14.S07-SD-170 SS+3d, CO-R14.S07-SD-170 FF+3d, CO-R11.S05-RD-P-110 | 100% | 2027-02-06 | 2027-02-27 |  |  | Aggregate base course 200mm thick after compaction in two layers(Grading 1); CBR?80%; including watering, compaction and testing [1947.04] | 157,846.53 | 157,846.53 | CO-R11.S07-RD-P-110 | 13 | 13 | AB | BA | Sq.m | BS | RD | CON | R14 | S07 | RD |  |
|  | LS | **Pavement Works** |  | 2026-08-25 | 2027-05-09 |  |  |  |  |  |  |  |  |  |  |  |  |  |  |  |  |  |  |  |  |  |  |
| CO-R14.S07-RD-P-120 |  | Fixing of Curbstone for Sidewalks Pavement-[Road 14]-[SW-7] | 18d | 2026-08-25 A | 2026-08-31 A | CO-R11.S05-RD-P-120 | 100% | 2026-09-08 | 2026-09-29 |  |  | Skilled Labor/Surveyor [144 h]; Block Mason [1152 h]; Precast Concrete Kerb, Type K1 [1077.41]; Precast Concrete Kerb, Type L1 [2137.72] | 129,248.23 | 129,248.23 | CO-R11.S07-RD-P-120 | 13 | 13 | LS | CR | LM | LAND | RD | CON | R14 | S07 | RD |  |
| CO-R14.S07-RD-P-130 |  | Fixing of Interlock Tiles for Sidewalks Pavement-[Road 14]-[SW-7] | 12d | 2027-04-26 | 2027-05-09 | CO-R14.S07-RD-P-120 SS, CO-R14.S07-RD-P-120 FF+3d, CO-R11.S05-RD-P-130 SS, CO-R14-PW-TF-100 FF, CO-R14-PW-TF-110 FF, CO-R14-PW-TF-120 FF, CO-R14-SW-TF-100 FF, CO-R14-SW-TF-110 FF, CO-R14-SW-TF-130 FF, CO-R11-SL-TF-180 FF, CO-R11-SL-TF-190 FF, CO-R11-IR-TF-140 FF, CO-R11-MV-TF-180 FF, CO-R11-SW-TF-100 FF, CO-R14.S08-SW-210 FF |  |  |  | -164d | 0d | Interlocking block pavers for sidewalk/footpath 60mm thick on and including 30mm Sand Bedding, 200mm Aggregate subbase, all in accordance with authority standards and complete as per specifications [1923.95]; Extraover for Pedestrian ramps [5] | 92,427.51 |  | CO-R11.S07-RD-P-130 | 13 | 13 | LS | IL | Sq.m | LAND | RD | CON | R14 | S07 | RD |  |
|  | SW_8 | **SW_8** |  | 2025-04-23 | 2027-05-09 |  |  |  |  |  |  |  |  |  |  |  |  |  |  |  |  |  |  |  |  |  |  |
|  | EW | **Earthworks** |  | 2025-04-23 | 2025-05-03 |  |  |  |  |  |  |  |  |  |  |  |  |  |  |  |  |  |  |  |  |  |  |
|  | EW | **Earthworks** |  | 2025-04-23 | 2025-05-03 |  |  |  |  |  |  |  |  |  |  |  |  |  |  |  |  |  |  |  |  |  |  |
| CO-R14.S08-EW-100 |  | Roadway Excavation Works Upto Design Level for Earthworks-[Road 14]-[SW-8] | 12d | 2025-04-23 A | 2025-04-27 A | ENG-MS-RD-A-10, ENG-SH-RD-A-100, CO-R14.S07-EW-100 | 100% | 2025-07-21 | 2025-08-03 |  |  | Roadway Excavation for cuttings; on any type of material for all depths including trimming and Preparation of excavated surfaces and disposal. [13749.1] | 86,619.2 | 86,619.2 | CO-R11.S08-EW-100 | 14 | 14 | EW | Ex | Cub.m | EW | EW | CON | R14 | S08 | EW |  |
| CO-R14.S08-EW-110 |  | Embankments Works Upto Design Level for Earthworks-[Road 14]-[SW-8] | 12d | 2025-04-26 A | 2025-05-03 A | CO-R14.S08-EW-100, ENG-MS-RD-A-10, ENG-SH-RD-A-100 | 100% | 2025-08-04 | 2025-08-17 |  |  | Embankments to the ROW, with suitable material other than top soil or rock according to specifications [23144.9] | 187,474.01 | 187,474.01 | CO-R11.S08-EW-110 | 14 | 14 | EW | BF | Cub.m | EW | EW | CON | R14 | S08 | EW |  |
|  | SW | **Sewage Network** |  | 2025-08-02 | 2026-10-27 |  |  |  |  |  |  |  |  |  |  |  |  |  |  |  |  |  |  |  |  |  |  |
|  | ML | **Main Line Sections** |  | 2025-08-02 | 2025-08-06 |  |  |  |  |  |  |  |  |  |  |  |  |  |  |  |  |  |  |  |  |  |  |
| CO-R14.S08-SW-100 |  | Trench Excavation and Bedding Works for Main Lines of Sewage Network-[Road 14]-[SW-8] | 12d | 2025-08-02 A | 2025-08-03 A | CO-R14.S08-EW-110, ENG-MS-SW-ML-A-110, ENG-SH-SW-ML-A-110, CO-R14.S07-SW-100 | 100% | 2025-08-18 | 2025-08-31 |  |  | Nominal bore : 160mm; Depth : 0.0m - 1.5m [7.2]; Nominal bore : 200mm; Depth : 0.0m - 1.5m [11.74]; Nominal bore : 200mm; Depth : 1.5m - 2.5m [12.08]; Nominal bore : 200mm; Depth : 2.5m - 3.5m [20.01]; Nominal bore : 200mm; Depth : 3.5m - 4.5m [19.78]; Nominal bore : 200mm; Depth : 4.5m -5.5m [12.29]; Nominal bore : 200mm; Depth : 5.5m - 6.5m [16.66] | 31,128.01 | 31,128.01 | CO-R11.S07-SW-100 | 14 | 14 | ML | Ex | LM | ML | SW | CON | R14 | S08 | SW | EX |
| CO-R14.S08-SW-120 |  | Pipes Laying Works for Main Lines of Sewage Network-[Road 14]-[SW-8] | 12d | 2025-08-04 A | 2025-08-05 A | CO-R14.S08-SW-100, PRO-R14-SW-DL-100 FF+3d | 100% | 2025-09-01 | 2025-09-14 |  |  | Nominal bore : 160mm; Depth : 0.0m - 1.5m [21.6]; Nominal bore : 200mm; Depth : 0.0m - 1.5m [35.21]; Nominal bore : 200mm; Depth : 1.5m - 2.5m [36.24]; Nominal bore : 200mm; Depth : 2.5m - 3.5m [60.02]; Nominal bore : 200mm; Depth : 3.5m - 4.5m [59.35]; Nominal bore : 200mm; Depth : 4.5m -5.5m [36.86]; Nominal bore : 200mm; Depth : 5.5m - 6.5m [49.97] | 93,384.04 | 93,384.04 | CO-R11.S07-SW-120 | 14 | 14 | ML | PL | LM | ML | SW | CON | R14 | S08 | SW | PIPE |
| CO-R14.S08-SW-130 |  | Trench Backfilling and Compaction Works for Main Lines of Sewage Network-[Road 14]-[SW-8] | 12d | 2025-08-06 A | 2025-08-06 A | CO-R14.S08-SW-120 | 100% | 2025-09-15 | 2025-09-29 |  |  | Nominal bore : 160mm; Depth : 0.0m - 1.5m [3.6]; Nominal bore : 200mm; Depth : 0.0m - 1.5m [5.87]; Nominal bore : 200mm; Depth : 1.5m - 2.5m [6.04]; Nominal bore : 200mm; Depth : 2.5m - 3.5m [10]; Nominal bore : 200mm; Depth : 3.5m - 4.5m [9.89]; Nominal bore : 200mm; Depth : 4.5m -5.5m [6.14]; Nominal bore : 200mm; Depth : 5.5m - 6.5m [8.33] | 15,564.01 | 15,564.01 | CO-R11.S07-SW-130 | 14 | 14 | ML | BF | LM | ML | SW | CON | R14 | S08 | SW | BACK |
|  | 1 | **Manholes** |  | 2025-08-10 | 2026-10-27 |  |  |  |  |  |  |  |  |  |  |  |  |  |  |  |  |  |  |  |  |  |  |
| CO-R14.S08-SW-160 |  | Excavation Works for Main Line Manholes of Sewage Network-[Road 14]-[SW-8] | 1d | 2025-08-10 A | 2025-08-13 A | CO-R14.S08-SW-120 SS | 100% | 2025-09-01 | 2025-09-01 |  |  | Depth: not exceeding 1.5m [0.3]; Depth: 1.5 - 2.5m [0.45]; Depth: 4.5 - 5.5m [0.15] | 7,025.35 | 7,025.35 | CO-R11.S07-SW-160 | 14 | 14 |  |  |  |  | SW | CON | R14 | S08 | SW | EX |
| CO-R14.S08-SW-170 |  | Installation RC Footing Works for Main Line Manholes of Sewage Network-[Road 14]-[SW-8] | 2d | 2025-08-14 A | 2025-08-17 A | CO-R14.S08-SW-160, PRO-R14-SW-DL-110 FF+3d | 100% | 2025-09-02 | 2025-09-03 |  |  | Depth: not exceeding 1.5m [0.2]; Depth: 1.5 - 2.5m [0.3]; Depth: 4.5 - 5.5m [0.1] | 4,683.57 | 4,683.57 | CO-R11.S07-SW-170 | 14 | 14 |  |  |  |  | SW | CON | R14 | S08 | SW | RC F |
| CO-R14.S08-SW-180 |  | Install Grp Liner Wall Works for Main Line Manholes of Sewage Network-[Road 14]-[SW-8] | 4d | 2025-08-18 A | 2025-08-19 A | CO-R14.S08-SW-170 | 100% | 2025-09-04 | 2025-09-08 |  |  | Depth: not exceeding 1.5m [0.8]; Depth: 1.5 - 2.5m [1.2]; Depth: 4.5 - 5.5m [0.4] | 18,734.27 | 18,734.27 | CO-R11.S07-SW-180 | 14 | 14 |  |  |  |  | SW | CON | R14 | S08 | SW | LP |
| CO-R14.S08-SW-200 |  | Backfilling Works for Main Line Manholes of Sewage Network-[Road 14]-[SW-8] | 4d | 2025-08-20 A | 2025-08-21 A | CO-R14.S08-SW-190 | 100% | 2025-09-10 | 2025-09-14 |  |  | Depth: not exceeding 1.5m [0.3]; Depth: 1.5 - 2.5m [0.45]; Depth: 4.5 - 5.5m [0.15] | 7,025.35 | 7,025.35 | CO-R11.S07-SW-200 | 14 | 14 |  |  |  |  | SW | CON | R14 | S08 | SW | BACK |
| CO-R14.S08-SW-190 |  | Pouring Grp Liner Wall Works for Main Line Manholes of Sewage Network-[Road 14]-[SW-8] | 1d | 2026-07-01 A | 2026-07-04 A | CO-R14.S08-SW-180 | 100% | 2025-09-09 | 2025-09-09 |  |  | Depth: not exceeding 1.5m [0.1]; Depth: 1.5 - 2.5m [0.15]; Depth: 4.5 - 5.5m [0.05] | 2,341.78 | 2,341.78 | CO-R11.S07-SW-190 | 14 | 14 |  |  |  |  | SW | CON | R14 | S08 | SW | (New) |
| CO-R14.S08-SW-210 |  | Testing Works for Main Line Manholes of Sewage Network-[Road 14]-[SW-8] | 1d | 2026-10-27 | 2026-10-27 | CO-R14.S08-SW-200 |  |  |  | -41d | 143d | Depth: not exceeding 1.5m [0.1]; Depth: 1.5 - 2.5m [0.15]; Depth: 4.5 - 5.5m [0.05] | 2,341.78 |  | CO-R11.S07-SW-210 | 14 | 14 |  |  |  |  | SW | CON | R14 | S08 | SW | T&COV |

| ID | WBS | Activity | Duration | Start | Finish | Predecessors | Complete | Planned start | Planned finish | Resources | Cost | Actual cost | Activity ID N | Seq | New Seq | 02- Network-WBS | 03- Activity | 04-UOM | 05-Discipline | 01- Network | 07-Weightage System | 08 Stage | 09 Roads | 10 side Walk | Discipline |
| --- | --- | --- | --- | --- | --- | --- | --- | --- | --- | --- | --- | --- | --- | --- | --- | --- | --- | --- | --- | --- | --- | --- | --- | --- | --- |
|  | SD | **Storm Drainage Network** |  | 2025-08-06 | 2026-07-13 |  |  |  |  |  |  |  |  |  |  |  |  |  |  |  |  |  |  |  |  |
|  | ML | **Main Line Sections** |  | 2025-08-06 | 2025-08-08 |  |  |  |  |  |  |  |  |  |  |  |  |  |  |  |  |  |  |  |  |
| CO-R14.S08-SD-100 |  | Trench Excavation and Bedding Works for Main Lines of Storm Drainage Network-[Road 14]-[SW-8] | 10d | 2025-08-06 A | 2025-08-06 A | CO-R14.S08-EW-110, CO-R14.S08-EW-100, CO-R14.S08-SW-130 SS+3d, CO-R14.S08-SW-130 FF+3d, CO-R14.S07-SD-100 | 100% | 2025-10-14 | 2025-10-25 | Pipe with diameter 400mm ; depth: 0.0m - 1.5m [51.12]; Pipe with diameter 400mm ; depth: 1.51m - 2.5m [51.94]; Pipe with diameter 400mm ; depth: 2.51m - 3.5m [10]; Pipe with diameter 500mm ; depth: 1.51m - 2.5m [130.8]; Pipe with diameter 600mm ; depth: 1.51m - 2.5m [24.12]; Pipe with diameter 700mm ; depth: 1.51m - 2.5m [31.06] | 99,603.9 | 99,603.9 | CO-R11.S08-SD-100 | 14 | 14 | ML | Ex | LM | ML | SD | EX | CON | R14 | S08 | SD |
| CO-R14.S08-SD-120 |  | Pipes Laying Works for Main Lines of Storm Drainage Network-[Road 14]-[SW-8] | 10d | 2025-08-07 A | 2025-08-07 A | PRO-R14-SD-DL-120 FF+3d, CO-R14.S08-SD-100, CO-R14.S07-SD-120 | 100% | 2025-10-26 | 2025-11-05 | Pipe with diameter 400mm ; depth: 0.0m - 1.5m [153.37]; Pipe with diameter 400mm ; depth: 1.51m - 2.5m [155.82]; Pipe with diameter 400mm ; depth: 2.51m - 3.5m [30]; Pipe with diameter 500mm ; depth: 1.51m - 2.5m [392.41]; Pipe with diameter 600mm ; depth: 1.51m - 2.5m [72.35]; Pipe with diameter 700mm ; depth: 1.51m - 2.5m [93.17] | 298,811.7 | 298,811.7 | CO-R11.S08-SD-120 | 14 | 14 | ML | PL | LM | ML | SD | PIPE | CON | R14 | S08 | SD |
| CO-R14.S08-SD-130 |  | Trench Backfilling and Compaction Works for Main Lines of Storm Drainage Network-[Road 14]-[SW-8] | 15d | 2025-08-08 A | 2025-08-08 A | CO-R14.S08-SD-120 SS+3d, CO-R14.S08-SD-120 FF+3d, CO-R11.S06-SD-130, CO-R14.S08-SD-120, CO-R14.S08-SD-220 FF | 100% | 2026-01-21 | 2026-02-07 | Pipe with diameter 400mm ; depth: 0.0m - 1.5m [25.56]; Pipe with diameter 400mm ; depth: 1.51m - 2.5m [25.97]; Pipe with diameter 400mm ; depth: 2.51m - 3.5m [5]; Pipe with diameter 500mm ; depth: 1.51m - 2.5m [65.4]; Pipe with diameter 600mm ; depth: 1.51m - 2.5m [12.06]; Pipe with diameter 700mm ; depth: 1.51m - 2.5m [15.53] | 49,801.95 | 49,801.95 | CO-R11.S08-SD-130 | 14 | 14 | ML | BF | LM | ML | SD | BACK | CON | R14 | S08 | SD |
|  | MH | **Manholes** |  | 2025-10-09 | 2026-06-04 |  |  |  |  |  |  |  |  |  |  |  |  |  |  |  |  |  |  |  |  |
| CO-R14.S08-SD-180 |  | Trench Excavation and Bedding Works for Manholes of Storm Drainage Network-[Road 14]-[SW-8] | 1d | 2025-10-09 A | 2025-10-11 A | CO-R14.S08-SD-120 SS, PRO-SD-1DL-100 | 100% | 2025-10-26 | 2025-10-26 | MH ; depth: 0.0m - 1.5m [0.3]; MH ; depth: 1.51m - 2.5m [0.6]; MH ; depth: 2.51 - 3.5m [0.15]; MH ; depth: 2.51 - 3.5m [0.3]; MH ; depth: 2.51 - 3.5m with back drop less than 1.0 m [0.15]; MH ; depth: 1.51m - 2.5m [0.15] | 33,948.1 | 33,948.1 | CO-R11.S08-SD-180 | 14 | 14 |  |  |  |  | SD | EX | CON | R14 | S08 | SD |
| CO-R14.S08-SD-190 |  | Install RC Footing Works for Manholes of Storm Drainage Network-[Road 14]-[SW-8] | 1d | 2025-10-11 A | 2025-10-12 A | CO-R14.S08-SD-180 | 100% | 2025-10-27 | 2025-10-27 | MH ; depth: 0.0m - 1.5m [0.1]; MH ; depth: 1.51m - 2.5m [0.2]; MH ; depth: 2.51 - 3.5m [0.05]; MH ; depth: 2.51 - 3.5m [0.1]; MH ; depth: 2.51 - 3.5m with back drop less than 1.0 m [0.05]; MH ; depth: 1.51m - 2.5m [0.05] | 11,316.03 | 11,316.03 | CO-R11.S08-SD-190 | 14 | 14 |  |  |  |  | SD | RC F | CON | R14 | S08 | SD |
| CO-R14.S08-SD-200 |  | Install RC Wall Rings & Slab Works for Manholes of Storm Drainage Network-[Road 14]-[SW-8] | 4d | 2025-10-12 A | 2025-10-13 A | CO-R14.S08-SD-190 | 100% | 2025-10-28 | 2025-11-01 | MH ; depth: 0.0m - 1.5m [0.9]; MH ; depth: 1.51m - 2.5m [1.8]; MH ; depth: 2.51 - 3.5m [0.45]; MH ; depth: 2.51 - 3.5m [0.9]; MH ; depth: 2.51 - 3.5m with back drop less than 1.0 m [0.45]; MH ; depth: 1.51m - 2.5m [0.45] | 101,844.29 | 101,844.29 | CO-R11.S08-SD-200 | 14 | 14 |  |  |  |  | SD | RC W | CON | R14 | S08 | SD |
| CO-R14.S08-SD-220 |  | Backfilling Works for Manholes of Storm Drainage Network-[Road 14]-[SW-8] | 7d | 2025-10-14 A | 2025-10-14 A | CO-R14.S08-SD-210 | 100% | 2025-11-03 | 2025-11-10 | MH ; depth: 0.0m - 1.5m [0.4]; MH ; depth: 1.51m - 2.5m [0.8]; MH ; depth: 2.51 - 3.5m [0.2]; MH ; depth: 2.51 - 3.5m [0.4]; MH ; depth: 2.51 - 3.5m with back drop less than 1.0 m [0.2]; MH ; depth: 1.51m - 2.5m [0.2] | 45,264.13 | 45,264.13 | CO-R11.S08-SD-220 | 14 | 14 |  |  |  |  | SD | BACK | CON | R14 | S08 | SD |
| CO-R14.S08-SD-210 |  | Testing Works for Manholes of Storm Drainage Network-[Road 14]-[SW-8] | 1d | 2026-06-04 A | 2026-06-04 A | CO-R14.S08-SD-200 | 100% | 2025-11-02 | 2025-11-02 | MH ; depth: 0.0m - 1.5m [0.2]; MH ; depth: 1.51m - 2.5m [0.4]; MH ; depth: 2.51 - 3.5m [0.1]; MH ; depth: 2.51 - 3.5m [0.2]; MH ; depth: 2.51 - 3.5m with back drop less than 1.0 m [0.1]; MH ; depth: 1.51m - 2.5m [0.1] | 22,632.06 | 22,632.06 | CO-R11.S08-SD-210 | 14 | 14 |  |  |  |  | SD | T&COV | CON | R14 | S08 | SD |
|  | CB | **Catch Basin Sections** |  | 2026-06-04 | 2026-07-13 |  |  |  |  |  |  |  |  |  |  |  |  |  |  |  |  |  |  |  |  |
| CO-R14.S08-SD-140 |  | Trench Excavation and Bedding Works for Catch Basins of Storm Drainage Network-[Road 14]-[SW-8] | 6d | 2026-06-04 A | 2026-07-13 A | CO-R14.S08-EW-110, CO-R14.S08-SD-220, CO-R14.S07-SD-140 | 100% | 2025-11-17 | 2025-11-23 | Pipe with diameter 300mm ; depth: 0 - 1.5m [72.81]; Pipe with diameter 400mm ; depth: 0 - 1.5m [4.44] | 17,955.67 | 17,955.67 | CO-R11.S08-SD-140 | 14 | 14 | CB | Ex | Each | CB | SD | EX | CON | R14 | S08 | SD |
| CO-R14.S08-SD-150 |  | Installation and Pipes Laying Connection Works for Catch Basins of Storm Drainage Network-[Road 14]-[SW-8] | 7d | 2026-06-04 A | 2026-07-13 A | CO-R14.S08-SD-140, PRO-R14-SD-DL-130 FF+3d | 100% | 2025-11-24 | 2025-12-01 | Pipe with diameter 300mm ; depth: 0 - 1.5m [218.44]; Pipe with diameter 400mm ; depth: 0 - 1.5m [13.32] | 53,866.77 | 53,866.77 | CO-R11.S08-SD-150 | 14 | 14 | CB | CB | Each | CB | SD | INSTALL | CON | R14 | S08 | SD |
| CO-R14.S08-SD-160 |  | Testing Works for Catch Basins of Storm Drainage Network-[Road 14]-[SW-8] | 4d | 2026-06-04 A | 2026-07-13 A | CO-R14.S08-SD-150, CO-R14.S08-SD-120, PRO-R14-SD-DL-110 FF+3d | 100% | 2025-12-02 | 2025-12-06 | Pipe with diameter 300mm ; depth: 0 - 1.5m [48.54]; Pipe with diameter 400mm ; depth: 0 - 1.5m [2.96] | 11,970.37 | 11,970.37 | CO-R11.S08-SD-160 | 14 | 14 | CB | PL | Each | CB | SD | TEST | CON | R14 | S08 | SD |
| CO-R14.S08-SD-170 |  | Trench Backfilling and Compaction Works for Catch Basins of Storm Drainage Network-[Road 14]-[SW-8] | 7d | 2026-06-04 A | 2026-07-13 A | CO-R14.S08-SD-160 | 100% | 2025-12-07 | 2025-12-14 | Pipe with diameter 300mm ; depth: 0 - 1.5m [97.09]; Pipe with diameter 400mm ; depth: 0 - 1.5m [5.92] | 23,940.73 | 23,940.73 | CO-R11.S08-SD-170 | 14 | 14 | CB | BF | Each | CB | SD | BACK | CON | R14 | S08 | SD |
|  | PW | **Potable Water Network** |  | 2025-08-09 | 2026-11-19 |  |  |  |  |  |  |  |  |  |  |  |  |  |  |  |  |  |  |  |  |
|  | ML | **Main Line Sections** |  | 2025-08-09 | 2025-08-11 |  |  |  |  |  |  |  |  |  |  |  |  |  |  |  |  |  |  |  |  |
| CO-R14.S08-PW-100 |  | Trench Excavation and Bedding Works for Main Lines of Potable Water Network-[Road 14]-[SW-8] | 10d | 2025-08-09 A | 2025-08-09 A | CO-R14.S08-EW-110, CO-R14.S08-EW-100, CO-R14.S08-SD-130 | 100% | 2026-02-08 | 2026-02-18 | Pipe with diameter 355mm; in depth 0.0m - 1.5m [280]; Pipe with diameter 355mm; in depth 1.5m - 3.0m [20] | 88,895.6 | 88,895.6 | CO-R11.S08-PW-100 | 14 | 14 | ML | Ex | LM | ML | PW | EX | CON | R14 | S08 | PW |
| CO-R14.S08-PW-110 |  | Pipes Laying and accessories for Main Lines of Potable Water Network-[Road 14]-[SW-8] | 10d | 2025-08-10 A | 2025-08-10 A | CO-R14.S08-PW-100, CO-R11.S06-PW-110, PRO-R14-PW-DL-100 FF+3d | 100% | 2026-02-19 | 2026-03-02 | Pipe with diameter 355mm; in depth 0.0m - 1.5m [700]; Pipe with diameter 355mm; in depth 1.5m - 3.0m [50] | 222,239 | 222,239 | CO-R11.S08-PW-110 | 14 | 14 | ML | PL | LM | ML | PW | PIPE | CON | R14 | S08 | PW |
| CO-R14.S08-PW-130 |  | Trench Backfilling and Compaction Works for Main Lines of Potable Water Network-[Road 14]-[SW-8] | 10d | 2025-08-11 A | 2025-08-11 A | CO-R14.S08-PW-110, CO-R11.S06-PW-130, CO-R14.S08-PW-220 FF | 100% | 2026-03-11 | 2026-03-25 | Pipe with diameter 355mm; in depth 0.0m - 1.5m [280]; Pipe with diameter 355mm; in depth 1.5m - 3.0m [20] | 88,895.6 | 88,895.6 | CO-R11.S08-PW-130 | 14 | 14 | ML | BF | LM | ML | PW | BACK | CON | R14 | S08 | PW |
|  | VC | **Valve Chamber** |  | 2026-06-07 | 2026-06-17 |  |  |  |  |  |  |  |  |  |  |  |  |  |  |  |  |  |  |  |  |
| CO-R14.S08-PW-170 |  | Excavation Works for Main Line Valves and Valve Chambers of Potable Water Network-[Road 14]-[SW-8] | 1d | 2026-06-07 A | 2026-06-17 A | CO-R14.S08-PW-110 | 100% | 2026-03-03 | 2026-03-03 | In-situ, reinforced single concrete valve chambers on the pipeline, as defined and shown on the drawingss, and all necessary works and equipment (valve measured elsewhere), and supplies construction, cut and installation of pipe cutting, backfilling, in [1.8]; Air valve chamber on 355 mm dia pipeline Depth 1.5 - 3 m [0.1] | 68,410.35 | 68,410.35 | CO-R11.S08-PW-170 | 14 | 14 | ML | VI | Each | ML | PW | EX | CON | R14 | S08 | PW |
| CO-R14.S08-PW-180 |  | RC Footing Works for Main Line Valves and Valve Chambers of Potable Water Network-[Road 14]-[SW-8] | 3d | 2026-06-07 A | 2026-06-17 A | CO-R14.S08-PW-170 | 100% | 2026-03-04 | 2026-03-07 | In-situ, reinforced single concrete valve chambers on the pipeline, as defined and shown on the drawingss, and all necessary works and equipment (valve measured elsewhere), and supplies construction, cut and installation of pipe cutting, backfilling, in [2.7]; Air valve chamber on 355 mm dia pipeline Depth 1.5 - 3 m [0.15] | 102,615.52 | 102,615.52 | CO-R11.S08-PW-180 | 14 | 14 | ML | VI | Each | ML | PW | RC F | CON | R14 | S08 | PW |
| CO-R14.S08-PW-190 |  | RC Wall Works for Main Line Valves and Valve Chambers of Potable Water Network-[Road 14]-[SW-8] | 6d | 2026-06-07 A | 2026-06-17 A | CO-R14.S08-PW-180 | 100% | 2026-03-08 | 2026-03-14 | In-situ, reinforced single concrete valve chambers on the pipeline, as defined and shown on the drawingss, and all necessary works and equipment (valve measured elsewhere), and supplies construction, cut and installation of pipe cutting, backfilling, in [6.3]; Air valve chamber on 355 mm dia pipeline Depth 1.5 - 3 m [0.35] | 239,436.23 | 239,436.23 | CO-R11.S08-PW-190 | 14 | 14 | ML | VI | Each | ML | PW | RC W | CON | R14 | S08 | PW |
| CO-R14.S08-PW-200 |  | RC Slab Works for Main Line Valves and Valve Chambers of Potable Water Network-[Road 14]-[SW-8] | 2d | 2026-06-07 A | 2026-06-17 A | CO-R14.S08-PW-190 | 100% | 2026-03-15 | 2026-03-16 | In-situ, reinforced single concrete valve chambers on the pipeline, as defined and shown on the drawingss, and all necessary works and equipment (valve measured elsewhere), and supplies construction, cut and installation of pipe cutting, backfilling, in [3.6]; Air valve chamber on 355 mm dia pipeline Depth 1.5 - 3 m [0.2] | 136,820.7 | 136,820.7 | CO-R11.S08-PW-200 | 14 | 14 | ML | VI | Each | ML | PW | RC S | CON | R14 | S08 | PW |
| CO-R14.S08-PW-210 |  | Insulation Works for Main Line Valves and Valve Chambers of Potable Water Network-[Road 14]-[SW-8] | 1d | 2026-06-07 A | 2026-06-17 A | CO-R14.S08-PW-200 | 100% | 2026-03-17 | 2026-03-17 | Butterfly valves with dia (355)mm on pipes with dia (355)mm. [13.46]; Air valves with dia (65mm) mm on pipes with dia(355)mm. [1] | 368,521.86 | 368,521.86 | CO-R11.S08-PW-210 | 14 | 14 | ML | VI | Each | ML | PW | INSUL | CON | R14 | S08 | PW |
| CO-R14.S08-PW-220 |  | Backfilling Works for Main Line Valves and Valve Chambers of Potable Water Network-[Road 14]-[SW-8] | 3d | 2026-06-07 A | 2026-06-17 A | CO-R14.S08-PW-210 | 100% | 2026-03-18 | 2026-03-24 | In-situ, reinforced single concrete valve chambers on the pipeline, as defined and shown on the drawingss, and all necessary works and equipment (valve measured elsewhere), and supplies construction, cut and installation of pipe cutting, backfilling, in [3.6]; Air valve chamber on 355 mm dia pipeline Depth 1.5 - 3 m [0.2] | 136,820.7 | 136,820.7 | CO-R11.S08-PW-220 | 14 | 14 | ML | VI | Each | ML | PW | BACK | CON | R14 | S08 | PW |

| ID | WBS | Activity | Duration | Start | Finish | Predecessors | Complete | Planned start | Planned finish | Total float | Free float | Resources | Cost | Actual cost | Activity ID N | Seq | New Seq | 02- Network-WBS | 03- Activity | 04-UOM | 05-Discipline | 01- Network | 07-Weightage System | 08 Stage | 09 Roads | 10 side Walk | Discipline |
| --- | --- | --- | --- | --- | --- | --- | --- | --- | --- | --- | --- | --- | --- | --- | --- | --- | --- | --- | --- | --- | --- | --- | --- | --- | --- | --- | --- |
|  | FH | **Fire Hydrant** |  | 2026-10-27 | 2026-11-19 |  |  |  |  |  |  |  |  |  |  |  |  |  |  |  |  |  |  |  |  |  |  |
| CO-R14.S08-PW-140 |  | Excavation Works for Fire Hydrants of Potable Water Network-[Road 14]-[SW-8] | 7d | 2026-10-27 | 2026-11-03 | CO-R14.S08-PW-110 SS+3d, CO-R14.S08-PW-110 FF+3d, CO-R14.S08-EW-110 |  |  |  | -1d | 0d | 3-outlet fire hydrant (2 x 2.5 inch and 1 x 4 inch) in the form of a separate dry vacuum cylinder [1.05] | 7,953.07 |  | CO-R11.S08-PW-140 | 14 | 14 | FH | Ex | Each | FH | PW | EX | CON | R14 | S08 | PW |
| CO-R14.S08-PW-150 |  | Installation Works for Fire Hydrant of Potable Water Network-[Road 14]-[SW-8] | 7d | 2026-11-04 | 2026-11-11 | CO-R14.S08-PW-140, PRO-R14-PW-DL-120 FF+3d |  |  |  | -1d | 0d | 3-outlet fire hydrant (2 x 2.5 inch and 1 x 4 inch) in the form of a separate dry vacuum cylinder [4.55] | 34,463.29 |  | CO-R11.S08-PW-150 | 14 | 14 | FH | FH | Each | FH | PW | INSTALL | CON | R14 | S08 | PW |
| CO-R14.S08-PW-160 |  | Trench Backfilling and Compaction Works for Fire Hydrants of Potable Water Network-[Road 14]-[SW-8] | 7d | 2026-11-12 | 2026-11-19 | CO-R14.S08-PW-150 |  |  |  | -1d | 179d | 3-outlet fire hydrant (2 x 2.5 inch and 1 x 4 inch) in the form of a separate dry vacuum cylinder [1.4] | 10,604.09 |  | CO-R11.S08-PW-160 | 14 | 14 | FH | BF | Each | FH | PW | BACK | CON | R14 | S08 | PW |
|  | SL | **Street Lighting Network** |  | 2026-08-09 | 2027-04-25 |  |  |  |  |  |  |  |  |  |  |  |  |  |  |  |  |  |  |  |  |  |  |
|  | LP | **Lighting Poles Works** |  | 2026-09-01 | 2027-02-10 |  |  |  |  |  |  |  |  |  |  |  |  |  |  |  |  |  |  |  |  |  |  |
| CO-R14.S08-SL-210 |  | Backfilling Works for Lighting Poles of Street Lighting Network-[Road 14]-[SW-8] | 15d | 2026-09-01 A | 2026-09-08 A | CO-R14.S08-SL-840 SS, CO-R14.S08-SL-840 FF, CO-R14.S07-SL-210 | 100% | 2026-06-07 | 2026-06-23 |  |  | Lighting poles with one arm, including the power distribution box, screws, cables, 12 meters in height. [8.4] | 15,989.15 | 15,989.15 | CO-R11.S08-SL-210 | 14 | 14 |  |  |  |  | SL | BACK | CON | R14 | S08 | SL |
| CO-R14.S08-SL-820 |  | Foundation Excavation Works for Lighting Poles of Street Lighting Network-[Road 14]-[SW-8] | 12d | 2026-09-01 A | 2026-09-08 A | CO-R14.S08-EW-110, CO-R14.S08-EW-100, CO-R14.S08-PW-130 | 100% | 2026-03-26 | 2026-04-08 |  |  | Lighting poles with one arm, including the power distribution box, screws, cables, 12 meters in height. [2.1] | 3,997.29 | 3,997.29 | CO-R11.S08-SL-820 | 14 | 14 | LP | Ex | Each | POL | SL | EX | CON | R14 | S08 | SL |
| CO-R14.S08-SL-830 |  | Installation Works for Lighting Poles Foundation of Street Lighting Network-[Road 14]-[SW-8] | 10d | 2026-09-01 A | 2026-09-08 A | CO-R14.S08-SL-820 SS+5d, CO-R14.S08-SL-820 FF+5d, CO-R11.S06-SL-110, PRO-R14-SL-DL-110 FF+3d | 100% | 2026-04-11 | 2026-04-21 |  |  | Reinforced concrete foundation, for 12m high lighting columns With Drawpits [42] | 15,280.02 | 15,280.02 | CO-R11.S08-SL-830 | 14 | 14 | LP | LPF | Each | POL | SL | INSTALL | CON | R14 | S08 | SL |
| CO-R14.S08-SL-840 |  | Installation Works for Lighting Poles of Street Lighting Network-[Road 14]-[SW-8] | 10d | 2026-09-01 A | 2026-09-08 A | CO-R14.S08-SL-830 SS+5d, CO-R14.S08-SL-830 FF+5d, PRO-R14-SL-DL-120 FF+3d | 100% | 2026-04-16 | 2026-04-27 |  |  | Lighting poles with one arm, including the power distribution box, screws, cables, 12 meters in height. [23.1] | 43,970.16 | 43,970.16 | CO-R11.S08-SL-840 | 14 | 14 | LP | LP | Each | POL | SL | POLES | CON | R14 | S08 | SL |
| CO-R14.S08-SL-200 |  | Testing Works for Lighting Poles of Street Lighting Network-[Road 14]-[SW-8] | 7d | 2026-10-27 | 2026-11-03 | CO-R14.S08-SL-210, CO-R14.S08-SL-840 |  |  |  | -16d | 84.5d | Lighting poles with one arm, including the power distribution box, screws, cables, 12 meters in height. [8.4] | 15,989.15 |  | CO-R11.S08-SL-200 | 14 | 14 |  |  |  |  | SL | TESTING | CON | R14 | S08 | SL |
| CO-R14.S08-SL-850 |  | Installation Works for Lighting Fixtures With Drop Wire of Street Lighting Network-[Road 14]-[SW-8] | 17.5d | 2027-01-21 | 2027-02-10 | CO-R14.S08-SL-840 SS+5d, CO-R14.S08-SL-840 FF+5d, CO-R11.S06-SL-130, PRO-R14-SL-DL-140 FF+3d, CO-R14.S08-SL-200 FF |  |  |  | -100.5d | 111.5d | Street Lighting( LED) Luminaire,(Type C) complete with control gear and lamp, ?.17000 Lumen [42] | 25,157.16 |  | CO-R11.S08-SL-850 | 14 | 14 | LP | LPA | Each | POL | SL | INSTALL | CON | R14 | S08 | SL |
|  | CW | **Cabling Works** |  | 2026-08-09 | 2026-09-17 |  |  |  |  |  |  |  |  |  |  |  |  |  |  |  |  |  |  |  |  |  |  |
| CO-R14.S08-SL-640 |  | Trench Excavation and Bedding Works for Street Lighting Network-[Road 14]-[SW-8] | 10d | 2026-08-09 A | 2026-09-17 A | CO-R14.S08-EW-110, CO-R14.S08-SL-840, CO-R14.S08-SL-830 | 100% | 2026-04-28 | 2026-05-09 |  |  |  |  |  | CO-R11.S08-SL-640 | 14 | 14 | CW | Ex | LM | CB | SL | EXC | CON | R14 | S08 | SL |
| CO-R14.S08-SL-650 |  | Cable Laying Works for Street Lighting Network-[Road 14]-[SW-8] | 10d | 2026-08-09 A | 2026-09-17 A | CO-R14.S08-SL-640, PRO-R14-SL-DL-100 FF+3d | 100% | 2026-05-10 | 2026-05-20 |  |  | Supply, installation , test and operation of cables, Copper, (4Cx25mmï¿½,Cu/XLPE/SWA/PVC +1x16mmï¿½ PVC/PVC) [1610.7] | 75,541.83 | 75,541.83 | CO-R11.S08-SL-650 | 14 | 14 | CW | CL | LM | CB | SL | LAYING | CON | R14 | S08 | SL |
| CO-R14.S08-SL-660 |  | Trench Backfilling and Compaction Works for Street Lighting Network-[Road 14]-[SW-8] | 10d | 2026-08-09 A | 2026-09-17 A | CO-R14.S08-SL-650 | 100% | 2026-05-21 | 2026-06-06 |  |  | Supply, installation , test and operation of cables, Copper, (4Cx25mmï¿½,Cu/XLPE/SWA/PVC +1x16mmï¿½ PVC/PVC) [123.9] | 5,810.91 | 5,810.91 | CO-R11.S08-SL-660 | 14 | 14 | CW | BF | LM | CB | SL | BACK | CON | R14 | S08 | SL |
|  | DPB | **Distrubution Panel Boards** |  | 2027-03-04 | 2027-04-25 |  |  |  |  |  |  |  |  |  |  |  |  |  |  |  |  |  |  |  |  |  |  |
| CO-R14.S08-SL-DB-640 |  | Foundation Excavation Works For Panel Boards of Street Lighting Network-[Road 14]-[SW-8] | 18d | 2027-03-04 | 2027-03-28 | CO-R14.S08-EW-110, CO-R11.S06-SL-170 |  |  |  | -198d | 9d |  |  |  | CO-R11.S08-SL-DB-640 | 14 | 14 | DB | Ex | Each | DS | SL | EXC | CON | R14 | S08 | SL |
| CO-R14.S08-SL-220 |  | A wall of concrete blocks to install the KWH meter of Street Lighting Network-[Road 14]-[SW-8] | 25d | 2027-03-22 | 2027-04-19 | CO-R14.S08-SL-DB-650 SS, CO-R14.S08-SL-DB-650 FF |  |  |  | -207d | 5d | Road crossing ducts, 4 way (4 x 100mm PVC) [92.04]; Drawpit with medium duty steel cover, size 900x900x1200mm, Type 4 [6] | 26,818.47 |  | CO-R11.S08-SL-220 | 14 | 14 | DB |  | Each | DS | SL | wall | CON | R14 | S08 | SL |
| CO-R14.S08-SL-DB-650 |  | Installation Works for Panel Board Concrete Foundations of Street Lighting Network-[Road 14]-[SW-8] | 18d | 2027-03-22 | 2027-04-11 | CO-R14.S08-SL-DB-640 SS+3d, CO-R14.S08-SL-DB-640 FF+3d, CO-R11.S06-SL-180 |  |  |  | -207d | 0d |  |  |  | CO-R11.S08-SL-DB-650 | 14 | 14 | DB | PBF | Each | DS | SL | INSTALL | CON | R14 | S08 | SL |
| CO-R14.S08-SL-DB-660 |  | Installation Works for Lighting Panel Boards of Street Lighting Network-[Road 14]-[SW-8] | 18d | 2027-04-05 | 2027-04-25 | CO-R14.S08-SL-DB-650 SS+3d, CO-R14.S08-SL-DB-650 FF+3d, CO-R11.S06-SL-190 |  |  |  | -212d | 0d |  |  |  | CO-R11.S08-SL-DB-660 | 14 | 14 | DB | PB | Each | DS | SL | INST BO | CON | R14 | S08 | SL |
|  | TE | **Telecom Network** |  | 2027-01-21 | 2027-03-18 |  |  |  |  |  |  |  |  |  |  |  |  |  |  |  |  |  |  |  |  |  |  |
|  | PD | **Ducts Works** |  | 2027-01-21 | 2027-02-17 |  |  |  |  |  |  |  |  |  |  |  |  |  |  |  |  |  |  |  |  |  |  |
| CO-R14.S08-TE-100 |  | Trench Excavation and Bedding Works for Ducts of Telecom Network-[Road 14]-[SW-8] | 3d | 2027-01-21 | 2027-01-24 | CO-R14.S08-SL-660, CO-R14.S07-TE-100 |  |  |  | -144d | 0d | 6-way ducts, 50mm dia. HDPE [38]; Road crossing ducts (6-way) [3] | 5,594.5 |  | CO-R11.S08-TE-100 | 14 | 14 | PD | Ex | LM | DC | TE | DUCTS | CON | R14 | S08 | TE |
| CO-R14.S08-TE-110 |  | Pipes Laying Works for Ducts of Telecom Network-[Road 14]-[SW-8] | 7d | 2027-01-25 | 2027-02-01 | CO-R14.S08-TE-100, CO-R11.S06-TE-110, PRO-R14-TE-DL-100 FF+3d |  |  |  | -144d | 0d | 6-way ducts, 50mm dia. HDPE [231]; Road crossing ducts (6-way) [20] | 34,304 |  | CO-R11.S08-TE-110 | 14 | 14 | PD | PL | LM | DC | TE | DUCTS | CON | R14 | S08 | TE |
| CO-R14.S08-TE-120 |  | Pouring Plain Concrete Above Ducts of Telecom Network-[Road 14]-[SW-8] | 7d | 2027-02-02 | 2027-02-09 | CO-R14.S08-TE-110, CO-R11.S06-TE-120 |  |  |  | -144d | 0d | 6-way ducts, 50mm dia. HDPE [38]; Road crossing ducts (6-way) [3] | 5,594.5 |  | CO-R11.S08-TE-120 | 14 | 14 | PD | PC | LM | DC | TE | DUCTS | CON | R14 | S08 | TE |
| CO-R14.S08-TE-130 |  | Trench Backfilling and Compaction Works for Ducts of Telecom Network-[Road 14]-[SW-8] | 7d | 2027-02-10 | 2027-02-17 | CO-R14.S08-TE-120, CO-R11.S06-TE-130 |  |  |  | -144d | 21d | 6-way ducts, 50mm dia. HDPE [77]; Road crossing ducts (6-way) [7] | 11,490.5 |  | CO-R11.S08-TE-130 | 14 | 14 | PD | BF | LM | DC | TE | DUCTS | CON | R14 | S08 | TE |

| ID | WBS | Activity | Duration | Start | Finish | Predecessors | Complete | Planned start | Planned finish | Total float | Free float | Resources | Cost | Actual cost | Activity ID N | Seq | New Seq | 02- Network-WBS | 03- Activity | 04-UOM | 05-Discipline | 01- Network | 07-Weightage System | 08 Stage | 09 Roads | 10 side Walk | Discipline |
| --- | --- | --- | --- | --- | --- | --- | --- | --- | --- | --- | --- | --- | --- | --- | --- | --- | --- | --- | --- | --- | --- | --- | --- | --- | --- | --- | --- |
|  | MH | **Manholes Works** |  | 2027-02-18 | 2027-03-18 |  |  |  |  |  |  |  |  |  |  |  |  |  |  |  |  |  |  |  |  |  |  |
| CO-R14.S08-TE-140 |  | Excavation Works for Manholes of Telecom Network-[Road 14]-[SW-8] | 7d | 2027-02-18 | 2027-02-27 | CO-R11.S06-TE-140, CO-R14.S08-TE-100, CO-R14.S07-TE-140 |  |  |  | -165d | 0d | Manhole Type 2 (2000x1000x1000) [0.6] | 1,885.38 |  | CO-R11.S08-TE-140 | 14 | 14 | MH | Ex | Each | MNH | TE | EXC | CON | R14 | S08 | TE |
| CO-R14.S08-TE-150 |  | Installation Works for Manholes of Telecom Network-[Road 14]-[SW-8] | 7d | 2027-02-28 | 2027-03-07 | CO-R14.S08-TE-140, CO-R11.S06-TE-150, PRO-R14-TE-DL-110 FF+3d |  |  |  | -165d | 0d | Manhole Type 1 (2000x1000x1000) [1]; Manhole Type 2 (2000x1000x1000) [1.8] | 8,772.31 |  | CO-R11.S08-TE-150 | 14 | 14 | MH | HH | Each | MNH | TE | INSTALL-1 | CON | R14 | S08 | TE |
| CO-R14.S08-TE-160 |  | Backfilling Works for Manholes of Telecom Network-[Road 14]-[SW-8] | 7d | 2027-03-08 | 2027-03-18 | CO-R14.S08-TE-150, CO-R11.S06-TE-160 |  |  |  | -165d | 0d | Manhole Type 2 (2000x1000x1000) [0.6] | 1,885.38 |  | CO-R11.S08-TE-160 | 14 | 14 | MH | BF | Each | MNH | TE | (New)-2 | CON | R14 | S08 | TE |
|  | MV | **Medium Voltage Network** |  | 2025-09-01 | 2025-09-07 |  |  |  |  |  |  |  |  |  |  |  |  |  |  |  |  |  |  |  |  |  |  |
|  | CW | **Cabling Works** |  | 2025-09-01 | 2025-09-07 |  |  |  |  |  |  |  |  |  |  |  |  |  |  |  |  |  |  |  |  |  |  |
| CO-R14.S08-MV-ML-640 |  | Trench Excavation and Bedding Works for Medium Voltage Network-[Road 14]-[SW-8] | 10d | 2025-09-01 A | 2025-09-03 A | CO-R14.S08-SD-170 SS+3d, CO-R14.S08-SD-170 FF+3d, CO-R14.S08-EW-110, CO-R11.S06-MV-100 | 100% | 2026-08-10 | 2026-08-20 |  |  | Excavation for Trench size 40cm wide and 80cm deep ( Maximum 1 cable 33kv) [343.35]; Excavation for Trench size 60cm wide and 80cm deep ( for Max two cables 33 kv) [19.54]; Excavation for Trench size 90cm wide and 80cm deep ( Maximum 3 cable 33kv) [87.02]; Excavation for Trench size 120cm wide and 80cm deep ( Maximum 4cable 33kv) [29.6]; Excavation for Trench size 150cm wide and 80cm deep ( Maximum 4cable 33kv) [109.52]; Duct bank for (2) 33 kv cables [11.84]; Duct bank for (4) 33 kv cables [78.14]; Duct bank for (6) 33 kv cables [35.52] | 39,931.43 | 39,931.43 | CO-R11.S08-MV-ML-640 | 14 | 14 | CW | Ex | LM | CW | MV | EXC | CON | R14 | S08 | MV |
| CO-R14.S08-MV-ML-650 |  | Cable Laying Works for Medium Voltage Network-[Road 14]-[SW-8] | 10d | 2025-09-02 A | 2025-09-04 A | CO-R14.S08-MV-ML-640 SS+3d, CO-R14.S08-MV-ML-640 FF+3d, CO-R11.S06-MV-110, PRO-R14-MV-DL-100 FF+3d | 100% | 2026-08-13 | 2026-08-24 |  |  | 33kv 3Cx400 mmï¿½ Al XLPE / LLDPE /PVC Cable [1616.12]; 33kv 3Cx400 mmï¿½ Al XLPE /LLDPE/PVC [4.9] | 214,927.17 | 214,927.17 | CO-R11.S08-MV-ML-650 | 14 | 14 | CW | CL | LM | CW | MV | LAY | CON | R14 | S08 | MV |
| CO-R14.S08-MV-ML-660 |  | Trench Backfilling and Compaction Works for Medium Voltage Network-[Road 14]-[SW-8] | 10d | 2025-09-06 A | 2025-09-07 A | CO-R14.S08-MV-ML-650 SS+3d, CO-R14.S08-MV-ML-650 FF+3d, CO-R14.S08-PW-130 FF+3d, CO-R11.S06-MV-120 | 100% | 2026-08-17 | 2026-08-27 |  |  | 33kv 3Cx400 mmï¿½ Al XLPE / LLDPE /PVC Cable [692.62]; 33kv 3Cx400 mmï¿½ Al XLPE /LLDPE/PVC [2.1] | 92,111.64 | 92,111.64 | CO-R11.S08-MV-ML-660 | 14 | 14 | CW | BF | LM | CW | MV | BACK | CON | R14 | S08 | MV |
|  | RD | **Road Works** |  | 2026-08-17 | 2027-05-09 |  |  |  |  |  |  |  |  |  |  |  |  |  |  |  |  |  |  |  |  |  |  |
|  | RD | **Pre-Bituminous Construction** |  | 2026-08-17 | 2026-09-09 |  |  |  |  |  |  |  |  |  |  |  |  |  |  |  |  |  |  |  |  |  |  |
| CO-R14.S08-RD-P-100 |  | Capping and Subgrade Layer for Road Works-[Road 14]-[SW-8] | 10d | 2026-08-17 A | 2026-08-22 A | CO-R14.S08-SD-130, CO-R14.S08-PW-130, CO-R14.S08-SL-660 SS+3d, CO-R14.S08-SL-660 FF+3d, PRO-R14-RD-DL-100 FF+3d, CO-R14.S08-MV-ML-660 SS+3d, CO-R14.S08-MV-ML-660 FF+3d, CO-R14.S08-SW-130 | 100% | 2026-08-20 | 2026-08-31 |  |  | 300mm capping layer underneath subgrade , CBR?15% [2920.26]; 300mm thick Subgrade, including subgrade preparation, CBR?25% [2920.26] | 226,612.18 | 226,612.18 | CO-R11.S08-RD-P-100 | 14 | 14 | AB | SG | Sq.m | BS | RD |  | CON | R14 | S08 | RD |
| CO-R14.S08-RD-P-110 |  | Aggregate Base Course Layer for Road Works-[Road 14]-[SW-8] | 18d | 2026-09-05 A | 2026-09-09 A | CO-R14.S08-RD-P-100 SS+3d, CO-R14.S08-RD-P-100 FF+3d, CO-R14.S08-SD-170 SS+3d, CO-R14.S08-SD-170 FF+3d, CO-R11.S06-RD-P-110, PRO-R14-RD-DL-110 FF+3d | 100% | 2027-05-05 | 2027-05-31 |  |  | Aggregate base course 200mm thick after compaction in two layers(Grading 1); CBR?80%; including watering, compaction and testing [1947.04] | 157,846.53 | 157,846.53 | CO-R11.S08-RD-P-110 | 14 | 14 | AB | BA | Sq.m | BS | RD |  | CON | R14 | S08 | RD |
|  | LS | **Pavement Works** |  | 2026-08-25 | 2027-05-09 |  |  |  |  |  |  |  |  |  |  |  |  |  |  |  |  |  |  |  |  |  |  |
| CO-R14.S08-RD-P-120 |  | Fixing of Curbstone for Sidewalks Pavement-[Road 14]-[SW-8] | 18d | 2026-08-25 A | 2026-08-31 A | PRO-R14-RD-DL-130 FF+3d, CO-R11.S06-RD-P-120 | 100% | 2026-09-06 | 2026-09-27 |  |  | Precast Concrete Kerb, Type K1 [1077.41]; Precast Concrete Kerb, Type L1 [2137.72] | 129,248.23 | 129,248.23 | CO-R11.S08-RD-P-120 | 14 | 14 | LS | CR | LM | LAND | RD |  | CON | R14 | S08 | RD |
| CO-R14.S08-RD-P-130 |  | Fixing of Interlock Tiles for Sidewalks Pavement-[Road 14]-[SW-8] | 12d | 2027-04-26 | 2027-05-09 | PRO-R14-RD-DL-120 FF+3d, CO-R14.S08-RD-P-120 SS, CO-R14.S08-RD-P-120 FF+3d, CO-R11.S06-RD-P-130 SS, CO-R14-PW-TF-100 FF, CO-R14-PW-TF-110 FF, CO-R14-PW-TF-120 FF, CO-R14-SW-TF-100 FF, CO-R14-SW-TF-110 FF, CO-R14-SW-TF-130 FF, CO-R14-SD-TF-120, CO-R11-SL-TF-180 FF, CO-R11-SL-TF-190 FF, CO-R11-IR-TF-140 FF, CO-R11-MV-TF-180 FF, CO-R11-SW-TF-100 FF, CO-R14.S08-SW-210 FF |  |  |  | -162d | 0d | Labor/Helper [6048 h]; Block Mason [6048 h]; Interlocking block pavers for sidewalk/footpath 60mm thick on and including 30mm Sand Bedding, 200mm Aggregate subbase, all in accordance with authority standards and complete as per specifications [1923.95]; Extraover for Pedestrian ramps [5] | 92,427.51 |  | CO-R11.S08-RD-P-130 | 14 | 14 | LS | IL | Sq.m | LAND | RD |  | CON | R14 | S08 | RD |
|  | 7 | **Road 15 Local 1 ( 556 LM )** |  | 2025-04-13 | 2026-11-29 |  |  |  |  |  |  |  |  |  |  |  |  |  |  |  |  |  |  |  |  |  |  |
|  | SW_9 | **SW_9** |  | 2025-04-13 | 2026-11-03 |  |  |  |  |  |  |  |  |  |  |  |  |  |  |  |  |  |  |  |  |  |  |
|  | EW | **Earthworks** |  | 2025-04-13 | 2025-04-23 |  |  |  |  |  |  |  |  |  |  |  |  |  |  |  |  |  |  |  |  |  |  |
|  | EW | **Earthworks** |  | 2025-04-13 | 2025-04-23 |  |  |  |  |  |  |  |  |  |  |  |  |  |  |  |  |  |  |  |  |  |  |
| CO-R15.S09-EW-110 |  | Embankments Works Upto Design Level for Earthworks-[Road 15]-[SW-9] | 12d | 2025-04-13 A | 2025-04-16 A | CO-R15.S09-EW-200, ENG-MS-RD-A-10, ENG-SH-RD-A-100 | 100% | 2025-05-07 | 2025-05-20 |  |  | Labor/Helper [384 h]; Skilled Labor/Surveyor [48 h]; Foreman [48 h]; Water Tank [384 h]; Dozer [384 h]; Embankments to the ROW, with suitable material other than top soil or rock according to specifications [13200.8] | 106,926.64 | 106,926.64 | CO-R15.S09-EW-110 | 7 | 7 | EW | BF | Cub.m | EW | EW |  | CON | R15 | S09 | EW |
| CO-R15.S09-EW-200 |  | Roadway Excavation Works Upto Design Level for Earthworks-[Road 15]-[SW-9] | 10d | 2025-04-16 A | 2025-04-23 A | ENG-MS-RD-A-10, ENG-SH-RD-A-100, CO-R16.S12-EW-100 | 100% | 2025-04-26 | 2025-05-06 |  |  | Labor/Helper [192 h]; Skilled Labor/Surveyor [24 h]; Foreman [24 h]; Water Tank [192 h]; Dozer [192 h]; Roadway Excavation for cuttings; on any type of material for all depths including trimming and Preparation of excavated surfaces and disposal. [7841.85] | 49,403.65 | 49,403.65 | CO-R15.S09-EW-200 | 7 | 7 | EW | Ex | Cub.m | EW | EW |  | CON | R15 | S09 | EW |
|  | SW | **Sewage Network** |  | 2025-04-29 | 2025-09-21 |  |  |  |  |  |  |  |  |  |  |  |  |  |  |  |  |  |  |  |  |  |  |
|  | ML | **Main Line Sections** |  | 2025-04-29 | 2025-07-14 |  |  |  |  |  |  |  |  |  |  |  |  |  |  |  |  |  |  |  |  |  |  |
| CO-R15.S09-SW-100 |  | Trench Excavation and Bedding Works for Main Lines of Sewage Network-[Road 15]-[SW-9] | 12d | 2025-04-29 A | 2025-05-08 A | CO-R15.S09-EW-110, ENG-MS-SW-ML-A-110, ENG-SH-SW-ML-A-110 | 100% | 2025-05-21 | 2025-06-03 |  |  | Labor/Helper [96 h]; Foreman [96 h]; Excavator [96 h]; Nominal bore : 160mm; Depth : 0.0m - 1.5m [9.4]; Nominal bore : 200mm; Depth : 0.0m - 1.5m [2.7]; Nominal bore : 200mm; Depth : 1.5m - 2.5m [7.06]; Nominal bore : 200mm; Depth : 2.5m - 3.5m [16.1]; Nominal bore : 200mm; Depth : 3.5m - 4.5m [15.12]; Nominal bore : 200mm; Depth : 4.5m -5.5m [11.13]; Nominal bore : 200mm; Depth : 5.5m - 6.5m [8.08] | 20,760.89 | 20,760.89 | CO-R15.S09-SW-100 | 7 | 7 | ML | Ex | LM | ML | SW | EX | CON | R15 | S09 | SW |
| CO-R15.S09-SW-120 |  | Pipes Laying Works for Main Lines of Sewage Network-[Road 15]-[SW-9] | 12d | 2025-05-09 A | 2025-05-31 A | CO-R15.S09-SW-100, PRO-R15-SW-DL-100 FF+3d | 100% | 2025-06-04 | 2025-06-22 |  |  | Labor/Helper [384 h]; Skilled Labor/Surveyor [20 h]; Foreman [20 h]; Plumber [192 h]; Excavator [192 h]; Nominal bore : 160mm; Depth : 0.0m - 1.5m [28.2]; Nominal bore : 200mm; Depth : 0.0m - 1.5m [8.11]; Nominal bore : 200mm; Depth : 1.5m - 2.5m [21.19]; Nominal bore : 200mm; Depth : 2.5m - 3.5m [48.31]; Nominal bore : 200mm; Depth : 3.5m - 4.5m [45.35]; Nominal bore : 200mm; Depth : 4.5m -5.5m [33.38]; Nominal bore : 200mm; Depth : 5.5m - 6.5m [24.23] | 62,282.68 | 62,282.68 | CO-R15.S09-SW-120 | 7 | 7 | ML | PL | LM | ML | SW | PIPE | CON | R15 | S09 | SW |
| CO-R15.S09-SW-130 |  | Trench Backfilling and Compaction Works for Main Lines of Sewage Network-[Road 15]-[SW-9] | 10d | 2025-07-11 A | 2025-07-14 A | ENG-SH-SW-ML-A-110 FF, ENG-MS-SW-ML-A-110 FF, CO-R15.S09-SW-120, CO-R15.S09-SW-210 FF, CO-R16.S12-SW-130 | 100% | 2025-07-20 | 2025-07-30 |  |  | Skilled Labor/Surveyor [10 h]; Foreman [10 h]; Excavator [96 h]; Nominal bore : 160mm; Depth : 0.0m - 1.5m [4.7]; Nominal bore : 200mm; Depth : 0.0m - 1.5m [1.35]; Nominal bore : 200mm; Depth : 1.5m - 2.5m [3.53]; Nominal bore : 200mm; Depth : 2.5m - 3.5m [8.05]; Nominal bore : 200mm; Depth : 3.5m - 4.5m [7.56]; Nominal bore : 200mm; Depth : 4.5m -5.5m [5.56]; Nominal bore : 200mm; Depth : 5.5m - 6.5m [4.04] | 10,380.45 | 10,380.45 | CO-R15.S09-SW-130 | 7 | 7 | ML | BF | LM | ML | SW | BACK | CON | R15 | S09 | SW |

| ID | WBS | Activity | Duration | Start | Finish | Predecessors | Complete | Planned start | Planned finish | Total float | Free float | Resources | Cost | Actual cost | Activity ID N | Seq | New Seq | 01- Network | 07-Weightage System | 08 Stage | 09 Roads | 10 side Walk | Discipline | 02- Network-WBS | 03- Activity | 04-UOM | 05-Discipline |
| --- | --- | --- | --- | --- | --- | --- | --- | --- | --- | --- | --- | --- | --- | --- | --- | --- | --- | --- | --- | --- | --- | --- | --- | --- | --- | --- | --- |
|  | 1 | **Manholes** |  | 2025-05-10 | 2025-09-21 |  |  |  |  |  |  |  |  |  |  |  |  |  |  |  |  |  |  |  |  |  |  |
| CO-R15.S09-SW-160 |  | Excavation Works for Main Line Manholes of Sewage Network-[Road 15]-[SW-9] | 1d | 2025-05-10 A | 2025-05-15 A | CO-R15.S09-SW-120 SS | 100% | 2025-06-04 | 2025-06-04 |  |  | Labor/Helper [16 h]; Skilled Labor/Surveyor [8 h]; Excavator [16 h]; Depth: not exceeding 1.5m [0.3]; Depth: 1.5 - 2.5m [0.75]; Depth: 5.5 - 6.5m [0.45]; Depth:6.5 - 7.5m [0.3] | 27,571.67 | 27,571.67 | CO-R15.S09-SW-160 | 7 | 7 | SW | EX | CON | R15 | S09 | SW |  |  |  |  |
| CO-R15.S09-SW-170 |  | Installation RC Footing Works for Main Line Manholes of Sewage Network-[Road 15]-[SW-9] | 2d | 2025-06-15 A | 2025-06-30 A | CO-R15.S09-SW-160, PRO-R15-SW-DL-110 FF+3d | 100% | 2025-06-10 | 2025-06-11 |  |  | Cons. Carpenter [32 h]; Steel Fixer [32 h]; Depth: not exceeding 1.5m [0.2]; Depth: 1.5 - 2.5m [0.5]; Depth: 5.5 - 6.5m [0.3]; Depth:6.5 - 7.5m [0.2] | 18,381.12 | 18,381.12 | CO-R15.S09-SW-170 | 7 | 7 | SW | RC F | CON | R15 | S09 | SW |  |  |  |  |
| CO-R15.S09-SW-180 |  | Install Grp Liner Wall Works for Main Line Manholes of Sewage Network-[Road 15]-[SW-9] | 4d | 2025-07-01 A | 2025-07-05 A | CO-R15.S09-SW-170 | 100% | 2025-06-12 | 2025-06-16 |  |  | Labor/Helper [32 h]; Plumber [32 h]; Depth: not exceeding 1.5m [0.8]; Depth: 1.5 - 2.5m [2]; Depth: 5.5 - 6.5m [1.2]; Depth:6.5 - 7.5m [0.8] | 73,524.46 | 73,524.46 | CO-R15.S09-SW-180 | 7 | 7 | SW | LP | CON | R15 | S09 | SW |  |  |  |  |
| CO-R15.S09-SW-190 |  | Pouring Grp Liner Wall Works for Main Line Manholes of Sewage Network-[Road 15]-[SW-9] | 1d | 2025-09-16 A | 2025-09-16 A | CO-R15.S09-SW-180 | 100% | 2025-06-17 | 2025-06-17 |  |  | Cons. Carpenter [32 h]; Steel Fixer [32 h]; Depth: not exceeding 1.5m [0.1]; Depth: 1.5 - 2.5m [0.25]; Depth: 5.5 - 6.5m [0.15]; Depth:6.5 - 7.5m [0.1] | 9,190.56 | 9,190.56 | CO-R15.S09-SW-190 | 7 | 7 | SW | (New) | CON | R15 | S09 | SW |  |  |  |  |
| CO-R15.S09-SW-200 |  | Backfilling Works for Main Line Manholes of Sewage Network-[Road 15]-[SW-9] | 4d | 2025-09-16 A | 2025-09-20 A | CO-R15.S09-SW-190 | 100% | 2025-06-18 | 2025-06-22 |  |  | Labor/Helper [32 h]; Skilled Labor/Surveyor [16 h]; Excavator [32 h]; Depth: not exceeding 1.5m [0.3]; Depth: 1.5 - 2.5m [0.75]; Depth: 5.5 - 6.5m [0.45]; Depth:6.5 - 7.5m [0.3] | 27,571.67 | 27,571.67 | CO-R15.S09-SW-200 | 7 | 7 | SW | BACK | CON | R15 | S09 | SW |  |  |  |  |
| CO-R15.S09-SW-210 |  | Testing Works for Main Line Manholes of Sewage Network-[Road 15]-[SW-9] | 1d | 2025-09-21 A | 2025-09-21 A | CO-R15.S09-SW-200 | 100% | 2025-06-23 | 2025-06-23 |  |  | Labor/Helper [16 h]; Plumber [16 h]; Depth: not exceeding 1.5m [0.1]; Depth: 1.5 - 2.5m [0.25]; Depth: 5.5 - 6.5m [0.15]; Depth:6.5 - 7.5m [0.1] | 9,190.56 | 9,190.56 | CO-R15.S09-SW-210 | 7 | 7 | SW | T&COV | CON | R15 | S09 | SW |  |  |  |  |
|  | SD | **Storm Drainage Network** |  | 2025-06-17 | 2026-07-13 |  |  |  |  |  |  |  |  |  |  |  |  |  |  |  |  |  |  |  |  |  |  |
|  | ML | **Main Line Sections** |  | 2025-07-11 | 2025-07-17 |  |  |  |  |  |  |  |  |  |  |  |  |  |  |  |  |  |  |  |  |  |  |
| CO-R15.S09-SD-100 |  | Trench Excavation and Bedding Works for Main Lines of Storm Drainage Network-[Road 15]-[SW-9] | 10d | 2025-07-11 A | 2025-07-14 A | ENG-SH-SD-ML-A-110, CO-R15.S09-EW-110, CO-R15.S09-EW-200, CO-R15.S09-SW-130 SS+3d, CO-R15.S09-SW-130 FF+3d, ENG-MS-SD-ML-A-110 | 100% | 2025-07-23 | 2025-08-03 |  |  | Skilled Labor/Surveyor [12 h]; Foreman [12 h]; Excavator [112 h]; Pipe with diameter 600mm ; depth: 1.51m - 2.5m [9.65]; Pipe with diameter 700mm ; depth: 1.51m - 2.5m [37.71]; Pipe with diameter 1000mm ; depth: 1.51m - 2.5m [14]; Pipe with diameter 1000mm ; depth: 2.51 - 3.5m [30] | 56,469.65 | 56,469.65 | CO-R15.S09-SD-100 | 7 | 7 | SD | EX | CON | R15 | S09 | SD | ML | Ex | LM | ML |
| CO-R15.S09-SD-120 |  | Pipes Laying Works for Main Lines of Storm Drainage Network-[Road 15]-[SW-9] | 15d | 2025-07-15 A | 2025-07-16 A | CO-R15.S09-SD-100 | 100% | 2025-08-04 | 2025-08-20 |  |  | Labor/Helper [240 h]; Skilled Labor/Surveyor [12 h]; Foreman [12 h]; Plumber [120 h]; Excavator [120 h]; Pipe with diameter 600mm ; depth: 1.51m - 2.5m [28.95]; Pipe with diameter 700mm ; depth: 1.51m - 2.5m [113.14]; Pipe with diameter 1000mm ; depth: 1.51m - 2.5m [42]; Pipe with diameter 1000mm ; depth: 2.51 - 3.5m [90] | 169,408.94 | 169,408.94 | CO-R15.S09-SD-120 | 7 | 7 | SD | PIPE | CON | R15 | S09 | SD | ML | PL | LM | ML |
| CO-R15.S09-SD-130 |  | Trench Backfilling and Compaction Works for Main Lines of Storm Drainage Network-[Road 15]-[SW-9] | 16d | 2025-07-17 A | 2025-07-17 A | CO-R15.S09-SD-120 SS+3d, CO-R15.S09-SD-120 FF+3d, ENG-SH-SD-ML-A-110 FF, CO-R14.S07-SD-130, ENG-MS-SD-ML-A-110 FF, CO-R15.S09-SD-120, CO-R15.S09-SD-220 FF | 100% | 2026-02-02 | 2026-02-19 |  |  | Skilled Labor/Surveyor [13 h]; Foreman [13 h]; Excavator [128 h]; Pipe with diameter 600mm ; depth: 1.51m - 2.5m [4.83]; Pipe with diameter 700mm ; depth: 1.51m - 2.5m [18.86]; Pipe with diameter 1000mm ; depth: 1.51m - 2.5m [7]; Pipe with diameter 1000mm ; depth: 2.51 - 3.5m [15] | 28,234.82 | 28,234.82 | CO-R15.S09-SD-130 | 7 | 7 | SD | BACK | CON | R15 | S09 | SD | ML | BF | LM | ML |
|  | MH | **Manholes** |  | 2025-06-17 | 2026-07-13 |  |  |  |  |  |  |  |  |  |  |  |  |  |  |  |  |  |  |  |  |  |  |
| CO-R15.S09-SD-190 |  | Install RC Footing Works for Manholes of Storm Drainage Network-[Road 15]-[SW-9] | 1d | 2025-06-17 A | 2025-07-17 A | CO-R15.S09-SD-180 | 100% | 2025-08-05 | 2025-08-05 |  |  | Cons. Carpenter [48 h]; Steel Fixer [48 h]; MH ; depth: 0.0m - 1.5m [0.05]; MH ; depth: 1.51m - 2.5m [0.1]; MH ; depth: 1.51m - 2.5m [0.15]; MH ; depth: 1.51m - 2.5m [0.05] | 3,311.34 | 3,311.34 | CO-R15.S09-SD-190 | 7 | 7 | SD | RC F | CON | R15 | S09 | SD |  |  |  |  |
| CO-R15.S09-SD-180 |  | Trench Excavation and Bedding Works for Manholes of Storm Drainage Network-[Road 15]-[SW-9] | 1d | 2025-07-15 A | 2025-07-16 A | CO-R15.S09-SD-120 SS, PRO-SD-1DL-100 | 100% | 2025-08-04 | 2025-08-04 |  |  | Labor/Helper [24 h]; Skilled Labor/Surveyor [12 h]; Excavator [24 h]; MH ; depth: 0.0m - 1.5m [0.15]; MH ; depth: 1.51m - 2.5m [0.3]; MH ; depth: 1.51m - 2.5m [0.45]; MH ; depth: 1.51m - 2.5m [0.15] | 9,934.02 | 9,934.02 | CO-R15.S09-SD-180 | 7 | 7 | SD | EX | CON | R15 | S09 | SD |  |  |  |  |
| CO-R15.S09-SD-200 |  | Install RC Wall Rings & Slab Works for Manholes of Storm Drainage Network-[Road 15]-[SW-9] | 4d | 2025-07-18 A | 2025-07-18 A | CO-R15.S09-SD-190 | 100% | 2025-08-06 | 2025-08-10 |  |  | Cons. Carpenter [192 h]; Steel Fixer [192 h]; MH ; depth: 0.0m - 1.5m [0.45]; MH ; depth: 1.51m - 2.5m [0.9]; MH ; depth: 1.51m - 2.5m [1.35]; MH ; depth: 1.51m - 2.5m [0.45] | 29,802.07 | 29,802.07 | CO-R15.S09-SD-200 | 7 | 7 | SD | RC W | CON | R15 | S09 | SD |  |  |  |  |
| CO-R15.S09-SD-220 |  | Backfilling Works for Manholes of Storm Drainage Network-[Road 15]-[SW-9] | 7d | 2025-07-19 A | 2025-07-19 A | CO-R15.S09-SD-210 | 100% | 2025-08-12 | 2025-08-19 |  |  | Labor/Helper [168 h]; Skilled Labor/Surveyor [84 h]; Excavator [168 h]; MH ; depth: 0.0m - 1.5m [0.2]; MH ; depth: 1.51m - 2.5m [0.4]; MH ; depth: 1.51m - 2.5m [0.6]; MH ; depth: 1.51m - 2.5m [0.2] | 13,245.36 | 13,245.36 | CO-R15.S09-SD-220 | 7 | 7 | SD | BACK | CON | R15 | S09 | SD |  |  |  |  |
| CO-R15.S09-SD-210 |  | Testing Works for Manholes of Storm Drainage Network-[Road 15]-[SW-9] | 1d | 2026-06-04 A | 2026-07-13 A | CO-R15.S09-SD-200 | 100% | 2025-08-11 | 2025-08-11 |  |  | Labor/Helper [24 h]; Plumber [24 h]; MH ; depth: 0.0m - 1.5m [0.1]; MH ; depth: 1.51m - 2.5m [0.2]; MH ; depth: 1.51m - 2.5m [0.3]; MH ; depth: 1.51m - 2.5m [0.1] | 6,622.68 | 6,622.68 | CO-R15.S09-SD-210 | 7 | 7 | SD | T&COV | CON | R15 | S09 | SD |  |  |  |  |
|  | CB | **Catch Basin Sections** |  | 2025-06-19 | 2026-07-13 |  |  |  |  |  |  |  |  |  |  |  |  |  |  |  |  |  |  |  |  |  |  |
| CO-R15.S09-SD-140 |  | Trench Excavation and Bedding Works for Catch Basins of Storm Drainage Network-[Road 15]-[SW-9] | 7d | 2025-06-19 A | 2025-06-23 A | CO-R15.S09-EW-110, ENG-SH-SD-CB-A-110, ENG-MS-SD-CB-A-110, CO-R15.S09-SD-220 | 100% | 2025-08-20 | 2025-08-27 |  |  | Skilled Labor/Surveyor [6 h]; Foreman [6 h]; Excavator [56 h]; Pipe with diameter 300mm ; depth: 0 - 1.5m [41.53]; Pipe with diameter 400mm ; depth: 0 - 1.5m [2.53] | 10,241.12 | 10,241.12 | CO-R15.S09-SD-140 | 7 | 7 | SD | EX | CON | R15 | S09 | SD | CB | Ex | Each | CB |
| CO-R15.S09-SD-150 |  | Installation and Pipes Laying Connection Works for Catch Basins of Storm Drainage Network-[Road 15]-[SW-9] | 7d | 2025-08-03 A | 2025-08-05 A | CO-R15.S09-SD-140 | 100% | 2025-08-28 | 2025-09-04 |  |  | Labor/Helper [160 h]; Skilled Labor/Surveyor [8 h]; Foreman [8 h]; Excavator [80 h]; Pipe with diameter 300mm ; depth: 0 - 1.5m [124.59]; Pipe with diameter 400mm ; depth: 0 - 1.5m [7.6] | 30,723.14 | 30,723.14 | CO-R15.S09-SD-150 | 7 | 7 | SD | INSTALL | CON | R15 | S09 | SD | CB | CB | Each | CB |
| CO-R15.S09-SD-170 |  | Trench Backfilling and Compaction Works for Catch Basins of Storm Drainage Network-[Road 15]-[SW-9] | 10d | 2025-08-06 A | 2025-08-07 A | CO-R15.S09-SD-160 | 100% | 2025-09-14 | 2025-09-25 |  |  | Skilled Labor/Surveyor [8 h]; Foreman [8 h]; Excavator [80 h]; Pipe with diameter 300mm ; depth: 0 - 1.5m [55.37]; Pipe with diameter 400mm ; depth: 0 - 1.5m [3.38] | 13,654.68 | 13,654.68 | CO-R15.S09-SD-170 | 7 | 7 | SD | BACK | CON | R15 | S09 | SD | CB | BF | Each | CB |
| CO-R15.S09-SD-160 |  | Testing Works for Catch Basins of Storm Drainage Network-[Road 15]-[SW-9] | 7d | 2026-06-04 A | 2026-07-13 A | CO-R15.S09-SD-150, CO-R15.S09-SD-120 | 100% | 2025-09-06 | 2025-09-13 |  |  | Labor/Helper [112 h]; Skilled Labor/Surveyor [6 h]; Foreman [6 h]; Plumber [56 h]; Excavator [56 h]; Pipe with diameter 300mm ; depth: 0 - 1.5m [27.69]; Pipe with diameter 400mm ; depth: 0 - 1.5m [1.69] | 6,827.34 | 6,827.34 | CO-R15.S09-SD-160 | 7 | 7 | SD | TEST | CON | R15 | S09 | SD | CB | PL | Each | CB |
|  | IR | **Irrigation Network** |  | 2025-04-28 | 2026-11-03 |  |  |  |  |  |  |  |  |  |  |  |  |  |  |  |  |  |  |  |  |  |  |
|  | ML | **Main Line Pipes** |  | 2025-04-28 | 2026-11-03 |  |  |  |  |  |  |  |  |  |  |  |  |  |  |  |  |  |  |  |  |  |  |
| CO-R15.S09-IR-100 |  | Trench Excavation and Bedding Works for Main Lines of Irrigation Network-[Road 15]-[SW-9] | 7d | 2025-04-28 A | 2025-05-05 A | ENG-SH-IR-ML-A-110, CO-R15.S09-EW-110, CO-R15.S09-SD-170, ENG-MS-IR-ML-A-110 | 100% | 2025-09-27 | 2025-10-04 |  |  | Skilled Labor/Surveyor [6 h]; Foreman [6 h]; Excavator [56 h]; 125 mm pipe; depth 0.0m - 1.5m [141.13] | 10,496.14 | 10,496.14 | CO-R15.S09-IR-100 | 7 | 7 | IR | EX | CON | R15 | S09 | IR | ML | Ex | LM | ML |
| CO-R15.S09-IR-110 |  | Pipes Laying Works for Main Lines of Irrigation Network-[Road 15]-[SW-9] | 10d | 2025-05-06 A | 2025-05-31 A | CO-R15.S09-IR-100, PRO-R15-IR-DL-100 FF+3d | 100% | 2025-10-05 | 2025-10-15 |  |  | Labor/Helper [160 h]; Skilled Labor/Surveyor [8 h]; Foreman [8 h]; Plumber [80 h]; Excavator [80 h]; 125 mm pipe; depth 0.0m - 1.5m [423.4] | 31,488.41 | 31,488.41 | CO-R15.S09-IR-110 | 7 | 7 | IR | PIPE | CON | R15 | S09 | IR | ML | PL | LM | ML |
| CO-R15.S09-IR-130 |  | Trench Backfilling and Compaction Works for Main Lines of Irrigation Network-[Road 15]-[SW-9] | 10d | 2025-06-01 A | 2025-06-12 A | CO-R15.S09-IR-110 | 100% | 2025-10-25 | 2025-11-04 |  |  | Skilled Labor/Surveyor [8 h]; Foreman [8 h]; Excavator [80 h]; 125 mm pipe; depth 0.0m - 1.5m [70.57] | 5,248.07 | 5,248.07 | CO-R15.S09-IR-130 | 7 | 7 | IR | BACK | CON | R15 | S09 | IR | ML | BF | LM | ML |
| CO-R15.S09-IR-120 |  | Installation Works for Main Line Valves of Irrigation Network-[Road 15]-[SW-9] | 7d | 2026-10-27 | 2026-11-03 | CO-R15.S09-IR-110 |  |  |  | -5d | 158d | Labor/Helper [112 h]; Skilled Labor/Surveyor [6 h]; Foreman [6 h]; Plumber [112 h]; Gate valves dia (90)mm on pipes with dia (125) mm. [6] | 11,959.5 |  | CO-R15.S09-IR-120 | 7 | 7 | IR | VALV | CON | R15 | S09 | IR | ML | VI | Each | ML |

| ID | WBS | Activity | Duration | Start | Finish | Predecessors | Complete | Planned start | Planned finish | Resources | Cost | Actual cost | Activity ID N | Seq | New Seq | 02- Network-WBS | 03- Activity | 04-UOM | 05-Discipline | 01- Network | 07-Weightage System | 08 Stage | 09 Roads | 10 side Walk | Discipline |
| --- | --- | --- | --- | --- | --- | --- | --- | --- | --- | --- | --- | --- | --- | --- | --- | --- | --- | --- | --- | --- | --- | --- | --- | --- | --- |
|  | TE | **Telecom Network** |  | 2025-08-02 | 2025-08-28 |  |  |  |  |  |  |  |  |  |  |  |  |  |  |  |  |  |  |  |  |
|  | PD | **Ducts Works** |  | 2025-08-02 | 2025-08-19 |  |  |  |  |  |  |  |  |  |  |  |  |  |  |  |  |  |  |  |  |
| CO-R15.S09-TE-100 |  | Trench Excavation and Bedding Works for Ducts of Telecom Network-[Road 15]-[SW-9] | 7d | 2025-08-02 A | 2025-08-05 A | CO-R15.S09-IR-130, CO-R16.S12-TE-100 | 100% | 2025-12-16 | 2025-12-23 | Skilled Labor/Surveyor [6 h]; Foreman [6 h]; Excavator [56 h]; 6-way ducts, 50mm dia. HDPE [22]; Road crossing ducts (6-way) [2] | 3,283 | 3,283 | CO-R15.S09-TE-100 | 7 | 7 | PD | Ex | LM | DC | TE | DUCTS | CON | R15 | S09 | TE |
| CO-R15.S09-TE-110 |  | Pipes Laying Works for Ducts of Telecom Network-[Road 15]-[SW-9] | 7d | 2025-08-06 A | 2025-08-09 A | CO-R15.S09-TE-100 | 100% | 2026-07-15 | 2026-07-22 | Labor/Helper [112 h]; Skilled Labor/Surveyor [6 h]; Foreman [6 h]; Plumber [56 h]; Excavator [56 h]; JCB [28 h]; Truck [56 h]; 6-way ducts, 50mm dia. HDPE [132]; Road crossing ducts (6-way) [11] | 19,530.5 | 19,530.5 | CO-R15.S09-TE-110 | 7 | 7 | PD | PL | LM | DC | TE | DUCTS | CON | R15 | S09 | TE |
| CO-R15.S09-TE-120 |  | Pouring Plain Concrete Above Ducts of Telecom Network-[Road 15]-[SW-9] | 7d | 2025-08-10 A | 2025-08-13 A | CO-R15.S09-TE-110 | 100% | 2026-07-23 | 2026-07-30 | Skilled Labor/Surveyor [6 h]; Foreman [6 h]; Cons. Carpenter [112 h]; Block Mason [56 h]; 6-way ducts, 50mm dia. HDPE [22]; Road crossing ducts (6-way) [2] | 3,283 | 3,283 | CO-R15.S09-TE-120 | 7 | 7 | PD | PC | LM | DC | TE | DUCTS | CON | R15 | S09 | TE |
| CO-R15.S09-TE-130 |  | Trench Backfilling and Compaction Works for Ducts of Telecom Network-[Road 15]-[SW-9] | 7d | 2025-08-16 A | 2025-08-19 A | CO-R15.S09-TE-120 | 100% | 2026-08-01 | 2026-08-08 | Skilled Labor/Surveyor [6 h]; Foreman [6 h]; Excavator [56 h]; 6-way ducts, 50mm dia. HDPE [44]; Road crossing ducts (6-way) [4] | 6,566 | 6,566 | CO-R15.S09-TE-130 | 7 | 7 | PD | BF | LM | DC | TE | DUCTS | CON | R15 | S09 | TE |
|  | MH | **Manholes Works** |  | 2025-08-26 | 2025-08-28 |  |  |  |  |  |  |  |  |  |  |  |  |  |  |  |  |  |  |  |  |
| CO-R15.S09-TE-140 |  | Excavation Works for Manholes of Telecom Network-[Road 15]-[SW-9] | 7d | 2025-08-26 A | 2025-08-26 A | CO-R15.S09-TE-100 | 100% | 2026-07-15 | 2026-07-22 | Skilled Labor/Surveyor [6 h]; Foreman [6 h]; Excavator [56 h]; Manhole Type 2 (2000x1000x1000) [0.4] | 1,256.92 | 1,256.92 | CO-R15.S09-TE-140 | 7 | 7 | MH | Ex | Each | MNH | TE | EXC | CON | R15 | S09 | TE |
| CO-R15.S09-TE-150 |  | Installation Works for Manholes of Telecom Network-[Road 15]-[SW-9] | 7d | 2025-08-27 A | 2025-08-27 A | CO-R15.S09-TE-140 | 100% | 2026-07-23 | 2026-07-30 | Skilled Labor/Surveyor [6 h]; Foreman [6 h]; Excavator [56 h]; Manhole Type 1 (2000x1000x1000) [1]; Manhole Type 2 (2000x1000x1000) [1.2] | 6,886.93 | 6,886.93 | CO-R15.S09-TE-150 | 7 | 7 | MH | HH | Each | MNH | TE | INSTALL-1 | CON | R15 | S09 | TE |
| CO-R15.S09-TE-160 |  | Backfilling Works for Manholes of Telecom Network-[Road 15]-[SW-9] | 7d | 2025-08-28 A | 2025-08-28 A | CO-R15.S09-TE-150 | 100% | 2026-08-01 | 2026-08-08 | Skilled Labor/Surveyor [6 h]; Foreman [6 h]; Excavator [56 h]; Manhole Type 2 (2000x1000x1000) [0.4] | 1,256.92 | 1,256.92 | CO-R15.S09-TE-160 | 7 | 7 | MH | BF | Each | MNH | TE | (New)-2 | CON | R15 | S09 | TE |
|  | MV | **Medium Voltage Network** |  | 2025-08-08 | 2025-08-10 |  |  |  |  |  |  |  |  |  |  |  |  |  |  |  |  |  |  |  |  |
|  | CW | **Cabling Works** |  | 2025-08-08 | 2025-08-10 |  |  |  |  |  |  |  |  |  |  |  |  |  |  |  |  |  |  |  |  |
| CO-R15.S09-MV-ML-250 |  | Trench Excavation and Bedding Works for Medium Voltage Network-[Road 15]-[SW-9] | 18d | 2025-08-08 A | 2025-08-08 A | ENG-SH-MV-A-110, CO-R15.S09-SD-170 SS+3d, CO-R15.S09-SD-170 FF+3d, CO-R15.S09-EW-110, CO-R15.S09-TE-130 SS+3d, CO-R15.S09-TE-130 FF+3d, ENG-MS-MV-A-110, CO-R15.S10-SL-160 | 100% | 2026-08-04 | 2026-08-24 | Skilled Labor/Surveyor [15 h]; Foreman [15 h]; Excavator [144 h]; Excavation for Trench size 40cm wide and 80cm deep ( Maximum 1 cable 33kv) [195.83]; Excavation for Trench size 60cm wide and 80cm deep ( for Max two cables 33 kv) [11.14]; Excavation for Trench size 90cm wide and 80cm deep ( Maximum 3 cable 33kv) [49.63]; Excavation for Trench size 120cm wide and 80cm deep ( Maximum 4cable 33kv) [16.88]; Excavation for Trench size 150cm wide and 80cm deep ( Maximum 4cable 33kv) [62.46]; Duct bank for (2) 33 kv cables [6.75]; Duct bank for (4) 33 kv cables [44.57]; Duct bank for (6) 33 kv cables [20.26] | 22,775.27 | 22,775.27 | CO-R15.S09-MV-ML-250 | 7 | 7 | CW | Ex | LM | CW | MV | EXC | CON | R15 | S09 | MV |
| CO-R15.S09-MV-ML-260 |  | Cable Laying Works for Medium Voltage Network-[Road 15]-[SW-9] | 18d | 2025-08-09 A | 2025-08-09 A | CO-R15.S09-MV-ML-250 SS+3d, CO-R15.S09-MV-ML-250 FF+3d, PRO-R15-MV-DL-100 FF+3d | 100% | 2026-08-08 | 2026-08-27 | Labor/Helper [144 h]; Electrician [144 h]; Low Current Technician [144 h]; 33kv 3Cx400 mmï¿½ Al XLPE / LLDPE /PVC Cable [921.76]; 33kv 3Cx400 mmï¿½ Al XLPE /LLDPE/PVC [2.8] | 122,594.06 | 122,594.06 | CO-R15.S09-MV-ML-260 | 7 | 7 | CW | CL | LM | CW | MV | LAY | CON | R15 | S09 | MV |
| CO-R15.S09-MV-ML-270 |  | Trench Backfilling and Compaction Works for Medium Voltage Network-[Road 15]-[SW-9] | 18d | 2025-08-09 A | 2025-08-10 A | CO-R15.S09-MV-ML-260 SS+3d, CO-R15.S09-MV-ML-260 FF+3d | 100% | 2026-08-11 | 2026-08-31 | Skilled Labor/Surveyor [15 h]; Foreman [15 h]; Excavator [144 h]; Water Tank [36 h]; 33kv 3Cx400 mmï¿½ Al XLPE / LLDPE /PVC Cable [395.04]; 33kv 3Cx400 mmï¿½ Al XLPE /LLDPE/PVC [1.2] | 52,540.31 | 52,540.31 | CO-R15.S09-MV-ML-270 | 7 | 7 | CW | BF | LM | CW | MV | BACK | CON | R15 | S09 | MV |
|  | RD | **Road Works** |  | 2025-07-22 | 2026-10-12 |  |  |  |  |  |  |  |  |  |  |  |  |  |  |  |  |  |  |  |  |
|  | RD | **Pre-Bituminous Construction** |  | 2025-07-22 | 2025-10-07 |  |  |  |  |  |  |  |  |  |  |  |  |  |  |  |  |  |  |  |  |
| CO-R15.S09-RD-P-100 |  | Capping and Subgrade Layer for Road Works-[Road 15]-[SW-9] | 18d | 2025-07-22 A | 2025-07-27 A | ENG-SH-RD-A-100, CO-R15.S09-SD-130, CO-R15.S09-SW-130, ENG-MS-RD-A-10, CO-R15.S09-TE-130, CO-R15.S09-TE-160, CO-R15.S09-MV-ML-270 SS+3d, CO-R15.S09-MV-ML-270 FF+3d | 100% | 2026-08-15 | 2026-09-03 | Labor/Helper [288 h]; Skilled Labor/Surveyor [144 h]; Loader [144 h]; Grader [144 h]; Road Roller [144 h]; Water Tank [144 h]; 300mm capping layer underneath subgrade , CBR?15% [1665.58]; 300mm thick Subgrade, including subgrade preparation, CBR?25% [1665.58] | 129,249.01 | 129,249.01 | CO-R15.S09-RD-P-100 | 7 | 7 | AB | SG | Sq.m | BS | RD |  | CON | R15 | S09 | RD |
| CO-R15.S09-RD-P-110 |  | Aggregate Base Course Layer for Road Works-[Road 15]-[SW-9] | 18d | 2025-10-01 A | 2025-10-07 A | CO-R15.S09-RD-P-100 SS+3d, CO-R15.S09-RD-P-100 FF+3d, CO-R15.S09-SD-170 SS+3d, CO-R15.S09-SD-170 FF+3d | 100% | 2026-09-27 | 2026-10-17 | Labor/Helper [288 h]; Skilled Labor/Surveyor [144 h]; Foreman [144 h]; Loader [144 h]; Grader [144 h]; Road Roller [144 h]; Aggregate base course 200mm thick after compaction in two layers(Grading 1); CBR?80%; including watering, compaction and testing [1110.5] | 90,028.24 | 90,028.24 | CO-R15.S09-RD-P-110 | 7 | 7 | AB | BA | Sq.m | BS | RD |  | CON | R15 | S09 | RD |
|  | LS | **Pavement Works** |  | 2026-08-25 | 2026-10-12 |  |  |  |  |  |  |  |  |  |  |  |  |  |  |  |  |  |  |  |  |
| CO-R15.S09-RD-P-120 |  | Fixing of Curbstone for Sidewalks Pavement-[Road 15]-[SW-9] | 18d | 2026-08-25 A | 2026-08-31 A | CO-R14.S07-RD-P-120, CO-R15.S09-RD-P-110 SS+3d, CO-R15.S09-RD-P-110 FF+3d | 100% | 2026-09-30 | 2026-10-20 | Labor/Helper [288 h]; Block Mason [864 h]; Precast Concrete Kerb, Type K1 [614.51]; Precast Concrete Kerb, Type L1 [1219.26] | 73,717.55 | 73,717.55 | CO-R15.S09-RD-P-120 | 7 | 7 | LS | CR | LM | LAND | RD |  | CON | R15 | S09 | RD |
| CO-R15.S09-RD-P-130 |  | Fixing of Interlock Tiles for Sidewalks Pavement-[Road 15]-[SW-9] | 12d | 2026-08-25 A | 2026-10-12 A | CO-R15.S09-RD-P-120 SS, CO-R15.S09-RD-P-120 FF+3d, CO-R15-SD-TF-100 | 100% | 2026-10-26 | 2026-11-08 | Labor/Helper [288 h]; Block Mason [576 h]; Interlocking block pavers for sidewalk/footpath 60mm thick on and including 30mm Sand Bedding, 200mm Aggregate subbase, all in accordance with authority standards and complete as per specifications [1097.33]; Extraover for Pedestrian ramps [3] | 52,781.33 | 52,781.33 | CO-R15.S09-RD-P-130 | 7 | 7 | LS | IL | Sq.m | LAND | RD |  | CON | R15 | S09 | RD |
|  | SW_10 | **SW_10** |  | 2025-04-24 | 2026-11-29 |  |  |  |  |  |  |  |  |  |  |  |  |  |  |  |  |  |  |  |  |
|  | EW | **Earthworks** |  | 2025-04-24 | 2025-04-30 |  |  |  |  |  |  |  |  |  |  |  |  |  |  |  |  |  |  |  |  |
|  | EW | **Earthworks** |  | 2025-04-24 | 2025-04-30 |  |  |  |  |  |  |  |  |  |  |  |  |  |  |  |  |  |  |  |  |
| CO-R15.S10-EW-100 |  | Roadway Excavation Works Upto Design Level for Earthworks-[Road 15]-[SW-10] | 10d | 2025-04-24 A | 2025-04-26 A | ENG-MS-RD-A-10, ENG-SH-RD-A-100, CO-R15.S09-EW-200 | 100% | 2025-05-07 | 2025-05-18 | Labor/Helper [400 h]; Skilled Labor/Surveyor [50 h]; Foreman [50 h]; Dump Truck [800 h]; Water Tank [400 h]; Dozer [400 h]; Roadway Excavation for cuttings; on any type of material for all depths including trimming and Preparation of excavated surfaces and disposal. [7841.85] | 49,403.65 | 49,403.65 | CO-R15.S10-EW-100 | 8 | 8 | EW | Ex | Cub.m | EW | EW |  | CON | R15 | S10 | EW |
| CO-R15.S10-EW-110 |  | Embankments Works Upto Design Level for Earthworks-[Road 15]-[SW-10] | 12d | 2025-04-27 A | 2025-04-30 A | CO-R15.S10-EW-100, ENG-MS-RD-A-10, ENG-SH-RD-A-100 | 100% | 2025-05-19 | 2025-06-01 | Labor/Helper [384 h]; Skilled Labor/Surveyor [48 h]; Foreman [48 h]; Dump Truck [768 h]; Water Tank [384 h]; Dozer [384 h]; Embankments to the ROW, with suitable material other than top soil or rock according to specifications [13200.8] | 106,926.64 | 106,926.64 | CO-R15.S10-EW-110 | 8 | 8 | EW | BF | Cub.m | EW | EW |  | CON | R15 | S10 | EW |

| ID | WBS | Activity | Duration | Start | Finish | Predecessors | Complete | Planned start | Planned finish | Resources | Cost | Actual cost | Activity ID N | Seq | New Seq | 02- Network-WBS | 03- Activity | 04-UOM | 05-Discipline | 01- Network | 07-Weightage System | 08 Stage | 09 Roads | 10 side Walk | Discipline |
| --- | --- | --- | --- | --- | --- | --- | --- | --- | --- | --- | --- | --- | --- | --- | --- | --- | --- | --- | --- | --- | --- | --- | --- | --- | --- |
|  | SW | **Sewage Network** |  | 2025-05-01 | 2026-07-07 |  |  |  |  |  |  |  |  |  |  |  |  |  |  |  |  |  |  |  |  |
|  | ML | **Main Line Sections** |  | 2025-05-01 | 2025-07-16 |  |  |  |  |  |  |  |  |  |  |  |  |  |  |  |  |  |  |  |  |
| CO-R15.S10-SW-100 |  | Trench Excavation and Bedding Works for Main Lines of Sewage Network-[Road 15]-[SW-10] | 12d | 2025-05-01 A | 2025-06-12 A | CO-R15.S10-EW-110, ENG-MS-SW-ML-A-110, ENG-SH-SW-ML-A-110 | 100% | 2025-06-02 | 2025-06-19 | Labor/Helper [96 h]; Foreman [96 h]; Excavator [96 h]; Nominal bore : 160mm; Depth : 0.0m - 1.5m [9.4]; Nominal bore : 200mm; Depth : 0.0m - 1.5m [2.7]; Nominal bore : 200mm; Depth : 1.5m - 2.5m [7.06]; Nominal bore : 200mm; Depth : 2.5m - 3.5m [16.1]; Nominal bore : 200mm; Depth : 3.5m - 4.5m [15.12]; Nominal bore : 200mm; Depth : 4.5m -5.5m [11.13]; Nominal bore : 200mm; Depth : 5.5m - 6.5m [8.08] | 20,760.89 | 20,760.89 | CO-R15.S10-SW-100 | 8 | 8 | ML | Ex | LM | ML | SW | EX | CON | R15 | S10 | SW |
| CO-R15.S10-SW-120 |  | Pipes Laying Works for Main Lines of Sewage Network-[Road 15]-[SW-10] | 12d | 2025-05-13 A | 2025-05-30 A | PRO-R15-SW-DL-100 FF+3d, CO-R15.S10-SW-100 | 100% | 2025-06-21 | 2025-07-03 | Labor/Helper [384 h]; Skilled Labor/Surveyor [20 h]; Foreman [20 h]; Plumber [192 h]; Excavator [192 h]; Nominal bore : 160mm; Depth : 0.0m - 1.5m [28.2]; Nominal bore : 200mm; Depth : 0.0m - 1.5m [8.11]; Nominal bore : 200mm; Depth : 1.5m - 2.5m [21.19]; Nominal bore : 200mm; Depth : 2.5m - 3.5m [48.31]; Nominal bore : 200mm; Depth : 3.5m - 4.5m [45.35]; Nominal bore : 200mm; Depth : 4.5m -5.5m [33.38]; Nominal bore : 200mm; Depth : 5.5m - 6.5m [24.23] | 62,282.68 | 62,282.68 | CO-R15.S10-SW-120 | 8 | 8 | ML | PL | LM | ML | SW | PIPE | CON | R15 | S10 | SW |
| CO-R15.S10-SW-130 |  | Trench Backfilling and Compaction Works for Main Lines of Sewage Network-[Road 15]-[SW-10] | 10d | 2025-07-15 A | 2025-07-16 A | CO-R15.S10-SW-120, CO-R15.S09-SW-130 | 100% | 2025-07-31 | 2025-08-11 | Skilled Labor/Surveyor [10 h]; Foreman [10 h]; Excavator [96 h]; Nominal bore : 160mm; Depth : 0.0m - 1.5m [4.7]; Nominal bore : 200mm; Depth : 0.0m - 1.5m [1.35]; Nominal bore : 200mm; Depth : 1.5m - 2.5m [3.53]; Nominal bore : 200mm; Depth : 2.5m - 3.5m [8.05]; Nominal bore : 200mm; Depth : 3.5m - 4.5m [7.56]; Nominal bore : 200mm; Depth : 4.5m -5.5m [5.56]; Nominal bore : 200mm; Depth : 5.5m - 6.5m [4.04] | 10,380.45 | 10,380.45 | CO-R15.S10-SW-130 | 8 | 8 | ML | BF | LM | ML | SW | BACK | CON | R15 | S10 | SW |
|  | 1 | **Manholes** |  | 2025-06-01 | 2026-07-07 |  |  |  |  |  |  |  |  |  |  |  |  |  |  |  |  |  |  |  |  |
| CO-R15.S10-SW-160 |  | Excavation Works for Main Line Manholes of Sewage Network-[Road 15]-[SW-10] | 1d | 2025-06-01 A | 2025-06-01 A | CO-R15.S10-SW-120 SS | 100% | 2025-06-21 | 2025-06-21 | Labor/Helper [8 h]; Skilled Labor/Surveyor [4 h]; Excavator [8 h]; Depth: not exceeding 1.5m [0.3]; Depth: 1.5 - 2.5m [0.3]; Depth: 2.5 - 3.5m [0.3]; Depth: 3.5 - 4.5m [0.15] | 8,648.23 | 8,648.23 | CO-R15.S10-SW-160 | 8 | 8 |  |  |  |  | SW | EX | CON | R15 | S10 | SW |
| CO-R15.S10-SW-170 |  | Installation RC Footing Works for Main Line Manholes of Sewage Network-[Road 15]-[SW-10] | 2.25d | 2025-06-25 A | 2025-06-30 A | CO-R15.S10-SW-160, PRO-R15-SW-DL-110 FF+3d | 100% | 2025-06-22 | 2025-06-24 | Cons. Carpenter [36 h]; Steel Fixer [36 h]; Depth: not exceeding 1.5m [0.2]; Depth: 1.5 - 2.5m [0.2]; Depth: 2.5 - 3.5m [0.2]; Depth: 3.5 - 4.5m [0.1] | 5,765.48 | 5,765.48 | CO-R15.S10-SW-170 | 8 | 8 |  |  |  |  | SW | RC F | CON | R15 | S10 | SW |
| CO-R15.S10-SW-180 |  | Install Grp Liner Wall Works for Main Line Manholes of Sewage Network-[Road 15]-[SW-10] | 4d | 2025-07-01 A | 2025-07-08 A | CO-R15.S10-SW-170 | 100% | 2025-06-24 | 2025-06-29 | Labor/Helper [32 h]; Plumber [32 h]; Depth: not exceeding 1.5m [0.8]; Depth: 1.5 - 2.5m [0.8]; Depth: 2.5 - 3.5m [0.8]; Depth: 3.5 - 4.5m [0.4] | 23,061.94 | 23,061.94 | CO-R15.S10-SW-180 | 8 | 8 |  |  |  |  | SW | LP | CON | R15 | S10 | SW |
| CO-R15.S10-SW-200 |  | Backfilling Works for Main Line Manholes of Sewage Network-[Road 15]-[SW-10] | 4d | 2025-07-09 A | 2025-07-12 A | CO-R15.S10-SW-190 | 100% | 2025-06-30 | 2025-07-05 | Labor/Helper [32 h]; Skilled Labor/Surveyor [16 h]; Excavator [32 h]; Depth: not exceeding 1.5m [0.3]; Depth: 1.5 - 2.5m [0.3]; Depth: 2.5 - 3.5m [0.3]; Depth: 3.5 - 4.5m [0.15] | 8,648.23 | 8,648.23 | CO-R15.S10-SW-200 | 8 | 8 |  |  |  |  | SW | BACK | CON | R15 | S10 | SW |
| CO-R15.S10-SW-210 |  | Testing Works for Main Line Manholes of Sewage Network-[Road 15]-[SW-10] | 1d | 2025-07-09 A | 2025-07-12 A | CO-R15.S10-SW-200 | 100% | 2026-10-13 | 2026-10-13 | Labor/Helper [8 h]; Plumber [8 h]; Depth: not exceeding 1.5m [0.1]; Depth: 1.5 - 2.5m [0.1]; Depth: 2.5 - 3.5m [0.1]; Depth: 3.5 - 4.5m [0.05] | 2,882.74 | 2,882.74 | CO-R15.S10-SW-210 | 8 | 8 |  |  |  |  | SW | T&COV | CON | R15 | S10 | SW |
| CO-R15.S10-SW-190 |  | Pouring Grp Liner Wall Works for Main Line Manholes of Sewage Network-[Road 15]-[SW-10] | 1d | 2026-07-01 A | 2026-07-07 A | CO-R15.S10-SW-180 | 100% | 2025-06-29 | 2025-06-30 | Cons. Carpenter [16 h]; Steel Fixer [16 h]; Depth: not exceeding 1.5m [0.1]; Depth: 1.5 - 2.5m [0.1]; Depth: 2.5 - 3.5m [0.1]; Depth: 3.5 - 4.5m [0.05] | 2,882.74 | 2,882.74 | CO-R15.S10-SW-190 | 8 | 8 |  |  |  |  | SW | (New) | CON | R15 | S10 | SW |
|  | SD | **Storm Drainage Network** |  | 2025-07-15 | 2026-07-13 |  |  |  |  |  |  |  |  |  |  |  |  |  |  |  |  |  |  |  |  |
|  | ML | **Main Line Sections** |  | 2025-07-15 | 2025-07-19 |  |  |  |  |  |  |  |  |  |  |  |  |  |  |  |  |  |  |  |  |
| CO-R15.S10-SD-100 |  | Trench Excavation and Bedding Works for Main Lines of Storm Drainage Network-[Road 15]-[SW-10] | 10d | 2025-07-15 A | 2025-07-16 A | CO-R15.S10-EW-110, CO-R15.S10-EW-100, CO-R15.S10-SW-130 SS+3d, CO-R15.S10-SW-130 FF+3d | 100% | 2025-08-04 | 2025-08-14 | Skilled Labor/Surveyor [12 h]; Foreman [12 h]; Excavator [112 h]; Pipe with diameter 400mm ; depth: 0.0m - 1.5m [39.51]; Pipe with diameter 400mm ; depth: 1.51m - 2.5m [87.46]; Pipe with diameter 500mm ; depth: 1.51m - 2.5m [80.38]; Pipe with diameter 600mm ; depth: 1.51m - 2.5m [9.65]; Pipe with diameter 700mm ; depth: 1.51m - 2.5m [37.71]; Pipe with diameter 800mm ; depth: 1.51m - 2.5m [30.09]; Pipe with diameter 900mm ; depth: 1.51m - 2.5m [31.53] | 119,487.92 | 119,487.92 | CO-R15.S10-SD-100 | 8 | 8 | ML | Ex | LM | ML | SD | EX | CON | R15 | S10 | SD |
| CO-R15.S10-SD-120 |  | Pipes Laying Works for Main Lines of Storm Drainage Network-[Road 15]-[SW-10] | 15d | 2025-07-17 A | 2025-07-17 A | PRO-R15-SD-DL-120 FF+3d, CO-R15.S10-SD-100 | 100% | 2025-08-16 | 2025-09-01 | Labor/Helper [240 h]; Skilled Labor/Surveyor [12 h]; Foreman [12 h]; Plumber [120 h]; Excavator [120 h]; Pipe with diameter 400mm ; depth: 0.0m - 1.5m [118.54]; Pipe with diameter 400mm ; depth: 1.51m - 2.5m [262.37]; Pipe with diameter 500mm ; depth: 1.51m - 2.5m [241.15]; Pipe with diameter 600mm ; depth: 1.51m - 2.5m [28.95]; Pipe with diameter 700mm ; depth: 1.51m - 2.5m [113.14]; Pipe with diameter 800mm ; depth: 1.51m - 2.5m [90.28]; Pipe with diameter 900mm ; depth: 1.51m - 2.5m [94.6] | 358,463.75 | 358,463.75 | CO-R15.S10-SD-120 | 8 | 8 | ML | PL | LM | ML | SD | PIPE | CON | R15 | S10 | SD |
| CO-R15.S10-SD-130 |  | Trench Backfilling and Compaction Works for Main Lines of Storm Drainage Network-[Road 15]-[SW-10] | 15d | 2025-07-18 A | 2025-07-19 A | CO-R15.S10-SD-120 SS+3d, CO-R15.S10-SD-120 FF+3d, CO-R14.S08-SD-130, CO-R15.S10-SD-120, CO-R15.S10-SD-220 FF | 100% | 2026-02-08 | 2026-02-24 | Skilled Labor/Surveyor [12 h]; Foreman [12 h]; Excavator [120 h]; Pipe with diameter 400mm ; depth: 0.0m - 1.5m [19.76]; Pipe with diameter 400mm ; depth: 1.51m - 2.5m [69.72]; Pipe with diameter 600mm ; depth: 1.51m - 2.5m [4.83]; Pipe with diameter 700mm ; depth: 1.51m - 2.5m [18.86]; Pipe with diameter 800mm ; depth: 1.51m - 2.5m [15.05]; Pipe with diameter 900mm ; depth: 1.51m - 2.5m [15.77] | 53,519.55 | 53,519.55 | CO-R15.S10-SD-130 | 8 | 8 | ML | BF | LM | ML | SD | BACK | CON | R15 | S10 | SD |
|  | MH | **Manholes** |  | 2025-07-18 | 2026-07-13 |  |  |  |  |  |  |  |  |  |  |  |  |  |  |  |  |  |  |  |  |
| CO-R15.S10-SD-180 |  | Trench Excavation and Bedding Works for Manholes of Storm Drainage Network-[Road 15]-[SW-10] | 1d | 2025-07-18 A | 2025-07-18 A | CO-R15.S10-SD-120 SS, PRO-SD-1DL-100 | 100% | 2025-08-16 | 2025-08-16 | Labor/Helper [40 h]; Skilled Labor/Surveyor [20 h]; Excavator [40 h]; MH ; depth: 0.0m - 1.5m [0.15]; MH ; depth: 1.51m - 2.5m [0.3]; MH ; depth: 1.51m - 2.5m [0.45]; MH ; depth: 2.51 - 3.5m [0.15]; MH ; depth: 1.51m - 2.5m [0.15]; MH ; depth: 2.51 - 3.5m [0.3] | 18,018.04 | 18,018.04 | CO-R15.S10-SD-180 | 8 | 8 |  |  |  |  | SD | EX | CON | R15 | S10 | SD |
| CO-R15.S10-SD-190 |  | Install RC Footing Works for Manholes of Storm Drainage Network-[Road 15]-[SW-10] | 1d | 2025-07-18 A | 2025-07-18 A | CO-R15.S10-SD-180 | 100% | 2025-08-17 | 2025-08-17 | Cons. Carpenter [80 h]; Steel Fixer [80 h]; MH ; depth: 0.0m - 1.5m [0.05]; MH ; depth: 1.51m - 2.5m [0.1]; MH ; depth: 1.51m - 2.5m [0.15]; MH ; depth: 2.51 - 3.5m [0.05]; MH ; depth: 1.51m - 2.5m [0.05]; MH ; depth: 2.51 - 3.5m [0.1] | 6,006.01 | 6,006.01 | CO-R15.S10-SD-190 | 8 | 8 |  |  |  |  | SD | RC F | CON | R15 | S10 | SD |
| CO-R15.S10-SD-200 |  | Install RC Wall Rings & Slab Works for Manholes of Storm Drainage Network-[Road 15]-[SW-10] | 4d | 2025-07-19 A | 2025-07-20 A | CO-R15.S10-SD-190 | 100% | 2025-08-18 | 2025-08-21 | Cons. Carpenter [128 h]; Steel Fixer [128 h]; MH ; depth: 0.0m - 1.5m [0.45]; MH ; depth: 1.51m - 2.5m [0.9]; MH ; depth: 1.51m - 2.5m [1.35]; MH ; depth: 2.51 - 3.5m [0.45]; MH ; depth: 1.51m - 2.5m [0.45]; MH ; depth: 2.51 - 3.5m [0.9] | 54,054.13 | 54,054.13 | CO-R15.S10-SD-200 | 8 | 8 |  |  |  |  | SD | RC W | CON | R15 | S10 | SD |
| CO-R15.S10-SD-220 |  | Backfilling Works for Manholes of Storm Drainage Network-[Road 15]-[SW-10] | 7d | 2025-07-21 A | 2025-07-21 A | CO-R15.S10-SD-210 | 100% | 2025-08-24 | 2025-08-31 | Labor/Helper [112 h]; Skilled Labor/Surveyor [56 h]; Excavator [112 h]; MH ; depth: 0.0m - 1.5m [0.2]; MH ; depth: 1.51m - 2.5m [0.4]; MH ; depth: 1.51m - 2.5m [0.6]; MH ; depth: 2.51 - 3.5m [0.2]; MH ; depth: 1.51m - 2.5m [0.2]; MH ; depth: 2.51 - 3.5m [0.4] | 24,024.06 | 24,024.06 | CO-R15.S10-SD-220 | 8 | 8 |  |  |  |  | SD | BACK | CON | R15 | S10 | SD |
| CO-R15.S10-SD-210 |  | Testing Works for Manholes of Storm Drainage Network-[Road 15]-[SW-10] | 1d | 2026-06-04 A | 2026-07-13 A | CO-R15.S10-SD-200 | 100% | 2025-08-23 | 2025-08-23 | Labor/Helper [40 h]; Plumber [40 h]; MH ; depth: 0.0m - 1.5m [0.1]; MH ; depth: 1.51m - 2.5m [0.2]; MH ; depth: 1.51m - 2.5m [0.3]; MH ; depth: 2.51 - 3.5m [0.1]; MH ; depth: 1.51m - 2.5m [0.1]; MH ; depth: 2.51 - 3.5m [0.2] | 12,012.03 | 12,012.03 | CO-R15.S10-SD-210 | 8 | 8 |  |  |  |  | SD | T&COV | CON | R15 | S10 | SD |
|  | CB | **Catch Basin Sections** |  | 2025-08-02 | 2026-07-13 |  |  |  |  |  |  |  |  |  |  |  |  |  |  |  |  |  |  |  |  |
| CO-R15.S10-SD-140 |  | Trench Excavation and Bedding Works for Catch Basins of Storm Drainage Network-[Road 15]-[SW-10] | 7d | 2025-08-02 A | 2025-08-04 A | CO-R15.S10-EW-110, CO-R15.S10-SD-220 | 100% | 2025-09-01 | 2025-09-08 | Skilled Labor/Surveyor [6 h]; Foreman [6 h]; Excavator [56 h]; Pipe with diameter 300mm ; depth: 0 - 1.5m [41.53]; Pipe with diameter 400mm ; depth: 0 - 1.5m [2.53] | 10,241.12 | 10,241.12 | CO-R15.S10-SD-140 | 8 | 8 | CB | Ex | Each | CB | SD | EX | CON | R15 | S10 | SD |
| CO-R15.S10-SD-150 |  | Installation and Pipes Laying Connection Works for Catch Basins of Storm Drainage Network-[Road 15]-[SW-10] | 7d | 2025-08-05 A | 2025-08-09 A | CO-R15.S10-SD-140, PRO-R15-SD-DL-130 FF+3d | 100% | 2025-09-09 | 2025-09-16 | Labor/Helper [160 h]; Skilled Labor/Surveyor [8 h]; Foreman [8 h]; Excavator [80 h]; Pipe with diameter 300mm ; depth: 0 - 1.5m [124.59]; Pipe with diameter 400mm ; depth: 0 - 1.5m [7.6] | 30,723.14 | 30,723.14 | CO-R15.S10-SD-150 | 8 | 8 | CB | CB | Each | CB | SD | INSTALL | CON | R15 | S10 | SD |
| CO-R15.S10-SD-170 |  | Trench Backfilling and Compaction Works for Catch Basins of Storm Drainage Network-[Road 15]-[SW-10] | 10d | 2025-08-10 A | 2025-08-13 A | CO-R15.S10-SD-160 SS+3d, CO-R15.S10-SD-160 FF+3d | 100% | 2025-09-21 | 2025-10-02 | Skilled Labor/Surveyor [8 h]; Foreman [8 h]; Excavator [80 h]; Pipe with diameter 300mm ; depth: 0 - 1.5m [55.37]; Pipe with diameter 400mm ; depth: 0 - 1.5m [3.38] | 13,654.68 | 13,654.68 | CO-R15.S10-SD-170 | 8 | 8 | CB | BF | Each | CB | SD | BACK | CON | R15 | S10 | SD |
| CO-R15.S10-SD-160 |  | Testing Works for Catch Basins of Storm Drainage Network-[Road 15]-[SW-10] | 4d | 2026-06-04 A | 2026-07-13 A | CO-R15.S10-SD-150, CO-R15.S10-SD-120, PRO-R15-SD-DL-110 FF+3d | 100% | 2025-09-17 | 2025-09-21 | Labor/Helper [64 h]; Skilled Labor/Surveyor [4 h]; Foreman [4 h]; Plumber [32 h]; Excavator [32 h]; Pipe with diameter 300mm ; depth: 0 - 1.5m [27.69]; Pipe with diameter 400mm ; depth: 0 - 1.5m [1.69] | 6,827.34 | 6,827.34 | CO-R15.S10-SD-160 | 8 | 8 | CB | PL | Each | CB | SD | TEST | CON | R15 | S10 | SD |

| ID | WBS | Activity | Duration | Start | Finish | Predecessors | Complete | Planned start | Planned finish | Total float | Free float | Resources | Cost | Actual cost | Activity ID N | Seq | New Seq | 02- Network-WBS | 03- Activity | 04-UOM | 05-Discipline | 01- Network | 07-Weightage System | 08 Stage | 09 Roads | 10 side Walk | Discipline |
| --- | --- | --- | --- | --- | --- | --- | --- | --- | --- | --- | --- | --- | --- | --- | --- | --- | --- | --- | --- | --- | --- | --- | --- | --- | --- | --- | --- |
|  | SL | **Street Lighting Network** |  | 2025-08-05 | 2026-11-29 |  |  |  |  |  |  |  |  |  |  |  |  |  |  |  |  |  |  |  |  |  |  |
|  | LP | **Lighting Poles Works** |  | 2025-08-05 | 2026-11-29 |  |  |  |  |  |  |  |  |  |  |  |  |  |  |  |  |  |  |  |  |  |  |
| CO-R15.S10-SL-100 |  | Foundation Excavation Works for Lighting Poles of Street Lighting Network-[Road 15]-[SW-10] | 12d | 2025-08-05 A | 2025-08-06 A | CO-R15.S10-EW-100, CO-R15.S10-EW-110, CO-R15.S09-IR-100 SS+3d, CO-R15.S09-IR-130, ENG-MS-SL-A-110, ENG-SH-SL-A-110, PRO-SL-1DL-110 | 100% | 2025-11-05 | 2025-11-18 |  |  | Lighting poles with one arm, including the power distribution box, screws, cables, 12 meters in height. [1.25] | 2,379.34 | 2,379.34 | CO-R11.S07-SL-100 | 8 | 8 | LP | Ex | Each | POL | SL | EX | CON | R15 | S10 | SL |
| CO-R15.S10-SL-110 |  | Installation Works for Lighting Poles Foundation of Street Lighting Network-[Road 15]-[SW-10] | 12d | 2025-08-07 A | 2025-08-07 A | CO-R15.S10-SL-100, PRO-R15-SL-DL-110 FF+3d | 100% | 2025-11-19 | 2025-12-02 |  |  | Reinforced concrete foundation, for 12m high lighting columns With Drawpits [25] | 9,095.25 | 9,095.25 | CO-R11.S07-SL-110 | 8 | 8 | LP | LPF | Each | POL | SL | INSTALL | CON | R15 | S10 | SL |
| CO-R15.S10-SL-120 |  | Installation Works for Lighting Poles of Street Lighting Network-[Road 15]-[SW-10] | 17.5d | 2025-09-14 A | 2025-09-14 A | CO-R15.S10-SL-110, CO-R15.S10-SL-160, PRO-R15-SL-DL-120 FF+3d | 100% | 2026-01-07 | 2026-01-27 |  |  | Lighting poles with one arm, including the power distribution box, screws, cables, 12 meters in height. [13.75] | 26,172.71 | 26,172.71 | CO-R11.S07-SL-120 | 8 | 8 | LP | LP | Each | POL | SL | POLES | CON | R15 | S10 | SL |
| CO-R15.S10-SL-210 |  | Backfilling Works for Lighting Poles of Street Lighting Network-[Road 15]-[SW-10] | 12d | 2026-07-07 A | 2026-07-13 A | CO-R15.S10-SL-120 SS, CO-R15.S10-SL-120 FF, CO-R17.S14-SL-210 | 100% | 2026-01-13 | 2026-01-27 |  |  | Lighting poles with one arm, including the power distribution box, screws, cables, 12 meters in height. [5] | 9,517.35 | 9,517.35 | CO-R11.S07-SL-210 | 8 | 8 |  |  |  |  | SL | BACK | CON | R15 | S10 | SL |
| CO-R15.S10-SL-200 |  | Testing Works for Lighting Poles of Street Lighting Network-[Road 15]-[SW-10] | 5d | 2026-10-27 | 2026-11-01 | CO-R15.S10-SL-210, CO-R15.S10-SL-120 |  |  |  | -135d | 24d | Lighting poles with one arm, including the power distribution box, screws, cables, 12 meters in height. [5] | 9,517.35 |  | CO-R11.S07-SL-200 | 8 | 8 |  |  |  |  | SL | TESTING | CON | R15 | S10 | SL |
| CO-R15.S10-SL-130 |  | Installation Works for Lighting Fixtures With Drop Wire of Street Lighting Network-[Road 15]-[SW-10] | 18d | 2026-11-09 | 2026-11-29 | CO-R15.S10-SL-120 SS+5d, CO-R15.S10-SL-120 FF+5d, CO-R15.S10-SL-200 FF, PRO-R15-SL-DL-140 FF+3d |  |  |  | -159d | 29d | Street Lighting( LED) Luminaire,(Type C) complete with control gear and lamp, ?.17000 Lumen [25] | 14,974.5 |  | CO-R11.S07-SL-130 | 8 | 8 | LP | LPA | Each | POL | SL | INSTALL | CON | R15 | S10 | SL |
|  | CW | **Cabling Works** |  | 2025-08-08 | 2025-08-11 |  |  |  |  |  |  |  |  |  |  |  |  |  |  |  |  |  |  |  |  |  |  |
| CO-R15.S10-SL-140 |  | Trench Excavation and Bedding Works for Street Lighting Network-[Road 15]-[SW-10] | 10d | 2025-08-08 A | 2025-08-08 A | CO-R15.S10-SL-110 | 100% | 2025-12-03 | 2025-12-14 |  |  |  |  |  | CO-R11.S07-SL-140 | 8 | 8 | CW | Ex | LM | CB | SL | EXC | CON | R15 | S10 | SL |
| CO-R15.S10-SL-150 |  | Cable Laying Works for Street Lighting Network-[Road 15]-[SW-10] | 10d | 2025-08-10 A | 2025-08-10 A | CO-R15.S10-SL-140, PRO-R15-SL-DL-100 FF+3d | 100% | 2025-12-15 | 2025-12-25 |  |  | Supply, installation , test and operation of cables, Copper, (4Cx25mmï¿½,Cu/XLPE/SWA/PVC +1x16mmï¿½ PVC/PVC) [928.2] | 43,532.58 | 43,532.58 | CO-R11.S07-SL-150 | 8 | 8 | CW | CL | LM | CB | SL | LAYING | CON | R15 | S10 | SL |
| CO-R15.S10-SL-160 |  | Trench Backfilling and Compaction Works for Street Lighting Network-[Road 15]-[SW-10] | 10d | 2025-08-11 A | 2025-08-11 A | CO-R15.S10-SL-150 | 100% | 2025-12-27 | 2026-01-06 |  |  | Supply, installation , test and operation of cables, Copper, (4Cx25mmï¿½,Cu/XLPE/SWA/PVC +1x16mmï¿½ PVC/PVC) [71.4] | 3,348.66 | 3,348.66 | CO-R11.S07-SL-160 | 8 | 8 | CW | BF | LM | CB | SL | BACK | CON | R15 | S10 | SL |
|  | DPB | **Distrubution Panel Boards** |  | 2026-10-27 | 2026-11-23 |  |  |  |  |  |  |  |  |  |  |  |  |  |  |  |  |  |  |  |  |  |  |
| CO-R15.S10-SL-170 |  | Foundation Excavation Works For Panel Boards of Street Lighting Network-[Road 15]-[SW-10] | 18d | 2026-10-27 | 2026-11-16 | CO-R15.S10-EW-110, ENG-MS-SL-A-110, ENG-SH-SL-A-110 |  |  |  | -71d | 0d |  |  |  | CO-R11.S07-SL-170 | 8 | 8 | DB | Ex | Each | DS | SL | EXC | CON | R15 | S10 | SL |
| CO-R15.S10-SL-180 |  | Installation Works for Panel Board Concrete Foundations of Street Lighting Network-[Road 15]-[SW-10] | 18d | 2026-10-31 | 2026-11-19 | CO-R15.S10-SL-170 SS+3d, CO-R15.S10-SL-170 FF+3d |  |  |  | -71d | 0d |  |  |  | CO-R11.S07-SL-180 | 8 | 8 | DB | PBF | Each | DS | SL | INSTALL | CON | R15 | S10 | SL |
| CO-R15.S10-SL-220 |  | A wall of concrete blocks to install the KWH meter of Street Lighting Network-[Road 15]-[SW-10] | 18d | 2026-10-31 | 2026-11-19 | CO-R15.S10-SL-180 SS, CO-R15.S10-SL-180 FF |  |  |  | -68d | 144d | Road crossing ducts, 4 way (4 x 100mm PVC) [53.04]; Drawpit with medium duty steel cover, size 900x900x1200mm, Type 4 [4] | 16,825.42 |  | CO-R11.S07-SL-220 | 8 | 8 | DB |  | Each | DS | SL | wall | CON | R15 | S10 | SL |
| CO-R15.S10-SL-190 |  | Installation Works for Lighting Panel Boards of Street Lighting Network-[Road 15]-[SW-10] | 18d | 2026-11-03 | 2026-11-23 | CO-R15.S10-SL-180 SS+3d, CO-R15.S10-SL-180 FF+3d |  |  |  | -71d | 141d |  |  |  | CO-R11.S07-SL-190 | 8 | 8 | DB | PB | Each | DS | SL | INST BO | CON | R15 | S10 | SL |
|  | PW | **Potable Water Network** |  | 2025-07-01 | 2026-11-16 |  |  |  |  |  |  |  |  |  |  |  |  |  |  |  |  |  |  |  |  |  |  |
|  | ML | **Main Line Sections** |  | 2025-07-01 | 2025-07-17 |  |  |  |  |  |  |  |  |  |  |  |  |  |  |  |  |  |  |  |  |  |  |
| CO-R15.S10-PW-100 |  | Trench Excavation and Bedding Works for Main Lines of Potable Water Network-[Road 15]-[SW-10] | 6d | 2025-07-01 A | 2025-07-06 A | CO-R15.S10-EW-110, CO-R15.S10-EW-100, CO-R15.S10-SW-130, CO-R15.S10-SD-130 | 100% | 2026-02-25 | 2026-03-03 |  |  | Skilled Labor/Surveyor [5 h]; Foreman [5 h]; Excavator [48 h]; Pipe with diameter 200mm; in depth 0.0m - 1.5m [135.5] | 19,700.35 | 19,700.35 | CO-R15.S10-PW-100 | 8 | 8 | ML | Ex | LM | ML | PW | EX | CON | R15 | S10 | PW |
| CO-R15.S10-PW-110 |  | Pipes Laying and accessories for Main Lines of Potable Water Network-[Road 15]-[SW-10] | 6d | 2025-07-07 A | 2025-07-12 A | CO-R15.S10-PW-100, CO-R14.S08-PW-110 SS, PRO-R15-PW-DL-100 FF+3d | 100% | 2026-03-04 | 2026-03-10 |  |  | Labor/Helper [96 h]; Skilled Labor/Surveyor [5 h]; Foreman [5 h]; Plumber [48 h]; Excavator [48 h]; Pipe with diameter 200mm; in depth 0.0m - 1.5m [338.75] | 49,250.86 | 49,250.86 | CO-R15.S10-PW-110 | 8 | 8 | ML | PL | LM | ML | PW | PIPE | CON | R15 | S10 | PW |
| CO-R15.S10-PW-130 |  | Trench Backfilling and Compaction Works for Main Lines of Potable Water Network-[Road 15]-[SW-10] | 6d | 2025-07-13 A | 2025-07-17 A | CO-R15.S10-PW-110, CO-R14.S08-PW-130 SS | 100% | 2026-03-25 | 2026-03-31 |  |  | Skilled Labor/Surveyor [5 h]; Foreman [5 h]; Eq. Operator [5 h]; Loader [48 h]; Compactor [48 h]; Water Tank [12 h]; Pipe with diameter 200mm; in depth 0.0m - 1.5m [135.5] | 19,700.35 | 19,700.35 | CO-R15.S10-PW-130 | 8 | 8 | ML | BF | LM | ML | PW | BACK | CON | R15 | S10 | PW |
|  | VC | **Valve Chamber** |  | 2026-10-27 | 2026-11-02 |  |  |  |  |  |  |  |  |  |  |  |  |  |  |  |  |  |  |  |  |  |  |
| CO-R15.S10-PW-210 |  | Installation Works for Main Line Valves and Valve Chambers of Potable Water Network-[Road 15]-[SW-10] | 6d | 2026-10-27 | 2026-11-02 | CO-R15.S10-PW-110 |  |  |  | 14d | 194d | Labor/Helper [8 h]; Plumber [8 h]; Gate valves dia(200)mm on pipes with dia (200) mm. [6] | 15,887.04 |  | CO-R15.S10-PW-210 | 8 | 8 | ML | VI | Each | ML | PW | INSUL | CON | R15 | S10 | PW |

| ID | WBS | Activity | Duration | Start | Finish | Predecessors | Complete | Planned start | Planned finish | Total float | Free float | Resources | Cost | Actual cost | Activity ID N | Seq | New Seq | 02- Network-WBS | 03- Activity | 04-UOM | 05-Discipline | 01- Network | 07-Weightage System | 08 Stage | 09 Roads | 10 side Walk | Discipline |
| --- | --- | --- | --- | --- | --- | --- | --- | --- | --- | --- | --- | --- | --- | --- | --- | --- | --- | --- | --- | --- | --- | --- | --- | --- | --- | --- | --- |
|  | FH | **Fire Hydrant** |  | 2026-10-27 | 2026-11-16 |  |  |  |  |  |  |  |  |  |  |  |  |  |  |  |  |  |  |  |  |  |  |
| CO-R15.S10-PW-140 |  | Excavation Works for Fire Hydrants of Potable Water Network-[Road 15]-[SW-10] | 6d | 2026-10-27 | 2026-11-02 | CO-R15.S10-PW-110 SS+3d, CO-R15.S10-PW-110 FF+3d, CO-R15.S10-EW-110, CO-R15.S10-SW-130 SS+3d, CO-R15.S10-SW-130 FF+3d, CO-R15.S10-SW-210 |  |  |  | -38d | 0d | Skilled Labor/Surveyor [5 h]; Foreman [5 h]; Excavator [48 h]; 3-outlet fire hydrant (2 x 2.5 inch and 1 x 4 inch) in the form of a separate dry vacuum cylinder [0.6] | 4,544.61 |  | CO-R15.S10-PW-140 | 8 | 8 | FH | Ex | Each | FH | PW | EX | CON | R15 | S10 | PW |
| CO-R15.S10-PW-150 |  | Installation Works for Fire Hydrant of Potable Water Network-[Road 15]-[SW-10] | 6d | 2026-11-03 | 2026-11-09 | CO-R15.S10-PW-140, PRO-R15-PW-DL-120 FF+3d |  |  |  | -38d | 0d | Labor/Helper [96 h]; Skilled Labor/Surveyor [5 h]; Foreman [5 h]; Plumber [96 h]; 3-outlet fire hydrant (2 x 2.5 inch and 1 x 4 inch) in the form of a separate dry vacuum cylinder [2.6] | 19,693.31 |  | CO-R15.S10-PW-150 | 8 | 8 | FH | FH | Each | FH | PW | INSTALL | CON | R15 | S10 | PW |
| CO-R15.S10-PW-160 |  | Trench Backfilling and Compaction Works for Fire Hydrants of Potable Water Network-[Road 15]-[SW-10] | 6d | 2026-11-10 | 2026-11-16 | CO-R15.S10-PW-150 |  |  |  | -38d | 0d | Skilled Labor/Surveyor [5 h]; Foreman [5 h]; Excavator [48 h]; 3-outlet fire hydrant (2 x 2.5 inch and 1 x 4 inch) in the form of a separate dry vacuum cylinder [0.8] | 6,059.48 |  | CO-R15.S10-PW-160 | 8 | 8 | FH | BF | Each | FH | PW | BACK | CON | R15 | S10 | PW |
|  | TE | **Telecom Network** |  | 2025-08-08 | 2025-08-28 |  |  |  |  |  |  |  |  |  |  |  |  |  |  |  |  |  |  |  |  |  |  |
|  | PD | **Ducts Works** |  | 2025-08-08 | 2025-08-11 |  |  |  |  |  |  |  |  |  |  |  |  |  |  |  |  |  |  |  |  |  |  |
| CO-R15.S10-TE-100 |  | Trench Excavation and Bedding Works for Ducts of Telecom Network-[Road 15]-[SW-10] | 7d | 2025-08-08 A | 2025-08-08 A | CO-R15.S10-SL-160 SS+5d, CO-R15.S10-SL-160 FF+5d | 100% | 2026-01-05 | 2026-01-12 |  |  | Skilled Labor/Surveyor [6 h]; Foreman [6 h]; Excavator [56 h]; 6-way ducts, 50mm dia. HDPE [22]; Road crossing ducts (6-way) [2] | 3,283 | 3,283 | CO-R15.S10-TE-100 | 8 | 8 | PD | Ex | LM | DC | TE | DUCTS | CON | R15 | S10 | TE |
| CO-R15.S10-TE-110 |  | Pipes Laying Works for Ducts of Telecom Network-[Road 15]-[SW-10] | 7d | 2025-08-09 A | 2025-08-09 A | CO-R15.S10-TE-100, PRO-R15-TE-DL-100 FF+3d | 100% | 2026-07-23 | 2026-07-30 |  |  | Labor/Helper [112 h]; Skilled Labor/Surveyor [6 h]; Foreman [6 h]; Plumber [56 h]; Excavator [56 h]; JCB [28 h]; Truck [56 h]; 6-way ducts, 50mm dia. HDPE [132]; Road crossing ducts (6-way) [11] | 19,530.5 | 19,530.5 | CO-R15.S10-TE-110 | 8 | 8 | PD | PL | LM | DC | TE | DUCTS | CON | R15 | S10 | TE |
| CO-R15.S10-TE-120 |  | Pouring Plain Concrete Above Ducts of Telecom Network-[Road 15]-[SW-10] | 7d | 2025-08-10 A | 2025-08-10 A | CO-R15.S10-TE-110 | 100% | 2026-08-01 | 2026-08-08 |  |  | Skilled Labor/Surveyor [6 h]; Foreman [6 h]; Cons. Carpenter [112 h]; Block Mason [56 h]; 6-way ducts, 50mm dia. HDPE [22]; Road crossing ducts (6-way) [2] | 3,283 | 3,283 | CO-R15.S10-TE-120 | 8 | 8 | PD | PC | LM | DC | TE | DUCTS | CON | R15 | S10 | TE |
| CO-R15.S10-TE-130 |  | Trench Backfilling and Compaction Works for Ducts of Telecom Network-[Road 15]-[SW-10] | 7d | 2025-08-11 A | 2025-08-11 A | CO-R15.S10-TE-120 | 100% | 2026-08-09 | 2026-08-16 |  |  | Skilled Labor/Surveyor [6 h]; Foreman [6 h]; Excavator [56 h]; 6-way ducts, 50mm dia. HDPE [44]; Road crossing ducts (6-way) [4] | 6,566 | 6,566 | CO-R15.S10-TE-130 | 8 | 8 | PD | BF | LM | DC | TE | DUCTS | CON | R15 | S10 | TE |
|  | MH | **Manholes Works** |  | 2025-08-26 | 2025-08-28 |  |  |  |  |  |  |  |  |  |  |  |  |  |  |  |  |  |  |  |  |  |  |
| CO-R15.S10-TE-140 |  | Excavation Works for Manholes of Telecom Network-[Road 15]-[SW-10] | 7d | 2025-08-26 A | 2025-08-26 A | CO-R15.S09-TE-140 SS, CO-R15.S10-TE-100 SS+6d, CO-R15.S10-TE-100 FF+6d | 100% | 2026-07-23 | 2026-07-30 |  |  | Skilled Labor/Surveyor [6 h]; Foreman [6 h]; Excavator [56 h]; Manhole Type 2 (2000x1000x1000) [0.4] | 1,256.92 | 1,256.92 | CO-R15.S10-TE-140 | 8 | 8 | MH | Ex | Each | MNH | TE | EXC | CON | R15 | S10 | TE |
| CO-R15.S10-TE-150 |  | Installation Works for Manholes of Telecom Network-[Road 15]-[SW-10] | 7d | 2025-08-27 A | 2025-08-27 A | CO-R15.S10-TE-140, PRO-R15-TE-DL-110 FF+3d | 100% | 2026-08-01 | 2026-08-08 |  |  | Skilled Labor/Surveyor [6 h]; Foreman [6 h]; Excavator [56 h]; Manhole Type 1 (2000x1000x1000) [1]; Manhole Type 2 (2000x1000x1000) [1.2] | 6,886.93 | 6,886.93 | CO-R15.S10-TE-150 | 8 | 8 | MH | HH | Each | MNH | TE | INSTALL-1 | CON | R15 | S10 | TE |
| CO-R15.S10-TE-160 |  | Backfilling Works for Manholes of Telecom Network-[Road 15]-[SW-10] | 7d | 2025-08-28 A | 2025-08-28 A | CO-R15.S10-TE-150 | 100% | 2026-08-09 | 2026-08-16 |  |  | Skilled Labor/Surveyor [6 h]; Foreman [6 h]; Excavator [56 h]; Manhole Type 2 (2000x1000x1000) [0.4] | 1,256.92 | 1,256.92 | CO-R15.S10-TE-160 | 8 | 8 | MH | BF | Each | MNH | TE | (New)-2 | CON | R15 | S10 | TE |
|  | RD | **Road Works** |  | 2025-07-22 | 2026-10-12 |  |  |  |  |  |  |  |  |  |  |  |  |  |  |  |  |  |  |  |  |  |  |
|  | RD | **Pre-Bituminous Construction** |  | 2025-07-22 | 2026-08-09 |  |  |  |  |  |  |  |  |  |  |  |  |  |  |  |  |  |  |  |  |  |  |
| CO-R15.S10-RD-P-100 |  | Capping and Subgrade Layer for Road Works-[Road 15]-[SW-10] | 18d | 2025-07-22 A | 2025-07-27 A | CO-R15.S10-SD-130, CO-R15.S10-SW-130, CO-R15.S10-PW-130, PRO-R15-RD-DL-100 FF+3d, CO-R15.S10-TE-130, CO-R15.S10-TE-160, CO-R15.S10-SL-160 SS+3d, CO-R15.S10-SL-160 FF+3d | 100% | 2026-08-17 | 2026-09-06 |  |  | Labor/Helper [288 h]; Skilled Labor/Surveyor [144 h]; Loader [144 h]; Grader [144 h]; Road Roller [144 h]; Water Tank [144 h]; 300mm capping layer underneath subgrade , CBR?15% [1665.58]; 300mm thick Subgrade, including subgrade preparation, CBR?25% [1665.58] | 129,249.01 | 129,249.01 | CO-R15.S10-RD-P-100 | 8 | 8 | AB | SG | Sq.m | BS | RD |  | CON | R15 | S10 | RD |
| CO-R15.S10-RD-P-110 |  | Aggregate Base Course Layer for Road Works-[Road 15]-[SW-10] | 18d | 2026-08-01 A | 2026-08-09 A | CO-R15.S10-RD-P-100 SS+3d, CO-R15.S10-RD-P-100 FF+3d, CO-R15.S10-SD-170 SS+3d, CO-R15.S10-SD-170 FF+3d, PRO-R15-RD-DL-110 FF+3d | 100% | 2026-09-24 | 2026-10-14 |  |  | Labor/Helper [288 h]; Skilled Labor/Surveyor [144 h]; Foreman [144 h]; Loader [144 h]; Grader [144 h]; Road Roller [144 h]; Aggregate base course 200mm thick after compaction in two layers(Grading 1); CBR?80%; including watering, compaction and testing [1110.5] | 90,028.24 | 90,028.24 | CO-R15.S10-RD-P-110 | 8 | 8 | AB | BA | Sq.m | BS | RD |  | CON | R15 | S10 | RD |
|  | LS | **Pavement Works** |  | 2026-08-25 | 2026-10-12 |  |  |  |  |  |  |  |  |  |  |  |  |  |  |  |  |  |  |  |  |  |  |
| CO-R15.S10-RD-P-120 |  | Fixing of Curbstone for Sidewalks Pavement-[Road 15]-[SW-10] | 18d | 2026-08-25 A | 2026-08-31 A | CO-R14.S08-RD-P-120, PRO-R15-RD-DL-130 FF+3d, CO-R15.S10-RD-P-110 SS+3d, CO-R15.S10-RD-P-110 FF+3d | 100% | 2026-09-28 | 2026-10-18 |  |  | Labor/Helper [288 h]; Block Mason [864 h]; Precast Concrete Kerb, Type K1 [614.51]; Precast Concrete Kerb, Type L1 [1219.26] | 73,717.55 | 73,717.55 | CO-R15.S10-RD-P-120 | 8 | 8 | LS | CR | LM | LAND | RD |  | CON | R15 | S10 | RD |
| CO-R15.S10-RD-P-130 |  | Fixing of Interlock Tiles for Sidewalks Pavement-[Road 15]-[SW-10] | 10d | 2026-08-25 A | 2026-10-12 A | CO-R15.S10-RD-P-120 SS, CO-R15.S10-RD-P-120 FF+3d, PRO-R15-RD-DL-120 FF+3d, CO-R15-SD-TF-100, CO-R15-SD-TF-120 | 100% | 2026-10-28 | 2026-11-08 |  |  | Labor/Helper [288 h]; Block Mason [864 h]; Interlocking block pavers for sidewalk/footpath 60mm thick on and including 30mm Sand Bedding, 200mm Aggregate subbase, all in accordance with authority standards and complete as per specifications [1097.33]; Extraover for Pedestrian ramps [3] | 52,781.33 | 52,781.33 | CO-R15.S10-RD-P-130 | 8 | 8 | LS | IL | Sq.m | LAND | RD |  | CON | R15 | S10 | RD |
|  | 8 | **Road 16 Local 1 ( 527 LM )** |  | 2025-03-13 | 2026-11-23 |  |  |  |  |  |  |  |  |  |  |  |  |  |  |  |  |  |  |  |  |  |  |
|  | SW_13 | **SW_11** |  | 2025-03-27 | 2026-11-03 |  |  |  |  |  |  |  |  |  |  |  |  |  |  |  |  |  |  |  |  |  |  |
|  | EW | **Earthworks** |  | 2025-03-27 | 2025-04-19 |  |  |  |  |  |  |  |  |  |  |  |  |  |  |  |  |  |  |  |  |  |  |
|  | EW | **Earthworks** |  | 2025-03-27 | 2025-04-19 |  |  |  |  |  |  |  |  |  |  |  |  |  |  |  |  |  |  |  |  |  |  |
| CO-R16.S11-EW-100 |  | Roadway Excavation Works Upto Design Level for Earthworks-[Road 16]-[SW-11] | 10d | 2025-03-27 A | 2025-04-12 A | ENG-MS-RD-A-10, ENG-SH-RD-A-100, CO-R17.S14-EW-100 | 100% | 2025-03-29 | 2025-04-13 |  |  | Labor/Helper [240 h]; Skilled Labor/Surveyor [30 h]; Foreman [30 h]; Water Tank [240 h]; Dozer [240 h]; Roadway Excavation for cuttings; on any type of material for all depths including trimming and Preparation of excavated surfaces and disposal. [7474.08] | 47,086.7 | 47,086.7 | CO-R16.S11-EW-100 | 5 | 5 | EW | Ex | Cub.m | EW | EW |  | CON | R16 | S11 | EW |
| CO-R16.S11-EW-110 |  | Embankments Works Upto Design Level for Earthworks-[Road 16]-[SW-11] | 12d | 2025-04-13 A | 2025-04-19 A | CO-R16.S11-EW-100, ENG-MS-RD-A-10, ENG-SH-RD-A-100, CO-R17.S14-EW-110 | 100% | 2025-04-16 | 2025-04-29 |  |  | Labor/Helper [384 h]; Skilled Labor/Surveyor [48 h]; Foreman [48 h]; Dump Truck [768 h]; Water Tank [384 h]; Dozer [384 h]; Embankments to the ROW, with suitable material other than top soil or rock according to specifications [12581.7] | 101,911.93 | 101,911.93 | CO-R16.S11-EW-110 | 5 | 5 | EW | BF | Cub.m | EW | EW |  | CON | R16 | S11 | EW |

| ID | WBS | Activity | Duration | Start | Finish | Predecessors | Complete | Planned start | Planned finish | Resources | Cost | Actual cost | Activity ID N | Seq | New Seq | 02- Network-WBS | 03- Activity | 04-UOM | 05-Discipline | 01- Network | 07-Weightage System | 08 Stage | 09 Roads | 10 side Walk | Discipline |
| --- | --- | --- | --- | --- | --- | --- | --- | --- | --- | --- | --- | --- | --- | --- | --- | --- | --- | --- | --- | --- | --- | --- | --- | --- | --- |
|  | SW | **Sewage Network** |  | 2025-06-05 | 2025-09-17 |  |  |  |  |  |  |  |  |  |  |  |  |  |  |  |  |  |  |  |  |
|  | ML | **Main Line Sections** |  | 2025-06-05 | 2025-07-08 |  |  |  |  |  |  |  |  |  |  |  |  |  |  |  |  |  |  |  |  |
| CO-R16.S11-SW-100 |  | Trench Excavation and Bedding Works for Main Lines of Sewage Network-[Road 16]-[SW-11] | 12d | 2025-06-05 A | 2025-06-15 A | CO-R16.S11-EW-110, ENG-MS-SW-ML-A-110, ENG-SH-SW-ML-A-110, CO-R17.S14-SW-100 | 100% | 2025-05-07 | 2025-05-20 | Labor/Helper [96 h]; Foreman [96 h]; Excavator [96 h]; Nominal bore : 200mm; Depth : 0.0m - 1.5m [2.97]; Nominal bore : 200mm; Depth : 1.5m - 2.5m [6.83]; Nominal bore : 200mm; Depth : 2.5m - 3.5m [9.72]; Nominal bore : 200mm; Depth : 3.5m - 4.5m [12.69]; Nominal bore : 200mm; Depth : 4.5m -5.5m [5.51]; Nominal bore : 200mm; Depth : 5.5m - 6.5m [6.19] | 13,851.53 | 13,851.53 | CO-R16.S11-SW-100 | 5 | 5 | ML | Ex | LM | ML | SW | EX | CON | R16 | S11 | SW |
| CO-R16.S11-SW-120 |  | Pipes Laying Works for Main Lines of Sewage Network-[Road 16]-[SW-11] | 12d | 2025-06-16 A | 2025-06-21 A | CO-R16.S11-SW-100, PRO-R16-SW-DL-100 FF+3d | 100% | 2025-05-21 | 2025-06-03 | Labor/Helper [384 h]; Skilled Labor/Surveyor [20 h]; Foreman [20 h]; Plumber [192 h]; Excavator [192 h]; Nominal bore : 200mm; Depth : 0.0m - 1.5m [8.92]; Nominal bore : 200mm; Depth : 1.5m - 2.5m [20.48]; Nominal bore : 200mm; Depth : 2.5m - 3.5m [29.17]; Nominal bore : 200mm; Depth : 3.5m - 4.5m [38.06]; Nominal bore : 200mm; Depth : 4.5m -5.5m [16.52]; Nominal bore : 200mm; Depth : 5.5m - 6.5m [18.58] | 41,554.58 | 41,554.58 | CO-R16.S11-SW-120 | 5 | 5 | ML | PL | LM | ML | SW | PIPE | CON | R16 | S11 | SW |
| CO-R16.S11-SW-130 |  | Trench Backfilling and Compaction Works for Main Lines of Sewage Network-[Road 16]-[SW-11] | 10d | 2025-07-06 A | 2025-07-08 A | CO-R16.S11-SW-120 SS+3d, CO-R16.S11-SW-120 FF+3d, ENG-SH-SW-ML-A-110 FF, ENG-MS-SW-ML-A-110 FF, CO-R16.S11-SW-120, CO-R16.S11-SW-210 FF, CO-R17.S14-SW-130 | 100% | 2025-06-26 | 2025-07-07 | Skilled Labor/Surveyor [10 h]; Foreman [10 h]; Excavator [96 h]; Nominal bore : 200mm; Depth : 0.0m - 1.5m [1.49]; Nominal bore : 200mm; Depth : 1.5m - 2.5m [3.41]; Nominal bore : 200mm; Depth : 2.5m - 3.5m [4.86]; Nominal bore : 200mm; Depth : 3.5m - 4.5m [6.34]; Nominal bore : 200mm; Depth : 4.5m -5.5m [2.75]; Nominal bore : 200mm; Depth : 5.5m - 6.5m [3.1] | 6,925.76 | 6,925.76 | CO-R16.S11-SW-130 | 5 | 5 | ML | BF | LM | ML | SW | BACK | CON | R16 | S11 | SW |
|  | 1 | **Manholes** |  | 2025-06-17 | 2025-09-17 |  |  |  |  |  |  |  |  |  |  |  |  |  |  |  |  |  |  |  |  |
| CO-R16.S11-SW-160 |  | Excavation Works for Main Line Manholes of Sewage Network-[Road 16]-[SW-11] | 1d | 2025-06-17 A | 2025-06-17 A | CO-R16.S11-SW-120 SS, CO-R17.S14-SW-160 | 100% | 2025-05-21 | 2025-05-21 | Labor/Helper [24 h]; Skilled Labor/Surveyor [12 h]; Excavator [24 h]; Depth: not exceeding 1.5m [0.15]; Depth: 1.5 - 2.5m [0.6]; Depth:6.5 - 7.5m [0.3] | 13,624.48 | 13,624.48 | CO-R16.S11-SW-160 | 5 | 5 |  |  |  |  | SW | EX | CON | R16 | S11 | SW |
| CO-R16.S11-SW-170 |  | Installation RC Footing Works for Main Line Manholes of Sewage Network-[Road 16]-[SW-11] | 2d | 2025-06-18 A | 2025-06-25 A | CO-R16.S11-SW-160, PRO-R16-SW-DL-110 FF+3d | 100% | 2025-05-22 | 2025-05-24 | Cons. Carpenter [96 h]; Steel Fixer [96 h]; Depth: not exceeding 1.5m [0.1]; Depth: 1.5 - 2.5m [0.4]; Depth:6.5 - 7.5m [0.2] | 9,082.99 | 9,082.99 | CO-R16.S11-SW-170 | 5 | 5 |  |  |  |  | SW | RC F | CON | R16 | S11 | SW |
| CO-R16.S11-SW-180 |  | Install Grp Liner Wall Works for Main Line Manholes of Sewage Network-[Road 16]-[SW-11] | 4d | 2025-06-26 A | 2025-07-02 A | CO-R16.S11-SW-170 | 100% | 2025-05-25 | 2025-05-28 | Labor/Helper [96 h]; Plumber [96 h]; Depth: not exceeding 1.5m [0.4]; Depth: 1.5 - 2.5m [1.6]; Depth:6.5 - 7.5m [0.8] | 36,331.96 | 36,331.96 | CO-R16.S11-SW-180 | 5 | 5 |  |  |  |  | SW | LP | CON | R16 | S11 | SW |
| CO-R16.S11-SW-200 |  | Backfilling Works for Main Line Manholes of Sewage Network-[Road 16]-[SW-11] | 4d | 2025-07-22 A | 2025-07-24 A | CO-R16.S11-SW-190 | 100% | 2025-05-31 | 2025-06-03 | Labor/Helper [64 h]; Skilled Labor/Surveyor [32 h]; Excavator [64 h]; Depth: not exceeding 1.5m [0.15]; Depth: 1.5 - 2.5m [0.6]; Depth:6.5 - 7.5m [0.3] | 13,624.48 | 13,624.48 | CO-R16.S11-SW-200 | 5 | 5 |  |  |  |  | SW | BACK | CON | R16 | S11 | SW |
| CO-R16.S11-SW-190 |  | Pouring Grp Liner Wall Works for Main Line Manholes of Sewage Network-[Road 16]-[SW-11] | 1d | 2025-09-16 A | 2025-09-16 A | CO-R16.S11-SW-180 | 100% | 2025-05-29 | 2025-05-29 | Cons. Carpenter [48 h]; Steel Fixer [48 h]; Depth: not exceeding 1.5m [0.05]; Depth: 1.5 - 2.5m [0.2]; Depth:6.5 - 7.5m [0.1] | 4,541.49 | 4,541.49 | CO-R16.S11-SW-190 | 5 | 5 |  |  |  |  | SW | (New) | CON | R16 | S11 | SW |
| CO-R16.S11-SW-210 |  | Testing Works for Main Line Manholes of Sewage Network-[Road 16]-[SW-11] | 1d | 2025-09-17 A | 2025-09-17 A | CO-R16.S11-SW-200 | 100% | 2025-06-04 | 2025-06-04 | Labor/Helper [40 h]; Plumber [40 h]; Depth: not exceeding 1.5m [0.05]; Depth: 1.5 - 2.5m [0.2]; Depth:6.5 - 7.5m [0.1] | 4,541.49 | 4,541.49 | CO-R16.S11-SW-210 | 5 | 5 |  |  |  |  | SW | T&COV | CON | R16 | S11 | SW |
|  | SD | **Storm Drainage Network** |  | 2025-07-07 | 2026-07-13 |  |  |  |  |  |  |  |  |  |  |  |  |  |  |  |  |  |  |  |  |
|  | ML | **Main Line Sections** |  | 2025-07-07 | 2025-07-13 |  |  |  |  |  |  |  |  |  |  |  |  |  |  |  |  |  |  |  |  |
| CO-R16.S11-SD-100 |  | Trench Excavation and Bedding Works for Main Lines of Storm Drainage Network-[Road 16]-[SW-11] | 10d | 2025-07-07 A | 2025-07-09 A | ENG-SH-SD-ML-A-110, CO-R16.S11-EW-110, CO-R16.S11-EW-100, CO-R16.S11-SW-130 SS+3d, CO-R16.S11-SW-130 FF+3d, ENG-MS-SD-ML-A-110 | 100% | 2025-06-30 | 2025-07-10 | Skilled Labor/Surveyor [12 h]; Foreman [12 h]; Excavator [112 h]; Pipe with diameter 600mm ; depth: 1.51m - 2.5m [29.2]; Pipe with diameter 700mm ; depth: 1.51m - 2.5m [34.68]; Pipe with diameter 1000mm ; depth: 1.51m - 2.5m [12.2]; Pipe with diameter 1000mm ; depth: 2.51 - 3.5m [12.2] | 47,196.66 | 47,196.66 | CO-R16.S11-SD-100 | 5 | 5 | ML | Ex | LM | ML | SD | EX | CON | R16 | S11 | SD |
| CO-R16.S11-SD-120 |  | Pipes Laying Works for Main Lines of Storm Drainage Network-[Road 16]-[SW-11] | 15d | 2025-07-10 A | 2025-07-12 A | CO-R16.S11-SD-100 | 100% | 2025-07-12 | 2025-07-28 | Labor/Helper [240 h]; Skilled Labor/Surveyor [12 h]; Foreman [12 h]; Plumber [120 h]; Excavator [120 h]; Pipe with diameter 600mm ; depth: 1.51m - 2.5m [87.59]; Pipe with diameter 700mm ; depth: 1.51m - 2.5m [104.05]; Pipe with diameter 1000mm ; depth: 1.51m - 2.5m [36.6]; Pipe with diameter 1000mm ; depth: 2.51 - 3.5m [36.6] | 141,589.99 | 141,589.99 | CO-R16.S11-SD-120 | 5 | 5 | ML | PL | LM | ML | SD | PIPE | CON | R16 | S11 | SD |
| CO-R16.S11-SD-130 |  | Trench Backfilling and Compaction Works for Main Lines of Storm Drainage Network-[Road 16]-[SW-11] | 15d | 2025-07-13 A | 2025-07-13 A | CO-R16.S11-SD-120 SS+3d, CO-R16.S11-SD-120 FF+3d, ENG-SH-SD-ML-A-110 FF, CO-R15.S09-SD-130, ENG-MS-SD-ML-A-110 FF, CO-R16.S11-SD-120, CO-R16.S11-SD-220 FF | 100% | 2026-02-21 | 2026-03-09 | Skilled Labor/Surveyor [12 h]; Foreman [12 h]; Excavator [120 h]; Pipe with diameter 600mm ; depth: 1.51m - 2.5m [14.6]; Pipe with diameter 700mm ; depth: 1.51m - 2.5m [17.34]; Pipe with diameter 1000mm ; depth: 1.51m - 2.5m [6.1]; Pipe with diameter 1000mm ; depth: 2.51 - 3.5m [6.1] | 23,598.33 | 23,598.33 | CO-R16.S11-SD-130 | 5 | 5 | ML | BF | LM | ML | SD | BACK | CON | R16 | S11 | SD |
|  | MH | **Manholes** |  | 2025-07-11 | 2026-07-13 |  |  |  |  |  |  |  |  |  |  |  |  |  |  |  |  |  |  |  |  |
| CO-R16.S11-SD-180 |  | Trench Excavation and Bedding Works for Manholes of Storm Drainage Network-[Road 16]-[SW-11] | 1d | 2025-07-11 A | 2025-07-12 A | CO-R16.S11-SD-120 SS, PRO-SD-1DL-100 | 100% | 2025-07-12 | 2025-07-12 | Labor/Helper [40 h]; Skilled Labor/Surveyor [20 h]; Excavator [40 h]; MH ; depth: 0.0m - 1.5m [0.15]; MH ; depth: 1.51m - 2.5m [0.3]; MH ; depth: 1.51m - 2.5m [0.15] | 8,506.72 | 8,506.72 | CO-R16.S11-SD-180 | 5 | 5 |  |  |  |  | SD | EX | CON | R16 | S11 | SD |
| CO-R16.S11-SD-190 |  | Install RC Footing Works for Manholes of Storm Drainage Network-[Road 16]-[SW-11] | 1d | 2025-07-13 A | 2025-07-13 A | CO-R16.S11-SD-180 | 100% |  |  | Cons. Carpenter [80 h]; Steel Fixer [80 h]; MH ; depth: 0.0m - 1.5m [0.05]; MH ; depth: 1.51m - 2.5m [0.1]; MH ; depth: 1.51m - 2.5m [0.05] | 2,835.57 | 2,835.57 | CO-R16.S11-SD-190 | 5 | 5 |  |  |  |  | SD | RC F | CON | R16 | S11 | SD |
| CO-R16.S11-SD-200 |  | Install RC Wall Rings & Slab Works for Manholes of Storm Drainage Network-[Road 16]-[SW-11] | 4d | 2025-07-14 A | 2025-07-15 A | CO-R16.S11-SD-190 | 100% | 2025-07-14 | 2025-07-17 | Cons. Carpenter [128 h]; Steel Fixer [128 h]; MH ; depth: 0.0m - 1.5m [0.45]; MH ; depth: 1.51m - 2.5m [0.9]; MH ; depth: 1.51m - 2.5m [0.45] | 25,520.17 | 25,520.17 | CO-R16.S11-SD-200 | 5 | 5 |  |  |  |  | SD | RC W | CON | R16 | S11 | SD |
| CO-R16.S11-SD-220 |  | Backfilling Works for Manholes of Storm Drainage Network-[Road 16]-[SW-11] | 7d | 2025-07-16 A | 2025-07-16 A | CO-R16.S11-SD-210 | 100% | 2025-07-20 | 2025-07-27 | Labor/Helper [112 h]; Skilled Labor/Surveyor [56 h]; Excavator [112 h]; MH ; depth: 0.0m - 1.5m [0.2]; MH ; depth: 1.51m - 2.5m [0.4]; MH ; depth: 1.51m - 2.5m [0.2] | 11,342.3 | 11,342.3 | CO-R16.S11-SD-220 | 5 | 5 |  |  |  |  | SD | BACK | CON | R16 | S11 | SD |
| CO-R16.S11-SD-210 |  | Testing Works for Manholes of Storm Drainage Network-[Road 16]-[SW-11] | 1d | 2026-06-04 A | 2026-07-13 A | CO-R16.S11-SD-200 | 100% | 2025-07-19 | 2025-07-19 | Labor/Helper [40 h]; Plumber [40 h]; MH ; depth: 0.0m - 1.5m [0.1]; MH ; depth: 1.51m - 2.5m [0.2]; MH ; depth: 1.51m - 2.5m [0.1] | 5,671.15 | 5,671.15 | CO-R16.S11-SD-210 | 5 | 5 |  |  |  |  | SD | T&COV | CON | R16 | S11 | SD |
|  | CB | **Catch Basin Sections** |  | 2025-07-17 | 2026-07-13 |  |  |  |  |  |  |  |  |  |  |  |  |  |  |  |  |  |  |  |  |
| CO-R16.S11-SD-140 |  | Trench Excavation and Bedding Works for Catch Basins of Storm Drainage Network-[Road 16]-[SW-11] | 7d | 2025-07-17 A | 2025-07-17 A | CO-R16.S11-EW-110, ENG-SH-SD-CB-A-110, ENG-MS-SD-CB-A-110, CO-R16.S11-SD-220 | 100% | 2025-07-28 | 2025-08-04 | Skilled Labor/Surveyor [6 h]; Foreman [6 h]; Excavator [56 h]; Pipe with diameter 300mm ; depth: 0 - 1.5m [39.58]; Pipe with diameter 400mm ; depth: 0 - 1.5m [2.41] | 9,760.77 | 9,760.77 | CO-R16.S11-SD-140 | 5 | 5 | CB | Ex | Each | CB | SD | EX | CON | R16 | S11 | SD |
| CO-R16.S11-SD-150 |  | Installation and Pipes Laying Connection Works for Catch Basins of Storm Drainage Network-[Road 16]-[SW-11] | 7d | 2025-07-18 A | 2025-07-18 A | CO-R16.S11-SD-140, CO-R17.S14-SD-150 | 100% | 2025-08-05 | 2025-08-12 | Labor/Helper [160 h]; Skilled Labor/Surveyor [8 h]; Foreman [8 h]; Excavator [80 h]; Pipe with diameter 300mm ; depth: 0 - 1.5m [118.75]; Pipe with diameter 400mm ; depth: 0 - 1.5m [7.24] | 29,282.01 | 29,282.01 | CO-R16.S11-SD-150 | 5 | 5 | CB | CB | Each | CB | SD | INSTALL | CON | R16 | S11 | SD |
| CO-R16.S11-SD-170 |  | Trench Backfilling and Compaction Works for Catch Basins of Storm Drainage Network-[Road 16]-[SW-11] | 10d | 2025-07-19 A | 2025-07-19 A | CO-R16.S11-SD-160 | 100% | 2025-08-18 | 2025-08-28 | Skilled Labor/Surveyor [8 h]; Foreman [8 h]; Excavator [80 h]; Pipe with diameter 300mm ; depth: 0 - 1.5m [52.78]; Pipe with diameter 400mm ; depth: 0 - 1.5m [3.22] | 13,014.16 | 13,014.16 | CO-R16.S11-SD-170 | 5 | 5 | CB | BF | Each | CB | SD | BACK | CON | R16 | S11 | SD |
| CO-R16.S11-SD-160 |  | Testing Works for Catch Basins of Storm Drainage Network-[Road 16]-[SW-11] | 4d | 2026-06-04 A | 2026-07-13 A | CO-R16.S11-SD-150, CO-R16.S11-SD-120 | 100% | 2025-08-13 | 2025-08-17 | Labor/Helper [64 h]; Skilled Labor/Surveyor [4 h]; Foreman [4 h]; Plumber [32 h]; Excavator [32 h]; Pipe with diameter 300mm ; depth: 0 - 1.5m [26.39]; Pipe with diameter 400mm ; depth: 0 - 1.5m [1.61] | 6,507.08 | 6,507.08 | CO-R16.S11-SD-160 | 5 | 5 | CB | PL | Each | CB | SD | TEST | CON | R16 | S11 | SD |

| ID | WBS | Activity | Duration | Start | Finish | Predecessors | Complete | Planned start | Planned finish | Total float | Free float | Resources | Cost | Actual cost | Activity ID N | Seq | New Seq | 02- Network-WBS | 03- Activity | 04-UOM | 05-Discipline | 01- Network | 07-Weightage System | 08 Stage | 09 Roads | 10 side Walk | Discipline |
| --- | --- | --- | --- | --- | --- | --- | --- | --- | --- | --- | --- | --- | --- | --- | --- | --- | --- | --- | --- | --- | --- | --- | --- | --- | --- | --- | --- |
|  | IR | **Irrigation Network** |  | 2025-07-19 | 2026-11-03 |  |  |  |  |  |  |  |  |  |  |  |  |  |  |  |  |  |  |  |  |  |  |
|  | ML | **Main Line Pipes** |  | 2025-07-19 | 2026-11-03 |  |  |  |  |  |  |  |  |  |  |  |  |  |  |  |  |  |  |  |  |  |  |
| CO-R16.S11-IR-100 |  | Trench Excavation and Bedding Works for Main Lines of Irrigation Network-[Road 16]-[SW-11] | 7d | 2025-07-19 A | 2025-07-21 A | ENG-SH-IR-ML-A-110, CO-R16.S11-EW-110, CO-R16.S11-SD-170, ENG-MS-IR-ML-A-110 | 100% | 2025-08-30 | 2025-09-06 |  |  | Skilled Labor/Surveyor [6 h]; Foreman [6 h]; Excavator [56 h]; 125 mm pipe; depth 0.0m - 1.5m [134.52] | 10,003.95 | 10,003.95 | CO-R16.S11-IR-100 | 5 | 5 | ML | Ex | LM | ML | IR | EX | CON | R16 | S11 | IR |
| CO-R16.S11-IR-110 |  | Pipes Laying Works for Main Lines of Irrigation Network-[Road 16]-[SW-11] | 10d | 2025-07-22 A | 2025-07-25 A | CO-R16.S11-IR-100, PRO-R16-IR-DL-100 FF+3d | 100% | 2025-09-07 | 2025-09-17 |  |  | Labor/Helper [160 h]; Skilled Labor/Surveyor [8 h]; Foreman [8 h]; Plumber [80 h]; Excavator [80 h]; 125 mm pipe; depth 0.0m - 1.5m [403.55] | 30,011.94 | 30,011.94 | CO-R16.S11-IR-110 | 5 | 5 | ML | PL | LM | ML | IR | PIPE | CON | R16 | S11 | IR |
| CO-R16.S11-IR-130 |  | Trench Backfilling and Compaction Works for Main Lines of Irrigation Network-[Road 16]-[SW-11] | 10d | 2025-07-26 A | 2025-07-27 A | CO-R16.S11-IR-110 | 100% | 2025-09-28 | 2025-10-08 |  |  | Skilled Labor/Surveyor [8 h]; Foreman [8 h]; Excavator [80 h]; 125 mm pipe; depth 0.0m - 1.5m [67.26] | 5,001.98 | 5,001.98 | CO-R16.S11-IR-130 | 5 | 5 | ML | BF | LM | ML | IR | BACK | CON | R16 | S11 | IR |
| CO-R16.S11-IR-120 |  | Installation Works for Main Line Valves of Irrigation Network-[Road 16]-[SW-11] | 7d | 2026-10-27 | 2026-11-03 | CO-R16.S11-IR-110 |  |  |  | -5d | 158d | Labor/Helper [112 h]; Skilled Labor/Surveyor [6 h]; Foreman [6 h]; Plumber [112 h]; Gate valves dia (90)mm on pipes with dia (125) mm. [6]; Air valves with dia (50mm) mm on pipes with dia(125)mm. [1]; Air valve chamber; on 125 mm dia pipeline Depth 1.5 - 3 m [1] | 26,158.21 |  | CO-R16.S11-IR-120 | 5 | 5 | ML | VI | Each | ML | IR | VALV | CON | R16 | S11 | IR |
|  | TE | **Telecom Network** |  | 2025-08-04 | 2025-08-30 |  |  |  |  |  |  |  |  |  |  |  |  |  |  |  |  |  |  |  |  |  |  |
|  | PD | **Ducts Works** |  | 2025-08-04 | 2025-08-21 |  |  |  |  |  |  |  |  |  |  |  |  |  |  |  |  |  |  |  |  |  |  |
| CO-R16.S11-TE-100 |  | Trench Excavation and Bedding Works for Ducts of Telecom Network-[Road 16]-[SW-11] | 12d | 2025-08-04 A | 2025-08-07 A | CO-R16.S11-IR-130 SS+3d, CO-R16.S11-IR-130 FF+3d, CO-R17.S14-TE-100 | 100% | 2025-11-24 | 2025-12-07 |  |  | Skilled Labor/Surveyor [10 h]; Foreman [10 h]; Excavator [96 h]; 6-way ducts, 50mm dia. HDPE [21]; Road crossing ducts (6-way) [2] | 3,149 | 3,149 | CO-R16.S11-TE-100 | 5 | 5 | PD | Ex | LM | DC | TE | DUCTS | CON | R16 | S11 | TE |
| CO-R16.S11-TE-110 |  | Pipes Laying Works for Ducts of Telecom Network-[Road 16]-[SW-11] | 7d | 2025-08-10 A | 2025-08-14 A | CO-R16.S11-TE-100, CO-R15.S09-TE-110 | 100% | 2026-07-23 | 2026-07-30 |  |  | Labor/Helper [112 h]; Skilled Labor/Surveyor [6 h]; Foreman [6 h]; Plumber [56 h]; Excavator [56 h]; JCB [28 h]; Truck [56 h]; 6-way ducts, 50mm dia. HDPE [126]; Road crossing ducts (6-way) [11] | 18,726.5 | 18,726.5 | CO-R16.S11-TE-110 | 5 | 5 | PD | PL | LM | DC | TE | DUCTS | CON | R16 | S11 | TE |
| CO-R16.S11-TE-120 |  | Pouring Plain Concrete Above Ducts of Telecom Network-[Road 16]-[SW-11] | 7d | 2025-08-16 A | 2025-08-19 A | CO-R16.S11-TE-110, CO-R15.S09-TE-120 | 100% | 2026-08-01 | 2026-08-08 |  |  | Skilled Labor/Surveyor [6 h]; Foreman [6 h]; Cons. Carpenter [112 h]; Block Mason [56 h]; 6-way ducts, 50mm dia. HDPE [21]; Road crossing ducts (6-way) [2] | 3,149 | 3,149 | CO-R16.S11-TE-120 | 5 | 5 | PD | PC | LM | DC | TE | DUCTS | CON | R16 | S11 | TE |
| CO-R16.S11-TE-130 |  | Trench Backfilling and Compaction Works for Ducts of Telecom Network-[Road 16]-[SW-11] | 7d | 2025-08-20 A | 2025-08-21 A | CO-R16.S11-TE-120, CO-R15.S09-TE-130 | 100% | 2026-08-09 | 2026-08-16 |  |  | Skilled Labor/Surveyor [6 h]; Foreman [6 h]; Excavator [56 h]; 6-way ducts, 50mm dia. HDPE [42]; Road crossing ducts (6-way) [4] | 6,298 | 6,298 | CO-R16.S11-TE-130 | 5 | 5 | PD | BF | LM | DC | TE | DUCTS | CON | R16 | S11 | TE |
|  | MH | **Manholes Works** |  | 2025-08-27 | 2025-08-30 |  |  |  |  |  |  |  |  |  |  |  |  |  |  |  |  |  |  |  |  |  |  |
| CO-R16.S11-TE-140 |  | Excavation Works for Manholes of Telecom Network-[Road 16]-[SW-11] | 7d | 2025-08-27 A | 2025-08-27 A | CO-R15.S09-TE-140, CO-R16.S11-TE-100 | 100% | 2026-07-23 | 2026-07-30 |  |  | Skilled Labor/Surveyor [6 h]; Foreman [6 h]; Excavator [56 h]; Manhole Type 2 (2000x1000x1000) [0.4] | 1,256.92 | 1,256.92 | CO-R16.S11-TE-140 | 5 | 5 | MH | Ex | Each | MNH | TE | EXC | CON | R16 | S11 | TE |
| CO-R16.S11-TE-150 |  | Installation Works for Manholes of Telecom Network-[Road 16]-[SW-11] | 7d | 2025-08-28 A | 2025-08-28 A | CO-R16.S11-TE-140, CO-R15.S09-TE-150 | 100% | 2026-08-01 | 2026-08-08 |  |  | Skilled Labor/Surveyor [6 h]; Foreman [6 h]; Excavator [56 h]; Manhole Type 1 (2000x1000x1000) [1]; Manhole Type 2 (2000x1000x1000) [1.2] | 6,886.93 | 6,886.93 | CO-R16.S11-TE-150 | 5 | 5 | MH | HH | Each | MNH | TE | INSTALL-1 | CON | R16 | S11 | TE |
| CO-R16.S11-TE-160 |  | Backfilling Works for Manholes of Telecom Network-[Road 16]-[SW-11] | 7d | 2025-08-30 A | 2025-08-30 A | CO-R16.S11-TE-150, CO-R15.S09-TE-160 | 100% | 2026-08-09 | 2026-08-16 |  |  | Skilled Labor/Surveyor [6 h]; Foreman [6 h]; Excavator [56 h]; Manhole Type 2 (2000x1000x1000) [0.4] | 1,256.92 | 1,256.92 | CO-R16.S11-TE-160 | 5 | 5 | MH | BF | Each | MNH | TE | (New)-2 | CON | R16 | S11 | TE |
|  | MV | **Medium Voltage Network** |  | 2025-08-11 | 2025-08-19 |  |  |  |  |  |  |  |  |  |  |  |  |  |  |  |  |  |  |  |  |  |  |
|  | CW | **Cabling Works** |  | 2025-08-11 | 2025-08-19 |  |  |  |  |  |  |  |  |  |  |  |  |  |  |  |  |  |  |  |  |  |  |
| CO-R16.S11-MV-ML-280 |  | Trench Excavation and Bedding Works for Medium Voltage Network-[Road 16]-[SW-11] | 18d | 2025-08-11 A | 2025-08-14 A | ENG-SH-MV-A-110, CO-R16.S11-SD-170 SS+3d, CO-R16.S11-SD-170 FF+3d, CO-R16.S11-EW-110, CO-R16.S11-TE-130 SS+3d, CO-R16.S11-TE-130 FF+3d, CO-R15.S09-MV-ML-250, ENG-MS-MV-A-110 | 100% | 2026-08-25 | 2026-09-14 |  |  | Skilled Labor/Surveyor [15 h]; Foreman [15 h]; Excavator [144 h]; Excavation for Trench size 40cm wide and 80cm deep ( Maximum 1 cable 33kv) [186.65]; Excavation for Trench size 60cm wide and 80cm deep ( for Max two cables 33 kv) [10.62]; Excavation for Trench size 90cm wide and 80cm deep ( Maximum 3 cable 33kv) [47.31]; Excavation for Trench size 120cm wide and 80cm deep ( Maximum 4cable 33kv) [16.09]; Excavation for Trench size 150cm wide and 80cm deep ( Maximum 4cable 33kv) [59.53]; Duct bank for (2) 33 kv cables [6.44]; Duct bank for (4) 33 kv cables [42.48]; Duct bank for (6) 33 kv cables [19.31] | 21,708.23 | 21,708.23 | CO-R16.S11-MV-ML-280 | 5 | 5 | CW | Ex | LM | CW | MV | EXC | CON | R16 | S11 | MV |
| CO-R16.S11-MV-ML-290 |  | Cable Laying Works for Medium Voltage Network-[Road 16]-[SW-11] | 18d | 2025-08-12 A | 2025-08-17 A | CO-R16.S11-MV-ML-280 SS+3d, CO-R16.S11-MV-ML-280 FF+3d, CO-R15.S09-MV-ML-260, PRO-R16-MV-DL-100 FF+3d | 100% | 2026-08-29 | 2026-09-17 |  |  | Labor/Helper [144 h]; Electrician [144 h]; Low Current Technician [144 h]; 33kv 3Cx400 mmï¿½ Al XLPE / LLDPE /PVC Cable [878.53]; 33kv 3Cx400 mmï¿½ Al XLPE /LLDPE/PVC [2.8] | 117,078.96 | 117,078.96 | CO-R16.S11-MV-ML-290 | 5 | 5 | CW | CL | LM | CW | MV | LAY | CON | R16 | S11 | MV |
| CO-R16.S11-MV-ML-300 |  | Trench Backfilling and Compaction Works for Medium Voltage Network-[Road 16]-[SW-11] | 18d | 2025-08-16 A | 2025-08-19 A | CO-R16.S11-MV-ML-290 SS+3d, CO-R16.S11-MV-ML-290 FF+3d, CO-R15.S09-MV-ML-270 | 100% | 2026-09-01 | 2026-09-21 |  |  | Skilled Labor/Surveyor [15 h]; Foreman [15 h]; Excavator [144 h]; Water Tank [36 h]; 33kv 3Cx400 mmï¿½ Al XLPE / LLDPE /PVC Cable [376.51]; 33kv 3Cx400 mmï¿½ Al XLPE /LLDPE/PVC [1.2] | 50,176.7 | 50,176.7 | CO-R16.S11-MV-ML-300 | 5 | 5 | CW | BF | LM | CW | MV | BACK | CON | R16 | S11 | MV |
|  | RD | **Road Works** |  | 2025-08-04 | 2026-10-12 |  |  |  |  |  |  |  |  |  |  |  |  |  |  |  |  |  |  |  |  |  |  |
|  | RD | **Pre-Bituminous Construction** |  | 2025-08-04 | 2025-10-20 |  |  |  |  |  |  |  |  |  |  |  |  |  |  |  |  |  |  |  |  |  |  |
| CO-R16.S11-RD-P-100 |  | Capping and Subgrade Layer for Road Works-[Road 16]-[SW-11] | 18d | 2025-08-04 A | 2025-08-11 A | ENG-SH-RD-A-100, CO-R16.S11-SD-130, CO-R16.S11-SW-130, ENG-MS-RD-A-10, CO-R16.S11-TE-130, CO-R16.S11-TE-160, CO-R16.S11-MV-ML-300 SS+3d, CO-R16.S11-MV-ML-300 FF+3d | 100% | 2026-09-05 | 2026-09-26 |  |  | Labor/Helper [288 h]; Skilled Labor/Surveyor [144 h]; Loader [144 h]; Grader [144 h]; Road Roller [144 h]; Water Tank [144 h]; 300mm capping layer underneath subgrade , CBR?15% [1587.47]; 300mm thick Subgrade, including subgrade preparation, CBR?25% [1587.47] | 123,187.67 | 123,187.67 | CO-R16.S11-RD-P-100 | 5 | 5 | AB | SG | Sq.m | BS | RD |  | CON | R16 | S11 | RD |
| CO-R16.S11-RD-P-110 |  | Aggregate Base Course Layer for Road Works-[Road 16]-[SW-11] | 18d | 2025-09-17 A | 2025-10-20 A | CO-R16.S11-RD-P-100 SS+3d, CO-R16.S11-RD-P-100 FF+3d, CO-R16.S11-SD-170 SS+3d, CO-R16.S11-SD-170 FF+3d, CO-R15.S09-RD-P-110 | 100% | 2026-10-18 | 2026-11-07 |  |  | Labor/Helper [288 h]; Skilled Labor/Surveyor [144 h]; Foreman [144 h]; Loader [144 h]; Grader [144 h]; Road Roller [144 h]; Aggregate base course 200mm thick after compaction in two layers(Grading 1); CBR?80%; including watering, compaction and testing [1058.42] | 85,806.11 | 85,806.11 | CO-R16.S11-RD-P-110 | 5 | 5 | AB | BA | Sq.m | BS | RD |  | CON | R16 | S11 | RD |

| ID | WBS | Activity | Duration | Start | Finish | Predecessors | Complete | Planned start | Planned finish | Resources | Cost | Actual cost | Activity ID N | Seq | New Seq | 02- Network-WBS | 03- Activity | 04-UOM | 05-Discipline | 01- Network | 08 Stage | 09 Roads | 10 side Walk | Discipline | 07-Weightage System |
| --- | --- | --- | --- | --- | --- | --- | --- | --- | --- | --- | --- | --- | --- | --- | --- | --- | --- | --- | --- | --- | --- | --- | --- | --- | --- |
|  | LS | **Pavement Works** |  | 2026-08-25 | 2026-10-12 |  |  |  |  |  |  |  |  |  |  |  |  |  |  |  |  |  |  |  |  |
| CO-R16.S11-RD-P-120 |  | Fixing of Curbstone for Sidewalks Pavement-[Road 16]-[SW-11] | 18d | 2026-08-25 A | 2026-08-31 A | CO-R15.S09-RD-P-120, CO-R16.S11-RD-P-110 SS+3d, CO-R16.S11-RD-P-110 FF+3d | 100% | 2026-10-21 | 2026-11-10 | Labor/Helper [288 h]; Block Mason [864 h]; Precast Concrete Kerb, Type K1 [585.69]; Precast Concrete Kerb, Type L1 [1162.07] | 70,259.95 | 70,259.95 | CO-R16.S11-RD-P-120 | 5 | 5 | LS | CR | LM | LAND | RD | CON | R16 | S11 | RD |  |
| CO-R16.S11-RD-P-130 |  | Fixing of Interlock Tiles for Sidewalks Pavement-[Road 16]-[SW-11] | 10d | 2026-08-25 A | 2026-10-12 A | CO-R16.S11-RD-P-120 SS, CO-R16.S11-RD-P-120 FF+3d, CO-R15.S09-RD-P-130 SS | 100% | 2026-11-05 | 2026-11-16 | Labor/Helper [288 h]; Block Mason [480 h]; Interlocking block pavers for sidewalk/footpath 60mm thick on and including 30mm Sand Bedding, 200mm Aggregate subbase, all in accordance with authority standards and complete as per specifications [1045.87]; Extraover for Pedestrian ramps [3] | 50,367.85 | 50,367.85 | CO-R16.S11-RD-P-130 | 5 | 5 | LS | IL | Sq.m | LAND | RD | CON | R16 | S11 | RD |  |
|  | SW_14 | **SW_12** |  | 2025-03-13 | 2026-11-23 |  |  |  |  |  |  |  |  |  |  |  |  |  |  |  |  |  |  |  |  |
|  | EW | **Earthworks** |  | 2025-03-13 | 2025-04-20 |  |  |  |  |  |  |  |  |  |  |  |  |  |  |  |  |  |  |  |  |
|  | EW | **Earthworks** |  | 2025-03-13 | 2025-04-20 |  |  |  |  |  |  |  |  |  |  |  |  |  |  |  |  |  |  |  |  |
| CO-R16.S12-EW-100 |  | Roadway Excavation Works Upto Design Level for Earthworks-[Road 16]-[SW-12] | 10d | 2025-03-13 A | 2025-04-15 A | ENG-MS-RD-A-10, ENG-SH-RD-A-100, CO-R16.S11-EW-100 | 100% | 2025-04-14 | 2025-04-24 | Labor/Helper [192 h]; Skilled Labor/Surveyor [24 h]; Foreman [24 h]; Dump Truck [384 h]; Water Tank [192 h]; Dozer [192 h]; Roadway Excavation for cuttings; on any type of material for all depths including trimming and Preparation of excavated surfaces and disposal. [7474.08] | 47,086.7 | 47,086.7 | CO-R16.S12-EW-100 | 6 | 6 | EW | Ex | Cub.m | EW | EW | CON | R16 | S12 | EW |  |
| CO-R16.S12-EW-110 |  | Embankments Works Upto Design Level for Earthworks-[Road 16]-[SW-12] | 12d | 2025-04-16 A | 2025-04-20 A | CO-R16.S12-EW-100, ENG-MS-RD-A-10, ENG-SH-RD-A-100 | 100% | 2025-04-26 | 2025-05-08 | Labor/Helper [384 h]; Skilled Labor/Surveyor [48 h]; Foreman [48 h]; Dump Truck [384 h]; Water Tank [384 h]; Dozer [384 h]; Embankments to the ROW, with suitable material other than top soil or rock according to specifications [12581.7] | 101,911.93 | 101,911.93 | CO-R16.S12-EW-110 | 6 | 6 | EW | BF | Cub.m | EW | EW | CON | R16 | S12 | EW |  |
|  | SW | **Sewage Network** |  | 2025-06-16 | 2025-09-17 |  |  |  |  |  |  |  |  |  |  |  |  |  |  |  |  |  |  |  |  |
|  | ML | **Main Line Sections** |  | 2025-06-16 | 2025-07-10 |  |  |  |  |  |  |  |  |  |  |  |  |  |  |  |  |  |  |  |  |
| CO-R16.S12-SW-100 |  | Trench Excavation and Bedding Works for Main Lines of Sewage Network-[Road 16]-[SW-12] | 12d | 2025-06-16 A | 2025-06-23 A | CO-R16.S12-EW-110, ENG-MS-SW-ML-A-110, ENG-SH-SW-ML-A-110, CO-R16.S11-SW-100 | 100% | 2025-05-21 | 2025-06-03 | Labor/Helper [96 h]; Foreman [96 h]; Excavator [96 h]; Nominal bore : 160mm; Depth : 0.0m - 1.5m [13]; Nominal bore : 200mm; Depth : 0.0m - 1.5m [2.97]; Nominal bore : 200mm; Depth : 1.5m - 2.5m [6.83]; Nominal bore : 200mm; Depth : 2.5m - 3.5m [9.72]; Nominal bore : 200mm; Depth : 3.5m - 4.5m [12.69]; Nominal bore : 200mm; Depth : 4.5m -5.5m [5.51]; Nominal bore : 200mm; Depth : 5.5m - 6.5m [6.19] | 15,907.09 | 15,907.09 | CO-R16.S12-SW-100 | 6 | 6 | ML | Ex | LM | ML | SW | CON | R16 | S12 | SW | EX |
| CO-R16.S12-SW-120 |  | Pipes Laying Works for Main Lines of Sewage Network-[Road 16]-[SW-12] | 12d | 2025-06-24 A | 2025-06-27 A | PRO-R16-SW-DL-100 FF+3d, CO-R16.S12-SW-100 | 100% | 2025-06-04 | 2025-06-22 | Labor/Helper [384 h]; Skilled Labor/Surveyor [20 h]; Foreman [20 h]; Plumber [192 h]; Excavator [192 h]; Nominal bore : 160mm; Depth : 0.0m - 1.5m [39]; Nominal bore : 200mm; Depth : 0.0m - 1.5m [8.92]; Nominal bore : 200mm; Depth : 1.5m - 2.5m [20.48]; Nominal bore : 200mm; Depth : 2.5m - 3.5m [29.17]; Nominal bore : 200mm; Depth : 3.5m - 4.5m [38.06]; Nominal bore : 200mm; Depth : 4.5m -5.5m [16.52]; Nominal bore : 200mm; Depth : 5.5m - 6.5m [18.58] | 47,721.26 | 47,721.26 | CO-R16.S12-SW-120 | 6 | 6 | ML | PL | LM | ML | SW | CON | R16 | S12 | SW | PIPE |
| CO-R16.S12-SW-130 |  | Trench Backfilling and Compaction Works for Main Lines of Sewage Network-[Road 16]-[SW-12] | 10d | 2025-07-09 A | 2025-07-10 A | CO-R16.S12-SW-120, CO-R16.S12-SW-210 FF, CO-R16.S11-SW-130 | 100% | 2025-07-08 | 2025-07-19 | Skilled Labor/Surveyor [10 h]; Foreman [10 h]; Excavator [96 h]; Nominal bore : 160mm; Depth : 0.0m - 1.5m [6.5]; Nominal bore : 200mm; Depth : 0.0m - 1.5m [1.49]; Nominal bore : 200mm; Depth : 1.5m - 2.5m [3.41]; Nominal bore : 200mm; Depth : 2.5m - 3.5m [4.86]; Nominal bore : 200mm; Depth : 3.5m - 4.5m [6.34]; Nominal bore : 200mm; Depth : 4.5m -5.5m [2.75]; Nominal bore : 200mm; Depth : 5.5m - 6.5m [3.1] | 7,953.54 | 7,953.54 | CO-R16.S12-SW-130 | 6 | 6 | ML | BF | LM | ML | SW | CON | R16 | S12 | SW | BACK |
|  | 1 | **Manholes** |  | 2025-06-28 | 2025-09-17 |  |  |  |  |  |  |  |  |  |  |  |  |  |  |  |  |  |  |  |  |
| CO-R16.S12-SW-160 |  | Excavation Works for Main Line Manholes of Sewage Network-[Road 16]-[SW-12] | 1d | 2025-06-28 A | 2025-06-30 A | CO-R16.S12-SW-120 SS | 100% | 2025-06-04 | 2025-06-04 | Labor/Helper [40 h]; Skilled Labor/Surveyor [20 h]; Excavator [40 h]; Depth: not exceeding 1.5m [0.15]; Depth: 1.5 - 2.5m [0.15]; Depth: 2.5 - 3.5m [0.15]; Depth: 5.5 - 6.5m [0.15] | 7,449.96 | 7,449.96 | CO-R16.S12-SW-160 | 6 | 6 |  |  |  |  | SW | CON | R16 | S12 | SW | EX |
| CO-R16.S12-SW-170 |  | Installation RC Footing Works for Main Line Manholes of Sewage Network-[Road 16]-[SW-12] | 2d | 2025-07-20 A | 2025-07-22 A | CO-R16.S12-SW-160, PRO-R16-SW-DL-110 FF+3d | 100% | 2025-06-10 | 2025-06-11 | Cons. Carpenter [160 h]; Steel Fixer [160 h]; Depth: not exceeding 1.5m [0.1]; Depth: 1.5 - 2.5m [0.1]; Depth: 2.5 - 3.5m [0.1]; Depth: 5.5 - 6.5m [0.1] | 4,966.64 | 4,966.64 | CO-R16.S12-SW-170 | 6 | 6 |  |  |  |  | SW | CON | R16 | S12 | SW | RC F |
| CO-R16.S12-SW-180 |  | Install Grp Liner Wall Works for Main Line Manholes of Sewage Network-[Road 16]-[SW-12] | 4d | 2025-07-23 A | 2025-07-24 A | CO-R16.S12-SW-170 | 100% | 2025-06-12 | 2025-06-16 | Labor/Helper [96 h]; Plumber [96 h]; Depth: not exceeding 1.5m [0.4]; Depth: 1.5 - 2.5m [0.4]; Depth: 2.5 - 3.5m [0.4]; Depth: 5.5 - 6.5m [0.4] | 19,866.57 | 19,866.57 | CO-R16.S12-SW-180 | 6 | 6 |  |  |  |  | SW | CON | R16 | S12 | SW | LP |
| CO-R16.S12-SW-200 |  | Backfilling Works for Main Line Manholes of Sewage Network-[Road 16]-[SW-12] | 4d | 2025-07-26 A | 2025-07-27 A | CO-R16.S12-SW-190 | 100% | 2025-06-18 | 2025-06-22 | Labor/Helper [160 h]; Skilled Labor/Surveyor [80 h]; Excavator [160 h]; Depth: not exceeding 1.5m [0.15]; Depth: 1.5 - 2.5m [0.15]; Depth: 2.5 - 3.5m [0.15]; Depth: 5.5 - 6.5m [0.15] | 7,449.96 | 7,449.96 | CO-R16.S12-SW-200 | 6 | 6 |  |  |  |  | SW | CON | R16 | S12 | SW | BACK |
| CO-R16.S12-SW-190 |  | Pouring Grp Liner Wall Works for Main Line Manholes of Sewage Network-[Road 16]-[SW-12] | 1d | 2025-09-16 A | 2025-09-16 A | CO-R16.S12-SW-180 | 100% | 2025-06-17 | 2025-06-17 | Cons. Carpenter [80 h]; Steel Fixer [80 h]; Depth: not exceeding 1.5m [0.05]; Depth: 1.5 - 2.5m [0.05]; Depth: 2.5 - 3.5m [0.05]; Depth: 5.5 - 6.5m [0.05] | 2,483.32 | 2,483.32 | CO-R16.S12-SW-190 | 6 | 6 |  |  |  |  | SW | CON | R16 | S12 | SW | (New) |
| CO-R16.S12-SW-210 |  | Testing Works for Main Line Manholes of Sewage Network-[Road 16]-[SW-12] | 1d | 2025-09-17 A | 2025-09-17 A | CO-R16.S12-SW-200 | 100% | 2025-06-23 | 2025-06-23 | Labor/Helper [40 h]; Plumber [40 h]; Depth: not exceeding 1.5m [0.05]; Depth: 1.5 - 2.5m [0.05]; Depth: 2.5 - 3.5m [0.05]; Depth: 5.5 - 6.5m [0.05] | 2,483.32 | 2,483.32 | CO-R16.S12-SW-210 | 6 | 6 |  |  |  |  | SW | CON | R16 | S12 | SW | T&COV |
|  | SD | **Storm Drainage Network** |  | 2025-07-10 | 2026-07-13 |  |  |  |  |  |  |  |  |  |  |  |  |  |  |  |  |  |  |  |  |
|  | ML | **Main Line Sections** |  | 2025-07-10 | 2025-07-19 |  |  |  |  |  |  |  |  |  |  |  |  |  |  |  |  |  |  |  |  |
| CO-R16.S12-SD-100 |  | Trench Excavation and Bedding Works for Main Lines of Storm Drainage Network-[Road 16]-[SW-12] | 10d | 2025-07-10 A | 2025-07-11 A | CO-R16.S12-EW-110, CO-R16.S12-EW-100, CO-R16.S12-SW-130 SS+3d, CO-R16.S12-SW-130 FF+3d | 100% | 2025-07-12 | 2025-07-22 | Skilled Labor/Surveyor [12 h]; Foreman [12 h]; Excavator [112 h]; Pipe with diameter 400mm ; depth: 0.0m - 1.5m [43.31]; Pipe with diameter 400mm ; depth: 1.51m - 2.5m [39.57]; Pipe with diameter 500mm ; depth: 1.51m - 2.5m [58.49]; Pipe with diameter 600mm ; depth: 1.51m - 2.5m [9.2]; Pipe with diameter 700mm ; depth: 1.51m - 2.5m [36.88]; Pipe with diameter 800mm ; depth: 1.51m - 2.5m [32.06]; Pipe with diameter 900mm ; depth: 1.51m - 2.5m [4.57] | 83,746.91 | 83,746.91 | CO-R16.S12-SD-100 | 6 | 6 | ML | Ex | LM | ML | SD | CON | R16 | S12 | SD | EX |
| CO-R16.S12-SD-120 |  | Pipes Laying Works for Main Lines of Storm Drainage Network-[Road 16]-[SW-12] | 15d | 2025-07-12 A | 2025-07-13 A | PRO-R16-SD-DL-120 FF+3d, CO-R16.S12-SD-100 | 100% | 2025-07-23 | 2025-08-09 | Labor/Helper [240 h]; Skilled Labor/Surveyor [12 h]; Foreman [12 h]; Plumber [120 h]; Excavator [120 h]; Pipe with diameter 400mm ; depth: 0.0m - 1.5m [129.92]; Pipe with diameter 400mm ; depth: 1.51m - 2.5m [118.71]; Pipe with diameter 500mm ; depth: 1.51m - 2.5m [175.46]; Pipe with diameter 600mm ; depth: 1.51m - 2.5m [27.59]; Pipe with diameter 700mm ; depth: 1.51m - 2.5m [110.65]; Pipe with diameter 800mm ; depth: 1.51m - 2.5m [96.19]; Pipe with diameter 900mm ; depth: 1.51m - 2.5m [13.71] | 251,240.73 | 251,240.73 | CO-R16.S12-SD-120 | 6 | 6 | ML | PL | LM | ML | SD | CON | R16 | S12 | SD | PIPE |
| CO-R16.S12-SD-130 |  | Trench Backfilling and Compaction Works for Main Lines of Storm Drainage Network-[Road 16]-[SW-12] | 15d | 2025-07-19 A | 2025-07-19 A | CO-R16.S12-SD-120 SS+3d, CO-R16.S12-SD-120 FF+3d, CO-R15.S10-SD-130, CO-R16.S12-SD-120, CO-R16.S12-SD-220 FF | 100% | 2026-02-25 | 2026-03-14 | Skilled Labor/Surveyor [12 h]; Foreman [12 h]; Excavator [120 h]; Pipe with diameter 400mm ; depth: 0.0m - 1.5m [21.65]; Pipe with diameter 400mm ; depth: 1.51m - 2.5m [19.79]; Pipe with diameter 500mm ; depth: 1.51m - 2.5m [29.24]; Pipe with diameter 600mm ; depth: 1.51m - 2.5m [4.6]; Pipe with diameter 700mm ; depth: 1.51m - 2.5m [18.44]; Pipe with diameter 800mm ; depth: 1.51m - 2.5m [16.03]; Pipe with diameter 900mm ; depth: 1.51m - 2.5m [2.29] | 41,873.45 | 41,873.45 | CO-R16.S12-SD-130 | 6 | 6 | ML | BF | LM | ML | SD | CON | R16 | S12 | SD | BACK |

| ID | WBS | Activity | Duration | Start | Finish | Predecessors | Complete | Planned start | Planned finish | Total float | Free float | Resources | Cost | Actual cost | Activity ID N | Seq | New Seq | 01- Network | 07-Weightage System | 08 Stage | 09 Roads | 10 side Walk | Discipline | 02- Network-WBS | 03- Activity | 04-UOM | 05-Discipline |
| --- | --- | --- | --- | --- | --- | --- | --- | --- | --- | --- | --- | --- | --- | --- | --- | --- | --- | --- | --- | --- | --- | --- | --- | --- | --- | --- | --- |
|  | MH | **Manholes** |  | 2025-07-14 | 2026-07-13 |  |  |  |  |  |  |  |  |  |  |  |  |  |  |  |  |  |  |  |  |  |  |
| CO-R16.S12-SD-180 |  | Trench Excavation and Bedding Works for Manholes of Storm Drainage Network-[Road 16]-[SW-12] | 1d | 2025-07-14 A | 2025-07-15 A | CO-R16.S12-SD-120 SS, PRO-SD-1DL-100 | 100% | 2025-07-23 | 2025-07-23 |  |  | Labor/Helper [24 h]; Skilled Labor/Surveyor [12 h]; Excavator [24 h]; MH ; depth: 0.0m - 1.5m [0.15]; MH ; depth: 1.51m - 2.5m [0.3]; MH ; depth: 1.51m - 2.5m [0.15] | 8,506.72 | 8,506.72 | CO-R16.S12-SD-180 | 6 | 6 | SD | EX | CON | R16 | S12 | SD |  |  |  |  |
| CO-R16.S12-SD-190 |  | Install RC Footing Works for Manholes of Storm Drainage Network-[Road 16]-[SW-12] | 1d | 2025-07-16 A | 2025-07-16 A | CO-R16.S12-SD-180 | 100% | 2025-07-24 | 2025-07-24 |  |  | Cons. Carpenter [48 h]; Steel Fixer [48 h]; MH ; depth: 0.0m - 1.5m [0.05]; MH ; depth: 1.51m - 2.5m [0.1]; MH ; depth: 1.51m - 2.5m [0.05] | 2,835.57 | 2,835.57 | CO-R16.S12-SD-190 | 6 | 6 | SD | RC F | CON | R16 | S12 | SD |  |  |  |  |
| CO-R16.S12-SD-200 |  | Install RC Wall Rings & Slab Works for Manholes of Storm Drainage Network-[Road 16]-[SW-12] | 4d | 2025-07-17 A | 2025-07-17 A | CO-R16.S12-SD-190 | 100% | 2025-07-26 | 2025-07-29 |  |  | Cons. Carpenter [192 h]; Steel Fixer [192 h]; MH ; depth: 0.0m - 1.5m [0.45]; MH ; depth: 1.51m - 2.5m [0.9]; MH ; depth: 1.51m - 2.5m [0.45] | 25,520.17 | 25,520.17 | CO-R16.S12-SD-200 | 6 | 6 | SD | RC W | CON | R16 | S12 | SD |  |  |  |  |
| CO-R16.S12-SD-220 |  | Backfilling Works for Manholes of Storm Drainage Network-[Road 16]-[SW-12] | 7d | 2025-07-18 A | 2025-07-18 A | CO-R16.S12-SD-210 | 100% | 2025-07-31 | 2025-08-07 |  |  | Labor/Helper [168 h]; Skilled Labor/Surveyor [84 h]; Excavator [168 h]; MH ; depth: 0.0m - 1.5m [0.2]; MH ; depth: 1.51m - 2.5m [0.4]; MH ; depth: 1.51m - 2.5m [0.2] | 11,342.3 | 11,342.3 | CO-R16.S12-SD-220 | 6 | 6 | SD | BACK | CON | R16 | S12 | SD |  |  |  |  |
| CO-R16.S12-SD-210 |  | Testing Works for Manholes of Storm Drainage Network-[Road 16]-[SW-12] | 1d | 2026-06-04 A | 2026-07-13 A | CO-R16.S12-SD-200 | 100% | 2025-07-30 | 2025-07-30 |  |  | Labor/Helper [24 h]; Plumber [24 h]; MH ; depth: 0.0m - 1.5m [0.1]; MH ; depth: 1.51m - 2.5m [0.2]; MH ; depth: 1.51m - 2.5m [0.1] | 5,671.15 | 5,671.15 | CO-R16.S12-SD-210 | 6 | 6 | SD | T&COV | CON | R16 | S12 | SD |  |  |  |  |
|  | CB | **Catch Basin Sections** |  | 2025-07-19 | 2026-07-13 |  |  |  |  |  |  |  |  |  |  |  |  |  |  |  |  |  |  |  |  |  |  |
| CO-R16.S12-SD-140 |  | Trench Excavation and Bedding Works for Catch Basins of Storm Drainage Network-[Road 16]-[SW-12] | 7d | 2025-07-19 A | 2025-07-19 A | CO-R16.S12-EW-110, CO-R16.S12-SD-220 | 100% | 2025-08-09 | 2025-08-16 |  |  | Skilled Labor/Surveyor [6 h]; Foreman [6 h]; Excavator [56 h]; Pipe with diameter 300mm ; depth: 0 - 1.5m [39.58]; Pipe with diameter 400mm ; depth: 0 - 1.5m [2.41] | 9,760.77 | 9,760.77 | CO-R16.S12-SD-140 | 6 | 6 | SD | EX | CON | R16 | S12 | SD | CB | Ex | Each | CB |
| CO-R16.S12-SD-150 |  | Installation and Pipes Laying Connection Works for Catch Basins of Storm Drainage Network-[Road 16]-[SW-12] | 7d | 2025-07-20 A | 2025-07-20 A | CO-R16.S12-SD-140, PRO-R16-SD-DL-130 FF+3d | 100% | 2025-08-17 | 2025-08-24 |  |  | Labor/Helper [160 h]; Skilled Labor/Surveyor [8 h]; Foreman [8 h]; Excavator [80 h]; Pipe with diameter 300mm ; depth: 0 - 1.5m [118.75]; Pipe with diameter 400mm ; depth: 0 - 1.5m [7.24] | 29,282.01 | 29,282.01 | CO-R16.S12-SD-150 | 6 | 6 | SD | INSTALL | CON | R16 | S12 | SD | CB | CB | Each | CB |
| CO-R16.S12-SD-170 |  | Trench Backfilling and Compaction Works for Catch Basins of Storm Drainage Network-[Road 16]-[SW-12] | 10d | 2025-07-21 A | 2025-07-21 A | CO-R16.S12-SD-160 | 100% | 2025-08-30 | 2025-09-09 |  |  | Skilled Labor/Surveyor [8 h]; Foreman [8 h]; Excavator [80 h]; Pipe with diameter 300mm ; depth: 0 - 1.5m [52.78]; Pipe with diameter 400mm ; depth: 0 - 1.5m [3.22] | 13,014.16 | 13,014.16 | CO-R16.S12-SD-170 | 6 | 6 | SD | BACK | CON | R16 | S12 | SD | CB | BF | Each | CB |
| CO-R16.S12-SD-160 |  | Testing Works for Catch Basins of Storm Drainage Network-[Road 16]-[SW-12] | 4d | 2026-06-04 A | 2026-07-13 A | CO-R16.S12-SD-150, CO-R16.S12-SD-120, PRO-R16-SD-DL-110 FF+3d | 100% | 2025-08-25 | 2025-08-28 |  |  | Labor/Helper [64 h]; Skilled Labor/Surveyor [4 h]; Foreman [4 h]; Plumber [32 h]; Excavator [32 h]; Pipe with diameter 300mm ; depth: 0 - 1.5m [26.39]; Pipe with diameter 400mm ; depth: 0 - 1.5m [1.61] | 6,507.08 | 6,507.08 | CO-R16.S12-SD-160 | 6 | 6 | SD | TEST | CON | R16 | S12 | SD | CB | PL | Each | CB |
|  | PW | **Potable Water Network** |  | 2025-04-21 | 2026-11-23 |  |  |  |  |  |  |  |  |  |  |  |  |  |  |  |  |  |  |  |  |  |  |
|  | ML | **Main Line Sections** |  | 2025-04-21 | 2025-06-10 |  |  |  |  |  |  |  |  |  |  |  |  |  |  |  |  |  |  |  |  |  |  |
| CO-R16.S12-PW-100 |  | Trench Excavation and Bedding Works for Main Lines of Potable Water Network-[Road 16]-[SW-12] | 6d | 2025-04-21 A | 2025-04-26 A | CO-R16.S12-EW-110, CO-R16.S12-EW-100, CO-R16.S12-SW-130, CO-R16.S12-SD-130 | 100% | 2026-03-15 | 2026-03-24 |  |  | Skilled Labor/Surveyor [5 h]; Foreman [5 h]; Excavator [48 h]; Pipe with diameter 200mm; in depth 0.0m - 1.5m [130.08] | 18,912.91 | 18,912.91 | CO-R16.S12-PW-100 | 6 | 6 | PW | EX | CON | R16 | S12 | PW | ML | Ex | LM | ML |
| CO-R16.S12-PW-110 |  | Pipes Laying and accessories for Main Lines of Potable Water Network-[Road 16]-[SW-12] | 6d | 2025-04-29 A | 2025-05-30 A | CO-R16.S12-PW-100, CO-R15.S10-PW-110, PRO-R16-PW-DL-100 FF+3d | 100% | 2026-03-25 | 2026-03-31 |  |  | Labor/Helper [96 h]; Skilled Labor/Surveyor [5 h]; Foreman [5 h]; Plumber [48 h]; Excavator [48 h]; Pipe with diameter 200mm; in depth 0.0m - 1.5m [325.21] | 47,282.28 | 47,282.28 | CO-R16.S12-PW-110 | 6 | 6 | PW | PIPE | CON | R16 | S12 | PW | ML | PL | LM | ML |
| CO-R16.S12-PW-130 |  | Trench Backfilling and Compaction Works for Main Lines of Potable Water Network-[Road 16]-[SW-12] | 5.75d | 2025-06-01 A | 2025-06-10 A | CO-R16.S12-PW-110, CO-R15.S10-PW-130 | 100% | 2026-04-01 | 2026-04-07 |  |  | Skilled Labor/Surveyor [5 h]; Foreman [5 h]; Eq. Operator [5 h]; Loader [46 h]; Compactor [46 h]; Water Tank [12 h]; Pipe with diameter 200mm; in depth 0.0m - 1.5m [130.08] | 18,912.91 | 18,912.91 | CO-R16.S12-PW-130 | 6 | 6 | PW | BACK | CON | R16 | S12 | PW | ML | BF | LM | ML |
|  | VC | **Valve Chamber** |  | 2026-10-27 | 2026-11-02 |  |  |  |  |  |  |  |  |  |  |  |  |  |  |  |  |  |  |  |  |  |  |
| CO-R16.S12-PW-210 |  | Installation Works for Main Line Valves and Valve Chambers of Potable Water Network-[Road 16]-[SW-12] | 6d | 2026-10-27 | 2026-11-02 | CO-R16.S12-PW-110 |  |  |  | 14d | 194d | Labor/Helper [40 h]; Plumber [40 h]; Gate valves dia(200)mm on pipes with dia (200) mm. [5] | 13,239.2 |  | CO-R16.S12-PW-210 | 6 | 6 | PW | INSUL | CON | R16 | S12 | PW | ML | VI | Each | ML |
|  | FH | **Fire Hydrant** |  | 2026-10-27 | 2026-11-23 |  |  |  |  |  |  |  |  |  |  |  |  |  |  |  |  |  |  |  |  |  |  |
| CO-R16.S12-PW-140 |  | Excavation Works for Fire Hydrants of Potable Water Network-[Road 16]-[SW-12] | 6d | 2026-10-27 | 2026-11-02 | CO-R16.S12-PW-110 SS+3d, CO-R16.S12-PW-110 FF+3d, CO-R16.S12-EW-110, CO-R16.S12-SW-130 SS+3d, CO-R16.S12-SW-130 FF+3d |  |  |  | -32d | 6d | Skilled Labor/Surveyor [5 h]; Foreman [5 h]; Excavator [48 h]; 3-outlet fire hydrant (2 x 2.5 inch and 1 x 4 inch) in the form of a separate dry vacuum cylinder [0.6] | 4,544.61 |  | CO-R16.S12-PW-140 | 6 | 6 | PW | EX | CON | R16 | S12 | PW | FH | Ex | Each | FH |
| CO-R16.S12-PW-150 |  | Installation Works for Fire Hydrant of Potable Water Network-[Road 16]-[SW-12] | 6d | 2026-11-10 | 2026-11-16 | CO-R16.S12-PW-140, CO-R15.S10-PW-150, PRO-R16-PW-DL-120 FF+3d |  |  |  | -38d | 0d | Labor/Helper [96 h]; Skilled Labor/Surveyor [5 h]; Foreman [5 h]; Plumber [96 h]; 3-outlet fire hydrant (2 x 2.5 inch and 1 x 4 inch) in the form of a separate dry vacuum cylinder [2.6] | 19,693.31 |  | CO-R16.S12-PW-150 | 6 | 6 | PW | INSTALL | CON | R16 | S12 | PW | FH | FH | Each | FH |
| CO-R16.S12-PW-160 |  | Trench Backfilling and Compaction Works for Fire Hydrants of Potable Water Network-[Road 16]-[SW-12] | 6d | 2026-11-17 | 2026-11-23 | CO-R16.S12-PW-150, CO-R15.S10-PW-160 |  |  |  | -38d | 0d | Skilled Labor/Surveyor [5 h]; Foreman [5 h]; Excavator [48 h]; 3-outlet fire hydrant (2 x 2.5 inch and 1 x 4 inch) in the form of a separate dry vacuum cylinder [0.8] | 6,059.48 |  | CO-R16.S12-PW-160 | 6 | 6 | PW | BACK | CON | R16 | S12 | PW | FH | BF | Each | FH |
|  | TE | **Telecom Network** |  | 2025-08-20 | 2025-09-01 |  |  |  |  |  |  |  |  |  |  |  |  |  |  |  |  |  |  |  |  |  |  |
|  | PD | **Ducts Works** |  | 2025-08-20 | 2025-09-01 |  |  |  |  |  |  |  |  |  |  |  |  |  |  |  |  |  |  |  |  |  |  |
| CO-R16.S12-TE-100 |  | Trench Excavation and Bedding Works for Ducts of Telecom Network-[Road 16]-[SW-12] | 7d | 2025-08-20 A | 2025-08-23 A | CO-R16.S11-TE-100 | 100% | 2025-12-08 | 2025-12-15 |  |  | Skilled Labor/Surveyor [6 h]; Foreman [6 h]; Excavator [56 h]; 6-way ducts, 50mm dia. HDPE [21]; Road crossing ducts (6-way) [2] | 3,149 | 3,149 | CO-R16.S12-TE-100 | 6 | 6 | TE | DUCTS | CON | R16 | S12 | TE | PD | Ex | LM | DC |
| CO-R16.S12-TE-110 |  | Pipes Laying Works for Ducts of Telecom Network-[Road 16]-[SW-12] | 7d | 2025-08-24 A | 2025-08-26 A | CO-R16.S12-TE-100, CO-R15.S10-TE-110, PRO-R16-TE-DL-100 FF+3d | 100% | 2026-08-01 | 2026-08-08 |  |  | Labor/Helper [112 h]; Skilled Labor/Surveyor [6 h]; Foreman [6 h]; Plumber [56 h]; Excavator [56 h]; JCB [28 h]; Truck [56 h]; 6-way ducts, 50mm dia. HDPE [126]; Road crossing ducts (6-way) [11] | 18,726.5 | 18,726.5 | CO-R16.S12-TE-110 | 6 | 6 | TE | DUCTS | CON | R16 | S12 | TE | PD | PL | LM | DC |
| CO-R16.S12-TE-120 |  | Pouring Plain Concrete Above Ducts of Telecom Network-[Road 16]-[SW-12] | 7d | 2025-08-27 A | 2025-08-30 A | CO-R16.S12-TE-110, CO-R15.S10-TE-120 | 100% | 2026-08-09 | 2026-08-16 |  |  | Skilled Labor/Surveyor [6 h]; Foreman [6 h]; Cons. Carpenter [112 h]; Block Mason [56 h]; 6-way ducts, 50mm dia. HDPE [21]; Road crossing ducts (6-way) [2] | 3,149 | 3,149 | CO-R16.S12-TE-120 | 6 | 6 | TE | DUCTS | CON | R16 | S12 | TE | PD | PC | LM | DC |
| CO-R16.S12-TE-130 |  | Trench Backfilling and Compaction Works for Ducts of Telecom Network-[Road 16]-[SW-12] | 7d | 2025-08-31 A | 2025-09-01 A | CO-R16.S12-TE-120, CO-R15.S10-TE-130 | 100% | 2026-08-17 | 2026-08-24 |  |  | Skilled Labor/Surveyor [6 h]; Foreman [6 h]; Excavator [56 h]; 6-way ducts, 50mm dia. HDPE [42]; Road crossing ducts (6-way) [4] | 6,298 | 6,298 | CO-R16.S12-TE-130 | 6 | 6 | TE | DUCTS | CON | R16 | S12 | TE | PD | BF | LM | DC |

| ID | WBS | Activity | Duration | Start | Finish | Predecessors | Complete | Planned start | Planned finish | Resources | Cost | Actual cost | Activity ID N | Seq | New Seq | 02- Network-WBS | 03- Activity | 04-UOM | 05-Discipline | 01- Network | 07-Weightage System | 08 Stage | 09 Roads | 10 side Walk | Discipline |
| --- | --- | --- | --- | --- | --- | --- | --- | --- | --- | --- | --- | --- | --- | --- | --- | --- | --- | --- | --- | --- | --- | --- | --- | --- | --- |
|  | MH | **Manholes Works** |  | 2025-08-27 | 2025-08-30 |  |  |  |  |  |  |  |  |  |  |  |  |  |  |  |  |  |  |  |  |
| CO-R16.S12-TE-140 |  | Excavation Works for Manholes of Telecom Network-[Road 16]-[SW-12] | 7d | 2025-08-27 A | 2025-08-27 A | CO-R15.S10-TE-140, CO-R16.S11-TE-140, CO-R16.S12-TE-100 | 100% | 2026-08-01 | 2026-08-08 | Skilled Labor/Surveyor [6 h]; Foreman [6 h]; Excavator [56 h]; Manhole Type 2 (2000x1000x1000) [0.4] | 1,256.92 | 1,256.92 | CO-R16.S12-TE-140 | 6 | 6 | MH | Ex | Each | MNH | TE | EXC | CON | R16 | S12 | TE |
| CO-R16.S12-TE-150 |  | Installation Works for Manholes of Telecom Network-[Road 16]-[SW-12] | 7d | 2025-08-28 A | 2025-08-28 A | CO-R16.S12-TE-140, CO-R15.S10-TE-150, PRO-R16-TE-DL-110 FF+3d | 100% | 2026-08-09 | 2026-08-16 | Skilled Labor/Surveyor [6 h]; Foreman [6 h]; Excavator [56 h]; Manhole Type 1 (2000x1000x1000) [1]; Manhole Type 2 (2000x1000x1000) [1.2] | 6,886.93 | 6,886.93 | CO-R16.S12-TE-150 | 6 | 6 | MH | HH | Each | MNH | TE | INSTALL-1 | CON | R16 | S12 | TE |
| CO-R16.S12-TE-160 |  | Backfilling Works for Manholes of Telecom Network-[Road 16]-[SW-12] | 7d | 2025-08-30 A | 2025-08-30 A | CO-R16.S12-TE-150, CO-R15.S10-TE-160 | 100% | 2026-08-17 | 2026-08-24 | Skilled Labor/Surveyor [6 h]; Foreman [6 h]; Excavator [56 h]; Manhole Type 2 (2000x1000x1000) [0.4] | 1,256.92 | 1,256.92 | CO-R16.S12-TE-160 | 6 | 6 | MH | BF | Each | MNH | TE | (New)-2 | CON | R16 | S12 | TE |
|  | RD | **Road Works** |  | 2025-08-04 | 2026-10-12 |  |  |  |  |  |  |  |  |  |  |  |  |  |  |  |  |  |  |  |  |
|  | RD | **Pre-Bituminous Construction** |  | 2025-08-04 | 2025-10-20 |  |  |  |  |  |  |  |  |  |  |  |  |  |  |  |  |  |  |  |  |
| CO-R16.S12-RD-P-100 |  | Capping and Subgrade Layer for Road Works-[Road 16]-[SW-12] | 18d | 2025-08-04 A | 2025-08-11 A | CO-R16.S12-SD-130, CO-R16.S12-SW-130, CO-R16.S12-PW-130, PRO-R16-RD-DL-100 FF+3d, CO-R16.S12-TE-130, CO-R16.S12-TE-160 | 100% | 2026-08-25 | 2026-09-14 | Labor/Helper [288 h]; Skilled Labor/Surveyor [144 h]; Loader [144 h]; Grader [144 h]; Road Roller [144 h]; Water Tank [144 h]; 300mm capping layer underneath subgrade , CBR?15% [1587.47]; 300mm thick Subgrade, including subgrade preparation, CBR?25% [1587.47] | 123,187.67 | 123,187.67 | CO-R16.S12-RD-P-100 | 6 | 6 | AB | SG | Sq.m | BS | RD |  | CON | R16 | S12 | RD |
| CO-R16.S12-RD-P-110 |  | Aggregate Base Course Layer for Road Works-[Road 16]-[SW-12] | 18d | 2025-09-17 A | 2025-10-20 A | CO-R16.S12-RD-P-100 SS+3d, CO-R16.S12-RD-P-100 FF+3d, CO-R16.S12-SD-170 SS+3d, CO-R16.S12-SD-170 FF+3d, CO-R15.S10-RD-P-110, PRO-R16-RD-DL-110 FF+3d | 100% | 2026-10-15 | 2026-11-04 | Labor/Helper [288 h]; Skilled Labor/Surveyor [144 h]; Foreman [144 h]; Loader [144 h]; Grader [144 h]; Road Roller [144 h]; Aggregate base course 200mm thick after compaction in two layers(Grading 1); CBR?80%; including watering, compaction and testing [1058.42] | 85,806.11 | 85,806.11 | CO-R16.S12-RD-P-110 | 6 | 6 | AB | BA | Sq.m | BS | RD |  | CON | R16 | S12 | RD |
|  | LS | **Pavement Works** |  | 2026-08-25 | 2026-10-12 |  |  |  |  |  |  |  |  |  |  |  |  |  |  |  |  |  |  |  |  |
| CO-R16.S12-RD-P-120 |  | Fixing of Curbstone for Sidewalks Pavement-[Road 16]-[SW-12] | 18d | 2026-08-25 A | 2026-08-31 A | CO-R15.S10-RD-P-120, PRO-R16-RD-DL-130 FF+3d, CO-R16.S12-RD-P-110 SS+3d, CO-R16.S12-RD-P-110 FF+3d | 100% | 2026-10-19 | 2026-11-08 | Labor/Helper [288 h]; Block Mason [864 h]; Precast Concrete Kerb, Type K1 [585.69]; Precast Concrete Kerb, Type L1 [1162.07] | 70,259.95 | 70,259.95 | CO-R16.S12-RD-P-120 | 6 | 6 | LS | CR | LM | LAND | RD |  | CON | R16 | S12 | RD |
| CO-R16.S12-RD-P-130 |  | Fixing of Interlock Tiles for Sidewalks Pavement-[Road 16]-[SW-12] | 10d | 2026-08-25 A | 2026-10-12 A | CO-R16.S12-RD-P-120 SS, CO-R16.S12-RD-P-120 FF+3d, CO-R15.S10-RD-P-130 SS, PRO-R16-RD-DL-120 FF+3d, CO-R16-SD-TF-120 | 100% | 2026-11-09 | 2026-11-19 | Labor/Helper [288 h]; Block Mason [864 h]; Interlocking block pavers for sidewalk/footpath 60mm thick on and including 30mm Sand Bedding, 200mm Aggregate subbase, all in accordance with authority standards and complete as per specifications [1045.87]; Extraover for Pedestrian ramps [3] | 50,367.85 | 50,367.85 | CO-R16.S12-RD-P-130 | 6 | 6 | LS | IL | Sq.m | LAND | RD |  | CON | R16 | S12 | RD |
|  | 9 | **Road 17 Local 1 ( 500 LM )** |  | 2025-02-27 | 2026-11-30 |  |  |  |  |  |  |  |  |  |  |  |  |  |  |  |  |  |  |  |  |
|  | SW_15 | **SW_13** |  | 2025-02-27 | 2026-11-03 |  |  |  |  |  |  |  |  |  |  |  |  |  |  |  |  |  |  |  |  |
|  | EW | **Earthworks** |  | 2025-02-27 | 2025-03-07 |  |  |  |  |  |  |  |  |  |  |  |  |  |  |  |  |  |  |  |  |
|  | EW | **Earthworks** |  | 2025-02-27 | 2025-03-07 |  |  |  |  |  |  |  |  |  |  |  |  |  |  |  |  |  |  |  |  |
| CO-R17.S13-EW-100 |  | Roadway Excavation Works Upto Design Level for Earthworks-[Road 17]-[SW-13] | 10d | 2025-02-27 A | 2025-03-03 A | ENG-MS-RD-A-10, ENG-SH-RD-A-100, CO-R18.S16-EW-120 | 100% | 2025-03-05 | 2025-03-16 | Labor/Helper [240 h]; Skilled Labor/Surveyor [30 h]; Foreman [30 h]; Dump Truck [480 h]; Water Tank [240 h]; Dozer [240 h]; Roadway Excavation for cuttings; on any type of material for all depths including trimming and Preparation of excavated surfaces and disposal. [7106.31] | 44,769.75 | 44,769.75 | CO-R17.S13-EW-100 | 3 | 3 | EW | Ex | Cub.m | EW | EW |  | CON | R17 | S13 | EW |
| CO-R17.S13-EW-110 |  | Embankments Works Upto Design Level for Earthworks-[Road 17]-[SW-13] | 12d | 2025-03-04 A | 2025-03-07 A | CO-R17.S13-EW-100, ENG-MS-RD-A-10, ENG-SH-RD-A-100 | 100% | 2025-03-17 | 2025-04-03 | Labor/Helper [480 h]; Skilled Labor/Surveyor [60 h]; Foreman [60 h]; Dump Truck [960 h]; Water Tank [480 h]; Dozer [480 h]; Embankments to the ROW, with suitable material other than top soil or rock according to specifications [11962.6] | 96,897.3 | 96,897.3 | CO-R17.S13-EW-110 | 3 | 3 | EW | BF | Cub.m | EW | EW |  | CON | R17 | S13 | EW |
|  | SW | **Sewage Network** |  | 2025-05-20 | 2025-09-17 |  |  |  |  |  |  |  |  |  |  |  |  |  |  |  |  |  |  |  |  |
|  | ML | **Main Line Sections** |  | 2025-05-20 | 2025-06-21 |  |  |  |  |  |  |  |  |  |  |  |  |  |  |  |  |  |  |  |  |
| CO-R17.S13-SW-100 |  | Trench Excavation and Bedding Works for Main Lines of Sewage Network-[Road 17]-[SW-13] | 12d | 2025-05-20 A | 2025-05-22 A | CO-R17.S13-EW-110, ENG-MS-SW-ML-A-110, ENG-SH-SW-ML-A-110, CO-R18.S16-SW-220 | 100% | 2025-04-09 | 2025-04-22 | Labor/Helper [96 h]; Foreman [96 h]; Excavator [96 h]; Nominal bore : 160mm; Depth : 1.5m - 2.5m [25.4]; Nominal bore : 200mm; Depth : 0.0m - 1.5m [2.49]; Nominal bore : 200mm; Depth : 1.5m - 2.5m [4.59]; Nominal bore : 200mm; Depth : 2.5m - 3.5m [11.34]; Nominal bore : 200mm; Depth : 3.5m - 4.5m [8.46]; Nominal bore : 200mm; Depth : 4.5m -5.5m [4.28]; Nominal bore : 200mm; Depth : 5.5m - 6.5m [5.51] | 15,990.12 | 15,990.12 | CO-R17.S13-SW-100 | 3 | 3 | ML | Ex | LM | ML | SW | EX | CON | R17 | S13 | SW |
| CO-R17.S13-SW-120 |  | Pipes Laying Works for Main Lines of Sewage Network-[Road 17]-[SW-13] | 12d | 2025-06-08 A | 2025-06-14 A | CO-R17.S13-SW-100, PRO-R17-SW-DL-100 FF+3d | 100% | 2025-04-30 | 2025-05-13 | Labor/Helper [192 h]; Skilled Labor/Surveyor [10 h]; Foreman [10 h]; Plumber [96 h]; Excavator [96 h]; Nominal bore : 160mm; Depth : 1.5m - 2.5m [76.2]; Nominal bore : 200mm; Depth : 0.0m - 1.5m [7.46]; Nominal bore : 200mm; Depth : 1.5m - 2.5m [13.77]; Nominal bore : 200mm; Depth : 2.5m - 3.5m [34.03]; Nominal bore : 200mm; Depth : 3.5m - 4.5m [25.39]; Nominal bore : 200mm; Depth : 4.5m -5.5m [12.85]; Nominal bore : 200mm; Depth : 5.5m - 6.5m [16.52] | 47,970.36 | 47,970.36 | CO-R17.S13-SW-120 | 3 | 3 | ML | PL | LM | ML | SW | PIPE | CON | R17 | S13 | SW |
| CO-R17.S13-SW-130 |  | Trench Backfilling and Compaction Works for Main Lines of Sewage Network-[Road 17]-[SW-13] | 10d | 2025-06-15 A | 2025-06-21 A | ENG-SH-SW-ML-A-110 FF, ENG-MS-SW-ML-A-110 FF, CO-R17.S13-SW-120, CO-R17.S13-SW-210 FF, CO-R18.S16-SW-240 | 100% | 2025-05-29 | 2025-06-14 | Skilled Labor/Surveyor [10 h]; Foreman [10 h]; Excavator [96 h]; Nominal bore : 160mm; Depth : 1.5m - 2.5m [12.7]; Nominal bore : 200mm; Depth : 0.0m - 1.5m [1.24]; Nominal bore : 200mm; Depth : 1.5m - 2.5m [2.29]; Nominal bore : 200mm; Depth : 2.5m - 3.5m [5.67]; Nominal bore : 200mm; Depth : 3.5m - 4.5m [4.23]; Nominal bore : 200mm; Depth : 4.5m -5.5m [2.14]; Nominal bore : 200mm; Depth : 5.5m - 6.5m [2.75] | 7,995.06 | 7,995.06 | CO-R17.S13-SW-130 | 3 | 3 | ML | BF | LM | ML | SW | BACK | CON | R17 | S13 | SW |
|  | 1 | **Manholes** |  | 2025-06-11 | 2025-09-17 |  |  |  |  |  |  |  |  |  |  |  |  |  |  |  |  |  |  |  |  |
| CO-R17.S13-SW-160 |  | Excavation Works for Main Line Manholes of Sewage Network-[Road 17]-[SW-13] | 1d | 2025-06-11 A | 2025-06-14 A | CO-R17.S13-SW-120 SS | 100% | 2025-04-30 | 2025-04-30 | Labor/Helper [40 h]; Skilled Labor/Surveyor [20 h]; Excavator [40 h]; Depth: not exceeding 1.5m [0.15]; Depth: 1.5 - 2.5m [0.45]; Depth: 2.5 - 3.5m [0.3]; Depth: 5.5 - 6.5m [0.15]; Depth:6.5 - 7.5m [0.15] | 15,229.87 | 15,229.87 | CO-R17.S13-SW-160 | 3 | 3 |  |  |  |  | SW | EX | CON | R17 | S13 | SW |
| CO-R17.S13-SW-170 |  | Installation RC Footing Works for Main Line Manholes of Sewage Network-[Road 17]-[SW-13] | 2.25d | 2025-06-15 A | 2025-06-16 A | CO-R17.S13-SW-160, PRO-R17-SW-DL-110 FF+3d | 100% | 2025-05-01 | 2025-05-04 | Cons. Carpenter [180 h]; Steel Fixer [180 h]; Depth: not exceeding 1.5m [0.1]; Depth: 1.5 - 2.5m [0.3]; Depth: 2.5 - 3.5m [0.2]; Depth: 5.5 - 6.5m [0.1]; Depth:6.5 - 7.5m [0.1] | 10,153.25 | 10,153.25 | CO-R17.S13-SW-170 | 3 | 3 |  |  |  |  | SW | RC F | CON | R17 | S13 | SW |
| CO-R17.S13-SW-180 |  | Install Grp Liner Wall Works for Main Line Manholes of Sewage Network-[Road 17]-[SW-13] | 4d | 2025-06-17 A | 2025-06-18 A | CO-R17.S13-SW-170 | 100% | 2025-05-04 | 2025-05-08 | Labor/Helper [64 h]; Plumber [64 h]; Depth: not exceeding 1.5m [0.4]; Depth: 1.5 - 2.5m [1.2]; Depth: 2.5 - 3.5m [0.8]; Depth: 5.5 - 6.5m [0.4]; Depth:6.5 - 7.5m [0.4] | 40,612.99 | 40,612.99 | CO-R17.S13-SW-180 | 3 | 3 |  |  |  |  | SW | LP | CON | R17 | S13 | SW |
| CO-R17.S13-SW-200 |  | Backfilling Works for Main Line Manholes of Sewage Network-[Road 17]-[SW-13] | 4d | 2025-06-19 A | 2025-06-21 A | CO-R17.S13-SW-190 | 100% | 2025-05-10 | 2025-05-14 | Labor/Helper [64 h]; Skilled Labor/Surveyor [32 h]; Excavator [64 h]; Depth: not exceeding 1.5m [0.15]; Depth: 1.5 - 2.5m [0.45]; Depth: 2.5 - 3.5m [0.3]; Depth: 5.5 - 6.5m [0.15]; Depth:6.5 - 7.5m [0.15] | 15,229.87 | 15,229.87 | CO-R17.S13-SW-200 | 3 | 3 |  |  |  |  | SW | BACK | CON | R17 | S13 | SW |
| CO-R17.S13-SW-190 |  | Pouring Grp Liner Wall Works for Main Line Manholes of Sewage Network-[Road 17]-[SW-13] | 1d | 2025-09-16 A | 2025-09-16 A | CO-R17.S13-SW-180 | 100% | 2025-05-08 | 2025-05-10 | Cons. Carpenter [80 h]; Steel Fixer [80 h]; Depth: not exceeding 1.5m [0.05]; Depth: 1.5 - 2.5m [0.15]; Depth: 2.5 - 3.5m [0.1]; Depth: 5.5 - 6.5m [0.05]; Depth:6.5 - 7.5m [0.05] | 5,076.62 | 5,076.62 | CO-R17.S13-SW-190 | 3 | 3 |  |  |  |  | SW | (New) | CON | R17 | S13 | SW |
| CO-R17.S13-SW-210 |  | Testing Works for Main Line Manholes of Sewage Network-[Road 17]-[SW-13] | 1d | 2025-09-17 A | 2025-09-17 A | CO-R17.S13-SW-200 | 100% | 2025-05-14 | 2025-05-15 | Labor/Helper [40 h]; Plumber [40 h]; Depth: not exceeding 1.5m [0.05]; Depth: 1.5 - 2.5m [0.15]; Depth: 2.5 - 3.5m [0.1]; Depth: 5.5 - 6.5m [0.05]; Depth:6.5 - 7.5m [0.05] | 5,076.62 | 5,076.62 | CO-R17.S13-SW-210 | 3 | 3 |  |  |  |  | SW | T&COV | CON | R17 | S13 | SW |

| ID | WBS | Activity | Duration | Start | Finish | Predecessors | Complete | Planned start | Planned finish | Total float | Free float | Resources | Cost | Actual cost | Activity ID N | Seq | New Seq | 02- Network-WBS | 03- Activity | 04-UOM | 05-Discipline | 01- Network | 07-Weightage System | 08 Stage | 09 Roads | 10 side Walk | Discipline |
| --- | --- | --- | --- | --- | --- | --- | --- | --- | --- | --- | --- | --- | --- | --- | --- | --- | --- | --- | --- | --- | --- | --- | --- | --- | --- | --- | --- |
|  | SD | **Storm Drainage Network** |  | 2025-06-03 | 2026-07-13 |  |  |  |  |  |  |  |  |  |  |  |  |  |  |  |  |  |  |  |  |  |  |
|  | ML | **Main Line Sections** |  | 2025-06-22 | 2025-06-30 |  |  |  |  |  |  |  |  |  |  |  |  |  |  |  |  |  |  |  |  |  |  |
| CO-R17.S13-SD-100 |  | Trench Excavation and Bedding Works for Main Lines of Storm Drainage Network-[Road 17]-[SW-13] | 10d | 2025-06-22 A | 2025-06-23 A | ENG-SH-SD-ML-A-110, CO-R17.S13-EW-110, CO-R17.S13-EW-100, CO-R17.S13-SW-130 SS+3d, CO-R17.S13-SW-130 FF+3d, ENG-MS-SD-ML-A-110 | 100% | 2025-06-02 | 2025-06-17 |  |  | Skilled Labor/Surveyor [12 h]; Foreman [12 h]; Excavator [112 h]; Pipe with diameter 600mm ; depth: 1.51m - 2.5m [8.74]; Pipe with diameter 700mm ; depth: 1.51m - 2.5m [19.05]; Pipe with diameter 1000mm ; depth: 1.51m - 2.5m [14]; Pipe with diameter 1000mm ; depth: 2.51 - 3.5m [14] | 34,123.03 | 34,123.03 | CO-R17.S13-SD-100 | 3 | 3 | ML | Ex | LM | ML | SD | EX | CON | R17 | S13 | SD |
| CO-R17.S13-SD-120 |  | Pipes Laying Works for Main Lines of Storm Drainage Network-[Road 17]-[SW-13] | 20d | 2025-06-24 A | 2025-06-28 A | CO-R17.S13-SD-100 | 100% | 2025-06-18 | 2025-07-10 |  |  | Labor/Helper [320 h]; Skilled Labor/Surveyor [16 h]; Foreman [16 h]; Plumber [160 h]; Excavator [160 h]; Pipe with diameter 600mm ; depth: 1.51m - 2.5m [26.23]; Pipe with diameter 700mm ; depth: 1.51m - 2.5m [57.16]; Pipe with diameter 1000mm ; depth: 1.51m - 2.5m [42]; Pipe with diameter 1000mm ; depth: 2.51 - 3.5m [42] | 102,369.08 | 102,369.08 | CO-R17.S13-SD-120 | 3 | 3 | ML | PL | LM | ML | SD | PIPE | CON | R17 | S13 | SD |
| CO-R17.S13-SD-130 |  | Trench Backfilling and Compaction Works for Main Lines of Storm Drainage Network-[Road 17]-[SW-13] | 20d | 2025-06-29 A | 2025-06-30 A | CO-R17.S13-SD-120 SS+3d, CO-R17.S13-SD-120 FF+3d, ENG-SH-SD-ML-A-110 FF, CO-R16.S11-SD-130, ENG-MS-SD-ML-A-110 FF, CO-R17.S13-SD-120, CO-R17.S13-SD-220 FF | 100% | 2026-03-10 | 2026-04-05 |  |  | Skilled Labor/Surveyor [16 h]; Foreman [16 h]; Excavator [160 h]; Pipe with diameter 600mm ; depth: 1.51m - 2.5m [4.37]; Pipe with diameter 700mm ; depth: 1.51m - 2.5m [9.53]; Pipe with diameter 1000mm ; depth: 1.51m - 2.5m [7]; Pipe with diameter 1000mm ; depth: 2.51 - 3.5m [7] | 17,061.51 | 17,061.51 | CO-R17.S13-SD-130 | 3 | 3 | ML | BF | LM | ML | SD | BACK | CON | R17 | S13 | SD |
|  | MH | **Manholes** |  | 2025-06-03 | 2026-07-13 |  |  |  |  |  |  |  |  |  |  |  |  |  |  |  |  |  |  |  |  |  |  |
| CO-R17.S13-SD-220 |  | Backfilling Works for Manholes of Storm Drainage Network-[Road 17]-[SW-13] | 7d | 2025-06-03 A | 2025-06-08 A | CO-R17.S13-SD-210 | 100% | 2025-06-26 | 2025-07-03 |  |  | Labor/Helper [168 h]; Skilled Labor/Surveyor [84 h]; Excavator [168 h]; MH ; depth: 0.0m - 1.5m [0.2]; MH ; depth: 1.51m - 2.5m [0.4]; MH ; depth: 2.51 - 3.5m [0.2]; MH ; depth: 1.51m - 2.5m [0.2] | 18,007.32 | 18,007.32 | CO-R17.S13-SD-220 | 3 | 3 |  |  |  |  | SD | BACK | CON | R17 | S13 | SD |
| CO-R17.S13-SD-180 |  | Trench Excavation and Bedding Works for Manholes of Storm Drainage Network-[Road 17]-[SW-13] | 1d | 2025-06-29 A | 2025-06-29 A | CO-R17.S13-SD-120 SS, PRO-SD-1DL-100 | 100% | 2025-06-18 | 2025-06-18 |  |  | Labor/Helper [24 h]; Skilled Labor/Surveyor [12 h]; Excavator [24 h]; MH ; depth: 0.0m - 1.5m [0.15]; MH ; depth: 1.51m - 2.5m [0.3]; MH ; depth: 2.51 - 3.5m [0.15]; MH ; depth: 1.51m - 2.5m [0.15] | 13,505.49 | 13,505.49 | CO-R17.S13-SD-180 | 3 | 3 |  |  |  |  | SD | EX | CON | R17 | S13 | SD |
| CO-R17.S13-SD-190 |  | Install RC Footing Works for Manholes of Storm Drainage Network-[Road 17]-[SW-13] | 1d | 2025-06-30 A | 2025-06-30 A | CO-R17.S13-SD-180 | 100% | 2025-06-19 | 2025-06-19 |  |  | Cons. Carpenter [48 h]; Steel Fixer [48 h]; MH ; depth: 0.0m - 1.5m [0.05]; MH ; depth: 1.51m - 2.5m [0.1]; MH ; depth: 2.51 - 3.5m [0.05]; MH ; depth: 1.51m - 2.5m [0.05] | 4,501.83 | 4,501.83 | CO-R17.S13-SD-190 | 3 | 3 |  |  |  |  | SD | RC F | CON | R17 | S13 | SD |
| CO-R17.S13-SD-200 |  | Install RC Wall Rings & Slab Works for Manholes of Storm Drainage Network-[Road 17]-[SW-13] | 4d | 2025-07-01 A | 2025-07-02 A | CO-R17.S13-SD-190 | 100% | 2025-06-21 | 2025-06-24 |  |  | Cons. Carpenter [192 h]; Steel Fixer [192 h]; MH ; depth: 0.0m - 1.5m [0.45]; MH ; depth: 1.51m - 2.5m [0.9]; MH ; depth: 2.51 - 3.5m [0.45]; MH ; depth: 1.51m - 2.5m [0.45] | 40,516.47 | 40,516.47 | CO-R17.S13-SD-200 | 3 | 3 |  |  |  |  | SD | RC W | CON | R17 | S13 | SD |
| CO-R17.S13-SD-210 |  | Testing Works for Manholes of Storm Drainage Network-[Road 17]-[SW-13] | 1d | 2026-06-04 A | 2026-07-13 A | CO-R17.S13-SD-200 | 100% | 2025-06-25 | 2025-06-25 |  |  | Labor/Helper [24 h]; Plumber [24 h]; MH ; depth: 0.0m - 1.5m [0.1]; MH ; depth: 1.51m - 2.5m [0.2]; MH ; depth: 2.51 - 3.5m [0.1]; MH ; depth: 1.51m - 2.5m [0.1] | 9,003.66 | 9,003.66 | CO-R17.S13-SD-210 | 3 | 3 |  |  |  |  | SD | T&COV | CON | R17 | S13 | SD |
|  | CB | **Catch Basin Sections** |  | 2025-06-07 | 2026-07-13 |  |  |  |  |  |  |  |  |  |  |  |  |  |  |  |  |  |  |  |  |  |  |
| CO-R17.S13-SD-170 |  | Trench Backfilling and Compaction Works for Catch Basins of Storm Drainage Network-[Road 17]-[SW-13] | 7d | 2025-06-07 A | 2025-06-10 A | CO-R17.S13-SD-160 | 100% | 2025-07-30 | 2025-08-06 |  |  | Skilled Labor/Surveyor [6 h]; Foreman [6 h]; Excavator [56 h]; Pipe with diameter 300mm ; depth: 0 - 1.5m [50.18]; Pipe with diameter 400mm ; depth: 0 - 1.5m [3.06] | 12,374.1 | 12,374.1 | CO-R17.S13-SD-170 | 3 | 3 | CB | BF | Each | CB | SD | BACK | CON | R17 | S13 | SD |
| CO-R17.S13-SD-140 |  | Trench Excavation and Bedding Works for Catch Basins of Storm Drainage Network-[Road 17]-[SW-13] | 7d | 2025-06-24 A | 2025-06-30 A | CO-R17.S13-EW-110, ENG-SH-SD-CB-A-110, ENG-MS-SD-CB-A-110, CO-R17.S13-SD-220 | 100% | 2025-07-05 | 2025-07-12 |  |  | Skilled Labor/Surveyor [6 h]; Foreman [6 h]; Excavator [56 h]; Pipe with diameter 300mm ; depth: 0 - 1.5m [37.63]; Pipe with diameter 400mm ; depth: 0 - 1.5m [2.29] | 9,280.57 | 9,280.57 | CO-R17.S13-SD-140 | 3 | 3 | CB | Ex | Each | CB | SD | EX | CON | R17 | S13 | SD |
| CO-R17.S13-SD-150 |  | Installation and Pipes Laying Connection Works for Catch Basins of Storm Drainage Network-[Road 17]-[SW-13] | 7d | 2025-07-01 A | 2025-07-06 A | CO-R17.S13-SD-140, CO-R18.S16-SD-270 | 100% | 2025-07-14 | 2025-07-21 |  |  | Labor/Helper [224 h]; Skilled Labor/Surveyor [12 h]; Foreman [12 h]; Excavator [112 h]; Pipe with diameter 300mm ; depth: 0 - 1.5m [112.91]; Pipe with diameter 400mm ; depth: 0 - 1.5m [6.88] | 27,841.72 | 27,841.72 | CO-R17.S13-SD-150 | 3 | 3 | CB | CB | Each | CB | SD | INSTALL | CON | R17 | S13 | SD |
| CO-R17.S13-SD-160 |  | Testing Works for Catch Basins of Storm Drainage Network-[Road 17]-[SW-13] | 7d | 2026-06-04 A | 2026-07-13 A | CO-R17.S13-SD-150, CO-R17.S13-SD-120 | 100% | 2025-07-22 | 2025-07-29 |  |  | Labor/Helper [112 h]; Skilled Labor/Surveyor [6 h]; Foreman [6 h]; Plumber [56 h]; Excavator [56 h]; Pipe with diameter 300mm ; depth: 0 - 1.5m [25.09]; Pipe with diameter 400mm ; depth: 0 - 1.5m [1.53] | 6,187.05 | 6,187.05 | CO-R17.S13-SD-160 | 3 | 3 | CB | PL | Each | CB | SD | TEST | CON | R17 | S13 | SD |
|  | IR | **Irrigation Network** |  | 2025-05-01 | 2026-11-03 |  |  |  |  |  |  |  |  |  |  |  |  |  |  |  |  |  |  |  |  |  |  |
|  | ML | **Main Line Pipes** |  | 2025-05-01 | 2026-11-03 |  |  |  |  |  |  |  |  |  |  |  |  |  |  |  |  |  |  |  |  |  |  |
| CO-R17.S13-IR-100 |  | Trench Excavation and Bedding Works for Main Lines of Irrigation Network-[Road 17]-[SW-13] | 7d | 2025-05-01 A | 2025-05-10 A | ENG-SH-IR-ML-A-110, CO-R17.S13-EW-110, CO-R17.S13-SD-170, ENG-MS-IR-ML-A-110 | 100% | 2025-08-07 | 2025-08-14 |  |  | Skilled Labor/Surveyor [6 h]; Foreman [6 h]; Excavator [56 h]; 125 mm pipe; depth 0.0m - 1.5m [127.9] | 9,511.63 | 9,511.63 | CO-R17.S13-IR-100 | 3 | 3 | ML | Ex | LM | ML | IR | EX | CON | R17 | S13 | IR |
| CO-R17.S13-IR-110 |  | Pipes Laying Works for Main Lines of Irrigation Network-[Road 17]-[SW-13] | 10d | 2025-05-21 A | 2025-05-27 A | CO-R17.S13-IR-100, PRO-R17-IR-DL-100 FF+3d | 100% | 2025-08-16 | 2025-08-26 |  |  | Labor/Helper [160 h]; Skilled Labor/Surveyor [8 h]; Foreman [8 h]; Plumber [80 h]; Excavator [80 h]; 125 mm pipe; depth 0.0m - 1.5m [383.69] | 28,534.88 | 28,534.88 | CO-R17.S13-IR-110 | 3 | 3 | ML | PL | LM | ML | IR | PIPE | CON | R17 | S13 | IR |
| CO-R17.S13-IR-130 |  | Trench Backfilling and Compaction Works for Main Lines of Irrigation Network-[Road 17]-[SW-13] | 9d | 2025-06-29 A | 2025-07-07 A | CO-R17.S13-IR-110 | 100% | 2025-09-04 | 2025-09-14 |  |  | Skilled Labor/Surveyor [8 h]; Foreman [8 h]; Excavator [72 h]; 125 mm pipe; depth 0.0m - 1.5m [63.95] | 4,755.81 | 4,755.81 | CO-R17.S13-IR-130 | 3 | 3 | ML | BF | LM | ML | IR | BACK | CON | R17 | S13 | IR |
| CO-R17.S13-IR-120 |  | Installation Works for Main Line Valves of Irrigation Network-[Road 17]-[SW-13] | 7d | 2026-10-27 | 2026-11-03 | CO-R17.S13-IR-110 |  |  |  | -5d | 158d | Labor/Helper [112 h]; Skilled Labor/Surveyor [6 h]; Foreman [6 h]; Plumber [112 h]; Gate valves dia (90)mm on pipes with dia (125) mm. [5] | 9,966.25 |  | CO-R17.S13-IR-120 | 3 | 3 | ML | VI | Each | ML | IR | VALV | CON | R17 | S13 | IR |
|  | TE | **Telecom Network** |  | 2025-07-14 | 2025-07-27 |  |  |  |  |  |  |  |  |  |  |  |  |  |  |  |  |  |  |  |  |  |  |
|  | PD | **Ducts Works** |  | 2025-07-14 | 2025-07-25 |  |  |  |  |  |  |  |  |  |  |  |  |  |  |  |  |  |  |  |  |  |  |
| CO-R17.S13-TE-100 |  | Trench Excavation and Bedding Works for Ducts of Telecom Network-[Road 17]-[SW-13] | 7d | 2025-07-14 A | 2025-07-17 A | CO-R17.S13-IR-130, CO-R17.S13-EW-110, CO-R18.S16-TE-170 | 100% | 2025-11-08 | 2025-11-15 |  |  | Skilled Labor/Surveyor [6 h]; Foreman [6 h]; Excavator [56 h]; 6-way ducts, 50mm dia. HDPE [20]; Road crossing ducts (6-way) [2] | 3,015 | 3,015 | CO-R17.S13-TE-100 | 3 | 3 | PD | Ex | LM | DC | TE | DUCTS | CON | R17 | S13 | TE |
| CO-R17.S13-TE-110 |  | Pipes Laying Works for Ducts of Telecom Network-[Road 17]-[SW-13] | 7d | 2025-07-18 A | 2025-07-21 A | CO-R17.S13-TE-100, CO-R16.S11-TE-110 | 100% | 2026-08-01 | 2026-08-08 |  |  | Labor/Helper [112 h]; Skilled Labor/Surveyor [6 h]; Foreman [6 h]; Plumber [56 h]; Excavator [56 h]; JCB [28 h]; Truck [56 h]; 6-way ducts, 50mm dia. HDPE [119]; Road crossing ducts (6-way) [10] | 17,621 | 17,621 | CO-R17.S13-TE-110 | 3 | 3 | PD | PL | LM | DC | TE | DUCTS | CON | R17 | S13 | TE |
| CO-R17.S13-TE-120 |  | Pouring Plain Concrete Above Ducts of Telecom Network-[Road 17]-[SW-13] | 7d | 2025-07-22 A | 2025-07-22 A | CO-R17.S13-TE-110, CO-R16.S11-TE-120 | 100% | 2026-08-09 | 2026-08-16 |  |  | Skilled Labor/Surveyor [6 h]; Foreman [6 h]; Cons. Carpenter [112 h]; Block Mason [56 h]; 6-way ducts, 50mm dia. HDPE [20]; Road crossing ducts (6-way) [2] | 3,015 | 3,015 | CO-R17.S13-TE-120 | 3 | 3 | PD | PC | LM | DC | TE | DUCTS | CON | R17 | S13 | TE |
| CO-R17.S13-TE-130 |  | Trench Backfilling and Compaction Works for Ducts of Telecom Network-[Road 17]-[SW-13] | 7d | 2025-07-23 A | 2025-07-25 A | CO-R17.S13-TE-120, CO-R16.S11-TE-130 | 100% | 2026-08-17 | 2026-08-24 |  |  | Skilled Labor/Surveyor [6 h]; Foreman [6 h]; Excavator [56 h]; 6-way ducts, 50mm dia. HDPE [40]; Road crossing ducts (6-way) [3] | 5,862.5 | 5,862.5 | CO-R17.S13-TE-130 | 3 | 3 | PD | BF | LM | DC | TE | DUCTS | CON | R17 | S13 | TE |

| ID | WBS | Activity | Duration | Start | Finish | Predecessors | Complete | Planned start | Planned finish | Resources | Cost | Actual cost | Activity ID N | Seq | New Seq | 02- Network-WBS | 03- Activity | 04-UOM | 05-Discipline | 01- Network | 07-Weightage System | 08 Stage | 09 Roads | 10 side Walk | Discipline |
| --- | --- | --- | --- | --- | --- | --- | --- | --- | --- | --- | --- | --- | --- | --- | --- | --- | --- | --- | --- | --- | --- | --- | --- | --- | --- |
|  | MH | **Manholes Works** |  | 2025-07-19 | 2025-07-27 |  |  |  |  |  |  |  |  |  |  |  |  |  |  |  |  |  |  |  |  |
| CO-R17.S13-TE-140 |  | Excavation Works for Manholes of Telecom Network-[Road 17]-[SW-13] | 7d | 2025-07-19 A | 2025-07-22 A | CO-R16.S11-TE-140, CO-R17.S13-TE-100 | 100% | 2026-08-01 | 2026-08-08 | Skilled Labor/Surveyor [6 h]; Foreman [6 h]; Excavator [56 h]; Manhole Type 2 (2000x1000x1000) [0.2] | 628.46 | 628.46 | CO-R17.S13-TE-140 | 3 | 3 | MH | Ex | Each | MNH | TE | EXC | CON | R17 | S13 | TE |
| CO-R17.S13-TE-150 |  | Installation Works for Manholes of Telecom Network-[Road 17]-[SW-13] | 7d | 2025-07-23 A | 2025-07-24 A | CO-R17.S13-TE-140, CO-R16.S11-TE-150 | 100% | 2026-08-09 | 2026-08-16 | Skilled Labor/Surveyor [6 h]; Foreman [6 h]; Excavator [56 h]; Manhole Type 1 (2000x1000x1000) [1]; Manhole Type 2 (2000x1000x1000) [0.6] | 5,001.55 | 5,001.55 | CO-R17.S13-TE-150 | 3 | 3 | MH | HH | Each | MNH | TE | INSTALL-1 | CON | R17 | S13 | TE |
| CO-R17.S13-TE-160 |  | Backfilling Works for Manholes of Telecom Network-[Road 17]-[SW-13] | 7d | 2025-07-26 A | 2025-07-27 A | CO-R17.S13-TE-150, CO-R16.S11-TE-160 | 100% | 2026-08-17 | 2026-08-24 | Skilled Labor/Surveyor [6 h]; Foreman [6 h]; Excavator [56 h]; Manhole Type 2 (2000x1000x1000) [0.2] | 628.46 | 628.46 | CO-R17.S13-TE-160 | 3 | 3 | MH | BF | Each | MNH | TE | (New)-2 | CON | R17 | S13 | TE |
|  | MV | **Medium Voltage Network** |  | 2025-07-23 | 2026-07-13 |  |  |  |  |  |  |  |  |  |  |  |  |  |  |  |  |  |  |  |  |
|  | CW | **Cabling Works** |  | 2025-07-23 | 2025-07-26 |  |  |  |  |  |  |  |  |  |  |  |  |  |  |  |  |  |  |  |  |
| CO-R17.S13-MV-ML-310 |  | Trench Excavation and Bedding Works for Medium Voltage Network-[Road 17]-[SW-13] | 18d | 2025-07-23 A | 2025-07-25 A | ENG-SH-MV-A-110, CO-R17.S13-SD-170 SS+3d, CO-R17.S13-SD-170 FF+3d, CO-R17.S13-EW-110, CO-R17.S13-TE-130 SS+3d, CO-R17.S13-TE-130 FF+3d, CO-R16.S11-MV-ML-280, ENG-MS-MV-A-110, CO-R17.S14-SL-160 | 100% | 2026-09-15 | 2026-10-06 | Skilled Labor/Surveyor [15 h]; Foreman [15 h]; Excavator [144 h]; Excavation for Trench size 40cm wide and 80cm deep ( Maximum 1 cable 33kv) [177.46]; Excavation for Trench size 60cm wide and 80cm deep ( for Max two cables 33 kv) [10.1]; Excavation for Trench size 90cm wide and 80cm deep ( Maximum 3 cable 33kv) [44.98]; Excavation for Trench size 120cm wide and 80cm deep ( Maximum 4cable 33kv) [15.3]; Excavation for Trench size 150cm wide and 80cm deep ( Maximum 4cable 33kv) [56.6]; Duct bank for (2) 33 kv cables [6.12]; Duct bank for (4) 33 kv cables [40.39]; Duct bank for (6) 33 kv cables [18.36] | 20,639.76 | 20,639.76 | CO-R17.S13-MV-ML-310 | 3 | 3 | CW | Ex | LM | CW | MV | EXC | CON | R17 | S13 | MV |
| CO-R17.S13-MV-ML-320 |  | Cable Laying Works for Medium Voltage Network-[Road 17]-[SW-13] | 18d | 2025-07-23 A | 2025-07-25 A | CO-R17.S13-MV-ML-310 SS+3d, CO-R17.S13-MV-ML-310 FF+3d, CO-R16.S11-MV-ML-290, PRO-R17-MV-DL-100 FF+3d | 100% | 2026-09-19 | 2026-10-10 | Labor/Helper [576 h]; Electrician [576 h]; Low Current Technician [576 h]; 33kv 3Cx400 mmï¿½ Al XLPE / LLDPE /PVC Cable [835.3]; 33kv 3Cx400 mmï¿½ Al XLPE /LLDPE/PVC [2.8] | 111,564.74 | 111,564.74 | CO-R17.S13-MV-ML-320 | 3 | 3 | CW | CL | LM | CW | MV | LAY | CON | R17 | S13 | MV |
| CO-R17.S13-MV-ML-330 |  | Trench Backfilling and Compaction Works for Medium Voltage Network-[Road 17]-[SW-13] | 18d | 2025-07-24 A | 2025-07-26 A | CO-R17.S13-MV-ML-320 SS+3d, CO-R17.S13-MV-ML-320 FF+3d, CO-R16.S11-MV-ML-300 | 100% | 2026-09-22 | 2026-10-13 | Skilled Labor/Surveyor [15 h]; Foreman [15 h]; Excavator [144 h]; Water Tank [36 h]; 33kv 3Cx400 mmï¿½ Al XLPE / LLDPE /PVC Cable [357.99]; 33kv 3Cx400 mmï¿½ Al XLPE /LLDPE/PVC [1.2] | 47,813.46 | 47,813.46 | CO-R17.S13-MV-ML-330 | 3 | 3 | CW | BF | LM | CW | MV | BACK | CON | R17 | S13 | MV |
|  | SS | **RMU Works** |  | 2026-07-07 | 2026-07-13 |  |  |  |  |  |  |  |  |  |  |  |  |  |  |  |  |  |  |  |  |
| CO-R17.S13-MV-130 |  | Foundation Excavation Works for RMU of Medium Voltage Network-[Road 17]-[SW-13] | 6d | 2026-07-07 A | 2026-07-13 A | ENG-SH-MV-A-110, ENG-MS-MV-A-110, CO-R17.S13-EW-100, CO-R17.S13-EW-110 | 100% | 2025-04-05 | 2025-04-10 | Supply & installation of (33) kv MV Switch (RMU) for Normally-open Points (NOP) according to the Saudi Electric Company specification [0.1] | 8,025.7 | 8,025.7 | CO-R11.S08-MV-130 | 3 | 3 | RMU | Ex | Each | RMU | MV | EXC | CON | R17 | S13 | MV |
| CO-R17.S13-MV-150 |  | Installation Works for RMU Concrete Foundations of Medium Voltage Network-[Road 17]-[SW-13] | 8d | 2026-07-07 A | 2026-07-13 A | CO-R17.S13-MV-130, CO-R10.S03-ES-MV-150, PRO-R17-MV-DL-120, CO-R10.S03-WE-MV-150 | 100% | 2026-08-22 | 2026-08-30 | Supply & installation of (33) kv MV Switch (RMU) for Normally-open Points (NOP) according to the Saudi Electric Company specification [0.25] | 20,064.26 | 20,064.26 | CO-R11.S08-MV-150 | 3 | 3 | RMU | RMUF | Each | RMU | MV | INSTALL | CON | R17 | S13 | MV |
| CO-R17.S13-MV-170 |  | Installation Works for RMU of Medium Voltage Network-[Road 17]-[SW-13] | 5d | 2026-07-07 A | 2026-07-13 A | CO-R17.S13-MV-150, ENG-SH-MV-A-110, ENG-MS-MV-A-110, PRO-MV-LL-SH/DL-10, CO-R10.S03-ES-MV-170, PRO-R17-MV-LL-MSI-40, CO-R10.S03-WE-MV-170 | 100% | 2026-08-31 | 2026-09-05 | Supply & installation of (33) kv MV Switch (RMU) for Normally-open Points (NOP) according to the Saudi Electric Company specification [0.45] | 36,115.66 | 36,115.66 | CO-R11.S08-MV-170 | 3 | 3 | RMU | RMU | Each | RMU | MV | INS RMU | CON | R17 | S13 | MV |
| CO-R17.S13-MV-SS-150 |  | Termination Works for RMU of Medium Voltage Network-[Road 17]-[SW-13] | 5d | 2026-07-07 A | 2026-07-13 A | CO-R17.S13-MV-170 | 100% | 2026-09-06 | 2026-09-10 | Supply & installation of (33) kv MV Switch (RMU) for Normally-open Points (NOP) according to the Saudi Electric Company specification [0.1] | 8,025.7 | 8,025.7 | CO-R11.S08-MV-SS-150 | 3 | 3 |  |  |  |  | MV | TER RMU | CON | R17 | S13 | MV |
| CO-R17.S13-MV-SS-160 |  | Testing Works for RMU of Medium Voltage Network-[Road 17]-[SW-13] | 5d | 2026-07-07 A | 2026-07-13 A | CO-R17.S13-MV-SS-150 | 100% | 2026-09-12 | 2026-09-16 | Supply & installation of (33) kv MV Switch (RMU) for Normally-open Points (NOP) according to the Saudi Electric Company specification [0.1] | 8,025.7 | 8,025.7 | CO-R11.S08-MV-SS-160 | 3 | 3 |  |  |  |  | MV | BACK RM | CON | R17 | S13 | MV |
|  | RD | **Road Works** |  | 2025-06-22 | 2026-09-19 |  |  |  |  |  |  |  |  |  |  |  |  |  |  |  |  |  |  |  |  |
|  | RD | **Pre-Bituminous Construction** |  | 2025-06-22 | 2025-09-14 |  |  |  |  |  |  |  |  |  |  |  |  |  |  |  |  |  |  |  |  |
| CO-R17.S13-RD-P-100 |  | Capping and Subgrade Layer for Road Works-[Road 17]-[SW-13] | 15d | 2025-06-22 A | 2025-07-05 A | ENG-SH-RD-A-100, CO-R17.S13-SD-130, CO-R17.S13-SW-130, ENG-MS-RD-A-10, CO-R17.S13-TE-130, CO-R17.S13-TE-160, CO-R17.S13-MV-ML-330 SS+3d, CO-R17.S13-MV-ML-330 FF+3d | 100% | 2026-09-30 | 2026-10-17 | Labor/Helper [240 h]; Skilled Labor/Surveyor [120 h]; Loader [120 h]; Grader [120 h]; Road Roller [120 h]; Water Tank [120 h]; 300mm capping layer underneath subgrade , CBR?15% [1509.36]; 300mm thick Subgrade, including subgrade preparation, CBR?25% [1509.36] | 117,126.34 | 117,126.34 | CO-R17.S13-RD-P-100 | 3 | 3 | AB | SG | Sq.m | BS | RD |  | CON | R17 | S13 | RD |
| CO-R17.S13-RD-P-110 |  | Aggregate Base Course Layer for Road Works-[Road 17]-[SW-13] | 12d | 2025-09-13 A | 2025-09-14 A | CO-R17.S13-RD-P-100 SS+3d, CO-R17.S13-RD-P-100 FF+3d, CO-R17.S13-SD-170 SS+3d, CO-R17.S13-SD-170 FF+3d, CO-R16.S11-RD-P-110 | 100% | 2026-11-08 | 2026-11-21 | Labor/Helper [288 h]; Skilled Labor/Surveyor [144 h]; Foreman [144 h]; Loader [144 h]; Grader [144 h]; Road Roller [144 h]; Aggregate base course 200mm thick after compaction in two layers(Grading 1); CBR?80%; including watering, compaction and testing [1006.34] | 81,583.98 | 81,583.98 | CO-R17.S13-RD-P-110 | 3 | 3 | AB | BA | Sq.m | BS | RD |  | CON | R17 | S13 | RD |
|  | LS | **Pavement Works** |  | 2026-08-25 | 2026-09-19 |  |  |  |  |  |  |  |  |  |  |  |  |  |  |  |  |  |  |  |  |
| CO-R17.S13-RD-P-120 |  | Fixing of Curbstone for Sidewalks Pavement-[Road 17]-[SW-13] | 12d | 2026-08-25 A | 2026-08-31 A | CO-R16.S11-RD-P-120, CO-R17.S13-RD-P-110 SS+3d, CO-R17.S13-RD-P-110 FF+3d | 100% | 2026-11-11 | 2026-11-24 | Labor/Helper [288 h]; Block Mason [864 h]; Precast Concrete Kerb, Type K1 [556.87]; Precast Concrete Kerb, Type L1 [1104.89] | 66,802.75 | 66,802.75 | CO-R17.S13-RD-P-120 | 3 | 3 | LS | CR | LM | LAND | RD |  | CON | R17 | S13 | RD |
| CO-R17.S13-RD-P-130 |  | Fixing of Interlock Tiles for Sidewalks Pavement-[Road 17]-[SW-13] | 10d | 2026-09-12 A | 2026-09-19 A | CO-R17.S13-RD-P-120 SS+3d, CO-R17.S13-RD-P-120 FF+3d | 100% | 2026-11-19 | 2026-11-30 | Labor/Helper [288 h]; Block Mason [864 h]; Interlocking block pavers for sidewalk/footpath 60mm thick on and including 30mm Sand Bedding, 200mm Aggregate subbase, all in accordance with authority standards and complete as per specifications [994.41]; Extraover for Pedestrian ramps [2] | 47,515.53 | 47,515.53 | CO-R17.S13-RD-P-130 | 3 | 3 | LS | IL | Sq.m | LAND | RD |  | CON | R17 | S13 | RD |
|  | SW_16 | **SW_14** |  | 2025-03-04 | 2026-11-30 |  |  |  |  |  |  |  |  |  |  |  |  |  |  |  |  |  |  |  |  |
|  | EW | **Earthworks** |  | 2025-03-04 | 2025-03-27 |  |  |  |  |  |  |  |  |  |  |  |  |  |  |  |  |  |  |  |  |
|  | EW | **Earthworks** |  | 2025-03-04 | 2025-03-27 |  |  |  |  |  |  |  |  |  |  |  |  |  |  |  |  |  |  |  |  |
| CO-R17.S14-EW-100 |  | Roadway Excavation Works Upto Design Level for Earthworks-[Road 17]-[SW-14] | 10d | 2025-03-04 A | 2025-03-15 A | ENG-MS-RD-A-10, ENG-SH-RD-A-100, CO-R17.S13-EW-100 | 100% | 2025-03-17 | 2025-03-27 | Labor/Helper [192 h]; Skilled Labor/Surveyor [24 h]; Foreman [24 h]; Dump Truck [192 h]; Water Tank [192 h]; Dozer [192 h]; Roadway Excavation for cuttings; on any type of material for all depths including trimming and Preparation of excavated surfaces and disposal. [7106.31] | 44,769.75 | 44,769.75 | CO-R17.S14-EW-100 | 4 | 4 | EW | Ex | Cub.m | EW | EW |  | CON | R17 | S14 | EW |
| CO-R17.S14-EW-110 |  | Embankments Works Upto Design Level for Earthworks-[Road 17]-[SW-14] | 12d | 2025-03-16 A | 2025-03-27 A | ENG-MS-RD-A-10, ENG-SH-RD-A-100, CO-R17.S14-EW-100 | 100% | 2025-03-29 | 2025-04-15 | Labor/Helper [600 h]; Skilled Labor/Surveyor [75 h]; Foreman [75 h]; Dump Truck [600 h]; Water Tank [600 h]; Dozer [600 h]; Embankments to the ROW, with suitable material other than top soil or rock according to specifications [11962.6] | 96,897.3 | 96,897.3 | CO-R17.S14-EW-110 | 4 | 4 | EW | BF | Cub.m | EW | EW |  | CON | R17 | S14 | EW |

| ID | WBS | Activity | Duration | Start | Finish | Predecessors | Complete | Planned start | Planned finish | Resources | Cost | Actual cost | Activity ID N | Seq | New Seq | 02- Network-WBS | 03- Activity | 04-UOM | 05-Discipline | 01- Network | 07-Weightage System | 08 Stage | 09 Roads | 10 side Walk | Discipline |
| --- | --- | --- | --- | --- | --- | --- | --- | --- | --- | --- | --- | --- | --- | --- | --- | --- | --- | --- | --- | --- | --- | --- | --- | --- | --- |
|  | SW | **Sewage Network** |  | 2025-05-23 | 2025-07-05 |  |  |  |  |  |  |  |  |  |  |  |  |  |  |  |  |  |  |  |  |
|  | ML | **Main Line Sections** |  | 2025-05-23 | 2025-07-05 |  |  |  |  |  |  |  |  |  |  |  |  |  |  |  |  |  |  |  |  |
| CO-R17.S14-SW-100 |  | Trench Excavation and Bedding Works for Main Lines of Sewage Network-[Road 17]-[SW-14] | 12d | 2025-05-23 A | 2025-05-25 A | CO-R17.S14-EW-110, ENG-MS-SW-ML-A-110, ENG-SH-SW-ML-A-110, CO-R17.S13-SW-100 | 100% | 2025-04-23 | 2025-05-06 | Labor/Helper [96 h]; Foreman [96 h]; Excavator [96 h]; Nominal bore : 160mm; Depth : 0.0m - 1.5m [3.8]; Nominal bore : 160mm; Depth : 1.5m - 2.5m [17]; Nominal bore : 200mm; Depth : 0.0m - 1.5m [2.49]; Nominal bore : 200mm; Depth : 1.5m - 2.5m [4.59]; Nominal bore : 200mm; Depth : 2.5m - 3.5m [11.34]; Nominal bore : 200mm; Depth : 3.5m - 4.5m [8.46]; Nominal bore : 200mm; Depth : 4.5m -5.5m [4.28]; Nominal bore : 200mm; Depth : 5.5m - 6.5m [5.51] | 15,189.6 | 15,189.6 | CO-R17.S14-SW-100 | 4 | 4 | ML | Ex | LM | ML | SW | EX | CON | R17 | S14 | SW |
| CO-R17.S14-SW-120 |  | Pipes Laying Works for Main Lines of Sewage Network-[Road 17]-[SW-14] | 12d | 2025-05-26 A | 2025-06-12 A | PRO-R17-SW-DL-100 FF+3d, CO-R17.S14-SW-100 | 100% | 2025-05-07 | 2025-05-20 | Labor/Helper [192 h]; Skilled Labor/Surveyor [10 h]; Foreman [10 h]; Plumber [96 h]; Excavator [96 h]; Nominal bore : 160mm; Depth : 0.0m - 1.5m [11.4]; Nominal bore : 160mm; Depth : 1.5m - 2.5m [51]; Nominal bore : 200mm; Depth : 0.0m - 1.5m [7.46]; Nominal bore : 200mm; Depth : 1.5m - 2.5m [13.77]; Nominal bore : 200mm; Depth : 2.5m - 3.5m [34.03]; Nominal bore : 200mm; Depth : 3.5m - 4.5m [25.39]; Nominal bore : 200mm; Depth : 4.5m -5.5m [12.85]; Nominal bore : 200mm; Depth : 5.5m - 6.5m [16.52] | 45,568.81 | 45,568.81 | CO-R17.S14-SW-120 | 4 | 4 | ML | PL | LM | ML | SW | PIPE | CON | R17 | S14 | SW |
| CO-R17.S14-SW-130 |  | Trench Backfilling and Compaction Works for Main Lines of Sewage Network-[Road 17]-[SW-14] | 10d | 2025-06-22 A | 2025-07-05 A | CO-R17.S14-SW-120, CO-R17.S13-SW-130 | 100% | 2025-06-15 | 2025-06-25 | Skilled Labor/Surveyor [10 h]; Foreman [10 h]; Excavator [96 h]; Nominal bore : 160mm; Depth : 0.0m - 1.5m [1.9]; Nominal bore : 160mm; Depth : 1.5m - 2.5m [8.5]; Nominal bore : 200mm; Depth : 0.0m - 1.5m [1.24]; Nominal bore : 200mm; Depth : 1.5m - 2.5m [2.29]; Nominal bore : 200mm; Depth : 2.5m - 3.5m [5.67]; Nominal bore : 200mm; Depth : 3.5m - 4.5m [4.23]; Nominal bore : 200mm; Depth : 4.5m -5.5m [2.14]; Nominal bore : 200mm; Depth : 5.5m - 6.5m [2.75] | 7,594.8 | 7,594.8 | CO-R17.S14-SW-130 | 4 | 4 | ML | BF | LM | ML | SW | BACK | CON | R17 | S14 | SW |
|  | 1 | **Manholes** |  | 2025-06-13 | 2025-06-28 |  |  |  |  |  |  |  |  |  |  |  |  |  |  |  |  |  |  |  |  |
| CO-R17.S14-SW-160 |  | Excavation Works for Main Line Manholes of Sewage Network-[Road 17]-[SW-14] | 1d | 2025-06-13 A | 2025-06-13 A | CO-R17.S14-SW-120 SS | 100% | 2025-05-07 | 2025-05-07 | Labor/Helper [16 h]; Skilled Labor/Surveyor [8 h]; Excavator [16 h]; Depth: not exceeding 1.5m [0.15]; Depth: 1.5 - 2.5m [0.3]; Depth: 2.5 - 3.5m [0.15] | 4,552.85 | 4,552.85 | CO-R17.S14-SW-160 | 4 | 4 |  |  |  |  | SW | EX | CON | R17 | S14 | SW |
| CO-R17.S14-SW-170 |  | Installation RC Footing Works for Main Line Manholes of Sewage Network-[Road 17]-[SW-14] | 2d | 2025-06-14 A | 2025-06-15 A | CO-R17.S14-SW-160, PRO-R17-SW-DL-110 FF+3d | 100% | 2025-05-08 | 2025-05-10 | Cons. Carpenter [64 h]; Steel Fixer [64 h]; Depth: not exceeding 1.5m [0.1]; Depth: 1.5 - 2.5m [0.2]; Depth: 2.5 - 3.5m [0.1] | 3,035.23 | 3,035.23 | CO-R17.S14-SW-170 | 4 | 4 |  |  |  |  | SW | RC F | CON | R17 | S14 | SW |
| CO-R17.S14-SW-180 |  | Install Grp Liner Wall Works for Main Line Manholes of Sewage Network-[Road 17]-[SW-14] | 4d | 2025-06-16 A | 2025-06-20 A | CO-R17.S14-SW-170 | 100% | 2025-05-11 | 2025-05-14 | Labor/Helper [64 h]; Plumber [64 h]; Depth: not exceeding 1.5m [0.4]; Depth: 1.5 - 2.5m [0.8]; Depth: 2.5 - 3.5m [0.4] | 12,140.94 | 12,140.94 | CO-R17.S14-SW-180 | 4 | 4 |  |  |  |  | SW | LP | CON | R17 | S14 | SW |
| CO-R17.S14-SW-190 |  | Pouring Grp Liner Wall Works for Main Line Manholes of Sewage Network-[Road 17]-[SW-14] | 1d | 2025-06-21 A | 2025-06-21 A | CO-R17.S14-SW-180 | 100% | 2025-05-15 | 2025-05-15 | Cons. Carpenter [32 h]; Steel Fixer [32 h]; Depth: not exceeding 1.5m [0.05]; Depth: 1.5 - 2.5m [0.1]; Depth: 2.5 - 3.5m [0.05] | 1,517.62 | 1,517.62 | CO-R17.S14-SW-190 | 4 | 4 |  |  |  |  | SW | (New) | CON | R17 | S14 | SW |
| CO-R17.S14-SW-200 |  | Backfilling Works for Main Line Manholes of Sewage Network-[Road 17]-[SW-14] | 4d | 2025-06-22 A | 2025-06-28 A | CO-R17.S14-SW-190 | 100% | 2025-05-17 | 2025-05-20 | Labor/Helper [64 h]; Skilled Labor/Surveyor [32 h]; Excavator [64 h]; Depth: not exceeding 1.5m [0.15]; Depth: 1.5 - 2.5m [0.3]; Depth: 2.5 - 3.5m [0.15] | 4,552.85 | 4,552.85 | CO-R17.S14-SW-200 | 4 | 4 |  |  |  |  | SW | BACK | CON | R17 | S14 | SW |
| CO-R17.S14-SW-210 |  | Testing Works for Main Line Manholes of Sewage Network-[Road 17]-[SW-14] | 1d | 2025-06-22 A | 2025-06-28 A | CO-R17.S14-SW-200 | 100% | 2026-10-13 | 2026-10-13 | Labor/Helper [16 h]; Plumber [16 h]; Depth: not exceeding 1.5m [0.05]; Depth: 1.5 - 2.5m [0.1]; Depth: 2.5 - 3.5m [0.05] | 1,517.62 | 1,517.62 | CO-R17.S14-SW-210 | 4 | 4 |  |  |  |  | SW | T&COV | CON | R17 | S14 | SW |
|  | SD | **Storm Drainage Network** |  | 2025-06-23 | 2026-07-13 |  |  |  |  |  |  |  |  |  |  |  |  |  |  |  |  |  |  |  |  |
|  | ML | **Main Line Sections** |  | 2025-06-23 | 2025-07-10 |  |  |  |  |  |  |  |  |  |  |  |  |  |  |  |  |  |  |  |  |
| CO-R17.S14-SD-100 |  | Trench Excavation and Bedding Works for Main Lines of Storm Drainage Network-[Road 17]-[SW-14] | 10d | 2025-06-23 A | 2025-07-06 A | CO-R17.S14-EW-110, CO-R17.S14-EW-100, CO-R17.S14-SW-130 SS+3d, CO-R17.S14-SW-130 FF+3d | 100% | 2025-06-18 | 2025-06-29 | Skilled Labor/Surveyor [12 h]; Foreman [12 h]; Excavator [112 h]; Pipe with diameter 400mm ; depth: 0.0m - 1.5m [29.7]; Pipe with diameter 400mm ; depth: 1.51m - 2.5m [44.88]; Pipe with diameter 500mm ; depth: 1.51m - 2.5m [76.59]; Pipe with diameter 600mm ; depth: 1.51m - 2.5m [8.74]; Pipe with diameter 700mm ; depth: 1.51m - 2.5m [19.05]; Pipe with diameter 800mm ; depth: 1.51m - 2.5m [16.63]; Pipe with diameter 900mm ; depth: 1.51m - 2.5m [4.57] | 70,395.68 | 70,395.68 | CO-R17.S14-SD-100 | 4 | 4 | ML | Ex | LM | ML | SD | EX | CON | R17 | S14 | SD |
| CO-R17.S14-SD-120 |  | Pipes Laying Works for Main Lines of Storm Drainage Network-[Road 17]-[SW-14] | 20d | 2025-07-07 A | 2025-07-10 A | PRO-R17-SD-DL-120 FF+3d, CO-R17.S14-SD-100 | 100% | 2025-06-30 | 2025-07-22 | Labor/Helper [320 h]; Skilled Labor/Surveyor [16 h]; Foreman [16 h]; Plumber [160 h]; Excavator [160 h]; Pipe with diameter 400mm ; depth: 0.0m - 1.5m [89.09]; Pipe with diameter 400mm ; depth: 1.51m - 2.5m [134.65]; Pipe with diameter 500mm ; depth: 1.51m - 2.5m [229.78]; Pipe with diameter 600mm ; depth: 1.51m - 2.5m [26.23]; Pipe with diameter 700mm ; depth: 1.51m - 2.5m [57.16]; Pipe with diameter 800mm ; depth: 1.51m - 2.5m [49.9]; Pipe with diameter 900mm ; depth: 1.51m - 2.5m [13.71] | 211,187.03 | 211,187.03 | CO-R17.S14-SD-120 | 4 | 4 | ML | PL | LM | ML | SD | PIPE | CON | R17 | S14 | SD |
| CO-R17.S14-SD-130 |  | Trench Backfilling and Compaction Works for Main Lines of Storm Drainage Network-[Road 17]-[SW-14] | 20d | 2025-07-08 A | 2025-07-10 A | CO-R17.S14-SD-120 SS+3d, CO-R17.S14-SD-120 FF+3d, CO-R16.S12-SD-130, CO-R17.S14-SD-120, CO-R17.S14-SD-220 FF | 100% | 2026-03-15 | 2026-04-09 | Skilled Labor/Surveyor [16 h]; Foreman [16 h]; Excavator [160 h]; Pipe with diameter 400mm ; depth: 0.0m - 1.5m [14.85]; Pipe with diameter 400mm ; depth: 1.51m - 2.5m [22.44]; Pipe with diameter 500mm ; depth: 1.51m - 2.5m [38.3]; Pipe with diameter 600mm ; depth: 1.51m - 2.5m [4.37]; Pipe with diameter 700mm ; depth: 1.51m - 2.5m [9.53]; Pipe with diameter 800mm ; depth: 1.51m - 2.5m [8.32]; Pipe with diameter 900mm ; depth: 1.51m - 2.5m [2.29] | 35,197.84 | 35,197.84 | CO-R17.S14-SD-130 | 4 | 4 | ML | BF | LM | ML | SD | BACK | CON | R17 | S14 | SD |
|  | MH | **Manholes** |  | 2025-07-08 | 2026-07-13 |  |  |  |  |  |  |  |  |  |  |  |  |  |  |  |  |  |  |  |  |
| CO-R17.S14-SD-180 |  | Trench Excavation and Bedding Works for Manholes of Storm Drainage Network-[Road 17]-[SW-14] | 1d | 2025-07-08 A | 2025-07-11 A | CO-R17.S14-SD-120 SS, PRO-SD-1DL-100 | 100% | 2025-06-30 | 2025-06-30 | Labor/Helper [24 h]; Skilled Labor/Surveyor [12 h]; Excavator [24 h]; MH ; depth: 0.0m - 1.5m [0.15]; MH ; depth: 1.51m - 2.5m [0.3]; MH ; depth: 1.51m - 2.5m [0.15] | 8,506.72 | 8,506.72 | CO-R17.S14-SD-180 | 4 | 4 |  |  |  |  | SD | EX | CON | R17 | S14 | SD |
| CO-R17.S14-SD-190 |  | Install RC Footing Works for Manholes of Storm Drainage Network-[Road 17]-[SW-14] | 1d | 2025-07-12 A | 2025-07-12 A | CO-R17.S14-SD-180 | 100% | 2025-07-01 | 2025-07-01 | Cons. Carpenter [48 h]; Steel Fixer [48 h]; MH ; depth: 0.0m - 1.5m [0.05]; MH ; depth: 1.51m - 2.5m [0.1]; MH ; depth: 1.51m - 2.5m [0.05] | 2,835.57 | 2,835.57 | CO-R17.S14-SD-190 | 4 | 4 |  |  |  |  | SD | RC F | CON | R17 | S14 | SD |
| CO-R17.S14-SD-200 |  | Install RC Wall Rings & Slab Works for Manholes of Storm Drainage Network-[Road 17]-[SW-14] | 4d | 2025-07-13 A | 2025-07-14 A | CO-R17.S14-SD-190 | 100% | 2025-07-02 | 2025-07-06 | Cons. Carpenter [192 h]; Steel Fixer [192 h]; MH ; depth: 0.0m - 1.5m [0.45]; MH ; depth: 1.51m - 2.5m [0.9]; MH ; depth: 1.51m - 2.5m [0.45] | 25,520.17 | 25,520.17 | CO-R17.S14-SD-200 | 4 | 4 |  |  |  |  | SD | RC W | CON | R17 | S14 | SD |
| CO-R17.S14-SD-220 |  | Backfilling Works for Manholes of Storm Drainage Network-[Road 17]-[SW-14] | 7d | 2025-07-15 A | 2025-07-15 A | CO-R17.S14-SD-210 | 100% | 2025-07-08 | 2025-07-15 | Labor/Helper [168 h]; Skilled Labor/Surveyor [84 h]; Excavator [168 h]; MH ; depth: 0.0m - 1.5m [0.2]; MH ; depth: 1.51m - 2.5m [0.4]; MH ; depth: 1.51m - 2.5m [0.2] | 11,342.3 | 11,342.3 | CO-R17.S14-SD-220 | 4 | 4 |  |  |  |  | SD | BACK | CON | R17 | S14 | SD |
| CO-R17.S14-SD-210 |  | Testing Works for Manholes of Storm Drainage Network-[Road 17]-[SW-14] | 1d | 2026-06-04 A | 2026-07-13 A | CO-R17.S14-SD-200 | 100% | 2025-07-07 | 2025-07-07 | Labor/Helper [24 h]; Plumber [24 h]; MH ; depth: 0.0m - 1.5m [0.1]; MH ; depth: 1.51m - 2.5m [0.2]; MH ; depth: 1.51m - 2.5m [0.1] | 5,671.15 | 5,671.15 | CO-R17.S14-SD-210 | 4 | 4 |  |  |  |  | SD | T&COV | CON | R17 | S14 | SD |
|  | CB | **Catch Basin Sections** |  | 2025-07-16 | 2026-07-13 |  |  |  |  |  |  |  |  |  |  |  |  |  |  |  |  |  |  |  |  |
| CO-R17.S14-SD-140 |  | Trench Excavation and Bedding Works for Catch Basins of Storm Drainage Network-[Road 17]-[SW-14] | 6d | 2025-07-16 A | 2025-07-16 A | CO-R17.S14-EW-110, CO-R17.S14-SD-220 | 100% | 2025-07-16 | 2025-07-22 | Skilled Labor/Surveyor [5 h]; Foreman [5 h]; Excavator [48 h]; Pipe with diameter 300mm ; depth: 0 - 1.5m [37.63]; Pipe with diameter 400mm ; depth: 0 - 1.5m [2.29] | 9,280.57 | 9,280.57 | CO-R17.S14-SD-140 | 4 | 4 | CB | Ex | Each | CB | SD | EX | CON | R17 | S14 | SD |
| CO-R17.S14-SD-150 |  | Installation and Pipes Laying Connection Works for Catch Basins of Storm Drainage Network-[Road 17]-[SW-14] | 7d | 2025-07-17 A | 2025-07-17 A | CO-R17.S14-SD-140, PRO-R17-SD-DL-130 FF+3d, CO-R17.S13-SD-150 | 100% | 2025-07-23 | 2025-07-30 | Labor/Helper [224 h]; Skilled Labor/Surveyor [12 h]; Foreman [12 h]; Excavator [112 h]; Pipe with diameter 300mm ; depth: 0 - 1.5m [112.91]; Pipe with diameter 400mm ; depth: 0 - 1.5m [6.88] | 27,841.72 | 27,841.72 | CO-R17.S14-SD-150 | 4 | 4 | CB | CB | Each | CB | SD | INSTALL | CON | R17 | S14 | SD |
| CO-R17.S14-SD-170 |  | Trench Backfilling and Compaction Works for Catch Basins of Storm Drainage Network-[Road 17]-[SW-14] | 7d | 2025-07-18 A | 2025-07-18 A | CO-R17.S14-SD-160 | 100% | 2025-08-05 | 2025-08-12 | Skilled Labor/Surveyor [6 h]; Foreman [6 h]; Excavator [56 h]; Pipe with diameter 300mm ; depth: 0 - 1.5m [50.18]; Pipe with diameter 400mm ; depth: 0 - 1.5m [3.06] | 12,374.1 | 12,374.1 | CO-R17.S14-SD-170 | 4 | 4 | CB | BF | Each | CB | SD | BACK | CON | R17 | S14 | SD |
| CO-R17.S14-SD-160 |  | Testing Works for Catch Basins of Storm Drainage Network-[Road 17]-[SW-14] | 4d | 2026-06-04 A | 2026-07-13 A | CO-R17.S14-SD-150, CO-R17.S14-SD-120, PRO-R17-SD-DL-110 FF+3d | 100% | 2025-07-31 | 2025-08-04 | Labor/Helper [64 h]; Skilled Labor/Surveyor [4 h]; Foreman [4 h]; Plumber [32 h]; Excavator [32 h]; Pipe with diameter 300mm ; depth: 0 - 1.5m [25.09]; Pipe with diameter 400mm ; depth: 0 - 1.5m [1.53] | 6,187.05 | 6,187.05 | CO-R17.S14-SD-160 | 4 | 4 | CB | PL | Each | CB | SD | TEST | CON | R17 | S14 | SD |

| ID | WBS | Activity | Duration | Start | Finish | Predecessors | Complete | Planned start | Planned finish | Total float | Free float | Resources | Cost | Actual cost | Activity ID N | Seq | New Seq | 02- Network-WBS | 03- Activity | 04-UOM | 05-Discipline | 01- Network | 07-Weightage System | 08 Stage | 09 Roads | 10 side Walk | Discipline |
| --- | --- | --- | --- | --- | --- | --- | --- | --- | --- | --- | --- | --- | --- | --- | --- | --- | --- | --- | --- | --- | --- | --- | --- | --- | --- | --- | --- |
|  | SL | **Street Lighting Network** |  | 2025-07-08 | 2026-11-29 |  |  |  |  |  |  |  |  |  |  |  |  |  |  |  |  |  |  |  |  |  |  |
|  | LP | **Lighting Poles Works** |  | 2025-07-08 | 2026-11-29 |  |  |  |  |  |  |  |  |  |  |  |  |  |  |  |  |  |  |  |  |  |  |
| CO-R17.S14-SL-100 |  | Foundation Excavation Works for Lighting Poles of Street Lighting Network-[Road 17]-[SW-14] | 12d | 2025-07-08 A | 2025-07-11 A | CO-R17.S13-IR-100 SS+3d, CO-R17.S13-IR-130, CO-R17.S14-EW-100, CO-R17.S14-EW-110, ENG-MS-SL-A-110, ENG-SH-SL-A-110, PRO-SL-1DL-110 | 100% | 2025-09-15 | 2025-09-29 |  |  | Lighting poles with one arm, including the power distribution box, screws, cables, 12 meters in height. [2.25] | 4,282.81 | 4,282.81 | CO-R11.S07-SL-100 | 4 | 4 | LP | Ex | Each | POL | SL | EX | CON | R17 | S14 | SL |
| CO-R17.S14-SL-110 |  | Installation Works for Lighting Poles Foundation of Street Lighting Network-[Road 17]-[SW-14] | 12d | 2025-07-12 A | 2025-07-14 A | CO-R17.S14-SL-100, PRO-R17-SL-DL-110 FF+3d | 100% | 2025-09-30 | 2025-10-13 |  |  | Reinforced concrete foundation, for 12m high lighting columns With Drawpits [45] | 16,371.45 | 16,371.45 | CO-R11.S07-SL-110 | 4 | 4 | LP | LPF | Each | POL | SL | INSTALL | CON | R17 | S14 | SL |
| CO-R17.S14-SL-120 |  | Installation Works for Lighting Poles of Street Lighting Network-[Road 17]-[SW-14] | 17.5d | 2025-09-11 A | 2025-09-11 A | CO-R17.S14-SL-110, CO-R17.S14-SL-160, PRO-R17-SL-DL-120 FF+3d | 100% | 2025-11-18 | 2025-12-08 |  |  | Lighting poles with one arm, including the power distribution box, screws, cables, 12 meters in height. [24.75] | 47,110.88 | 47,110.88 | CO-R11.S07-SL-120 | 4 | 4 | LP | LP | Each | POL | SL | POLES | CON | R17 | S14 | SL |
| CO-R17.S14-SL-210 |  | Backfilling Works for Lighting Poles of Street Lighting Network-[Road 17]-[SW-14] | 12d | 2025-09-11 A | 2025-09-11 A | CO-R17.S14-SL-120 SS, CO-R17.S14-SL-120 FF, CO-R18.S16-SL-210 | 100% | 2025-11-24 | 2025-12-08 |  |  | Lighting poles with one arm, including the power distribution box, screws, cables, 12 meters in height. [9] | 17,131.23 | 17,131.23 | CO-R11.S07-SL-210 | 4 | 4 |  |  |  |  | SL | BACK | CON | R17 | S14 | SL |
| CO-R17.S14-SL-200 |  | Testing Works for Lighting Poles of Street Lighting Network-[Road 17]-[SW-14] | 5d | 2026-10-27 | 2026-11-01 | CO-R17.S14-SL-210, CO-R17.S14-SL-120 |  |  |  | -50d | 24d | Lighting poles with one arm, including the power distribution box, screws, cables, 12 meters in height. [9] | 17,131.23 |  | CO-R11.S07-SL-200 | 4 | 4 |  |  |  |  | SL | TESTING | CON | R17 | S14 | SL |
| CO-R17.S14-SL-130 |  | Installation Works for Lighting Fixtures With Drop Wire of Street Lighting Network-[Road 17]-[SW-14] | 18d | 2026-11-09 | 2026-11-29 | CO-R17.S14-SL-120 SS+5d, CO-R17.S14-SL-120 FF+5d, CO-R17.S14-SL-200 FF, PRO-R17-SL-DL-140 FF+3d |  |  |  | -74d | 65d | Street Lighting( LED) Luminaire,(Type C) complete with control gear and lamp, ?.17000 Lumen [45] | 26,954.1 |  | CO-R11.S07-SL-130 | 4 | 4 | LP | LPA | Each | POL | SL | INSTALL | CON | R17 | S14 | SL |
|  | CW | **Cabling Works** |  | 2025-07-15 | 2025-07-20 |  |  |  |  |  |  |  |  |  |  |  |  |  |  |  |  |  |  |  |  |  |  |
| CO-R17.S14-SL-140 |  | Trench Excavation and Bedding Works for Street Lighting Network-[Road 17]-[SW-14] | 10d | 2025-07-15 A | 2025-07-16 A | CO-R17.S14-SL-110 | 100% | 2025-10-14 | 2025-10-25 |  |  |  |  |  | CO-R11.S07-SL-140 | 4 | 4 | CW | Ex | LM | CB | SL | EXC | CON | R17 | S14 | SL |
| CO-R17.S14-SL-150 |  | Cable Laying Works for Street Lighting Network-[Road 17]-[SW-14] | 10d | 2025-07-17 A | 2025-07-18 A | CO-R17.S14-SL-140, PRO-R17-SL-DL-100 FF+3d | 100% | 2025-10-26 | 2025-11-05 |  |  | Supply, installation , test and operation of cables, Copper, (4Cx25mmï¿½,Cu/XLPE/SWA/PVC +1x16mmï¿½ PVC/PVC) [1706.25] | 80,023.12 | 80,023.12 | CO-R11.S07-SL-150 | 4 | 4 | CW | CL | LM | CB | SL | LAYING | CON | R17 | S14 | SL |
| CO-R17.S14-SL-160 |  | Trench Backfilling and Compaction Works for Street Lighting Network-[Road 17]-[SW-14] | 10d | 2025-07-19 A | 2025-07-20 A | CO-R17.S14-SL-150 | 100% | 2025-11-06 | 2025-11-17 |  |  | Supply, installation , test and operation of cables, Copper, (4Cx25mmï¿½,Cu/XLPE/SWA/PVC +1x16mmï¿½ PVC/PVC) [131.25] | 6,155.62 | 6,155.62 | CO-R11.S07-SL-160 | 4 | 4 | CW | BF | LM | CB | SL | BACK | CON | R17 | S14 | SL |
|  | DPB | **Distrubution Panel Boards** |  | 2026-10-27 | 2026-11-23 |  |  |  |  |  |  |  |  |  |  |  |  |  |  |  |  |  |  |  |  |  |  |
| CO-R17.S14-SL-170 |  | Foundation Excavation Works For Panel Boards of Street Lighting Network-[Road 17]-[SW-14] | 18d | 2026-10-27 | 2026-11-16 | CO-R17.S14-EW-110, ENG-MS-SL-A-110, ENG-SH-SL-A-110 |  |  |  | -47d | 0d |  |  |  | CO-R11.S07-SL-170 | 4 | 4 | DB | Ex | Each | DS | SL | EXC | CON | R17 | S14 | SL |
| CO-R17.S14-SL-180 |  | Installation Works for Panel Board Concrete Foundations of Street Lighting Network-[Road 17]-[SW-14] | 18d | 2026-10-31 | 2026-11-19 | CO-R17.S14-SL-170 SS+3d, CO-R17.S14-SL-170 FF+3d |  |  |  | -47d | 0d |  |  |  | CO-R11.S07-SL-180 | 4 | 4 | DB | PBF | Each | DS | SL | INSTALL | CON | R17 | S14 | SL |
| CO-R17.S14-SL-220 |  | A wall of concrete blocks to install the KWH meter of Street Lighting Network-[Road 17]-[SW-14] | 18d | 2026-10-31 | 2026-11-19 | CO-R17.S14-SL-180 SS, CO-R17.S14-SL-180 FF |  |  |  | -44d | 168d | Road crossing ducts, 4 way (4 x 100mm PVC) [98]; Drawpit with medium duty steel cover, size 900x900x1200mm, Type 4 [6] | 27,573.18 |  | CO-R11.S07-SL-220 | 4 | 4 | DB |  | Each | DS | SL | wall | CON | R17 | S14 | SL |
| CO-R17.S14-SL-190 |  | Installation Works for Lighting Panel Boards of Street Lighting Network-[Road 17]-[SW-14] | 18d | 2026-11-03 | 2026-11-23 | CO-R17.S14-SL-180 SS+3d, CO-R17.S14-SL-180 FF+3d |  |  |  | -47d | 165d |  |  |  | CO-R11.S07-SL-190 | 4 | 4 | DB | PB | Each | DS | SL | INST BO | CON | R17 | S14 | SL |
|  | PW | **Potable Water Network** |  | 2025-07-11 | 2026-11-30 |  |  |  |  |  |  |  |  |  |  |  |  |  |  |  |  |  |  |  |  |  |  |
|  | ML | **Main Line Sections** |  | 2025-07-11 | 2025-07-17 |  |  |  |  |  |  |  |  |  |  |  |  |  |  |  |  |  |  |  |  |  |  |
| CO-R17.S14-PW-100 |  | Trench Excavation and Bedding Works for Main Lines of Potable Water Network-[Road 17]-[SW-14] | 6d | 2025-07-11 A | 2025-07-12 A | CO-R17.S14-EW-110, CO-R17.S14-EW-100, CO-R17.S14-SW-130, CO-R17.S14-SD-130 | 100% | 2026-04-11 | 2026-04-16 |  |  | Skilled Labor/Surveyor [5 h]; Foreman [5 h]; Excavator [48 h]; Pipe with diameter 200mm; in depth 0.0m - 1.5m [124.67] | 18,125.19 | 18,125.19 | CO-R17.S14-PW-100 | 4 | 4 | ML | Ex | LM | ML | PW | EX | CON | R17 | S14 | PW |
| CO-R17.S14-PW-110 |  | Pipes Laying and accessories for Main Lines of Potable Water Network-[Road 17]-[SW-14] | 5.75d | 2025-07-13 A | 2025-07-16 A | CO-R17.S14-PW-100, CO-R16.S12-PW-110, PRO-R17-PW-DL-100 FF+3d | 100% | 2026-04-18 | 2026-04-23 |  |  | Labor/Helper [92 h]; Skilled Labor/Surveyor [5 h]; Foreman [5 h]; Plumber [46 h]; Excavator [46 h]; Pipe with diameter 200mm; in depth 0.0m - 1.5m [311.67] | 45,312.97 | 45,312.97 | CO-R17.S14-PW-110 | 4 | 4 | ML | PL | LM | ML | PW | PIPE | CON | R17 | S14 | PW |
| CO-R17.S14-PW-130 |  | Trench Backfilling and Compaction Works for Main Lines of Potable Water Network-[Road 17]-[SW-14] | 6d | 2025-07-14 A | 2025-07-17 A | CO-R17.S14-PW-110 SS+3d, CO-R17.S14-PW-110 FF+3d, CO-R16.S12-PW-130 | 100% | 2026-04-23 | 2026-04-30 |  |  | Skilled Labor/Surveyor [5 h]; Foreman [5 h]; Eq. Operator [5 h]; Loader [48 h]; Compactor [48 h]; Water Tank [12 h]; Pipe with diameter 200mm; in depth 0.0m - 1.5m [124.67] | 18,125.19 | 18,125.19 | CO-R17.S14-PW-130 | 4 | 4 | ML | BF | LM | ML | PW | BACK | CON | R17 | S14 | PW |
|  | VC | **Valve Chamber** |  | 2026-10-27 | 2026-11-02 |  |  |  |  |  |  |  |  |  |  |  |  |  |  |  |  |  |  |  |  |  |  |
| CO-R17.S14-PW-210 |  | Installation Works for Main Line Valves and Valve Chambers of Potable Water Network-[Road 17]-[SW-14] | 6d | 2026-10-27 | 2026-11-02 | CO-R17.S14-PW-110 |  |  |  | 14d | 194d | Labor/Helper [16 h]; Plumber [16 h]; Gate valves dia(200)mm on pipes with dia (200) mm. [7] | 18,534.88 |  | CO-R17.S14-PW-210 | 4 | 4 | ML | VI | Each | ML | PW | INSUL | CON | R17 | S14 | PW |

| ID | WBS | Activity | Duration | Start | Finish | Predecessors | Complete | Planned start | Planned finish | Total float | Free float | Resources | Cost | Actual cost | Activity ID N | Seq | New Seq | 02- Network-WBS | 03- Activity | 04-UOM | 05-Discipline | 01- Network | 07-Weightage System | 08 Stage | 09 Roads | 10 side Walk | Discipline |
| --- | --- | --- | --- | --- | --- | --- | --- | --- | --- | --- | --- | --- | --- | --- | --- | --- | --- | --- | --- | --- | --- | --- | --- | --- | --- | --- | --- |
|  | FH | **Fire Hydrant** |  | 2026-10-27 | 2026-11-30 |  |  |  |  |  |  |  |  |  |  |  |  |  |  |  |  |  |  |  |  |  |  |
| CO-R17.S14-PW-140 |  | Excavation Works for Fire Hydrants of Potable Water Network-[Road 17]-[SW-14] | 6d | 2026-10-27 | 2026-11-02 | CO-R17.S14-PW-110 SS+3d, CO-R17.S14-PW-110 FF+3d, CO-R17.S14-EW-110, CO-R17.S14-SW-130 SS+3d, CO-R17.S14-SW-130 FF+3d, CO-R17.S14-SW-210 |  |  |  | -26d | 12d | Skilled Labor/Surveyor [5 h]; Foreman [5 h]; Excavator [48 h]; 3-outlet fire hydrant (2 x 2.5 inch and 1 x 4 inch) in the form of a separate dry vacuum cylinder [0.45] | 3,408.46 |  | CO-R17.S14-PW-140 | 4 | 4 | FH | Ex | Each | FH | PW | EX | CON | R17 | S14 | PW |
| CO-R17.S14-PW-150 |  | Installation Works for Fire Hydrant of Potable Water Network-[Road 17]-[SW-14] | 6d | 2026-11-17 | 2026-11-23 | CO-R17.S14-PW-140, CO-R16.S12-PW-150, PRO-R17-PW-DL-120 FF+3d |  |  |  | -38d | 0d | Labor/Helper [96 h]; Skilled Labor/Surveyor [5 h]; Foreman [5 h]; Plumber [96 h]; 3-outlet fire hydrant (2 x 2.5 inch and 1 x 4 inch) in the form of a separate dry vacuum cylinder [1.95] | 14,769.98 |  | CO-R17.S14-PW-150 | 4 | 4 | FH | FH | Each | FH | PW | INSTALL | CON | R17 | S14 | PW |
| CO-R17.S14-PW-160 |  | Trench Backfilling and Compaction Works for Fire Hydrants of Potable Water Network-[Road 17]-[SW-14] | 6d | 2026-11-24 | 2026-11-30 | CO-R17.S14-PW-150, CO-R16.S12-PW-160 |  |  |  | -38d | 125d | Skilled Labor/Surveyor [5 h]; Foreman [5 h]; Excavator [48 h]; 3-outlet fire hydrant (2 x 2.5 inch and 1 x 4 inch) in the form of a separate dry vacuum cylinder [0.6] | 4,544.61 |  | CO-R17.S14-PW-160 | 4 | 4 | FH | BF | Each | FH | PW | BACK | CON | R17 | S14 | PW |
|  | TE | **Telecom Network** |  | 2025-07-20 | 2026-11-19 |  |  |  |  |  |  |  |  |  |  |  |  |  |  |  |  |  |  |  |  |  |  |
|  | PD | **Ducts Works** |  | 2025-07-20 | 2025-07-27 |  |  |  |  |  |  |  |  |  |  |  |  |  |  |  |  |  |  |  |  |  |  |
| CO-R17.S14-TE-100 |  | Trench Excavation and Bedding Works for Ducts of Telecom Network-[Road 17]-[SW-14] | 7d | 2025-07-20 A | 2025-07-22 A | CO-R17.S14-EW-110, CO-R17.S14-SL-160 SS+5d, CO-R17.S14-SL-160 FF+5d, CO-R17.S13-TE-100 | 100% | 2025-11-16 | 2025-11-23 |  |  | Skilled Labor/Surveyor [6 h]; Foreman [6 h]; Excavator [56 h]; 6-way ducts, 50mm dia. HDPE [20]; Road crossing ducts (6-way) [2] | 3,015 | 3,015 | CO-R17.S14-TE-100 | 4 | 4 | PD | Ex | LM | DC | TE | DUCTS | CON | R17 | S14 | TE |
| CO-R17.S14-TE-110 |  | Pipes Laying Works for Ducts of Telecom Network-[Road 17]-[SW-14] | 7d | 2025-07-23 A | 2025-07-24 A | CO-R17.S14-TE-100, CO-R16.S12-TE-110, PRO-R17-TE-DL-100 FF+3d | 100% | 2026-08-09 | 2026-08-16 |  |  | Labor/Helper [112 h]; Skilled Labor/Surveyor [6 h]; Foreman [6 h]; Plumber [56 h]; Excavator [56 h]; JCB [28 h]; Truck [56 h]; 6-way ducts, 50mm dia. HDPE [119]; Road crossing ducts (6-way) [10] | 17,621 | 17,621 | CO-R17.S14-TE-110 | 4 | 4 | PD | PL | LM | DC | TE | DUCTS | CON | R17 | S14 | TE |
| CO-R17.S14-TE-120 |  | Pouring Plain Concrete Above Ducts of Telecom Network-[Road 17]-[SW-14] | 7d | 2025-07-26 A | 2025-07-26 A | CO-R17.S14-TE-110, CO-R16.S12-TE-120 | 100% | 2026-08-17 | 2026-08-24 |  |  | Skilled Labor/Surveyor [6 h]; Foreman [6 h]; Cons. Carpenter [112 h]; Block Mason [56 h]; 6-way ducts, 50mm dia. HDPE [20]; Road crossing ducts (6-way) [2] | 3,015 | 3,015 | CO-R17.S14-TE-120 | 4 | 4 | PD | PC | LM | DC | TE | DUCTS | CON | R17 | S14 | TE |
| CO-R17.S14-TE-130 |  | Trench Backfilling and Compaction Works for Ducts of Telecom Network-[Road 17]-[SW-14] | 7d | 2025-07-27 A | 2025-07-27 A | CO-R17.S14-TE-120, CO-R16.S12-TE-130 | 100% | 2026-08-25 | 2026-09-01 |  |  | Skilled Labor/Surveyor [6 h]; Foreman [6 h]; Excavator [56 h]; 6-way ducts, 50mm dia. HDPE [40]; Road crossing ducts (6-way) [3] | 5,862.5 | 5,862.5 | CO-R17.S14-TE-130 | 4 | 4 | PD | BF | LM | DC | TE | DUCTS | CON | R17 | S14 | TE |
|  | MH | **Manholes Works** |  | 2026-10-27 | 2026-11-19 |  |  |  |  |  |  |  |  |  |  |  |  |  |  |  |  |  |  |  |  |  |  |
| CO-R17.S14-TE-140 |  | Excavation Works for Manholes of Telecom Network-[Road 17]-[SW-14] | 7d | 2026-10-27 | 2026-11-03 | CO-R16.S12-TE-140, CO-R17.S13-TE-140, CO-R17.S14-TE-100 |  |  |  | -67d | 0d | Skilled Labor/Surveyor [6 h]; Foreman [6 h]; Excavator [56 h]; Manhole Type 2 (2000x1000x1000) [0.2] | 628.46 |  | CO-R17.S14-TE-140 | 4 | 4 | MH | Ex | Each | MNH | TE | EXC | CON | R17 | S14 | TE |
| CO-R17.S14-TE-150 |  | Installation Works for Manholes of Telecom Network-[Road 17]-[SW-14] | 7d | 2026-11-04 | 2026-11-11 | CO-R17.S14-TE-140, CO-R16.S12-TE-150, PRO-R17-TE-DL-110 FF+3d |  |  |  | -67d | 0d | Skilled Labor/Surveyor [6 h]; Foreman [6 h]; Excavator [56 h]; Manhole Type 1 (2000x1000x1000) [1]; Manhole Type 2 (2000x1000x1000) [0.6] | 5,001.55 |  | CO-R17.S14-TE-150 | 4 | 4 | MH | HH | Each | MNH | TE | INSTALL-1 | CON | R17 | S14 | TE |
| CO-R17.S14-TE-160 |  | Backfilling Works for Manholes of Telecom Network-[Road 17]-[SW-14] | 7d | 2026-11-12 | 2026-11-19 | CO-R17.S14-TE-150, CO-R16.S12-TE-160 |  |  |  | -67d | 98d | Skilled Labor/Surveyor [6 h]; Foreman [6 h]; Excavator [56 h]; Manhole Type 2 (2000x1000x1000) [0.2] | 628.46 |  | CO-R17.S14-TE-160 | 4 | 4 | MH | BF | Each | MNH | TE | (New)-2 | CON | R17 | S14 | TE |
|  | RD | **Road Works** |  | 2025-07-06 | 2026-09-17 |  |  |  |  |  |  |  |  |  |  |  |  |  |  |  |  |  |  |  |  |  |  |
|  | RD | **Pre-Bituminous Construction** |  | 2025-07-06 | 2025-09-14 |  |  |  |  |  |  |  |  |  |  |  |  |  |  |  |  |  |  |  |  |  |  |
| CO-R17.S14-RD-P-100 |  | Capping and Subgrade Layer for Road Works-[Road 17]-[SW-14] | 18d | 2025-07-06 A | 2025-07-16 A | CO-R17.S14-SD-130, CO-R17.S14-SW-130, CO-R17.S14-PW-130, PRO-R17-RD-DL-120 FF+3d, CO-R17.S14-TE-130, CO-R17.S14-SL-160 SS+3d, CO-R17.S14-SL-160 FF+3d | 100% | 2026-09-02 | 2026-09-22 |  |  | Labor/Helper [288 h]; Skilled Labor/Surveyor [144 h]; Loader [144 h]; Grader [144 h]; Road Roller [144 h]; Water Tank [144 h]; 300mm capping layer underneath subgrade , CBR?15% [1509.36]; 300mm thick Subgrade, including subgrade preparation, CBR?25% [1509.36] | 117,126.34 | 117,126.34 | CO-R17.S14-RD-P-100 | 4 | 4 | AB | SG | Sq.m | BS | RD |  | CON | R17 | S14 | RD |
| CO-R17.S14-RD-P-110 |  | Aggregate Base Course Layer for Road Works-[Road 17]-[SW-14] | 12d | 2025-09-13 A | 2025-09-14 A | CO-R17.S14-RD-P-100 SS+3d, CO-R17.S14-RD-P-100 FF+3d, CO-R17.S14-SD-170 SS+3d, CO-R17.S14-SD-170 FF+3d, CO-R16.S12-RD-P-110, PRO-R17-RD-DL-130 FF+3d | 100% | 2026-11-05 | 2026-11-18 |  |  | Labor/Helper [288 h]; Skilled Labor/Surveyor [144 h]; Foreman [144 h]; Loader [144 h]; Grader [144 h]; Road Roller [144 h]; Aggregate base course 200mm thick after compaction in two layers(Grading 1); CBR?80%; including watering, compaction and testing [1006.34] | 81,583.98 | 81,583.98 | CO-R17.S14-RD-P-110 | 4 | 4 | AB | BA | Sq.m | BS | RD |  | CON | R17 | S14 | RD |
|  | LS | **Pavement Works** |  | 2026-08-25 | 2026-09-17 |  |  |  |  |  |  |  |  |  |  |  |  |  |  |  |  |  |  |  |  |  |  |
| CO-R17.S14-RD-P-120 |  | Fixing of Curbstone for Sidewalks Pavement-[Road 17]-[SW-14] | 12d | 2026-08-25 A | 2026-08-31 A | CO-R16.S12-RD-P-120, PRO-R17-RD-DL-110 FF+3d, CO-R17.S14-RD-P-110 SS+3d, CO-R17.S14-RD-P-110 FF+3d | 100% | 2026-11-09 | 2026-11-22 |  |  | Labor/Helper [150 h]; Block Mason [520 h]; Precast Concrete Kerb, Type K1 [556.87]; Precast Concrete Kerb, Type L1 [1104.89] | 66,802.75 | 66,802.75 | CO-R17.S14-RD-P-120 | 4 | 4 | LS | CR | LM | LAND | RD |  | CON | R17 | S14 | RD |
| CO-R17.S14-RD-P-130 |  | Fixing of Interlock Tiles for Sidewalks Pavement-[Road 17]-[SW-14] | 10d | 2026-09-05 A | 2026-09-17 A | CO-R17.S14-RD-P-120 SS+3d, CO-R17.S14-RD-P-120 FF+3d, PRO-R17-RD-DL-100 FF+3d, CO-R17-SD-TF-120 | 100% | 2026-11-21 | 2026-12-01 |  |  | Labor/Helper [288 h]; Block Mason [864 h]; Interlocking block pavers for sidewalk/footpath 60mm thick on and including 30mm Sand Bedding, 200mm Aggregate subbase, all in accordance with authority standards and complete as per specifications [994.41]; Extraover for Pedestrian ramps [2] | 47,515.53 | 47,515.53 | CO-R17.S14-RD-P-130 | 4 | 4 | LS | IL | Sq.m | LAND | RD |  | CON | R17 | S14 | RD |
|  | 1 | **Road 18 Local 1 ( 479 LM )** |  | 2025-02-11 | 2026-11-29 |  |  |  |  |  |  |  |  |  |  |  |  |  |  |  |  |  |  |  |  |  |  |
|  | SW_15 | **SW_15** |  | 2025-02-11 | 2026-11-03 |  |  |  |  |  |  |  |  |  |  |  |  |  |  |  |  |  |  |  |  |  |  |
|  | EW | **Earthworks** |  | 2025-02-11 | 2025-02-25 |  |  |  |  |  |  |  |  |  |  |  |  |  |  |  |  |  |  |  |  |  |  |
|  | EW | **Earthworks** |  | 2025-02-11 | 2025-02-25 |  |  |  |  |  |  |  |  |  |  |  |  |  |  |  |  |  |  |  |  |  |  |
| CO-R18.S15-EW-120 |  | Roadway Excavation Works Upto Design Level for Earthworks-[Road 18]-[SW-15] | 10d | 2025-02-11 A | 2025-02-20 A | ENG-MS-RD-A-10, ENG-SH-RD-A-100 | 100% | 2025-02-09 | 2025-02-19 |  |  | Labor/Helper [240 h]; Skilled Labor/Surveyor [30 h]; Foreman [30 h]; Dump Truck [480 h]; Water Tank [240 h]; Dozer [240 h]; Roadway Excavation for cuttings; on any type of material for all depths including trimming and Preparation of excavated surfaces and disposal. [6871.97] | 43,293.41 | 43,293.41 | CO-R18.S15-EW-120 | 1 | 1 | EW | Ex | Cub.m | EW | EW |  | CON | R18 | S15 | EW |
| CO-R18.S15-EW-130 |  | Embankments Works Upto Design Level for Earthworks-[Road 18]-[SW-15] | 12d | 2025-02-21 A | 2025-02-25 A | CO-R18.S15-EW-120, ENG-MS-RD-A-10, ENG-SH-RD-A-100 | 100% | 2025-02-20 | 2025-03-06 |  |  | Labor/Helper [480 h]; Skilled Labor/Surveyor [60 h]; Foreman [60 h]; Dump Truck [960 h]; Water Tank [480 h]; Dozer [480 h]; Embankments to the ROW, with suitable material other than top soil or rock according to specifications [11568.1] | 93,702.01 | 93,702.01 | CO-R18.S15-EW-130 | 1 | 1 | EW | BF | Cub.m | EW | EW |  | CON | R18 | S15 | EW |

| ID | WBS | Activity | Duration | Start | Finish | Predecessors | Complete | Planned start | Planned finish | Resources | Cost | Actual cost | Activity ID N | Seq | New Seq | 02- Network-WBS | 03- Activity | 04-UOM | 05-Discipline | 01- Network | 07-Weightage System | 08 Stage | 09 Roads | 10 side Walk | Discipline |
| --- | --- | --- | --- | --- | --- | --- | --- | --- | --- | --- | --- | --- | --- | --- | --- | --- | --- | --- | --- | --- | --- | --- | --- | --- | --- |
|  | SW | **Sewage Network** |  | 2025-04-29 | 2025-09-17 |  |  |  |  |  |  |  |  |  |  |  |  |  |  |  |  |  |  |  |  |
|  | ML | **Main Line Sections** |  | 2025-04-29 | 2025-05-20 |  |  |  |  |  |  |  |  |  |  |  |  |  |  |  |  |  |  |  |  |
| CO-R18.S15-SW-220 |  | Trench Excavation and Bedding Works for Main Lines of Sewage Network-[Road 18]-[SW-15] | 12d | 2025-04-29 A | 2025-05-09 A | CO-R18.S15-EW-130, ENG-MS-SW-ML-A-110, ENG-SH-SW-ML-A-110 | 100% | 2025-03-08 | 2025-03-20 | Labor/Helper [96 h]; Foreman [96 h]; Excavator [96 h]; Nominal bore : 160mm; Depth : 1.5m - 2.5m [17.6]; Nominal bore : 200mm; Depth : 0.0m - 1.5m [2.37]; Nominal bore : 200mm; Depth : 1.5m - 2.5m [4.44]; Nominal bore : 200mm; Depth : 2.5m - 3.5m [11.1]; Nominal bore : 200mm; Depth : 3.5m - 4.5m [8.19]; Nominal bore : 200mm; Depth : 4.5m -5.5m [4.14]; Nominal bore : 200mm; Depth : 5.5m - 6.5m [5.33] | 14,332.79 | 14,332.79 | CO-R18.S15-SW-220 | 1 | 1 | ML | Ex | LM | ML | SW | EX | CON | R18 | S15 | SW |
| CO-R18.S15-SW-230 |  | Pipes Laying Works for Main Lines of Sewage Network-[Road 18]-[SW-15] | 10d | 2025-05-10 A | 2025-05-16 A | CO-R18.S15-SW-220, PRO-R18-SW-DL-150 | 100% | 2025-04-24 | 2025-05-05 | Labor/Helper [192 h]; Skilled Labor/Surveyor [10 h]; Foreman [10 h]; Plumber [96 h]; Excavator [96 h]; Nominal bore : 160mm; Depth : 1.5m - 2.5m [52.8]; Nominal bore : 200mm; Depth : 0.0m - 1.5m [7.1]; Nominal bore : 200mm; Depth : 1.5m - 2.5m [13.31]; Nominal bore : 200mm; Depth : 2.5m - 3.5m [33.31]; Nominal bore : 200mm; Depth : 3.5m - 4.5m [24.56]; Nominal bore : 200mm; Depth : 4.5m -5.5m [12.43]; Nominal bore : 200mm; Depth : 5.5m - 6.5m [15.98] | 42,998.36 | 42,998.36 | CO-R18.S15-SW-230 | 1 | 1 | ML | PL | LM | ML | SW | PIPE | CON | R18 | S15 | SW |
| CO-R18.S15-SW-240 |  | Trench Backfilling and Compaction Works for Main Lines of Sewage Network-[Road 18]-[SW-15] | 10d | 2025-05-17 A | 2025-05-20 A | CO-R18.S15-SW-230, CO-R18.S15-SW-300 FF | 100% | 2025-05-06 | 2025-05-17 | Skilled Labor/Surveyor [10 h]; Foreman [10 h]; Excavator [96 h]; Nominal bore : 160mm; Depth : 1.5m - 2.5m [8.8]; Nominal bore : 200mm; Depth : 0.0m - 1.5m [1.18]; Nominal bore : 200mm; Depth : 1.5m - 2.5m [2.22]; Nominal bore : 200mm; Depth : 2.5m - 3.5m [5.55]; Nominal bore : 200mm; Depth : 3.5m - 4.5m [4.09]; Nominal bore : 200mm; Depth : 4.5m -5.5m [2.07]; Nominal bore : 200mm; Depth : 5.5m - 6.5m [2.66] | 7,166.39 | 7,166.39 | CO-R18.S15-SW-240 | 1 | 1 | ML | BF | LM | ML | SW | BACK | CON | R18 | S15 | SW |
|  | 1 | **Manholes** |  | 2025-05-25 | 2025-09-17 |  |  |  |  |  |  |  |  |  |  |  |  |  |  |  |  |  |  |  |  |
| CO-R18.S15-SW-250 |  | Excavation Works for Main Line Manholes of Sewage Network-[Road 18]-[SW-15] | 1d | 2025-05-25 A | 2025-05-26 A | CO-R18.S15-SW-230 SS | 100% | 2025-04-24 | 2025-04-24 | Labor/Helper [40 h]; Skilled Labor/Surveyor [20 h]; Excavator [40 h]; Depth: not exceeding 1.5m [0.15]; Depth: 1.5 - 2.5m [0.9]; Depth: 2.5 - 3.5m [0.15]; Depth: 5.5 - 6.5m [0.3]; Depth:6.5 - 7.5m [0.15] | 20,979.27 | 20,979.27 | CO-R18.S15-SW-250 | 1 | 1 |  |  |  |  | SW | EX | CON | R18 | S15 | SW |
| CO-R18.S15-SW-260 |  | Installation RC Footing Works for Main Line Manholes of Sewage Network-[Road 18]-[SW-15] | 2.25d | 2025-05-31 A | 2025-06-02 A | CO-R18.S15-SW-250, PRO-R18-SW-DL-160 | 100% | 2025-04-26 | 2025-04-28 | Cons. Carpenter [180 h]; Steel Fixer [180 h]; Depth: not exceeding 1.5m [0.1]; Depth: 1.5 - 2.5m [0.6]; Depth: 2.5 - 3.5m [0.1]; Depth: 5.5 - 6.5m [0.2]; Depth:6.5 - 7.5m [0.1] | 13,986.18 | 13,986.18 | CO-R18.S15-SW-260 | 1 | 1 |  |  |  |  | SW | RC F | CON | R18 | S15 | SW |
| CO-R18.S15-SW-270 |  | Install Grp Liner Wall Works for Main Line Manholes of Sewage Network-[Road 18]-[SW-15] | 4d | 2025-06-01 A | 2025-06-03 A | CO-R18.S15-SW-260 | 100% | 2025-04-28 | 2025-05-03 | Labor/Helper [64 h]; Plumber [64 h]; Depth: not exceeding 1.5m [0.4]; Depth: 1.5 - 2.5m [2.4]; Depth: 2.5 - 3.5m [0.4]; Depth: 5.5 - 6.5m [0.8]; Depth:6.5 - 7.5m [0.4] | 55,944.73 | 55,944.73 | CO-R18.S15-SW-270 | 1 | 1 |  |  |  |  | SW | LP | CON | R18 | S15 | SW |
| CO-R18.S15-SW-290 |  | Backfilling Works for Main Line Manholes of Sewage Network-[Road 18]-[SW-15] | 4d | 2025-06-17 A | 2025-06-21 A | CO-R18.S15-SW-280 | 100% | 2025-05-04 | 2025-05-08 | Labor/Helper [64 h]; Skilled Labor/Surveyor [32 h]; Excavator [64 h]; Depth: not exceeding 1.5m [0.15]; Depth: 1.5 - 2.5m [0.9]; Depth: 2.5 - 3.5m [0.15]; Depth: 5.5 - 6.5m [0.3]; Depth:6.5 - 7.5m [0.15] | 20,979.27 | 20,979.27 | CO-R18.S15-SW-290 | 1 | 1 |  |  |  |  | SW | BACK | CON | R18 | S15 | SW |
| CO-R18.S15-SW-280 |  | Pouring Grp Liner Wall Works for Main Line Manholes of Sewage Network-[Road 18]-[SW-15] | 1d | 2025-09-16 A | 2025-09-16 A | CO-R18.S15-SW-270 | 100% | 2025-05-03 | 2025-05-04 | Cons. Carpenter [80 h]; Steel Fixer [80 h]; Depth: not exceeding 1.5m [0.05]; Depth: 1.5 - 2.5m [0.3]; Depth: 2.5 - 3.5m [0.05]; Depth: 5.5 - 6.5m [0.1]; Depth:6.5 - 7.5m [0.05] | 6,993.09 | 6,993.09 | CO-R18.S15-SW-280 | 1 | 1 |  |  |  |  | SW | (New) | CON | R18 | S15 | SW |
| CO-R18.S15-SW-300 |  | Testing Works for Main Line Manholes of Sewage Network-[Road 18]-[SW-15] | 1d | 2025-09-17 A | 2025-09-17 A | CO-R18.S15-SW-290 | 100% | 2025-05-08 | 2025-05-10 | Labor/Helper [40 h]; Plumber [40 h]; Depth: not exceeding 1.5m [0.05]; Depth: 1.5 - 2.5m [0.3]; Depth: 2.5 - 3.5m [0.05]; Depth: 5.5 - 6.5m [0.1]; Depth:6.5 - 7.5m [0.05] | 6,993.09 | 6,993.09 | CO-R18.S15-SW-300 | 1 | 1 |  |  |  |  | SW | T&COV | CON | R18 | S15 | SW |
|  | SD | **Storm Drainage Network** |  | 2025-04-30 | 2026-07-13 |  |  |  |  |  |  |  |  |  |  |  |  |  |  |  |  |  |  |  |  |
|  | ML | **Main Line Sections** |  | 2025-04-30 | 2025-05-24 |  |  |  |  |  |  |  |  |  |  |  |  |  |  |  |  |  |  |  |  |
| CO-R18.S15-SD-230 |  | Trench Excavation and Bedding Works for Main Lines of Storm Drainage Network-[Road 18]-[SW-15] | 10d | 2025-04-30 A | 2025-05-22 A | CO-R18.S15-EW-130, CO-R18.S15-EW-120, CO-R18.S15-SW-240, CO-R18.S15-SW-240 FF+3d | 100% | 2025-05-18 | 2025-05-28 | Skilled Labor/Surveyor [12 h]; Foreman [12 h]; Excavator [112 h]; Pipe with diameter 600mm ; depth: 1.51m - 2.5m [32.06]; Pipe with diameter 700mm ; depth: 1.51m - 2.5m [15.52]; Pipe with diameter 1000mm ; depth: 1.51m - 2.5m [10]; Pipe with diameter 1000mm ; depth: 2.51 - 3.5m [10] | 35,789.57 | 35,789.57 | CO-R18.S15-SD-230 | 1 | 1 | ML | Ex | LM | ML | SD | EX | CON | R18 | S15 | SD |
| CO-R18.S15-SD-240 |  | Pipes Laying Works for Main Lines of Storm Drainage Network-[Road 18]-[SW-15] | 20d | 2025-05-01 A | 2025-05-24 A | CO-R18.S15-SD-230, PRO-R18-SD-DL-180 | 100% | 2025-05-29 | 2025-06-25 | Labor/Helper [320 h]; Skilled Labor/Surveyor [16 h]; Foreman [16 h]; Plumber [160 h]; Excavator [160 h]; Pipe with diameter 600mm ; depth: 1.51m - 2.5m [96.17]; Pipe with diameter 700mm ; depth: 1.51m - 2.5m [46.57]; Pipe with diameter 1000mm ; depth: 1.51m - 2.5m [30]; Pipe with diameter 1000mm ; depth: 2.51 - 3.5m [30] | 107,368.7 | 107,368.7 | CO-R18.S15-SD-240 | 1 | 1 | ML | PL | LM | ML | SD | PIPE | CON | R18 | S15 | SD |
| CO-R18.S15-SD-250 |  | Trench Backfilling and Compaction Works for Main Lines of Storm Drainage Network-[Road 18]-[SW-15] | 20d | 2025-05-15 A | 2025-05-24 A | CO-R18.S15-SD-240 SS+3d, CO-R18.S15-SD-240 FF+3d, CO-R18.S15-SD-240, CO-R18.S15-SD-340 FF | 100% | 2025-06-26 | 2025-07-19 | Skilled Labor/Surveyor [16 h]; Foreman [16 h]; Excavator [160 h]; Pipe with diameter 600mm ; depth: 1.51m - 2.5m [15.83]; Pipe with diameter 700mm ; depth: 1.51m - 2.5m [7.76]; Pipe with diameter 1000mm ; depth: 1.51m - 2.5m [5]; Pipe with diameter 1000mm ; depth: 2.51 - 3.5m [5] | 17,814.26 | 17,814.26 | CO-R18.S15-SD-250 | 1 | 1 | ML | BF | LM | ML | SD | BACK | CON | R18 | S15 | SD |
|  | MH | **Manholes** |  | 2025-05-13 | 2026-07-13 |  |  |  |  |  |  |  |  |  |  |  |  |  |  |  |  |  |  |  |  |
| CO-R18.S15-SD-300 |  | Trench Excavation and Bedding Works for Manholes of Storm Drainage Network-[Road 18]-[SW-15] | 1d | 2025-05-13 A | 2025-05-22 A | CO-R18.S15-SD-240 SS | 100% | 2025-05-29 | 2025-05-29 | Labor/Helper [24 h]; Skilled Labor/Surveyor [12 h]; Excavator [24 h]; MH ; depth: 0.0m - 1.5m [0.15]; MH ; depth: 1.51m - 2.5m [0.3]; MH ; depth: 2.51 - 3.5m [0.3] | 12,115.48 | 12,115.48 | CO-R18.S15-SD-300 | 1 | 1 |  |  |  |  | SD | EX | CON | R18 | S15 | SD |
| CO-R18.S15-SD-310 |  | Install RC Footing Works for Manholes of Storm Drainage Network-[Road 18]-[SW-15] | 1d | 2025-05-21 A | 2025-05-22 A | CO-R18.S15-SD-300, PRO-R18-SD-DL-170 | 100% | 2025-05-31 | 2025-05-31 | Cons. Carpenter [48 h]; Steel Fixer [48 h]; MH ; depth: 0.0m - 1.5m [0.05]; MH ; depth: 1.51m - 2.5m [0.1]; MH ; depth: 2.51 - 3.5m [0.1] | 4,038.49 | 4,038.49 | CO-R18.S15-SD-310 | 1 | 1 |  |  |  |  | SD | RC F | CON | R18 | S15 | SD |
| CO-R18.S15-SD-320 |  | Install RC Wall Rings & Slab Works for Manholes of Storm Drainage Network-[Road 18]-[SW-15] | 4d | 2025-06-01 A | 2025-06-04 A | CO-R18.S15-SD-310 | 100% |  |  | Cons. Carpenter [192 h]; Steel Fixer [192 h]; MH ; depth: 0.0m - 1.5m [0.45]; MH ; depth: 1.51m - 2.5m [0.9]; MH ; depth: 2.51 - 3.5m [0.9] | 36,346.43 | 36,346.43 | CO-R18.S15-SD-320 | 1 | 1 |  |  |  |  | SD | RC W | CON | R18 | S15 | SD |
| CO-R18.S15-SD-340 |  | Backfilling Works for Manholes of Storm Drainage Network-[Road 18]-[SW-15] | 7d | 2025-06-08 A | 2025-06-14 A | CO-R18.S15-SD-330 | 100% | 2025-06-11 | 2025-06-18 | Labor/Helper [168 h]; Skilled Labor/Surveyor [84 h]; Excavator [168 h]; MH ; depth: 0.0m - 1.5m [0.2]; MH ; depth: 1.51m - 2.5m [0.4]; MH ; depth: 2.51 - 3.5m [0.4] | 16,153.97 | 16,153.97 | CO-R18.S15-SD-340 | 1 | 1 |  |  |  |  | SD | BACK | CON | R18 | S15 | SD |
| CO-R18.S15-SD-330 |  | Testing Works for Manholes of Storm Drainage Network-[Road 18]-[SW-15] | 1d | 2026-06-04 A | 2026-07-13 A | CO-R18.S15-SD-320 | 100% | 2025-06-10 | 2025-06-10 | Labor/Helper [24 h]; Plumber [24 h]; MH ; depth: 0.0m - 1.5m [0.1]; MH ; depth: 1.51m - 2.5m [0.2]; MH ; depth: 2.51 - 3.5m [0.2] | 8,076.98 | 8,076.98 | CO-R18.S15-SD-330 | 1 | 1 |  |  |  |  | SD | T&COV | CON | R18 | S15 | SD |
|  | CB | **Catch Basin Sections** |  | 2025-05-18 | 2026-07-13 |  |  |  |  |  |  |  |  |  |  |  |  |  |  |  |  |  |  |  |  |
| CO-R18.S15-SD-260 |  | Trench Excavation and Bedding Works for Catch Basins of Storm Drainage Network-[Road 18]-[SW-15] | 7d | 2025-05-18 A | 2025-05-22 A | CO-R18.S15-EW-130, CO-R18.S15-SD-340 | 100% | 2025-06-19 | 2025-06-26 | Skilled Labor/Surveyor [6 h]; Foreman [6 h]; Excavator [56 h]; Pipe with diameter 300mm ; depth: 0 - 1.5m [36.39]; Pipe with diameter 400mm ; depth: 0 - 1.5m [2.22] | 8,974.22 | 8,974.22 | CO-R18.S15-SD-260 | 1 | 1 | CB | Ex | Each | CB | SD | EX | CON | R18 | S15 | SD |
| CO-R18.S15-SD-270 |  | Installation and Pipes Laying Connection Works for Catch Basins of Storm Drainage Network-[Road 18]-[SW-15] | 7d | 2025-05-24 A | 2025-06-03 A | CO-R18.S15-SD-260, PRO-R18-SD-DL-200, PRO-R18-SD-DL-220 | 100% | 2025-06-28 | 2025-07-05 | Labor/Helper [224 h]; Skilled Labor/Surveyor [12 h]; Foreman [12 h]; Excavator [112 h]; Pipe with diameter 300mm ; depth: 0 - 1.5m [109.18]; Pipe with diameter 400mm ; depth: 0 - 1.5m [6.66] | 26,922.36 | 26,922.36 | CO-R18.S15-SD-270 | 1 | 1 | CB | CB | Each | CB | SD | INSTALL | CON | R18 | S15 | SD |
| CO-R18.S15-SD-290 |  | Trench Backfilling and Compaction Works for Catch Basins of Storm Drainage Network-[Road 18]-[SW-15] | 7d | 2025-06-04 A | 2025-06-09 A | CO-R18.S15-SD-280 | 100% | 2025-07-14 | 2025-07-21 | Skilled Labor/Surveyor [6 h]; Foreman [6 h]; Excavator [56 h]; Pipe with diameter 300mm ; depth: 0 - 1.5m [48.52]; Pipe with diameter 400mm ; depth: 0 - 1.5m [2.96] | 11,965.42 | 11,965.42 | CO-R18.S15-SD-290 | 1 | 1 | CB | BF | Each | CB | SD | BACK | CON | R18 | S15 | SD |
| CO-R18.S15-SD-280 |  | Testing Works for Catch Basins of Storm Drainage Network-[Road 18]-[SW-15] | 7d | 2026-06-04 A | 2026-07-13 A | CO-R18.S15-SD-270, CO-R18.S15-SD-240 | 100% | 2025-07-06 | 2025-07-13 | Labor/Helper [112 h]; Skilled Labor/Surveyor [6 h]; Foreman [6 h]; Plumber [56 h]; Excavator [56 h]; Pipe with diameter 300mm ; depth: 0 - 1.5m [24.26]; Pipe with diameter 400mm ; depth: 0 - 1.5m [1.48] | 5,982.71 | 5,982.71 | CO-R18.S15-SD-280 | 1 | 1 | CB | PL | Each | CB | SD | TEST | CON | R18 | S15 | SD |

| ID | WBS | Activity | Duration | Start | Finish | Predecessors | Complete | Planned start | Planned finish | Total float | Free float | Resources | Cost | Actual cost | Activity ID N | Seq | New Seq | 02- Network-WBS | 03- Activity | 04-UOM | 05-Discipline | 01- Network | 07-Weightage System | 08 Stage | 09 Roads | 10 side Walk | Discipline |
| --- | --- | --- | --- | --- | --- | --- | --- | --- | --- | --- | --- | --- | --- | --- | --- | --- | --- | --- | --- | --- | --- | --- | --- | --- | --- | --- | --- |
|  | IR | **Irrigation Network** |  | 2025-06-16 | 2026-11-03 |  |  |  |  |  |  |  |  |  |  |  |  |  |  |  |  |  |  |  |  |  |  |
|  | ML | **Main Line Pipes** |  | 2025-06-16 | 2026-11-03 |  |  |  |  |  |  |  |  |  |  |  |  |  |  |  |  |  |  |  |  |  |  |
| CO-R18.S15-IR-140 |  | Trench Excavation and Bedding Works for Main Lines of Irrigation Network-[Road 18]-[SW-15] | 7d | 2025-06-16 A | 2025-07-07 A | CO-R18.S15-EW-130, CO-R18.S15-SD-290 | 100% | 2025-07-22 | 2025-07-29 |  |  | Skilled Labor/Surveyor [6 h]; Foreman [6 h]; Excavator [56 h]; 125 mm pipe; depth 0.0m - 1.5m [123.68] | 9,197.93 | 9,197.93 | CO-R18.S15-IR-140 | 1 | 1 | ML | Ex | LM | ML | IR | EX | CON | R18 | S15 | IR |
| CO-R18.S15-IR-150 |  | Pipes Laying Works for Main Lines of Irrigation Network-[Road 18]-[SW-15] | 10d | 2025-06-19 A | 2025-07-07 A | CO-R18.S15-IR-140, PRO-R18-IR-DL-120 FF+3d | 100% | 2025-07-30 | 2025-08-10 |  |  | Labor/Helper [160 h]; Skilled Labor/Surveyor [8 h]; Foreman [8 h]; Plumber [80 h]; Excavator [80 h]; 125 mm pipe; depth 0.0m - 1.5m [371.03] | 27,593.8 | 27,593.8 | CO-R18.S15-IR-150 | 1 | 1 | ML | PL | LM | ML | IR | PIPE | CON | R18 | S15 | IR |
| CO-R18.S15-IR-170 |  | Trench Backfilling and Compaction Works for Main Lines of Irrigation Network-[Road 18]-[SW-15] | 9d | 2025-07-02 A | 2025-07-07 A | CO-R18.S15-IR-150 | 100% | 2025-08-19 | 2025-08-28 |  |  | Skilled Labor/Surveyor [8 h]; Foreman [8 h]; Excavator [72 h]; 125 mm pipe; depth 0.0m - 1.5m [61.84] | 4,598.97 | 4,598.97 | CO-R18.S15-IR-170 | 1 | 1 | ML | BF | LM | ML | IR | BACK | CON | R18 | S15 | IR |
| CO-R18.S15-IR-160 |  | Installation Works for Main Line Valves of Irrigation Network-[Road 18]-[SW-15] | 7d | 2026-10-27 | 2026-11-03 | CO-R18.S15-IR-150 |  |  |  | -5d | 158d | Labor/Helper [112 h]; Skilled Labor/Surveyor [6 h]; Foreman [6 h]; Plumber [112 h]; Gate valves dia (90)mm on pipes with dia (125) mm. [5]; Wash out valve with dia (100)mm on pipes with dia (125) mm [1]; Wash out chamber; on 125 mm dia pipeline Depth 1.5 - 3m [1] | 47,432.33 |  | CO-R18.S15-IR-160 | 1 | 1 | ML | VI | Each | ML | IR | VALV | CON | R18 | S15 | IR |
|  | TE | **Telecom Network** |  | 2025-07-08 | 2025-07-30 |  |  |  |  |  |  |  |  |  |  |  |  |  |  |  |  |  |  |  |  |  |  |
|  | PD | **Ducts Works** |  | 2025-07-08 | 2025-07-21 |  |  |  |  |  |  |  |  |  |  |  |  |  |  |  |  |  |  |  |  |  |  |
| CO-R18.S15-TE-170 |  | Trench Excavation and Bedding Works for Ducts of Telecom Network-[Road 18]-[SW-15] | 7d | 2025-07-08 A | 2025-07-10 A | CO-R18.S15-IR-170, CO-R18.S15-EW-130 | 100% | 2025-08-30 | 2025-09-06 |  |  | Skilled Labor/Surveyor [6 h]; Foreman [6 h]; Excavator [56 h]; 6-way ducts, 50mm dia. HDPE [19]; Road crossing ducts (6-way) [2] | 2,881 | 2,881 | CO-R18.S15-TE-170 | 1 | 1 | PD | Ex | LM | DC | TE | DUCTS | CON | R18 | S15 | TE |
| CO-R18.S15-TE-180 |  | Pipes Laying Works for Ducts of Telecom Network-[Road 18]-[SW-15] | 7d | 2025-07-11 A | 2025-07-15 A | CO-R18.S15-TE-170, PRO-R18-TE-DL-120 | 100% | 2025-09-07 | 2025-09-14 |  |  | Labor/Helper [112 h]; Skilled Labor/Surveyor [6 h]; Foreman [6 h]; Plumber [56 h]; Excavator [56 h]; JCB [28 h]; Truck [56 h]; 6-way ducts, 50mm dia. HDPE [115]; Road crossing ducts (6-way) [10] | 17,085 | 17,085 | CO-R18.S15-TE-180 | 1 | 1 | PD | PL | LM | DC | TE | DUCTS | CON | R18 | S15 | TE |
| CO-R18.S15-TE-190 |  | Trench Backfilling and Compaction Works for Ducts of Telecom Network-[Road 18]-[SW-15] | 7d | 2025-07-16 A | 2025-07-17 A | CO-R18.S15-TE-230 | 100% | 2025-09-24 | 2025-10-01 |  |  | Skilled Labor/Surveyor [6 h]; Foreman [6 h]; Excavator [56 h]; 6-way ducts, 50mm dia. HDPE [38]; Road crossing ducts (6-way) [3] | 5,594.5 | 5,594.5 | CO-R18.S15-TE-190 | 1 | 1 | PD | BF | LM | DC | TE | DUCTS | CON | R18 | S15 | TE |
| CO-R18.S15-TE-230 |  | Pouring Plain Concrete Above Ducts of Telecom Network-[Road 18]-[SW-15] | 7d | 2025-07-18 A | 2025-07-21 A | CO-R18.S15-TE-180 | 100% | 2025-09-15 | 2025-09-22 |  |  | Skilled Labor/Surveyor [6 h]; Foreman [6 h]; Cons. Carpenter [112 h]; Block Mason [56 h]; 6-way ducts, 50mm dia. HDPE [19]; Road crossing ducts (6-way) [2] | 2,881 | 2,881 | CO-R18.S15-TE-230 | 1 | 1 | PD | PC | LM | DC | TE | DUCTS | CON | R18 | S15 | TE |
|  | MH | **Manholes Works** |  | 2025-07-20 | 2025-07-30 |  |  |  |  |  |  |  |  |  |  |  |  |  |  |  |  |  |  |  |  |  |  |
| CO-R18.S15-TE-200 |  | Excavation Works for Manholes of Telecom Network-[Road 18]-[SW-15] | 7d | 2025-07-20 A | 2025-07-22 A | CO-R18.S15-TE-170 | 100% | 2025-09-07 | 2025-09-14 |  |  | Skilled Labor/Surveyor [6 h]; Foreman [6 h]; Excavator [56 h]; Manhole Type 2 (2000x1000x1000) [0.4] | 1,256.92 | 1,256.92 | CO-R18.S15-TE-200 | 1 | 1 | MH | Ex | Each | MNH | TE | EXC | CON | R18 | S15 | TE |
| CO-R18.S15-TE-210 |  | Installation Works for Manholes of Telecom Network-[Road 18]-[SW-15] | 7d | 2025-07-23 A | 2025-07-26 A | CO-R18.S15-TE-200, PRO-R18-TE-DL-130 | 100% | 2025-09-15 | 2025-09-22 |  |  | Skilled Labor/Surveyor [6 h]; Foreman [6 h]; Excavator [56 h]; Manhole Type 1 (2000x1000x1000) [1]; Manhole Type 2 (2000x1000x1000) [1.2] | 6,886.93 | 6,886.93 | CO-R18.S15-TE-210 | 1 | 1 | MH | HH | Each | MNH | TE | INSTALL-1 | CON | R18 | S15 | TE |
| CO-R18.S15-TE-220 |  | Backfilling Works for Manholes of Telecom Network-[Road 18]-[SW-15] | 7d | 2025-07-27 A | 2025-07-30 A | CO-R18.S15-TE-210 | 100% | 2025-09-24 | 2025-10-01 |  |  | Skilled Labor/Surveyor [6 h]; Foreman [6 h]; Excavator [56 h]; Manhole Type 2 (2000x1000x1000) [0.4] | 1,256.92 | 1,256.92 | CO-R18.S15-TE-220 | 1 | 1 | MH | BF | Each | MNH | TE | (New)-2 | CON | R18 | S15 | TE |
|  | MV | **Medium Voltage Network** |  | 2025-07-22 | 2025-07-24 |  |  |  |  |  |  |  |  |  |  |  |  |  |  |  |  |  |  |  |  |  |  |
|  | CW | **Cabling Works** |  | 2025-07-22 | 2025-07-24 |  |  |  |  |  |  |  |  |  |  |  |  |  |  |  |  |  |  |  |  |  |  |
| CO-R18.S15-MV-ML-340 |  | Trench Excavation and Bedding Works for Medium Voltage Network-[Road 18]-[SW-15] | 18d | 2025-07-22 A | 2025-07-23 A | CO-R18.S15-SD-290 SS+3d, CO-R18.S15-SD-290 FF+3d, CO-R18.S15-EW-130, CO-R18.S15-TE-190 SS+3d, CO-R18.S15-TE-190 FF+3d, CO-R18.S16-SL-160 | 100% | 2025-11-02 | 2025-11-22 |  |  | Skilled Labor/Surveyor [15 h]; Foreman [15 h]; Excavator [144 h]; Excavation for Trench size 40cm wide and 80cm deep ( Maximum 1 cable 33kv) [171.61]; Excavation for Trench size 60cm wide and 80cm deep ( for Max two cables 33 kv) [9.76]; Excavation for Trench size 90cm wide and 80cm deep ( Maximum 3 cable 33kv) [43.49]; Excavation for Trench size 120cm wide and 80cm deep ( Maximum 4cable 33kv) [14.79]; Excavation for Trench size 150cm wide and 80cm deep ( Maximum 4cable 33kv) [54.74]; Duct bank for (2) 33 kv cables [5.92]; Duct bank for (4) 33 kv cables [39.06]; Duct bank for (6) 33 kv cables [17.75] | 19,958.11 | 19,958.11 | CO-R18.S15-MV-ML-340 | 1 | 1 | CW | Ex | LM | CW | MV | EXC | CON | R18 | S15 | MV |
| CO-R18.S15-MV-ML-350 |  | Cable Laying Works for Medium Voltage Network-[Road 18]-[SW-15] | 18d | 2025-07-22 A | 2025-07-23 A | CO-R18.S15-MV-ML-340 SS+3d, CO-R18.S15-MV-ML-340 FF+3d, PRO-R18-MV-DL-120 FF+3d | 100% | 2025-11-05 | 2025-11-25 |  |  | Labor/Helper [144 h]; Electrician [144 h]; Low Current Technician [144 h]; 33kv 3Cx400 mmï¿½ Al XLPE / LLDPE /PVC Cable [807.76]; 33kv 3Cx400 mmï¿½ Al XLPE /LLDPE/PVC [2.8] | 108,050.83 | 108,050.83 | CO-R18.S15-MV-ML-350 | 1 | 1 | CW | CL | LM | CW | MV | LAY | CON | R18 | S15 | MV |
| CO-R18.S15-MV-ML-360 |  | Trench Backfilling and Compaction Works for Medium Voltage Network-[Road 18]-[SW-15] | 18d | 2025-07-23 A | 2025-07-24 A | CO-R18.S15-MV-ML-350 SS+3d, CO-R18.S15-MV-ML-350 FF+3d | 100% | 2025-11-09 | 2025-11-29 |  |  | Skilled Labor/Surveyor [15 h]; Foreman [15 h]; Excavator [144 h]; Water Tank [36 h]; 33kv 3Cx400 mmï¿½ Al XLPE / LLDPE /PVC Cable [346.18]; 33kv 3Cx400 mmï¿½ Al XLPE /LLDPE/PVC [1.2] | 46,307.5 | 46,307.5 | CO-R18.S15-MV-ML-360 | 1 | 1 | CW | BF | LM | CW | MV | BACK | CON | R18 | S15 | MV |
|  | RD | **Road Works** |  | 2025-07-10 | 2026-09-20 |  |  |  |  |  |  |  |  |  |  |  |  |  |  |  |  |  |  |  |  |  |  |
|  | RD | **Pre-Bituminous Construction** |  | 2025-07-10 | 2025-08-31 |  |  |  |  |  |  |  |  |  |  |  |  |  |  |  |  |  |  |  |  |  |  |
| CO-R18.S15-RD-P-160 |  | Capping and Subgrade Layer for Road Works-[Road 18]-[SW-15] | 15d | 2025-07-10 A | 2025-07-21 A | CO-R18.S15-SD-250, CO-R18.S15-SW-240, CO-R18.S15-TE-190, CO-R18.S15-TE-220, CO-R18.S15-MV-ML-360 SS+3d, CO-R18.S15-MV-ML-360 FF+3d, PRO-R18-RD-DL-220 | 100% | 2025-11-16 | 2025-12-02 |  |  | Labor/Helper [240 h]; Skilled Labor/Surveyor [120 h]; Loader [120 h]; Grader [120 h]; Road Roller [120 h]; Water Tank [120 h]; 300mm capping layer underneath subgrade , CBR?15% [1459.58]; 300mm thick Subgrade, including subgrade preparation, CBR?25% [1459.58] | 113,263.41 | 113,263.41 | CO-R18.S15-RD-P-160 | 1 | 1 | AB | SG | Sq.m | BS | RD |  | CON | R18 | S15 | RD |
| CO-R18.S15-RD-P-170 |  | Aggregate Base Course Layer for Road Works-[Road 18]-[SW-15] | 18d | 2025-08-27 A | 2025-08-31 A | CO-R18.S15-RD-P-160 SS+3d, CO-R18.S15-RD-P-160 FF+3d, CO-R18.S15-SD-290 SS+3d, CO-R18.S15-SD-290 FF+3d, PRO-R18-RD-DL-230 | 100% | 2025-11-19 | 2025-12-09 |  |  | Labor/Helper [288 h]; Skilled Labor/Surveyor [144 h]; Foreman [144 h]; Loader [144 h]; Grader [144 h]; Road Roller [144 h]; Aggregate base course 200mm thick after compaction in two layers(Grading 1); CBR?80%; including watering, compaction and testing [973.16] | 78,894.08 | 78,894.08 | CO-R18.S15-RD-P-170 | 1 | 1 | AB | BA | Sq.m | BS | RD |  | CON | R18 | S15 | RD |

| ID | WBS | Activity | Duration | Start | Finish | Predecessors | Complete | Planned start | Planned finish | Resources | Cost | Actual cost | Activity ID N | Seq | New Seq | 02- Network-WBS | 03- Activity | 04-UOM | 05-Discipline | 01- Network | 08 Stage | 09 Roads | 10 side Walk | Discipline | 07-Weightage System |
| --- | --- | --- | --- | --- | --- | --- | --- | --- | --- | --- | --- | --- | --- | --- | --- | --- | --- | --- | --- | --- | --- | --- | --- | --- | --- |
|  | LS | **Pavement Works** |  | 2026-08-25 | 2026-09-20 |  |  |  |  |  |  |  |  |  |  |  |  |  |  |  |  |  |  |  |  |
| CO-R18.S15-RD-P-140 |  | Fixing of Curbstone for Sidewalks Pavement-[Road 18]-[SW-15] | 18d | 2026-08-25 A | 2026-08-31 A | CO-R18.S15-RD-P-170 SS+3d, CO-R18.S15-RD-P-170 FF+3d, PRO-R18-RD-DL-190 | 100% | 2025-11-23 | 2025-12-13 | Labor/Helper [288 h]; Block Mason [864 h]; Precast Concrete Kerb, Type K1 [538.5]; Precast Concrete Kerb, Type L1 [1068.46] | 64,599.79 | 64,599.79 | CO-R18.S15-RD-P-140 | 1 | 1 | LS | CR | LM | LAND | RD | CON | R18 | S15 | RD |  |
| CO-R18.S15-RD-P-150 |  | Fixing of Interlock Tiles for Sidewalks Pavement-[Road 18]-[SW-15] | 18d | 2026-09-02 A | 2026-09-20 A | CO-R18.S15-RD-P-140 SS+3d, CO-R18.S15-RD-P-140 FF+3d, PRO-R18-RD-DL-180 | 100% | 2025-11-26 | 2025-12-16 | Labor/Helper [288 h]; Block Mason [864 h]; Interlocking block pavers for sidewalk/footpath 60mm thick on and including 30mm Sand Bedding, 200mm Aggregate subbase, all in accordance with authority standards and complete as per specifications [961.62]; Extraover for Pedestrian ramps [3] | 46,416.53 | 46,416.53 | CO-R18.S15-RD-P-150 | 1 | 1 | LS | IL | Sq.m | LAND | RD | CON | R18 | S15 | RD |  |
|  | SW_16 | **SW_16** |  | 2025-02-21 | 2026-11-29 |  |  |  |  |  |  |  |  |  |  |  |  |  |  |  |  |  |  |  |  |
|  | EW | **Earthworks** |  | 2025-02-21 | 2025-03-02 |  |  |  |  |  |  |  |  |  |  |  |  |  |  |  |  |  |  |  |  |
|  | EW | **Earthworks** |  | 2025-02-21 | 2025-03-02 |  |  |  |  |  |  |  |  |  |  |  |  |  |  |  |  |  |  |  |  |
| CO-R18.S16-EW-120 |  | Roadway Excavation Works Upto Design Level for Earthworks-[Road 18]-[SW-16] | 10d | 2025-02-21 A | 2025-02-26 A | ENG-MS-RD-A-10, ENG-SH-RD-A-100, CO-R18.S15-EW-120 | 100% | 2025-02-20 | 2025-03-04 | Labor/Helper [192 h]; Skilled Labor/Surveyor [24 h]; Foreman [24 h]; Dump Truck [192 h]; Water Tank [192 h]; Dozer [192 h]; Roadway Excavation for cuttings; on any type of material for all depths including trimming and Preparation of excavated surfaces and disposal. [6871.97] | 43,293.41 | 43,293.41 | CO-R18.S16-EW-120 | 2 | 2 | EW | Ex | Cub.m | EW | EW | CON | R18 | S16 | EW |  |
| CO-R18.S16-EW-130 |  | Embankments Works Upto Design Level for Earthworks-[Road 18]-[SW-16] | 12d | 2025-02-27 A | 2025-03-02 A | CO-R18.S16-EW-120, ENG-MS-RD-A-10, ENG-SH-RD-A-100 | 100% | 2025-03-05 | 2025-03-18 | Labor/Helper [600 h]; Skilled Labor/Surveyor [75 h]; Foreman [75 h]; Dump Truck [600 h]; Water Tank [600 h]; Dozer [600 h]; Embankments to the ROW, with suitable material other than top soil or rock according to specifications [11568.1] | 93,702.01 | 93,702.01 | CO-R18.S16-EW-130 | 2 | 2 | EW | BF | Cub.m | EW | EW | CON | R18 | S16 | EW |  |
|  | SW | **Sewage Network** |  | 2025-04-29 | 2025-09-17 |  |  |  |  |  |  |  |  |  |  |  |  |  |  |  |  |  |  |  |  |
|  | ML | **Main Line Sections** |  | 2025-04-29 | 2025-05-19 |  |  |  |  |  |  |  |  |  |  |  |  |  |  |  |  |  |  |  |  |
| CO-R18.S16-SW-220 |  | Trench Excavation and Bedding Works for Main Lines of Sewage Network-[Road 18]-[SW-16] | 12d | 2025-04-29 A | 2025-05-19 A | CO-R18.S16-EW-130, ENG-MS-SW-ML-A-110, ENG-SH-SW-ML-A-110, CO-R18.S15-SW-220 | 100% | 2025-03-22 | 2025-04-08 | Labor/Helper [96 h]; Foreman [96 h]; Excavator [96 h]; Nominal bore : 200mm; Depth : 0.0m - 1.5m [2.37]; Nominal bore : 200mm; Depth : 1.5m - 2.5m [4.44]; Nominal bore : 200mm; Depth : 2.5m - 3.5m [11.1]; Nominal bore : 200mm; Depth : 3.5m - 4.5m [8.19]; Nominal bore : 200mm; Depth : 4.5m -5.5m [4.14]; Nominal bore : 200mm; Depth : 5.5m - 6.5m [5.33] | 11,396.58 | 11,396.58 | CO-R18.S16-SW-220 | 2 | 2 | ML | Ex | LM | ML | SW | CON | R18 | S16 | SW | EX |
| CO-R18.S16-SW-230 |  | Pipes Laying Works for Main Lines of Sewage Network-[Road 18]-[SW-16] | 12d | 2025-04-30 A | 2025-05-19 A | CO-R18.S16-SW-220, PRO-R18-SW-DL-150 | 100% | 2025-04-24 | 2025-05-07 | Labor/Helper [192 h]; Skilled Labor/Surveyor [10 h]; Foreman [10 h]; Plumber [96 h]; Excavator [96 h]; Nominal bore : 200mm; Depth : 0.0m - 1.5m [7.1]; Nominal bore : 200mm; Depth : 1.5m - 2.5m [13.31]; Nominal bore : 200mm; Depth : 2.5m - 3.5m [33.31]; Nominal bore : 200mm; Depth : 3.5m - 4.5m [24.56]; Nominal bore : 200mm; Depth : 4.5m -5.5m [12.43]; Nominal bore : 200mm; Depth : 5.5m - 6.5m [15.98] | 34,189.73 | 34,189.73 | CO-R18.S16-SW-230 | 2 | 2 | ML | PL | LM | ML | SW | CON | R18 | S16 | SW | PIPE |
| CO-R18.S16-SW-240 |  | Trench Backfilling and Compaction Works for Main Lines of Sewage Network-[Road 18]-[SW-16] | 10d | 2025-05-03 A | 2025-05-17 A | CO-R18.S16-SW-230, CO-R18.S16-SW-300 FF, CO-R18.S15-SW-240 | 100% | 2025-05-18 | 2025-05-28 | Skilled Labor/Surveyor [10 h]; Foreman [10 h]; Excavator [96 h]; Nominal bore : 200mm; Depth : 0.0m - 1.5m [1.18]; Nominal bore : 200mm; Depth : 1.5m - 2.5m [2.22]; Nominal bore : 200mm; Depth : 2.5m - 3.5m [5.55]; Nominal bore : 200mm; Depth : 3.5m - 4.5m [4.09]; Nominal bore : 200mm; Depth : 4.5m -5.5m [2.07]; Nominal bore : 200mm; Depth : 5.5m - 6.5m [2.66] | 5,698.29 | 5,698.29 | CO-R18.S16-SW-240 | 2 | 2 | ML | BF | LM | ML | SW | CON | R18 | S16 | SW | BACK |
|  | 1 | **Manholes** |  | 2025-06-10 | 2025-09-17 |  |  |  |  |  |  |  |  |  |  |  |  |  |  |  |  |  |  |  |  |
| CO-R18.S16-SW-250 |  | Excavation Works for Main Line Manholes of Sewage Network-[Road 18]-[SW-16] | 1d | 2025-06-10 A | 2025-06-10 A | CO-R18.S16-SW-230 SS | 100% | 2025-04-24 | 2025-04-24 | Labor/Helper [16 h]; Skilled Labor/Surveyor [8 h]; Excavator [16 h]; Depth: 1.5 - 2.5m [0.6] | 4,298.59 | 4,298.59 | CO-R18.S16-SW-250 | 2 | 2 |  |  |  |  | SW | CON | R18 | S16 | SW | EX |
| CO-R18.S16-SW-260 |  | Installation RC Footing Works for Main Line Manholes of Sewage Network-[Road 18]-[SW-16] | 2d | 2025-06-11 A | 2025-06-12 A | CO-R18.S16-SW-250, PRO-R18-SW-DL-160 | 100% | 2025-04-26 | 2025-04-27 | Cons. Carpenter [64 h]; Steel Fixer [64 h]; Depth: 1.5 - 2.5m [0.4] | 2,865.72 | 2,865.72 | CO-R18.S16-SW-260 | 2 | 2 |  |  |  |  | SW | CON | R18 | S16 | SW | RC F |
| CO-R18.S16-SW-270 |  | Install Grp Liner Wall Works for Main Line Manholes of Sewage Network-[Road 18]-[SW-16] | 4d | 2025-06-17 A | 2025-06-22 A | CO-R18.S16-SW-260 | 100% | 2025-04-28 | 2025-05-01 | Labor/Helper [64 h]; Plumber [64 h]; Depth: 1.5 - 2.5m [1.6] | 11,462.9 | 11,462.9 | CO-R18.S16-SW-270 | 2 | 2 |  |  |  |  | SW | CON | R18 | S16 | SW | LP |
| CO-R18.S16-SW-290 |  | Backfilling Works for Main Line Manholes of Sewage Network-[Road 18]-[SW-16] | 4d | 2025-06-24 A | 2025-06-28 A | CO-R18.S16-SW-280 | 100% | 2025-05-04 | 2025-05-07 | Labor/Helper [64 h]; Skilled Labor/Surveyor [32 h]; Excavator [64 h]; Depth: 1.5 - 2.5m [0.6] | 4,298.59 | 4,298.59 | CO-R18.S16-SW-290 | 2 | 2 |  |  |  |  | SW | CON | R18 | S16 | SW | BACK |
| CO-R18.S16-SW-280 |  | Pouring Grp Liner Wall Works for Main Line Manholes of Sewage Network-[Road 18]-[SW-16] | 1d | 2025-09-16 A | 2025-09-16 A | CO-R18.S16-SW-270 | 100% | 2025-05-03 | 2025-05-03 | Cons. Carpenter [32 h]; Steel Fixer [32 h]; Depth: 1.5 - 2.5m [0.2] | 1,432.86 | 1,432.86 | CO-R18.S16-SW-280 | 2 | 2 |  |  |  |  | SW | CON | R18 | S16 | SW | (New) |
| CO-R18.S16-SW-300 |  | Testing Works for Main Line Manholes of Sewage Network-[Road 18]-[SW-16] | 1d | 2025-09-17 A | 2025-09-17 A | CO-R18.S16-SW-290 | 100% | 2025-05-08 | 2025-05-08 | Labor/Helper [16 h]; Plumber [16 h]; Depth: 1.5 - 2.5m [0.2] | 1,432.86 | 1,432.86 | CO-R18.S16-SW-300 | 2 | 2 |  |  |  |  | SW | CON | R18 | S16 | SW | T&COV |
|  | SD | **Storm Drainage Network** |  | 2025-05-01 | 2026-07-13 |  |  |  |  |  |  |  |  |  |  |  |  |  |  |  |  |  |  |  |  |
|  | ML | **Main Line Sections** |  | 2025-05-01 | 2025-06-04 |  |  |  |  |  |  |  |  |  |  |  |  |  |  |  |  |  |  |  |  |
| CO-R18.S16-SD-240 |  | Pipes Laying Works for Main Lines of Storm Drainage Network-[Road 18]-[SW-16] | 20d | 2025-05-01 A | 2025-06-02 A | CO-R18.S16-SD-230 | 100% | 2025-06-02 | 2025-06-29 | Labor/Helper [320 h]; Skilled Labor/Surveyor [16 h]; Foreman [16 h]; Plumber [160 h]; Excavator [160 h]; Pipe with diameter 400mm ; depth: 0.0m - 1.5m [146.56]; Pipe with diameter 400mm ; depth: 1.51m - 2.5m [157.39]; Pipe with diameter 500mm ; depth: 1.51m - 2.5m [367.89]; Pipe with diameter 600mm ; depth: 1.51m - 2.5m [26.57]; Pipe with diameter 700mm ; depth: 1.51m - 2.5m [46.57]; Pipe with diameter 900mm ; depth: 1.51m - 2.5m [150.32]; Pipe with diameter 900mm ; depth: 2.51 - 3.5m [34.2] | 355,472.75 | 355,472.75 | CO-R18.S16-SD-240 | 2 | 2 | ML | PL | LM | ML | SD | CON | R18 | S16 | SD | PIPE |
| CO-R18.S16-SD-230 |  | Trench Excavation and Bedding Works for Main Lines of Storm Drainage Network-[Road 18]-[SW-16] | 10d | 2025-05-03 A | 2025-05-15 A | CO-R18.S16-EW-130, CO-R18.S16-EW-120, CO-R18.S16-SW-240 SS+3d, CO-R18.S16-SW-240 FF+3d | 100% | 2025-05-21 | 2025-06-01 | Skilled Labor/Surveyor [12 h]; Foreman [12 h]; Excavator [112 h]; Pipe with diameter 400mm ; depth: 0.0m - 1.5m [48.85]; Pipe with diameter 400mm ; depth: 1.51m - 2.5m [52.46]; Pipe with diameter 500mm ; depth: 1.51m - 2.5m [75.39]; Pipe with diameter 600mm ; depth: 1.51m - 2.5m [8.86]; Pipe with diameter 700mm ; depth: 1.51m - 2.5m [15.52]; Pipe with diameter 900mm ; depth: 1.51m - 2.5m [50.11]; Pipe with diameter 900mm ; depth: 2.51 - 3.5m [11.4] | 102,759.36 | 102,759.36 | CO-R18.S16-SD-230 | 2 | 2 | ML | Ex | LM | ML | SD | CON | R18 | S16 | SD | EX |
| CO-R18.S16-SD-250 |  | Trench Backfilling and Compaction Works for Main Lines of Storm Drainage Network-[Road 18]-[SW-16] | 20d | 2025-05-19 A | 2025-06-04 A | CO-R18.S16-SD-240 SS+3d, CO-R18.S16-SD-240 FF+3d, CO-R18.S16-SD-240, CO-R18.S16-SD-340 FF, CO-R18.S15-SD-250 | 100% | 2025-07-20 | 2025-08-11 | Skilled Labor/Surveyor [16 h]; Foreman [16 h]; Excavator [160 h]; Pipe with diameter 400mm ; depth: 0.0m - 1.5m [24.26]; Pipe with diameter 600mm ; depth: 1.51m - 2.5m [4.43]; Pipe with diameter 700mm ; depth: 1.51m - 2.5m [7.76]; Pipe with diameter 900mm ; depth: 1.51m - 2.5m [24.85]; Pipe with diameter 900mm ; depth: 2.51 - 3.5m [5.7] | 31,431.11 | 31,431.11 | CO-R18.S16-SD-250 | 2 | 2 | ML | BF | LM | ML | SD | CON | R18 | S16 | SD | BACK |

| ID | WBS | Activity | Duration | Start | Finish | Predecessors | Complete | Planned start | Planned finish | Total float | Free float | Resources | Cost | Actual cost | Activity ID N | Seq | New Seq | 01- Network | 07-Weightage System | 08 Stage | 09 Roads | 10 side Walk | Discipline | 02- Network-WBS | 03- Activity | 04-UOM | 05-Discipline |
| --- | --- | --- | --- | --- | --- | --- | --- | --- | --- | --- | --- | --- | --- | --- | --- | --- | --- | --- | --- | --- | --- | --- | --- | --- | --- | --- | --- |
|  | MH | **Manholes** |  | 2025-06-01 | 2026-07-13 |  |  |  |  |  |  |  |  |  |  |  |  |  |  |  |  |  |  |  |  |  |  |
| CO-R18.S16-SD-300 |  | Trench Excavation and Bedding Works for Manholes of Storm Drainage Network-[Road 18]-[SW-16] | 1d | 2025-06-01 A | 2025-06-02 A | CO-R18.S16-SD-240 SS | 100% | 2025-06-02 | 2025-06-02 |  |  | Labor/Helper [24 h]; Skilled Labor/Surveyor [12 h]; Excavator [24 h]; MH ; depth: 0.0m - 1.5m [0.15]; MH ; depth: 1.51m - 2.5m [0.3]; MH ; depth: 1.51m - 2.5m [0.15]; MH ; depth: 2.51 - 3.5m [0.3] | 14,677.22 | 14,677.22 | CO-R18.S16-SD-300 | 2 | 2 | SD | EX | CON | R18 | S16 | SD |  |  |  |  |
| CO-R18.S16-SD-310 |  | Install RC Footing Works for Manholes of Storm Drainage Network-[Road 18]-[SW-16] | 1d | 2025-06-02 A | 2025-06-03 A | CO-R18.S16-SD-300 | 100% | 2025-06-03 | 2025-06-03 |  |  | Cons. Carpenter [48 h]; Steel Fixer [48 h]; MH ; depth: 0.0m - 1.5m [0.05]; MH ; depth: 1.51m - 2.5m [0.1]; MH ; depth: 1.51m - 2.5m [0.05]; MH ; depth: 2.51 - 3.5m [0.1] | 4,892.41 | 4,892.41 | CO-R18.S16-SD-310 | 2 | 2 | SD | RC F | CON | R18 | S16 | SD |  |  |  |  |
| CO-R18.S16-SD-320 |  | Install RC Wall Rings & Slab Works for Manholes of Storm Drainage Network-[Road 18]-[SW-16] | 4d | 2025-06-03 A | 2025-06-04 A | CO-R18.S16-SD-310 | 100% | 2025-06-04 | 2025-06-12 |  |  | Cons. Carpenter [192 h]; Steel Fixer [192 h]; MH ; depth: 0.0m - 1.5m [0.45]; MH ; depth: 1.51m - 2.5m [0.9]; MH ; depth: 1.51m - 2.5m [0.45]; MH ; depth: 2.51 - 3.5m [0.9] | 44,031.66 | 44,031.66 | CO-R18.S16-SD-320 | 2 | 2 | SD | RC W | CON | R18 | S16 | SD |  |  |  |  |
| CO-R18.S16-SD-340 |  | Backfilling Works for Manholes of Storm Drainage Network-[Road 18]-[SW-16] | 7d | 2025-06-11 A | 2025-06-14 A | CO-R18.S16-SD-330 | 100% | 2025-06-15 | 2025-06-22 |  |  | Labor/Helper [168 h]; Skilled Labor/Surveyor [84 h]; Excavator [168 h]; MH ; depth: 0.0m - 1.5m [0.2]; MH ; depth: 1.51m - 2.5m [0.4]; MH ; depth: 1.51m - 2.5m [0.2]; MH ; depth: 2.51 - 3.5m [0.4] | 19,569.63 | 19,569.63 | CO-R18.S16-SD-340 | 2 | 2 | SD | BACK | CON | R18 | S16 | SD |  |  |  |  |
| CO-R18.S16-SD-330 |  | Testing Works for Manholes of Storm Drainage Network-[Road 18]-[SW-16] | 1d | 2026-06-04 A | 2026-07-13 A | CO-R18.S16-SD-320 | 100% | 2025-06-14 | 2025-06-14 |  |  | Labor/Helper [24 h]; Plumber [24 h]; MH ; depth: 0.0m - 1.5m [0.1]; MH ; depth: 1.51m - 2.5m [0.2]; MH ; depth: 1.51m - 2.5m [0.1]; MH ; depth: 2.51 - 3.5m [0.2] | 9,784.81 | 9,784.81 | CO-R18.S16-SD-330 | 2 | 2 | SD | T&COV | CON | R18 | S16 | SD |  |  |  |  |
|  | CB | **Catch Basin Sections** |  | 2025-06-10 | 2026-07-13 |  |  |  |  |  |  |  |  |  |  |  |  |  |  |  |  |  |  |  |  |  |  |
| CO-R18.S16-SD-260 |  | Trench Excavation and Bedding Works for Catch Basins of Storm Drainage Network-[Road 18]-[SW-16] | 6d | 2025-06-10 A | 2025-06-12 A | CO-R18.S16-EW-130, CO-R18.S16-SD-340 | 100% | 2025-06-23 | 2025-06-29 |  |  | Skilled Labor/Surveyor [5 h]; Foreman [5 h]; Excavator [48 h]; Pipe with diameter 300mm ; depth: 0 - 1.5m [36.39]; Pipe with diameter 400mm ; depth: 0 - 1.5m [2.22] | 8,974.22 | 8,974.22 | CO-R18.S16-SD-260 | 2 | 2 | SD | EX | CON | R18 | S16 | SD | CB | Ex | Each | CB |
| CO-R18.S16-SD-290 |  | Trench Backfilling and Compaction Works for Catch Basins of Storm Drainage Network-[Road 18]-[SW-16] | 7d | 2025-06-15 A | 2025-06-23 A | CO-R18.S16-SD-280 | 100% | 2025-07-19 | 2025-07-26 |  |  | Skilled Labor/Surveyor [6 h]; Foreman [6 h]; Excavator [56 h]; Pipe with diameter 300mm ; depth: 0 - 1.5m [48.52]; Pipe with diameter 400mm ; depth: 0 - 1.5m [2.96] | 11,965.42 | 11,965.42 | CO-R18.S16-SD-290 | 2 | 2 | SD | BACK | CON | R18 | S16 | SD | CB | BF | Each | CB |
| CO-R18.S16-SD-270 |  | Installation and Pipes Laying Connection Works for Catch Basins of Storm Drainage Network-[Road 18]-[SW-16] | 7d | 2025-06-17 A | 2025-06-22 A | CO-R18.S16-SD-260, CO-R18.S15-SD-270 | 100% | 2025-07-06 | 2025-07-13 |  |  | Labor/Helper [224 h]; Skilled Labor/Surveyor [12 h]; Foreman [12 h]; Excavator [112 h]; Pipe with diameter 300mm ; depth: 0 - 1.5m [109.18]; Pipe with diameter 400mm ; depth: 0 - 1.5m [6.66] | 26,922.36 | 26,922.36 | CO-R18.S16-SD-270 | 2 | 2 | SD | INSTALL | CON | R18 | S16 | SD | CB | CB | Each | CB |
| CO-R18.S16-SD-280 |  | Testing Works for Catch Basins of Storm Drainage Network-[Road 18]-[SW-16] | 4d | 2026-06-04 A | 2026-07-13 A | CO-R18.S16-SD-270, CO-R18.S16-SD-240 | 100% | 2025-07-14 | 2025-07-17 |  |  | Labor/Helper [64 h]; Skilled Labor/Surveyor [4 h]; Foreman [4 h]; Plumber [32 h]; Excavator [32 h]; Pipe with diameter 300mm ; depth: 0 - 1.5m [24.26]; Pipe with diameter 400mm ; depth: 0 - 1.5m [1.48] | 5,982.71 | 5,982.71 | CO-R18.S16-SD-280 | 2 | 2 | SD | TEST | CON | R18 | S16 | SD | CB | PL | Each | CB |
|  | SL | **Street Lighting Network** |  | 2025-07-08 | 2026-11-29 |  |  |  |  |  |  |  |  |  |  |  |  |  |  |  |  |  |  |  |  |  |  |
|  | LP | **Lighting Poles Works** |  | 2025-07-08 | 2026-11-29 |  |  |  |  |  |  |  |  |  |  |  |  |  |  |  |  |  |  |  |  |  |  |
| CO-R18.S16-SL-100 |  | Foundation Excavation Works for Lighting Poles of Street Lighting Network-[Road 18]-[SW-16] | 12d | 2025-07-08 A | 2025-07-10 A | CO-R18.S15-IR-140 SS+3d, CO-R18.S15-IR-170, CO-R18.S16-EW-120, CO-R18.S16-EW-130, ENG-MS-SL-A-110, ENG-SH-SL-A-110, PRO-SL-1DL-110 | 100% | 2025-08-30 | 2025-09-11 |  |  | Lighting poles with one arm, including the power distribution box, screws, cables, 12 meters in height. [1.05] | 1,998.64 | 1,998.64 | CO-R11.S07-SL-100 | 2 | 2 | SL | EX | CON | R16 | S16 | SL | LP | Ex | Each | POL |
| CO-R18.S16-SL-110 |  | Installation Works for Lighting Poles Foundation of Street Lighting Network-[Road 18]-[SW-16] | 12d | 2025-07-11 A | 2025-07-13 A | CO-R18.S16-SL-100, PRO-R18-SL-DL-190 FF+3d | 100% | 2025-09-13 | 2025-09-27 |  |  | Reinforced concrete foundation, for 12m high lighting columns With Drawpits [21] | 7,640.01 | 7,640.01 | CO-R11.S07-SL-110 | 2 | 2 | SL | INSTALL | CON | R16 | S16 | SL | LP | LPF | Each | POL |
| CO-R18.S16-SL-120 |  | Installation Works for Lighting Poles of Street Lighting Network-[Road 18]-[SW-16] | 17.5d | 2025-09-10 A | 2025-09-10 A | CO-R18.S16-SL-110, CO-R18.S16-SL-160, PRO-R18-SL-DL-200 FF+3d | 100% | 2025-11-02 | 2025-11-22 |  |  | Lighting poles with one arm, including the power distribution box, screws, cables, 12 meters in height. [11.55] | 21,985.08 | 21,985.08 | CO-R11.S07-SL-120 | 2 | 2 | SL | POLES | CON | R16 | S16 | SL | LP | LP | Each | POL |
| CO-R18.S16-SL-210 |  | Backfilling Works for Lighting Poles of Street Lighting Network-[Road 18]-[SW-16] | 12d | 2025-09-10 A | 2025-09-10 A | CO-R18.S16-SL-120 SS, CO-R18.S16-SL-120 FF | 100% | 2025-11-08 | 2025-11-22 |  |  | Lighting poles with one arm, including the power distribution box, screws, cables, 12 meters in height. [4.2] | 7,994.57 | 7,994.57 | CO-R11.S07-SL-210 | 2 | 2 | SL | BACK | CON | R16 | S16 | SL |  |  |  |  |
| CO-R18.S16-SL-200 |  | Testing Works for Lighting Poles of Street Lighting Network-[Road 18]-[SW-16] | 5d | 2026-10-27 | 2026-11-01 | CO-R18.S16-SL-210, CO-R18.S16-SL-120 |  |  |  | -26.25d | 24d | Lighting poles with one arm, including the power distribution box, screws, cables, 12 meters in height. [4.2] | 7,994.57 |  | CO-R11.S07-SL-200 | 2 | 2 | SL | TESTING | CON | R16 | S16 | SL |  |  |  |  |
| CO-R18.S16-SL-130 |  | Installation Works for Lighting Fixtures With Drop Wire of Street Lighting Network-[Road 18]-[SW-16] | 18d | 2026-11-09 | 2026-11-29 | CO-R18.S16-SL-120 SS+5d, CO-R18.S16-SL-120 FF+5d, CO-R18.S16-SL-200 FF, PRO-R18-SL-DL-220 FF+3d |  |  |  | -50.25d | 73d | Street Lighting( LED) Luminaire,(Type C) complete with control gear and lamp, ?.17000 Lumen [21] | 12,578.58 |  | CO-R11.S07-SL-130 | 2 | 2 | SL | INSTALL | CON | R16 | S16 | SL | LP | LPA | Each | POL |
|  | CW | **Cabling Works** |  | 2025-07-14 | 2025-07-21 |  |  |  |  |  |  |  |  |  |  |  |  |  |  |  |  |  |  |  |  |  |  |
| CO-R18.S16-SL-140 |  | Trench Excavation and Bedding Works for Street Lighting Network-[Road 18]-[SW-16] | 10d | 2025-07-14 A | 2025-07-16 A | CO-R18.S16-SL-110 | 100% | 2025-09-28 | 2025-10-08 |  |  |  |  |  | CO-R11.S07-SL-140 | 2 | 2 | SL | EXC | CON | R16 | S16 | SL | CW | Ex | LM | CB |
| CO-R18.S16-SL-150 |  | Cable Laying Works for Street Lighting Network-[Road 18]-[SW-16] | 10d | 2025-07-17 A | 2025-07-18 A | CO-R18.S16-SL-140, PRO-R18-SL-DL-180 FF+3d | 100% | 2025-10-09 | 2025-10-20 |  |  | Supply, installation , test and operation of cables, Copper, (4Cx25mmï¿½,Cu/XLPE/SWA/PVC +1x16mmï¿½ PVC/PVC) [805.35] | 37,770.92 | 37,770.92 | CO-R11.S07-SL-150 | 2 | 2 | SL | LAYING | CON | R16 | S16 | SL | CW | CL | LM | CB |
| CO-R18.S16-SL-160 |  | Trench Backfilling and Compaction Works for Street Lighting Network-[Road 18]-[SW-16] | 10d | 2025-07-19 A | 2025-07-21 A | CO-R18.S16-SL-150 | 100% | 2025-10-21 | 2025-11-01 |  |  | Supply, installation , test and operation of cables, Copper, (4Cx25mmï¿½,Cu/XLPE/SWA/PVC +1x16mmï¿½ PVC/PVC) [61.95] | 2,905.45 | 2,905.45 | CO-R11.S07-SL-160 | 2 | 2 | SL | BACK | CON | R16 | S16 | SL | CW | BF | LM | CB |
|  | DPB | **Distrubution Panel Boards** |  | 2026-10-27 | 2026-11-23 |  |  |  |  |  |  |  |  |  |  |  |  |  |  |  |  |  |  |  |  |  |  |
| CO-R18.S16-SL-170 |  | Foundation Excavation Works For Panel Boards of Street Lighting Network-[Road 18]-[SW-16] | 18d | 2026-10-27 | 2026-11-16 | CO-R18.S16-EW-130, ENG-MS-SL-A-110, ENG-SH-SL-A-110 |  |  |  | -47d | 0d |  |  |  | CO-R11.S07-SL-170 | 2 | 2 | SL | EXC | CON | R16 | S16 | SL | DB | Ex | Each | DS |
| CO-R18.S16-SL-180 |  | Installation Works for Panel Board Concrete Foundations of Street Lighting Network-[Road 18]-[SW-16] | 18d | 2026-10-31 | 2026-11-19 | CO-R18.S16-SL-170 SS+3d, CO-R18.S16-SL-170 FF+3d |  |  |  | -47d | 0d |  |  |  | CO-R11.S07-SL-180 | 2 | 2 | SL | INSTALL | CON | R16 | S16 | SL | DB | PBF | Each | DS |
| CO-R18.S16-SL-220 |  | A wall of concrete blocks to install the KWH meter of Street Lighting Network-[Road 18]-[SW-16] | 18d | 2026-10-31 | 2026-11-19 | CO-R18.S16-SL-180 SS, CO-R18.S16-SL-180 FF |  |  |  | -44d | 150.25d | Road crossing ducts, 4 way (4 x 100mm PVC) [46.02]; Drawpit with medium duty steel cover, size 900x900x1200mm, Type 4 [4] | 15,936.47 |  | CO-R11.S07-SL-220 | 2 | 2 | SL | wall | CON | R16 | S16 | SL | DB |  | Each | DS |
| CO-R18.S16-SL-190 |  | Installation Works for Lighting Panel Boards of Street Lighting Network-[Road 18]-[SW-16] | 18d | 2026-11-03 | 2026-11-23 | CO-R18.S16-SL-180 SS+3d, CO-R18.S16-SL-180 FF+3d |  |  |  | -47d | 147.25d |  |  |  | CO-R11.S07-SL-190 | 2 | 2 | SL | INST BO | CON | R16 | S16 | SL | DB | PB | Each | DS |

| ID | WBS | Activity | Duration | Start | Finish | Predecessors | Complete | Planned start | Planned finish | Total float | Free float | Resources | Cost | Actual cost | Activity ID N | Seq | New Seq | 02- Network-WBS | 03- Activity | 04-UOM | 05-Discipline | 01- Network | 07-Weightage System | 08 Stage | 09 Roads | 10 side Walk | Discipline |
| --- | --- | --- | --- | --- | --- | --- | --- | --- | --- | --- | --- | --- | --- | --- | --- | --- | --- | --- | --- | --- | --- | --- | --- | --- | --- | --- | --- |
|  | PW | **Potable Water Network** |  | 2025-06-19 | 2026-11-16 |  |  |  |  |  |  |  |  |  |  |  |  |  |  |  |  |  |  |  |  |  |  |
|  | ML | **Main Line Sections** |  | 2025-06-19 | 2025-07-07 |  |  |  |  |  |  |  |  |  |  |  |  |  |  |  |  |  |  |  |  |  |  |
| CO-R18.S16-PW-230 |  | Trench Excavation and Bedding Works for Main Lines of Potable Water Network-[Road 18]-[SW-16] | 6d | 2025-06-19 A | 2025-07-07 A | CO-R18.S16-EW-130, CO-R18.S16-EW-120, CO-R18.S16-SW-240, CO-R18.S16-SD-250 | 100% | 2025-08-12 | 2025-08-18 |  |  | Skilled Labor/Surveyor [5 h]; Foreman [5 h]; Excavator [48 h]; Pipe with diameter 200mm; in depth 0.0m - 1.5m [141.22] | 20,531.39 | 20,531.39 | CO-R18.S16-PW-230 | 2 | 2 | ML | Ex | LM | ML | PW | EX | CON | R18 | S16 | PW |
| CO-R18.S16-PW-240 |  | Pipes Laying and accessories for Main Lines of Potable Water Network-[Road 18]-[SW-16] | 5.75d | 2025-06-21 A | 2025-07-07 A | CO-R18.S16-PW-230, PRO-R18-PW-DL-150 FF+3d, PRO-R18-PW-DL-140 FF+3d | 100% | 2025-08-19 | 2025-08-25 |  |  | Labor/Helper [92 h]; Skilled Labor/Surveyor [5 h]; Foreman [5 h]; Plumber [46 h]; Excavator [46 h]; Pipe with diameter 200mm; in depth 0.0m - 1.5m [353.04] | 51,328.49 | 51,328.49 | CO-R18.S16-PW-240 | 2 | 2 | ML | PL | LM | ML | PW | PIPE | CON | R18 | S16 | PW |
| CO-R18.S16-PW-280 |  | Trench Backfilling and Compaction Works for Main Lines of Potable Water Network-[Road 18]-[SW-16] | 6d | 2025-06-22 A | 2025-07-07 A | CO-R18.S16-PW-240 SS+3d, CO-R18.S16-PW-240 FF+3d | 100% | 2025-08-25 | 2025-09-01 |  |  | Skilled Labor/Surveyor [5 h]; Foreman [5 h]; Eq. Operator [5 h]; Loader [48 h]; Compactor [48 h]; Water Tank [12 h]; Pipe with diameter 200mm; in depth 0.0m - 1.5m [141.22] | 20,531.39 | 20,531.39 | CO-R18.S16-PW-280 | 2 | 2 | ML | BF | LM | ML | PW | BACK | CON | R18 | S16 | PW |
|  | VC | **Valve Chamber** |  | 2026-10-27 | 2026-11-02 |  |  |  |  |  |  |  |  |  |  |  |  |  |  |  |  |  |  |  |  |  |  |
| CO-R18.S16-PW-330 |  | Installation Works for Main Line Valves and Valve Chambers of Potable Water Network-[Road 18]-[SW-16] | 6d | 2026-10-27 | 2026-11-02 | CO-R18.S16-PW-240 |  |  |  | 14d | 194d | Labor/Helper [16 h]; Plumber [16 h]; Gate valves dia(200)mm on pipes with dia (200) mm. [7] | 18,534.88 |  | CO-R18.S16-PW-330 | 2 | 2 | ML | VI | Each | ML | PW | INSUL | CON | R18 | S16 | PW |
|  | FH | **Fire Hydrant** |  | 2026-10-27 | 2026-11-16 |  |  |  |  |  |  |  |  |  |  |  |  |  |  |  |  |  |  |  |  |  |  |
| CO-R18.S16-PW-250 |  | Excavation Works for Fire Hydrants of Potable Water Network-[Road 18]-[SW-16] | 6d | 2026-10-27 | 2026-11-02 | CO-R18.S16-PW-240 SS+3d, CO-R18.S16-PW-240 FF+3d, CO-R18.S16-EW-130, CO-R18.S16-SW-240 SS+3d, CO-R18.S16-SW-240 FF+3d |  |  |  | 36d | 0d | Skilled Labor/Surveyor [5 h]; Foreman [5 h]; Excavator [48 h]; 3-outlet fire hydrant (2 x 2.5 inch and 1 x 4 inch) in the form of a separate dry vacuum cylinder [0.3] | 2,272.3 |  | CO-R18.S16-PW-250 | 2 | 2 | FH | Ex | Each | FH | PW | EX | CON | R18 | S16 | PW |
| CO-R18.S16-PW-260 |  | Installation Works for Fire Hydrant of Potable Water Network-[Road 18]-[SW-16] | 6d | 2026-11-03 | 2026-11-09 | CO-R18.S16-PW-250, PRO-R18-PW-DL-160 FF+3d |  |  |  | 36d | 0d | Labor/Helper [96 h]; Skilled Labor/Surveyor [5 h]; Foreman [5 h]; Plumber [96 h]; 3-outlet fire hydrant (2 x 2.5 inch and 1 x 4 inch) in the form of a separate dry vacuum cylinder [1.3] | 9,846.66 |  | CO-R18.S16-PW-260 | 2 | 2 | FH | FH | Each | FH | PW | INSTALL | CON | R18 | S16 | PW |
| CO-R18.S16-PW-270 |  | Trench Backfilling and Compaction Works for Fire Hydrants of Potable Water Network-[Road 18]-[SW-16] | 6d | 2026-11-10 | 2026-11-16 | CO-R18.S16-PW-260 |  |  |  | 36d | 231.5d | Skilled Labor/Surveyor [5 h]; Foreman [5 h]; Excavator [48 h]; 3-outlet fire hydrant (2 x 2.5 inch and 1 x 4 inch) in the form of a separate dry vacuum cylinder [0.4] | 3,029.74 |  | CO-R18.S16-PW-270 | 2 | 2 | FH | BF | Each | FH | PW | BACK | CON | R18 | S16 | PW |
|  | TE | **Telecom Network** |  | 2025-07-11 | 2025-07-31 |  |  |  |  |  |  |  |  |  |  |  |  |  |  |  |  |  |  |  |  |  |  |
|  | PD | **Ducts Works** |  | 2025-07-11 | 2025-07-21 |  |  |  |  |  |  |  |  |  |  |  |  |  |  |  |  |  |  |  |  |  |  |
| CO-R18.S16-TE-170 |  | Trench Excavation and Bedding Works for Ducts of Telecom Network-[Road 18]-[SW-16] | 7d | 2025-07-11 A | 2025-07-13 A | CO-R18.S16-EW-130, CO-R18.S16-SL-160 SS+5d, CO-R18.S16-SL-160 FF+5d, CO-R18.S15-TE-170 | 100% | 2025-10-30 | 2025-11-06 |  |  | Skilled Labor/Surveyor [6 h]; Foreman [6 h]; Excavator [56 h]; 6-way ducts, 50mm dia. HDPE [19]; Road crossing ducts (6-way) [2] | 2,881 | 2,881 | CO-R18.S16-TE-170 | 2 | 2 | PD | Ex | LM | DC | TE | DUCTS | CON | R18 | S16 | TE |
| CO-R18.S16-TE-180 |  | Pipes Laying Works for Ducts of Telecom Network-[Road 18]-[SW-16] | 7d | 2025-07-14 A | 2025-07-17 A | CO-R18.S16-TE-170 | 100% | 2025-11-08 | 2025-11-15 |  |  | Labor/Helper [112 h]; Skilled Labor/Surveyor [6 h]; Foreman [6 h]; Plumber [56 h]; Excavator [56 h]; JCB [28 h]; Truck [56 h]; 6-way ducts, 50mm dia. HDPE [115]; Road crossing ducts (6-way) [10] | 17,085 | 17,085 | CO-R18.S16-TE-180 | 2 | 2 | PD | PL | LM | DC | TE | DUCTS | CON | R18 | S16 | TE |
| CO-R18.S16-TE-230 |  | Pouring Plain Concrete Above Ducts of Telecom Network-[Road 18]-[SW-16] | 7d | 2025-07-18 A | 2025-07-18 A | CO-R18.S16-TE-180 | 100% | 2025-11-16 | 2025-11-23 |  |  | Skilled Labor/Surveyor [6 h]; Foreman [6 h]; Cons. Carpenter [112 h]; Block Mason [56 h]; 6-way ducts, 50mm dia. HDPE [19]; Road crossing ducts (6-way) [2] | 2,881 | 2,881 | CO-R18.S16-TE-230 | 2 | 2 | PD | PC | LM | DC | TE | DUCTS | CON | R18 | S16 | TE |
| CO-R18.S16-TE-190 |  | Trench Backfilling and Compaction Works for Ducts of Telecom Network-[Road 18]-[SW-16] | 7d | 2025-07-19 A | 2025-07-21 A | CO-R18.S16-TE-230 | 100% | 2025-11-24 | 2025-12-01 |  |  | Skilled Labor/Surveyor [6 h]; Foreman [6 h]; Excavator [56 h]; 6-way ducts, 50mm dia. HDPE [38]; Road crossing ducts (6-way) [3] | 5,594.5 | 5,594.5 | CO-R18.S16-TE-190 | 2 | 2 | PD | BF | LM | DC | TE | DUCTS | CON | R18 | S16 | TE |
|  | MH | **Manholes Works** |  | 2025-07-23 | 2025-07-31 |  |  |  |  |  |  |  |  |  |  |  |  |  |  |  |  |  |  |  |  |  |  |
| CO-R18.S16-TE-200 |  | Excavation Works for Manholes of Telecom Network-[Road 18]-[SW-16] | 7d | 2025-07-23 A | 2025-07-24 A | CO-R18.S15-TE-200, CO-R18.S16-TE-170 | 100% | 2025-11-08 | 2025-11-15 |  |  | Skilled Labor/Surveyor [6 h]; Foreman [6 h]; Excavator [56 h]; Manhole Type 2 (2000x1000x1000) [0.4]; Manhole Type 3 (2000x1000x1000) [0.2] | 1,890.61 | 1,890.61 | CO-R18.S16-TE-200 | 2 | 2 | MH | Ex | Each | MNH | TE | EXC | CON | R18 | S16 | TE |
| CO-R18.S16-TE-210 |  | Installation Works for Manholes of Telecom Network-[Road 18]-[SW-16] | 7d | 2025-07-26 A | 2025-07-28 A | CO-R18.S16-TE-200 | 100% | 2025-11-16 | 2025-11-23 |  |  | Skilled Labor/Surveyor [6 h]; Foreman [6 h]; Excavator [56 h]; Manhole Type 1 (2000x1000x1000) [1]; Manhole Type 2 (2000x1000x1000) [1.2]; Manhole Type 3 (2000x1000x1000) [0.6] | 8,787.99 | 8,787.99 | CO-R18.S16-TE-210 | 2 | 2 | MH | HH | Each | MNH | TE | INSTALL-1 | CON | R18 | S16 | TE |
| CO-R18.S16-TE-220 |  | Backfilling Works for Manholes of Telecom Network-[Road 18]-[SW-16] | 7d | 2025-07-29 A | 2025-07-31 A | CO-R18.S16-TE-210 | 100% | 2025-11-24 | 2025-12-01 |  |  | Skilled Labor/Surveyor [6 h]; Foreman [6 h]; Excavator [56 h]; Manhole Type 2 (2000x1000x1000) [0.4]; Manhole Type 3 (2000x1000x1000) [0.2] | 1,890.61 | 1,890.61 | CO-R18.S16-TE-220 | 2 | 2 | MH | BF | Each | MNH | TE | (New)-2 | CON | R18 | S16 | TE |
|  | RD | **Road Works** |  | 2025-07-10 | 2026-09-01 |  |  |  |  |  |  |  |  |  |  |  |  |  |  |  |  |  |  |  |  |  |  |
|  | RD | **Pre-Bituminous Construction** |  | 2025-07-10 | 2025-08-31 |  |  |  |  |  |  |  |  |  |  |  |  |  |  |  |  |  |  |  |  |  |  |
| CO-R18.S16-RD-P-160 |  | Capping and Subgrade Layer for Road Works-[Road 18]-[SW-16] | 18d | 2025-07-10 A | 2025-07-21 A | CO-R18.S16-SD-250, CO-R18.S16-SW-240, CO-R18.S16-PW-280, CO-R18.S16-TE-190, CO-R18.S16-TE-220, CO-R18.S16-SL-160 SS+3d, CO-R18.S16-SL-160 FF+3d | 100% | 2025-12-02 | 2025-12-22 |  |  | Labor/Helper [288 h]; Skilled Labor/Surveyor [144 h]; Loader [144 h]; Grader [144 h]; Road Roller [144 h]; Water Tank [144 h]; 300mm capping layer underneath subgrade , CBR?15% [1459.58]; 300mm thick Subgrade, including subgrade preparation, CBR?25% [1459.58] | 113,263.41 | 113,263.41 | CO-R18.S16-RD-P-160 | 2 | 2 | AB | SG | Sq.m | BS | RD |  | CON | R18 | S16 | RD |
| CO-R18.S16-RD-P-170 |  | Aggregate Base Course Layer for Road Works-[Road 18]-[SW-16] | 18d | 2025-08-27 A | 2025-08-31 A | CO-R18.S16-RD-P-160 SS+3d, CO-R18.S16-RD-P-160 FF+3d, CO-R18.S16-SD-290 SS+3d, CO-R18.S16-SD-290 FF+3d | 100% | 2025-12-06 | 2025-12-25 |  |  | Labor/Helper [288 h]; Skilled Labor/Surveyor [144 h]; Foreman [144 h]; Loader [144 h]; Grader [144 h]; Road Roller [144 h]; Aggregate base course 200mm thick after compaction in two layers(Grading 1); CBR?80%; including watering, compaction and testing [973.16] | 78,894.08 | 78,894.08 | CO-R18.S16-RD-P-170 | 2 | 2 | AB | BA | Sq.m | BS | RD |  | CON | R18 | S16 | RD |

| ID | WBS | Activity | Duration | Start | Finish | Predecessors | Complete | Remaining | Planned start | Planned finish | Total float | Free float | Resources | Cost | Actual cost | Activity ID N | Seq | New Seq | 02- Network-WBS | 03- Activity | 04-UOM | 05-Discipline | 01- Network | 08 Stage | 09 Roads | 10 side Walk | Discipline | 07-Weightage System | 05number |
| --- | --- | --- | --- | --- | --- | --- | --- | --- | --- | --- | --- | --- | --- | --- | --- | --- | --- | --- | --- | --- | --- | --- | --- | --- | --- | --- | --- | --- | --- |
|  | LS | **Pavement Works** |  | 2026-08-25 | 2026-09-01 |  |  |  |  |  |  |  |  |  |  |  |  |  |  |  |  |  |  |  |  |  |  |  |  |
| CO-R18.S16-RD-P-140 |  | Fixing of Curbstone for Sidewalks Pavement-[Road 18]-[SW-16] | 18d | 2026-08-25 A | 2026-08-31 A | CO-R18.S16-RD-P-170 SS+3d, CO-R18.S16-RD-P-170 FF+3d | 100% |  | 2025-12-09 | 2025-12-29 |  |  | Labor/Helper [288 h]; Block Mason [864 h]; Precast Concrete Kerb, Type K1 [538.5]; Precast Concrete Kerb, Type L1 [1068.46] | 64,599.79 | 64,599.79 | CO-R18.S16-RD-P-140 | 2 | 2 | LS | CR | LM | LAND | RD | CON | R18 | S16 | RD |  |  |
| CO-R18.S16-RD-P-150 |  | Fixing of Interlock Tiles for Sidewalks Pavement-[Road 18]-[SW-16] | 18d | 2026-08-25 A | 2026-09-01 A | CO-R18.S16-RD-P-140 SS+3d, CO-R18.S16-RD-P-140 FF+3d | 100% |  | 2025-12-13 | 2026-01-01 |  |  | Labor/Helper [288 h]; Block Mason [864 h]; Interlocking block pavers for sidewalk/footpath 60mm thick on and including 30mm Sand Bedding, 200mm Aggregate subbase, all in accordance with authority standards and complete as per specifications [961.62]; Extraover for Pedestrian ramps [3] | 46,416.53 | 46,416.53 | CO-R18.S16-RD-P-150 | 2 | 2 | LS | IL | Sq.m | LAND | RD | CON | R18 | S16 | RD |  |  |
|  | 3 | **Finishes for Infrastructure Networks** |  | 2025-09-20 | 2027-08-24 |  |  |  |  |  |  |  |  |  |  |  |  |  |  |  |  |  |  |  |  |  |  |  |  |
|  | 1 | **Phase 2 Block "J"** |  | 2025-09-20 | 2027-08-24 |  |  |  |  |  |  |  |  |  |  |  |  |  |  |  |  |  |  |  |  |  |  |  |  |
|  | 2 | **Road 09 Local 2 ( 2278 LM )** |  | 2026-06-01 | 2027-08-07 |  |  |  |  |  |  |  |  |  |  |  |  |  |  |  |  |  |  |  |  |  |  |  |  |
|  | 10 | **Sewage Network** |  | 2026-06-01 | 2027-03-22 |  |  |  |  |  |  |  |  |  |  |  |  |  |  |  |  |  |  |  |  |  |  |  |  |
|  | TF | **Testing and Finishes** |  | 2026-06-01 | 2027-03-22 |  |  |  |  |  |  |  |  |  |  |  |  |  |  |  |  |  |  |  |  |  |  |  |  |
| CO-R09-SW-TF-100 |  | Final Testing For Main Line of Sewage Network-[Road 09] | 12d | 2026-06-01 A | 2027-03-01 | CO-R09.S01-SW-130, CO-R09.S01-RD-P-100 FF+3d, CO-R09.S02-RD-P-100 FF+3d, CO-R09.S02-PW-160 FF+3d, CO-R09.S02-TE-130 FF+3d, CO-R09.S02-TE-160 FF+3d | 95% | 2d | 2026-07-19 | 2026-08-01 | -180d | 0d | Labor/Helper [576 h]; Plumber [576 h]; Pipe Fitter [576 h]; Nominal bore : 160mm; Depth : 1.5m - 2.5m [20]; Nominal bore : 200mm; Depth : 0.0m - 1.5m [11.34]; Nominal bore : 200mm; Depth : 1.5m - 2.5m [30.16]; Nominal bore : 200mm; Depth : 2.5m - 3.5m [44.14]; Nominal bore : 200mm; Depth : 3.5m - 4.5m [51.17]; Nominal bore : 200mm; Depth : 4.5m -5.5m [25.61]; Nominal bore : 200mm; Depth : 5.5m - 6.5m [33.06]; Nominal bore : 250mm; Depth : 4.5m -5.5m [22]; Nominal bore : 250mm; Depth : 5.5m - 6.5m [18]; Nominal bore : 315mm; Depth : 4.5m -5.5m [18]; Nominal bore : 315mm; Depth : 6.5m - 7.5m [20]; Depth : 6.5 -7.5m [25]; Depth :more than 7.5m [60] | 208,794.34 | 198,354.62 | CO-R09-SW-TF-100 |  |  | TF | Test | Each | TF | SW | CON | R09 |  | SW | TEST |  |
| CO-R09-SW-TF-110 |  | Install Manhole Cover Works for External Finishes of Sewage Network-[Road 09] | 12d | 2027-03-02 | 2027-03-18 | PRO-SW-1DL-120, PRO-R09-SW-DL-120 FF+3d, CO-R09-SW-TF-100, CO-R09.S01-RD-P-100, CO-R09.S01-SW-120, ENG-SH-SW-ML-A-110, ENG-SH-SW-ML-A-110 FF, ENG-MS-SW-ML-A-110, ENG-MS-SW-ML-A-110 FF |  |  |  |  | -142d | 0d | Labor/Helper [96 h]; Plumber [96 h]; Pipe Fitter [96 h]; Depth: 1.5 - 2.5m [0.4]; Depth: 3.5 - 4.5m [0.1]; Depth: 4.5 - 5.5m [0.15]; Depth:6.5 - 7.5m [0.35]; Depth: more than 7.5m [0.1]; Depth: 2.5 - 3.5m [0.25]; Depth: 3.5 - 4.5m [0.15]; Depth: 4.5 - 5.5m [0.1]; Depth: 5.5 - 6.5m [0.1] | 40,551.52 |  | CO-R09-SW-TF-110 |  |  | TF | Test | Each | TF | SW | CON | R09 |  | SW |  |  |
| CO-R09-SW-TF-120 |  | Main Manhole Internal Finishes (Benching + Insulation) of Sewage Network-[Road 09] | 12d | 2027-03-06 | 2027-03-22 | CO-R09-SW-TF-110 SS+3d, CO-R09-SW-TF-110 FF+3d, PRO-SW-1DL-140, PRO-R09-SW-DL-130 FF+3d |  |  |  |  | -142d | 0d | Labor/Helper [96 h]; Plumber [96 h]; Pipe Fitter [96 h]; Depth: 1.5 - 2.5m [0.4]; Depth: 3.5 - 4.5m [0.1]; Depth: 4.5 - 5.5m [0.15]; Depth:6.5 - 7.5m [0.35]; Depth: more than 7.5m [0.1]; Depth: 2.5 - 3.5m [0.25]; Depth: 3.5 - 4.5m [0.15]; Depth: 4.5 - 5.5m [0.1]; Depth: 5.5 - 6.5m [0.1] | 40,551.52 |  | CO-R09-SW-TF-120 |  |  | TF | Test | Each | TF | SW | CON | R09 |  | SW |  | 05 num |
|  | 11 | **Storm Drainage Network** |  | 2027-02-10 | 2027-03-18 |  |  |  |  |  |  |  |  |  |  |  |  |  |  |  |  |  |  |  |  |  |  |  |  |
|  | TF | **Testing and Finishes** |  | 2027-02-10 | 2027-03-18 |  |  |  |  |  |  |  |  |  |  |  |  |  |  |  |  |  |  |  |  |  |  |  |  |
| CO-R09-SD-TF-110 |  | Install Catch Basin Cover Works for External Finishes of Storm Drainage Network-[Road 09] | 16d | 2027-02-10 | 2027-03-01 | CO-R09.S01-SD-170 FF+3d, PRO-SD-1DL-150 FF, PRO-R09-SD-DL-150 FF+3d, CO-R09.S01-RD-P-100 FF+3d, CO-R09.S01-RD-P-100 SS |  |  |  |  | -99d | 0d | Labor/Helper [384 h]; Foreman [384 h]; Pipe with diameter 300mm ; depth: 0 - 1.5m [112.41]; Pipe with diameter 400mm ; depth: 0 - 1.5m [6.85] | 27,719.4 |  | CO-R09-SD-TF-110 |  |  | TF | Test | Each | TF | SD | CON | R09 |  | SD | cover |  |
| CO-R09-SD-TF-100 |  | Testing Work for Pipes of Storm Drainage Network-[Road 09] | 12d | 2027-02-15 | 2027-03-01 | CO-R09.S01-SD-130 SS+3d, PRO-SD-1DL-140 FF, PRO-R09-SD-DL-140 FF+3d, CO-R09.S01-RD-P-100 SS+3d, CO-R09.S01-RD-P-100 FF+3d, CO-R09.S01-SD-130 FF+3d, CO-R09.S01-SD-120 SS, CO-R09.S01-SD-120, ENG-SH-SD-ML-A-110, ENG-MS-SD-ML-A-110, CO-R09.S02-RD-P-100 FF+3d, CO-R09.S02-PW-160 FF+3d, CO-R09.S02-TE-130 FF+3d, CO-R09.S02-TE-160 FF+3d |  |  |  |  | -180d | 0d | Labor/Helper [384 h]; Plumber [384 h]; Pipe with diameter 400mm ; depth: 0.0m - 1.5m [9.28]; Pipe with diameter 400mm ; depth: 1.51m - 2.5m [9.28]; Pipe with diameter 600mm ; depth: 0.0m - 1.5m [5]; Pipe with diameter 700mm ; depth: 1.51m - 2.5m [10.11]; Pipe with diameter 700mm ; depth: 2.51m - 3.5m [5]; Pipe with diameter 800mm ; depth: 1.51m - 2.5m [5.6]; Pipe with diameter 1100mm ; depth: 1.51m - 2.5m [66.7]; Pipe with diameter 1100mm ; depth: 2.51 - 3.5m [17.4]; Pipe with diameter 1200mm ; depth: 1.51m - 2.5m [15.5] | 101,957.42 |  | CO-R09-SD-TF-100 |  |  | TF | Test | Each | TF | SD | CON | R09 |  | SD | TEST |  |
| CO-R09-SD-TF-120 |  | Main Manhole Internal Finishes (Benching + Insulation ) for Storm Drainage Network-[Road 09] | 16d | 2027-02-25 | 2027-03-18 | CO-R09-SD-TF-100 SS+3d, CO-R09-SD-TF-100 FF+3d, PRO-R09-SD-DL-160 FF+3d, PRO-SD-1DL-160 FF, CO-R09-SD-TF-110 SS, CO-R09-SD-TF-110 FF, CO-R09-SW-TF-110 FF, ENG-SH-RD-A-100, ENG-SH-RD-A-100 FF, ENG-MS-RD-A-10, ENG-MS-RD-A-10 FF, PRO-R09-SD-DL-100 |  |  |  |  | -79d | 93d | MH ; depth: 0.0m - 1.5m [0.3]; MH ; depth: 1.51m - 2.5m [0.8]; MH ; depth: 2.51 - 3.5m [0.2]; MH ; depth: 0.0m - 1.5m [0.2]; MH ; depth: 2.51 - 3.5m [0.1]; MH ; depth: 1.51m - 2.5m [0.4]; MH ; depth: 2.51 - 3.5m [0.4]; Access opening with dimensions 1000*1000 mm [13]; Single Catch basin [78]; Double Catch basin [25] | 601,282.66 |  | CO-R09-SD-TF-120 |  |  | TF | Test | Each | TF | SD | CON | R09 |  | SD |  |  |
| CO-R09-SD-TF-130 |  | Catch Basin Internal Finishes (Benching + Insulation ) for Storm Drainage Network-[Road 09] | 16d | 2027-02-25 | 2027-03-18 | CO-R09-SD-TF-110 SS+3d, CO-R09-SD-TF-110 FF+3d, PRO-R09-SD-DL-160 FF+3d, PRO-SD-1DL-160 FF, CO-R09-SD-TF-100 SS, CO-R09-SD-TF-100 FF, CO-R09-SW-TF-110 FF, ENG-SH-RD-A-100, ENG-SH-RD-A-100 FF, ENG-MS-RD-A-10, ENG-MS-RD-A-10 FF |  |  |  |  | -95d | 4d | Labor/Helper [384 h]; Foreman [384 h]; Pipe with diameter 300mm ; depth: 0 - 1.5m [112.41]; Pipe with diameter 400mm ; depth: 0 - 1.5m [6.85] | 27,719.4 |  | CO-R09-SD-TF-130 |  |  | TF | Test | Each | TF | SD | CON | R09 |  | SD | INSUL |  |
|  | 9 | **Potable Water Network** |  | 2027-03-02 | 2027-04-12 |  |  |  |  |  |  |  |  |  |  |  |  |  |  |  |  |  |  |  |  |  |  |  |  |
|  | TF | **Testing and Finishes** |  | 2027-03-02 | 2027-04-12 |  |  |  |  |  |  |  |  |  |  |  |  |  |  |  |  |  |  |  |  |  |  |  |  |
| CO-R09-PW-TF-110 |  | Testing Work for Main Line of Potable Water Network-[Road 09] | 9d | 2027-03-02 | 2027-03-15 | CO-R09.S02-PW-130, CO-R09-SL-TF-100, CO-R09-SW-TF-100, CO-R09-SD-TF-100 |  |  |  |  | -180d | 0d | Labor/Helper [72 h]; Plumber [72 h]; Pipe with diameter 160 mm; in depth 1.5m - 3.0m [5]; Pipe with diameter 200mm; in depth 0.0m - 1.5m [254.47]; Pipe with diameter 200mm; in depth 1.5m - 3.0m [10] | 39,231.99 |  | CO-R09-PW-TF-110 |  |  | TF | Test | LM | TF | PW | CON | R09 |  | PW | TEST |  |
| CO-R09-PW-TF-100 |  | Final Finishes works and Covers for Valves and Valve Chambers of Potable Water Network-[Road 09] | 12d | 2027-03-16 | 2027-03-29 | CO-R09.S01-RD-P-100 FS+3d, PRO-PW-1DL-130, PRO-R09-PW-DL-130 FF+3d, CO-R09.S02-PW-130, CO-R09-PW-TF-110 |  |  |  |  | -160d | 0d | Labor/Helper [288 h]; Plumber [288 h] |  |  | CO-R09-PW-TF-100 |  |  | TF | Test | Each | TF | PW | CON | R09 |  | PW | T&COV |  |
| CO-R09-PW-TF-120 |  | Fire Hydrant Finishies (S.Box + Safety + Marker Post ) of Potable Water Network-[Road 09] | 12d | 2027-03-30 | 2027-04-12 | CO-R09-PW-TF-100, PRO-PW-1DL-130, PRO-R09-PW-DL-130 FF+3d, CO-R09.S02-PW-160 |  |  |  |  | -160d | 0d |  |  |  | CO-R09-PW-TF-120 |  |  | TF | Test | Each | TF | PW | CON | R09 |  | PW |  |  |
|  | 13 | **Irrigation Network** |  | 2027-02-27 | 2027-03-20 |  |  |  |  |  |  |  |  |  |  |  |  |  |  |  |  |  |  |  |  |  |  |  |  |
|  | TF | **Testing and Finishes** |  | 2027-02-27 | 2027-03-20 |  |  |  |  |  |  |  |  |  |  |  |  |  |  |  |  |  |  |  |  |  |  |  |  |
| CO-R09-IR-TF-100 |  | Final Testing (pressure tests) of Irrigation Network-[Road 09] | 16d | 2027-02-27 | 2027-03-20 | CO-R09.S01-IR-140, CO-R09.S01-RD-P-100, CO-R09.S02-RD-P-100, CO-R09.S01-IR-120, CO-R09.S02-PW-160, CO-R09.S02-SL-160 SS+3d, CO-R09.S02-TE-130, CO-R09.S02-TE-160 |  |  |  |  | -140d | 0d | Labor/Helper [384 h]; Plumber [384 h]; Pipe Fitter [384 h]; 125 mm pipe; depth 0.0m - 1.5m [286.5] | 21,307.01 |  | CO-R09-IR-TF-100 |  |  | TF | Test | LM | TF | IR | CON | R09 |  | IR | TEST |  |

| ID | WBS | Activity | Duration | Start | Finish | Predecessors | Total float | Free float | Resources | Cost | Activity ID N | 02- Network-WBS | 03- Activity | 04-UOM | 05-Discipline | 01- Network | 07-Weightage System | 08 Stage | 09 Roads | Discipline | Seq | New Seq | 10 side Walk | 05number |
| --- | --- | --- | --- | --- | --- | --- | --- | --- | --- | --- | --- | --- | --- | --- | --- | --- | --- | --- | --- | --- | --- | --- | --- | --- |
|  | 12 | **Street Lighting Network** |  | 2027-02-09 | 2027-05-30 |  |  |  |  |  |  |  |  |  |  |  |  |  |  |  |  |  |  |  |
|  | TR | **Termination and Testing Works** |  | 2027-02-09 | 2027-05-27 |  |  |  |  |  |  |  |  |  |  |  |  |  |  |  |  |  |  |  |
| CO-R09-SL-TF-100 |  | Termination Works For Lighting Poles Cables of Street Lighting Network-[Road 09] | 12d | 2027-02-09 | 2027-02-23 | CO-R09.S01-SL-130, PRO-SL-1DL-130, PRO-R09-SL-DL-130 FF+3d, CO-R09.S02-SL-130 | -195.5d | 0d | Labor/Helper [96 h]; Electrician [96 h]; Low Current Technician [96 h]; Supply, installation , test and operation of cables, Copper, (4Cx25mmï¿½,Cu/XLPE/SWA/PVC +1x16mmï¿½ PVC/PVC) [1726.2] | 80,958.78 | CO-R09-SL-TF-100 | TR | TR | Each | T&F | SL | TERM | CON | R09 | SL |  |  |  |  |
| CO-R09-SL-TF-110 |  | Termination Works For Panel Board Cables of Street Lighting Network-[Road 09] | 10.5d | 2027-04-28 | 2027-05-10 | CO-R09.S01-SL-190, PRO-SL-1DL-170, PRO-R09-SL-DL-170 FF+3d, CO-R09.S01-SL-160, CO-R09.S01-SL-220 | -195.5d | 0d | Package Substation 33000/400V, 500kVA with RMU [0.6] | 64,674.97 | CO-R09-SL-TF-110 | TR | TR | Each | T&F | SL | TERMINA | CON | R09 | SL |  |  |  |  |
| CO-R09-SL-TF-380 |  | Testing Works For Panel Board Cables of Street Lighting Network-[Road 09] | 10d | 2027-05-10 | 2027-05-27 | CO-R09-SL-TF-110 | -184.5d | 9.75d | Package Substation 33000/400V, 500kVA with RMU [0.3] | 32,337.48 | CO-R09-SL-TF-380 |  |  |  |  | SL | TEST | CON | R09 | SL |  |  |  |  |
|  | ES | **Earthing System Works** |  | 2027-02-24 | 2027-05-30 |  |  |  |  |  |  |  |  |  |  |  |  |  |  |  |  |  |  |  |
| CO-R09-SL-ES-100 |  | Install Earthing System Works for Lighting Poles of Street Lighting Network-[Road 09] | 12d | 2027-02-24 | 2027-03-13 | PRO-SL-1DL-150, PRO-R09-SL-DL-150 FF+3d, CO-R09-SL-TF-100 | -195.5d | 0d | Labor/Helper [96 h]; Electrician [96 h]; Low Current Technician [96 h]; Earthing installation, for Street lighting circuits, including earth rod in plastic chamber [25]; Earthing installation Lighting Panales [3] | 6,125.14 | CO-R09-SL-ES-100 | ER | EW | Each | T&F | SL | TER | CON | R09 | SL |  |  |  |  |
| CO-R09-SL-ES-110 |  | Install Earthing System Works for Lighting Panel Boards of Street Lighting Network-[Road 09] | 12d | 2027-05-10 | 2027-05-30 | PRO-SL-1DL-150, PRO-R09-SL-DL-150 FF+3d, CO-R09-SL-TF-110 | -195.5d | 0d | Labor/Helper [96 h]; Electrician [96 h]; Low Current Technician [96 h]; Earthing installation, lighting plants. [3] | 5,660.16 | CO-R09-SL-ES-110 | ER | EW | Each | T&F | SL | EARTH | CON | R09 | SL |  |  |  |  |
|  | 14 | **Medium Voltage Network** |  | 2027-02-27 | 2027-03-20 |  |  |  |  |  |  |  |  |  |  |  |  |  |  |  |  |  |  |  |
|  | TT | **Termination and Testing Works** |  | 2027-02-27 | 2027-03-20 |  |  |  |  |  |  |  |  |  |  |  |  |  |  |  |  |  |  |  |
| CO-R09-MV-TF-100 |  | Termination Works of Medium Voltage Network-[Road 09] | 16d | 2027-02-27 | 2027-03-20 | PRO-MV-1DL-120, CO-R09.S01-MV-120, PRO-R09-MV-DL-110 FF+3d, CO-R09.S01-TE-160 | -140d | 0d | Labor/Helper [128 h]; Electrician [128 h]; Low Current Technician [128 h] |  | CO-R09-MV-TF-100 | RMU | TR | Each | TR | MV | TEST | CON | R09 | MV |  |  |  |  |
|  | 1 | **Road Works** |  | 2027-05-30 | 2027-08-07 |  |  |  |  |  |  |  |  |  |  |  |  |  |  |  |  |  |  |  |
|  | 1 | **Bituminous Construction** |  | 2027-05-30 | 2027-07-03 |  |  |  |  |  |  |  |  |  |  |  |  |  |  |  |  |  |  |  |
| CO-R09-S1-RD-F-100 |  | Application of Prime Coat Layer for Road Works - S.W 01-[Road 09] | 12d | 2027-05-30 | 2027-06-13 | PRO-RD-1DL-120, CO-R09.S01-RD-P-130 | -194.5d | 0d | Labor/Helper [144 h]; Insulation Worker [144 h]; Bituminous base course(Grading I - Class A), 70mm thick after compaction including Prime Coat (MC1) [1577.85] | 576,151.93 | CO-R09-S1-RD-F-100 | AB | MC | Sq.m | BS | RD |  | CON | R09 | RD | 11 | 11 | S01 |  |
| CO-R09-S1-RD-F-120 |  | Bituminous Base & Wearing Courses Layers for Road Works- S.W 01-[Road 09] | 12d | 2027-06-02 | 2027-06-16 | PRO-RD-1DL-130, CO-R09-S1-RD-F-100 SS+3d, CO-R09-S1-RD-F-100 FF+3d | -194.5d | 0d | Labor/Helper [144 h]; Eq. Operator [144 h]; Asphalt Cutter [144 h]; Asphalt Paver [144 h]; Bituminous concrete wearing course, 50 mm thick, after compaction(Grading I - Class A), including tack coat (RC) [1127.12] | 453,102.24 | CO-R09-S1-RD-F-120 | AB | AB | Sq.m | BS | RD |  | CON | R09 | RD | 11 | 11 | S01 |  |
| CO-R09-S2-RD-F-110 |  | Application of Prime Coat Layer for Road Works- S.W 02-[Road 09] | 18d | 2027-06-08 | 2027-06-29 | PRO-R09-RD-DL-160 FF+3d, CO-R09.S02-RD-P-130 | -195.5d | 0d | Labor/Helper [144 h]; Insulation Worker [144 h]; Bituminous base course(Grading I - Class A), 70mm thick after compaction including Prime Coat (MC1) [1577.85] | 576,151.93 | CO-R09-S2-RD-F-110 | AB | MC | Sq.m | BS | RD |  | CON | R09 | RD | 12 | 12 | S02 |  |
| CO-R09-S2-RD-F-130 |  | Bituminous Base & Wearing Courses Layers for Road Works- S.W 02-[Road 09] | 18d | 2027-06-12 | 2027-07-03 | CO-R09-S2-RD-F-110 SS+3d, CO-R09-S2-RD-F-110 FF+3d, PRO-R09-RD-DL-170 FF+3d | -195.5d | 0d | Labor/Helper [144 h]; Eq. Operator [144 h]; Asphalt Cutter [144 h]; Asphalt Paver [144 h]; Bituminous concrete wearing course, 50 mm thick, after compaction(Grading I - Class A), including tack coat (RC) [1127.12] | 453,102.24 | CO-R09-S2-RD-F-130 | AB | AB | Sq.m | BS | RD |  | CON | R09 | RD | 12 | 12 | S02 |  |
|  | TS | **Traffic Signs Boards and Roads Marking** |  | 2027-06-16 | 2027-08-07 |  |  |  |  |  |  |  |  |  |  |  |  |  |  |  |  |  |  |  |
| CO-R09-S1-RD-F-140 |  | Application of Road Marking Works For Road Works- S.W 01-[Road 09] | 12d | 2027-06-16 | 2027-06-30 | PRO-RD-1DL-170, ENG-SH-MRK-A-110, CO-R09-S1-RD-F-120, ENG-SH-RD-A-100, ENG-MS-MRK-A-10, ENG-MS-RD-A-10 | -194.5d | 0d | Labor/Helper [480 h]; Painter [480 h]; Retroreflective Thermoplastic White, Traffic lines [849.93]; Retroreflective Thermoplastic Yellow, Traffic lines [130.23]; Retroreflective raised pavement markers(Type A) [166.15] | 33,593.01 | CO-R09-S1-RD-F-140 | RM | RM | LM | TRF | RD |  | CON | R09 | RD | 11 | 11 | S01 |  |
| CO-R09-S1-RD-F-150 |  | Installation Works of Traffic Signs Boards For Road Works- S.W 01-[Road 09] | 12d | 2027-06-30 | 2027-07-14 | PRO-RD-1DL-160, ENG-SH-TSB-A-100, CO-R09.S01-RD-P-130, ENG-SH-RD-A-100, ENG-MS-TSB-A-10, ENG-MS-RD-A-10, PRO-R09-RD-DL-140 SS+6d, CO-R09-S1-RD-F-140, PRO-RD-1DL-150, CO-R09.S01-RD-P-110 | -194.5d | 0d | Labor/Helper [288 h]; Painter [288 h]; Traffic signs, ground mounted, Sheet Alumenium, (breakaway) Single post, with all accessories [11]; Straight Arrow [26]; Right or Left Arrow [2]; Straight-Left Arrow [2] | 12,521.63 | CO-R09-S1-RD-F-150 | TS | TF | Each | TRF | RD |  | CON | R09 | RD | 11 | 11 | S01 |  |
| CO-R09-S2-RD-F-160 |  | Application of Road Marking Works For Road Works- S.W 02-[Road 09] | 15d | 2027-07-03 | 2027-07-20 | PRO-R09-RD-DL-150 FF+3d, CO-R09-S2-RD-F-130, CO-R09-S1-RD-F-140 SS+2d | -195.5d | 0d | Labor/Helper [120 h]; Painter [120 h]; Retroreflective Thermoplastic White, Traffic lines [849.93]; Retroreflective Thermoplastic Yellow, Traffic lines [130.23]; Retroreflective raised pavement markers(Type A) [166.15] | 33,593.01 | CO-R09-S2-RD-F-160 | RM | RM | LM | TRF | RD |  | CON | R09 | RD | 12 | 12 | S02 |  |
| CO-R09-S2-RD-F-170 |  | Installation Works of Traffic Signs Boards For Road Works- S.W 02-[Road 09] | 15d | 2027-07-20 | 2027-08-07 | PRO-R09-RD-DL-140 FF+6d, CO-R09.S02-RD-P-130, CO-R09-S2-RD-F-160, CO-R09.S02-RD-P-110, CO-R09-S1-RD-F-150 SS+2d | -195.5d | 0d | Labor/Helper [360 h]; Painter [360 h]; Traffic signs, ground mounted, Sheet Alumenium, (breakaway) Single post, with all accessories [11]; Straight Arrow [26]; Right or Left Arrow [2]; Straight-Left Arrow [2] | 12,521.63 | CO-R09-S2-RD-F-170 | TS | TF | Each | TRF | RD |  | CON | R09 | RD | 12 | 12 | S02 |  |
|  | 4 | **Road 10 Local 2 ( 2352 LM )** |  | 2026-06-15 | 2027-05-20 |  |  |  |  |  |  |  |  |  |  |  |  |  |  |  |  |  |  |  |
|  | 10 | **Sewage Network** |  | 2027-03-03 | 2027-04-06 |  |  |  |  |  |  |  |  |  |  |  |  |  |  |  |  |  |  |  |
|  | TF | **Testing and Finishes** |  | 2027-03-03 | 2027-04-06 |  |  |  |  |  |  |  |  |  |  |  |  |  |  |  |  |  |  |  |
| CO-R10-SW-TF-100 |  | Final Testing For Main Line of Sewage Network-[Road 10] | 12d | 2027-03-03 | 2027-03-20 | CO-R10.S03-ES-RD-100 SS+3d, CO-R10.S03-ES-RD-100 FF+3d, CO-R10.S04-ES-RD-100 SS+3d, CO-R10.S04-ES-RD-100 FF+3d, CO-R09.S02-SW-130, CO-R10.S03-WE-RD-100 SS+3d, CO-R10.S03-WE-RD-100 FF+3d, CO-R10.S04-WE-RD-100 SS+3d, CO-R10.S04-WE-RD-100 FF+3d, CO-R10.S03-ES-PW-160 FS+3d, CO-R10.S03-ES-SL-160 SS+6d, CO-R10.S04-ES-PW-160 FS+3d, CO-R10.S04-ES-SL-160 SS+6d, CO-R10.S03-ES-TE-130 FS+3d, CO-R10.S03-ES-TE-160 FS+3d, CO-R10.S04-ES-TE-130 FS+3d, CO-R10.S04-ES-TE-160 FS+3d, CO-R10.S03-WE-PW-160 FS+3d, CO-R10.S03-WE-SL-160 SS+6d, CO-R10.S03-WE-TE-130 FS+3d, CO-R10.S03-WE-TE-160 FS+3d, CO-R10.S04-WE-PW-160 FS+3d, CO-R10.S04-WE-SL-160 SS+6d, CO-R10.S04-WE-TE-130 FS+3d, CO-R10.S04-WE-TE-160 FS+3d, CO-R10.S04-WE-PW-220 FS+3d | -184d | 0d | Labor/Helper [288 h]; Plumber [288 h]; Pipe Fitter [288 h]; Depth : 1.5 - 2.5m [15]; Depth : 2.5 - 3.5m [8.89]; Depth : 3.5 - 4.5m [8.89]; Depth : 5.5 - 6.5m [50]; Depth : 6.5 -7.5m [40]; Depth : 6.5 -7.5m [15]; Depth :more than 7.5m [10] | 115,642.91 | CO-R10-SW-TF-100 | TF | Test | Each | TF | SW | TEST | CON | R10 | SW |  |  |  |  |
| CO-R10-SW-TF-110 |  | Install Manhole Cover Works for External Finishes of Sewage Network-[Road 10] | 12d | 2027-03-21 | 2027-04-03 | PRO-R10-SW-DL-120 FF+3d, CO-R10-SW-TF-100, CO-R10.S03-ES-RD-100 SS+3d, CO-R10.S03-ES-RD-100 FF+3d, ENG-SH-SW-ML-A-110, ENG-SH-SW-ML-A-110 FF, ENG-MS-SW-ML-A-110, ENG-MS-SW-ML-A-110 FF, CO-R10.S04-ES-RD-100 SS+3d, CO-R10.S04-ES-RD-100 FS+3d, CO-R10.S03-WE-RD-100 SS+3d, CO-R10.S03-WE-RD-100 FF+3d, CO-R10.S04-WE-RD-100 SS+3d, CO-R10.S04-WE-RD-100 FS+3d, CO-R10.S03-ES-PW-160 FS+3d, CO-R10.S03-ES-SL-160 SS+6d, CO-R10.S04-ES-PW-160 FS+3d, CO-R10.S04-ES-SL-160 SS+6d, CO-R10.S03-ES-TE-130 FS+3d, CO-R10.S03-ES-TE-160 FS+3d, CO-R10.S04-ES-TE-130 FS+3d, CO-R10.S04-ES-TE-160 FS+3d, CO-R10.S03-WE-PW-160 FS+3d, CO-R10.S03-WE-SL-160 SS+6d, CO-R10.S03-WE-TE-130 FS+3d, CO-R10.S03-WE-TE-160 FS+3d, CO-R10.S04-WE-PW-160 FS+3d, CO-R10.S04-WE-SL-160 SS+6d, CO-R10.S04-WE-TE-130 FS+3d, CO-R10.S04-WE-TE-160 FS+3d, CO-R10.S04-WE-PW-220 FS+3d | -184d | 0d | Labor/Helper [192 h]; Plumber [192 h]; Pipe Fitter [192 h]; Depth: 1.5 - 2.5m [0.2]; Depth: 2.5 - 3.5m [0.5]; Depth: 3.5 - 4.5m [0.05]; Depth: 4.5 - 5.5m [0.1]; Depth: 5.5 - 6.5m [0.15]; Depth:6.5 - 7.5m [0.2]; Depth: more than 7.5m [0.05] | 19,077.61 | CO-R10-SW-TF-110 | TF | Test | Each | TF | SW |  | CON | R10 | SW |  |  |  |  |
| CO-R10-SW-TF-130 |  | Main Manhole Internal Finishes (Benching + Insulation) of Sewage Network-[Road 10] | 12d | 2027-03-24 | 2027-04-06 | CO-R10-SW-TF-110 SS+3d, CO-R10-SW-TF-110 FF+3d, PRO-R10-SW-DL-130 FF+3d | -184d | 0d | Labor/Helper [192 h]; Plumber [192 h]; Pipe Fitter [192 h]; Depth: 1.5 - 2.5m [0.2]; Depth: 2.5 - 3.5m [0.5]; Depth: 3.5 - 4.5m [0.05]; Depth: 4.5 - 5.5m [0.1]; Depth: 5.5 - 6.5m [0.15]; Depth:6.5 - 7.5m [0.2]; Depth: more than 7.5m [0.05] | 19,077.61 | CO-R10-SW-TF-130 | TF | Test | Each | TF | SW |  | CON | R10 | SW |  |  |  | 05 num |

| ID | WBS | Activity | Duration | Start | Finish | Predecessors | Complete | Remaining | Planned start | Planned finish | Total float | Free float | Resources | Cost | Actual cost | Activity ID N | 02- Network-WBS | 03- Activity | 04-UOM | 05-Discipline | 01- Network | 07-Weightage System | 08 Stage | 09 Roads | Discipline |
| --- | --- | --- | --- | --- | --- | --- | --- | --- | --- | --- | --- | --- | --- | --- | --- | --- | --- | --- | --- | --- | --- | --- | --- | --- | --- |
|  | 11 | **Storm Drainage Network** |  | 2026-06-15 | 2027-04-03 |  |  |  |  |  |  |  |  |  |  |  |  |  |  |  |  |  |  |  |  |
|  | TF | **Testing and Finishes** |  | 2026-06-15 | 2027-04-03 |  |  |  |  |  |  |  |  |  |  |  |  |  |  |  |  |  |  |  |  |
| CO-R10-SD-TF-100 |  | Testing Work for Pipes of Storm Drainage Network-[Road 10] | 16d | 2026-06-15 A | 2026-08-08 A | CO-R10.S03-ES-SD-130 SS+3d, CO-R10.S03-ES-SD-130 FF+3d, CO-R10.S03-ES-SD-120 SS, CO-R10.S03-ES-SD-120, ENG-SH-SD-ML-A-110, ENG-MS-SD-ML-A-110, CO-R10.S03-WE-SD-130 SS+3d, CO-R10.S03-WE-SD-130 FF+3d, CO-R10.S03-WE-SD-120 SS, CO-R10.S03-WE-SD-120 | 100% |  | 2026-07-27 | 2026-08-13 |  |  | Labor/Helper [128 h]; Plumber [128 h]; Pipe with diameter 400mm ; depth: 0.0m - 1.5m [43.8]; Pipe with diameter 400mm ; depth: 1.51m - 2.5m [55.9]; Pipe with diameter 500mm ; depth: 0.0m - 1.5m [5]; Pipe with diameter 500mm ; depth: 1.51m - 2.5m [24.2]; Pipe with diameter 600mm ; depth: 1.51m - 2.5m [39.29]; Pipe with diameter 600mm ; depth: 2.51m - 3.5m [17.3]; Pipe with diameter 700mm ; depth: 0.0m - 1.5m [5]; Pipe with diameter 700mm ; depth: 1.51m - 2.5m [92.12]; Pipe with diameter 800mm ; depth: 1.51m - 2.5m [44.74]; Pipe with diameter 900mm ; depth: 1.51m - 2.5m [23.18]; Pipe with diameter 1000mm ; depth: 0.0m - 1.5m [5]; Pipe with diameter 1100mm ; depth: 0.0m - 1.5m [5] | 154,199.47 | 154,199.47 | CO-R10-SD-TF-100 | TF | Test | Each | TF | SD | TEST | CON | R10 | SD |
| CO-R10-SD-TF-110 |  | Install Catch Basin Cover Works for External Finishes of Storm Drainage Network-[Road 10] | 16d | 2026-06-17 A | 2027-03-02 | CO-R10.S03-ES-SD-170 SS+3d, PRO-R10-SD-DL-150 FF+3d, CO-R10.S03-ES-RD-100 FF+3d, CO-R10.S03-ES-SD-170 FF+3d, CO-R10.S04-ES-RD-100 FF+3d, CO-R10.S03-WE-SD-170 SS+3d, CO-R10.S03-WE-RD-100 FF+3d, CO-R10.S03-WE-SD-170 FF+3d, CO-R10.S04-WE-RD-100 FF+3d, CO-R10.S03-ES-PW-160 FF+3d, CO-R10.S04-ES-PW-160 FF+3d, CO-R10.S03-ES-TE-130 FF+3d, CO-R10.S03-ES-TE-160 FF+3d, CO-R10.S04-ES-TE-130 FF+3d, CO-R10.S04-ES-TE-160 FF+3d, CO-R10.S03-WE-PW-160 FF+3d, CO-R10.S03-WE-TE-130 FF+3d, CO-R10.S03-WE-TE-160 FF+3d, CO-R10.S04-WE-PW-160 FF+3d, CO-R10.S04-WE-TE-130 FF+3d, CO-R10.S04-WE-TE-160 FF+3d, CO-R10.S04-WE-PW-220 FF+3d | 20% | 7d | 2026-08-04 | 2026-08-22 | -140d | 0d | Labor/Helper [384 h]; Foreman [384 h]; Pipe with diameter 300mm ; depth: 0 - 1.5m [112.72]; Pipe with diameter 400mm ; depth: 0 - 1.5m [6.87] | 27,795.73 | 5,559.15 | CO-R10-SD-TF-110 | TF | Test | Each | TF | SD | cover | CON | R10 | SD |
| CO-R10-SD-TF-120 |  | Main Manhole Internal Finishes (Benching + Insulation ) for Storm Drainage Network-[Road 10] | 12d | 2026-06-18 A | 2027-04-03 | CO-R10-SD-TF-100 SS+3d, CO-R10-SD-TF-100 FF+3d, PRO-R10-SD-DL-160 FF+3d, CO-R10-SD-TF-110 SS, CO-R10-SD-TF-110 FF, CO-R10-SW-TF-110 FF, ENG-SH-RD-A-100, ENG-SH-RD-A-100 FF, ENG-MS-RD-A-10, ENG-MS-RD-A-10 FF, PRO-R10-SD-DL-100 FF+3d | 85% | 1d | 2026-08-26 | 2026-09-08 | -164d | 0d | MH ; depth: 0.0m - 1.5m [0.3]; MH ; depth: 1.51m - 2.5m [0.8]; MH ; depth: 0.0m - 1.5m [0.2]; MH ; depth: 1.51m - 2.5m with back drop less than 1.0 m [0.05]; MH ; depth: 0.0m - 1.5m [0.1]; MH ; depth: 1.51m - 2.5m [0.3]; MH ; depth: 2.51 - 3.5m [0.4]; MH ; depth: 3.51 - 4.5m [0.25]; Single Catch basin [80]; Double Catch basin [20]; Pipe encasement dia 300 mm [45.1]; Pipe encasement dia 400 mm [23.1]; Pipe encasement dia 500 mm [16.78]; Pipe encasement dia 600 mm [8.24]; Pipe encasement dia 700 mm [14.58]; Pipe encasement dia 800 mm [7.42]; Pipe encasement dia 900 mm [4.94]; Pipe encasement dia 1000 mm [5.22]; Pipe encasement dia 1100 mm [4.68]; Pipe encasement dia 1200 mm [2.74] | 502,641.74 | 427,245.48 | CO-R10-SD-TF-120 | TF | Test | Each | TF | SD |  | CON | R10 | SD |
| CO-R10-SD-TF-130 |  | Catch Basin Internal Finishes (Benching + Insulation ) for Storm Drainage Network-[Road 10] | 16d | 2026-06-22 A | 2027-04-03 | CO-R10-SD-TF-110 SS+3d, CO-R10-SD-TF-110 FF+3d, PRO-R10-SD-DL-160 FF+3d, CO-R10-SD-TF-100 SS, CO-R10-SD-TF-100 FF, CO-R10-SW-TF-110 FF, ENG-SH-RD-A-100, ENG-SH-RD-A-100 FF, ENG-MS-RD-A-10, ENG-MS-RD-A-10 FF | 35% | 10d | 2026-08-26 | 2026-09-13 | -92d | 15d | Labor/Helper [384 h]; Foreman [384 h]; Pipe with diameter 300mm ; depth: 0 - 1.5m [112.73]; Pipe with diameter 400mm ; depth: 0 - 1.5m [6.87] | 27,795.08 | 9,728.28 | CO-R10-SD-TF-130 | TF | Test | Each | TF | SD | INSUL | CON | R10 | SD |
|  | 9 | **Potable Water Network** |  | 2027-01-27 | 2027-03-29 |  |  |  |  |  |  |  |  |  |  |  |  |  |  |  |  |  |  |  |  |
|  | TF | **Testing and Finishes** |  | 2027-01-27 | 2027-03-29 |  |  |  |  |  |  |  |  |  |  |  |  |  |  |  |  |  |  |  |  |
| CO-R10-PW-TF-100 |  | Final Finishes works and Covers for Valves and Valve Chambers of Potable Water Network-[Road 10] | 12d | 2027-01-27 | 2027-02-09 | CO-R10.S03-ES-RD-100 FS+3d, PRO-R10-PW-DL-130 FF+3d, CO-R10.S03-WE-RD-100 FS+3d, CO-R10.S03-ES-PW-160 FS+3d, CO-R10.S03-ES-SL-160 SS+6d, CO-R10.S03-ES-TE-130 FS+3d, CO-R10.S03-ES-TE-160 FS+3d, CO-R10.S03-WE-PW-160 FS+3d, CO-R10.S03-WE-SL-160 SS+6d, CO-R10.S03-WE-TE-130 FS+3d, CO-R10.S03-WE-TE-160 FS+3d |  |  |  |  | -143d | 0d | Labor/Helper [96 h]; Plumber [96 h] |  |  | CO-R10-PW-TF-100 | TF | Test | Each | TF | PW | T&COV | CON | R10 | PW |
| CO-R10-PW-TF-120 |  | Fire Hydrant Finishies (S.Box + Safety + Marker Post ) of Potable Water Network-[Road 10] | 12d | 2027-02-10 | 2027-02-24 | CO-R10.S03-ES-PW-160, CO-R10-PW-TF-100, PRO-R10-PW-DL-130 FF+3d, CO-R10.S03-WE-PW-160 |  |  |  |  | -143d | 0d |  |  |  | CO-R10-PW-TF-120 | TF | Test | Each | TF | PW |  | CON | R10 | PW |
| CO-R10-PW-TF-110 |  | Testing Work for Main Line of Potable Water Network-[Road 10] | 12d | 2027-03-16 | 2027-03-29 | CO-R10.S03-ES-PW-130, CO-R09-PW-TF-110, CO-R10.S03-WE-PW-130, CO-R10.S03-ES-PW-220, CO-R10.S03-WE-PW-220 |  |  |  |  | -180d | 0d | Labor/Helper [96 h]; Plumber [96 h]; Pipe with diameter 200mm; in depth 0.0m - 1.5m [255.13]; Pipe with diameter 560mm; in depth 1.5m - 3.0m [120]; Pipe with diameter 630mm; in depth 1.5m - 3.0m [209] | 299,945.22 |  | CO-R10-PW-TF-110 | TF | Test | LM | TF | PW | TEST | CON | R10 | PW |
|  | 13 | **Irrigation Network** |  | 2027-02-28 | 2027-03-14 |  |  |  |  |  |  |  |  |  |  |  |  |  |  |  |  |  |  |  |  |
|  | TF | **Testing and Finishes** |  | 2027-02-28 | 2027-03-14 |  |  |  |  |  |  |  |  |  |  |  |  |  |  |  |  |  |  |  |  |
| CO-R10-IR-TF-120 |  | Final Testing (pressure tests) of Irrigation Network-[Road 10] | 10d | 2027-02-28 | 2027-03-14 | CO-R10.S03-ES-IR-130, CO-R10.S03-ES-RD-100, CO-R10.S04-ES-RD-100, CO-R10.S03-WE-IR-130, CO-R10.S03-WE-RD-100, CO-R10.S04-WE-RD-100, CO-R10.S03-ES-PW-160, CO-R10.S03-ES-SL-160 SS+3d, CO-R10.S04-ES-PW-160, CO-R10.S04-ES-SL-160 SS+3d, CO-R10.S03-ES-TE-130, CO-R10.S03-ES-TE-160, CO-R10.S04-ES-TE-130, CO-R10.S04-ES-TE-160, CO-R10.S03-WE-PW-160, CO-R10.S03-WE-SL-160 SS+3d, CO-R10.S03-WE-TE-130, CO-R10.S03-WE-TE-160, CO-R10.S04-WE-PW-160, CO-R10.S04-WE-SL-160 SS+3d, CO-R10.S04-WE-TE-130, CO-R10.S04-WE-TE-160, CO-R10.S04-WE-PW-220 |  |  |  |  | -163d | 0d | Labor/Helper [256 h]; Plumber [256 h]; Pipe Fitter [256 h]; 125 mm pipe; depth 0.0m - 1.5m [287.31]; 355 mm pipe; depth 1.5m - 3.0m [100]; 400 mm pipe; depth 1.5m - 3.0m [100] | 100,762.62 |  | CO-R10-IR-TF-120 | TF | Test | LM | TF | IR | TEST | CON | R10 | IR |
|  | 12 | **Street Lighting Network** |  | 2027-01-03 | 2027-04-03 |  |  |  |  |  |  |  |  |  |  |  |  |  |  |  |  |  |  |  |  |
|  | TR | **Termination and Testing Works** |  | 2027-01-03 | 2027-04-03 |  |  |  |  |  |  |  |  |  |  |  |  |  |  |  |  |  |  |  |  |
| CO-R10-SL-TF-140 |  | Termination Works For Lighting Poles Cables of Street Lighting Network-[Road 10] | 12d | 2027-01-03 | 2027-01-16 | CO-R10.S03-ES-SL-160, CO-R10.S03-ES-SL-130, PRO-R10-SL-DL-130 FF+3d, CO-R15.S10-SL-130, CO-R10.S03-WE-SL-160, CO-R10.S03-WE-SL-130 |  |  |  |  | -188d | 0d | Labor/Helper [96 h]; Electrician [96 h]; Low Current Technician [96 h]; Supply, installation , test and operation of cables, Copper, (4Cx25mmï¿½,Cu/XLPE/SWA/PVC +1x16mmï¿½ PVC/PVC) [1732.5] | 81,254.25 |  | CO-R10-SL-TF-140 | TR | TR | Each | T&F | SL | TERM | CON | R10 | SL |
| CO-R10-SL-TF-150 |  | Termination Works For Panel Board Cables of Street Lighting Network-[Road 10] | 12d | 2027-03-18 | 2027-03-31 | CO-R10.S03-ES-SL-190, PRO-R10-SL-DL-170 FF+3d, CO-R10.S03-ES-SL-160, CO-R10.S03-ES-SL-220, CO-R10.S04-ES-SL-220, CO-R10.S03-WE-SL-190, CO-R10.S03-WE-SL-160, CO-R10.S03-WE-SL-220, CO-R10.S04-WE-SL-220 |  |  |  |  | -203d | 0d | Labor/Helper [96 h]; Electrician [96 h]; Low Current Technician [96 h]; Package Substation 33000/400V, 500kVA with RMU [0.6] | 64,674.97 |  | CO-R10-SL-TF-150 | TR | TR | Each | T&F | SL | TERMINA | CON | R10 | SL |
| CO-R10-SL-TF-380 |  | Testing Works For Panel Board Cables of Street Lighting Network-[Road 10] | 2d | 2027-04-01 | 2027-04-03 | CO-R10-SL-TF-150 |  |  |  |  | -183d | 9d | Labor/Helper [16 h]; Electrician [16 h]; Package Substation 33000/400V, 500kVA with RMU [0.3] | 32,337.48 |  | CO-R10-SL-TF-380 |  |  |  |  | SL | TEST | CON | R10 | SL |
|  | ES | **Earthing System Works** |  | 2027-01-17 | 2027-02-16 |  |  |  |  |  |  |  |  |  |  |  |  |  |  |  |  |  |  |  |  |
| CO-R10-SL-ES-140 |  | Install Earthing System Works for Lighting Poles of Street Lighting Network-[Road 10] | 12d | 2027-01-17 | 2027-01-30 | PRO-R10-SL-DL-150 FF+3d, CO-R10.S03-ES-SL-100 SS+5d, CO-R10.S03-ES-SL-100 FF+5d, CO-R10-SL-TF-140, CO-R10-SL-TF-140 SS+3d, CO-R10.S03-WE-SL-100 SS+5d, CO-R10.S03-WE-SL-100 FF+5d |  |  |  |  | -188d | 0d | Labor/Helper [96 h]; Electrician [96 h]; Low Current Technician [96 h]; Earthing installation, for Street lighting circuits, including earth rod in plastic chamber [25]; Earthing installation Lighting Panales [3] | 6,125.14 |  | CO-R10-SL-ES-140 | ER | EW | Each | T&F | SL | TER | CON | R10 | SL |
| CO-R10-SL-ES-150 |  | Install Earthing System Works for Lighting Panel Boards of Street Lighting Network-[Road 10] | 12d | 2027-02-03 | 2027-02-16 | CO-R10.S03-ES-SL-170 SS+3d, CO-R10.S03-ES-SL-170 FF+3d, PRO-R10-SL-DL-150 FF+3d, CO-R10.S03-WE-SL-170 SS+3d, CO-R10.S03-WE-SL-170 FF+3d |  |  |  |  | -188d | 0d | Labor/Helper [96 h]; Electrician [96 h]; Low Current Technician [96 h]; Earthing installation, lighting plants. [3] | 5,660.16 |  | CO-R10-SL-ES-150 | ER | EW | Each | T&F | SL | EARTH | CON | R10 | SL |
|  | 14 | **Medium Voltage Network** |  | 2026-10-27 | 2026-11-03 |  |  |  |  |  |  |  |  |  |  |  |  |  |  |  |  |  |  |  |  |
|  | TT | **Termination and Testing Works** |  | 2026-10-27 | 2026-11-03 |  |  |  |  |  |  |  |  |  |  |  |  |  |  |  |  |  |  |  |  |
| CO-R10-MV-TF-140 |  | Termination Works of Medium Voltage Network-[Road 10] | 7d | 2026-10-27 | 2026-11-03 | CO-R10.S03-ES-MV-120, PRO-R10-MV-DL-110 FF+3d, CO-R10.S03-ES-MV-190, CO-R10.S03-WE-MV-120, CO-R10.S03-WE-MV-190 |  |  |  |  | -40d | 0d | Labor/Helper [128 h]; Electrician [128 h]; Low Current Technician [128 h] |  |  | CO-R10-MV-TF-140 | RMU | TR | Each | TR | MV | TEST | CON | R10 | MV |

| ID | WBS | Activity | Duration | Start | Finish | Predecessors | Complete | Remaining | Planned start | Planned finish | Total float | Free float | Resources | Cost | Actual cost | Activity ID N | Seq | New Seq | 02- Network-WBS | 03- Activity | 04-UOM | 05-Discipline | 01- Network | 08 Stage | 09 Roads | 10 side Walk | Discipline | 07-Weightage System | 05number |
| --- | --- | --- | --- | --- | --- | --- | --- | --- | --- | --- | --- | --- | --- | --- | --- | --- | --- | --- | --- | --- | --- | --- | --- | --- | --- | --- | --- | --- | --- |
|  | 1 | **Road Works** |  | 2027-04-08 | 2027-05-20 |  |  |  |  |  |  |  |  |  |  |  |  |  |  |  |  |  |  |  |  |  |  |  |  |
|  | 1 | **Bituminous Construction** |  | 2027-04-08 | 2027-05-01 |  |  |  |  |  |  |  |  |  |  |  |  |  |  |  |  |  |  |  |  |  |  |  |  |
| CO-R10-S03-RD-F-110 |  | Application of Prime Coat Layer for Road Works- S.W 05-[Road 10] | 10d | 2027-04-08 | 2027-04-19 | CO-R10.S03-ES-RD-130, CO-SD-PO-K1-130, CO-R10.S03-WE-RD-130 |  |  |  |  | -159d | 0d | Labor/Helper [144 h]; Insulation Worker [144 h]; Bituminous base course(Grading I - Class A), 70mm thick after compaction including Prime Coat (MC1) [1582.3] | 577,776.84 |  | CO-R10-S03-RD-F-110 | 9 | 9 | AB | MC | Sq.m | BS | RD | CON | R10 | S03 | RD |  |  |
| CO-R10-S03-RD-F-120 |  | Bituminous Base & Wearing Courses Layers for Road Works- S.W 05-[Road 10] | 10d | 2027-04-12 | 2027-04-22 | CO-R10-S03-RD-F-110 SS+3d, CO-R10-S03-RD-F-110 FF+3d |  |  |  |  | -159d | 0d | Labor/Helper [144 h]; Eq. Operator [144 h]; Asphalt Cutter [144 h]; Asphalt Paver [144 h]; Bituminous concrete wearing course, 50 mm thick, after compaction(Grading I - Class A), including tack coat (RC) [1130.3] | 454,380.6 |  | CO-R10-S03-RD-F-120 | 9 | 9 | AB | AB | Sq.m | BS | RD | CON | R10 | S03 | RD |  |  |
| CO-R10-S04-RD-F-140 |  | Application of Prime Coat Layer for Road Works- S.W 06-[Road 10] | 10d | 2027-04-17 | 2027-04-27 | PRO-R10-RD-DL-160 FF+3d, CO-R10.S04-ES-RD-130, CO-R10-S03-RD-F-110 SS, CO-SD-PO-K1-130, CO-R10.S04-WE-RD-130 |  |  |  |  | -164d | 0d | Labor/Helper [144 h]; Insulation Worker [144 h]; Bituminous base course(Grading I - Class A), 70mm thick after compaction including Prime Coat (MC1) [1582.3] | 577,776.84 |  | CO-R10-S04-RD-F-140 | 10 | 10 | AB | MC | Sq.m | BS | RD | CON | R10 | S04 | RD |  |  |
| CO-R10-S04-RD-F-150 |  | Bituminous Base & Wearing Courses Layers for Road Works- S.W 06-[Road 10] | 10d | 2027-04-20 | 2027-05-01 | CO-R10-S04-RD-F-140 SS+3d, CO-R10-S04-RD-F-140 FF+3d, PRO-R10-RD-DL-170 FF+3d, CO-R10-S03-RD-F-120 SS |  |  |  |  | -164d | 0d | Labor/Helper [144 h]; Eq. Operator [144 h]; Asphalt Cutter [144 h]; Asphalt Paver [144 h]; Bituminous concrete wearing course, 50 mm thick, after compaction(Grading I - Class A), including tack coat (RC) [1130.3] | 454,380.6 |  | CO-R10-S04-RD-F-150 | 10 | 10 | AB | AB | Sq.m | BS | RD | CON | R10 | S04 | RD |  |  |
|  | TS | **Traffic Signs Boards and Roads Marking** |  | 2027-04-24 | 2027-05-20 |  |  |  |  |  |  |  |  |  |  |  |  |  |  |  |  |  |  |  |  |  |  |  |  |
| CO-R10-S03-RD-F-100 |  | Installation Works of Traffic Signs Boards For Road Works- S.W 05-[Road 10] | 12d | 2027-04-24 | 2027-05-06 | CO-R10.S03-ES-RD-130, CO-R10-S03-RD-F-160 FF, CO-R10.S03-WE-RD-130 |  |  |  |  | -159d | 0d | Labor/Helper [96 h]; Painter [96 h]; Traffic signs, ground mounted, Sheet Alumenium, (breakaway) Single post, with all accessories [11]; Straight Arrow [26]; Right or Left Arrow [2]; Straight-Right Arrow [1]; Straight-Left Arrow [2] | 12,617.44 |  | CO-R10-S03-RD-F-100 | 9 | 9 | TS | TF | Each | TRF | RD | CON | R10 | S03 | RD |  |  |
| CO-R10-S03-RD-F-160 |  | Application of Road Marking Works For Road Works- S.W 05-[Road 10] | 12d | 2027-04-24 | 2027-05-06 | CO-R10-S03-RD-F-120 |  |  |  |  | -159d | 0d | Labor/Helper [96 h]; Painter [96 h]; Retroreflective Thermoplastic White, Traffic lines [852.32]; Retroreflective Thermoplastic Yellow, Traffic lines [130.6]; Retroreflective raised pavement markers(Type A) [166.62] | 33,687.68 |  | CO-R10-S03-RD-F-160 | 9 | 9 | RM | RM | LM | TRF | RD | CON | R10 | S03 | RD |  |  |
| CO-R10-S04-RD-F-170 |  | Application of Road Marking Works For Road Works- S.W 06-[Road 10] | 12d | 2027-05-02 | 2027-05-20 | PRO-R10-RD-DL-150 FF+3d, CO-R10-S04-RD-F-150 |  |  |  |  | -164d | 0d | Labor/Helper [96 h]; Painter [96 h]; Retroreflective Thermoplastic White, Traffic lines [852.32]; Retroreflective Thermoplastic Yellow, Traffic lines [130.6]; Retroreflective raised pavement markers(Type A) [166.62] | 33,687.68 |  | CO-R10-S04-RD-F-170 | 10 | 10 | RM | RM | LM | TRF | RD | CON | R10 | S04 | RD |  |  |
| CO-R10-S04-RD-F-130 |  | Installation Works of Traffic Signs Boards For Road Works- S.W 06-[Road 10] | 10d | 2027-05-04 | 2027-05-20 | PRO-R10-RD-DL-140 FF+3d, CO-R10.S04-ES-RD-130, CO-R10-S04-RD-F-170 FF, CO-R10.S04-WE-RD-130 |  |  |  |  | -163d | 0d | Labor/Helper [120 h]; Painter [120 h]; Traffic signs, ground mounted, Sheet Alumenium, (breakaway) Single post, with all accessories [11]; Straight Arrow [26]; Right or Left Arrow [2]; Straight-Right Arrow [1]; Straight-Left Arrow [2] | 12,617.44 |  | CO-R10-S04-RD-F-130 | 10 | 10 | TS | TF | Each | TRF | RD | CON | R10 | S04 | RD |  |  |
|  | 5 | **Road 11 Local 1 ( 670 LM )** |  | 2026-06-22 | 2027-06-01 |  |  |  |  |  |  |  |  |  |  |  |  |  |  |  |  |  |  |  |  |  |  |  |  |
|  | 10 | **Sewage Network** |  | 2027-03-21 | 2027-04-20 |  |  |  |  |  |  |  |  |  |  |  |  |  |  |  |  |  |  |  |  |  |  |  |  |
|  | TF | **Testing and Finishes** |  | 2027-03-21 | 2027-04-20 |  |  |  |  |  |  |  |  |  |  |  |  |  |  |  |  |  |  |  |  |  |  |  |  |
| CO-R11-SW-TF-100 |  | Final Testing For Main Line of Sewage Network-[Road 11] | 12d | 2027-03-21 | 2027-04-03 | CO-R11.S05-SW-130, CO-R11.S05-RD-P-100 SS+3d, CO-R11.S05-RD-P-100 FF+3d, CO-R10-SW-TF-100, CO-R11.S06-RD-P-100 SS+3d, CO-R11.S06-RD-P-100 FF+3d, CO-R11.S06-SW-130, CO-R11.S06-SW-210 |  |  |  |  | -184d | 0d | Labor/Helper [288 h]; Plumber [288 h]; Pipe Fitter [288 h]; Nominal bore : 160mm; Depth : 1.5m - 2.5m [15]; Nominal bore : 200mm; Depth : 0.0m - 1.5m [6.71]; Nominal bore : 200mm; Depth : 1.5m - 2.5m [9.82]; Nominal bore : 200mm; Depth : 2.5m - 3.5m [7.61]; Nominal bore : 200mm; Depth : 3.5m - 4.5m [19.73]; Nominal bore : 200mm; Depth : 4.5m -5.5m [7.42]; Nominal bore : 200mm; Depth : 5.5m - 6.5m [15.52]; Depth : 1.5 - 2.5m [5]; Depth : 2.5 - 3.5m [6.11]; Depth : 3.5 - 4.5m [6.11]; Depth : 4.5 - 5.5m [10]; Depth : 5.5 - 6.5m [10]; Depth : 6.5 -7.5m [30]; Depth : 6.5 -7.5m [35]; Depth :more than 7.5m [70] | 181,390.91 |  | CO-R11-SW-TF-100 |  |  | TF | Test | Each | TF | SW | CON | R11 |  | SW | TEST |  |
| CO-R11-SW-TF-110 |  | Install Manhole Cover Works for External Finishes of Sewage Network-[Road 11] | 12d | 2027-04-04 | 2027-04-17 | CO-R11.S05-SW-130 SS+3d, PRO-R11-SW-DL-120 FF+3d, CO-R11-SW-TF-100, CO-R11.S05-SW-130 FF+3d, CO-R11.S05-RD-P-100 SS+3d, CO-R11.S05-RD-P-100 FF+3d, CO-R11.S05-SW-120 SS, CO-R11.S05-SW-120, CO-R11.S05-SW-120 FF, ENG-SH-SW-ML-A-110, ENG-SH-SW-ML-A-110 FF, CO-R10-SW-TF-110, ENG-MS-SW-ML-A-110, ENG-MS-SW-ML-A-110 FF, CO-R11.S06-RD-P-100 SS+3d, CO-R11.S06-RD-P-100 FF+3d, CO-R11.S06-SW-130 SS+3d, CO-R11.S06-SW-130 FF+3d |  |  |  |  | -184d | 0d | Labor/Helper [192 h]; Plumber [192 h]; Pipe Fitter [192 h]; Depth: not exceeding 1.5m [0.1]; Depth: 1.5 - 2.5m [0.3]; Depth: 2.5 - 3.5m [0.1]; Depth: 3.5 - 4.5m [0.05]; Depth: 4.5 - 5.5m [0.05]; Depth: 5.5 - 6.5m [0.2]; Depth:6.5 - 7.5m [0.15] | 14,424.56 |  | CO-R11-SW-TF-110 |  |  | TF | Test | Each | TF | SW | CON | R11 |  | SW |  |  |
| CO-R11-SW-TF-130 |  | Main Manhole Internal Finishes (Benching + Insulation) of Sewage Network-[Road 11] | 12d | 2027-04-07 | 2027-04-20 | CO-R11-SW-TF-110 SS+3d, CO-R11-SW-TF-110 FF+3d, PRO-R11-SW-DL-130 FF+3d, CO-R10-SW-TF-130 |  |  |  |  | -184d | 0d | Labor/Helper [192 h]; Plumber [192 h]; Pipe Fitter [192 h]; Depth: not exceeding 1.5m [0.1]; Depth: 1.5 - 2.5m [0.3]; Depth: 2.5 - 3.5m [0.1]; Depth: 3.5 - 4.5m [0.05]; Depth: 4.5 - 5.5m [0.05]; Depth: 5.5 - 6.5m [0.2]; Depth:6.5 - 7.5m [0.15] | 14,424.56 |  | CO-R11-SW-TF-130 |  |  | TF | Test | Each | TF | SW | CON | R11 |  | SW |  | 05 num |
|  | 11 | **Storm Drainage Network** |  | 2026-06-22 | 2027-04-17 |  |  |  |  |  |  |  |  |  |  |  |  |  |  |  |  |  |  |  |  |  |  |  |  |
|  | TF | **Testing and Finishes** |  | 2026-06-22 | 2027-04-17 |  |  |  |  |  |  |  |  |  |  |  |  |  |  |  |  |  |  |  |  |  |  |  |  |
| CO-R11-SD-TF-130 |  | Catch Basin Internal Finishes (Benching + Insulation ) for Storm Drainage Network-[Road 11] | 16d | 2026-06-22 A | 2027-04-17 | CO-R11-SD-TF-110 FF+3d, PRO-R11-SD-DL-160 FF+3d, CO-R11-SD-TF-100 FF, CO-R11-SW-TF-110 FF, ENG-SH-RD-A-100, ENG-SH-RD-A-100 FF, CO-R10-SD-TF-130 SS, ENG-MS-RD-A-10, ENG-MS-RD-A-10 FF | 20% | 7d | 2026-09-14 | 2026-10-03 | -104d | 68d | Labor/Helper [384 h]; Foreman [384 h]; Pipe with diameter 300mm ; depth: 0 - 1.5m [32.89]; Pipe with diameter 400mm ; depth: 0 - 1.5m [2.01] | 8,111.5 | 1,622.3 | CO-R11-SD-TF-130 |  |  | TF | Test | Each | TF | SD | CON | R11 |  | SD | INSUL |  |
| CO-R11-SD-TF-120 |  | Main Manhole Internal Finishes (Benching + Insulation ) for Storm Drainage Network-[Road 11] | 12d | 2026-06-23 A | 2027-04-17 | CO-R11-SD-TF-100 FF+3d, PRO-R11-SD-DL-160 FF+3d, CO-R11-SD-TF-110 FF, CO-R11-SW-TF-110 FF, ENG-SH-RD-A-100, ENG-SH-RD-A-100 FF, CO-R10-SD-TF-120 SS, ENG-MS-RD-A-10, ENG-MS-RD-A-10 FF, PRO-R11-SD-DL-100 FF+3d | 85% | 1d | 2026-09-09 | 2026-09-22 | -154d | 0d | MH ; depth: 0.0m - 1.5m [0.1]; MH ; depth: 1.51m - 2.5m [0.3]; MH ; depth: 2.51 - 3.5m [0.1]; MH ; depth: 1.51m - 2.5m [0.2]; MH ; depth: 2.51 - 3.5m [0.25]; MH ; depth: 2.51 - 3.5m [0.2]; Single Catch basin [22]; Double Catch basin [20]; Pipe encasement dia 300 mm [13.16]; Pipe encasement dia 400 mm [6.74]; Pipe encasement dia 500 mm [4.9]; Pipe encasement dia 600 mm [2.4]; Pipe encasement dia 700 mm [4.26]; Pipe encasement dia 800 mm [2.16]; Pipe encasement dia 900 mm [1.44]; Pipe encasement dia 1000 mm [1.52]; Pipe encasement dia 1100 mm [1.36]; Pipe encasement dia 1200 mm [0.8] | 255,027.2 | 216,773.12 | CO-R11-SD-TF-120 |  |  | TF | Test | Each | TF | SD | CON | R11 |  | SD |  |  |
| CO-R11-SD-TF-100 |  | Testing Work for Pipes of Storm Drainage Network-[Road 11] | 16d | 2026-06-24 A | 2026-07-05 A | CO-R11.S05-SD-130 SS+3d, CO-R11.S05-RD-P-100 SS+3d, CO-R11.S05-RD-P-100 FF+3d, CO-R11.S05-SD-130 FF+3d, CO-R11.S05-SD-120 SS, CO-R11.S05-SD-120, ENG-SH-SD-ML-A-110, CO-R10-SD-TF-100, ENG-MS-SD-ML-A-110, CO-R11.S06-RD-P-100 SS+3d, CO-R11.S06-RD-P-100 FF | 100% |  | 2026-08-15 | 2026-09-01 |  |  | Labor/Helper [256 h]; Plumber [256 h]; Pipe with diameter 600mm ; depth: 1.51m - 2.5m [21.46]; Pipe with diameter 700mm ; depth: 1.51m - 2.5m [21.04]; Pipe with diameter 800mm ; depth: 0.0m - 1.5m [5]; Pipe with diameter 800mm ; depth: 1.51m - 2.5m [41.02]; Pipe with diameter 800mm ; depth: 2.51m - 3.5m [7]; Pipe with diameter 900mm ; depth: 0.0m - 1.5m [5]; Pipe with diameter 900mm ; depth: 1.51m - 2.5m [16.85]; Pipe with diameter 1000mm ; depth: 1.51m - 2.5m [17.6]; Pipe with diameter 1000mm ; depth: 2.51 - 3.5m [17.6] | 89,053.14 | 89,053.14 | CO-R11-SD-TF-100 |  |  | TF | Test | Each | TF | SD | CON | R11 |  | SD | TEST |  |
| CO-R11-SD-TF-110 |  | Install Catch Basin Cover Works for External Finishes of Storm Drainage Network-[Road 11] | 12d | 2026-06-27 A | 2027-03-04 | CO-R11.S05-SD-170 SS+3d, PRO-R11-SD-DL-150 FF+3d, CO-R11.S05-RD-P-100 SS+3d, CO-R11.S05-RD-P-100 FF+3d, CO-R11.S05-RD-P-100, CO-R11.S05-SD-170 FF+3d, CO-R10-SD-TF-110 SS, CO-R11.S06-RD-P-100 SS+3d, CO-R11.S06-RD-P-100 FF+3d | 20% | 9d | 2026-08-23 | 2026-09-05 | -120d | 31d | Labor/Helper [384 h]; Foreman [384 h]; Pipe with diameter 300mm ; depth: 0 - 1.5m [32.89]; Pipe with diameter 400mm ; depth: 0 - 1.5m [2.01] | 8,111.5 | 1,622.3 | CO-R11-SD-TF-110 |  |  | TF | Test | Each | TF | SD | CON | R11 |  | SD | cover |  |
|  | 9 | **Potable Water Network** |  | 2027-02-10 | 2027-04-12 |  |  |  |  |  |  |  |  |  |  |  |  |  |  |  |  |  |  |  |  |  |  |  |  |
|  | TF | **Testing and Finishes** |  | 2027-02-10 | 2027-04-12 |  |  |  |  |  |  |  |  |  |  |  |  |  |  |  |  |  |  |  |  |  |  |  |  |
| CO-R11-PW-TF-100 |  | Final Finishes works and Covers for Valves and Valve Chambers of Potable Water Network-[Road 11] | 12d | 2027-02-10 | 2027-02-24 | CO-R11.S05-RD-P-100 FS+3d, CO-R10-PW-TF-100, PRO-R11-PW-DL-130 FF+3d |  |  |  |  | -143d | 0d | Labor/Helper [96 h]; Plumber [96 h] |  |  | CO-R11-PW-TF-100 |  |  | TF | Test | Each | TF | PW | CON | R11 |  | PW | T&COV |  |
| CO-R11-PW-TF-120 |  | Fire Hydrant Finishies (S.Box + Safety + Marker Post ) of Potable Water Network-[Road 11] | 12d | 2027-02-25 | 2027-03-14 | CO-R11-PW-TF-100, CO-R10-PW-TF-120, PRO-R11-PW-DL-130 FF+3d |  |  |  |  | -143d | 0d |  |  |  | CO-R11-PW-TF-120 |  |  | TF | Test | Each | TF | PW | CON | R11 |  | PW |  |  |
| CO-R11-PW-TF-110 |  | Testing Work for Main Line of Potable Water Network-[Road 11] | 12d | 2027-03-30 | 2027-04-12 | CO-R10-PW-TF-110 |  |  |  |  | -180d | 0d | Labor/Helper [96 h]; Plumber [96 h]; Pipe with diameter 200mm; in depth 0.0m - 1.5m [79.91] | 11,618.55 |  | CO-R11-PW-TF-110 |  |  | TF | Test | LM | TF | PW | CON | R11 |  | PW | TEST |  |

| ID | WBS | Activity | Duration | Start | Finish | Predecessors | Complete | Planned start | Planned finish | Total float | Free float | Resources | Cost | Actual cost | Activity ID N | 02- Network-WBS | 03- Activity | 04-UOM | 05-Discipline | 01- Network | 07-Weightage System | 08 Stage | 09 Roads | Discipline | Seq | New Seq | 10 side Walk | 05number |
| --- | --- | --- | --- | --- | --- | --- | --- | --- | --- | --- | --- | --- | --- | --- | --- | --- | --- | --- | --- | --- | --- | --- | --- | --- | --- | --- | --- | --- |
|  | 13 | **Irrigation Network** |  | 2027-03-15 | 2027-03-25 |  |  |  |  |  |  |  |  |  |  |  |  |  |  |  |  |  |  |  |  |  |  |  |
|  | TF | **Testing and Finishes** |  | 2027-03-15 | 2027-03-25 |  |  |  |  |  |  |  |  |  |  |  |  |  |  |  |  |  |  |  |  |  |  |  |
| CO-R11-IR-TF-130 |  | Final Testing (pressure tests) of Irrigation Network-[Road 11] | 10d | 2027-03-15 | 2027-03-25 | CO-R11.S05-IR-130, CO-R11.S05-RD-P-100, CO-R10-IR-TF-120, CO-R11.S06-RD-P-100, CO-R11.S06-PW-210, CO-R11.S06-PW-160 |  |  |  | -163d | 0d | Labor/Helper [256 h]; Plumber [256 h]; Pipe Fitter [256 h]; 125 mm pipe; depth 0.0m - 1.5m [83.84] | 6,235.18 |  | CO-R11-IR-TF-130 | TF | Test | LM | TF | IR | TEST | CON | R11 | IR |  |  |  |  |
|  | 12 | **Street Lighting Network** |  | 2027-01-17 | 2027-04-20 |  |  |  |  |  |  |  |  |  |  |  |  |  |  |  |  |  |  |  |  |  |  |  |
|  | TR | **Termination and Testing Works** |  | 2027-01-17 | 2027-04-20 |  |  |  |  |  |  |  |  |  |  |  |  |  |  |  |  |  |  |  |  |  |  |  |
| CO-R11-SL-TF-160 |  | Termination Works For Lighting Poles Cables of Street Lighting Network-[Road 11] | 12d | 2027-01-17 | 2027-01-30 | PRO-R11-SL-DL-130 FF+3d, CO-R10-SL-TF-140 |  |  |  | -139d | 0d | Labor/Helper [96 h]; Electrician [96 h]; Low Current Technician [96 h]; Supply, installation , test and operation of cables, Copper, (4Cx25mmï¿½,Cu/XLPE/SWA/PVC +1x16mmï¿½ PVC/PVC) [510.3] | 23,933.07 |  | CO-R11-SL-TF-160 | TR | TR | Each | T&F | SL | TERM | CON | R11 | SL |  |  |  |  |
| CO-R11-SL-TF-170 |  | Termination Works For Panel Board Cables of Street Lighting Network-[Road 11] | 12d | 2027-04-05 | 2027-04-18 | PRO-R11-SL-DL-170 FF+3d, CO-R10-SL-TF-150, CO-R11.S06-SL-220 |  |  |  | -206d | 0d |  |  |  | CO-R11-SL-TF-170 | TR | TR | Each | T&F | SL | TERMINA | CON | R11 | SL |  |  |  |  |
| CO-R11-SL-TF-380 |  | Testing Works For Panel Board Cables of Street Lighting Network-[Road 11] | 2d | 2027-04-19 | 2027-04-20 | CO-R11-SL-TF-170, CO-R10-SL-TF-380 |  |  |  | -196d | 16d |  |  |  | CO-R11-SL-TF-380 |  |  |  |  | SL | TEST | CON | R11 | SL |  |  |  |  |
|  | ES | **Earthing System Works** |  |  |  |  |  |  |  |  |  |  |  |  |  |  |  |  |  |  |  |  |  |  |  |  |  |  |
|  | 14 | **Medium Voltage Network** |  | 2026-11-04 | 2026-11-11 |  |  |  |  |  |  |  |  |  |  |  |  |  |  |  |  |  |  |  |  |  |  |  |
|  | TT | **Termination and Testing Works** |  | 2026-11-04 | 2026-11-11 |  |  |  |  |  |  |  |  |  |  |  |  |  |  |  |  |  |  |  |  |  |  |  |
| CO-R11-MV-TF-160 |  | Termination Works of Medium Voltage Network-[Road 11] | 7d | 2026-11-04 | 2026-11-11 | CO-R10.S03-ES-MV-170, CO-R11.S05-MV-120, CO-R10-MV-TF-140, PRO-R11-MV-DL-110 FF+3d, CO-R17.S13-MV-170, CO-R10.S03-WE-MV-170, PRO-R10-MV-DL-120 |  |  |  | -40d | 0d | Labor/Helper [96 h]; Electrician [96 h]; Low Current Technician [96 h] |  |  | CO-R11-MV-TF-160 | RMU | TR | Each | TR | MV | TEST | CON | R11 | MV |  |  |  |  |
|  | 1 | **Road Works** |  | 2026-08-12 | 2027-06-01 |  |  |  |  |  |  |  |  |  |  |  |  |  |  |  |  |  |  |  |  |  |  |  |
|  | 1 | **Bituminous Construction** |  | 2026-08-12 | 2027-05-20 |  |  |  |  |  |  |  |  |  |  |  |  |  |  |  |  |  |  |  |  |  |  |  |
| CO-R11-S05-RD-F-110 |  | Application of Prime Coat Layer for Road Works- S.W 07-[Road 11] | 10d | 2026-08-12 A | 2026-08-15 A | CO-R11-SD-TF-100 | 100% | 2026-10-12 | 2026-10-22 |  |  | Labor/Helper [96 h]; Insulation Worker [96 h]; Bituminous base course(Grading I - Class A), 70mm thick after compaction including Prime Coat (MC1) [461.72] | 168,597.06 | 168,597.06 | CO-R11-S05-RD-F-110 | AB | MC | Sq.m | BS | RD |  | CON | R11 | RD | 15 | 15 | S05 |  |
| CO-R11-S06-RD-F-140 |  | Application of Prime Coat Layer for Road Works- S.W 08-[Road 11] | 12d | 2026-08-13 A | 2026-08-15 A | PRO-R11-RD-DL-160 FF+3d, CO-R11-S05-RD-F-110 SS | 100% | 2026-10-14 | 2026-10-27 |  |  | Labor/Helper [144 h]; Insulation Worker [144 h]; Bituminous base course(Grading I - Class A), 70mm thick after compaction including Prime Coat (MC1) [461.72] | 168,597.06 | 168,597.06 | CO-R11-S06-RD-F-140 | AB | MC | Sq.m | BS | RD |  | CON | R11 | RD | 16 | 16 | S06 |  |
| CO-R11-S05-RD-F-120 |  | Bituminous Base & Wearing Courses Layers for Road Works- S.W 07-[Road 11] | 12d | 2027-04-24 | 2027-05-06 | CO-R11-S05-RD-F-110 SS+3d, CO-R11-S05-RD-F-110 FF+3d, CO-R10-S03-RD-F-120 |  |  |  | -159d | 0d | Labor/Helper [96 h]; Eq. Operator [96 h]; Asphalt Cutter [96 h]; Asphalt Paver [96 h]; Bituminous concrete wearing course, 50 mm thick, after compaction(Grading I - Class A), including tack coat (RC) [329.83] | 132,591.66 |  | CO-R11-S05-RD-F-120 | AB | AB | Sq.m | BS | RD |  | CON | R11 | RD | 15 | 15 | S05 |  |
| CO-R11-S06-RD-F-150 |  | Bituminous Base & Wearing Courses Layers for Road Works- S.W 08-[Road 11] | 12d | 2027-05-02 | 2027-05-20 | CO-R11-S06-RD-F-140 SS+3d, CO-R11-S06-RD-F-140 FF+3d, CO-R10-S04-RD-F-150, PRO-R11-RD-DL-170 FF+3d, CO-R11-S05-RD-F-120 SS |  |  |  | -164d | 0d | Labor/Helper [144 h]; Eq. Operator [144 h]; Asphalt Cutter [144 h]; Asphalt Paver [144 h]; Bituminous concrete wearing course, 50 mm thick, after compaction(Grading I - Class A), including tack coat (RC) [329.83] | 132,591.66 |  | CO-R11-S06-RD-F-150 | AB | AB | Sq.m | BS | RD |  | CON | R11 | RD | 16 | 16 | S06 |  |
|  | TS | **Traffic Signs Boards and Roads Marking** |  | 2027-05-08 | 2027-06-01 |  |  |  |  |  |  |  |  |  |  |  |  |  |  |  |  |  |  |  |  |  |  |  |
| CO-R11-S05-RD-F-100 |  | Installation Works of Traffic Signs Boards For Road Works- S.W 07-[Road 11] | 10d | 2027-05-08 | 2027-05-24 | CO-R11.S05-RD-P-130, CO-R10-S03-RD-F-100, CO-R11-S05-RD-F-160 FF, CO-R11-PW-TF-100, CO-R11-PW-TF-110, CO-R11-PW-TF-120, CO-R11-SW-TF-100, CO-R11-SW-TF-110, CO-R11-SW-TF-130, CO-R11-SL-TF-160, CO-R11-SL-TF-170, CO-R11-IR-TF-130, CO-R11-MV-TF-160 |  |  |  | -159d | 5d | Labor/Helper [96 h]; Painter [96 h]; Traffic signs, ground mounted, Sheet Alumenium, (breakaway) Single post, with all accessories [3]; Straight Arrow [8]; Straight-Left Arrow [1] | 3,493.38 |  | CO-R11-S05-RD-F-100 | TS | TF | Each | TRF | RD |  | CON | R11 | RD | 15 | 15 | S05 |  |
| CO-R11-S05-RD-F-160 |  | Application of Road Marking Works For Road Works- S.W 07-[Road 11] | 10d | 2027-05-08 | 2027-05-24 | CO-R11-S05-RD-F-120, CO-R10-S03-RD-F-160 |  |  |  | -159d | 0d | Labor/Helper [96 h]; Painter [96 h]; Retroreflective Thermoplastic White, Traffic lines [248.71]; Retroreflective Thermoplastic Yellow, Traffic lines [38.11]; Retroreflective raised pavement markers(Type A) [48.62] | 9,830.19 |  | CO-R11-S05-RD-F-160 | RM | RM | LM | TRF | RD |  | CON | R11 | RD | 15 | 15 | S05 |  |
| CO-R11-S06-RD-F-130 |  | Installation Works of Traffic Signs Boards For Road Works- S.W 08-[Road 11] | 10d | 2027-05-22 | 2027-06-01 | PRO-R11-RD-DL-140 FF+3d, CO-R11.S06-RD-P-130, CO-R10-S04-RD-F-130, CO-R11-S06-RD-F-170 FF, CO-R11-PW-TF-100, CO-R11-PW-TF-110, CO-R11-PW-TF-120, CO-R11-SW-TF-100, CO-R11-SW-TF-110, CO-R11-SW-TF-130, CO-R11-SL-TF-160, CO-R11-SL-TF-170, CO-R11-IR-TF-130, CO-R11-MV-TF-160 |  |  |  | -163d | 0d | Labor/Helper [96 h]; Painter [96 h]; Traffic signs, ground mounted, Sheet Alumenium, (breakaway) Single post, with all accessories [3]; Straight Arrow [8]; Straight-Left Arrow [1] | 3,493.38 |  | CO-R11-S06-RD-F-130 | TS | TF | Each | TRF | RD |  | CON | R11 | RD | 16 | 16 | S06 |  |
| CO-R11-S06-RD-F-170 |  | Application of Road Marking Works For Road Works- S.W 08-[Road 11] | 10d | 2027-05-22 | 2027-06-01 | PRO-R11-RD-DL-150 FF+3d, CO-R11-S06-RD-F-150, CO-R10-S04-RD-F-170 |  |  |  | -164d | 0d | Labor/Helper [96 h]; Painter [96 h]; Retroreflective Thermoplastic White, Traffic lines [248.71]; Retroreflective Thermoplastic Yellow, Traffic lines [38.11]; Retroreflective raised pavement markers(Type A) [48.62] | 9,830.19 |  | CO-R11-S06-RD-F-170 | RM | RM | LM | TRF | RD |  | CON | R11 | RD | 16 | 16 | S06 |  |
|  | 6 | **Road 14 Local 1 ( 584 LM )** |  | 2026-04-08 | 2027-06-13 |  |  |  |  |  |  |  |  |  |  |  |  |  |  |  |  |  |  |  |  |  |  |  |
|  | 10 | **Sewage Network** |  | 2026-09-15 | 2027-05-04 |  |  |  |  |  |  |  |  |  |  |  |  |  |  |  |  |  |  |  |  |  |  |  |
|  | TF | **Testing and Finishes** |  | 2026-09-15 | 2027-05-04 |  |  |  |  |  |  |  |  |  |  |  |  |  |  |  |  |  |  |  |  |  |  |  |
| CO-R14-SW-TF-100 |  | Final Testing For Main Line of Sewage Network-[Road 14] | 12d | 2026-09-15 A | 2026-09-21 A | CO-R14.S07-SW-130, CO-R14.S07-RD-P-100 SS+3d, CO-R14.S07-RD-P-100 FF+3d, CO-R14.S08-RD-P-100 SS+3d, CO-R14.S08-RD-P-100 FF+3d, CO-R14.S08-SW-130 | 100% | 2027-05-29 | 2027-06-10 |  |  | Labor/Helper [192 h]; Plumber [192 h]; Pipe Fitter [192 h]; Nominal bore : 160mm; Depth : 0.0m - 1.5m [7.2]; Nominal bore : 200mm; Depth : 0.0m - 1.5m [11.74]; Nominal bore : 200mm; Depth : 1.5m - 2.5m [12.08]; Nominal bore : 200mm; Depth : 2.5m - 3.5m [20.01]; Nominal bore : 200mm; Depth : 3.5m - 4.5m [19.78]; Nominal bore : 200mm; Depth : 4.5m -5.5m [12.29]; Nominal bore : 200mm; Depth : 5.5m - 6.5m [16.66] | 31,128.01 | 31,128.01 | CO-R14-SW-TF-100 | TF | Test | Each | TF | SW | TEST | CON | R14 | SW |  |  |  |  |
| CO-R14-SW-TF-110 |  | Install Manhole Cover Works for External Finishes of Sewage Network-[Road 14] | 12d | 2027-04-18 | 2027-05-01 | CO-R14.S07-SW-130 SS+3d, PRO-R14-SW-DL-120 FF+3d, CO-R14-SW-TF-100, CO-R14.S07-SW-130 FF+3d, CO-R14.S07-RD-P-100 SS+3d, CO-R14.S07-RD-P-100 FF+3d, CO-R14.S07-SW-120 SS, CO-R14.S07-SW-120, CO-R14.S07-SW-120 FF, ENG-SH-SW-ML-A-110, ENG-SH-SW-ML-A-110 FF, CO-R11-SW-TF-110, ENG-MS-SW-ML-A-110, ENG-MS-SW-ML-A-110 FF, CO-R14.S08-RD-P-100 SS+3d, CO-R14.S08-RD-P-100 FF+3d, CO-R14.S08-SW-130 SS+3d, CO-R14.S08-SW-130 FF+3d, CO-R14.S07-SW-210, CO-R11-SW-TF-100, CO-R14.S08-SW-210 |  |  |  | -184d | 0d | Labor/Helper [192 h]; Plumber [192 h]; Pipe Fitter [192 h]; Depth: not exceeding 1.5m [0.2]; Depth: 1.5 - 2.5m [0.3]; Depth: 3.5 - 4.5m [0.05]; Depth: 4.5 - 5.5m [0.05]; Depth: 5.5 - 6.5m [0.1]; Depth:6.5 - 7.5m [0.05] | 8,661.16 |  | CO-R14-SW-TF-110 | TF | Test | Each | TF | SW |  | CON | R14 | SW |  |  |  |  |
| CO-R14-SW-TF-130 |  | Main Manhole Internal Finishes (Benching + Insulation) of Sewage Network-[Road 14] | 12d | 2027-04-21 | 2027-05-04 | CO-R14-SW-TF-110 SS+3d, CO-R14-SW-TF-110 FF+3d, PRO-R14-SW-DL-130 FF+3d, CO-R11-SW-TF-130 |  |  |  | -184d | 0d | Labor/Helper [192 h]; Plumber [192 h]; Pipe Fitter [192 h]; Depth: not exceeding 1.5m [0.2]; Depth: 1.5 - 2.5m [0.3]; Depth: 3.5 - 4.5m [0.05]; Depth: 4.5 - 5.5m [0.05]; Depth: 5.5 - 6.5m [0.1]; Depth:6.5 - 7.5m [0.05] | 8,661.16 |  | CO-R14-SW-TF-130 | TF | Test | Each | TF | SW |  | CON | R14 | SW |  |  |  | 05 num |

| ID | WBS | Activity | Duration | Start | Finish | Predecessors | Complete | Planned start | Planned finish | Total float | Free float | Resources | Cost | Actual cost | Activity ID N | 02- Network-WBS | 01- Network | 07-Weightage System | 08 Stage | 09 Roads | Discipline | 03- Activity | 04-UOM | 05-Discipline | Seq | New Seq | 10 side Walk |
| --- | --- | --- | --- | --- | --- | --- | --- | --- | --- | --- | --- | --- | --- | --- | --- | --- | --- | --- | --- | --- | --- | --- | --- | --- | --- | --- | --- |
|  | 11 | **Storm Drainage Network** |  | 2026-04-08 | 2026-04-18 |  |  |  |  |  |  |  |  |  |  |  |  |  |  |  |  |  |  |  |  |  |  |
|  | TF | **Testing and Finishes** |  | 2026-04-08 | 2026-04-18 |  |  |  |  |  |  |  |  |  |  |  |  |  |  |  |  |  |  |  |  |  |  |
| CO-R14-SD-TF-100 |  | Testing Work for Pipes of Storm Drainage Network-[Road 14] | 10d | 2026-04-08 A | 2026-04-18 A | CO-R14.S07-SD-120 SS+2d, CO-R14.S08-SD-120 SS+2d, CO-R14.S07-SD-130, CO-R14.S07-RD-P-100 SS, CO-R14.S07-RD-P-100 FF | 100% | 2026-08-10 | 2026-08-20 |  |  | Pipe with diameter 400mm ; depth: 0.0m - 1.5m [25.56]; Pipe with diameter 400mm ; depth: 1.51m - 2.5m [25.97]; Pipe with diameter 400mm ; depth: 2.51m - 3.5m [5]; Pipe with diameter 500mm ; depth: 1.51m - 2.5m [65.4]; Pipe with diameter 600mm ; depth: 1.51m - 2.5m [24.12]; Pipe with diameter 700mm ; depth: 1.51m - 2.5m [31.06]; Pipe with diameter 1200mm ; depth: 2.51 - 3.5m [48.3] | 110,901.39 | 110,901.39 | CO-R14-SD-TF-100 | TC | SD | TEST | CON | R14 | SD |  |  |  |  |  |  |
| CO-R14-SD-TF-110 |  | Install Catch Basin Cover Works for External Finishes of Storm Drainage Network-[Road 14] | 12d | 2026-04-08 A | 2026-04-18 A | CO-R14.S07-SD-170 SS+3d, CO-R14.S07-RD-P-100 SS+3d, CO-R14.S07-RD-P-100 FF+3d, CO-R14.S07-RD-P-100, CO-R14.S07-SD-170 FF+3d, CO-R14.S08-RD-P-100 SS+3d, CO-R14.S08-RD-P-100 FF+3d, CO-R14-SD-TF-100, CO-R14.S07-SD-170 | 100% | 2026-09-06 | 2026-09-19 |  |  | Labor/Helper [384 h]; Foreman [384 h]; Pipe with diameter 300mm ; depth: 0 - 1.5m [48.54]; Pipe with diameter 400mm ; depth: 0 - 1.5m [2.96] | 11,970.37 | 11,970.37 | CO-R14-SD-TF-110 | TF | SD | cover | CON | R14 | SD | Test | Each | TF |  |  |  |
| CO-R14-SD-TF-120 |  | Main Manhole Internal Finishes (Benching + Insulation ) for Storm Drainage Network-[Road 14] | 12d | 2026-04-08 A | 2026-04-18 A | CO-R14-SD-TF-110 SS, CO-R14-SD-TF-110, CO-R14-SD-TF-110 FF, ENG-SH-RD-A-100, ENG-SH-RD-A-100 FF, ENG-MS-RD-A-10, ENG-MS-RD-A-10 FF, CO-R14.S07-SD-220, PRO-R14-SD-DL-100 FF+3d | 100% | 2026-09-24 | 2026-10-07 |  |  | MH ; depth: 0.0m - 1.5m [0.2]; MH ; depth: 1.51m - 2.5m [0.4]; MH ; depth: 2.51 - 3.5m [0.05]; MH ; depth: 2.51 - 3.5m [0.1]; MH ; depth: 2.51 - 3.5m with back drop less than 1.0 m [0.05]; MH ; depth: 1.51m - 2.5m [0.1]; Single Catch basin [30]; Double Catch basin [24]; Pipe encasement dia 300 mm [19.4]; Pipe encasement dia 400 mm [9.92]; Pipe encasement dia 500 mm [7.22]; Pipe encasement dia 600 mm [3.56]; Pipe encasement dia 700 mm [6.28]; Pipe encasement dia 800 mm [3.2]; Pipe encasement dia 900 mm [2.14]; Pipe encasement dia 1000 mm [2.24]; Pipe encasement dia 1100 mm [2.02]; Pipe encasement dia 1200 mm [1.18] | 309,811.13 | 309,811.13 | CO-R14-SD-TF-120 | TF | SD |  | CON | R14 | SD | Test | Each | TF |  |  |  |
| CO-R14-SD-TF-130 |  | Catch Basin Internal Finishes (Benching + Insulation ) for Storm Drainage Network-[Road 14] | 16d | 2026-04-08 A | 2026-04-18 A | CO-R14-SD-TF-110 SS+3d, CO-R14-SD-TF-110 FF+3d, CO-R14-SD-TF-110, ENG-SH-RD-A-100, ENG-SH-RD-A-100 FF, ENG-MS-RD-A-10, ENG-MS-RD-A-10 FF, CO-R14.S07-SD-150 | 100% | 2026-10-04 | 2026-10-21 |  |  | Labor/Helper [384 h]; Foreman [384 h]; Pipe with diameter 300mm ; depth: 0 - 1.5m [48.54]; Pipe with diameter 400mm ; depth: 0 - 1.5m [2.96] | 11,970.37 | 11,970.37 | CO-R14-SD-TF-130 | TF | SD | INSUL | CON | R14 | SD | Test | Each | TF |  |  |  |
|  | 9 | **Potable Water Network** |  | 2027-02-25 | 2027-04-26 |  |  |  |  |  |  |  |  |  |  |  |  |  |  |  |  |  |  |  |  |  |  |
|  | TF | **Testing and Finishes** |  | 2027-02-25 | 2027-04-26 |  |  |  |  |  |  |  |  |  |  |  |  |  |  |  |  |  |  |  |  |  |  |
| CO-R14-PW-TF-100 |  | Final Finishes works and Covers for Valves and Valve Chambers of Potable Water Network-[Road 14] | 12d | 2027-02-25 | 2027-03-14 | CO-R14.S07-RD-P-100 FS+3d, CO-R11-PW-TF-100, PRO-R14-PW-DL-130 FF+3d |  |  |  | -143d | 0d | Labor/Helper [96 h]; Plumber [96 h] |  |  | CO-R14-PW-TF-100 | TF | PW | T&COV | CON | R14 | PW | Test | Each | TF |  |  |  |
| CO-R14-PW-TF-120 |  | Fire Hydrant Finishies (S.Box + Safety + Marker Post ) of Potable Water Network-[Road 14] | 12d | 2027-03-15 | 2027-03-28 | CO-R14-PW-TF-100, CO-R11-PW-TF-120, PRO-R14-PW-DL-130 FF+3d |  |  |  | -143d | 0d |  |  |  | CO-R14-PW-TF-120 | TF | PW |  | CON | R14 | PW | Test | Each | TF |  |  |  |
| CO-R14-PW-TF-110 |  | Testing Work for Main Line of Potable Water Network-[Road 14] | 12d | 2027-04-13 | 2027-04-26 | CO-R11-PW-TF-110 |  |  |  | -180d | 0d | Labor/Helper [96 h]; Plumber [96 h]; Pipe with diameter 355mm; in depth 0.0m - 1.5m [140]; Pipe with diameter 355mm; in depth 1.5m - 3.0m [10] | 44,447.8 |  | CO-R14-PW-TF-110 | TF | PW | TEST | CON | R14 | PW | Test | LM | TF |  |  |  |
|  | 13 | **Irrigation Network** |  | 2027-03-27 | 2027-04-06 |  |  |  |  |  |  |  |  |  |  |  |  |  |  |  |  |  |  |  |  |  |  |
|  | TF | **Testing and Finishes** |  | 2027-03-27 | 2027-04-06 |  |  |  |  |  |  |  |  |  |  |  |  |  |  |  |  |  |  |  |  |  |  |
| CO-R11-IR-TF-140 |  | Final Testing (pressure tests) of Irrigation Network-[Road 14] | 10d | 2027-03-27 | 2027-04-06 | CO-R14.S07-IR-130, CO-R14.S07-RD-P-100, CO-R11-IR-TF-130, CO-R14.S08-RD-P-100 |  |  |  | -163d | 0d | Labor/Helper [256 h]; Plumber [256 h]; Pipe Fitter [256 h]; 125 mm pipe; depth 0.0m - 1.5m [123.72]; 280 mm pipe; depth 0.0m - 1.5m [47.5]; 280 mm pipe; depth 1.5m - 3.0m [5] | 24,385.3 |  | CO-R11-IR-TF-140 | TF | IR | TEST | CON | R14 | IR | Test | LM | TF |  |  |  |
|  | 12 | **Street Lighting Network** |  | 2027-01-31 | 2027-05-11 |  |  |  |  |  |  |  |  |  |  |  |  |  |  |  |  |  |  |  |  |  |  |
|  | TR | **Termination and Testing Works** |  | 2027-01-31 | 2027-05-11 |  |  |  |  |  |  |  |  |  |  |  |  |  |  |  |  |  |  |  |  |  |  |
| CO-R11-SL-TF-180 |  | Termination Works For Lighting Poles Cables of Street Lighting Network-[Road 14] | 12d | 2027-01-31 | 2027-02-13 | CO-R14.S07-SL-160, CO-R14.S07-SL-130, PRO-R14-SL-DL-130 FF+3d, CO-R11-SL-TF-160, CO-R14.S08-SL-660 |  |  |  | -139d | 0d | Labor/Helper [96 h]; Electrician [96 h]; Low Current Technician [96 h]; Supply, installation , test and operation of cables, Copper, (4Cx25mmï¿½,Cu/XLPE/SWA/PVC +1x16mmï¿½ PVC/PVC) [743.4] | 34,865.46 |  | CO-R11-SL-TF-180 | TR | SL | TERM | CON | R14 | SL | TR | Each | T&F |  |  |  |
| CO-R11-SL-TF-190 |  | Termination Works For Panel Board Cables of Street Lighting Network-[Road 14] | 12d | 2027-04-26 | 2027-05-09 | CO-R14.S07-SL-190, PRO-R14-SL-DL-170 FF+3d, CO-R14.S07-SL-160, CO-R11-SL-TF-170, CO-R14.S08-SL-DB-660, CO-R14.S07-SL-220, CO-R14.S08-SL-220 |  |  |  | -212d | 0d | Labor/Helper [96 h]; Electrician [96 h]; Low Current Technician [96 h] |  |  | CO-R11-SL-TF-190 | TR | SL | TERMINA | CON | R14 | SL | TR | Each | T&F |  |  |  |
| CO-R14-SL-TF-380 |  | Testing Works For Panel Board Cables of Street Lighting Network-[Road 14] | 2d | 2027-05-10 | 2027-05-11 | CO-R11-SL-TF-190, CO-R11-SL-TF-380 |  |  |  | -212d | 0d | Labor/Helper [16 h]; Electrician [16 h] |  |  | CO-R14-SL-TF-380 |  | SL | TEST | CON | R14 | SL |  |  |  |  |  |  |
|  | ES | **Earthing System Works** |  |  |  |  |  |  |  |  |  |  |  |  |  |  |  |  |  |  |  |  |  |  |  |  |  |
|  | 14 | **Medium Voltage Network** |  | 2026-11-12 | 2026-11-19 |  |  |  |  |  |  |  |  |  |  |  |  |  |  |  |  |  |  |  |  |  |  |
|  | TT | **Termination and Testing Works** |  | 2026-11-12 | 2026-11-19 |  |  |  |  |  |  |  |  |  |  |  |  |  |  |  |  |  |  |  |  |  |  |
| CO-R11-MV-TF-180 |  | Termination Works of Medium Voltage Network-[Road 14] | 7d | 2026-11-12 | 2026-11-19 | CO-R11-MV-TF-160, PRO-R14-MV-DL-110 FF+3d |  |  |  | -40d | 0d | Labor/Helper [96 h]; Electrician [96 h]; Low Current Technician [96 h] |  |  | CO-R11-MV-TF-180 | RMU | MV | TEST | CON | R14 | MV | TR | Each | TR |  |  |  |
|  | 1 | **Road Works** |  | 2027-05-10 | 2027-06-13 |  |  |  |  |  |  |  |  |  |  |  |  |  |  |  |  |  |  |  |  |  |  |
|  | 1 | **Bituminous Construction** |  | 2027-05-10 | 2027-06-01 |  |  |  |  |  |  |  |  |  |  |  |  |  |  |  |  |  |  |  |  |  |  |
| CO-R11-S07-RD-F-110 |  | Application of Prime Coat Layer for Road Works- S.W 09-[Road 14] | 12d | 2027-05-10 | 2027-05-29 | CO-R11-S05-RD-F-110, CO-R14.S07-RD-P-130 |  |  |  | -164d | 0d | Labor/Helper [96 h]; Insulation Worker [96 h]; Bituminous base course(Grading I - Class A), 70mm thick after compaction including Prime Coat (MC1) [681.37] | 248,802.26 |  | CO-R11-S07-RD-F-110 | AB | RD |  | CON | R14 | RD | MC | Sq.m | BS | 13 | 13 | S07 |
| CO-R11-S08-RD-F-140 |  | Application of Prime Coat Layer for Road Works- S.W 10-[Road 14] | 10d | 2027-05-10 | 2027-05-26 | PRO-R14-RD-DL-160 FF+3d, CO-R14.S08-RD-P-130, CO-R11-S07-RD-F-110 SS |  |  |  | -162d | 2d | Labor/Helper [144 h]; Insulation Worker [144 h]; Bituminous base course(Grading I - Class A), 70mm thick after compaction including Prime Coat (MC1) [681.37] | 248,802.26 |  | CO-R11-S08-RD-F-140 | AB | RD |  | CON | R14 | RD | MC | Sq.m | BS | 14 | 14 | S08 |
| CO-R11-S07-RD-F-120 |  | Bituminous Base & Wearing Courses Layers for Road Works- S.W 09-[Road 14] | 10d | 2027-05-22 | 2027-06-01 | CO-R11-S07-RD-F-110 SS+3d, CO-R11-S07-RD-F-110 FF+3d, CO-R11-S05-RD-F-120 |  |  |  | -164d | 0d | Labor/Helper [96 h]; Eq. Operator [96 h]; Asphalt Cutter [96 h]; Asphalt Paver [96 h]; Bituminous concrete wearing course, 50 mm thick, after compaction(Grading I - Class A), including tack coat (RC) [486.73] | 195,665.46 |  | CO-R11-S07-RD-F-120 | AB | RD |  | CON | R14 | RD | AB | Sq.m | BS | 13 | 13 | S07 |
| CO-R11-S08-RD-F-150 |  | Bituminous Base & Wearing Courses Layers for Road Works- S.W 10-[Road 14] | 10d | 2027-05-22 | 2027-06-01 | CO-R11-S08-RD-F-140 SS+3d, CO-R11-S08-RD-F-140 FF+3d, PRO-R14-RD-DL-170 FF+3d, CO-R11-S07-RD-F-120 SS |  |  |  | -164d | 0d | Labor/Helper [144 h]; Eq. Operator [144 h]; Asphalt Cutter [144 h]; Asphalt Paver [144 h]; Bituminous concrete wearing course, 50 mm thick, after compaction(Grading I - Class A), including tack coat (RC) [486.73] | 195,665.46 |  | CO-R11-S08-RD-F-150 | AB | RD |  | CON | R14 | RD | AB | Sq.m | BS | 14 | 14 | S08 |

| ID | WBS | Activity | Duration | Start | Finish | Predecessors | Complete | Planned start | Planned finish | Total float | Free float | Resources | Cost | Actual cost | Activity ID N | Seq | New Seq | 02- Network-WBS | 03- Activity | 04-UOM | 05-Discipline | 01- Network | 08 Stage | 09 Roads | 10 side Walk | Discipline | 07-Weightage System | 05number |
| --- | --- | --- | --- | --- | --- | --- | --- | --- | --- | --- | --- | --- | --- | --- | --- | --- | --- | --- | --- | --- | --- | --- | --- | --- | --- | --- | --- | --- |
|  | TS | **Traffic Signs Boards and Roads Marking** |  | 2027-05-31 | 2027-06-13 |  |  |  |  |  |  |  |  |  |  |  |  |  |  |  |  |  |  |  |  |  |  |  |
| CO-R11-S07-RD-F-100 |  | Installation Works of Traffic Signs Boards For Road Works- S.W 09-[Road 14] | 12d | 2027-05-31 | 2027-06-13 | CO-R14.S07-RD-P-130, CO-R11-S05-RD-F-100, CO-R11-S07-RD-F-160 FF, CO-R14.S07-RD-P-110, CO-R10.S03-WE-RD-110, CO-R10.S03-ES-RD-110 |  |  |  | -164d | 0d | Labor/Helper [96 h]; Painter [96 h]; Traffic signs, ground mounted, Sheet Alumenium, (breakaway) Single post, with all accessories [5]; Straight Arrow [11]; Straight-Right Arrow [1]; Straight-Left Arrow [1] | 5,630.68 |  | CO-R11-S07-RD-F-100 | 13 | 13 | TS | TF | Each | TRF | RD | CON | R14 | S07 | RD |  |  |
| CO-R11-S07-RD-F-160 |  | Application of Road Marking Works For Road Works- S.W 09-[Road 14] | 10d | 2027-06-02 | 2027-06-13 | CO-R11-S07-RD-F-120, CO-R11-S05-RD-F-160 |  |  |  | -164d | 0d | Labor/Helper [96 h]; Painter [96 h]; Retroreflective Thermoplastic White, Traffic lines [367.03]; Retroreflective Thermoplastic Yellow, Traffic lines [56.24]; Retroreflective raised pavement markers(Type A) [71.75] | 14,506.73 |  | CO-R11-S07-RD-F-160 | 13 | 13 | RM | RM | LM | TRF | RD | CON | R14 | S07 | RD |  |  |
| CO-R11-S08-RD-F-130 |  | Installation Works of Traffic Signs Boards For Road Works- S.W 10-[Road 14] | 10d | 2027-06-02 | 2027-06-13 | PRO-R14-RD-DL-140 FF+3d, CO-R14.S08-RD-P-130, CO-R11-S06-RD-F-130, CO-R11-S08-RD-F-170 FF, CO-R14.S08-RD-P-110, CO-R10.S04-WE-RD-110, CO-R10.S04-ES-RD-110 |  |  |  | -163d | 0d | Labor/Helper [96 h]; Painter [96 h]; Traffic signs, ground mounted, Sheet Alumenium, (breakaway) Single post, with all accessories [5]; Straight Arrow [11]; Straight-Right Arrow [1]; Straight-Left Arrow [1] | 5,630.68 |  | CO-R11-S08-RD-F-130 | 14 | 14 | TS | TF | Each | TRF | RD | CON | R14 | S08 | RD |  |  |
| CO-R11-S08-RD-F-170 |  | Application of Road Marking Works For Road Works- S.W 10-[Road 14] | 10d | 2027-06-02 | 2027-06-13 | PRO-R14-RD-DL-150 FF+3d, CO-R11-S08-RD-F-150, CO-R11-S06-RD-F-170 |  |  |  | -164d | 0d | Labor/Helper [96 h]; Painter [96 h]; Retroreflective Thermoplastic White, Traffic lines [367.03]; Retroreflective Thermoplastic Yellow, Traffic lines [56.24]; Retroreflective raised pavement markers(Type A) [71.75] | 14,506.73 |  | CO-R11-S08-RD-F-170 | 14 | 14 | RM | RM | LM | TRF | RD | CON | R14 | S08 | RD |  |  |
|  | 7 | **Road 15 Local 1 ( 556 LM )** |  | 2026-04-01 | 2027-06-27 |  |  |  |  |  |  |  |  |  |  |  |  |  |  |  |  |  |  |  |  |  |  |  |
|  | 10 | **Sewage Network** |  | 2026-09-15 | 2027-05-24 |  |  |  |  |  |  |  |  |  |  |  |  |  |  |  |  |  |  |  |  |  |  |  |
|  | TF | **Testing and Finishes** |  | 2026-09-15 | 2027-05-24 |  |  |  |  |  |  |  |  |  |  |  |  |  |  |  |  |  |  |  |  |  |  |  |
| CO-R15-SW-TF-100 |  | Final Testing For Main Line of Sewage Network-[Road 15] | 12d | 2026-09-15 A | 2026-09-21 A | CO-R15.S09-SW-130, CO-R15.S09-RD-P-100 SS+3d, CO-R15.S09-RD-P-100 FF+3d, CO-R14-SW-TF-100, CO-R15.S10-RD-P-100 SS+3d, CO-R15.S10-RD-P-100 FF+3d | 100% | 2027-06-12 | 2027-06-24 |  |  | Labor/Helper [384 h]; Plumber [384 h]; Pipe Fitter [384 h]; Nominal bore : 160mm; Depth : 0.0m - 1.5m [9.4]; Nominal bore : 200mm; Depth : 0.0m - 1.5m [2.74]; Nominal bore : 200mm; Depth : 1.5m - 2.5m [7.06]; Nominal bore : 200mm; Depth : 2.5m - 3.5m [16.1]; Nominal bore : 200mm; Depth : 3.5m - 4.5m [15.12]; Nominal bore : 200mm; Depth : 4.5m -5.5m [11.13]; Nominal bore : 200mm; Depth : 5.5m - 6.5m [8.08] | 20,768.02 | 20,768.02 | CO-R15-SW-TF-100 |  |  | TF | Test | Each | TF | SW | CON | R15 |  | SW | TEST |  |
| CO-R15-SW-TF-110 |  | Install Manhole Cover Works for External Finishes of Sewage Network-[Road 15] | 12d | 2027-05-02 | 2027-05-20 | CO-R15.S09-SW-130 SS+3d, PRO-R15-SW-DL-120 FF+3d, CO-R15-SW-TF-100, CO-R15.S09-SW-130 FF+3d, CO-R15.S09-RD-P-100 SS+3d, CO-R15.S09-RD-P-100 FF+3d, CO-R15.S09-SW-120 SS, CO-R15.S09-SW-120, CO-R15.S09-SW-120 FF, ENG-SH-SW-ML-A-110, ENG-SH-SW-ML-A-110 FF, CO-R14-SW-TF-110, ENG-MS-SW-ML-A-110, ENG-MS-SW-ML-A-110 FF, CO-R15.S10-RD-P-100 SS+3d, CO-R15.S10-RD-P-100 FF+3d |  |  |  | -184d | 0d | Labor/Helper [192 h]; Plumber [192 h]; Pipe Fitter [192 h]; Depth: not exceeding 1.5m [0.2]; Depth: 1.5 - 2.5m [0.35]; Depth: 2.5 - 3.5m [0.1]; Depth: 3.5 - 4.5m [0.05]; Depth: 5.5 - 6.5m [0.15]; Depth:6.5 - 7.5m [0.1] | 12,073.3 |  | CO-R15-SW-TF-110 |  |  | TF | Test | Each | TF | SW | CON | R15 |  | SW |  |  |
| CO-R15-SW-TF-130 |  | Main Manhole Internal Finishes (Benching + Insulation) of Sewage Network-[Road 15] | 12d | 2027-05-05 | 2027-05-24 | CO-R15-SW-TF-110 SS+3d, CO-R15-SW-TF-110 FF+3d, PRO-R15-SW-DL-130 FF+3d, CO-R14-SW-TF-130 |  |  |  | -184d | 0d | Labor/Helper [192 h]; Plumber [192 h]; Pipe Fitter [192 h]; Depth: not exceeding 1.5m [0.2]; Depth: 1.5 - 2.5m [0.35]; Depth: 2.5 - 3.5m [0.1]; Depth: 3.5 - 4.5m [0.05]; Depth: 5.5 - 6.5m [0.15]; Depth:6.5 - 7.5m [0.1] | 12,073.3 |  | CO-R15-SW-TF-130 |  |  | TF | Test | Each | TF | SW | CON | R15 |  | SW |  | 05 num |
|  | 11 | **Storm Drainage Network** |  | 2026-04-15 | 2027-06-08 |  |  |  |  |  |  |  |  |  |  |  |  |  |  |  |  |  |  |  |  |  |  |  |
|  | TF | **Testing and Finishes** |  | 2026-04-15 | 2027-06-08 |  |  |  |  |  |  |  |  |  |  |  |  |  |  |  |  |  |  |  |  |  |  |  |
| CO-R15-SD-TF-100 |  | Testing Work for Pipes of Storm Drainage Network-[Road 15] | 16d | 2026-04-15 A | 2026-04-18 A | CO-R15.S09-SD-130 SS+3d, CO-R15.S09-RD-P-100 SS+3d, CO-R15.S09-RD-P-100 FF+3d, CO-R15.S09-SD-130 FF+3d, CO-R15.S09-SD-120 SS, CO-R15.S09-SD-120, ENG-SH-SD-ML-A-110, ENG-MS-SD-ML-A-110, CO-R15.S10-RD-P-100 SS+3d, CO-R15.S10-RD-P-100 FF+3d | 100% | 2026-08-23 | 2026-09-09 |  |  | Labor/Helper [128 h]; Plumber [128 h]; Pipe with diameter 400mm ; depth: 0.0m - 1.5m [19.76]; Pipe with diameter 400mm ; depth: 1.51m - 2.5m [43.73]; Pipe with diameter 500mm ; depth: 1.51m - 2.5m [40.19]; Pipe with diameter 600mm ; depth: 1.51m - 2.5m [9.65]; Pipe with diameter 700mm ; depth: 1.51m - 2.5m [37.71]; Pipe with diameter 800mm ; depth: 1.51m - 2.5m [15.05]; Pipe with diameter 900mm ; depth: 1.51m - 2.5m [15.77]; Pipe with diameter 1000mm ; depth: 1.51m - 2.5m [7]; Pipe with diameter 1000mm ; depth: 2.51 - 3.5m [15] | 87,978.78 | 87,978.78 | CO-R15-SD-TF-100 |  |  | TF | Test | Each | TF | SD | CON | R15 |  | SD | TEST |  |
| CO-R15-SD-TF-120 |  | Main Manhole Internal Finishes (Benching + Insulation ) for Storm Drainage Network-[Road 15] | 12d | 2026-04-19 A | 2026-06-17 A | CO-R15-SD-TF-100 SS+3d, CO-R15-SD-TF-100 FF+3d, CO-R15-SD-TF-100, ENG-SH-RD-A-100, ENG-SH-RD-A-100 FF, CO-R14-SD-TF-120, ENG-MS-RD-A-10, ENG-MS-RD-A-10 FF, PRO-R15-SD-DL-100 FF+3d | 100% | 2026-10-08 | 2026-10-21 |  |  | MH ; depth: 0.0m - 1.5m [0.1]; MH ; depth: 1.51m - 2.5m [0.2]; MH ; depth: 1.51m - 2.5m [0.3]; MH ; depth: 2.51 - 3.5m [0.05]; MH ; depth: 1.51m - 2.5m [0.1]; MH ; depth: 2.51 - 3.5m [0.1]; Single Catch basin [22]; Double Catch basin [10]; Pipe encasement dia 300 mm [11.08]; Pipe encasement dia 400 mm [5.68]; Pipe encasement dia 500 mm [4.12]; Pipe encasement dia 600 mm [2.02]; Pipe encasement dia 700 mm [3.54]; Pipe encasement dia 800 mm [1.82]; Pipe encasement dia 900 mm [1.22]; Pipe encasement dia 1000 mm [1.32]; Pipe encasement dia 1100 mm [1.14]; Pipe encasement dia 1200 mm [0.68] | 166,977.12 | 166,977.12 | CO-R15-SD-TF-120 |  |  | TF | Test | Each | TF | SD | CON | R15 |  | SD |  |  |
| CO-R15-SD-TF-110 |  | Install Catch Basin Cover Works for External Finishes of Storm Drainage Network-[Road 15] | 12d | 2026-11-16 | 2026-11-29 | CO-R15.S09-SD-170 SS+3d, PRO-R15-SD-DL-150 FF+3d, CO-R15.S09-RD-P-100 SS+3d, CO-R15.S09-RD-P-100 FF+3d, CO-R15.S09-RD-P-100, CO-R15.S09-SD-170 FF+3d, CO-R14-SD-TF-110, CO-R15.S10-RD-P-100 SS+3d, CO-R15.S10-RD-P-100 FF+3d |  |  |  | -33d | 0d | Labor/Helper [384 h]; Foreman [384 h]; Pipe with diameter 300mm ; depth: 0 - 1.5m [27.69]; Pipe with diameter 400mm ; depth: 0 - 1.5m [1.69] | 6,827.34 |  | CO-R15-SD-TF-110 |  |  | TF | Test | Each | TF | SD | CON | R15 |  | SD | cover |  |
| CO-R15-SD-TF-130 |  | Catch Basin Internal Finishes (Benching + Insulation ) for Storm Drainage Network-[Road 15] | 16d | 2027-05-22 | 2027-06-08 | CO-R15-SD-TF-110 SS+3d, CO-R15-SD-TF-110 FF+3d, PRO-R15-SD-DL-160 FF+3d, CO-R15-SD-TF-100 SS, CO-R15-SD-TF-100, CO-R15-SD-TF-100 FF, CO-R15-SD-TF-110, CO-R15-SW-TF-110 SS, CO-R15-SW-TF-110, CO-R15-SW-TF-110 FF, ENG-SH-RD-A-100, ENG-SH-RD-A-100 FF, CO-R14-SD-TF-130, ENG-MS-RD-A-10, ENG-MS-RD-A-10 FF |  |  |  | -172d | 0d | Labor/Helper [384 h]; Foreman [384 h]; Pipe with diameter 300mm ; depth: 0 - 1.5m [27.69]; Pipe with diameter 400mm ; depth: 0 - 1.5m [1.69] | 6,827.34 |  | CO-R15-SD-TF-130 |  |  | TF | Test | Each | TF | SD | CON | R15 |  | SD | INSUL |  |
|  | 9 | **Potable Water Network** |  | 2027-03-15 | 2027-05-10 |  |  |  |  |  |  |  |  |  |  |  |  |  |  |  |  |  |  |  |  |  |  |  |
|  | TF | **Testing and Finishes** |  | 2027-03-15 | 2027-05-10 |  |  |  |  |  |  |  |  |  |  |  |  |  |  |  |  |  |  |  |  |  |  |  |
| CO-R15-PW-TF-100 |  | Final Finishes works and Covers for Valves and Valve Chambers of Potable Water Network-[Road 15] | 12d | 2027-03-15 | 2027-03-28 | CO-R15.S09-RD-P-100 FS+3d, CO-R14-PW-TF-100, PRO-R15-PW-DL-130 FF+3d |  |  |  | -143d | 0d | Labor/Helper [96 h]; Plumber [96 h] |  |  | CO-R15-PW-TF-100 |  |  | TF | Test | Each | TF | PW | CON | R15 |  | PW | T&COV |  |
| CO-R15-PW-TF-120 |  | Fire Hydrant Finishies (S.Box + Safety + Marker Post ) of Potable Water Network-[Road 15] | 12d | 2027-03-29 | 2027-04-11 | CO-R15-PW-TF-100, CO-R14-PW-TF-120, PRO-R15-PW-DL-130 FF+3d |  |  |  | -143d | 0d |  |  |  | CO-R15-PW-TF-120 |  |  | TF | Test | Each | TF | PW | CON | R15 |  | PW |  |  |
| CO-R15-PW-TF-110 |  | Testing Work for Main Line of Potable Water Network-[Road 15] | 12d | 2027-04-27 | 2027-05-10 | CO-R14-PW-TF-110 |  |  |  | -180d | 0d | Labor/Helper [96 h]; Plumber [96 h]; Pipe with diameter 200mm; in depth 0.0m - 1.5m [67.7] | 9,843.19 |  | CO-R15-PW-TF-110 |  |  | TF | Test | LM | TF | PW | CON | R15 |  | PW | TEST |  |
|  | 13 | **Irrigation Network** |  | 2027-04-07 | 2027-04-18 |  |  |  |  |  |  |  |  |  |  |  |  |  |  |  |  |  |  |  |  |  |  |  |
|  | TF | **Testing and Finishes** |  | 2027-04-07 | 2027-04-18 |  |  |  |  |  |  |  |  |  |  |  |  |  |  |  |  |  |  |  |  |  |  |  |
| CO-R15-IR-TF-150 |  | Final Testing (pressure tests) of Irrigation Network-[Road 15] | 10d | 2027-04-07 | 2027-04-18 | CO-R15.S09-IR-130, CO-R15.S09-RD-P-100, CO-R11-IR-TF-140, CO-R15.S10-RD-P-100 |  |  |  | -163d | 0d | Labor/Helper [256 h]; Plumber [256 h]; Pipe Fitter [256 h]; 125 mm pipe; depth 0.0m - 1.5m [70.57] | 5,248.07 |  | CO-R15-IR-TF-150 |  |  | TF | Test | LM | TF | IR | CON | R15 |  | IR | TEST |  |

| ID | WBS | Activity | Duration | Start | Finish | Predecessors | Complete | Planned start | Planned finish | Total float | Free float | Resources | Cost | Actual cost | Activity ID N | 02- Network-WBS | 03- Activity | 04-UOM | 05-Discipline | 01- Network | 07-Weightage System | 08 Stage | 09 Roads | Discipline | Seq | New Seq | 10 side Walk | 05number |
| --- | --- | --- | --- | --- | --- | --- | --- | --- | --- | --- | --- | --- | --- | --- | --- | --- | --- | --- | --- | --- | --- | --- | --- | --- | --- | --- | --- | --- |
|  | 12 | **Street Lighting Network** |  | 2027-02-14 | 2027-06-19 |  |  |  |  |  |  |  |  |  |  |  |  |  |  |  |  |  |  |  |  |  |  |  |
|  | TR | **Termination and Testing Works** |  | 2027-02-14 | 2027-06-19 |  |  |  |  |  |  |  |  |  |  |  |  |  |  |  |  |  |  |  |  |  |  |  |
| CO-R15-SL-TF-200 |  | Termination Works For Lighting Poles Cables of Street Lighting Network-[Road 15] | 12d | 2027-02-14 | 2027-02-28 | PRO-R15-SL-DL-130 FF+3d, CO-R11-SL-TF-180, CO-R17.S14-SL-130 |  |  |  | -139d | 0d | Labor/Helper [96 h]; Electrician [96 h]; Low Current Technician [96 h]; Supply, installation , test and operation of cables, Copper, (4Cx25mmï¿½,Cu/XLPE/SWA/PVC +1x16mmï¿½ PVC/PVC) [428.4] | 20,091.96 |  | CO-R15-SL-TF-200 | TR | TR | Each | T&F | SL | TERM | CON | R15 | SL |  |  |  |  |
| CO-R15-SL-TF-210 |  | Termination Works For Panel Board Cables of Street Lighting Network-[Road 15] | 12d | 2027-05-12 | 2027-05-31 | PRO-R15-SL-DL-170 FF+3d, CO-R11-SL-TF-190, CO-R14-SL-TF-380, CO-R15.S10-SL-160, CO-R15.S10-SL-190, CO-R15.S10-SL-220 |  |  |  | -212d | 0d | Labor/Helper [96 h]; Electrician [96 h]; Low Current Technician [96 h] |  |  | CO-R15-SL-TF-210 | TR | TR | Each | T&F | SL | TERMINA | CON | R15 | SL |  |  |  |  |
| CO-R15-SL-TF-380 |  | Testing Works For Panel Board Cables of Street Lighting Network-[Road 15] | 16d | 2027-06-01 | 2027-06-19 | CO-R15-SL-TF-210, CO-R14-SL-TF-380 |  |  |  | -206d | 0d | Labor/Helper [128 h]; Electrician [128 h] |  |  | CO-R15-SL-TF-380 |  |  |  |  | SL | TEST | CON | R15 | SL |  |  |  |  |
|  | ES | **Earthing System Works** |  |  |  |  |  |  |  |  |  |  |  |  |  |  |  |  |  |  |  |  |  |  |  |  |  |  |
|  | 14 | **Medium Voltage Network** |  | 2026-11-21 | 2026-11-28 |  |  |  |  |  |  |  |  |  |  |  |  |  |  |  |  |  |  |  |  |  |  |  |
|  | TT | **Termination and Testing Works** |  | 2026-11-21 | 2026-11-28 |  |  |  |  |  |  |  |  |  |  |  |  |  |  |  |  |  |  |  |  |  |  |  |
| CO-R15-MV-TF-200 |  | Termination Works of Medium Voltage Network-[Road 15] | 7d | 2026-11-21 | 2026-11-28 | CO-R15.S09-MV-ML-270, CO-R11-MV-TF-180, PRO-R15-MV-DL-110 FF+3d |  |  |  | -40d | 0d | Labor/Helper [96 h]; Electrician [96 h]; Low Current Technician [96 h] |  |  | CO-R15-MV-TF-200 | RMU | TR | Each | TR | MV | TEST | CON | R15 | MV |  |  |  |  |
|  | 1 | **Road Works** |  | 2026-04-01 | 2027-06-27 |  |  |  |  |  |  |  |  |  |  |  |  |  |  |  |  |  |  |  |  |  |  |  |
|  | 1 | **Bituminous Construction** |  | 2026-04-01 | 2026-04-11 |  |  |  |  |  |  |  |  |  |  |  |  |  |  |  |  |  |  |  |  |  |  |  |
| CO-R15-S09-RD-F-110 |  | Application of Prime Coat Layer for Road Works- S.W 11-[Road 15] | 10d | 2026-04-01 A | 2026-04-11 A | MS-CS-PS | 100% | 2026-11-09 | 2026-11-19 |  |  | Labor/Helper [96 h]; Insulation Worker [96 h]; Bituminous base course(Grading I - Class A), 70mm thick after compaction including Prime Coat (MC1) [388.62] | 141,904.59 | 141,904.59 | CO-R15-S09-RD-F-110 | AB | MC | Sq.m | BS | RD |  | CON | R15 | RD | 7 | 7 | S09 |  |
| CO-R15-S09-RD-F-120 |  | Bituminous Base & Wearing Courses Layers for Road Works- S.W 11-[Road 15] | 10d | 2026-04-01 A | 2026-04-11 A | CO-R15-S09-RD-F-110 SS+3d, CO-R15-S09-RD-F-110 FF+3d | 100% | 2026-11-12 | 2026-11-23 |  |  | Labor/Helper [96 h]; Eq. Operator [96 h]; Asphalt Cutter [96 h]; Asphalt Paver [96 h]; Bituminous concrete wearing course, 50 mm thick, after compaction(Grading I - Class A), including tack coat (RC) [277.61] | 111,599.22 | 111,599.22 | CO-R15-S09-RD-F-120 | AB | AB | Sq.m | BS | RD |  | CON | R15 | RD | 7 | 7 | S09 |  |
| CO-R15-S10-RD-F-140 |  | Application of Prime Coat Layer for Road Works- S.W 12-[Road 15] | 10d | 2026-04-01 A | 2026-04-11 A | PRO-R15-RD-DL-160 FF+3d, CO-R15-S09-RD-F-110 SS | 100% | 2026-11-09 | 2026-11-19 |  |  | Labor/Helper [144 h]; Insulation Worker [144 h]; Bituminous base course(Grading I - Class A), 70mm thick after compaction including Prime Coat (MC1) [388.62] | 141,904.59 | 141,904.59 | CO-R15-S10-RD-F-140 | AB | MC | Sq.m | BS | RD |  | CON | R15 | RD | 8 | 8 | S10 |  |
| CO-R15-S10-RD-F-150 |  | Bituminous Base & Wearing Courses Layers for Road Works- S.W 12-[Road 15] | 10d | 2026-04-01 A | 2026-04-11 A | CO-R15-S10-RD-F-140 SS+3d, CO-R15-S10-RD-F-140 FF+3d, PRO-R15-RD-DL-170 FF+3d, CO-R15-S09-RD-F-120 SS | 100% | 2026-11-12 | 2026-11-23 |  |  | Labor/Helper [144 h]; Eq. Operator [144 h]; Asphalt Cutter [144 h]; Asphalt Paver [144 h]; Bituminous concrete wearing course, 50 mm thick, after compaction(Grading I - Class A), including tack coat (RC) [277.61] | 111,599.22 | 111,599.22 | CO-R15-S10-RD-F-150 | AB | AB | Sq.m | BS | RD |  | CON | R15 | RD | 8 | 8 | S10 |  |
|  | TS | **Traffic Signs Boards and Roads Marking** |  | 2027-06-14 | 2027-06-27 |  |  |  |  |  |  |  |  |  |  |  |  |  |  |  |  |  |  |  |  |  |  |  |
| CO-R15-S09-RD-F-100 |  | Installation Works of Traffic Signs Boards For Road Works- S.W 11-[Road 15] | 10d | 2027-06-14 | 2027-06-24 | CO-R15.S09-RD-P-130, CO-R11-S07-RD-F-100, CO-R15-S09-RD-F-160 FF, CO-R15-PW-TF-100, CO-R15-PW-TF-110, CO-R15-PW-TF-120, CO-R15-SW-TF-100, CO-R15-SW-TF-110, CO-R15-SW-TF-130, CO-R15-SL-TF-200, CO-R15-SL-TF-210, CO-R15-IR-TF-150, CO-R15-MV-TF-200 |  |  |  | -164d | 0d | Labor/Helper [96 h]; Painter [96 h]; Traffic signs, ground mounted, Sheet Alumenium, (breakaway) Single post, with all accessories [3]; Straight Arrow [6]; Straight-Right Arrow [1] | 3,301.76 |  | CO-R15-S09-RD-F-100 | TS | TF | Each | TRF | RD |  | CON | R15 | RD | 7 | 7 | S09 |  |
| CO-R15-S09-RD-F-160 |  | Application of Road Marking Works For Road Works- S.W 11-[Road 15] | 10d | 2027-06-14 | 2027-06-24 | CO-R15-S09-RD-F-120, CO-R11-S07-RD-F-160 |  |  |  | -164d | 0d | Labor/Helper [96 h]; Painter [96 h]; Retroreflective Thermoplastic White, Traffic lines [209.34]; Retroreflective Thermoplastic Yellow, Traffic lines [32.08]; Retroreflective raised pavement markers(Type A) [40.92] | 8,274.04 |  | CO-R15-S09-RD-F-160 | RM | RM | LM | TRF | RD |  | CON | R15 | RD | 7 | 7 | S09 |  |
| CO-R15-S10-RD-F-130 |  | Installation Works of Traffic Signs Boards For Road Works- S.W 12-[Road 15] | 12d | 2027-06-14 | 2027-06-27 | CO-R15.S10-RD-P-130, CO-R11-S08-RD-F-130, PRO-R15-RD-DL-140 FF+3d, CO-R15-S10-RD-F-170 FF, CO-R15-PW-TF-100, CO-R15-PW-TF-110, CO-R15-PW-TF-120, CO-R15-SW-TF-100, CO-R15-SW-TF-110, CO-R15-SW-TF-130, CO-R15-SL-TF-200, CO-R15-SL-TF-210, CO-R15-IR-TF-150, CO-R15-MV-TF-200 |  |  |  | -163d | 0d | Labor/Helper [96 h]; Painter [96 h]; Traffic signs, ground mounted, Sheet Alumenium, (breakaway) Single post, with all accessories [4]; Straight Arrow [6]; Straight-Right Arrow [1] | 4,178.79 |  | CO-R15-S10-RD-F-130 | TS | TF | Each | TRF | RD |  | CON | R15 | RD | 8 | 8 | S10 |  |
| CO-R15-S10-RD-F-170 |  | Application of Road Marking Works For Road Works- S.W 12-[Road 15] | 10d | 2027-06-14 | 2027-06-24 | CO-R15-S10-RD-F-150, CO-R11-S08-RD-F-170, PRO-R15-RD-DL-150 FF+3d |  |  |  | -164d | 0d | Labor/Helper [96 h]; Painter [96 h]; Retroreflective Thermoplastic White, Traffic lines [209.34]; Retroreflective Thermoplastic Yellow, Traffic lines [32.08]; Retroreflective raised pavement markers(Type A) [40.92] | 8,274.04 |  | CO-R15-S10-RD-F-170 | RM | RM | LM | TRF | RD |  | CON | R15 | RD | 8 | 8 | S10 |  |
|  | 8 | **Road 16 Local 1 ( 527 LM )** |  | 2025-10-13 | 2027-07-08 |  |  |  |  |  |  |  |  |  |  |  |  |  |  |  |  |  |  |  |  |  |  |  |
|  | 10 | **Sewage Network** |  | 2026-09-15 | 2027-06-07 |  |  |  |  |  |  |  |  |  |  |  |  |  |  |  |  |  |  |  |  |  |  |  |
|  | TF | **Testing and Finishes** |  | 2026-09-15 | 2027-06-07 |  |  |  |  |  |  |  |  |  |  |  |  |  |  |  |  |  |  |  |  |  |  |  |
| CO-R16-SW-TF-100 |  | Final Testing For Main Line of Sewage Network-[Road 16] | 12d | 2026-09-15 A | 2026-09-21 A | CO-R16.S11-SW-130, CO-R16.S11-RD-P-100 SS+3d, CO-R16.S11-RD-P-100 FF+3d, CO-R15-SW-TF-100, CO-R16.S12-RD-P-100 SS+3d, CO-R16.S12-RD-P-100 FF+3d | 100% | 2027-06-26 | 2027-07-08 |  |  | Labor/Helper [288 h]; Plumber [288 h]; Pipe Fitter [288 h]; Nominal bore : 160mm; Depth : 0.0m - 1.5m [6.5]; Nominal bore : 200mm; Depth : 0.0m - 1.5m [2.97]; Nominal bore : 200mm; Depth : 1.5m - 2.5m [6.85]; Nominal bore : 200mm; Depth : 2.5m - 3.5m [9.72]; Nominal bore : 200mm; Depth : 3.5m - 4.5m [12.69]; Nominal bore : 200mm; Depth : 4.5m -5.5m [5.51]; Nominal bore : 200mm; Depth : 5.5m - 6.5m [6.19] | 14,883.24 | 14,883.24 | CO-R16-SW-TF-100 | TF | Test | Each | TF | SW | TEST | CON | R16 | SW |  |  |  |  |
| CO-R16-SW-TF-110 |  | Install Manhole Cover Works for External Finishes of Sewage Network-[Road 16] | 12d | 2027-05-22 | 2027-06-03 | CO-R16.S11-SW-130 SS+3d, PRO-R16-SW-DL-120 FF+3d, CO-R16-SW-TF-100, CO-R16.S11-SW-130 FF+3d, CO-R16.S11-RD-P-100 SS+3d, CO-R16.S11-RD-P-100 FF+3d, CO-R16.S11-SW-120 SS, CO-R16.S11-SW-120, CO-R16.S11-SW-120 FF, ENG-SH-SW-ML-A-110, ENG-SH-SW-ML-A-110 FF, CO-R15-SW-TF-110, ENG-MS-SW-ML-A-110, ENG-MS-SW-ML-A-110 FF, CO-R16.S12-RD-P-100 SS+3d, CO-R16.S12-RD-P-100 FF+3d |  |  |  | -184d | 0d | Labor/Helper [192 h]; Plumber [192 h]; Pipe Fitter [192 h]; Depth: not exceeding 1.5m [0.1]; Depth: 1.5 - 2.5m [0.25]; Depth: 2.5 - 3.5m [0.05]; Depth: 5.5 - 6.5m [0.05]; Depth:6.5 - 7.5m [0.1] | 7,024.82 |  | CO-R16-SW-TF-110 | TF | Test | Each | TF | SW |  | CON | R16 | SW |  |  |  |  |
| CO-R16-SW-TF-130 |  | Main Manhole Internal Finishes (Benching + Insulation) of Sewage Network-[Road 16] | 12d | 2027-05-25 | 2027-06-07 | CO-R16-SW-TF-110 SS+3d, CO-R16-SW-TF-110 FF+3d, PRO-R16-SW-DL-130 FF+3d, CO-R15-SW-TF-130 |  |  |  | -184d | 0d | Labor/Helper [192 h]; Plumber [192 h]; Pipe Fitter [192 h]; Depth: not exceeding 1.5m [0.1]; Depth: 1.5 - 2.5m [0.25]; Depth: 2.5 - 3.5m [0.05]; Depth: 5.5 - 6.5m [0.05]; Depth:6.5 - 7.5m [0.1] | 7,024.82 |  | CO-R16-SW-TF-130 | TF | Test | Each | TF | SW |  | CON | R16 | SW |  |  |  | 05 num |

| ID | WBS | Activity | Duration | Start | Finish | Predecessors | Complete | Planned start | Planned finish | Total float | Free float | Resources | Cost | Actual cost | Activity ID N | 02- Network-WBS | 03- Activity | 04-UOM | 05-Discipline | 01- Network | 08 Stage | 09 Roads | Discipline | 07-Weightage System | Seq | New Seq | 10 side Walk |
| --- | --- | --- | --- | --- | --- | --- | --- | --- | --- | --- | --- | --- | --- | --- | --- | --- | --- | --- | --- | --- | --- | --- | --- | --- | --- | --- | --- |
|  | 11 | **Storm Drainage Network** |  | 2026-05-31 | 2027-06-27 |  |  |  |  |  |  |  |  |  |  |  |  |  |  |  |  |  |  |  |  |  |  |
|  | TF | **Testing and Finishes** |  | 2026-05-31 | 2027-06-27 |  |  |  |  |  |  |  |  |  |  |  |  |  |  |  |  |  |  |  |  |  |  |
| CO-R16-SD-TF-120 |  | Main Manhole Internal Finishes (Benching + Insulation ) for Storm Drainage Network-[Road 16] | 12d | 2026-05-31 A | 2026-06-26 A | ENG-SH-RD-A-100, ENG-SH-RD-A-100 FF, CO-R15-SD-TF-120, ENG-MS-RD-A-10, ENG-MS-RD-A-10 FF, PRO-R16-SD-DL-100 FF+3d | 100% | 2026-10-22 | 2026-11-04 |  |  | MH ; depth: 0.0m - 1.5m [0.1]; MH ; depth: 1.51m - 2.5m [0.2]; MH ; depth: 1.51m - 2.5m [0.1]; Single Catch basin [20]; Double Catch basin [6]; Pipe encasement dia 300 mm [10.56]; Pipe encasement dia 400 mm [5.4]; Pipe encasement dia 500 mm [3.92]; Pipe encasement dia 600 mm [1.94]; Pipe encasement dia 700 mm [3.42]; Pipe encasement dia 800 mm [1.74]; Pipe encasement dia 900 mm [1.16]; Pipe encasement dia 1000 mm [1.22]; Pipe encasement dia 1100 mm [1.1]; Pipe encasement dia 1200 mm [0.64] | 127,125.82 | 127,125.82 | CO-R16-SD-TF-120 | TF | Test | Each | TF | SD | CON | R16 | SD |  |  |  |  |
| CO-R16-SD-TF-100 |  | Testing Work for Pipes of Storm Drainage Network-[Road 16] | 16d | 2026-11-11 | 2026-11-29 | CO-R16.S11-SD-130 SS+3d, PRO-R16-SD-DL-140 FF+3d, CO-R16.S11-RD-P-100 SS+3d, CO-R16.S11-RD-P-100 FF+3d, CO-R16.S11-SD-130 FF+3d, CO-R16.S11-SD-120 SS, CO-R16.S11-SD-120, ENG-SH-SD-ML-A-110, CO-R15-SD-TF-100, ENG-MS-SD-ML-A-110, CO-R16.S12-RD-P-100 SS+3d, CO-R16.S12-RD-P-100 FF+3d |  |  |  | -17d | 0d | Labor/Helper [256 h]; Plumber [256 h]; Pipe with diameter 400mm ; depth: 0.0m - 1.5m [21.65]; Pipe with diameter 400mm ; depth: 1.51m - 2.5m [19.79]; Pipe with diameter 500mm ; depth: 1.51m - 2.5m [29.24]; Pipe with diameter 600mm ; depth: 1.51m - 2.5m [19.2]; Pipe with diameter 700mm ; depth: 1.51m - 2.5m [35.78]; Pipe with diameter 800mm ; depth: 1.51m - 2.5m [16.03]; Pipe with diameter 900mm ; depth: 1.51m - 2.5m [2.29]; Pipe with diameter 1000mm ; depth: 1.51m - 2.5m [6.1]; Pipe with diameter 1000mm ; depth: 2.51 - 3.5m [6.1] | 65,471.79 |  | CO-R16-SD-TF-100 | TF | Test | Each | TF | SD | CON | R16 | SD | TEST |  |  |  |
| CO-R16-SD-TF-110 |  | Install Catch Basin Cover Works for External Finishes of Storm Drainage Network-[Road 16] | 12d | 2026-11-30 | 2026-12-13 | CO-R16.S11-SD-170 SS+3d, PRO-R16-SD-DL-150 FF+3d, CO-R16.S11-RD-P-100 SS+3d, CO-R16.S11-RD-P-100 FF+3d, CO-R16.S11-RD-P-100, CO-R16.S11-SD-170 FF+3d, CO-R15-SD-TF-110, CO-R16.S12-RD-P-100 SS+3d, CO-R16.S12-RD-P-100 FF+3d |  |  |  | -29d | 0d | Labor/Helper [384 h]; Foreman [384 h]; Pipe with diameter 300mm ; depth: 0 - 1.5m [26.39]; Pipe with diameter 400mm ; depth: 0 - 1.5m [1.61] | 6,507.08 |  | CO-R16-SD-TF-110 | TF | Test | Each | TF | SD | CON | R16 | SD | cover |  |  |  |
| CO-R16-SD-TF-130 |  | Catch Basin Internal Finishes (Benching + Insulation ) for Storm Drainage Network-[Road 16] | 16d | 2027-06-09 | 2027-06-27 | CO-R16-SD-TF-110 SS+3d, CO-R16-SD-TF-110 FF+3d, PRO-R16-SD-DL-160 FF+3d, CO-R16-SD-TF-100 SS, CO-R16-SD-TF-100, CO-R16-SD-TF-100 FF, CO-R16-SD-TF-110, CO-R16-SW-TF-110 SS, CO-R16-SW-TF-110, CO-R16-SW-TF-110 FF, ENG-SH-RD-A-100, ENG-SH-RD-A-100 FF, CO-R15-SD-TF-130, ENG-MS-RD-A-10, ENG-MS-RD-A-10 FF |  |  |  | -172d | 0d | Labor/Helper [384 h]; Foreman [384 h]; Pipe with diameter 300mm ; depth: 0 - 1.5m [26.39]; Pipe with diameter 400mm ; depth: 0 - 1.5m [1.61] | 6,507.08 |  | CO-R16-SD-TF-130 | TF | Test | Each | TF | SD | CON | R16 | SD | INSUL |  |  |  |
|  | 9 | **Potable Water Network** |  | 2027-03-29 | 2027-05-30 |  |  |  |  |  |  |  |  |  |  |  |  |  |  |  |  |  |  |  |  |  |  |
|  | TF | **Testing and Finishes** |  | 2027-03-29 | 2027-05-30 |  |  |  |  |  |  |  |  |  |  |  |  |  |  |  |  |  |  |  |  |  |  |
| CO-R16-PW-TF-100 |  | Final Finishes works and Covers for Valves and Valve Chambers of Potable Water Network-[Road 16] | 12d | 2027-03-29 | 2027-04-11 | CO-R16.S11-RD-P-100 FS+3d, CO-R15-PW-TF-100, PRO-R16-PW-DL-130 FF+3d, CO-R16.S12-RD-P-100 FS+3d |  |  |  | -143d | 0d | Labor/Helper [96 h]; Plumber [96 h] |  |  | CO-R16-PW-TF-100 | TF | Test | Each | TF | PW | CON | R16 | PW | T&COV |  |  |  |
| CO-R16-PW-TF-120 |  | Fire Hydrant Finishies (S.Box + Safety + Marker Post ) of Potable Water Network-[Road 16] | 12d | 2027-04-12 | 2027-04-25 | CO-R16-PW-TF-100, CO-R15-PW-TF-120, PRO-R16-PW-DL-130 FF+3d |  |  |  | -143d | 0d |  |  |  | CO-R16-PW-TF-120 | TF | Test | Each | TF | PW | CON | R16 | PW |  |  |  |  |
| CO-R16-PW-TF-110 |  | Testing Work for Main Line of Potable Water Network-[Road 16] | 12d | 2027-05-11 | 2027-05-30 | CO-R15-PW-TF-110 |  |  |  | -180d | 0d | Labor/Helper [96 h]; Plumber [96 h]; Pipe with diameter 200mm; in depth 0.0m - 1.5m [65.04] | 9,456.46 |  | CO-R16-PW-TF-110 | TF | Test | LM | TF | PW | CON | R16 | PW | TEST |  |  |  |
|  | 13 | **Irrigation Network** |  | 2027-04-19 | 2027-04-29 |  |  |  |  |  |  |  |  |  |  |  |  |  |  |  |  |  |  |  |  |  |  |
|  | TF | **Testing and Finishes** |  | 2027-04-19 | 2027-04-29 |  |  |  |  |  |  |  |  |  |  |  |  |  |  |  |  |  |  |  |  |  |  |
| CO-R16-IR-TF-160 |  | Final Testing (pressure tests) of Irrigation Network-[Road 16] | 10d | 2027-04-19 | 2027-04-29 | CO-R16.S11-IR-130, CO-R16.S11-RD-P-100, CO-R15-IR-TF-150, CO-R16.S12-RD-P-100 |  |  |  | -163d | 0d | Labor/Helper [256 h]; Plumber [256 h]; Pipe Fitter [256 h]; 125 mm pipe; depth 0.0m - 1.5m [67.26] | 5,001.98 |  | CO-R16-IR-TF-160 | TF | Test | LM | TF | IR | CON | R16 | IR | TEST |  |  |  |
|  | 12 | **Street Lighting Network** |  | 2027-03-01 | 2027-06-21 |  |  |  |  |  |  |  |  |  |  |  |  |  |  |  |  |  |  |  |  |  |  |
|  | TR | **Termination and Testing Works** |  | 2027-03-01 | 2027-06-21 |  |  |  |  |  |  |  |  |  |  |  |  |  |  |  |  |  |  |  |  |  |  |
| CO-R16-SL-TF-220 |  | Termination Works For Lighting Poles Cables of Street Lighting Network-[Road 16] | 12d | 2027-03-01 | 2027-03-17 | PRO-R16-SL-DL-130 FF+3d, CO-R15-SL-TF-200 |  |  |  | -139d | 0d | Labor/Helper [96 h]; Electrician [96 h]; Low Current Technician [96 h]; Supply, installation , test and operation of cables, Copper, (4Cx25mmï¿½,Cu/XLPE/SWA/PVC +1x16mmï¿½ PVC/PVC) [403.2] | 18,910.08 |  | CO-R16-SL-TF-220 | TR | TR | Each | T&F | SL | CON | R16 | SL | TERM |  |  |  |
| CO-R16-SL-TF-230 |  | Termination Works For Panel Board Cables of Street Lighting Network-[Road 16] | 12d | 2027-06-01 | 2027-06-14 | PRO-R16-SL-DL-170 FF+3d, CO-R15-SL-TF-210 |  |  |  | -212d | 0d |  |  |  | CO-R16-SL-TF-230 | TR | TR | Each | T&F | SL | CON | R16 | SL | TERMINA |  |  |  |
| CO-R16-SL-TF-380 |  | Testing Works For Panel Board Cables of Street Lighting Network-[Road 16] | 2d | 2027-06-20 | 2027-06-21 | CO-R16-SL-TF-230, CO-R15-SL-TF-380 |  |  |  | -206d | 6d |  |  |  | CO-R16-SL-TF-380 |  |  |  |  | SL | CON | R16 | SL | TEST |  |  |  |
|  | ES | **Earthing System Works** |  |  |  |  |  |  |  |  |  |  |  |  |  |  |  |  |  |  |  |  |  |  |  |  |  |
|  | 14 | **Medium Voltage Network** |  | 2026-11-29 | 2026-12-06 |  |  |  |  |  |  |  |  |  |  |  |  |  |  |  |  |  |  |  |  |  |  |
|  | TT | **Termination and Testing Works** |  | 2026-11-29 | 2026-12-06 |  |  |  |  |  |  |  |  |  |  |  |  |  |  |  |  |  |  |  |  |  |  |
| CO-R16-MV-TF-220 |  | Termination Works of Medium Voltage Network-[Road 16] | 7d | 2026-11-29 | 2026-12-06 | CO-R16.S11-MV-ML-300, CO-R15-MV-TF-200, PRO-R16-MV-DL-110 FF+3d |  |  |  | -40d | 0d | Labor/Helper [96 h]; Electrician [96 h]; Low Current Technician [96 h] |  |  | CO-R16-MV-TF-220 | RMU | TR | Each | TR | MV | CON | R16 | MV | TEST |  |  |  |
|  | 1 | **Road Works** |  | 2025-10-13 | 2027-07-08 |  |  |  |  |  |  |  |  |  |  |  |  |  |  |  |  |  |  |  |  |  |  |
|  | 1 | **Bituminous Construction** |  | 2025-10-13 | 2026-08-16 |  |  |  |  |  |  |  |  |  |  |  |  |  |  |  |  |  |  |  |  |  |  |
| CO-R16-S11-RD-F-110 |  | Application of Prime Coat Layer for Road Works - S.W 13-[Road 16] | 10d | 2025-10-13 A | 2025-10-14 A | CO-R15-S09-RD-F-110 | 100% | 2026-11-21 | 2026-12-01 |  |  | Labor/Helper [96 h]; Insulation Worker [96 h]; Bituminous base course(Grading I - Class A), 70mm thick after compaction including Prime Coat (MC1) [370.4] | 135,251.56 | 135,251.56 | CO-R16-S11-RD-F-110 | AB | MC | Sq.m | BS | RD | CON | R16 | RD |  | 5 | 5 | S11 |
| CO-R16-S12-RD-F-140 |  | Application of Prime Coat Layer for Road Works- S.W 14-[Road 16] | 10d | 2025-10-13 A | 2025-10-14 A | CO-R15-S10-RD-F-140, PRO-R16-RD-DL-160 FF+3d, CO-R16-S11-RD-F-110 SS | 100% | 2026-11-21 | 2026-12-01 |  |  | Labor/Helper [144 h]; Insulation Worker [144 h]; Bituminous base course(Grading I - Class A), 70mm thick after compaction including Prime Coat (MC1) [370.4] | 135,251.56 | 135,251.56 | CO-R16-S12-RD-F-140 | AB | MC | Sq.m | BS | RD | CON | R16 | RD |  | 6 | 6 | S12 |
| CO-R16-S11-RD-F-120 |  | Bituminous Base & Wearing Courses Layers for Road Works- S.W 13-[Road 16] | 10d | 2026-05-12 A | 2026-05-16 A | CO-R16-S11-RD-F-110 SS+3d, CO-R16-S11-RD-F-110 FF+3d, CO-R15-S09-RD-F-120 | 100% | 2026-11-24 | 2026-12-05 |  |  | Labor/Helper [96 h]; Eq. Operator [96 h]; Asphalt Cutter [96 h]; Asphalt Paver [96 h]; Bituminous concrete wearing course, 50 mm thick, after compaction(Grading I - Class A), including tack coat (RC) [264.59] | 106,365.18 | 106,365.18 | CO-R16-S11-RD-F-120 | AB | AB | Sq.m | BS | RD | CON | R16 | RD |  | 5 | 5 | S11 |
| CO-R16-S12-RD-F-150 |  | Bituminous Base & Wearing Courses Layers for Road Works- S.W 14-[Road 16] | 10d | 2026-08-12 A | 2026-08-16 A | CO-R16-S12-RD-F-140 SS+3d, CO-R16-S12-RD-F-140 FF+3d, CO-R15-S10-RD-F-150, PRO-R16-RD-DL-170 FF+3d, CO-R16-S11-RD-F-120 FF | 100% | 2026-11-24 | 2026-12-05 |  |  | Labor/Helper [144 h]; Eq. Operator [144 h]; Asphalt Cutter [144 h]; Asphalt Paver [144 h]; Bituminous concrete wearing course, 50 mm thick, after compaction(Grading I - Class A), including tack coat (RC) [264.59] | 106,365.18 | 106,365.18 | CO-R16-S12-RD-F-150 | AB | AB | Sq.m | BS | RD | CON | R16 | RD |  | 6 | 6 | S12 |

| ID | WBS | Activity | Duration | Start | Finish | Predecessors | Complete | Planned start | Planned finish | Total float | Free float | Resources | Cost | Actual cost | Activity ID N | Seq | New Seq | 02- Network-WBS | 03- Activity | 04-UOM | 05-Discipline | 01- Network | 08 Stage | 09 Roads | 10 side Walk | Discipline | 07-Weightage System | 05number |
| --- | --- | --- | --- | --- | --- | --- | --- | --- | --- | --- | --- | --- | --- | --- | --- | --- | --- | --- | --- | --- | --- | --- | --- | --- | --- | --- | --- | --- |
|  | TS | **Traffic Signs Boards and Roads Marking** |  | 2027-06-26 | 2027-07-08 |  |  |  |  |  |  |  |  |  |  |  |  |  |  |  |  |  |  |  |  |  |  |  |
| CO-R16-S11-RD-F-100 |  | Installation Works of Traffic Signs Boards For Road Works- S.W 13-[Road 16] | 10d | 2027-06-26 | 2027-07-06 | CO-R16.S11-RD-P-130, CO-R15-S09-RD-F-100, CO-R16-S11-RD-F-160 FF, CO-R16-PW-TF-100, CO-R16-PW-TF-110, CO-R16-PW-TF-120, CO-R16-SW-TF-100, CO-R16-SW-TF-110, CO-R16-SW-TF-130, CO-R16-SD-TF-100, CO-R16-SL-TF-220, CO-R16-SL-TF-230, CO-R16-IR-TF-160, CO-R16-MV-TF-220 |  |  |  | -164d | 0d | Labor/Helper [96 h]; Painter [96 h]; Traffic signs, ground mounted, Sheet Alumenium, (breakaway) Single post, with all accessories [3]; Straight Arrow [6]; Right or Left Arrow [1]; Straight-Right Arrow [1] | 3,397.57 |  | CO-R16-S11-RD-F-100 | 5 | 5 | TS | TF | Each | TRF | RD | CON | R16 | S11 | RD |  |  |
| CO-R16-S11-RD-F-160 |  | Application of Road Marking Works For Road Works- S.W 13-[Road 16] | 10d | 2027-06-26 | 2027-07-06 | CO-R16-S11-RD-F-120, CO-R15-S09-RD-F-160 |  |  |  | -164d | 0d | Labor/Helper [96 h]; Painter [96 h]; Retroreflective Thermoplastic White, Traffic lines [199.52]; Retroreflective Thermoplastic Yellow, Traffic lines [30.57]; Retroreflective raised pavement markers(Type A) [39] | 7,885.75 |  | CO-R16-S11-RD-F-160 | 5 | 5 | RM | RM | LM | TRF | RD | CON | R16 | S11 | RD |  |  |
| CO-R16-S12-RD-F-170 |  | Application of Road Marking Works For Road Works- S.W 14-[Road 16] | 10d | 2027-06-26 | 2027-07-06 | CO-R16-S12-RD-F-150, CO-R15-S10-RD-F-170, PRO-R16-RD-DL-150 FF+3d |  |  |  | -164d | 0d | Labor/Helper [96 h]; Painter [96 h]; Retroreflective Thermoplastic White, Traffic lines [199.52]; Retroreflective Thermoplastic Yellow, Traffic lines [30.57]; Retroreflective raised pavement markers(Type A) [39] | 7,885.75 |  | CO-R16-S12-RD-F-170 | 6 | 6 | RM | RM | LM | TRF | RD | CON | R16 | S12 | RD |  |  |
| CO-R16-S12-RD-F-130 |  | Installation Works of Traffic Signs Boards For Road Works- S.W 14-[Road 16] | 10d | 2027-06-28 | 2027-07-08 | CO-R16.S12-RD-P-130, CO-R15-S10-RD-F-130, PRO-R16-RD-DL-140 FF+3d, CO-R16-S12-RD-F-170 FF, CO-R16-PW-TF-100, CO-R16-PW-TF-110, CO-R16-PW-TF-120, CO-R16-SW-TF-100, CO-R16-SW-TF-110, CO-R16-SW-TF-130, CO-R16-SD-TF-100, CO-R16-SL-TF-220, CO-R16-SL-TF-230, CO-R16-IR-TF-160, CO-R16-MV-TF-220 |  |  |  | -163d | 1d | Labor/Helper [96 h]; Painter [96 h]; Traffic signs, ground mounted, Sheet Alumenium, (breakaway) Single post, with all accessories [3]; Straight Arrow [6]; Right or Left Arrow [1]; Straight-Right Arrow [1] | 3,397.57 |  | CO-R16-S12-RD-F-130 | 6 | 6 | TS | TF | Each | TRF | RD | CON | R16 | S12 | RD |  |  |
|  | 9 | **Road 17 Local 1 ( 500 LM )** |  | 2025-09-20 | 2027-07-18 |  |  |  |  |  |  |  |  |  |  |  |  |  |  |  |  |  |  |  |  |  |  |  |
|  | 10 | **Sewage Network** |  | 2026-09-15 | 2027-06-21 |  |  |  |  |  |  |  |  |  |  |  |  |  |  |  |  |  |  |  |  |  |  |  |
|  | TF | **Testing and Finishes** |  | 2026-09-15 | 2027-06-21 |  |  |  |  |  |  |  |  |  |  |  |  |  |  |  |  |  |  |  |  |  |  |  |
| CO-R17-SW-TF-100 |  | Final Testing For Main Line of Sewage Network-[Road 17] | 12d | 2026-09-15 A | 2026-09-21 A | CO-R17.S13-SW-130, CO-R17.S13-RD-P-100 SS+3d, CO-R17.S13-RD-P-100 FF+3d, CO-R16-SW-TF-100, CO-R17.S14-RD-P-100 SS+3d, CO-R17.S14-RD-P-100 FF+3d | 100% | 2027-07-10 | 2027-07-22 |  |  | Labor/Helper [288 h]; Plumber [288 h]; Pipe Fitter [288 h]; Nominal bore : 160mm; Depth : 0.0m - 1.5m [1.9]; Nominal bore : 160mm; Depth : 1.5m - 2.5m [21.2]; Nominal bore : 200mm; Depth : 0.0m - 1.5m [2.49]; Nominal bore : 200mm; Depth : 1.5m - 2.5m [4.59]; Nominal bore : 200mm; Depth : 2.5m - 3.5m [11.34]; Nominal bore : 200mm; Depth : 3.5m - 4.5m [8.48]; Nominal bore : 200mm; Depth : 4.5m -5.5m [4.28]; Nominal bore : 200mm; Depth : 5.5m - 6.5m [5.51] | 15,594.88 | 15,594.88 | CO-R17-SW-TF-100 |  |  | TF | Test | Each | TF | SW | CON | R17 |  | SW | TEST |  |
| CO-R17-SW-TF-110 |  | Install Manhole Cover Works for External Finishes of Sewage Network-[Road 17] | 12d | 2027-06-05 | 2027-06-17 | CO-R17.S13-SW-130 SS+3d, PRO-R17-SW-DL-120 FF+3d, CO-R17-SW-TF-100, CO-R17.S13-SW-130 FF+3d, CO-R17.S13-RD-P-100 SS+3d, CO-R17.S13-RD-P-100 FF+3d, CO-R17.S13-SW-120 SS, CO-R17.S13-SW-120, CO-R17.S13-SW-120 FF, ENG-SH-SW-ML-A-110, ENG-SH-SW-ML-A-110 FF, CO-R16-SW-TF-110, ENG-MS-SW-ML-A-110, ENG-MS-SW-ML-A-110 FF, CO-R17.S14-RD-P-100 SS+3d, CO-R17.S14-RD-P-100 FF+3d |  |  |  | -184d | 0d | Labor/Helper [192 h]; Plumber [192 h]; Pipe Fitter [192 h]; Depth: not exceeding 1.5m [0.1]; Depth: 1.5 - 2.5m [0.25]; Depth: 2.5 - 3.5m [0.15]; Depth: 5.5 - 6.5m [0.05]; Depth:6.5 - 7.5m [0.05] | 6,594.24 |  | CO-R17-SW-TF-110 |  |  | TF | Test | Each | TF | SW | CON | R17 |  | SW |  |  |
| CO-R17-SW-TF-130 |  | Main Manhole Internal Finishes (Benching + Insulation) of Sewage Network-[Road 17] | 12d | 2027-06-08 | 2027-06-21 | CO-R17-SW-TF-110 SS+3d, CO-R17-SW-TF-110 FF+3d, PRO-R17-SW-DL-130 FF+3d, CO-R16-SW-TF-130 |  |  |  | -184d | 0d | Labor/Helper [192 h]; Plumber [192 h]; Pipe Fitter [192 h]; Depth: not exceeding 1.5m [0.1]; Depth: 1.5 - 2.5m [0.25]; Depth: 2.5 - 3.5m [0.15]; Depth: 5.5 - 6.5m [0.05]; Depth:6.5 - 7.5m [0.05] | 6,594.24 |  | CO-R17-SW-TF-130 |  |  | TF | Test | Each | TF | SW | CON | R17 |  | SW |  | 05 num |
|  | 11 | **Storm Drainage Network** |  | 2026-05-31 | 2027-07-11 |  |  |  |  |  |  |  |  |  |  |  |  |  |  |  |  |  |  |  |  |  |  |  |
|  | TF | **Testing and Finishes** |  | 2026-05-31 | 2027-07-11 |  |  |  |  |  |  |  |  |  |  |  |  |  |  |  |  |  |  |  |  |  |  |  |
| CO-R17-SD-TF-120 |  | Main Manhole Internal Finishes (Benching + Insulation ) for Storm Drainage Network-[Road 17] | 12d | 2026-05-31 A | 2026-06-18 A | ENG-SH-RD-A-100, ENG-SH-RD-A-100 FF, CO-R16-SD-TF-120, ENG-MS-RD-A-10, ENG-MS-RD-A-10 FF, PRO-R17-SD-DL-100 FF+3d | 100% | 2026-11-05 | 2026-11-18 |  |  | MH ; depth: 0.0m - 1.5m [0.1]; MH ; depth: 1.51m - 2.5m [0.2]; MH ; depth: 2.51 - 3.5m [0.05]; MH ; depth: 1.51m - 2.5m [0.1]; Single Catch basin [20]; Double Catch basin [10]; Pipe encasement dia 300 mm [10.04]; Pipe encasement dia 400 mm [5.14]; Pipe encasement dia 500 mm [3.74]; Pipe encasement dia 600 mm [1.84]; Pipe encasement dia 700 mm [3.24]; Pipe encasement dia 800 mm [1.66]; Pipe encasement dia 900 mm [1.1]; Pipe encasement dia 1000 mm [1.16]; Pipe encasement dia 1100 mm [1.04]; Pipe encasement dia 1200 mm [0.62] | 157,170.75 | 157,170.75 | CO-R17-SD-TF-120 |  |  | TF | Test | Each | TF | SD | CON | R17 |  | SD |  |  |
| CO-R17-SD-TF-100 |  | Testing Work for Pipes of Storm Drainage Network-[Road 17] | 16d | 2026-11-30 | 2026-12-17 | CO-R17.S13-SD-130 SS+3d, PRO-R17-SD-DL-140 FF+3d, CO-R17.S13-RD-P-100 SS+3d, CO-R17.S13-RD-P-100 FF+3d, CO-R17.S13-SD-130 FF+3d, CO-R17.S13-SD-120 SS, CO-R17.S13-SD-120, ENG-SH-SD-ML-A-110, CO-R16-SD-TF-100, ENG-MS-SD-ML-A-110, CO-R17.S14-RD-P-100 SS+3d, CO-R17.S14-RD-P-100 FF+3d |  |  |  | -17d | 155d | Labor/Helper [256 h]; Plumber [256 h]; Pipe with diameter 400mm ; depth: 0.0m - 1.5m [14.83]; Pipe with diameter 400mm ; depth: 1.51m - 2.5m [22.44]; Pipe with diameter 500mm ; depth: 1.51m - 2.5m [38.3]; Pipe with diameter 600mm ; depth: 1.51m - 2.5m [8.72]; Pipe with diameter 700mm ; depth: 1.51m - 2.5m [19.07]; Pipe with diameter 800mm ; depth: 1.51m - 2.5m [8.29]; Pipe with diameter 900mm ; depth: 1.51m - 2.5m [2.26]; Pipe with diameter 1000mm ; depth: 1.51m - 2.5m [7]; Pipe with diameter 1000mm ; depth: 2.51 - 3.5m [7] | 52,222.09 |  | CO-R17-SD-TF-100 |  |  | TF | Test | Each | TF | SD | CON | R17 |  | SD | TEST |  |
| CO-R17-SD-TF-110 |  | Install Catch Basin Cover Works for External Finishes of Storm Drainage Network-[Road 17] | 12d | 2026-12-14 | 2026-12-27 | CO-R17.S13-SD-170 SS+3d, PRO-R17-SD-DL-150 FF+3d, CO-R17.S13-RD-P-100 SS+3d, CO-R17.S13-RD-P-100 FF+3d, CO-R17.S13-RD-P-100, CO-R17.S13-SD-170 FF+3d, CO-R16-SD-TF-110, CO-R17.S14-RD-P-100 SS+3d, CO-R17.S14-RD-P-100 FF+3d |  |  |  | -25d | 147d | Labor/Helper [384 h]; Foreman [384 h]; Pipe with diameter 300mm ; depth: 0 - 1.5m [25.09]; Pipe with diameter 400mm ; depth: 0 - 1.5m [1.53] | 6,187.05 |  | CO-R17-SD-TF-110 |  |  | TF | Test | Each | TF | SD | CON | R17 |  | SD | cover |  |
| CO-R17-SD-TF-130 |  | Catch Basin Internal Finishes (Benching + Insulation ) for Storm Drainage Network-[Road 17] | 12d | 2027-06-28 | 2027-07-11 | CO-R17-SD-TF-110 SS+3d, CO-R17-SD-TF-110 FF+3d, PRO-R17-SD-DL-160 FF+3d, CO-R17-SD-TF-100 SS, CO-R17-SD-TF-100, CO-R17-SD-TF-100 FF, CO-R17-SD-TF-110, CO-R17-SW-TF-110 SS, CO-R17-SW-TF-110, CO-R17-SW-TF-110 FF, ENG-SH-RD-A-100, ENG-SH-RD-A-100 FF, CO-R16-SD-TF-130, ENG-MS-RD-A-10, ENG-MS-RD-A-10 FF |  |  |  | -172d | 0d | Labor/Helper [384 h]; Foreman [384 h]; Pipe with diameter 300mm ; depth: 0 - 1.5m [25.09]; Pipe with diameter 400mm ; depth: 0 - 1.5m [1.53] | 6,187.05 |  | CO-R17-SD-TF-130 |  |  | TF | Test | Each | TF | SD | CON | R17 |  | SD | INSUL |  |
|  | 9 | **Potable Water Network** |  | 2027-04-12 | 2027-06-13 |  |  |  |  |  |  |  |  |  |  |  |  |  |  |  |  |  |  |  |  |  |  |  |
|  | TF | **Testing and Finishes** |  | 2027-04-12 | 2027-06-13 |  |  |  |  |  |  |  |  |  |  |  |  |  |  |  |  |  |  |  |  |  |  |  |
| CO-R17-PW-TF-100 |  | Final Finishes works and Covers for Valves and Valve Chambers of Potable Water Network-[Road 17] | 12d | 2027-04-12 | 2027-04-25 | CO-R17.S13-RD-P-100 FS+3d, CO-R16-PW-TF-100, PRO-R17-PW-DL-130 FF+3d, CO-R17.S14-RD-P-100 FS+3d |  |  |  | -143d | 0d | Labor/Helper [192 h]; Plumber [192 h] |  |  | CO-R17-PW-TF-100 |  |  | TF | Test | Each | TF | PW | CON | R17 |  | PW | T&COV |  |
| CO-R17-PW-TF-120 |  | Fire Hydrant Finishies (S.Box + Safety + Marker Post ) of Potable Water Network-[Road 17] | 12d | 2027-04-26 | 2027-05-09 | CO-R17-PW-TF-100, CO-R16-PW-TF-120, PRO-R17-PW-DL-130 FF+3d |  |  |  | -143d | 37d |  |  |  | CO-R17-PW-TF-120 |  |  | TF | Test | Each | TF | PW | CON | R17 |  | PW |  |  |
| CO-R17-PW-TF-110 |  | Testing Work for Main Line of Potable Water Network-[Road 17] | 12d | 2027-05-31 | 2027-06-13 | CO-R16-PW-TF-110 |  |  |  | -180d | 0d | Labor/Helper [192 h]; Plumber [192 h]; Pipe with diameter 200mm; in depth 0.0m - 1.5m [62.33] | 9,062.59 |  | CO-R17-PW-TF-110 |  |  | TF | Test | LM | TF | PW | CON | R17 |  | PW | TEST |  |
|  | 13 | **Irrigation Network** |  | 2027-05-01 | 2027-05-11 |  |  |  |  |  |  |  |  |  |  |  |  |  |  |  |  |  |  |  |  |  |  |  |
|  | TF | **Testing and Finishes** |  | 2027-05-01 | 2027-05-11 |  |  |  |  |  |  |  |  |  |  |  |  |  |  |  |  |  |  |  |  |  |  |  |
| CO-R17-IR-TF-170 |  | Final Testing (pressure tests) of Irrigation Network-[Road 17] | 10d | 2027-05-01 | 2027-05-11 | CO-R17.S13-IR-130, CO-R17.S13-RD-P-100, CO-R16-IR-TF-160, CO-R17.S14-RD-P-100, CO-R17.S14-PW-160 |  |  |  | -163d | 0d | Labor/Helper [256 h]; Plumber [256 h]; Pipe Fitter [256 h]; 125 mm pipe; depth 0.0m - 1.5m [63.95] | 4,755.81 |  | CO-R17-IR-TF-170 |  |  | TF | Test | LM | TF | IR | CON | R17 |  | IR | TEST |  |

| ID | WBS | Activity | Duration | Start | Finish | Predecessors | Complete | Planned start | Planned finish | Total float | Free float | Resources | Cost | Actual cost | Activity ID N | 02- Network-WBS | 03- Activity | 04-UOM | 05-Discipline | 01- Network | 07-Weightage System | 08 Stage | 09 Roads | Discipline | Seq | New Seq | 10 side Walk | 05number |
| --- | --- | --- | --- | --- | --- | --- | --- | --- | --- | --- | --- | --- | --- | --- | --- | --- | --- | --- | --- | --- | --- | --- | --- | --- | --- | --- | --- | --- |
|  | 12 | **Street Lighting Network** |  | 2027-03-18 | 2027-06-30 |  |  |  |  |  |  |  |  |  |  |  |  |  |  |  |  |  |  |  |  |  |  |  |
|  | TR | **Termination and Testing Works** |  | 2027-03-18 | 2027-06-30 |  |  |  |  |  |  |  |  |  |  |  |  |  |  |  |  |  |  |  |  |  |  |  |
| CO-R17-SL-TF-240 |  | Termination Works For Lighting Poles Cables of Street Lighting Network-[Road 17] | 12d | 2027-03-18 | 2027-03-31 | PRO-R17-SL-DL-130 FF+3d, CO-R16-SL-TF-220 |  |  |  | -139d | 73d | Labor/Helper [96 h]; Electrician [96 h]; Low Current Technician [96 h]; Supply, installation , test and operation of cables, Copper, (4Cx25mmï¿½,Cu/XLPE/SWA/PVC +1x16mmï¿½ PVC/PVC) [384.3] | 18,023.67 |  | CO-R17-SL-TF-240 | TR | TR | Each | T&F | SL | TERM | CON | R17 | SL |  |  |  |  |
| CO-R17-SL-TF-250 |  | Termination Works For Panel Board Cables of Street Lighting Network-[Road 17] | 12d | 2027-06-15 | 2027-06-28 | PRO-R17-SL-DL-170 FF+3d, CO-R16-SL-TF-230, CO-R17.S14-SL-160, CO-R17.S14-SL-190, CO-R17.S14-SL-220 |  |  |  | -212d | 0d | Labor/Helper [96 h]; Electrician [96 h]; Low Current Technician [96 h] |  |  | CO-R17-SL-TF-250 | TR | TR | Each | T&F | SL | TERMINA | CON | R17 | SL |  |  |  |  |
| CO-R17-SL-TF-380 |  | Testing Works For Panel Board Cables of Street Lighting Network-[Road 17] | 2d | 2027-06-29 | 2027-06-30 | CO-R17-SL-TF-250, CO-R16-SL-TF-380 |  |  |  | -212d | 0d | Labor/Helper [16 h]; Electrician [16 h] |  |  | CO-R17-SL-TF-380 |  |  |  |  | SL | TEST | CON | R17 | SL |  |  |  |  |
|  | ES | **Earthing System Works** |  |  |  |  |  |  |  |  |  |  |  |  |  |  |  |  |  |  |  |  |  |  |  |  |  |  |
|  | 14 | **Medium Voltage Network** |  | 2026-12-07 | 2026-12-14 |  |  |  |  |  |  |  |  |  |  |  |  |  |  |  |  |  |  |  |  |  |  |  |
|  | TT | **Termination and Testing Works** |  | 2026-12-07 | 2026-12-14 |  |  |  |  |  |  |  |  |  |  |  |  |  |  |  |  |  |  |  |  |  |  |  |
| CO-R17-MV-TF-240 |  | Termination Works of Medium Voltage Network-[Road 17] | 7d | 2026-12-07 | 2026-12-14 | CO-R17.S13-MV-ML-330, CO-R16-MV-TF-220, PRO-R17-MV-DL-110 FF+3d, CO-R17.S13-MV-SS-160 |  |  |  | -40d | 94d | Labor/Helper [192 h]; Electrician [192 h]; Low Current Technician [192 h] |  |  | CO-R17-MV-TF-240 | RMU | TR | Each | TR | MV | TEST | CON | R17 | MV |  |  |  |  |
|  | 1 | **Road Works** |  | 2025-09-20 | 2027-07-18 |  |  |  |  |  |  |  |  |  |  |  |  |  |  |  |  |  |  |  |  |  |  |  |
|  | 1 | **Bituminous Construction** |  | 2025-09-20 | 2025-10-13 |  |  |  |  |  |  |  |  |  |  |  |  |  |  |  |  |  |  |  |  |  |  |  |
| CO-R17-S13-RD-F-110 |  | Application of Prime Coat Layer for Road Works- S.W 15-[Road 17] | 10d | 2025-09-20 A | 2025-09-25 A | CO-R16-S11-RD-F-110, CO-R17.S13-RD-P-130 | 100% | 2026-12-02 | 2026-12-13 |  |  | Labor/Helper [96 h]; Insulation Worker [96 h]; Bituminous base course(Grading I - Class A), 70mm thick after compaction including Prime Coat (MC1) [352.17] | 128,594.88 | 128,594.88 | CO-R17-S13-RD-F-110 | AB | MC | Sq.m | BS | RD |  | CON | R17 | RD | 3 | 3 | S13 |  |
| CO-R17-S14-RD-F-140 |  | Application of Prime Coat Layer for Road Works- S.W 16-[Road 17] | 10d | 2025-09-20 A | 2025-09-25 A | CO-R16-S12-RD-F-140, PRO-R17-RD-DL-160 FF+3d, CO-R17.S14-RD-P-130, CO-R17-S13-RD-F-110 SS | 100% | 2026-12-02 | 2026-12-13 |  |  | Labor/Helper [144 h]; Insulation Worker [144 h]; Bituminous base course(Grading I - Class A), 70mm thick after compaction including Prime Coat (MC1) [352.17] | 128,594.88 | 128,594.88 | CO-R17-S14-RD-F-140 | AB | MC | Sq.m | BS | RD |  | CON | R17 | RD | 4 | 4 | S14 |  |
| CO-R17-S13-RD-F-120 |  | Bituminous Base & Wearing Courses Layers for Road Works- S.W 15-[Road 17] | 10d | 2025-10-09 A | 2025-10-13 A | CO-R17-S13-RD-F-110 SS+3d, CO-R17-S13-RD-F-110 FF+3d, CO-R16-S11-RD-F-120 | 100% | 2026-12-06 | 2026-12-16 |  |  | Labor/Helper [96 h]; Eq. Operator [96 h]; Asphalt Cutter [96 h]; Asphalt Paver [96 h]; Bituminous concrete wearing course, 50 mm thick, after compaction(Grading I - Class A), including tack coat (RC) [251.57] | 101,131.14 | 101,131.14 | CO-R17-S13-RD-F-120 | AB | AB | Sq.m | BS | RD |  | CON | R17 | RD | 3 | 3 | S13 |  |
| CO-R17-S14-RD-F-150 |  | Bituminous Base & Wearing Courses Layers for Road Works- S.W 16-[Road 17] | 10d | 2025-10-09 A | 2025-10-13 A | CO-R17-S14-RD-F-140 SS+3d, CO-R17-S14-RD-F-140 FF+3d, CO-R16-S12-RD-F-150, PRO-R17-RD-DL-170 FF+3d, CO-R17-S13-RD-F-120 SS | 100% | 2026-12-06 | 2026-12-16 |  |  | Labor/Helper [144 h]; Eq. Operator [144 h]; Asphalt Cutter [144 h]; Asphalt Paver [144 h]; Bituminous concrete wearing course, 50 mm thick, after compaction(Grading I - Class A), including tack coat (RC) [251.57] | 101,131.14 | 101,131.14 | CO-R17-S14-RD-F-150 | AB | AB | Sq.m | BS | RD |  | CON | R17 | RD | 4 | 4 | S14 |  |
|  | TS | **Traffic Signs Boards and Roads Marking** |  | 2027-07-07 | 2027-07-18 |  |  |  |  |  |  |  |  |  |  |  |  |  |  |  |  |  |  |  |  |  |  |  |
| CO-R17-S13-RD-F-100 |  | Installation Works of Traffic Signs Boards For Road Works- S.W 15-[Road 17] | 10d | 2027-07-07 | 2027-07-18 | CO-R17.S13-RD-P-130, CO-R16-S11-RD-F-100, CO-R17-S13-RD-F-160 FF |  |  |  | -164d | 31.5d | Labor/Helper [96 h]; Painter [96 h]; Traffic signs, ground mounted, Sheet Alumenium, (breakaway) Single post, with all accessories [2]; Straight Arrow [6]; Straight-Right Arrow [1]; Straight-Left Arrow [1] | 2,520.54 |  | CO-R17-S13-RD-F-100 | TS | TF | Each | TRF | RD |  | CON | R17 | RD | 3 | 3 | S13 |  |
| CO-R17-S13-RD-F-160 |  | Application of Road Marking Works For Road Works- S.W 15-[Road 17] | 10d | 2027-07-07 | 2027-07-18 | CO-R17-S13-RD-F-120, CO-R16-S11-RD-F-160 |  |  |  | -164d | 0d | Labor/Helper [96 h]; Painter [96 h]; Retroreflective Thermoplastic White, Traffic lines [189.7]; Retroreflective Thermoplastic Yellow, Traffic lines [29.07]; Retroreflective raised pavement markers(Type A) [37.08] | 7,497.74 |  | CO-R17-S13-RD-F-160 | RM | RM | LM | TRF | RD |  | CON | R17 | RD | 3 | 3 | S13 |  |
| CO-R17-S14-RD-F-170 |  | Application of Road Marking Works For Road Works- S.W 16-[Road 17] | 10d | 2027-07-07 | 2027-07-18 | CO-R17-S14-RD-F-150, CO-R16-S12-RD-F-170, PRO-R17-RD-DL-150 FF+3d |  |  |  | -164d | 0d | Labor/Helper [384 h]; Painter [384 h]; Retroreflective Thermoplastic White, Traffic lines [189.7]; Retroreflective Thermoplastic Yellow, Traffic lines [29.07]; Retroreflective raised pavement markers(Type A) [37.08] | 7,497.74 |  | CO-R17-S14-RD-F-170 | RM | RM | LM | TRF | RD |  | CON | R17 | RD | 4 | 4 | S14 |  |
| CO-R17-S14-RD-F-130 |  | Installation Works of Traffic Signs Boards For Road Works- S.W 16-[Road 17] | 7d | 2027-07-11 | 2027-07-18 | CO-R17.S14-RD-P-130, CO-R16-S12-RD-F-130, PRO-R17-RD-DL-140 FF+3d, CO-R17-S14-RD-F-170 FF |  |  |  | -164d | 31.5d | Labor/Helper [192 h]; Painter [192 h]; Traffic signs, ground mounted, Sheet Alumenium, (breakaway) Single post, with all accessories [2]; Straight Arrow [6]; Straight-Right Arrow [1]; Straight-Left Arrow [1] | 2,520.54 |  | CO-R17-S14-RD-F-130 | TS | TF | Each | TRF | RD |  | CON | R17 | RD | 4 | 4 | S14 |  |
|  | 3 | **Road 18 Local 1 ( 479 LM )** |  | 2025-09-23 | 2027-08-24 |  |  |  |  |  |  |  |  |  |  |  |  |  |  |  |  |  |  |  |  |  |  |  |
|  | 10 | **Sewage Network** |  | 2026-09-15 | 2027-04-05 |  |  |  |  |  |  |  |  |  |  |  |  |  |  |  |  |  |  |  |  |  |  |  |
|  | TF | **Testing and Finishes** |  | 2026-09-15 | 2027-04-05 |  |  |  |  |  |  |  |  |  |  |  |  |  |  |  |  |  |  |  |  |  |  |  |
| CO-R18-SW-TF-100 |  | Final Testing For Main Line of Sewage Network-[Road 18] | 12d | 2026-09-15 A | 2026-09-21 A | CO-R11.S06-RD-P-100, CO-R18.S15-RD-P-160 SS, CO-R18.S15-RD-P-160 FF | 100% | 2027-02-21 | 2027-03-07 |  |  | Labor/Helper [576 h]; Plumber [576 h]; Pipe Fitter [576 h]; Nominal bore : 160mm; Depth : 1.5m - 2.5m [8.8]; Nominal bore : 200mm; Depth : 0.0m - 1.5m [2.37]; Nominal bore : 200mm; Depth : 1.5m - 2.5m [4.44]; Nominal bore : 200mm; Depth : 2.5m - 3.5m [11.11]; Nominal bore : 200mm; Depth : 3.5m - 4.5m [8.19]; Nominal bore : 200mm; Depth : 4.5m -5.5m [4.19]; Nominal bore : 200mm; Depth : 5.5m - 6.5m [5.37] | 12,906.7 | 12,906.7 | CO-R18-SW-TF-100 | TF | Test | Each | TF | SW | TEST | CON | R18 | SW |  |  |  |  |
| CO-R18-SW-TF-110 |  | Install Manhole Cover Works for External Finishes of Sewage Network-[Road 18] | 12d | 2027-03-20 | 2027-04-01 | CO-R18-SW-TF-100, ENG-SH-SW-ML-A-110, ENG-SH-SW-ML-A-110 FF, CO-R09-SW-TF-110, ENG-MS-SW-ML-A-110, ENG-MS-SW-ML-A-110 FF, PRO-R18-SW-DL-170, CO-R09-SW-TF-100 |  |  |  | -120d | 3d | Depth: not exceeding 1.5m [0.05]; Depth: 1.5 - 2.5m [0.5]; Depth: 2.5 - 3.5m [0.05]; Depth: 5.5 - 6.5m [0.1]; Depth:6.5 - 7.5m [0.05] | 8,425.95 |  | CO-R18-SW-TF-110 | TF | Test | Each | TF | SW |  | CON | R18 | SW |  |  |  |  |
| CO-R18-SW-TF-130 |  | Main Manhole Internal Finishes (Benching + Insulation) of Sewage Network-[Road 18] | 12d | 2027-03-23 | 2027-04-05 | CO-R09-SW-TF-120, CO-R18-SW-TF-110 SS, CO-R18-SW-TF-110 FF, PRO-R18-SW-DL-190 |  |  |  | -123d | 61d | Depth: not exceeding 1.5m [0.05]; Depth: 1.5 - 2.5m [0.5]; Depth: 2.5 - 3.5m [0.05]; Depth: 5.5 - 6.5m [0.1]; Depth:6.5 - 7.5m [0.05] | 8,425.95 |  | CO-R18-SW-TF-130 | TF | Test | Each | TF | SW |  | CON | R18 | SW |  |  |  | 05 num |

| ID | WBS | Activity | Duration | Start | Finish | Predecessors | Complete | Planned start | Planned finish | Total float | Free float | Resources | Cost | Actual cost | Activity ID N | 02- Network-WBS | 03- Activity | 04-UOM | 05-Discipline | 01- Network | 08 Stage | 09 Roads | Discipline | 07-Weightage System | Seq | New Seq | 10 side Walk |
| --- | --- | --- | --- | --- | --- | --- | --- | --- | --- | --- | --- | --- | --- | --- | --- | --- | --- | --- | --- | --- | --- | --- | --- | --- | --- | --- | --- |
|  | 11 | **Storm Drainage Network** |  | 2026-06-20 | 2027-04-11 |  |  |  |  |  |  |  |  |  |  |  |  |  |  |  |  |  |  |  |  |  |  |
|  | TF | **Testing and Finishes** |  | 2026-06-20 | 2027-04-11 |  |  |  |  |  |  |  |  |  |  |  |  |  |  |  |  |  |  |  |  |  |  |
| CO-R18-SD-TF-120 |  | Main Manhole Internal Finishes (Benching + Insulation ) for Storm Drainage Network-[Road 18] | 16d | 2026-06-20 A | 2026-06-27 A | ENG-SH-RD-A-100, ENG-SH-RD-A-100 FF, ENG-MS-RD-A-10, ENG-MS-RD-A-10 FF, PRO-R18-SD-DL-170 FF+3d | 100% | 2026-10-22 | 2026-11-09 |  |  | MH ; depth: 0.0m - 1.5m [0.1]; MH ; depth: 1.51m - 2.5m [0.2]; MH ; depth: 1.51m - 2.5m [0.05]; MH ; depth: 2.51 - 3.5m [0.2]; Single Catch basin [18]; Double Catch basin [10]; Pipe encasement dia 300 mm [9.7]; Pipe encasement dia 400 mm [4.98]; Pipe encasement dia 500 mm [3.6]; Pipe encasement dia 600 mm [1.78]; Pipe encasement dia 700 mm [3.14]; Pipe encasement dia 800 mm [1.6]; Pipe encasement dia 900 mm [1.06]; Pipe encasement dia 1000 mm [1.12]; Pipe encasement dia 1100 mm [1]; Pipe encasement dia 1200 mm [0.6] | 151,373.49 | 151,373.49 | CO-R18-SD-TF-120 | TF | Test | Each | TF | SD | CON | R18 | SD |  |  |  |  |
| CO-R18-SD-TF-100 |  | Testing Work for Pipes of Storm Drainage Network-[Road 18] | 16d | 2027-03-02 | 2027-03-23 | ENG-SH-SD-ML-A-110, CO-R09-SD-TF-100, ENG-MS-SD-ML-A-110, CO-R17.S13-RD-P-100 SS+3d, CO-R17.S13-RD-P-100 FF+3d |  |  |  | -99d | 0d | Labor/Helper [256 h]; Plumber [256 h]; Pipe with diameter 400mm ; depth: 0.0m - 1.5m [24.43]; Pipe with diameter 400mm ; depth: 1.51m - 2.5m [26.2]; Pipe with diameter 500mm ; depth: 1.51m - 2.5m [37.68]; Pipe with diameter 600mm ; depth: 1.51m - 2.5m [20.46]; Pipe with diameter 700mm ; depth: 1.51m - 2.5m [15.52]; Pipe with diameter 900mm ; depth: 1.51m - 2.5m [25.05]; Pipe with diameter 900mm ; depth: 2.51 - 3.5m [5.7]; Pipe with diameter 1000mm ; depth: 1.51m - 2.5m [5]; Pipe with diameter 1000mm ; depth: 2.51 - 3.5m [5] | 69,261.98 |  | CO-R18-SD-TF-100 | TF | Test | Each | TF | SD | CON | R18 | SD | TEST |  |  |  |
| CO-R18-SD-TF-110 |  | Install Catch Basin Cover Works for External Finishes of Storm Drainage Network-[Road 18] | 16d | 2027-03-02 | 2027-03-23 | CO-R09-SD-TF-110, CO-R18.S15-RD-P-160 SS, CO-R18.S15-RD-P-160 FF, PRO-R18-SD-DL-210 |  |  |  | -99d | 0d | Labor/Helper [384 h]; Foreman [384 h]; Pipe with diameter 300mm ; depth: 0 - 1.5m [24.26]; Pipe with diameter 400mm ; depth: 0 - 1.5m [1.48] | 5,982.71 |  | CO-R18-SD-TF-110 | TF | Test | Each | TF | SD | CON | R18 | SD | cover |  |  |  |
| CO-R18-SD-TF-130 |  | Catch Basin Internal Finishes (Benching + Insulation ) for Storm Drainage Network-[Road 18] | 16d | 2027-03-24 | 2027-04-11 | CO-R18-SD-TF-110 SS+3d, CO-R18-SD-TF-110 FF+3d, CO-R18-SD-TF-100 SS, CO-R18-SD-TF-100, CO-R18-SD-TF-100 FF, CO-R18-SD-TF-110, CO-R18-SW-TF-110 SS, CO-R18-SW-TF-110 FF, ENG-SH-RD-A-100, ENG-SH-RD-A-100 FF, CO-R09-SD-TF-130, ENG-MS-RD-A-10, ENG-MS-RD-A-10 FF, PRO-R18-SD-DL-230 |  |  |  | -99d | 73d | Labor/Helper [384 h]; Foreman [384 h]; Pipe with diameter 300mm ; depth: 0 - 1.5m [24.26]; Pipe with diameter 400mm ; depth: 0 - 1.5m [1.48] | 5,982.71 |  | CO-R18-SD-TF-130 | TF | Test | Each | TF | SD | CON | R18 | SD | INSUL |  |  |  |
|  | 9 | **Potable Water Network** |  | 2027-03-30 | 2027-06-27 |  |  |  |  |  |  |  |  |  |  |  |  |  |  |  |  |  |  |  |  |  |  |
|  | TF | **Testing and Finishes** |  | 2027-03-30 | 2027-06-27 |  |  |  |  |  |  |  |  |  |  |  |  |  |  |  |  |  |  |  |  |  |  |
| CO-R18-PW-TF-100 |  | Final Finishes works and Covers for Valves and Valve Chambers of Potable Water Network-[Road 18] | 12d | 2027-03-30 | 2027-04-12 | CO-R09-PW-TF-100, CO-R18.S15-RD-P-160 SS, CO-R18.S15-RD-P-160 FF |  |  |  | -132d | 0d | Labor/Helper [192 h]; Plumber [192 h] |  |  | CO-R18-PW-TF-100 | TF | Test | Each | TF | PW | CON | R18 | PW | T&COV |  |  |  |
| CO-R18-PW-TF-120 |  | Fire Hydrant Finishies (S.Box + Safety + Marker Post ) of Potable Water Network-[Road 18] | 12d | 2027-04-13 | 2027-04-26 | CO-R18-PW-TF-100, CO-R09-PW-TF-120 |  |  |  | -132d | 48d |  |  |  | CO-R18-PW-TF-120 | TF | Test | Each | TF | PW | CON | R18 | PW |  |  |  |  |
| CO-R18-PW-TF-110 |  | Testing Work for Main Line of Potable Water Network-[Road 18] | 12d | 2027-06-14 | 2027-06-27 | CO-R09-PW-TF-110, CO-R17-PW-TF-110, PRO-R18-PW-DL-170 |  |  |  | -180d | 0d | Labor/Helper [96 h]; Plumber [96 h]; Pipe with diameter 200mm; in depth 0.0m - 1.5m [70.61] | 10,265.7 |  | CO-R18-PW-TF-110 | TF | Test | LM | TF | PW | CON | R18 | PW | TEST |  |  |  |
|  | 13 | **Irrigation Network** |  | 2027-03-21 | 2027-04-07 |  |  |  |  |  |  |  |  |  |  |  |  |  |  |  |  |  |  |  |  |  |  |
|  | TF | **Testing and Finishes** |  | 2027-03-21 | 2027-04-07 |  |  |  |  |  |  |  |  |  |  |  |  |  |  |  |  |  |  |  |  |  |  |
| CO-R18-IR-TF-110 |  | Final Testing (pressure tests) of Irrigation Network-[Road 18] | 16d | 2027-03-21 | 2027-04-07 | CO-R09-IR-TF-100, CO-R18.S15-RD-P-160 SS, CO-R18.S15-RD-P-160 FF |  |  |  | -134d | 29d | Labor/Helper [384 h]; Plumber [384 h]; Pipe Fitter [384 h]; 125 mm pipe; depth 0.0m - 1.5m [61.84] | 4,598.97 |  | CO-R18-IR-TF-110 | TF | Test | LM | TF | IR | CON | R18 | IR | TEST |  |  |  |
|  | 12 | **Street Lighting Network** |  | 2027-02-24 | 2027-06-10 |  |  |  |  |  |  |  |  |  |  |  |  |  |  |  |  |  |  |  |  |  |  |
|  | TR | **Termination and Testing Works** |  | 2027-02-24 | 2027-06-10 |  |  |  |  |  |  |  |  |  |  |  |  |  |  |  |  |  |  |  |  |  |  |
| CO-R18-SL-TF-120 |  | Termination Works For Lighting Poles Cables of Street Lighting Network-[Road 18] | 12.25d | 2027-02-24 | 2027-03-14 | CO-R09-SL-TF-100, PRO-R18-SL-DL-210, PRO-R18-SL-DL-250, CO-R18.S16-SL-130 |  |  |  | -123.25d | 88.75d | Labor/Helper [196 h]; Electrician [196 h]; Low Current Technician [196 h]; Supply, installation , test and operation of cables, Copper, (4Cx25mmï¿½,Cu/XLPE/SWA/PVC +1x16mmï¿½ PVC/PVC) [371.7] | 17,432.73 |  | CO-R18-SL-TF-120 | TR | TR | Each | T&F | SL | CON | R18 | SL | TERM |  |  |  |
| CO-R18-SL-TF-130 |  | Termination Works For Panel Board Cables of Street Lighting Network-[Road 18] | 12d | 2027-05-25 | 2027-06-08 | CO-R09-SL-TF-110, CO-R09.S02-SL-220, CO-R18.S16-SL-160, CO-R18.S16-SL-190, CO-R18.S16-SL-220 |  |  |  | -194.25d | 0d |  |  |  | CO-R18-SL-TF-130 | TR | TR | Each | T&F | SL | CON | R18 | SL | TERMINA |  |  |  |
| CO-R18-SL-TF-380 |  | Testing Works For Panel Board Cables of Street Lighting Network-[Road 18] | 2d | 2027-06-08 | 2027-06-10 | CO-R18-SL-TF-130, CO-R09-SL-TF-380 |  |  |  | -194.25d | 17.75d |  |  |  | CO-R18-SL-TF-380 |  |  |  |  | SL | CON | R18 | SL | TEST |  |  |  |
|  | ES | **Earthing System Works** |  |  |  |  |  |  |  |  |  |  |  |  |  |  |  |  |  |  |  |  |  |  |  |  |  |
|  | 14 | **Medium Voltage Network** |  | 2027-03-21 | 2027-04-07 |  |  |  |  |  |  |  |  |  |  |  |  |  |  |  |  |  |  |  |  |  |  |
|  | TT | **Termination and Testing Works** |  | 2027-03-21 | 2027-04-07 |  |  |  |  |  |  |  |  |  |  |  |  |  |  |  |  |  |  |  |  |  |  |
| CO-R18-MV-TF-120 |  | Termination Works of Medium Voltage Network-[Road 18] | 16d | 2027-03-21 | 2027-04-07 | CO-R09-MV-TF-100, CO-R18.S15-MV-ML-360, PRO-R18-MV-DL-130 |  |  |  | -134d | 0d | Labor/Helper [128 h]; Electrician [128 h]; Low Current Technician [128 h] |  |  | CO-R18-MV-TF-120 | RMU | TR | Each | TR | MV | CON | R18 | MV | TEST |  |  |  |
|  | 1 | **Road Works** |  | 2025-09-23 | 2027-08-24 |  |  |  |  |  |  |  |  |  |  |  |  |  |  |  |  |  |  |  |  |  |  |
|  | 1 | **Bituminous Construction** |  | 2025-09-23 | 2025-10-13 |  |  |  |  |  |  |  |  |  |  |  |  |  |  |  |  |  |  |  |  |  |  |
| CO-R18-S15-RD-F-100 |  | Application of Prime Coat Layer for Road Works- S.W 03-[Road 18] | 18d | 2025-09-23 A | 2025-09-28 A | CO-R18.S15-RD-P-140, PRO-R18-RD-DL-240 | 100% | 2026-10-08 | 2026-10-29 |  |  | Labor/Helper [144 h]; Insulation Worker [144 h]; Bituminous base course(Grading I - Class A), 70mm thick after compaction including Prime Coat (MC1) [340.56] | 124,355.48 | 124,355.48 | CO-R18-S15-RD-F-100 | AB | MC | Sq.m | BS | RD | CON | R18 | RD |  | 1 | 1 | S15 |
| CO-R18-S15-RD-F-110 |  | Bituminous Base & Wearing Courses Layers for Road Works- S.W 03-[Road 18] | 18d | 2025-09-23 A | 2025-09-28 A | CO-R18-S15-RD-F-100 SS+3d, CO-R18-S15-RD-F-100 FF+3d, PRO-R18-RD-DL-250 FF+3d | 100% | 2026-10-12 | 2026-11-02 |  |  | Labor/Helper [144 h]; Eq. Operator [144 h]; Asphalt Cutter [144 h]; Asphalt Paver [144 h]; Bituminous concrete wearing course, 50 mm thick, after compaction(Grading I - Class A), including tack coat (RC) [243.27] | 97,794.54 | 97,794.54 | CO-R18-S15-RD-F-110 | AB | AB | Sq.m | BS | RD | CON | R18 | RD |  | 1 | 1 | S15 |
| CO-R18-S16-RD-F-150 |  | Application of Prime Coat Layer for Road Works- S.W 04-[Road 18] | 18d | 2025-10-09 A | 2025-10-13 A | CO-R18-S15-RD-F-100 SS, PRO-R18-RD-DL-240 | 100% | 2026-10-22 | 2026-11-12 |  |  | Labor/Helper [144 h]; Insulation Worker [144 h]; Bituminous base course(Grading I - Class A), 70mm thick after compaction including Prime Coat (MC1) [340.56] | 124,355.48 | 124,355.48 | CO-R18-S16-RD-F-150 | AB | MC | Sq.m | BS | RD | CON | R18 | RD |  | 2 | 2 | S16 |
| CO-R18-S16-RD-F-170 |  | Bituminous Base & Wearing Courses Layers for Road Works- S.W 04-[Road 18] | 18d | 2025-10-09 A | 2025-10-11 A | CO-R18-S16-RD-F-150 SS+3d, CO-R18-S16-RD-F-150 FF+3d, CO-R18-S15-RD-F-110 SS, PRO-R18-RD-DL-250 FF+3d | 100% | 2026-10-26 | 2026-11-16 |  |  | Labor/Helper [144 h]; Eq. Operator [144 h]; Asphalt Cutter [144 h]; Asphalt Paver [144 h]; Bituminous concrete wearing course, 50 mm thick, after compaction(Grading I - Class A), including tack coat (RC) [243.27] | 97,794.54 | 97,794.54 | CO-R18-S16-RD-F-170 | AB | AB | Sq.m | BS | RD | CON | R18 | RD |  | 2 | 2 | S16 |

| ID | WBS | Activity | Duration | Start | Finish | Predecessors | Total float | Free float | Resources | Cost | Activity ID N | Seq | New Seq | 02- Network-WBS | 03- Activity | 04-UOM | 05-Discipline | 01- Network | 08 Stage | 09 Roads | 10 side Walk | Discipline |
| --- | --- | --- | --- | --- | --- | --- | --- | --- | --- | --- | --- | --- | --- | --- | --- | --- | --- | --- | --- | --- | --- | --- |
|  | TS | **Traffic Signs Boards and Roads Marking** |  | 2027-07-14 | 2027-08-24 |  |  |  |  |  |  |  |  |  |  |  |  |  |  |  |  |  |
| CO-R18-S15-RD-F-120 |  | Application of Road Marking Works For Road Works- S.W 03-[Road 18] | 12d | 2027-07-14 | 2027-07-28 | CO-R09-S1-RD-F-140, CO-R18-S15-RD-F-110, CO-R09-S1-RD-F-150, PRO-R18-RD-DL-210 | -194.5d | 0d | Labor/Helper [480 h]; Painter [480 h]; Retroreflective Thermoplastic White, Traffic lines [183.45]; Retroreflective Thermoplastic Yellow, Traffic lines [28.11]; Retroreflective raised pavement markers(Type A) [35.86] | 7,250.71 | CO-R18-S15-RD-F-120 | 1 | 1 | RM | RM | LM | TRF | RD | CON | R18 | S15 | RD |
| CO-R18-S15-RD-F-130 |  | Installation Works of Traffic Signs Boards For Road Works- S.W 03-[Road 18] | 12d | 2027-07-28 | 2027-08-11 | CO-R09-S1-RD-F-150, CO-R18-S15-RD-F-120, PRO-R18-RD-DL-200 FF+3d | -194.5d | 1d | Labor/Helper [288 h]; Painter [288 h]; Traffic signs, ground mounted, Sheet Alumenium, (breakaway) Single post, with all accessories [3]; Straight Arrow [6]; Straight-Right Arrow [1] | 3,301.76 | CO-R18-S15-RD-F-130 | 1 | 1 | TS | TF | Each | TRF | RD | CON | R18 | S15 | RD |
| CO-R18-S16-RD-F-140 |  | Application of Road Marking Works For Road Works- S.W 04-[Road 18] | 15d | 2027-08-07 | 2027-08-24 | CO-R09-S2-RD-F-160, CO-R18-S16-RD-F-170, CO-R09-S1-RD-F-150, CO-R09-S2-RD-F-170, PRO-R18-RD-DL-210 | -195.5d | 0d | Labor/Helper [600 h]; Painter [600 h]; Retroreflective Thermoplastic White, Traffic lines [183.45]; Retroreflective Thermoplastic Yellow, Traffic lines [28.11]; Retroreflective raised pavement markers(Type A) [35.86] | 7,250.71 | CO-R18-S16-RD-F-140 | 2 | 2 | RM | RM | LM | TRF | RD | CON | R18 | S16 | RD |
| CO-R18-S16-RD-F-160 |  | Installation Works of Traffic Signs Boards For Road Works- S.W 04-[Road 18] | 10d | 2027-08-12 | 2027-08-24 | CO-R18-S16-RD-F-140 FF, CO-R09-S2-RD-F-170, CO-R18-S15-RD-F-130, PRO-R18-RD-DL-200 FF+3d | -195.5d | 0d | Labor/Helper [360 h]; Painter [360 h]; Traffic signs, ground mounted, Sheet Alumenium, (breakaway) Single post, with all accessories [3]; Straight Arrow [6]; Straight-Right Arrow [1] | 3,301.76 | CO-R18-S16-RD-F-160 | 2 | 2 | TS | TF | Each | TRF | RD | CON | R18 | S16 | RD |
|  | GEN | **Independent Works** |  | 2025-05-19 | 2027-08-24 |  |  |  |  |  |  |  |  |  |  |  |  |  |  |  |  |  |
|  | CON | **Tie In To Existing Networks** |  | 2027-03-20 | 2027-08-24 |  |  |  |  |  |  |  |  |  |  |  |  |  |  |  |  |  |
|  | 1 | **Phase 2 Block "J"** |  | 2027-03-20 | 2027-08-24 |  |  |  |  |  |  |  |  |  |  |  |  |  |  |  |  |  |
|  | 2 | **Road 09 Local 2 ( 2278 LM )** |  | 2027-04-08 | 2027-07-21 |  |  |  |  |  |  |  |  |  |  |  |  |  |  |  |  |  |
|  | 15 | **Storm Drainage Network** |  | 2027-07-12 | 2027-07-19 |  |  |  |  |  |  |  |  |  |  |  |  |  |  |  |  |  |
| TIE-SD-R09 |  | TIE IN Existing Network For Storm Drainage Network | 7d | 2027-07-12 | 2027-07-19 | MS-CF-SD | -162d | 0d |  |  | TIE-SD-R09 |  |  | CO | Con | LM | CO | SD | CON | R09 |  | SD |
|  | 16 | **Sewage Network** |  | 2027-06-22 | 2027-07-05 |  |  |  |  |  |  |  |  |  |  |  |  |  |  |  |  |  |
| TIE-SW-R09 |  | TIE IN Existing Network For Sewage Network | 12d | 2027-06-22 | 2027-07-05 | MS-CF-SW | -150d | 6d |  |  | TIE-SW-R09 |  |  | CO | Con | LM | CO | SW | CON | R09 |  | SW |
|  | 17 | **Potable Water Network** |  | 2027-06-28 | 2027-07-11 |  |  |  |  |  |  |  |  |  |  |  |  |  |  |  |  |  |
| TIE-PW-R09 |  | TIE IN Existing Network For Potable Water Network | 12d | 2027-06-28 | 2027-07-11 | MS-CF-PW | -155d | 0d |  |  | TIE-PW-R09 |  |  | CO | Con | LM | CON | PW | CON | R09 |  | PW |
|  | 1 | **Irrigation Network** |  | 2027-05-12 | 2027-05-31 |  |  |  |  |  |  |  |  |  |  |  |  |  |  |  |  |  |
| TIE-IR-R09 |  | TIE IN Existing Network For Irrigation Network | 12d | 2027-05-12 | 2027-05-31 | MS-CF-IR | -120d | 0d |  |  | TIE-IR-R09 |  |  | CO | Con | LM | CON | PW | CON | R09 |  | PW |
|  | 18 | **Meduim Voltage Network** |  | 2027-04-08 | 2027-04-28 |  |  |  |  |  |  |  |  |  |  |  |  |  |  |  |  |  |
| TIE-R09-MV |  | TIE IN Existing Network For Medium Voltage Network | 18d | 2027-04-08 | 2027-04-28 | MS-CF-MV | -97d | 33d |  |  | TIE-R09-MV |  |  | CO | Con | LM | CO | MV | CON | R09 |  | MV |
|  | 2 | **Street Lighting Network** |  | 2027-07-01 | 2027-07-21 |  |  |  |  |  |  |  |  |  |  |  |  |  |  |  |  |  |
| TIE-R09-SL |  | TIE IN Existing Network For Street Lighting Network | 18d | 2027-07-01 | 2027-07-21 | MS-CF-SL | -164d | 0d |  |  | TIE-R09-SL |  |  |  |  |  |  |  | CON | R09 |  | SL |
|  | 3 | **Telecom Network** |  | 2027-04-08 | 2027-04-19 |  |  |  |  |  |  |  |  |  |  |  |  |  |  |  |  |  |
| TIE-R09-TE |  | TIE IN Existing Network For Telecom Network | 10d | 2027-04-08 | 2027-04-19 | MS-CF-TE, MS-CF-MV | -89d | 41d |  |  | TIE-R09-TE |  |  |  |  |  |  |  | CON | R09 |  | TE |
|  | 4 | **Road 10 Local 2 ( 2352 LM )** |  | 2027-04-08 | 2027-08-24 |  |  |  |  |  |  |  |  |  |  |  |  |  |  |  |  |  |
|  | 15 | **Storm Drainage Network** |  | 2027-07-12 | 2027-07-19 |  |  |  |  |  |  |  |  |  |  |  |  |  |  |  |  |  |
| TIE-SD-R10 |  | TIE IN Existing Network For Storm Drainage Network | 7d | 2027-07-12 | 2027-07-19 | MS-CF-SD | -162d | 0d |  |  | TIE-SD-R10 |  |  | CO | Con | LM | CO | SD | CON | R10 |  | SD |

| ID | WBS | Activity | Duration | Start | Finish | Predecessors | Total float | Free float | Activity ID N | 02- Network-WBS | 03- Activity | 04-UOM | 05-Discipline | 01- Network | 08 Stage | 09 Roads | Discipline |
| --- | --- | --- | --- | --- | --- | --- | --- | --- | --- | --- | --- | --- | --- | --- | --- | --- | --- |
|  | 16 | **Sewage Network** |  | 2027-06-22 | 2027-07-05 |  |  |  |  |  |  |  |  |  |  |  |  |
| TIE-SW-R10 |  | TIE IN Existing Network For Sewage Network | 12d | 2027-06-22 | 2027-07-05 | MS-CF-SW | -150d | 6d | TIE-SW-R10 | CO | Con | LM | CO | SW | CON | R10 | SW |
|  | 17 | **Potable Water Network** |  | 2027-06-28 | 2027-07-11 |  |  |  |  |  |  |  |  |  |  |  |  |
| TIE-PW-R10 |  | TIE IN Existing Network For Potable Water Network | 12d | 2027-06-28 | 2027-07-11 | MS-CF-PW | -155d | 0d | TIE-PW-R10 | CO | Con | LM | CON | PW | CON | R10 | PW |
|  | 1 | **Irrigation Network** |  | 2027-05-12 | 2027-05-31 |  |  |  |  |  |  |  |  |  |  |  |  |
| TIE-IR-R10 |  | TIE IN Existing Network For Irrigation Network | 12d | 2027-05-12 | 2027-05-31 | MS-CF-IR | -120d | 0d | TIE-IR-R10 | CO | Con | LM | CON | PW | CON | R10 | PW |
|  | 18 | **Meduim Voltage Network** |  | 2027-04-08 | 2027-04-28 |  |  |  |  |  |  |  |  |  |  |  |  |
| TIE-R10-MV |  | TIE IN Existing Network For Medium Voltage Network | 18d | 2027-04-08 | 2027-04-28 | MS-CF-MV | -97d | 33d | TIE-R10-MV | CO | Con | LM | CO | MV | CON | R10 | MV |
|  | 2 | **Street Lighting Network** |  | 2027-07-01 | 2027-07-21 |  |  |  |  |  |  |  |  |  |  |  |  |
| TIE-R10-SL |  | TIE IN Existing Network For Street Lighting Network | 18d | 2027-07-01 | 2027-07-21 | MS-CF-SL | -164d | 0d | TIE-R10-SL |  |  |  |  |  | CON | R10 | SL |
|  | 4 | **Telecom Network** |  | 2027-04-08 | 2027-04-19 |  |  |  |  |  |  |  |  |  |  |  |  |
| TIE-R10-TE |  | TIE IN Existing Network For Telecom Network | 10d | 2027-04-08 | 2027-04-19 | MS-CF-TE, MS-CF-MV | -94d | 41d | TIE-R10-TE |  |  |  |  |  | CON | R10 | TE |
|  | 3 | **Road Works** |  | 2027-08-18 | 2027-08-24 |  |  |  |  |  |  |  |  |  |  |  |  |
| TIE-R10-RD |  | TIE IN Existing Network For Road Works | 5d | 2027-08-18 | 2027-08-24 | MS-CF-RD FF, TIE-R10-TE | -192.5d | 0d | TIE-R10-RD |  |  |  |  |  | CON | R10 | RD |
|  | 5 | **Road 11 Local 1 ( 670 LM )** |  | 2027-04-08 | 2027-08-24 |  |  |  |  |  |  |  |  |  |  |  |  |
|  | 15 | **Storm Drainage Network** |  | 2027-07-12 | 2027-07-19 |  |  |  |  |  |  |  |  |  |  |  |  |
| TIE-SD-R11 |  | TIE IN Existing Network For Storm Drainage Network | 7d | 2027-07-12 | 2027-07-19 | MS-CF-SD | -162d | 0d | TIE-SD-R11 | CO | Con | LM | CO | SD | CON | R11 | SD |
|  | 16 | **Sewage Network** |  | 2027-06-22 | 2027-07-05 |  |  |  |  |  |  |  |  |  |  |  |  |
| TIE-SW-R11 |  | TIE IN Existing Network For Sewage Network | 12d | 2027-06-22 | 2027-07-05 | MS-CF-SW | -150d | 6d | TIE-SW-R11 | CO | Con | LM | CO | SW | CON | R11 | SW |
|  | 17 | **Potable Water Network** |  | 2027-06-28 | 2027-07-11 |  |  |  |  |  |  |  |  |  |  |  |  |
| TIE-PW-R11 |  | TIE IN Existing Network For Potable Water Network | 12d | 2027-06-28 | 2027-07-11 | MS-CF-PW | -155d | 0d | TIE-PW-R11 | CO | Con | LM | CON | PW | CON | R11 | PW |
|  | 1 | **Irrigation Network** |  | 2027-05-12 | 2027-05-31 |  |  |  |  |  |  |  |  |  |  |  |  |
| TIE-IR-R11 |  | TIE IN Existing Network For Irrigation Network | 12d | 2027-05-12 | 2027-05-31 | MS-CF-IR | -120d | 0d | TIE-IR-R11 | CO | Con | LM | CON | PW | CON | R11 | PW |
|  | 18 | **Meduim Voltage Network** |  | 2027-04-08 | 2027-04-28 |  |  |  |  |  |  |  |  |  |  |  |  |
| TIE-R11-MV |  | TIE IN Existing Network For Medium Voltage Network | 18d | 2027-04-08 | 2027-04-28 | MS-CF-MV | -97d | 33d | TIE-R11-MV | CO | Con | LM | CO | MV | CON | R11 | MV |

| ID | WBS | Activity | Duration | Start | Finish | Predecessors | Total float | Free float | Activity ID N | 08 Stage | 09 Roads | Discipline | 02- Network-WBS | 03- Activity | 04-UOM | 05-Discipline | 01- Network |
| --- | --- | --- | --- | --- | --- | --- | --- | --- | --- | --- | --- | --- | --- | --- | --- | --- | --- |
|  | 2 | **Street Lighting Network** |  | 2027-07-01 | 2027-07-21 |  |  |  |  |  |  |  |  |  |  |  |  |
| TIE-R11-SL |  | TIE IN Existing Network For Street Lighting Network | 18d | 2027-07-01 | 2027-07-21 | MS-CF-SL | -164d | 0d | TIE-R11-SL | CON | R11 | SL |  |  |  |  |  |
|  | 4 | **Telecom Network** |  | 2027-04-08 | 2027-04-19 |  |  |  |  |  |  |  |  |  |  |  |  |
| TIE-R11-TE |  | TIE IN Existing Network For Telecom Network | 10d | 2027-04-08 | 2027-04-19 | MS-CF-TE, MS-CF-MV | -90d | 41d | TIE-R11-TE | CON | R11 | TE |  |  |  |  |  |
|  | 3 | **Road Works** |  | 2027-08-18 | 2027-08-24 |  |  |  |  |  |  |  |  |  |  |  |  |
| TIE-R11-RD |  | TIE IN Existing Network For Road Works | 5d | 2027-08-18 | 2027-08-24 | MS-CF-RD FF, TIE-R11-TE | -188.5d | 0d | TIE-R11-RD | CON | R11 | RD |  |  |  |  |  |
|  | 6 | **Road 14 Local 1 ( 584 LM )** |  | 2027-04-08 | 2027-08-24 |  |  |  |  |  |  |  |  |  |  |  |  |
|  | 15 | **Storm Drainage Network** |  | 2027-07-12 | 2027-07-19 |  |  |  |  |  |  |  |  |  |  |  |  |
| TIE-SD-R14 |  | TIE IN Existing Network For Storm Drainage Network | 7d | 2027-07-12 | 2027-07-19 | MS-CF-SD | -162d | 0d | TIE-SD-R14 | CON | R14 | SD | CO | Con | LM | CO | SD |
|  | 16 | **Sewage Network** |  | 2027-06-22 | 2027-07-05 |  |  |  |  |  |  |  |  |  |  |  |  |
| TIE-SW-R14 |  | TIE IN Existing Network For Sewage Network | 12d | 2027-06-22 | 2027-07-05 | MS-CF-SW | -150d | 6d | TIE-SW-R14 | CON | R14 | SW | CO | Con | LM | CO | SW |
|  | 17 | **Potable Water Network** |  | 2027-06-28 | 2027-07-11 |  |  |  |  |  |  |  |  |  |  |  |  |
| TIE-PW-R14 |  | TIE IN Existing Network For Potable Water Network | 12d | 2027-06-28 | 2027-07-11 | MS-CF-PW | -155d | 0d | TIE-PW-R14 | CON | R14 | PW | CO | Con | LM | CON | PW |
|  | 1 | **Irrigation Network** |  | 2027-05-12 | 2027-05-31 |  |  |  |  |  |  |  |  |  |  |  |  |
| TIE-IR-R14 |  | TIE IN Existing Network For Irrigation Network | 12d | 2027-05-12 | 2027-05-31 | MS-CF-IR | -120d | 0d | TIE-IR-R14 | CON | R14 | PW | CO | Con | LM | CON | PW |
|  | 18 | **Meduim Voltage Network** |  | 2027-04-08 | 2027-04-28 |  |  |  |  |  |  |  |  |  |  |  |  |
| TIE-R14-MV |  | TIE IN Existing Network For Medium Voltage Network | 18d | 2027-04-08 | 2027-04-28 | MS-CF-MV | -97d | 33d | TIE-R14-MV | CON | R14 | MV | CO | Con | LM | CO | MV |
|  | 2 | **Street Lighting Network** |  | 2027-07-01 | 2027-07-21 |  |  |  |  |  |  |  |  |  |  |  |  |
| TIE-R14-SL |  | TIE IN Existing Network For Street Lighting Network | 18d | 2027-07-01 | 2027-07-21 | MS-CF-SL | -164d | 0d | TIE-R14-SL | CON | R14 | SL |  |  |  |  |  |
|  | 4 | **Telecom Network** |  | 2027-04-08 | 2027-04-19 |  |  |  |  |  |  |  |  |  |  |  |  |
| TIE-R14-TE |  | TIE IN Existing Network For Telecom Network | 10d | 2027-04-08 | 2027-04-19 | MS-CF-TE, MS-CF-MV | -89d | 41d | TIE-R14-TE | CON | R14 | TE |  |  |  |  |  |
|  | 3 | **Road Works** |  | 2027-08-18 | 2027-08-24 |  |  |  |  |  |  |  |  |  |  |  |  |
| TIE-R14-RD |  | TIE IN Existing Network For Road Works | 5d | 2027-08-18 | 2027-08-24 | MS-CF-RD FF, TIE-R10-TE | -192.5d | 0d | TIE-R14-RD | CON | R14 | RD |  |  |  |  |  |
|  | 7 | **Road 15 Local 1 ( 556 LM )** |  | 2027-04-08 | 2027-07-21 |  |  |  |  |  |  |  |  |  |  |  |  |
|  | 15 | **Storm Drainage Network** |  | 2027-07-12 | 2027-07-19 |  |  |  |  |  |  |  |  |  |  |  |  |
| TIE-SD-R15 |  | TIE IN Existing Network For Storm Drainage Network | 7d | 2027-07-12 | 2027-07-19 | MS-CF-SD | -162d | 0d | TIE-SD-R15 | CON | R15 | SD | CO | Con | LM | CO | SD |

| ID | WBS | Activity | Duration | Start | Finish | Predecessors | Total float | Free float | Activity ID N | 02- Network-WBS | 03- Activity | 04-UOM | 05-Discipline | 01- Network | 08 Stage | 09 Roads | Discipline |
| --- | --- | --- | --- | --- | --- | --- | --- | --- | --- | --- | --- | --- | --- | --- | --- | --- | --- |
|  | 16 | **Sewage Network** |  | 2027-06-22 | 2027-07-05 |  |  |  |  |  |  |  |  |  |  |  |  |
| TIE-SW-R15 |  | TIE IN Existing Network For Sewage Network | 12d | 2027-06-22 | 2027-07-05 | MS-CF-SW | -150d | 6d | TIE-SW-R15 | CO | Con | LM | CO | SW | CON | R15 | SW |
|  | 17 | **Potable Water Network** |  | 2027-06-28 | 2027-07-11 |  |  |  |  |  |  |  |  |  |  |  |  |
| TIE-PW-R15 |  | TIE IN Existing Network For Potable Water Network | 12d | 2027-06-28 | 2027-07-11 | MS-CF-PW | -155d | 0d | TIE-PW-R15 | CO | Con | LM | CON | PW | CON | R15 | PW |
|  | 1 | **Irrigation Network** |  | 2027-05-12 | 2027-05-31 |  |  |  |  |  |  |  |  |  |  |  |  |
| TIE-IR-R15 |  | TIE IN Existing Network For Irrigation Network | 12d | 2027-05-12 | 2027-05-31 | MS-CF-IR | -120d | 0d | TIE-IR-R15 | CO | Con | LM | CON | PW | CON | R15 | PW |
|  | 18 | **Meduim Voltage Network** |  | 2027-04-08 | 2027-04-28 |  |  |  |  |  |  |  |  |  |  |  |  |
| TIE-R15-MV |  | TIE IN Existing Network For Medium Voltage Network | 18d | 2027-04-08 | 2027-04-28 | MS-CF-MV | -97d | 33d | TIE-R15-MV | CO | Con | LM | CO | MV | CON | R15 | MV |
|  | 2 | **Street Lighting Network** |  | 2027-07-01 | 2027-07-21 |  |  |  |  |  |  |  |  |  |  |  |  |
| TIE-R15-SL |  | TIE IN Existing Network For Street Lighting Network | 18d | 2027-07-01 | 2027-07-21 | MS-CF-SL | -164d | 0d | TIE-R15-SL |  |  |  |  |  | CON | R15 | SL |
|  | 3 | **Telecom Network** |  | 2027-04-08 | 2027-04-19 |  |  |  |  |  |  |  |  |  |  |  |  |
| TIE-R15-TE |  | TIE IN Existing Network For Telecom Network | 10d | 2027-04-08 | 2027-04-19 | MS-CF-TE, MS-CF-MV | -89d | 41d | TIE-R15-TE |  |  |  |  |  | CON | R15 | TE |
|  | 8 | **Road 16 Local 1 ( 527 LM )** |  | 2027-04-08 | 2027-07-21 |  |  |  |  |  |  |  |  |  |  |  |  |
|  | 15 | **Storm Drainage Network** |  | 2027-07-12 | 2027-07-19 |  |  |  |  |  |  |  |  |  |  |  |  |
| TIE-SD-R16 |  | TIE IN Existing Network For Storm Drainage Network | 7d | 2027-07-12 | 2027-07-19 | MS-CF-SD | -162d | 0d | TIE-SD-R16 | CO | Con | LM | CO | SD | CON | R16 | SD |
|  | 16 | **Sewage Network** |  | 2027-06-22 | 2027-07-05 |  |  |  |  |  |  |  |  |  |  |  |  |
| TIE-SW-R16 |  | TIE IN Existing Network For Sewage Network | 12d | 2027-06-22 | 2027-07-05 | MS-CF-SW | -150d | 6d | TIE-SW-R16 | CO | Con | LM | CO | SW | CON | R16 | SW |
|  | 17 | **Potable Water Network** |  | 2027-06-28 | 2027-07-11 |  |  |  |  |  |  |  |  |  |  |  |  |
| TIE-PW-R16 |  | TIE IN Existing Network For Potable Water Network | 12d | 2027-06-28 | 2027-07-11 | MS-CF-PW | -155d | 0d | TIE-PW-R16 | CO | Con | LM | CON | PW | CON | R16 | PW |
|  | 1 | **Irrigation Network** |  | 2027-05-12 | 2027-05-31 |  |  |  |  |  |  |  |  |  |  |  |  |
| TIE-IR-R16 |  | TIE IN Existing Network For Irrigation Network | 12d | 2027-05-12 | 2027-05-31 | MS-CF-IR | -120d | 0d | TIE-IR-R16 | CO | Con | LM | CON | PW | CON | R16 | PW |
|  | 18 | **Meduim Voltage Network** |  | 2027-04-08 | 2027-04-28 |  |  |  |  |  |  |  |  |  |  |  |  |
| TIE-R16-MV |  | TIE IN Existing Network For Medium Voltage Network | 18d | 2027-04-08 | 2027-04-28 | MS-CF-MV | -97d | 33d | TIE-R16-MV | CO | Con | LM | CO | MV | CON | R16 | MV |
|  | 2 | **Street Lighting Network** |  | 2027-07-01 | 2027-07-21 |  |  |  |  |  |  |  |  |  |  |  |  |
| TIE-R16-SL |  | TIE IN Existing Network For Street Lighting Network | 18d | 2027-07-01 | 2027-07-21 | MS-CF-SL | -164d | 0d | TIE-R16-SL |  |  |  |  |  | CON | R16 | SL |

| ID | WBS | Activity | Duration | Start | Finish | Predecessors | Total float | Free float | Activity ID N | 08 Stage | 09 Roads | Discipline | 02- Network-WBS | 03- Activity | 04-UOM | 05-Discipline | 01- Network |
| --- | --- | --- | --- | --- | --- | --- | --- | --- | --- | --- | --- | --- | --- | --- | --- | --- | --- |
|  | 3 | **Telecom Network** |  | 2027-04-08 | 2027-04-19 |  |  |  |  |  |  |  |  |  |  |  |  |
| TIE-R16-TE |  | TIE IN Existing Network For Telecom Network | 10d | 2027-04-08 | 2027-04-19 | MS-CF-TE, MS-CF-MV | -89d | 41d | TIE-R16-TE | CON | R16 | TE |  |  |  |  |  |
|  | 9 | **Road 17 Local 1 ( 500 LM )** |  | 2027-04-08 | 2027-07-21 |  |  |  |  |  |  |  |  |  |  |  |  |
|  | 15 | **Storm Drainage Network** |  | 2027-07-12 | 2027-07-19 |  |  |  |  |  |  |  |  |  |  |  |  |
| TIE-SD-R17 |  | TIE IN Existing Network For Storm Drainage Network | 7d | 2027-07-12 | 2027-07-19 | MS-CF-SD | -162d | 0d | TIE-SD-R17 | CON | R17 | SD | CO | Con | LM | CO | SD |
|  | 16 | **Sewage Network** |  | 2027-06-22 | 2027-07-05 |  |  |  |  |  |  |  |  |  |  |  |  |
| TIE-SW-R17 |  | TIE IN Existing Network For Sewage Network | 12d | 2027-06-22 | 2027-07-05 | MS-CF-SW | -150d | 6d | TIE-SW-R17 | CON | R17 | SW | CO | Con | LM | CO | SW |
|  | 17 | **Potable Water Network** |  | 2027-06-28 | 2027-07-11 |  |  |  |  |  |  |  |  |  |  |  |  |
| TIE-PW-R17 |  | TIE IN Existing Network For Potable Water Network | 12d | 2027-06-28 | 2027-07-11 | MS-CF-PW | -155d | 0d | TIE-PW-R17 | CON | R17 | PW | CO | Con | LM | CON | PW |
|  | 1 | **Irrigation Network** |  | 2027-05-12 | 2027-05-31 |  |  |  |  |  |  |  |  |  |  |  |  |
| TIE-IR-R17 |  | TIE IN Existing Network For Irrigation Network | 12d | 2027-05-12 | 2027-05-31 | MS-CF-IR | -120d | 0d | TIE-IR-R17 | CON | R17 | PW | CO | Con | LM | CON | PW |
|  | 18 | **Meduim Voltage Network** |  | 2027-04-08 | 2027-04-28 |  |  |  |  |  |  |  |  |  |  |  |  |
| TIE-R17-MV |  | TIE IN Existing Network For Medium Voltage Network | 18d | 2027-04-08 | 2027-04-28 | MS-CF-MV | -97d | 33d | TIE-R17-MV | CON | R17 | MV | CO | Con | LM | CO | MV |
|  | 2 | **Street Lighting Network** |  | 2027-07-01 | 2027-07-21 |  |  |  |  |  |  |  |  |  |  |  |  |
| TIE-R17-SL |  | TIE IN Existing Network For Street Lighting Network | 18d | 2027-07-01 | 2027-07-21 | MS-CF-SL | -164d | 0d | TIE-R17-SL | CON | R17 | SL |  |  |  |  |  |
|  | 3 | **Telecom Network** |  | 2027-04-08 | 2027-04-19 |  |  |  |  |  |  |  |  |  |  |  |  |
| TIE-R17-TE |  | TIE IN Existing Network For Telecom Network | 10d | 2027-04-08 | 2027-04-19 | MS-CF-TE, MS-CF-MV | -89d | 41d | TIE-R17-TE | CON | R17 | TE |  |  |  |  |  |
|  | 1 | **Road 18 Local 1 ( 479 LM )** |  | 2027-03-20 | 2027-07-21 |  |  |  |  |  |  |  |  |  |  |  |  |
|  | 15 | **Storm Drainage Network** |  | 2027-07-12 | 2027-07-19 |  |  |  |  |  |  |  |  |  |  |  |  |
| TIE-SD-R18 |  | TIE IN Existing Network For Storm Drainage Network | 7d | 2027-07-12 | 2027-07-19 | MS-CF-SD | -158d | 0d | TIE-SD-R18 | CON | R18 | SD | CO | Con | LM | CO | SD |
|  | 16 | **Sewage Network** |  | 2027-06-22 | 2027-07-05 |  |  |  |  |  |  |  |  |  |  |  |  |
| TIE-SW-R18 |  | TIE IN Existing Network For Sewage Network | 12d | 2027-06-22 | 2027-07-05 | MS-CF-SW | -146d | 6d | TIE-SW-R18 | CON | R18 | SW | CO | Con | LM | CO | SW |
|  | 17 | **Potable Water Network** |  | 2027-06-28 | 2027-07-11 |  |  |  |  |  |  |  |  |  |  |  |  |
| TIE-PW-R18 |  | TIE IN Existing Network For Potable Water Network | 12d | 2027-06-28 | 2027-07-11 | MS-CF-PW | -151d | 0d | TIE-PW-R18 | CON | R18 | PW | CO | Con | LM | CON | PW |

| ID | WBS | Activity | Duration | Start | Finish | Predecessors | Complete | Remaining | Planned start | Planned finish | Total float | Free float | Resources | Cost | Actual cost | Activity ID N | 02- Network-WBS | 03- Activity | 04-UOM | 05-Discipline | 01- Network | 08 Stage | 09 Roads | Discipline | 07-Weightage System |
| --- | --- | --- | --- | --- | --- | --- | --- | --- | --- | --- | --- | --- | --- | --- | --- | --- | --- | --- | --- | --- | --- | --- | --- | --- | --- |
|  | 1 | **Irrigation Network** |  | 2027-05-12 | 2027-05-31 |  |  |  |  |  |  |  |  |  |  |  |  |  |  |  |  |  |  |  |  |
| TIE-IR-R18 |  | TIE IN Existing Network For Irrigation Network | 12d | 2027-05-12 | 2027-05-31 | MS-CF-IR |  |  |  |  | -116d | 0d |  |  |  | TIE-IR-R18 | CO | Con | LM | CON | PW | CON | R18 | PW |  |
|  | 18 | **Meduim Voltage Network** |  | 2027-04-08 | 2027-04-28 |  |  |  |  |  |  |  |  |  |  |  |  |  |  |  |  |  |  |  |  |
| TIE-R18-MV10 |  | TIE IN Existing Network For Medium Voltage Network | 18d | 2027-04-08 | 2027-04-28 | MS-CF-MV |  |  |  |  | -93d | 33d |  |  |  | TIE-R18-MV10 | CO | Con | LM | CO | MV | CON | R18 | MV |  |
|  | 2 | **Street Lighting Network** |  | 2027-07-01 | 2027-07-21 |  |  |  |  |  |  |  |  |  |  |  |  |  |  |  |  |  |  |  |  |
| TIE-R18-SL10 |  | TIE IN Existing Network For Street Lighting Network | 18d | 2027-07-01 | 2027-07-21 | MS-CF-SL |  |  |  |  | -160d | 0d |  |  |  | TIE-R18-SL10 |  |  |  |  |  | CON | R18 | SL |  |
|  | 3 | **Telecom Network** |  | 2027-03-20 | 2027-04-01 |  |  |  |  |  |  |  |  |  |  |  |  |  |  |  |  |  |  |  |  |
| TIE-R18-TE10 |  | TIE IN Existing Network For Telecom Network | 12d | 2027-03-20 | 2027-04-01 | MS-CF-TE |  |  |  |  | -70d | 56d |  |  |  | TIE-R18-TE10 |  |  |  |  |  | CON | R18 | TE |  |
|  | 2 | **Sewage Pump Stations** |  | 2026-09-01 | 2027-05-30 |  |  |  |  |  |  |  |  |  |  |  |  |  |  |  |  |  |  |  |  |
|  | 1 | **Sewage Pump Station ( PS 06 )** |  | 2026-09-01 | 2027-05-30 |  |  |  |  |  |  |  |  |  |  |  |  |  |  |  |  |  |  |  |  |
|  | 1 | **Pump Station Main Building** |  | 2026-09-01 | 2027-03-24 |  |  |  |  |  |  |  |  |  |  |  |  |  |  |  |  |  |  |  |  |
| CO-SW-PS7-MB-100 |  | Excavation Main Bulding | 15d | 2026-09-01 A | 2026-09-06 A | ENG-SH-SPS-A-110, ENG-MS-SPS-A-110, ENG-MT-SPS-CV-A-110, ENG-MT-SPS-MC-A-110, CO-R14.S07-SD-130, CO-R15.S09-SD-130, CO-R16.S12-SD-130 | 100% |  | 2026-03-15 | 2026-04-04 |  |  | Valve chamber [0.1] | 9,567.6 | 9,567.6 | CO-SW-PS7-MB-100 |  |  |  |  |  | CON |  | SW | P06 |
| CO-SW-PS7-MB-110 |  | Concrete Works of Superstrucure | 30d | 2026-09-16 A | 2026-10-31 | CO-SW-PS7-MB-100, PRO-SPS-CV-DL-10 | 70% | 4d | 2026-04-05 | 2026-05-09 | -141d | 0d | Valve chamber [0.7] | 66,973.2 | 46,881.24 | CO-SW-PS7-MB-110 |  |  |  |  |  | CON |  | SW | P06 |
| CO-SW-PS7-MB-120 |  | Internal Finishes Works of Superstrucure | 30d | 2026-11-01 | 2026-12-05 | CO-SW-PS7-MB-110 |  |  |  |  | -141d | 0d | Valve chamber [0.2] | 19,135.2 |  | CO-SW-PS7-MB-120 |  |  |  |  |  | CON |  | SW | P06 |
| CO-SW-PS7-MB-130 |  | Internal Electrical Works | 30d | 2026-12-06 | 2027-01-09 | CO-SW-PS7-MB-120 |  |  |  |  | -104d | 0d | Gate valves for the pump station [3]; Non return valves for the pump station [3]; Penstok for the pump station [1] | 697,563.13 |  | CO-SW-PS7-MB-130 |  |  |  |  |  | CON |  | SW | P06 |
| CO-SW-PS7-MB-140 |  | Internal Mechanical Works | 30d | 2027-01-10 | 2027-02-13 | CO-SW-PS7-MB-130 |  |  |  |  | -104d | 0d | Constant speed drive, sewage pumps, centrifugal submersible type; 2 duty / 1 standby capable of delivering a flow rate of flow 424 l/s against a total head of 22m, rate includes provision of MCC [1] | 572,620.86 |  | CO-SW-PS7-MB-140 |  |  |  |  |  | CON |  | SW | P06 |
| CO-SW-PS7-MB-150 |  | Electromechanical Main Works | 30d | 2027-02-14 | 2027-03-24 | CO-SW-PS7-MB-140, PRO-SPS7-LL-SH/DL-10, PRO-SPS7-LL-MSI-10 |  |  |  |  | -104d | 37d | Labor/Helper [800 h]; Electrician [800 h]; Odour control system [1] | 160,940.7 |  | CO-SW-PS7-MB-150 |  |  |  |  | SW | CON |  | SW | P06 |
|  | 2 | **Generator With Umbrella Tank** |  | 2026-12-06 | 2027-03-03 |  |  |  |  |  |  |  |  |  |  |  |  |  |  |  |  |  |  |  |  |
| CO-SW-PS7-GN-100 |  | Concrete Works of Base | 12d | 2026-12-06 | 2026-12-19 | CO-SW-PS7-MB-110, CO-SW-PS7-MB-120 |  |  |  |  | -141d | 0d | Standby Diesel Generator Set 400/230KVA, 3P, 60Hz in Sound Attenuated Enclosure KVA rating by contractor as per total load onsite after pumps selection [0.2]; Supply, install, test and commission of manually operated fuel pump, The pump should be supplied with all accessories as specified. [0.2]; Supply, install, test and commission of Fuel pump with capacity of not less than 1 hour to fill the daily tank of generator at required head. [0.2]; supply, install, test & commission Automatic Transfer Switch ATS panel including all accessories & works required. [0.2]; Supply, install, test and commission under ground fuel tank for 3 days of continuous operation of the standby generator at full load. The tank should be supplied with all accessories such as black steel pipes, float switches with two contactors ï¿½etc. as [0.2] | 43,051.39 |  | CO-SW-PS7-GN-100 |  |  |  |  |  | CON |  | SW | P06 |
| CO-SW-PS7-GN-110 |  | Install Manually Operated Fuel Pump | 21d | 2026-12-20 | 2027-01-12 | CO-SW-PS7-GN-100 |  |  |  |  | -141d | 0d | Standby Diesel Generator Set 400/230KVA, 3P, 60Hz in Sound Attenuated Enclosure KVA rating by contractor as per total load onsite after pumps selection [0.5]; Supply, install, test and commission of manually operated fuel pump, The pump should be supplied with all accessories as specified. [0.5]; Supply, install, test and commission of Fuel pump with capacity of not less than 1 hour to fill the daily tank of generator at required head. [0.5]; supply, install, test & commission Automatic Transfer Switch ATS panel including all accessories & works required. [0.5]; Supply, install, test and commission under ground fuel tank for 3 days of continuous operation of the standby generator at full load. The tank should be supplied with all accessories such as black steel pipes, float switches with two contactors ï¿½etc. as [0.5] | 107,628.46 |  | CO-SW-PS7-GN-110 |  |  |  |  |  | CON |  | SW | P06 |
| CO-SW-PS7-GN-120 |  | Install Ground Fuel Tank | 21d | 2027-01-13 | 2027-02-06 | CO-SW-PS7-GN-110 |  |  |  |  | -141d | 0d | Standby Diesel Generator Set 400/230KVA, 3P, 60Hz in Sound Attenuated Enclosure KVA rating by contractor as per total load onsite after pumps selection [0.2]; Supply, install, test and commission of manually operated fuel pump, The pump should be supplied with all accessories as specified. [0.2]; Supply, install, test and commission of Fuel pump with capacity of not less than 1 hour to fill the daily tank of generator at required head. [0.2]; supply, install, test & commission Automatic Transfer Switch ATS panel including all accessories & works required. [0.2]; Supply, install, test and commission under ground fuel tank for 3 days of continuous operation of the standby generator at full load. The tank should be supplied with all accessories such as black steel pipes, float switches with two contactors ï¿½etc. as [0.2] | 43,051.39 |  | CO-SW-PS7-GN-120 |  |  |  |  |  | CON |  | SW | P06 |
| CO-SW-PS7-GN-130 |  | Fix Steel Structure for Umbrella | 21d | 2027-02-07 | 2027-03-03 | CO-SW-PS7-GN-110, CO-SW-PS7-GN-120 |  |  |  |  | -141d | 0d | Standby Diesel Generator Set 400/230KVA, 3P, 60Hz in Sound Attenuated Enclosure KVA rating by contractor as per total load onsite after pumps selection [0.1]; Supply, install, test and commission of manually operated fuel pump, The pump should be supplied with all accessories as specified. [0.1]; Supply, install, test and commission of Fuel pump with capacity of not less than 1 hour to fill the daily tank of generator at required head. [0.1]; supply, install, test & commission Automatic Transfer Switch ATS panel including all accessories & works required. [0.1]; Supply, install, test and commission under ground fuel tank for 3 days of continuous operation of the standby generator at full load. The tank should be supplied with all accessories such as black steel pipes, float switches with two contactors ï¿½etc. as [0.1] | 21,525.69 |  | CO-SW-PS7-GN-130 |  |  |  |  |  | CON |  | SW | P06 |
|  | 5 | **Motor Control Centre Building** |  | 2026-11-01 | 2027-03-25 |  |  |  |  |  |  |  |  |  |  |  |  |  |  |  |  |  |  |  |  |
| CO-SW-PS7-MCC-100 |  | Excavation Main Bulding | 16d | 2026-11-01 | 2026-11-18 | CO-SW-PS7-MB-100, CO-SW-PS7-MB-110 |  |  |  |  | -105d | 0d | Skilled Labor/Surveyor [90 h]; Foreman [90 h]; Excavator [896 h]; Plain concrete foundation [0.2] | 96.48 |  | CO-SW-PS7-MCC-100 |  |  |  |  | SW | CON |  | SW | P06 |
| CO-SW-PS7-MCC-110 |  | Concrete Works of Superstrucure | 21d | 2026-11-19 | 2026-12-13 | CO-SW-PS7-MCC-100 |  |  |  |  | -105d | 0d | Skilled Labor/Surveyor [72 h]; Foreman [72 h]; Cons. Carpenter [1008 h]; Block Mason [504 h]; Plain concrete foundation [0.8]; Reinfirced concrete foundation [8]; Reinforced concrete columns [10]; Reinfirced concrete SOG [21]; Reinfirced concrete slab [36]; CMU walls with thickness 200mm [150]; Waterproofing for foundation [60]; Roof Insulation [45] | 108,089.67 |  | CO-SW-PS7-MCC-110 |  |  |  |  | SW | CON |  | SW | P06 |
| CO-SW-PS7-MCC-120 |  | Internal Finishes Works of Superstrucure | 21d | 2026-12-14 | 2027-01-06 | CO-SW-PS7-MCC-110 |  |  |  |  | -105d | 0d | Labor/Helper [504 h]; Block Mason [504 h]; Plasterer [504 h]; Painter [504 h]; Acrylic paint on elevations including plastering [150]; Acrylic paint on internal wallsand ceiling including plastering [190]; Epoxy paint on floors [40]; Supply and install 2000*3000 mm double leaf manufacturer label shall pass the test requirements complete with accessories as per door schedule and material as approved by the Client. [1]; Plinth for odour control system [20] | 65,710.36 |  | CO-SW-PS7-MCC-120 |  |  |  |  | SW | CON |  | SW | P06 |
| CO-SW-PS7-MCC-130 |  | Internal Electrical Works | 21d | 2027-01-07 | 2027-01-31 | CO-SW-PS7-MCC-120 |  |  |  |  | -105d | 0d | Labor/Helper [320 h]; Electrician [320 h]; 4Cx 185mm2 Cu/XLPE//PVC from nearest power supply (SEC) and generator to the ATS and from ATS to MCC-SPS [600]; 4Cx 95mm2 Cu/XLPE//PVC from nearest power supply (SEC) and generator to the ATS and from ATS to MCC-SPS [400]; 4Cx 10mm2 Cu/XLPE/SWA/PVC from MCC-SPS to ELP [50]; 4Cx 150mm2 + 1Cx25mm2 SUBMERGED RUBBER INSULATED FLEXIBLE CABLE from MCC to PUMP1& PUMP2. [210]; 4Cx 10mm2 + 1Cx10mm2 Cu/XLPE/PVC FROM MCC-SPS to DB-SPS [50]; 4Cx 10mm2 + 1Cx10mm2 Cu/XLPE/PVC FROM MCC-SPS to Penstok [100]; 4Cx 10mm2 + 1Cx10mm2 Cu/XLPE/PVC FROM MCC-SPS to Odor Control Unit [100]; 4Cx 6mm2 + 1Cx6mm2 Cu/XLPE/PVC FROM MCC-SPS to the mechanical bar screen [80]; 3Cx 6mm2 Cu/XLPE/PVC FROM MCC-SPS to the two fuel pumps. [100]; 3Cx 4mm2 Cu/XLPE/PVC to the AC. [80]; 13A DOUBLE SWITCH SOCKET OUTLET (WEATHER PROOF) [8]; 20A SWITCH SOCKET OUTLET (FOR SPLIT UNIT), (WEATHER PROOF) [8]; Supply, install and test the following grounding and lightning system including ground wires, ground rods, inspection pits, terminations, bonding/clamping, civil works and all materials and accessories required to complete the work according to specificat [2] | 298,746.3 |  | CO-SW-PS7-MCC-130 |  |  |  |  | SW | CON |  | SW | P06 |
| CO-SW-PS7-MCC-140 |  | Internal Mechanical Works | 21d | 2027-02-01 | 2027-02-25 | CO-SW-PS7-MCC-130 |  |  |  |  | -105d | 0d | Labor/Helper [336 h]; Electrician [336 h]; MCC [1] | 75,272.49 |  | CO-SW-PS7-MCC-140 |  |  |  |  | SW | CON |  | SW | P06 |
| CO-SW-PS7-MCC-150 |  | Electromechanical Main Works | 21d | 2027-02-27 | 2027-03-25 | CO-SW-PS7-MCC-140, PRO-SPS7-LL-MSI-10 |  |  |  |  | -105d | 36d | Labor/Helper [320 h]; Electrician [320 h]; Surge protection system study [1]; Surge protection system [1]; Local Control Panel, IP 65 [4]; Isolator/disconnect switches IP65 [16]; DB-SPS Panel [4]; ELP Panel: phtocell , timer,40 Ampere, 3P, IP66,60Hz incomer MCCB & 5ways outgoing MCCB [4]; Electrical Hand Hole 600mm x 600mm x 800mm concrete hand hole with hot dip galvanized heavy duty steel cover [10]; Electrical Hand Hole 400mm x 400mm x 600mm concrete hand hole with hot dip galvanized heavy duty steel cover [10]; Supply and install telephone and fire alarm system including smoke detector, cabinet, control panel, cables, conduits, switches, and other accessories to complete as per drawings and specifications. [1]; Supply, installation, testing and commissioning of all control, instrumentation( as shown on the P & ID drawings cable schedule) including all installation accessories such as termination kits, lugs, glands, cable containments, junction boxes , conduits, [2]; Supply, installation, testing and commissioning of all field instruments such as hydrostatic level meter, level switches, flow switch, and all necessary instruments including all installation accessories, etc. all as per specifications and design drawings [2]; Earth pits [1]; Cable draw pit, 600x600mm [1]; Supply, installation, testing and commissioning of PLC system, [2] | 1,423,529.57 |  | CO-SW-PS7-MCC-150 |  |  |  |  | SW | CON |  | SW | P06 |

| ID | WBS | Activity | Duration | Start | Finish | Predecessors | Complete | Planned start | Planned finish | Total float | Free float | Resources | Cost | Actual cost | Activity ID N | 01- Network | 07-Weightage System | 08 Stage | Discipline |
| --- | --- | --- | --- | --- | --- | --- | --- | --- | --- | --- | --- | --- | --- | --- | --- | --- | --- | --- | --- |
|  | 6 | **Simple Building Works** |  | 2027-03-04 | 2027-05-04 |  |  |  |  |  |  |  |  |  |  |  |  |  |  |
| CO-SW-PS7-SBL-100 |  | Perimeter Fencing | 23d | 2027-03-04 | 2027-04-03 | CO-SW-PS7-MCC-120, CO-SW-PS7-MB-120, CO-SW-PS7-GN-130, CO-SW-PS7-GN-120 |  |  |  | -141d | 0d | Skilled Labor/Surveyor [37 h]; Foreman [37 h]; Cons. Carpenter [736 h]; Block Mason [368 h]; Double leaf swing or sliding main entrance gate [1]; 1.8m high Chainlink Fence (mesh opening size 60mm x 60mm) [254]; Single leaf personal access gate [1] | 73,149.3 |  | CO-SW-PS7-SBL-100 | SW | P06 | CON | SW |
| CO-SW-PS7-SBL-110 |  | Outside Lighting | 27d | 2027-04-04 | 2027-05-04 | CO-SW-PS7-SBL-100 |  |  |  | -139d | 2d | Labor/Helper [216 h]; Electrician [216 h]; Surfaced Mounted Light [8]; Flood lights shall be high pole with 250 watt HPS luminaire [4] | 16,425.72 |  | CO-SW-PS7-SBL-110 | SW | P06 | CON | SW |
| CO-SW-PS7-SBL-120 |  | Outside Duct Works | 23d | 2027-04-04 | 2027-04-29 | CO-SW-PS7-SBL-100 |  |  |  | -141d | 0d | Labor/Helper [184 h]; Electrician [184 h]; DX wall mounted Split/AC [2]; CO2 fire extinguishers [2]; Powder fire extinguishers [2]; 1 - way duct - not exceeding 1.5m deep [1]; 2 - way duct - not exceeding 1.5m deep [1]; 8 - way duct - not exceeding 1.5m deep [1] | 9,922.7 |  | CO-SW-PS7-SBL-120 | SW | P06 | CON | SW |
| CO-SW-PS7-SBL-130 |  | Rectangular Wet Wells | 27d | 2027-04-04 | 2027-05-04 | CO-SW-PS7-SBL-100 |  |  |  | -139d | 2d | Skilled Labor/Surveyor [22 h]; Foreman [22 h]; Cons. Carpenter [432 h]; Block Mason [216 h]; Wet well structure internal size (5.5*4.0m) at 11.0m depth [1] | 147,819.42 |  | CO-SW-PS7-SBL-130 | SW | P06 | CON | SW |
| CO-SW-PS7-SBL-140 |  | Round Wet Well Structure for basket screen | 27d | 2027-04-04 | 2027-05-04 | CO-SW-PS7-SBL-100 |  |  |  | -139d | 2d | Skilled Labor/Surveyor [108 h]; Foreman [108 h]; Cons. Carpenter [2160 h]; Block Mason [1080 h]; for the pump station [1] | 67,770.5 |  | CO-SW-PS7-SBL-140 | SW | P06 | CON | SW |
| CO-SW-PS7-SBL-150 |  | Motorized basket screen | 27d | 2027-04-04 | 2027-05-04 | CO-SW-PS7-SBL-100 |  |  |  | -139d | 2d | Labor/Helper [1080 h]; Electrician [1080 h]; basket screen [1] | 153,488.29 |  | CO-SW-PS7-SBL-150 | SW | P06 | CON | SW |
|  | 7 | **Site Work and Service Road** |  | 2027-05-01 | 2027-05-30 |  |  |  |  |  |  |  |  |  |  |  |  |  |  |
| CO-SW-PS7-SWS-100 |  | Outside Strom Drainage System | 6d | 2027-05-01 | 2027-05-06 | CO-SW-PS7-SBL-120 |  |  |  | -141d | 0d | Skilled Labor/Surveyor [48 h]; Foreman [48 h]; Plumber [48 h]; Excavator [48 h]; surface drainage channel [150] | 40,230 |  | CO-SW-PS7-SWS-100 | SW | P06 | CON | SW |
| CO-SW-PS7-SWS-110 |  | Bituminous Works | 15d | 2027-05-08 | 2027-05-30 | CO-SW-PS7-MCC-150, CO-SW-PS7-SWS-100, CO-SW-PS7-SBL-120, CO-SW-PS7-SBL-110, CO-SW-PS7-SBL-100, CO-SW-PS7-GN-130, CO-SW-PS7-GN-120, CO-SW-PS7-MB-150, CO-SW-PS7-SBL-130, CO-SW-PS7-SBL-140, CO-SW-PS7-SBL-150, PRO-SPS-CV-DL-10 FF+3d, PRO-SPS-CV-1DL-10 |  |  |  | -141d | 0d | Labor/Helper [600 h]; Insulation Worker [600 h]; Site Preparation (including survey, removal and disposal of unsuitable materials, placement and compaction fill material to bring the pump station site to proposed grades) [1]; Supply and install 300mm thick Subgrade as per drawings and specifications. [300]; Supply and install 200mm thick Aggregate base course [200]; Supply and install Bituminous base course (Grading I - Class A), including Prime Coat (MC1) as per drawings and specifications. [70]; Supply and install Bituminous concrete wearing course, (Grading I - Class A), including tack coat (RC2) as per drawings and specifications. [50]; Supply and install Precast Concrete Kerb [357]; Supply and install 60mm thick - Interlocking block pavers for sidewalk/footpath as per drawings and specifications. [450]; Supply and install Traffic signs, ground mounted, Sheet Alumenium, (breakaway)Single post, with all accessories as per drawings and specifications. [5]; Supply and install thermoplastic pavement road markings as per drawings and specifications. [1] | 167,499.9 |  | CO-SW-PS7-SWS-110 | SW | P06 | CON | SW |
|  | 1 | **Storm Drainage Ponds** |  | 2025-05-19 | 2027-05-02 |  |  |  |  |  |  |  |  |  |  |  |  |  |  |
|  | 1 | **Storm Drainage Pond ( PO-J1)** |  | 2025-05-19 | 2027-04-07 |  |  |  |  |  |  |  |  |  |  |  |  |  |  |
| CO-SD-PO-K1-100-P1 |  | Excavation & Filling Works - PART 1 | 21d | 2025-05-19 A | 2025-06-03 A | CO-R10.S04-ES-SD-130, PRO-DPO-CV-1DL-10, ENG-SH-DPO-A-110, ENG-MS-DPO-A-110, ENG-MT-DPO-CV-A-110, CO-R11.S06-SD-130, CO-R10.S04-WE-SD-130 | 100% | 2026-01-21 | 2026-02-14 |  |  | Skilled Labor/Surveyor [101 h]; Foreman [101 h]; Excavator [1008 h]; Excavation in all type of soil for any depth including levelling, compaction and disposal of surplus material [12488.8] | 418,373.12 | 418,373.12 | CO-SD-PO-K1-100-P1 | SD | PO K1 | CON | SD |
| CO-SD-PO-K1-100-P2 |  | Excavation & Filling Works - PART 2 | 21d | 2025-06-04 A | 2025-06-28 A | CO-SD-PO-K1-100-P1 | 100% | 2026-02-15 | 2026-03-10 |  |  | Skilled Labor/Surveyor [101 h]; Foreman [101 h]; Excavator [1008 h]; Excavation in all type of soil for any depth including levelling, compaction and disposal of surplus material [12488.8] | 418,373.12 | 418,373.12 | CO-SD-PO-K1-100-P2 | SD | PO K1 | CON | SD |
| CO-SD-PO-K1-100-P3 |  | Excavation & Filling Works - PART 3 | 21d | 2025-07-01 A | 2025-07-15 A | CO-SD-PO-K1-100-P2 | 100% | 2026-03-11 | 2026-04-07 |  |  | Skilled Labor/Surveyor [101 h]; Foreman [101 h]; Excavator [1008 h]; Excavation in all type of soil for any depth including levelling, compaction and disposal of surplus material [12488.8] | 418,373.12 | 418,373.12 | CO-SD-PO-K1-100-P3 | SD | PO K1 | CON | SD |
| CO-SD-PO-K1-100-P4 |  | Excavation & Filling Works - PART 4 | 21d | 2025-07-16 A | 2025-07-21 A | CO-SD-PO-K1-100-P3 | 100% | 2026-04-08 | 2026-05-02 |  |  | Skilled Labor/Surveyor [101 h]; Foreman [101 h]; Excavator [1008 h]; Excavation in all type of soil for any depth including levelling, compaction and disposal of surplus material [12488.8] | 418,373.12 | 418,373.12 | CO-SD-PO-K1-100-P4 | SD | PO K1 | CON | SD |
| CO-SD-PO-K1-110-P1 |  | Finished Grouted Riprap - PART 1 | 21d | 2026-10-27 | 2026-11-19 | CO-SD-PO-K1-100-P1 |  |  |  | -159d | 0d | Skilled Labor/Surveyor [101 h]; Foreman [101 h]; Excavator [1008 h]; Reinforced Concrete lining including blinding concrete, construction, isolation layers and expansion joints as shown in drawings. [8] | 5,740.56 |  | CO-SD-PO-K1-110-P1 | SD | PO K1 | CON | SD |
| CO-SD-PO-K1-110-P2 |  | Finished Grouted Riprap - PART 2 | 21d | 2026-11-21 | 2026-12-14 | CO-SD-PO-K1-110-P1, CO-SD-PO-K1-100-P2 |  |  |  | -159d | 0d | Skilled Labor/Surveyor [101 h]; Foreman [101 h]; Excavator [1008 h]; Reinforced Concrete lining including blinding concrete, construction, isolation layers and expansion joints as shown in drawings. [8] | 5,740.56 |  | CO-SD-PO-K1-110-P2 | SD | PO K1 | CON | SD |
| CO-SD-PO-K1-110-P3 |  | Finished Grouted Riprap - PART 3 | 21d | 2026-12-15 | 2027-01-07 | CO-SD-PO-K1-110-P2, CO-SD-PO-K1-100-P3 |  |  |  | -159d | 0d | Skilled Labor/Surveyor [101 h]; Foreman [101 h]; Excavator [1008 h]; Reinforced Concrete lining including blinding concrete, construction, isolation layers and expansion joints as shown in drawings. [8] | 5,740.56 |  | CO-SD-PO-K1-110-P3 | SD | PO K1 | CON | SD |
| CO-SD-PO-K1-110-P4 |  | Finished Grouted Riprap - PART 4 | 21d | 2027-01-09 | 2027-02-01 | CO-SD-PO-K1-110-P3, CO-SD-PO-K1-100-P4 |  |  |  | -159d | 0d | Reinforced Concrete lining including blinding concrete, construction, isolation layers and expansion joints as shown in drawings. [8] | 5,740.56 |  | CO-SD-PO-K1-110-P4 | SD | PO K1 | CON | SD |
| CO-SD-PO-K1-120 |  | Outfall structure | 26d | 2027-02-02 | 2027-03-04 | CO-SD-PO-K1-110-P4 |  |  |  | -159d | 0d | Skilled Labor/Surveyor [84 h]; Foreman [84 h]; Cons. Carpenter [1664 h]; Block Mason [832 h]; Reinforced Concrete lining including blinding concrete, construction, isolation layers and expansion joints as shown in drawings. [4] | 2,870.28 |  | CO-SD-PO-K1-120 | SD | PO K1 | CON | SD |
| CO-SD-PO-K1-130 |  | Acess Entrace Ramp | 26d | 2027-03-06 | 2027-04-07 | CO-SD-PO-K1-120, PRO-DPO-CV-DL-10 FF+3d |  |  |  | -159d | 0d | Skilled Labor/Surveyor [84 h]; Foreman [84 h]; Excavator [832 h]; Reinforced Concrete lining including blinding concrete, construction, isolation layers and expansion joints as shown in drawings. [4] | 2,870.28 |  | CO-SD-PO-K1-130 | SD | PO K1 | CON | SD |
|  | 2 | **Storm Drainage Pond ( PO-J2)** |  | 2026-10-27 | 2027-05-02 |  |  |  |  |  |  |  |  |  |  |  |  |  |  |
| CO-SD-PO-K2-100-P1 |  | Excavation & Filling Works - PART 1 | 21d | 2026-10-27 | 2026-11-19 | CO-SD-PO-K1-100-P1, CO-R11.S06-SD-130, PRO-DPO-CV-1DL-20, ENG-SH-DPO-A-110, ENG-MS-DPO-A-110, ENG-MT-DPO-CV-A-110 |  |  |  | -152d | 0d | Skilled Labor/Surveyor [101 h]; Foreman [101 h]; Excavator [1008 h]; Excavation in all type of soil to increase the depth of the existing pond for any depth including levelling, compaction and disposal of surplus material [5106.25] | 68,423.75 |  | CO-SD-PO-K2-100-P1 | SD | PO K2 | CON | SD |
| CO-SD-PO-K2-100-P2 |  | Excavation & Filling Works - PART 2 | 21d | 2026-11-21 | 2026-12-14 | CO-SD-PO-K2-100-P1 |  |  |  | -152d | 0d | Skilled Labor/Surveyor [101 h]; Foreman [101 h]; Excavator [1008 h]; Excavation in all type of soil to increase the depth of the existing pond for any depth including levelling, compaction and disposal of surplus material [5106.25] | 68,423.75 |  | CO-SD-PO-K2-100-P2 | SD | PO K2 | CON | SD |
| CO-SD-PO-K2-110-P1 |  | Finished Grouted Riprap - PART 1 | 21d | 2026-11-21 | 2026-12-14 | CO-SD-PO-K2-100-P1 |  |  |  | -152d | 0d | Skilled Labor/Surveyor [87 h]; Foreman [87 h]; Excavator [864 h]; Reinforced Concrete lining including blinding concrete, construction, isolation layers and expansion joints as shown in drawings. [3.6] | 2,583.25 |  | CO-SD-PO-K2-110-P1 | SD | PO K2 | CON | SD |
| CO-SD-PO-K2-100-P3 |  | Excavation & Filling Works - PART 3 | 21d | 2026-12-15 | 2027-01-07 | CO-SD-PO-K2-100-P2, PRO-DPO-CV-DL-20 |  |  |  | -152d | 0d | Skilled Labor/Surveyor [101 h]; Foreman [101 h]; Excavator [1008 h]; Excavation in all type of soil to increase the depth of the existing pond for any depth including levelling, compaction and disposal of surplus material [5106.25] | 68,423.75 |  | CO-SD-PO-K2-100-P3 | SD | PO K2 | CON | SD |
| CO-SD-PO-K2-110-P2 |  | Finished Grouted Riprap - PART 2 | 21d | 2026-12-15 | 2027-01-07 | CO-SD-PO-K2-100-P2, CO-SD-PO-K2-110-P1 |  |  |  | -152d | 0d | Skilled Labor/Surveyor [87 h]; Foreman [87 h]; Excavator [864 h]; Reinforced Concrete lining including blinding concrete, construction, isolation layers and expansion joints as shown in drawings. [3.6] | 2,583.25 |  | CO-SD-PO-K2-110-P2 | SD | PO K2 | CON | SD |
| CO-SD-PO-K2-100-P4 |  | Excavation & Filling Works - PART 4 | 21d | 2027-01-09 | 2027-02-01 | CO-SD-PO-K2-100-P3 |  |  |  | -152d | 0d | Skilled Labor/Surveyor [101 h]; Foreman [101 h]; Excavator [1008 h]; Excavation in all type of soil to increase the depth of the existing pond for any depth including levelling, compaction and disposal of surplus material [5106.25] | 68,423.75 |  | CO-SD-PO-K2-100-P4 | SD | PO K2 | CON | SD |
| CO-SD-PO-K2-110-P3 |  | Finished Grouted Riprap - PART 3 | 21d | 2027-01-09 | 2027-02-01 | CO-SD-PO-K2-100-P3, CO-SD-PO-K2-110-P2 |  |  |  | -152d | 0d | Skilled Labor/Surveyor [87 h]; Foreman [87 h]; Excavator [864 h]; Reinforced Concrete lining including blinding concrete, construction, isolation layers and expansion joints as shown in drawings. [3.6] | 2,583.25 |  | CO-SD-PO-K2-110-P3 | SD | PO K2 | CON | SD |
| CO-SD-PO-K2-110-P4 |  | Finished Grouted Riprap - PART 4 | 21d | 2027-02-02 | 2027-02-27 | CO-SD-PO-K2-100-P4, CO-SD-PO-K2-110-P3 |  |  |  | -152d | 0d | Skilled Labor/Surveyor [87 h]; Foreman [87 h]; Excavator [864 h]; Reinforced Concrete lining including blinding concrete, construction, isolation layers and expansion joints as shown in drawings. [3.6] | 2,583.25 |  | CO-SD-PO-K2-110-P4 | SD | PO K2 | CON | SD |
| CO-SD-PO-K2-120 |  | Outfall structure | 26d | 2027-02-28 | 2027-04-01 | CO-SD-PO-K2-110-P4 |  |  |  | -152d | 0d | Skilled Labor/Surveyor [21 h]; Foreman [21 h]; Cons. Carpenter [416 h]; Block Mason [208 h]; Reinforced Concrete lining including blinding concrete, construction, isolation layers and expansion joints as shown in drawings. [1.8] | 1,291.63 |  | CO-SD-PO-K2-120 | SD | PO K2 | CON | SD |
| CO-SD-PO-K2-130 |  | Acess Entrace Ramp | 26d | 2027-04-03 | 2027-05-02 | CO-SD-PO-K2-120, PRO-DPO-CV-DL-20 FF+3d |  |  |  | -152d | 0d | Skilled Labor/Surveyor [84 h]; Foreman [84 h]; Excavator [832 h]; Reinforced Concrete lining including blinding concrete, construction, isolation layers and expansion joints as shown in drawings. [1.8] | 1,291.63 |  | CO-SD-PO-K2-130 | SD | PO K2 | CON | SD |

| ID | WBS | Activity | Duration | Start | Finish | Predecessors | Complete | Remaining | Planned start | Planned finish | Total float | Free float | Resources | Cost | Actual cost | Activity ID N | 02- Network-WBS | 03- Activity | 04-UOM | 05-Discipline | 01- Network | 08 Stage | Discipline |
| --- | --- | --- | --- | --- | --- | --- | --- | --- | --- | --- | --- | --- | --- | --- | --- | --- | --- | --- | --- | --- | --- | --- | --- |
|  | TC | **Testing and Comissioning** |  | 2026-06-01 | 2027-08-24 |  |  |  |  |  |  |  |  |  |  |  |  |  |  |  |  |  |  |
|  | INF | **Infrastructure Networks** |  | 2026-06-01 | 2027-08-24 |  |  |  |  |  |  |  |  |  |  |  |  |  |  |  |  |  |  |
|  | PW1 | **Irrigation Network** |  | 2026-06-05 | 2027-05-31 |  |  |  |  |  |  |  |  |  |  |  |  |  |  |  |  |  |  |
| T/C-IR |  | Testing and Commissioning of Irrigation Network | 12d | 2026-06-05 A | 2027-05-31 | TIE-IR-R09 FF, TIE-IR-R10 FF, TIE-IR-R11 FF, TIE-IR-R14 FF, TIE-IR-R15 FF, TIE-IR-R16 FF, TIE-IR-R17 FF, TIE-IR-R18 FF | 50% | 18d | 2026-11-12 | 2026-11-25 | -116d | 74.5d | 125 mm pipe; depth 0.0m - 1.5m [10460.4]; 280 mm pipe; depth 0.0m - 1.5m [475]; 280 mm pipe; depth 1.5m - 3.0m [50]; 355 mm pipe; depth 1.5m - 3.0m [1000]; 400 mm pipe; depth 1.5m - 3.0m [1000]; 500. mm pipe; depth 1.5m - 3.0m [2800]; Gate valves dia (90)mm on pipes with dia (125) mm. [82]; Gate valves dia (200)mm on pipes with dia (280) mm. [8]; Butterfly valves with dia (355)mm on pipes with dia (355)mm. [2]; Butterfly valves with dia (400)mm on pipes with dia (400)mm. [2]; Butterfly valves with dia (500)mm on pipes with dia (500)mm. [6]; Wash out valve with dia (100)mm on pipes with dia (125) mm [3]; Wash out valve with dia (100)mm on pipes with dia (355) mm [1]; Wash out valve with dia (150)mm on pipes with dia (400) mm [2]; Wash out valve with dia (150)mm on pipes with dia (500) mm [5]; Air valves with dia (50mm) mm on pipes with dia(125)mm. [4]; Air valves with dia (65mm) mm on pipes with dia(280)mm. [1]; Air valves with dia (65mm) mm on pipes with dia(400)mm. [1]; Air valves with dia (65mm) mm on pipes with dia(500)mm. [6] | 624,273.76 | 312,136.88 | T/C-IR | TC | T&C | LM | TC | IR | TC | TC |
|  | PW | **Potable Water Network** |  | 2026-07-01 | 2027-07-11 |  |  |  |  |  |  |  |  |  |  |  |  |  |  |  |  |  |  |
| T/C-PW |  | Testing and Commissioning of Potable Water Network | 12d | 2026-07-01 A | 2027-07-11 | TIE-PW-R09 FF, TIE-PW-R10 FF, TIE-PW-R11 FF, TIE-PW-R14 FF, TIE-PW-R15 FF, TIE-PW-R16 FF, TIE-PW-R17 FF, TIE-PW-R18 FF | 60% | 17d | 2026-12-03 | 2026-12-16 | -151d | 39.5d | Pipe with diameter 160 mm; in depth 1.5m - 3.0m [50]; Pipe with diameter 200mm; in depth 0.0m - 1.5m [8552]; Pipe with diameter 200mm; in depth 1.5m - 3.0m [100]; Pipe with diameter 355mm; in depth 0.0m - 1.5m [1400]; Pipe with diameter 355mm; in depth 1.5m - 3.0m [100]; Pipe with diameter 560mm; in depth 1.5m - 3.0m [1200]; Pipe with diameter 630mm; in depth 1.5m - 3.0m [2090]; Gate valves dia(200)mm on pipes with dia (200) mm. [75]; Butterfly valves with dia (355)mm on pipes with dia (355)mm. [18]; Butterfly valves with dia (560)mm on pipes with dia (560)mm. [2]; Butterfly valves with dia (630)mm on pipes with dia (630)mm. [5]; Wash out valve with dia (100)mm on pipes with dia (200) mm [2]; Wash out valve with dia (150)mm on pipes with dia (560) mm [1]; Wash out valve with dia (150)mm on pipes with dia (630) mm [3]; Air valves with dia (50mm) mm on pipes with dia(200)mm. [3]; Air valves with dia (65mm) mm on pipes with dia(355)mm. [1]; Air valves with dia (65mm) mm on pipes with dia(560)mm. [2]; Air valves with dia (65mm) mm on pipes with dia(630)mm. [4]; 3-outlet fire hydrant (2 x 2.5 inch and 1 x 4 inch) in the form of a separate dry vacuum cylinder [55]; In-situ, reinforced single concrete valve chambers on the pipeline, as defined and shown on the drawingss, and all necessary works and equipment (valve measured elsewhere), and supplies construction, cut and installation of pipe cutting, backfilling, in [18]; Wash out chamber; on 200 mm dia pipeline Depth 1.5 - 3m [2]; Wash out chamber; on 560 mm dia pipeline Depth 1.5 - 3m [1]; Wash out chamber; on 630 mm dia pipeline Depth 1.5 - 3m [3]; Air valve chamber; on 200 mm dia pipeline Depth 1.5 - 3 m [3]; Air valve chamber on 355 mm dia pipeline Depth 1.5 - 3 m [1]; Air valve chamber on 560 mm dia pipeline Depth 1.5 - 3 m [2]; Air valve chamber on 630 mm dia pipeline Depth 1.5 - 3 m [4] | 1,022,094.2 | 613,256.52 | T/C-PW | TC | T&C | LM | TC | PW | TC | TC |
|  | SW | **Sewage Network** |  | 2026-06-01 | 2027-07-12 |  |  |  |  |  |  |  |  |  |  |  |  |  |  |  |  |  |  |
| T/C-SW |  | Testing and Commissioning of Sewage Network | 12d | 2026-06-01 A | 2027-07-12 | TIE-SW-R09 FF, TIE-SW-R10 FF, TIE-SW-R11 FF, TIE-SW-R14 FF, TIE-SW-R15 FF, TIE-SW-R16 FF, TIE-SW-R17 FF, T/C-SPS FF, TIE-SW-R18 FF | 85% | 2d | 2026-12-19 | 2026-12-31 | -152d | 38.5d | Nominal bore : 160mm; Depth : 0.0m - 1.5m [250]; Nominal bore : 160mm; Depth : 1.5m - 2.5m [650]; Nominal bore : 200mm; Depth : 0.0m - 1.5m [400]; Nominal bore : 200mm; Depth : 1.5m - 2.5m [750]; Nominal bore : 200mm; Depth : 2.5m - 3.5m [1200]; Nominal bore : 200mm; Depth : 3.5m - 4.5m [1350]; Nominal bore : 200mm; Depth : 4.5m -5.5m [700]; Nominal bore : 200mm; Depth : 5.5m - 6.5m [900]; Nominal bore : 250mm; Depth : 4.5m -5.5m [220]; Nominal bore : 250mm; Depth : 5.5m - 6.5m [180]; Nominal bore : 315mm; Depth : 4.5m -5.5m [180]; Nominal bore : 315mm; Depth : 6.5m - 7.5m [200]; Depth : 1.5 - 2.5m [200]; Depth : 2.5 - 3.5m [150]; Depth : 3.5 - 4.5m [150]; Depth : 4.5 - 5.5m [100]; Depth : 5.5 - 6.5m [600]; Depth : 6.5 -7.5m [700]; Depth : 6.5 -7.5m [500]; Depth :more than 7.5m [800]; Depth : 6.5 -7.5m [250]; Depth :more than 7.5m [600]; HDPE force main DN 800mm diameter, in trenches depth: 0- 1.5m [100]; HDPE force main DN 800mm diameter, in trenches depth: 1.51- 2.5m [2237]; Washout valve 200mm, on 800mm dia. pipe [2]; Air release valve 110 mm dia, on 800mm dia. pipe [3]; Washout valve chamber [2]; Air release valve chamber [3]; Depth: not exceeding 1.5m [13]; Depth: 1.5 - 2.5m [45]; Depth: 2.5 - 3.5m [10]; Depth: 3.5 - 4.5m [4]; Depth: 4.5 - 5.5m [5]; Depth: 5.5 - 6.5m [10]; Depth:6.5 - 7.5m [15]; Depth: more than 7.5m [1]; Depth: 2.5 - 3.5m [5]; Depth: 3.5 - 4.5m [3]; Depth: 4.5 - 5.5m [2]; Depth: 5.5 - 6.5m [2]; Depth:6.5 - 7.5m [7]; Constant speed drive, sewage pumps, centrifugal submersible type; 2 duty / 1 standby capable of delivering a flow rate of flow 424 l/s against a total head of 22m, rate includes provision of MCC [1]; Odour control system [1]; Gate valves for the pump station [3]; Non return valves for the pump station [3]; Penstok for the pump station [1]; Wet well structure internal size (5.5*4.0m) at 11.0m depth [1]; Valve chamber [1]; for the pump station [1]; basket screen [1]; Standby Diesel Generator Set 400/230KVA, 3P, 60Hz in Sound Attenuated Enclosure KVA rating by contractor as per total load onsite after pumps selection [1]; Supply, install, test and commission of manually operated fuel pump, The pump should be supplied with all accessories as specified. [1]; Supply, install, test and commission of Fuel pump with capacity of not less than 1 hour to fill the daily tank of generator at required head. [1]; supply, install, test & commission Automatic Transfer Switch ATS panel including all accessories & works required. [1]; Supply, install, test and commission under ground fuel tank for 3 days of continuous operation of the standby generator at full load. The tank should be supplied with all accessories such as black steel pipes, float switches with two contactors ï¿½etc. as [1]; Plain concrete foundation [1]; Reinfirced concrete foundation [8]; Reinforced concrete columns [5]; Reinfirced concrete SOG [7]; Reinfirced concrete slab [9]; CMU walls with thickness 200mm [150]; Waterproofing for foundation [60]; Roof Insulation [45]; Acrylic paint on elevations including plastering [150]; Acrylic paint on internal wallsand ceiling including plastering [190]; Epoxy paint on floors [40]; Supply and install 2000*3000 mm double leaf manufacturer label shall pass the test requirements complete with accessories as per door schedule and material as approved by the Client. [1]; Plinth for odour control system [20]; 4Cx 185mm2 Cu/XLPE//PVC from nearest power supply (SEC) and generator to the ATS and from ATS to MCC-SPS [600]; 4Cx 95mm2 Cu/XLPE//PVC from nearest power supply (SEC) and generator to the ATS and from ATS to MCC-SPS [400]; 4Cx 10mm2 Cu/XLPE/SWA/PVC from MCC-SPS to ELP [50]; 4Cx 150mm2 + 1Cx25mm2 SUBMERGED RUBBER INSULATED FLEXIBLE CABLE from MCC to PUMP1& PUMP2. [210]; 4Cx 10mm2 + 1Cx10mm2 Cu/XLPE/PVC FROM MCC-SPS to DB-SPS [50]; 4Cx 10mm2 + 1Cx10mm2 Cu/XLPE/PVC FROM MCC-SPS to Penstok [100]; 4Cx 10mm2 + 1Cx10mm2 Cu/XLPE/PVC FROM MCC-SPS to Odor Control Unit [100]; 4Cx 6mm2 + 1Cx6mm2 Cu/XLPE/PVC FROM MCC-SPS to the mechanical bar screen [80]; 3Cx 6mm2 Cu/XLPE/PVC FROM MCC-SPS to the two fuel pumps. [100]; 3Cx 4mm2 Cu/XLPE/PVC to the AC. [80]; MCC [1]; Pump lifting arrangement with davit sockets, gantry and hoist, to be determined by the contractor to suit actual weight of pumps and as per drawings and specification. [2]; Surge protection system study [1]; Surge protection system [1]; Local Control Panel, IP 65 [4]; Isolator/disconnect switches IP65 [16]; DB-SPS Panel [4]; ELP Panel: phtocell , timer,40 Ampere, 3P, IP66,60Hz incomer MCCB & 5ways outgoing MCCB [4]; Electrical Hand Hole 600mm x 600mm x 800mm concrete hand hole with hot dip galvanized heavy duty steel cover [10]; Electrical Hand Hole 400mm x 400mm x 600mm concrete hand hole with hot dip galvanized heavy duty steel cover [10]; Surfaced Mounted Light [8]; 13A DOUBLE SWITCH SOCKET OUTLET (WEATHER PROOF) [8]; 20A SWITCH SOCKET OUTLET (FOR SPLIT UNIT), (WEATHER PROOF) [8]; Supply, install and test the following grounding and lightning system including ground wires, ground rods, inspection pits, terminations, bonding/clamping, civil works and all materials and accessories required to complete the work according to specificat [2]; Supply and install telephone and fire alarm system including smoke detector, cabinet, control panel, cables, conduits, switches, and other accessories to complete as per drawings and specifications. [1]; Supply, installation, testing and commissioning of all control, instrumentation( as shown on the P & ID drawings cable schedule) including all installation accessories such as termination kits, lugs, glands, cable containments, junction boxes , conduits, [2]; Supply, installation, testing and commissioning of all field instruments such as hydrostatic level meter, level switches, flow switch, and all necessary instruments including all installation accessories, etc. all as per specifications and design drawings [2]; DX wall mounted Split/AC [2]; CO2 fire extinguishers [2]; Powder fire extinguishers [2]; Double leaf swing or sliding main entrance gate [1]; 1.8m high Chainlink Fence (mesh opening size 60mm x 60mm) [254]; Single leaf personal access gate [1]; Flood lights shall be high pole with 250 watt HPS luminaire [4]; 1 - way duct - not exceeding 1.5m deep [1]; 2 - way duct - not exceeding 1.5m deep [1]; 8 - way duct - not exceeding 1.5m deep [1]; Earth pits [1]; Cable draw pit, 600x600mm [1]; Supply, installation, testing and commissioning of PLC system [2] | 2,308,897.1 | 1,962,562.54 | T/C-SW | TC | T&C | LM | TC | SW | TC | TC |
|  | SD | **Storm Drainage Network** |  | 2026-06-10 | 2027-07-19 |  |  |  |  |  |  |  |  |  |  |  |  |  |  |  |  |  |  |
| T/C-SD |  | Testing and Commissioning of Storm Drainage Network | 10d | 2026-06-10 A | 2027-07-19 | TIE-SD-R09 FF, TIE-SD-R10 FF, TIE-SD-R11 FF, TIE-SD-R14 FF, TIE-SD-R15 FF, TIE-SD-R16 FF, TIE-SD-R17 FF, T/C-DPO FF, TIE-SD-R18 FF | 88% | 17d | 2026-12-21 | 2026-12-31 | -158d | 32.5d | Pipe with diameter 400mm ; depth: 0.0m - 1.5m [1593]; Pipe with diameter 400mm ; depth: 1.51m - 2.5m [2033]; Pipe with diameter 400mm ; depth: 2.51m - 3.5m [50]; Pipe with diameter 500mm ; depth: 0.0m - 1.5m [50]; Pipe with diameter 500mm ; depth: 1.51m - 2.5m [2990]; Pipe with diameter 600mm ; depth: 0.0m - 1.5m [50]; Pipe with diameter 600mm ; depth: 1.51m - 2.5m [1429]; Pipe with diameter 600mm ; depth: 2.51m - 3.5m [173]; Pipe with diameter 700mm ; depth: 0.0m - 1.5m [50]; Pipe with diameter 700mm ; depth: 1.51m - 2.5m [2623]; Pipe with diameter 700mm ; depth: 2.51m - 3.5m [50]; Pipe with diameter 800mm ; depth: 0.0m - 1.5m [50]; Pipe with diameter 800mm ; depth: 1.51m - 2.5m [1310]; Pipe with diameter 800mm ; depth: 2.51m - 3.5m [70]; Pipe with diameter 900mm ; depth: 0.0m - 1.5m [50]; Pipe with diameter 900mm ; depth: 1.51m - 2.5m [854]; Pipe with diameter 900mm ; depth: 2.51 - 3.5m [57]; Pipe with diameter 1000mm ; depth: 0.0m - 1.5m [50]; Pipe with diameter 1000mm ; depth: 1.51m - 2.5m [427]; Pipe with diameter 1000mm ; depth: 2.51 - 3.5m [507]; Pipe with diameter 1100mm ; depth: 0.0m - 1.5m [50]; Pipe with diameter 1100mm ; depth: 1.51m - 2.5m [667]; Pipe with diameter 1100mm ; depth: 2.51 - 3.5m [174]; Pipe with diameter 1200mm ; depth: 1.51m - 2.5m [155]; Pipe with diameter 1200mm ; depth: 2.51 - 3.5m [483]; Pipe with diameter 300mm ; depth: 0 - 1.5m [8200]; Pipe with diameter 400mm ; depth: 0 - 1.5m [500]; MH ; depth: 0.0m - 1.5m [26]; MH ; depth: 1.51m - 2.5m [62]; MH ; depth: 2.51 - 3.5m [5]; MH ; depth: 0.0m - 1.5m [10]; MH ; depth: 1.51m - 2.5m [64]; MH ; depth: 1.51m - 2.5m with back drop less than 1.0 m [1]; MH ; depth: 2.51 - 3.5m [8]; MH ; depth: 2.51 - 3.5m with back drop less than 1.0 m [1]; MH ; depth: 1.51m - 2.5m [27]; MH ; depth: 2.51 - 3.5m [30]; MH ; depth: 2.51 - 3.5m [4]; MH ; depth: 3.51 - 4.5m [5]; Access opening with dimensions 1000*1000 mm [13]; Single Catch basin [290]; Double Catch basin [125]; Pipe encasement dia 300 mm [125]; Pipe encasement dia 400 mm [125]; Pipe encasement dia 500 mm [125]; Pipe encasement dia 600 mm [125]; Pipe encasement dia 700 mm [125]; Pipe encasement dia 800 mm [125]; Pipe encasement dia 900 mm [125]; Pipe encasement dia 1000 mm [125]; Pipe encasement dia 1100 mm [125]; Pipe encasement dia 1200 mm [125]; Box Conduit with dimensions 1200*1200 mm ; depth: 0.0m - 1.5m [125]; Box Conduit with dimensions 1200*1200 mm ; depth: 2.51m - 3.5m [125]; Box Conduit with dimensions 1500*1200 mm ; depth: 2.51m - 3.5m [125]; Box Conduit with dimensions 1500*1500 mm ; depth: 2.51m - 3.5m [125]; Box Conduit with dimensions 2000*1200 mm ; depth: 2.51m - 3.5m [125]; Concrete Outfall structure [125] | 2,866,651.2 | 2,522,653.06 | T/C-SD | TC | T&C | LM | TC | SD | TC | TC |
|  | SL | **Street Lighting Network** |  | 2026-09-05 | 2027-07-21 |  |  |  |  |  |  |  |  |  |  |  |  |  |  |  |  |  |  |
| T/C-SL |  | Testing and Commissioning of Street Lighting Network | 18d | 2026-09-05 A | 2027-07-21 | TIE-R09-SL FF, TIE-R10-SL FF, TIE-R11-SL FF, TIE-R14-SL FF, TIE-R15-SL FF, TIE-R16-SL FF, TIE-R17-SL FF, TIE-R18-SL10 FF | 32% | 7d | 2026-11-07 | 2026-11-26 | -160d | 30.5d | Package Substation 33000/400V, 500kVA with RMU [6]; Supply, installation , test and operation of cables, Copper, (4Cx25mmï¿½,Cu/XLPE/SWA/PVC +1x16mmï¿½ PVC/PVC) [21000]; Lighting poles with one arm, including the power distribution box, screws, cables, 12 meters in height. [355]; Lighting poles complete with two arms, including the power distribution box, screws, cables, 12 meters in height. [4]; Street Lighting( LED) Luminaire,(Type C) complete with control gear and lamp, ?.17000 Lumen [355]; Street Lighting( LED) Luminaire,(Type B) complete with control gear and lamp, ?.40600 Lumen [8]; Reinforced concrete foundation, for 12m high lighting columns With Drawpits [359]; Reinforced concrete base With fence for Distribution substation in accordance with SEC Specifications [6]; Earthing installation, lighting plants. [6]; Earthing installation, for Street lighting circuits, including earth rod in plastic chamber [50]; Earthing installation Lighting Panales [6]; Road crossing ducts, 4 way (4 x 100mm PVC) [780]; Drawpit with medium duty steel cover, size 600x600x1000mm, Type 18 [6]; Drawpit with medium duty steel cover, size 900x900x1200mm, Type 4 [64]; Street Lighting Feeder pillars , Includes foundation and draw pits [6] | 462,378.2 | 147,961.02 | T/C-SL | TC | T&C | LM | TC | SL | TC | TC |
|  | TE | **Telecom Network** |  | 2026-09-05 | 2027-06-12 |  |  |  |  |  |  |  |  |  |  |  |  |  |  |  |  |  |  |
| T/C-TE |  | Testing and Commissioning of Telecom Network | 10d | 2026-09-05 A | 2027-06-12 | TIE-R09-TE FF, TIE-R10-TE FF, TIE-R11-TE FF, TIE-R14-TE FF, TIE-R15-TE FF, TIE-R16-TE FF, TIE-R17-TE FF, T/C-DPO FF, TIE-R18-TE10 FF | 32% | 4d | 2026-11-10 | 2026-11-21 | -126d | 0d | 6-way ducts, 50mm dia. HDPE [6500]; Road crossing ducts (6-way) [550]; Manhole Type 1 (2000x1000x1000) [25]; Manhole Type 2 (2000x1000x1000) [52]; Manhole Type 3 (2000x1000x1000) [4] | 181,657.1 | 58,130.27 | T/C-TE | TC | T&C | LM | TC | TE | TC | TC |
|  | MV | **Medium Voltage Network** |  | 2026-09-05 | 2027-06-12 |  |  |  |  |  |  |  |  |  |  |  |  |  |  |  |  |  |  |
| T/C-MV |  | Testing and Commissioning of Medium Voltage Network | 10d | 2026-09-05 A | 2027-06-12 | TIE-R09-MV FF, TIE-R10-MV FF, TIE-R11-MV FF, TIE-R14-MV FF, TIE-R15-MV FF, TIE-R16-MV FF, TIE-R17-MV FF, T/C-TE SS, TIE-R18-MV10 FF | 70% | 4d | 2026-11-22 | 2026-12-02 | -126d | 62.5d | Excavation for Trench size 40cm wide and 80cm deep ( Maximum 1 cable 33kv) [2900]; Excavation for Trench size 60cm wide and 80cm deep ( for Max two cables 33 kv) [165]; Excavation for Trench size 90cm wide and 80cm deep ( Maximum 3 cable 33kv) [735]; Excavation for Trench size 120cm wide and 80cm deep ( Maximum 4cable 33kv) [250]; Excavation for Trench size 150cm wide and 80cm deep ( Maximum 4cable 33kv) [925]; Duct bank for (2) 33 kv cables [100]; Duct bank for (4) 33 kv cables [660]; Duct bank for (6) 33 kv cables [300]; 33kv 3Cx400 mmï¿½ Al XLPE / LLDPE /PVC Cable [19500]; 33kv 3Cx400 mmï¿½ Al XLPE /LLDPE/PVC [60]; 33kv 3Cx400 mmï¿½ Al XLPE/LLDPE Cable Termination [20]; Supply & installation of (33) kv MV Switch (RMU) for Normally-open Points (NOP) according to the Saudi Electric Company specification [3] | 478,905.05 | 335,233.54 | T/C-MV | TC | T&C | LM | TC | MV | TC | TC |
|  | RD | **Road Works** |  | 2026-08-16 | 2027-08-24 |  |  |  |  |  |  |  |  |  |  |  |  |  |  |  |  |  |  |
| T/C-RD |  | Testing and Commissioning of Road Works | 5d | 2026-08-16 A | 2027-08-24 | TIE-R10-RD FF, TIE-R11-RD FF, TIE-R14-RD FF, T/C-MV FF | 55% | 17d | 2026-12-29 | 2027-01-03 | -188.5d | 2d | Roadway Excavation for cuttings; on any type of material for all depths including trimming and Preparation of excavated surfaces and disposal. [232254]; Embankments to the ROW, with suitable material other than top soil or rock according to specifications [390972]; 300mm capping layer underneath subgrade , CBR?15% [49330]; 300mm thick Subgrade, including subgrade preparation, CBR?25% [49330]; Aggregate base course 200mm thick after compaction in two layers(Grading 1); CBR?80%; including watering, compaction and testing [32890]; Bituminous base course(Grading I - Class A), 70mm thick after compaction including Prime Coat (MC1) [11510]; Bituminous concrete wearing course, 50 mm thick, after compaction(Grading I - Class A), including tack coat (RC) [8222]; Interlocking block pavers for sidewalk/footpath 60mm thick on and including 30mm Sand Bedding, 200mm Aggregate subbase, all in accordance with authority standards and complete as per specifications [32500]; Extraover for Pedestrian ramps [82]; Precast Concrete Kerb, Type K1 [18200]; Precast Concrete Kerb, Type L1 [36111]; Retroreflective Thermoplastic White, Traffic lines [6200]; Retroreflective Thermoplastic Yellow, Traffic lines [950]; Retroreflective raised pavement markers(Type A) [1212]; Traffic signs, ground mounted, Sheet Alumenium, (breakaway) Single post, with all accessories [83]; Straight Arrow [190]; Right or Left Arrow [10]; Straight-Right Arrow [12]; Straight-Left Arrow [14] | 3,130,811.9 | 1,721,946.54 | T/C-RD | TC | T&C | LM | TC | RD | TC | TC |
|  | 1 | **Independent Works** |  | 2027-05-03 | 2027-07-12 |  |  |  |  |  |  |  |  |  |  |  |  |  |  |  |  |  |  |
| T/C-DPO |  | Testing and Commissioning of Storm Drainage Ponds | 30d | 2027-05-03 | 2027-06-12 | CO-SD-PO-K1-130, CO-SD-PO-K2-130 |  |  |  |  | -152d | 0d | Excavation in all type of soil for any depth including levelling, compaction and disposal of surplus material [49955]; Reinforced Concrete lining including blinding concrete, construction, isolation layers and expansion joints as shown in drawings. [40]; Excavation in all type of soil to increase the depth of the existing pond for any depth including levelling, compaction and disposal of surplus material [20425]; Reinforced Concrete lining including blinding concrete, construction, isolation layers and expansion joints as shown in drawings. [18] | 296,836.8 |  | T/C-DPO |  |  |  |  | TC | TC | TC |
| T/C-SPS |  | Testing and Commissioning of Sewage Pump Stations | 26d | 2027-06-13 | 2027-07-12 | CO-SW-PS7-SWS-110, T/C-DPO |  |  |  |  | -152d | 0d | Site Preparation (including survey, removal and disposal of unsuitable materials, placement and compaction fill material to bring the pump station site to proposed grades) [1]; Supply and install 300mm thick Subgrade as per drawings and specifications. [300]; Supply and install 200mm thick Aggregate base course [200]; Supply and install Bituminous base course (Grading I - Class A), including Prime Coat (MC1) as per drawings and specifications. [70]; Supply and install Bituminous concrete wearing course, (Grading I - Class A), including tack coat (RC2) as per drawings and specifications. [50]; Supply and install Precast Concrete Kerb [357]; Supply and install 60mm thick - Interlocking block pavers for sidewalk/footpath as per drawings and specifications. [450]; Supply and install Traffic signs, ground mounted, Sheet Alumenium, (breakaway)Single post, with all accessories as per drawings and specifications. [5]; Supply and install thermoplastic pavement road markings as per drawings and specifications. [1]; surface drainage channel [150] | 23,081.1 |  | T/C-SPS |  |  |  |  | SW | TC | TC |
|  | 1 | **Handing over and close out** |  | 2027-05-12 | 2027-09-07 |  |  |  |  |  |  |  |  |  |  |  |  |  |  |  |  |  |  |
|  | 2 | **As-Built** |  | 2027-05-12 | 2027-09-01 |  |  |  |  |  |  |  |  |  |  |  |  |  |  |  |  |  |  |
| HO-180 |  | Submission As-Built Drawing For Irrigation Network | 12d | 2027-05-12 | 2027-05-31 | MS-CF-IR |  |  |  |  | -130d | 0d |  |  |  | HO-180 |  |  |  |  |  |  | HO |
| HO-210 |  | Submission As-Built Drawing For Pump station | 12d | 2027-05-31 | 2027-06-13 | MS-MO-10 |  |  |  |  | -129d | 66.5d |  |  |  | HO-210 |  |  |  |  |  |  | HO |
| HO-130 |  | Submission As-Built Drawing For Pond | 12d | 2027-06-01 | 2027-06-14 | MS-MO-20, HO-180 |  |  |  |  | -130d | 65.5d |  |  |  | HO-130 |  |  |  |  |  |  | HO |
| HO-160 |  | Submission As-Built Drawing For Telecom Network | 12d | 2027-06-01 | 2027-06-14 | MS-CF-TE, HO-180 |  |  |  |  | -130d | 65.5d |  |  |  | HO-160 |  |  |  |  |  |  | HO |
| HO-170 |  | Submission As-Built Drawing For Medium Voltage Network | 12d | 2027-06-01 | 2027-06-14 | MS-CF-MV, HO-180 |  |  |  |  | -130d | 65.5d |  |  |  | HO-170 |  |  |  |  |  |  | HO |
| HO-190 |  | As-Built Drawing For Potable Water Network | 12d | 2027-06-28 | 2027-07-11 | MS-CF-PW |  |  |  |  | -153d | 42.5d |  |  |  | HO-190 |  |  |  |  |  |  | HO |
| HO-150 |  | Submission As-Built Drawing For Street Lighting Network | 12d | 2027-07-01 | 2027-07-14 | MS-CF-SL |  |  |  |  | -156d | 39.5d |  |  |  | HO-150 |  |  |  |  |  |  | HO |
| HO-200 |  | Submission As-Built Drawing For Storm Network | 12d | 2027-07-12 | 2027-07-25 | MS-CF-SD |  |  |  |  | -165d | 30.5d |  |  |  | HO-200 |  |  |  |  |  |  | HO |
| HO-100 |  | Submission As-Built Drawing For Sewage Network | 7d | 2027-08-24 | 2027-09-01 | MS-CF-IR, MS-CF-SL, MS-CF-TE, MS-CF-RD, MS-CF-MV, MS-CF-SD, MS-CF-SW, MS-CF-PW, MS-MO-10, MS-MO-20, MS-MO-30 |  |  |  |  | -192.5d | 0d |  |  |  | HO-100 | HO |  |  | HO | HO |  | HO |
| HO-140 |  | Submission As-Built Drawing For Roads Network | 5d | 2027-08-24 | 2027-08-30 | MS-CF-RD |  |  |  |  | -195.5d | 0d |  |  |  | HO-140 |  |  |  |  |  |  | HO |

| ID | WBS | Activity | Duration | Start | Finish | Predecessors | Total float | Free float | Activity ID N | 02- Network-WBS | 05-Discipline | 01- Network | Discipline |
| --- | --- | --- | --- | --- | --- | --- | --- | --- | --- | --- | --- | --- | --- |
|  | 1 | **De-Mobilization Works** |  | 2027-08-26 | 2027-09-01 |  |  |  |  |  |  |  |  |
| HO-120 |  | Remove material stock & Storage area | 5d | 2027-08-26 | 2027-09-01 | HO-110 FF, HO-110 SS | -190.5d | 5d | HO-120 | HO | HO | HO | HO |
| HO-220 |  | Removing Portable Caravan | 5d | 2027-08-26 | 2027-09-01 | HO-110 SS, HO-110 FF | -190.5d | 5d | HO-220 |  |  |  | HO |
| HO-230 |  | Remove Temporary Car Shades | 5d | 2027-08-26 | 2027-09-01 | HO-110 SS, HO-110 FF | -190.5d | 5d | HO-230 |  |  |  | HO |
|  | 3 | **Handing Over** |  | 2027-08-26 | 2027-09-07 |  |  |  |  |  |  |  |  |
| HO-110 |  | Final Testing Work | 5d | 2027-08-26 | 2027-09-01 | HO-100 FF, T/C-PW, T/C-SW, T/C-SD, T/C-SL, T/C-TE, T/C-MV, T/C-RD, T/C-SPS, T/C-DPO, T/C-IR, HO-210 FF, HO-200 FF, HO-190 FF, HO-150 FF, HO-180 FF, HO-170 FF, HO-130 FF, HO-160 FF, HO-140 FF | -190.5d | 0d | HO-110 | HO | HO | HO | HO |
| HO-250 |  | Review B.O.Q Qty. to ensure compliance with the actual status | 5d | 2027-08-30 | 2027-09-05 | HO-260 SS | -195.5d | 0d | HO-250 |  |  |  | HO |
| HO-260 |  | Review FIR Approval to ensure compliance with the actual status | 5d | 2027-08-30 | 2027-09-05 | MS-CF-TE, MS-CF-MV, MS-CF-IR, MS-CF-SL, MS-CF-SW, MS-CF-PW, MS-CF-SD, MS-CF-RD, HO-270 SS | -195.5d | 0d | HO-260 |  |  |  | HO |
| HO-270 |  | Review the sample drawing to ensure compliance with the actual status | 5d | 2027-08-30 | 2027-09-05 | HO-180, HO-150, HO-190, HO-130, HO-160, HO-170, HO-200, HO-210, HO-100 FF, HO-140 | -195.5d | 0d | HO-270 |  |  |  | HO |
| HO-240 |  | Final Walkthrough and Inspection | 2d | 2027-09-05 | 2027-09-07 | HO-250, HO-260, HO-270 | -195.5d | 0d | HO-240 |  |  |  | HO |
| HO-280 |  | Punch List Completion | 2d | 2027-09-05 | 2027-09-07 | HO-250, HO-260, HO-270, HO-110 FF, HO-240 FF | -195.5d | 0d | HO-280 |  |  |  | HO |

## Activity codes

| Code | Value | Meaning |
| --- | --- | --- |
| 01- Network | EW | Earthworks Network |
| 01- Network | HO | Handing Over |
| 01- Network | IR | Irrigation Network |
| 01- Network | MB | Mobilization |
| 01- Network | MS | Milestone |
| 01- Network | MV | Medium Voltage Network |
| 01- Network | PW | Potable Water Network |
| 01- Network | RD | Roads Network |
| 01- Network | SD | Storm Drainage Network |
| 01- Network | SL | Street Lighting Network |
| 01- Network | SW | Sewage Network |
| 01- Network | TC | Testing and Comissioning |
| 01- Network | TE | Telecom Network |
| 02- Network-WBS | AB | Asphaltic Base Course Layer and Related Works |
| 02- Network-WBS | CB | Catch Basins of Storm Drainage Network |
| 02- Network-WBS | CO | Connection of Potable Network |
| 02- Network-WBS | CW | Cabling Works of Street Lighting Network |
| 02- Network-WBS | DB | Distribution Panel of Street Lighting Network |
| 02- Network-WBS | DSN | Design of Street Lighting Network |
| 02- Network-WBS | ER | Earthing System Works of Street Lighting Network |
| 02- Network-WBS | EW | Earthworks |
| 02- Network-WBS | FH | Fire Hydrant of Potable Network |
| 02- Network-WBS | GN | General |
| 02- Network-WBS | HO | Handing Over |
| 02- Network-WBS | LP | Lighting Poles of Street Lightng Network |
| 02- Network-WBS | LS | Landscap of Roads Network |
| 02- Network-WBS | MB | Preliminaries and Mobilization Works |
| 02- Network-WBS | MH | Manholes of Telecom Network |
| 02- Network-WBS | ML | Main Line of Potable Network |
| 02- Network-WBS | MS | Milestones |
| 02- Network-WBS | PD | Primary Ducts Works of Telecom Network |
| 02- Network-WBS | PRC | Procurement of Potable Network |
| 02- Network-WBS | RM | Road Markings of Roads Network |
| 02- Network-WBS | RMU | RMU Works of Meduim Voltage Network |
| 02- Network-WBS | SD | Shop Drawaing of Telecom Network |
| 02- Network-WBS | TC | Testing & Commissioning of Storm Drainage Network |
| 02- Network-WBS | TF | Testing & Finishes of Sewage Network |
| 02- Network-WBS | TR | Termination Works of Street Lighting Network |
| 02- Network-WBS | TS | Traffic Signs of Roads Network |
| 03- Activity | 1DL | Material 1st Delivery |
| 03- Activity | AB | Ashpaltic Base Course |
| 03- Activity | BA | Base Cource |
| 03- Activity | BF | Backfilling |
| 03- Activity | CB | Catch Basin Installation |
| 03- Activity | CL | Cable Laying |
| 03- Activity | CR | Fixing of Curbstone |
| 03- Activity | Con | Connection |
| 03- Activity | DL | Material Delivery |
| 03- Activity | DSA | Desgin Approval |
| 03- Activity | DSS | Desgin Submittal |
| 03- Activity | EW | Earthing Work |
| 03- Activity | Ex | Excavation |
| 03- Activity | FH | Fire Haydrant Installation |
| 03- Activity | HH | Hand Hole Installation |
| 03- Activity | IL | Fixing of Interlock |
| 03- Activity | LP | Light Pole Installation |
| 03- Activity | LPA | Light Poles Arms & Fixture |
| 03- Activity | LPF | Light Pole Fondation |
| 03- Activity | MA | Material Approval |
| 03- Activity | MC | Prime Coat Layer Works |
| 03- Activity | MF | Material Manufacturing |
| 03- Activity | MS | Material Submittal |
| 03- Activity | NOC | Recieval of Approval NOC |
| 03- Activity | PB | Panal Board Installation |
| 03- Activity | PBF | Panal Board Foundation |
| 03- Activity | PC | Pouring Plain Concrete |
| 03- Activity | PL | Pipe Laying |
| 03- Activity | PO | Issuance of Purchase Order |
| 03- Activity | RM | Road Marking |
| 03- Activity | RMU | Installation of RMU |
| 03- Activity | RMUF | Installation of RMU Foundation |
| 03- Activity | SDA | Shop Drawaing Review & Approval |
| 03- Activity | SDS | Shop Drawaing Preparation & Submission |
| 03- Activity | SG | Sub Grade |
| 03- Activity | T&C | Testing and Commissioning |
| 03- Activity | TF | Traffic Signs |
| 03- Activity | TR | Termination |
| 03- Activity | Test | Testing |
| 03- Activity | VI | Valve Installation |
| 04-UOM | Cub.m | Cubic Meter |
| 04-UOM | LM | Linear Meter |
| 04-UOM | Sq.m | Square Meter |
| 05-Discipline | 1DL | 1st Delivery of Material to Site |
| 05-Discipline | A | Shop Drawaings Approval |
| 05-Discipline | BS | Asphaltic Base Course Layer and Related Works |
| 05-Discipline | C | Contractual Milestones |
| 05-Discipline | CB | Cabling Works |
| 05-Discipline | CO | Connection works |
| 05-Discipline | CON | Connection works |
| 05-Discipline | CW | Cabling Works |
| 05-Discipline | DC | Primary Ducts Works |
| 05-Discipline | DL | Delivery of Material to Site |
| 05-Discipline | DS | Distrubution Panel Boards |
| 05-Discipline | EPC | EPC Milestones |
| 05-Discipline | EW | Earthworks Network |
| 05-Discipline | FH | Fire Hydrant |
| 05-Discipline | HO | Handing Over |
| 05-Discipline | LAND | Landscaping Works |
| 05-Discipline | MF | Manufacturing of Material |
| 05-Discipline | ML | Main Line Sections |
| 05-Discipline | MNH | Manholes and Handholes Works |
| 05-Discipline | MON | Monitor Milestones |
| 05-Discipline | Mob | Mobilization Works |
| 05-Discipline | NOC | Recieval of Approval NOC |
| 05-Discipline | PO | Issuance of Purchase Orders |
| 05-Discipline | POL | Lighting Poles Works |
| 05-Discipline | RMU | RMUs and Unit Substation Works |
| 05-Discipline | S | Shop Drawaings Submittal |
| 05-Discipline | T&F | Testing&Finishing |
| 05-Discipline | TC | Testing & Commissioning |
| 05-Discipline | TF | Testing&Finishing |
| 05-Discipline | TR | Termination and Testing Works |
| 05-Discipline | TRF | Traffic Signs Boards and Roads Marking |
| 05number | 05 num | 1 |
| 06-Employer Responsibilities | ER | Employer Responsibilities |
| 07-Weightage System | (New) | POURING RC WALL |
| 07-Weightage System | (New)-2 | BACKFILLING |
| 07-Weightage System | BACK | BACKFILLING WORK |
| 07-Weightage System | BACK RM | BACKFILLING |
| 07-Weightage System | DUCTS | INSTALL DUCTS |
| 07-Weightage System | EARTH | EARTHING WORK For Panels and Plant |
| 07-Weightage System | EX | EXCAVATION |
| 07-Weightage System | EXC | EXCAVATION |
| 07-Weightage System | INS RMU | INSTALL RMU |
| 07-Weightage System | INST BO | INSTALL LIGHTINING PANEL BOARD |
| 07-Weightage System | INSTALL | INSTALL PANNELS BOARD FOUNDATION |
| 07-Weightage System | INSTALL-1 | INSTALL MANHOLES |
| 07-Weightage System | INSUL | INSULATION |
| 07-Weightage System | LAY | CABLE LAYING |
| 07-Weightage System | LAYING | CABLE LAYING |
| 07-Weightage System | LP | INSTALL LINER PIPES |
| 07-Weightage System | P06 | Sewage Pump Station PS06 |
| 07-Weightage System | PIPE | PIPES LAYING AND ACCESSORIES |
| 07-Weightage System | PO K1 | POND J1 |
| 07-Weightage System | PO K2 | POND J2 |
| 07-Weightage System | POLES | INSTALL POLES WITH ACCESSORIES |
| 07-Weightage System | RC F | INSTALL RC FOOTING |
| 07-Weightage System | RC S | RC SLAB |
| 07-Weightage System | RC W | INSTALL RC WALL RINGS & SLAB |
| 07-Weightage System | T&COV | TESTING |
| 07-Weightage System | T&COVER | TESTING & COVERS |
| 07-Weightage System | TER | EARTHING WORK FOR POLES |
| 07-Weightage System | TER RMU | TERMINATION AND TESTING |
| 07-Weightage System | TERM | TERMINATIO AND TESTIG |
| 07-Weightage System | TERMINA | TERMINATION OF LIGHTING PANEL BOARD |
| 07-Weightage System | TEST | TEASTING |
| 07-Weightage System | TESTING | TESTING WORK FOR POLES |
| 07-Weightage System | VALV | VALVES |
| 07-Weightage System | cover | INSTALL COVER |
| 07-Weightage System | wall | Install wall of concrete blocks |
| 08 Stage | CON | Construction |
| 08 Stage | EN | ENGINEERING |
| 08 Stage | PRO | PROCUREMENT |
| 08 Stage | TC | TESTING & COMISSIONING |
| 09 Roads | R09 | ROAD 09 |
| 09 Roads | R10 | ROAD 10 |
| 09 Roads | R11 | ROAD 11 |
| 09 Roads | R14 | ROAD 14 |
| 09 Roads | R15 | ROAD 15 |
| 09 Roads | R16 | ROAD 16 |
| 09 Roads | R17 | ROAD 17 |
| 09 Roads | R18 | ROAD 18 |
| 09 Roads | RM | RISING MAILINE |
| 10 side Walk | S01 | Side Walk 01 |
| 10 side Walk | S02 | Side Walk 02 |
| 10 side Walk | S03 | Side Walk 03 |
| 10 side Walk | S04 | Side Walk 04 |
| 10 side Walk | S05 | Side Walk 05 |
| 10 side Walk | S06 | Side Walk 06 |
| 10 side Walk | S07 | Side Walk 07 |
| 10 side Walk | S08 | Side Walk 08 |
| 10 side Walk | S09 | Side Walk 09 |
| 10 side Walk | S10 | Side Walk 10 |
| 10 side Walk | S11 | Side Walk 11 |
| 10 side Walk | S12 | Side Walk 12 |
| 10 side Walk | S13 | Side Walk 13 |
| 10 side Walk | S14 | Side Walk 14 |
| 10 side Walk | S15 | Side Walk 15 |
| 10 side Walk | S16 | Side Walk 16 |
| Discipline | ENG | Engineering |
| Discipline | EW | Earthworks Network |
| Discipline | HO | Handing Over |
| Discipline | IR | Irrigation Network |
| Discipline | MOB | Mobilization |
| Discipline | MS | Milestone |
| Discipline | MV | Medium Voltage Network |
| Discipline | PROC | Procurement |
| Discipline | PW | Potable Water Network |
| Discipline | RD | Roads Network |
| Discipline | SD | Storm Drainage Network |
| Discipline | SL | Street Lighting Network |
| Discipline | SW | Sewage Network |
| Discipline | TC | Testing and Comissioning |
| Discipline | TE | Telecom Network |
