# Development of Infrastructure for phase 1 of the Logistics area - Acceleration Plan BOQ 02

Schedule from Primavera P6, 2025-07-30 to 2027-02-15, data date 2026-10-06, costs in USD, A marks actual dates.

| ID | WBS | Activity | Duration | Start | Finish | Predecessors | Complete | Planned start | Planned finish | Total float | Free float | Resources | Cost | Actual cost | Weight % | DMM2 Weekly Progress | DMM2 Zones | Networks & Stations | DMM2 Phases | UNASCO | Networks Components | Subcontractors works | Dmm2 Roads |
| --- | --- | --- | --- | --- | --- | --- | --- | --- | --- | --- | --- | --- | --- | --- | --- | --- | --- | --- | --- | --- | --- | --- | --- |
|  | Valves & Chambers | **Valves & Chambers** |  | 2026-10-11 | 2026-12-02 |  |  |  |  |  |  |  |  |  |  |  |  |  |  |  |  |  |  |
|  | GV | **Gate Valves** |  | 2026-10-11 | 2026-10-17 |  |  |  |  |  |  |  |  |  |  |  |  |  |  |  |  |  |  |
|  | 1 | **Gate valves dia (110) mm** |  | 2026-10-11 | 2026-10-17 |  |  |  |  |  |  |  |  |  |  |  |  |  |  |  |  |  |  |
| B3.33 14 19.01.114 |  | Burried Isolation Valve Installation | 3d | 2026-10-11 | 2026-10-13 | B3.33 14 13-10101_R, DMM2-Proc-Delv-5828 |  |  |  | 101.32d | 0d | Labor [31.18 h]; Plumber Helper [15.59 h]; Plumber [15.59 h]; Operator [31.18 h]; Boom Truck [16 h]; POT Gate V dia 110 mm [1.65] | 3,825.71 |  | 0.000737657950376926 | Cons. | Z4 | Potable | Cons | CS.UNSC | Val&Chs | SUB.C | Rd 02 |
| B3.33 14 19.01.115 |  | Spindle & Surface Box | 3d | 2026-10-14 | 2026-10-17 | B3.33 14 19.01.114, B3.33 14 19.01.111 |  |  |  | 101.32d | 18d | Labor [31.18 h]; Foreman [15.59 h]; Plumber Helper [15.59 h]; Plumber [15.59 h]; Operator [31.18 h]; JCB [16 h]; POT Gate V dia 110 mm [1.1] | 2,550.47 |  | 0.000491771966917951 | Cons. | Z4 | Potable | Cons | CS.UNSC | Val&Chs | SUB.C | Rd 02 |
|  | 2 | **Air Valves** |  | 2026-10-27 | 2026-12-02 |  |  |  |  |  |  |  |  |  |  |  |  |  |  |  |  |  |  |
|  | 4 | **Air valves on less than 315 mm. (In Chamber)** |  | 2026-10-27 | 2026-12-02 |  |  |  |  |  |  |  |  |  |  |  |  |  |  |  |  |  |  |
| B3.33 05 63.02.32 |  | Land Adjustment & Compaction | 3d | 2026-10-27 | 2026-10-31 | B1.2.32 11 26.01.15, B6.33 42 11.36-199, B6.33 05 40.01.1000, B6.33 05 40.01.560_R, B6.33 05 39.01.3967, B6.33 05 39.01.3917_R |  |  |  | 75.07d | 0d | Labor [31.18 h]; Foreman [15.59 h]; Operator [62.37 h]; Surveyor [15.59 h]; Surveyor Helper [15.59 h]; Excavator (With Bucket) [16 h]; Water Tanker [16 h]; Dump Truck [16 h]; Plate Compactor [16 h]; POT Air valve Dia. 50 mm on pipes with Dia. less than 315 mm [0.24]; Air valve chamber; on less than 315 mm Dia. pipeline [0.18] | 4,549.72 |  | 0.000888448059942745 | Cons. | Z4 | Potable | Cons | CS.UNSC | Val&Chs | SUB.C | Rd 02 |
| B3.33 05 63.02.30 |  | Foundations | 4d | 2026-10-31 | 2026-11-04 | B3.33 05 63.02.32, B3.1. 33 14 13-09 |  |  |  | 75.07d | 0d | Labor [46.78 h]; Foreman [23.39 h]; Laboratory Officer [23.39 h]; Carpenter [23.39 h]; Steelfixer [23.39 h]; Mason [23.39 h]; POT Air valve Dia. 50 mm on pipes with Dia. less than 315 mm [0.06]; Air valve chamber; on less than 315 mm Dia. pipeline [0.24] | 5,389.08 |  | 0.00105235404675599 | Cons. | Z4 | Potable | Cons | CS.UNSC | Val&Chs | SUB.C | Rd 02 |
| B3.33 05 63.02.33 |  | Chambers Walls Conc Cast In Situ | 4d | 2026-11-04 | 2026-11-09 | B3.33 05 63.02.30 |  |  |  | 75.07d | 0d | Labor [46.78 h]; Foreman [23.39 h]; Laboratory Officer [23.39 h]; Carpenter [23.39 h]; Steelfixer [23.39 h]; Mason [23.39 h]; POT Air valve Dia. 50 mm on pipes with Dia. less than 315 mm [0.52]; Air valve chamber; on less than 315 mm Dia. pipeline [0.24] | 6,600.26 |  | 0.00128886622145969 | Cons. | Z4 | Potable | Cons | CS.UNSC | Val&Chs | SUB.C | Rd 02 |
| B3.33 05 63.02.31 |  | Chamber Curing, Finishing & Steel Cover | 5d | 2026-11-09 | 2026-11-15 | B3.33 05 63.02.33 |  |  |  | 75.07d | 10.75d | Labor [62.37 h]; Mason [31.18 h]; POT Air valve Dia. 50 mm on pipes with Dia. less than 315 mm [0.24]; Air valve chamber; on less than 315 mm Dia. pipeline [0.18] | 4,549.72 |  | 0.000888448059942745 | Cons. | Z4 | Potable | Cons | CS.UNSC | Val&Chs | SUB.C | Rd 02 |
| B3.33 05 63.02.34 |  | Valve & Fitting Installation | 5d | 2026-11-28 | 2026-12-02 | B3.33 05 63.02.31, B3.33 05 63.01.015 |  |  |  | 64.32d | 0d | Labor [62.37 h]; Plumber Helper [31.18 h]; Plumber [31.18 h]; Operator [62.37 h]; Boom Truck [32 h]; POT Air valve Dia. 50 mm on pipes with Dia. less than 315 mm [0.12]; Air valve chamber; on less than 315 mm Dia. pipeline [0.34] | 7,834.72 |  | 0.00152992514844024 | Cons. | Z4 | Potable | Cons | CS.UNSC | Val&Chs | SUB.C | Rd 02 |
|  | Fire Fighting | **Fire Fighting Network** |  | 2026-02-05 | 2026-11-09 |  |  |  |  |  |  |  |  |  |  |  |  |  |  |  |  |  |  |
|  | HDPE | **HDPE Pipes** |  | 2026-02-05 | 2026-08-31 |  |  |  |  |  |  |  |  |  |  |  |  |  |  |  |  |  |  |
|  | ?250mm | **?250mm** |  | 2026-02-05 | 2026-08-31 |  |  |  |  |  |  |  |  |  |  |  |  |  |  |  |  |  |  |
|  | Depth: 0.0m - 1.5m | **Depth: 0.0m - 1.5m** |  | 2026-02-05 | 2026-04-06 |  |  |  |  |  |  |  |  |  |  |  |  |  |  |  |  |  |  |
| B3.1. 33 14 13-09 |  | Excavation | 30d | 2026-02-05 A | 2026-03-23 A | B6.33 42 11.36-199 | 100% | 2026-02-05 | 2026-03-24 |  |  | Labor [28.35 h]; Foreman [14.17 h]; Operator [28.35 h]; Surveyor [14.17 h]; Surveyor Helper [14.17 h]; Excavator (With Bucket) [16 h]; Water Tanker [16 h]; Dump Truck [16 h]; Plate Compactor [16 h]; Depth: 0.0m - 1.5m [131.51] | 62,927.13 | 62,927.13 | 0.0135564090273793 | Cons. | Z4 | Fire | Cons | CS.UNSC | HDPEs | SUB.C | Rd 02 |
| B3.1. 33 14 13-013 |  | Sand Bedding | 30.16d | 2026-02-07 A | 2026-03-26 A | B3.1. 33 14 13-09 | 100% |  |  |  |  | Labor [28.35 h]; Foreman [14.17 h]; Operator [56.7 h]; Surveyor [14.17 h]; Surveyor Helper [14.17 h]; Loader [16 h]; Water Tanker [16 h]; Dump Truck [16 h]; Plate Compactor [16 h]; Depth: 0.0m - 1.5m [32.88] | 15,733.37 | 15,733.37 | 0.00338944352179868 | Cons. | Z4 | Fire | Cons | CS.UNSC | HDPEs | SUB.C | Rd 02 |
| B3.1. 33 14 13-017 |  | Pipe Laying | 31.16d | 2026-02-07 A | 2026-03-28 A | B3.1. 33 14 13-013 | 100% |  |  |  |  | Labor [28.35 h]; Foreman [14.17 h]; Plumber Helper [14.17 h]; Plumber [14.17 h]; Operator [14.17 h]; Surveyor [14.17 h]; Surveyor Helper [14.17 h]; Mobile Crane [16 h]; Depth: 0.0m - 1.5m [295.89] | 141,587.64 | 141,587.64 | 0.0305022615765573 | Cons. | Z4 | Fire | Cons | CS.UNSC | HDPEs | SUB.C | Rd 02 |
| B3.1. 33 14 13-021 |  | Embedment & Test | 7d | 2026-03-24 A | 2026-04-01 A | B3.1. 33 14 13-017 | 100% |  |  |  |  | Labor [56.7 h]; Foreman [28.35 h]; Plumber Helper [28.35 h]; Plumber [28.35 h]; Operator [56.7 h]; Surveyor [28.35 h]; Surveyor Helper [28.35 h]; Loader [32 h]; Water Tanker [32 h]; Dump Truck [32 h]; Plate Compactor [32 h]; Roller Compactor [32 h]; Depth: 0.0m - 1.5m [131.51] | 62,927.13 | 62,927.13 | 0.0135564090273793 | Cons. | Z4 | Fire | Cons | CS.UNSC | HDPEs | SUB.C | Rd 02 |
| B3.1. 33 14 13-025 |  | Backfilling & Warrning Tape | 4d | 2026-04-01 A | 2026-04-06 A | B3.1. 33 14 13-021 | 100% |  |  |  |  | Labor [70.87 h]; Foreman [35.44 h]; Operator [141.75 h]; Surveyor [35.44 h]; Surveyor Helper [35.44 h]; Loader [40 h]; Water Tanker [40 h]; Dump Truck [40 h]; Plate Compactor [40 h]; Roller Compactor [40 h]; Depth: 0.0m - 1.5m [65.75] | 31,460.4 | 31,460.4 | 0.00677752198378195 | Cons. | Z4 | Fire | Cons | CS.UNSC | HDPEs | SUB.C | Rd 02 |
|  | Depth: 1.51m - 2.5m | **Depth: 1.51m - 2.5m** |  | 2026-02-05 | 2026-08-31 |  |  |  |  |  |  |  |  |  |  |  |  |  |  |  |  |  |  |
| B3.1. 33 14 13-011 |  | Excavation | 155.16d | 2026-02-05 A | 2026-08-23 A | B3.1. 33 14 13-09 | 100% |  |  |  |  | Labor [28.35 h]; Foreman [14.17 h]; Operator [28.35 h]; Surveyor [14.17 h]; Surveyor Helper [14.17 h]; Excavator (With Bucket) [16 h]; Water Tanker [16 h]; Dump Truck [16 h]; Plate Compactor [16 h]; Depth: 1.51m - 2.5m [8.22] | 4,294.65 | 4,294.65 | 0.000399426118713958 | Cons. | Z4 | Fire | Cons | CS.UNSC | HDPEs | SUB.C | Rd 02 |
| B3.1. 33 14 13-015 |  | Sand Bedding | 156.16d | 2026-02-07 A | 2026-08-25 A | B3.1. 33 14 13-011 | 100% |  |  |  |  | Labor [28.35 h]; Foreman [14.17 h]; Operator [56.7 h]; Surveyor [14.17 h]; Surveyor Helper [14.17 h]; Loader [16 h]; Water Tanker [16 h]; Dump Truck [16 h]; Plate Compactor [16 h]; Depth: 1.51m - 2.5m [2.06] | 1,073.66 | 1,073.66 | 9.98565296784896E-005 | Cons. | Z4 | Fire | Cons | CS.UNSC | HDPEs | SUB.C | Rd 02 |
| B3.1. 33 14 13-019 |  | Pipe Laying | 158.16d | 2026-02-07 A | 2026-08-27 A | B3.1. 33 14 13-015 | 100% |  |  |  |  | Labor [28.35 h]; Foreman [14.17 h]; Plumber Helper [14.17 h]; Plumber [14.17 h]; Operator [14.17 h]; Surveyor [14.17 h]; Surveyor Helper [14.17 h]; Mobile Crane [16 h]; Depth: 1.51m - 2.5m [18.5] | 9,662.95 | 9,662.95 | 0.00089870876710641 | Cons. | Z4 | Fire | Cons | CS.UNSC | HDPEs | SUB.C | Rd 02 |
| B3.1. 33 14 13-023 |  | Embedment & Test | 116.16d | 2026-04-13 A | 2026-08-31 A | B3.1. 33 14 13-019 | 100% |  |  |  |  | Labor [56.7 h]; Foreman [28.35 h]; Plumber Helper [28.35 h]; Plumber [28.35 h]; Operator [56.7 h]; Surveyor [28.35 h]; Surveyor Helper [28.35 h]; Loader [32 h]; Water Tanker [32 h]; Dump Truck [32 h]; Plate Compactor [32 h]; Roller Compactor [32 h]; Depth: 1.51m - 2.5m [8.22] | 4,294.65 | 4,294.65 | 0.000399426118713958 | Cons. | Z4 | Fire | Cons | CS.UNSC | HDPEs | SUB.C | Rd 02 |
| B3.1. 33 14 13-027 |  | Backfilling & Warrning Tape | 97.24d | 2026-05-04 A | 2026-08-30 A | B3.1. 33 14 13-023, B3.33 14 19.01.130 | 100% |  |  |  |  | Labor [70.87 h]; Foreman [35.44 h]; Operator [141.75 h]; Surveyor [35.44 h]; Surveyor Helper [35.44 h]; Loader [40 h]; Water Tanker [40 h]; Dump Truck [40 h]; Plate Compactor [40 h]; Roller Compactor [40 h]; Depth: 1.51m - 2.5m [4.11] | 2,147.32 | 2,147.32 | 0.00019971305935698 | Cons. | Z4 | Fire | Cons | CS.UNSC | HDPEs | SUB.C | Rd 02 |

| ID | WBS | Activity | Duration | Start | Finish | Predecessors | Complete | Planned start | Planned finish | Total float | Free float | Resources | Cost | Actual cost | Weight % | DMM2 Weekly Progress | DMM2 Zones | Networks & Stations | DMM2 Phases | UNASCO | Networks Components | Subcontractors works | Dmm2 Roads |
| --- | --- | --- | --- | --- | --- | --- | --- | --- | --- | --- | --- | --- | --- | --- | --- | --- | --- | --- | --- | --- | --- | --- | --- |
|  | Valves & Chambers | **Valves & Chambers** |  | 2026-04-01 | 2026-11-09 |  |  |  |  |  |  |  |  |  |  |  |  |  |  |  |  |  |  |
|  | GV | **Gate Valves** |  | 2026-04-01 | 2026-10-11 |  |  |  |  |  |  |  |  |  |  |  |  |  |  |  |  |  |  |
|  | 1 | **Gate valves dia (250) mm** |  | 2026-04-01 | 2026-10-11 |  |  |  |  |  |  |  |  |  |  |  |  |  |  |  |  |  |  |
| B3.33 14 19.01.130 |  | Burried Isolation Valve Installation | 2d | 2026-04-01 A | 2026-04-04 A | B3.1. 33 14 13-019, B3.1. 33 14 13-017, DMM2-Proc-Delv-5898 | 100% |  |  |  |  | Labor [28.35 h]; Plumber Helper [14.17 h]; Plumber [14.17 h]; Operator [28.35 h]; Boom Truck [16 h]; FF Gate V dia 250 mm [1.88] | 7,525.67 | 7,525.67 | 0.00144335522534034 | Cons. | Z4 | Fire | Cons | CS.UNSC | Val&Chs | SUB.C | Rd 02 |
| B3.33 14 19.01.131 |  | Spindle & Surface Box | 4d | 2026-10-07 | 2026-10-11 | B3.33 14 19.01.130, B3.1. 33 14 13-023 |  |  |  | 69.32d | 5d | Labor [31.18 h]; Foreman [15.59 h]; Plumber Helper [15.59 h]; Plumber [15.59 h]; Operator [31.18 h]; JCB [16 h]; FF Gate V dia 250 mm [1.25] | 5,017.11 |  | 0.000962236816893557 | Cons. | Z4 | Fire | Cons | CS.UNSC | Val&Chs | SUB.C | Rd 02 |
|  | 2 | **Air Valves** |  | 2026-10-10 | 2026-11-09 |  |  |  |  |  |  |  |  |  |  |  |  |  |  |  |  |  |  |
|  | 4 | **Air valves on less than 315 mm. (In Chamber)** |  | 2026-10-10 | 2026-11-09 |  |  |  |  |  |  |  |  |  |  |  |  |  |  |  |  |  |  |
| B3.33 05 63.02.72 |  | Land Adjustment & Compaction | 4d | 2026-10-10 | 2026-10-14 | B3.1. 33 14 13-017, DMM2-Proc-Delv-5908_R |  |  |  | 85.31d | 0d | Labor [31.18 h]; Foreman [15.59 h]; Operator [62.37 h]; Surveyor [15.59 h]; Surveyor Helper [15.59 h]; Excavator (With Bucket) [16 h]; Water Tanker [16 h]; Dump Truck [16 h]; Plate Compactor [16 h]; FF Air valve Dia. 50 mm on pipes with Dia. less than 315 mm [0.18]; FF Air valve chamber; on less than 315 mm Dia. pipeline [0.18] | 4,485.6 |  | 0.000842899444995834 | Cons. | Z4 | Fire | Cons | CS.UNSC | Val&Chs | SUB.C | Rd 02 |
| B3.33 05 63.02.70 |  | Foundations | 5d | 2026-10-14 | 2026-10-20 | B3.33 05 63.02.72 |  |  |  | 85.31d | 0d | Labor [46.78 h]; Foreman [23.39 h]; Laboratory Officer [23.39 h]; Carpenter [23.39 h]; Steelfixer [23.39 h]; Mason [23.39 h]; FF Air valve Dia. 50 mm on pipes with Dia. less than 315 mm [0.18]; FF Air valve chamber; on less than 315 mm Dia. pipeline [0.24] | 5,821.24 |  | 0.00109388285056526 | Cons. | Z4 | Fire | Cons | CS.UNSC | Val&Chs | SUB.C | Rd 02 |
| B3.33 05 63.02.73 |  | Chambers Walls Conc Cast In Situ | 5d | 2026-10-20 | 2026-10-26 | B3.33 05 63.02.70 |  |  |  | 85.31d | 0d | Labor [46.78 h]; Foreman [23.39 h]; Laboratory Officer [23.39 h]; Carpenter [23.39 h]; Steelfixer [23.39 h]; Mason [23.39 h]; FF Air valve Dia. 50 mm on pipes with Dia. less than 315 mm [0.24]; FF Air valve chamber; on less than 315 mm Dia. pipeline [0.24] | 5,980.8 |  | 0.00112386592666111 | Cons. | Z4 | Fire | Cons | CS.UNSC | Val&Chs | SUB.C | Rd 02 |
| B3.33 05 63.02.71 |  | Chamber Curing, Finishing & Steel Cover | 6d | 2026-10-26 | 2026-11-02 | B3.33 05 63.02.73 |  |  |  | 85.31d | 0d | Labor [62.37 h]; Mason [31.18 h]; FF Air valve Dia. 50 mm on pipes with Dia. less than 315 mm [0.24]; FF Air valve chamber; on less than 315 mm Dia. pipeline [0.18] | 4,645.16 |  | 0.000872882521091683 | Cons. | Z4 | Fire | Cons | CS.UNSC | Val&Chs | SUB.C | Rd 02 |
| B3.33 05 63.02.74 |  | Valve & Fitting Installation | 6d | 2026-11-02 | 2026-11-09 | B3.33 05 63.02.71 |  |  |  | 85.31d | 0d | Labor [62.37 h]; Plumber Helper [31.18 h]; Plumber [31.18 h]; Operator [62.37 h]; Boom Truck [32 h]; FF Air valve Dia. 50 mm on pipes with Dia. less than 315 mm [0.38]; FF Air valve chamber; on less than 315 mm Dia. pipeline [0.38] | 9,344.99 |  | 0.001756040510408 | Cons. | Z4 | Fire | Cons | CS.UNSC | Val&Chs | SUB.C | Rd 02 |
|  | Washout Valves | **Washout Valves** |  | 2026-06-26 | 2026-11-09 |  |  |  |  |  |  |  |  |  |  |  |  |  |  |  |  |  |  |
|  | 4 | **Washout valves on 110-400 mm. (In Chamber)** |  | 2026-06-26 | 2026-11-09 |  |  |  |  |  |  |  |  |  |  |  |  |  |  |  |  |  |  |
| B3.33 05 63.01.57 |  | Land Adjustment & Compaction | 3d | 2026-06-26 A | 2026-06-29 A | B3.1. 33 14 13-023, B3.1. 33 14 13-021 | 100% | 2026-06-27 | 2026-06-29 |  |  | Labor [28.35 h]; Foreman [14.17 h]; Operator [56.7 h]; Surveyor [14.17 h]; Surveyor Helper [14.17 h]; Excavator (With Bucket) [16 h]; Water Tanker [16 h]; Dump Truck [16 h]; Plate Compactor [16 h]; FF Wash out valve Dia. 100 mm on pipes with Dia. 110-400 mm [0.19]; FF Wash out valve chamber; on 110-400 mm Dia. pipeline [0.21] | 7,932 | 7,932 | 0.00140430274510935 | Cons. | Z4 | Fire | Cons | CS.UNSC | Val&Chs | SUB.C | Rd 02 |
| B3.33 05 63.01.55 |  | Foundations (50.00% Completed) | 68d | 2026-06-29 A | 2026-09-15 A | B3.33 05 63.01.57 | 100% |  |  |  |  | Labor [23.39 h]; Foreman [11.69 h]; Laboratory Officer [11.69 h]; Carpenter [11.69 h]; Steelfixer [11.69 h]; Mason [11.69 h]; FF Wash out valve Dia. 100 mm on pipes with Dia. 110-400 mm [0.1]; FF Wash out valve chamber; on 110-400 mm Dia. pipeline [0.13] | 4,824.68 | 4,824.68 | 0.00179441315636236 | Cons. | Z4 | Fire | Cons | CS.UNSC | Val&Chs | SUB.C | Rd 02 |
| B3.33 05 63.01.58 |  | Chambers Walls Conc Cast In Situ (50.00% Completed) | 65d | 2026-07-02 A | 2026-09-15 A | B3.33 05 63.01.55 SS | 100% |  |  |  |  | Labor [23.39 h]; Foreman [11.69 h]; Laboratory Officer [11.69 h]; Carpenter [11.69 h]; Steelfixer [11.69 h]; Mason [11.69 h]; FF Wash out valve Dia. 100 mm on pipes with Dia. 110-400 mm [0.13]; FF Wash out valve chamber; on 110-400 mm Dia. pipeline [0.13] | 4,935.31 | 4,935.31 | 0.00183639589745068 | Cons. | Z4 | Fire | Cons | CS.UNSC | Val&Chs | SUB.C | Rd 02 |
| B3.33 05 63.01.56 |  | Chamber Curing, Finishing & Steel Cover (50.00% Completed) | 62d | 2026-07-06 A | 2026-09-15 A | B3.1. 33 14 13-027, B3.1. 33 14 13-025, B3.33 05 63.01.58 SS | 100% |  |  |  |  | Labor [31.18 h]; Mason [15.59 h]; FF Wash out valve Dia. 100 mm on pipes with Dia. 110-400 mm [0.13]; FF Wash out valve chamber; on 110-400 mm Dia. pipeline [0.1] | 3,810.94 | 3,810.94 | 0.00144628548619767 | Cons. | Z4 | Fire | Cons | CS.UNSC | Val&Chs | SUB.C | Rd 02 |
| B3.33 05 63.01.59 |  | Valve & Fitting Installation (50.00% Completed) | 59d | 2026-07-09 A | 2026-09-15 A | B3.33 05 63.01.56 SS | 100% |  |  |  |  | Labor [31.18 h]; Plumber Helper [15.59 h]; Plumber [15.59 h]; Operator [31.18 h]; Boom Truck [16 h]; FF Wash out valve Dia. 100 mm on pipes with Dia. 110-400 mm [0.19]; FF Wash out valve chamber; on 110-400 mm Dia. pipeline [0.19] | 7,400.63 | 7,400.63 | 0.00280860549021868 | Cons. | Z4 | Fire | Cons | CS.UNSC | Val&Chs | SUB.C | Rd 02 |
| B3.33 05 63.01.55_R |  | Foundations(Rem) | 3.5d | 2026-10-07 | 2026-10-11 | B3.33 05 63.01.57, B3.33 05 63.01.55 |  |  |  | 109.32d | 0d | Labor [23.39 h]; Foreman [11.69 h]; Laboratory Officer [11.69 h]; Carpenter [11.69 h]; Steelfixer [11.69 h]; Mason [11.69 h]; FF Wash out valve Dia. 100 mm on pipes with Dia. 110-400 mm [0.1]; FF Wash out valve chamber; on 110-400 mm Dia. pipeline [0.13] | 4,824.68 |  | 0.00179441315636236 | Cons. | Z4 | Fire | Cons | CS.UNSC | Val&Chs | SUB.C | Rd 02 |
| B3.33 05 63.01.56_R |  | Chamber Curing, Finishing & Steel Cover(Rem) | 4d | 2026-10-07 | 2026-10-11 | B3.1. 33 14 13-027, B3.1. 33 14 13-025, B3.33 05 63.01.58_R SS, B3.33 05 63.01.56 |  |  |  | 109.32d | 24.01d | Labor [31.18 h]; Mason [15.59 h]; FF Wash out valve Dia. 100 mm on pipes with Dia. 110-400 mm [0.13]; FF Wash out valve chamber; on 110-400 mm Dia. pipeline [0.1] | 3,810.94 |  | 0.00144628548619767 | Cons. | Z4 | Fire | Cons | CS.UNSC | Val&Chs | SUB.C | Rd 02 |
| B3.33 05 63.01.58_R |  | Chambers Walls Conc Cast In Situ(Rem) | 3.5d | 2026-10-07 | 2026-10-11 | B3.33 05 63.01.55_R SS, B3.33 05 63.01.58 |  |  |  | 109.32d | 0d | Labor [23.39 h]; Foreman [11.69 h]; Laboratory Officer [11.69 h]; Carpenter [11.69 h]; Steelfixer [11.69 h]; Mason [11.69 h]; FF Wash out valve Dia. 100 mm on pipes with Dia. 110-400 mm [0.13]; FF Wash out valve chamber; on 110-400 mm Dia. pipeline [0.13] | 4,935.31 |  | 0.00183639589745068 | Cons. | Z4 | Fire | Cons | CS.UNSC | Val&Chs | SUB.C | Rd 02 |
| B3.33 05 63.01.59_R |  | Valve & Fitting Installation(Rem) | 4d | 2026-11-04 | 2026-11-09 | B3.33 05 63.02.74 FF, B3.33 05 63.01.56_R SS, B3.33 05 63.01.59 |  |  |  | 85.31d | 31.99d | Labor [31.18 h]; Plumber Helper [15.59 h]; Plumber [15.59 h]; Operator [31.18 h]; Boom Truck [16 h]; FF Wash out valve Dia. 100 mm on pipes with Dia. 110-400 mm [0.19]; FF Wash out valve chamber; on 110-400 mm Dia. pipeline [0.19] | 7,400.63 |  | 0.00280860549021868 | Cons. | Z4 | Fire | Cons | CS.UNSC | Val&Chs | SUB.C | Rd 02 |
|  | 3 | **Fire Hydrant** |  | 2026-06-17 | 2026-10-14 |  |  |  |  |  |  |  |  |  |  |  |  |  |  |  |  |  |  |
| B3.33 14 19.01.fh41 |  | Riser Pipe & Flanged Fittings Installation (1.00% Completed) | 77.84d | 2026-06-17 A | 2026-09-15 A | B3.1. 33 14 13-019, B3.1. 33 14 13-017 | 100% |  |  |  |  | Labor [0.31 h]; Plumber Helper [0.16 h]; Welder [0.16 h]; Plumber [0.16 h]; Surveyor [0.16 h]; Surveyor Helper [0.16 h]; Welding Machine [0.16 h]; 3-outlet fire hydrant (2 x 2.5 inch and 1 x 4.5 inch) in the form of a separate dry vacuum cylinder [0.01] | 164.15 | 164.15 | 0.00314407764631429 | Cons. | Z4 | Fire | Cons | CS.UNSC | FH | SUB.C | Rd 02 |
| B3.33 14 19.01.fh40 |  | Firehydrant Fixing/Installation (1.00% Completed) | 75.84d | 2026-06-20 A | 2026-09-15 A | DMM2-Proc-Delv-7178, B3.33 14 19.01.fh41 SS | 100% |  |  |  |  | Labor [0.47 h]; Foreman [0.23 h]; Plumber Helper [0.23 h]; Plumber [0.23 h]; Operator [0.47 h]; Surveyor [0.23 h]; Surveyor Helper [0.23 h]; JCB [0.24 h]; 3-outlet fire hydrant (2 x 2.5 inch and 1 x 4.5 inch) in the form of a separate dry vacuum cylinder [0.04] | 492.46 | 492.46 | 0.0094322329389428 | Cons. | Z4 | Fire | Cons | CS.UNSC | FH | SUB.C | Rd 02 |
| B3.33 14 19.01.fh42 |  | Backfilling & Compaction (1.00% Completed) | 72.84d | 2026-06-23 A | 2026-09-15 A | B3.33 14 19.01.fh40 SS | 100% |  |  |  |  | Labor [0.78 h]; Foreman [0.39 h]; Operator [0.78 h]; Surveyor [0.39 h]; Surveyor Helper [0.39 h]; Loader [0.4 h]; Water Tanker [0.4 h]; Dump Truck [0.4 h]; Plate Compactor [0.4 h]; 3-outlet fire hydrant (2 x 2.5 inch and 1 x 4.5 inch) in the form of a separate dry vacuum cylinder [0.01] | 164.15 | 164.15 | 0.00314407764631429 | Cons. | Z4 | Fire | Cons | CS.UNSC | FH | SUB.C | Rd 02 |
| B3.33 14 19.01.fh40_R |  | Firehydrant Fixing/Installation(Rem) | 4.97d | 2026-10-07 | 2026-10-12 | DMM2-Proc-Delv-7178, B3.33 14 19.01.fh41_R SS, B3.33 14 19.01.fh40 |  |  |  | 74.37d | 0d | Labor [46.31 h]; Foreman [23.15 h]; Plumber Helper [23.15 h]; Plumber [23.15 h]; Operator [46.31 h]; Surveyor [23.15 h]; Surveyor Helper [23.15 h]; JCB [23.76 h]; 3-outlet fire hydrant (2 x 2.5 inch and 1 x 4.5 inch) in the form of a separate dry vacuum cylinder [4.43] | 48,753.4 |  | 0.0094322329389428 | Cons. | Z4 | Fire | Cons | CS.UNSC | FH | SUB.C | Rd 02 |
| B3.33 14 19.01.fh41_R |  | Riser Pipe & Flanged Fittings Installation(Rem) | 3.98d | 2026-10-07 | 2026-10-11 | B3.1. 33 14 13-019, B3.1. 33 14 13-017, B3.33 14 19.01.fh41 |  |  |  | 74.37d | 0d | Labor [30.87 h]; Plumber Helper [15.44 h]; Welder [15.44 h]; Plumber [15.44 h]; Surveyor [15.44 h]; Surveyor Helper [15.44 h]; Welding Machine [15.84 h]; 3-outlet fire hydrant (2 x 2.5 inch and 1 x 4.5 inch) in the form of a separate dry vacuum cylinder [1.48] | 16,251.13 |  | 0.00314407764631429 | Cons. | Z4 | Fire | Cons | CS.UNSC | FH | SUB.C | Rd 02 |
| B3.33 14 19.01.fh42_R |  | Backfilling & Compaction(Rem) | 6.95d | 2026-10-07 | 2026-10-14 | B3.33 14 19.01.fh40_R SS, B3.33 14 19.01.fh42 |  |  |  | 74.37d | 13.05d | Labor [77.18 h]; Foreman [38.59 h]; Operator [77.18 h]; Surveyor [38.59 h]; Surveyor Helper [38.59 h]; Loader [39.6 h]; Water Tanker [39.6 h]; Dump Truck [39.6 h]; Plate Compactor [39.6 h]; 3-outlet fire hydrant (2 x 2.5 inch and 1 x 4.5 inch) in the form of a separate dry vacuum cylinder [1.48] | 16,251.13 |  | 0.00314407764631429 | Cons. | Z4 | Fire | Cons | CS.UNSC | FH | SUB.C | Rd 02 |

| ID | WBS | Activity | Duration | Start | Finish | Predecessors | Complete | Planned start | Planned finish | Total float | Free float | Resources | Cost | Actual cost | Weight % | DMM2 Weekly Progress | DMM2 Zones | Networks & Stations | DMM2 Phases | UNASCO | Networks Components | Subcontractors works | Dmm2 Roads |
| --- | --- | --- | --- | --- | --- | --- | --- | --- | --- | --- | --- | --- | --- | --- | --- | --- | --- | --- | --- | --- | --- | --- | --- |
|  | TSE Network | **TSE Network** |  | 2026-02-04 | 2026-12-09 |  |  |  |  |  |  |  |  |  |  |  |  |  |  |  |  |  |  |
|  | HDPE | **HDPE Pipes** |  | 2026-02-04 | 2026-10-25 |  |  |  |  |  |  |  |  |  |  |  |  |  |  |  |  |  |  |
|  | ?110mm | **?110mm** |  | 2026-02-04 | 2026-10-25 |  |  |  |  |  |  |  |  |  |  |  |  |  |  |  |  |  |  |
|  | Depth: 0.0m - 1.5m | **Depth: 0.0m - 1.5m** |  | 2026-02-04 | 2026-10-25 |  |  |  |  |  |  |  |  |  |  |  |  |  |  |  |  |  |  |
| B4.33 14 13.01-018 |  | Excavation | 63.4d | 2026-02-04 A | 2026-05-02 A | B1.1.31 23 16.12 | 100% |  |  |  |  | Labor [28.35 h]; Foreman [14.17 h]; Operator [28.35 h]; Surveyor [14.17 h]; Surveyor Helper [14.17 h]; Excavator (With Bucket) [16 h]; Water Tanker [16 h]; Dump Truck [16 h]; Plate Compactor [16 h]; Dia. 110mm 0.0m - 1.5m [83.33] | 11,999.34 | 11,999.34 | 0.00275210673788439 | Cons. | Z4 | TSE | Cons | CS.UNSC | HDPEs | SUB.C | Rd 02 |
| B4.33 14 13.01-0112 |  | Sand Bedding | 68.4d | 2026-02-05 A | 2026-05-09 A | B4.33 14 13.01-018 | 100% |  |  |  |  | Labor [28.35 h]; Foreman [14.17 h]; Operator [56.7 h]; Surveyor [14.17 h]; Surveyor Helper [14.17 h]; Loader [16 h]; Water Tanker [16 h]; Dump Truck [16 h]; Plate Compactor [16 h]; Dia. 110mm 0.0m - 1.5m [20.83] | 2,999.84 | 2,999.84 | 0.000688026684471096 | Cons. | Z4 | TSE | Cons | CS.UNSC | HDPEs | SUB.C | Rd 02 |
| B4.33 14 13.01-0116 |  | Pipe Laying | 65.26d | 2026-03-24 A | 2026-06-13 A | B4.33 14 13.01-0112 | 100% |  |  |  |  | Labor [28.35 h]; Foreman [14.17 h]; Plumber Helper [14.17 h]; Plumber [14.17 h]; Operator [14.17 h]; Surveyor [14.17 h]; Surveyor Helper [14.17 h]; Mobile Crane [16 h]; Dia. 110mm 0.0m - 1.5m [187.5] | 26,998.52 | 26,998.52 | 0.00619224016023984 | Cons. | Z4 | TSE | Cons | CS.UNSC | HDPEs | SUB.C | Rd 02 |
| B4.33 14 13.01-0120 |  | Embedment & Test (20.03% Completed) | 115.6d | 2026-04-29 A | 2026-09-15 A | B4.33 14 13.01-0116 | 100% |  |  |  |  | Labor [12.49 h]; Foreman [6.25 h]; Plumber Helper [6.25 h]; Plumber [6.25 h]; Operator [12.49 h]; Surveyor [6.25 h]; Surveyor Helper [6.25 h]; Loader [6.41 h]; Water Tanker [6.41 h]; Dump Truck [6.41 h]; Plate Compactor [6.41 h]; Roller Compactor [6.41 h]; Dia. 110mm 0.0m - 1.5m [16.69] | 2,403.07 | 2,403.07 | 0.00275210673788439 | Cons. | Z4 | TSE | Cons | CS.UNSC | HDPEs | SUB.C | Rd 02 |
| B4.33 14 13.01-0124 |  | Backfilling & Warrning Tape (20.03% Completed) | 113d | 2026-05-03 A | 2026-09-15 A | B4.33 14 13.01-0120 FF | 100% |  |  |  |  | Labor [15.61 h]; Foreman [7.81 h]; Operator [31.23 h]; Surveyor [7.81 h]; Surveyor Helper [7.81 h]; Loader [8.01 h]; Water Tanker [8.01 h]; Dump Truck [8.01 h]; Plate Compactor [8.01 h]; Roller Compactor [8.01 h]; Dia. 110mm 0.0m - 1.5m [8.34] | 1,201.53 | 1,201.53 | 0.00137605336894219 | Cons. | Z4 | TSE | Cons | CS.UNSC | HDPEs | SUB.C | Rd 02 |
| B4.33 14 13.01-0120_R |  | Embedment & Test(Rem) | 4.2d | 2026-10-07 | 2026-10-12 | B4.33 14 13.01-0116, B4.33 14 13.01-0120 |  |  |  | 47.12d | 11.8d | Labor [49.88 h]; Foreman [24.94 h]; Plumber Helper [24.94 h]; Plumber [24.94 h]; Operator [49.88 h]; Surveyor [24.94 h]; Surveyor Helper [24.94 h]; Loader [25.59 h]; Water Tanker [25.59 h]; Dump Truck [25.59 h]; Plate Compactor [25.59 h]; Roller Compactor [25.59 h]; Dia. 110mm 0.0m - 1.5m [66.64] | 9,596.28 |  | 0.00275210673788439 | Cons. | Z4 | TSE | Cons | CS.UNSC | HDPEs | SUB.C | Rd 02 |
| B4.33 14 13.01-0124_R |  | Backfilling & Warrning Tape(Rem) | 5d | 2026-10-20 | 2026-10-25 | B4.32 84 13.063 FF, B4.33 14 13.01-0120_R FF, B4.33 14 13.01-0124 |  |  |  | 35.32d | 0d | Labor [62.35 h]; Foreman [31.17 h]; Operator [124.7 h]; Surveyor [31.17 h]; Surveyor Helper [31.17 h]; Loader [31.99 h]; Water Tanker [31.99 h]; Dump Truck [31.99 h]; Plate Compactor [31.99 h]; Roller Compactor [31.99 h]; Dia. 110mm 0.0m - 1.5m [33.32] | 4,798.14 |  | 0.00137605336894219 | Cons. | Z4 | TSE | Cons | CS.UNSC | HDPEs | SUB.C | Rd 02 |
|  | ?90mm | **?90mm** |  | 2026-02-04 | 2026-04-06 |  |  |  |  |  |  |  |  |  |  |  |  |  |  |  |  |  |  |
|  | Depth: 0.0m - 1.5m | **Depth: 0.0m - 1.5m** |  | 2026-02-04 | 2026-04-06 |  |  |  |  |  |  |  |  |  |  |  |  |  |  |  |  |  |  |
| B4.33 14 13.01-0110 |  | Excavation | 31.4d | 2026-02-04 A | 2026-03-25 A | B4.33 14 13.01-018 | 100% |  |  |  |  | Labor [28.35 h]; Foreman [14.17 h]; Operator [28.35 h]; Surveyor [14.17 h]; Surveyor Helper [14.17 h]; Excavator (With Bucket) [16 h]; Water Tanker [16 h]; Dump Truck [16 h]; Plate Compactor [16 h]; Dia. 90mm 0.0m - 1.5m [315] | 25,997.55 | 25,997.55 | 0.00567873731768342 | Cons. | Z4 | TSE | Cons | CS.UNSC | HDPEs | SUB.C | Rd 02 |
| B4.33 14 13.01-0114 |  | Sand Bedding | 32.4d | 2026-02-05 A | 2026-03-28 A | B4.33 14 13.01-0110 | 100% |  |  |  |  | Labor [28.35 h]; Foreman [14.17 h]; Operator [56.7 h]; Surveyor [14.17 h]; Surveyor Helper [14.17 h]; Loader [16 h]; Water Tanker [16 h]; Dump Truck [16 h]; Plate Compactor [16 h]; Dia. 90mm 0.0m - 1.5m [78.75] | 6,499.39 | 6,499.39 | 0.00141968432942085 | Cons. | Z4 | TSE | Cons | CS.UNSC | HDPEs | SUB.C | Rd 02 |
| B4.33 14 13.01-0118 |  | Pipe Laying | 22.15d | 2026-02-22 A | 2026-03-31 A | B4.33 14 13.01-0114 | 100% | 2026-02-23 | 2026-03-31 |  |  | Labor [28.35 h]; Foreman [14.17 h]; Plumber Helper [14.17 h]; Plumber [14.17 h]; Operator [14.17 h]; Surveyor [14.17 h]; Surveyor Helper [14.17 h]; Mobile Crane [16 h]; Dia. 90mm 0.0m - 1.5m [708.75] | 58,494.5 | 58,494.5 | 0.0127771589647876 | Cons. | Z4 | TSE | Cons | CS.UNSC | HDPEs | SUB.C | Rd 02 |
| B4.33 14 13.01-0122 |  | Embedment & Test | 12.75d | 2026-03-13 A | 2026-04-02 A | B4.33 14 13.01-0118, B3.33 14 19.01.140 | 100% | 2026-03-14 | 2026-04-02 |  |  | Labor [56.7 h]; Foreman [28.35 h]; Plumber Helper [28.35 h]; Plumber [28.35 h]; Operator [56.7 h]; Surveyor [28.35 h]; Surveyor Helper [28.35 h]; Loader [32 h]; Water Tanker [32 h]; Dump Truck [32 h]; Plate Compactor [32 h]; Roller Compactor [32 h]; Dia. 90mm 0.0m - 1.5m [315] | 25,997.55 | 25,997.55 | 0.00567873731768342 | Cons. | Z4 | TSE | Cons | CS.UNSC | HDPEs | SUB.C | Rd 02 |
| B4.33 14 13.01-0126 |  | Backfilling & Warrning Tape | 5d | 2026-04-01 A | 2026-04-06 A | B4.33 14 13.01-0122 | 100% |  |  |  |  | Labor [70.87 h]; Foreman [35.44 h]; Operator [141.75 h]; Surveyor [35.44 h]; Surveyor Helper [35.44 h]; Loader [40 h]; Water Tanker [40 h]; Dump Truck [40 h]; Plate Compactor [40 h]; Roller Compactor [40 h]; Dia. 90mm 0.0m - 1.5m [157.5] | 12,998.78 | 12,998.78 | 0.0028393686588417 | Cons. | Z4 | TSE | Cons | CS.UNSC | HDPEs | SUB.C | Rd 02 |
|  | Valves & Chambers | **Valves & Chambers** |  | 2026-03-10 | 2026-12-09 |  |  |  |  |  |  |  |  |  |  |  |  |  |  |  |  |  |  |
|  | GV | **Gate Valves** |  | 2026-03-10 | 2026-10-10 |  |  |  |  |  |  |  |  |  |  |  |  |  |  |  |  |  |  |
|  | 1 | **Gate valves dia (250) mm** |  | 2026-03-10 | 2026-10-10 |  |  |  |  |  |  |  |  |  |  |  |  |  |  |  |  |  |  |
| B3.33 14 19.01.140 |  | Burried Isolation Valve Installation | 15d | 2026-03-10 A | 2026-04-02 A | B4.33 14 13.01-0118 | 100% |  |  |  |  | Labor [28.35 h]; Plumber Helper [14.17 h]; Plumber [14.17 h]; Operator [28.35 h]; Boom Truck [16 h]; TSE Gate V Dia. 100 mm [5.6] | 12,973.53 | 12,973.53 | 0.00232751888367418 | Cons. | Z4 | TSE | Cons | CS.UNSC | Val&Chs | SUB.C | Rd 02 |
| B3.33 14 19.01.141 |  | Spindle & Surface Box | 3d | 2026-10-07 | 2026-10-10 | B3.33 14 19.01.140 |  |  |  | 32.32d | 1.14d | Labor [31.18 h]; Foreman [15.59 h]; Plumber Helper [15.59 h]; Plumber [15.59 h]; Operator [31.18 h]; JCB [16 h]; TSE Gate V Dia. 100 mm [2.4] | 5,565.35 |  | 0.000998452702939785 | Cons. | Z4 | TSE | Cons | CS.UNSC | Val&Chs | SUB.C | Rd 02 |
|  | 2 | **Air Valves** |  | 2026-10-26 | 2026-12-09 |  |  |  |  |  |  |  |  |  |  |  |  |  |  |  |  |  |  |
|  | 4 | **Air valves on less than 315 mm. (In Chamber)** |  | 2026-10-26 | 2026-12-09 |  |  |  |  |  |  |  |  |  |  |  |  |  |  |  |  |  |  |
| B3.33 05 63.02.97 |  | Land Adjustment & Compaction | 3d | 2026-10-26 | 2026-10-28 | B4.33 14 13.01-0124_R |  |  |  | 35.32d | 0d | Labor [31.18 h]; Foreman [15.59 h]; Operator [62.37 h]; Surveyor [15.59 h]; Surveyor Helper [15.59 h]; Excavator (With Bucket) [16 h]; Water Tanker [16 h]; Dump Truck [16 h]; Plate Compactor [16 h]; TSE Air valve Dia. 50 mm on pipes with Dia. less than 315 mm [0.15] | 395.16 |  | 7.54399052530939E-005 | Cons. | Z4 | TSE | Cons | CS.UNSC | Val&Chs | SUB.C | Rd 02 |
| B3.33 05 63.02.95 |  | Foundations | 4d | 2026-10-29 | 2026-11-02 | B3.33 05 63.02.97 |  |  |  | 40.32d | 0d | Labor [46.78 h]; Foreman [23.39 h]; Laboratory Officer [23.39 h]; Carpenter [23.39 h]; Steelfixer [23.39 h]; Mason [23.39 h]; TSE Air valve Dia. 50 mm on pipes with Dia. less than 315 mm [0.1] | 276.61 |  | 5.28079336771659E-005 | Cons. | Z4 | TSE | Cons | CS.UNSC | Val&Chs | SUB.C | Rd 02 |
| B3.33 05 63.02.98 |  | Chambers Walls Conc Cast In Situ | 4d | 2026-11-03 | 2026-11-07 | B3.33 05 63.02.95 |  |  |  | 40.32d | 0d | Labor [46.78 h]; Foreman [23.39 h]; Laboratory Officer [23.39 h]; Carpenter [23.39 h]; Steelfixer [23.39 h]; Mason [23.39 h]; TSE Air valve Dia. 50 mm on pipes with Dia. less than 315 mm [0.1] | 276.61 |  | 5.28079336771659E-005 | Cons. | Z4 | TSE | Cons | CS.UNSC | Val&Chs | SUB.C | Rd 02 |
| B3.33 05 63.02.96 |  | Chamber Curing, Finishing & Steel Cover | 5d | 2026-11-08 | 2026-11-12 | B3.33 05 63.02.98 |  |  |  | 40.32d | 20d | Labor [62.37 h]; Mason [31.18 h]; TSE Air valve Dia. 50 mm on pipes with Dia. less than 315 mm [0.19] | 513.71 |  | 9.80718768290229E-005 | Cons. | Z4 | TSE | Cons | CS.UNSC | Val&Chs | SUB.C | Rd 02 |
| B3.33 05 63.02.99 |  | Valve & Fitting Installation | 3d | 2026-12-07 | 2026-12-09 | B3.33 05 63.02.96, B4.32 84 13.12, B3.33 05 63.02.94 |  |  |  | 20.32d | 0d | Labor [62.37 h]; Plumber Helper [31.18 h]; Plumber [31.18 h]; Operator [62.37 h]; Boom Truck [32 h]; TSE Air valve Dia. 50 mm on pipes with Dia. less than 315 mm [0.45] | 1,185.47 |  | 0.000226319715759282 | Cons. | Z4 | TSE | Cons | CS.UNSC | Val&Chs | SUB.C | Rd 02 |

| ID | WBS | Activity | Duration | Start | Finish | Predecessors | Total float | Free float | Resources | Cost | Weight % | DMM2 Weekly Progress | DMM2 Zones | Networks & Stations | DMM2 Phases | UNASCO | Networks Components | Subcontractors works | Dmm2 Roads | All Electrical Scope |
| --- | --- | --- | --- | --- | --- | --- | --- | --- | --- | --- | --- | --- | --- | --- | --- | --- | --- | --- | --- | --- |
|  | Washout Valves | **Washout Valves** |  | 2026-10-29 | 2026-11-22 |  |  |  |  |  |  |  |  |  |  |  |  |  |  |  |
|  | 4 | **Washout valves on 110-400 mm. (In Chamber)** |  | 2026-10-29 | 2026-11-22 |  |  |  |  |  |  |  |  |  |  |  |  |  |  |  |
| B3.33 05 63.01.72 |  | Land Adjustment & Compaction | 3d | 2026-10-29 | 2026-11-01 | B3.33 05 63.02.97 | 35.32d | 0d | Labor [31.18 h]; Foreman [15.59 h]; Operator [62.37 h]; Surveyor [15.59 h]; Surveyor Helper [15.59 h]; Excavator (With Bucket) [16 h]; Water Tanker [16 h]; Dump Truck [16 h]; Plate Compactor [16 h]; TSE Wash out valve Dia. 100 mm on pipes with Dia. 110-400 mm [0.15] | 550.28 | 0.000105445392007469 | Cons. | Z4 | TSE | Cons | CS.UNSC | Val&Chs | SUB.C | Rd 02 |  |
| B3.33 05 63.01.70 |  | Foundations | 4d | 2026-11-02 | 2026-11-05 | B3.33 05 63.01.72 | 35.32d | 0d | Labor [46.78 h]; Foreman [23.39 h]; Laboratory Officer [23.39 h]; Carpenter [23.39 h]; Steelfixer [23.39 h]; Mason [23.39 h]; TSE Wash out valve Dia. 100 mm on pipes with Dia. 110-400 mm [0.1] | 385.19 | 7.38117744052285E-005 | Cons. | Z4 | TSE | Cons | CS.UNSC | Val&Chs | SUB.C | Rd 02 |  |
| B3.33 05 63.01.73 |  | Chambers Walls Conc Cast In Situ | 4d | 2026-11-07 | 2026-11-10 | B3.33 05 63.01.70 | 35.32d | 0d | Labor [46.78 h]; Foreman [23.39 h]; Laboratory Officer [23.39 h]; Carpenter [23.39 h]; Steelfixer [23.39 h]; Mason [23.39 h]; TSE Wash out valve Dia. 100 mm on pipes with Dia. 110-400 mm [0.1] | 385.19 | 7.38117744052285E-005 | Cons. | Z4 | TSE | Cons | CS.UNSC | Val&Chs | SUB.C | Rd 02 |  |
| B3.33 05 63.01.71 |  | Chamber Curing, Finishing & Steel Cover | 5d | 2026-11-11 | 2026-11-16 | B3.33 05 63.01.73 | 35.32d | 0d | Labor [62.37 h]; Mason [31.18 h]; TSE Wash out valve Dia. 100 mm on pipes with Dia. 110-400 mm [0.19] | 715.36 | 0.000137079009609711 | Cons. | Z4 | TSE | Cons | CS.UNSC | Val&Chs | SUB.C | Rd 02 |  |
| B3.33 05 63.01.74 |  | Valve & Fitting Installation | 5d | 2026-11-17 | 2026-11-22 | B3.33 05 63.01.71 | 35.32d | 15d | Labor [62.37 h]; Plumber Helper [31.18 h]; Plumber [31.18 h]; Operator [62.37 h]; Boom Truck [32 h]; TSE Wash out valve Dia. 100 mm on pipes with Dia. 110-400 mm [0.45] | 1,650.83 | 0.000316336176022407 | Cons. | Z4 | TSE | Cons | CS.UNSC | Val&Chs | SUB.C | Rd 02 |  |
|  | Solenoid valves | **Solenoid valves** |  | 2026-11-23 | 2026-12-06 |  |  |  |  |  |  |  |  |  |  |  |  |  |  |  |
|  | Solenoid valve ?1.0 | **1 Solenoid valve ?1.0 inch with box** |  | 2026-11-23 | 2026-12-01 |  |  |  |  |  |  |  |  |  |  |  |  |  |  |  |
| B4.32 84 13.13 |  | Cable Laying Two-Wire Decoder (12 AWG) | 3d | 2026-11-23 | 2026-11-25 | B4.33 14 13.01-0116, B4.33 14 13.01-0118, DMM2-Proc-Delv-7556 | 20.32d | 0d | Labor [31.18 h]; Electrician [15.59 h]; Two wire decoder cable 12 awg [350] | 4,917.51 | 0.00279720557352336 | Cons. | Z4 | TSE | Cons | CS.UNSC | Val&Chs | SUB.C | Rd 02 |  |
| B4.32 84 13.14 |  | Solenoid Valve Box Installation | 3d | 2026-11-25 | 2026-11-28 | DMM2-Proc-Delv-5868, DMM2-Proc-Delv-4128 | 24.32d | 0d | Labor [31.18 h]; Plumber Helper [15.59 h]; Plumber [15.59 h]; Solenoid Valve box. 1 Solenoid valve Dia. 1 inch. [1.99] | 2,838.8 | 0.000272525309346853 | Cons. | Z4 | TSE | Cons | CS.UNSC | Val&Chs | SUB.C | Rd 02 |  |
| B4.32 84 13.49 |  | Pull Box Installation | 3d | 2026-11-28 | 2026-11-30 | B4.33 14 13.01-0118, DMM2-Proc-Delv-7555 | 22.32d | 0d | Labor [31.18 h]; Plumber Helper [15.59 h]; Plumber [15.59 h]; Pull Box - 600mm (L) X 600mm (W) [1.71] | 1,848.31 | 0.00108411197572214 | Cons. | Z4 | TSE | Cons | CS.UNSC | Val&Chs | SUB.C | Rd 02 |  |
| B4.32 84 13.15 |  | Bubblers Installation | 3d | 2026-11-29 | 2026-12-01 | B4.32 84 13.14, DMM2-Proc-Delv-7554 | 24.32d | 4d | Labor [31.18 h]; Plumber Helper [15.59 h]; Plumber [15.59 h]; Bubbler [67] | 2,706.13 | 0.00134020323979369 | Cons. | Z4 | TSE | Cons | CS.UNSC | Val&Chs | SUB.C | Rd 02 |  |
|  | Solenoid valve ?1.5 | **1 Solenoid valve ?1.5 inch with box** |  | 2026-11-26 | 2026-12-06 |  |  |  |  |  |  |  |  |  |  |  |  |  |  |  |
| B4.32 84 13.16 |  | Cable Laying Two-Wire Decoder (12 AWG) | 3d | 2026-11-26 | 2026-11-29 | B4.32 84 13.13, DMM2-Proc-Delv-7556 | 20.32d | 0d | Labor [31.18 h]; Electrician [15.59 h]; Two wire decoder cable 12 awg [350] | 4,917.51 | 0.00279720557352336 | Cons. | Z4 | TSE | Cons | CS.UNSC | Val&Chs | SUB.C | Rd 02 |  |
| B4.32 84 13.50 |  | Pull Box Installation | 3d | 2026-11-28 | 2026-11-30 | B4.32 84 13.49 SS, DMM2-Proc-Delv-7555 | 22.32d | 0d | Labor [31.18 h]; Plumber Helper [15.59 h]; Plumber [15.59 h]; Pull Box - 600mm (L) X 600mm (W) [1.71] | 1,848.31 | 0.00108411197572214 | Cons. | Z4 | TSE | Cons | CS.UNSC | Val&Chs | SUB.C | Rd 02 |  |
| B4.32 84 13.17 |  | Solenoid Valve Box Installation | 3d | 2026-11-30 | 2026-12-02 | B4.32 84 13.16, DMM2-Proc-Delv-5868, DMM2-Proc-Delv-4128 | 20.32d | 0d | Labor [31.18 h]; Plumber Helper [15.59 h]; Plumber [15.59 h]; Solenoid Valve box. 1 Solenoid valve Dia. 1.5 inch. [5.2] | 8,434.05 | 0.00105531822112046 | Cons. | Z4 | TSE | Cons | CS.UNSC | Val&Chs | SUB.C | Rd 02 |  |
| B4.32 84 13.18 |  | Bubblers Installation | 3d | 2026-12-03 | 2026-12-06 | B4.32 84 13.17, B4.32 84 13.21, DMM2-Proc-Delv-7554 SS | 20.32d | 0d | Labor [31.18 h]; Plumber Helper [15.59 h]; Plumber [15.59 h]; Bubbler [67] | 2,706.13 | 0.00134020323979369 | Cons. | Z4 | TSE | Cons | CS.UNSC | Val&Chs | SUB.C | Rd 02 |  |
|  | Solenoid valve ?2.0 | **1 Solenoid valve ?2.0 inch with box** |  | 2026-11-30 | 2026-12-06 |  |  |  |  |  |  |  |  |  |  |  |  |  |  |  |
| B4.32 84 13.03 |  | Solenoid Valve Box Installation | 3d | 2026-11-30 | 2026-12-02 | B4.32 84 13.10 FF, DMM2-Proc-Delv-5868, DMM2-Proc-Delv-4128 | 20.32d | 0d | Labor [31.18 h]; Plumber Helper [15.59 h]; Plumber [15.59 h]; Solenoid Valve box. 1 Solenoid valve Dia. 2.0inch. [2.82] | 5,875.71 | 0.000725772214791496 | Cons. | Z4 | TSE | Cons | CS.UNSC | Val&Chs | SUB.C | Rd 02 |  |
| B4.32 84 13.10 |  | Cable Laying Two-Wire Decoder (12 AWG) | 3d | 2026-11-30 | 2026-12-02 | B4.32 84 13.16, DMM2-Proc-Delv-7556 | 20.32d | 0d | Labor [31.18 h]; Electrician [15.59 h]; Two wire decoder cable 12 awg [350] | 4,917.51 | 0.00279720557352336 | Cons. | Z4 | TSE | Cons | CS.UNSC | Val&Chs | SUB.C | Rd 02 |  |
| B4.32 84 13.51 |  | Pull Box Installation | 3d | 2026-12-01 | 2026-12-03 | B4.32 84 13.50, DMM2-Proc-Delv-7555 | 22.32d | 2d | Labor [31.18 h]; Plumber Helper [15.59 h]; Plumber [15.59 h]; Pull Box - 600mm (L) X 600mm (W) [1.71] | 1,848.31 | 0.00108411197572214 | Cons. | Z4 | TSE | Cons | CS.UNSC | Val&Chs | SUB.C | Rd 02 |  |
| B4.32 84 13.12 |  | Bubblers Installation | 3d | 2026-12-03 | 2026-12-06 | B4.32 84 13.03, B4.32 84 13.18 SS, B4.32 84 13.15 SS, B4.32 84 13.51 SS, DMM2-Proc-Delv-7554 FF | 20.32d | 0d | Labor [31.18 h]; Plumber Helper [15.59 h]; Plumber [15.59 h]; Bubbler [67] | 2,706.13 | 0.00134020323979369 | Cons. | Z4 | TSE | Cons | CS.UNSC | Val&Chs | SUB.C | Rd 02 |  |
|  | Dry Networks | **Dry Networks** |  | 2026-09-07 | 2026-11-21 |  |  |  |  |  |  |  |  |  |  |  |  |  |  |  |
|  | MV Network | **Medium Voltage Network** |  | 2026-10-07 | 2026-11-08 |  |  |  |  |  |  |  |  |  |  |  |  |  |  |  |
|  | Duct Banks | **Duct Banks** |  | 2026-10-19 | 2026-11-08 |  |  |  |  |  |  |  |  |  |  |  |  |  |  |  |
|  | 4 Way | **2 Way** |  | 2026-10-19 | 2026-11-08 |  |  |  |  |  |  |  |  |  |  |  |  |  |  |  |
| B2.31 23 00.642 |  | Excavation | 4d | 2026-10-19 | 2026-10-22 | B3.33 14 13.02.25 | 62.32d | 0d | Labor [46.78 h]; Foreman [23.39 h]; Operator [46.78 h]; Surveyor [23.39 h]; Surveyor Helper [23.39 h]; Excavator (With Bucket) [24 h]; Water Tanker [24 h]; Dump Truck [24 h]; Plate Compactor [24 h]; Excavation for Trench size 40cm wide and 80cm deep (for 1 cable) [100]; Duct bank for MV cables UPVC (2xDia. 150mm) [17.08] | 8,056.11 | 0.00333826948299228 | Cons. | Z4 | MV | Cons |  | Cbl&Dct | SUB.C | Rd 02 | allElec |
| B2.33 71 00.292 |  | Shuttering, Steel Fixing Incl. UPVC Pipe & Conc. Cast | 7d | 2026-10-24 | 2026-10-31 | B2.31 23 00.642 | 62.32d | 0d | Labor [93.55 h]; Laboratory Officer [46.78 h]; Carpenter [46.78 h]; Steelfixer [46.78 h]; Mason [46.78 h]; Surveyor [46.78 h]; Surveyor Helper [46.78 h]; Excavation for Trench size 40cm wide and 80cm deep (for 1 cable) [300]; Duct bank for MV cables UPVC (2xDia. 150mm) [68.77] | 30,093.96 | 0.012263179393698 | Cons. | Z4 | MV | Cons |  | Cbl&Dct | SUB.C | Rd 02 | allElec |
| B2.33 71 00.293 |  | Backfilling & Warrning Tape | 7d | 2026-11-01 | 2026-11-08 | B2.33 71 00.292 | 62.32d | 0d | Labor [93.55 h]; Foreman [46.78 h]; Operator [187.11 h]; Surveyor [46.78 h]; Surveyor Helper [46.78 h]; Loader [48 h]; Water Tanker [48 h]; Dump Truck [48 h]; Plate Compactor [48 h]; Roller Compactor [48 h]; Excavation for Trench size 40cm wide and 80cm deep (for 1 cable) [100]; Duct bank for MV cables UPVC (2xDia. 150mm) [17.08] | 8,056.11 | 0.00333826948299228 | Cons. | Z4 | MV | Cons |  | Cbl&Dct | SUB.C | Rd 02 | allElec |

| ID | WBS | Activity | Duration | Start | Finish | Predecessors | Total float | Free float | Resources | Cost | Weight % | DMM2 Weekly Progress | DMM2 Zones | Networks & Stations | DMM2 Phases | Networks Components | All Electrical Scope | Subcontractors works | Dmm2 Roads |
| --- | --- | --- | --- | --- | --- | --- | --- | --- | --- | --- | --- | --- | --- | --- | --- | --- | --- | --- | --- |
|  | Cables | **Cables** |  | 2026-10-07 | 2026-10-18 |  |  |  |  |  |  |  |  |  |  |  |  |  |  |
|  | 3C,500mm2 | **3C,500mm2** |  | 2026-10-07 | 2026-10-18 |  |  |  |  |  |  |  |  |  |  |  |  |  |  |
| B2.33 71 49.23.89 |  | Cable 13.8 kV Unarmored | 4d | 2026-10-07 | 2026-10-11 | B4.33 14 13.01-0126 | 75.32d | 0d | Labor [46.78 h]; Foreman [23.39 h]; Operator [46.78 h]; Boom Truck [24 h]; Electrician [23.39 h]; Cable 13.8 kV 3Cx 500 mm² Al XLPE,/LLDPE / Unarmored [681.79] | 234,058.34 | 0.0447374191430308 | Cons. | Z4 | MV | Cons | Cbl&Dct | allElec | SUB.C | Rd 02 |
| B2.33 71 49.23.90 |  | Straight joints cables | 3d | 2026-10-12 | 2026-10-14 | B2.33 71 49.23.89 | 75.32d | 0d | Labor [31.18 h]; Foreman [15.59 h]; Electrician [15.59 h]; Straight joints cables for 13.8 kv 3Cx 500 mm², Al /XLPE/LLDPE [2] | 7,880.95 | 0.00396214380929156 | Cons. | Z4 | MV | Cons | Cbl&Dct | allElec | SUB.C | Rd 02 |
| B2.33 71 49.23.91 |  | Cable Termination | 3d | 2026-10-15 | 2026-10-18 | B2.33 71 49.23.90 | 75.32d | 0d | Labor [31.18 h]; Foreman [15.59 h]; Electrician [15.59 h]; Cable Termination for 13.8 kv 3Cx 500 mm², Al /XLPE/LLDPE [0.91] | 3,058.5 | 0.00153766139892947 | Cons. | Z4 | MV | Cons | Cbl&Dct | allElec | SUB.C | Rd 02 |
|  | LV Network | **Low Voltage Network** |  | 2026-11-07 | 2026-11-21 |  |  |  |  |  |  |  |  |  |  |  |  |  |  |
|  | Duct Banks | **Duct Banks** |  | 2026-11-09 | 2026-11-21 |  |  |  |  |  |  |  |  |  |  |  |  |  |  |
|  | 2 Way | **2 Way** |  | 2026-11-09 | 2026-11-17 |  |  |  |  |  |  |  |  |  |  |  |  |  |  |
| B2.33 71 00 02 145 |  | Excavation | 2d | 2026-11-09 | 2026-11-10 | B2.33 71 00.293 | 62.32d | 0d | Labor [31.18 h]; Foreman [15.59 h]; Operator [31.18 h]; Surveyor [15.59 h]; Surveyor Helper [15.59 h]; Excavator (With Bucket) [16 h]; Water Tanker [16 h]; Dump Truck [16 h]; Plate Compactor [16 h]; Excavation for Trench size 40cm wide and 65cm deep (for 1 cable); Duct bank for LV cables UPVC (2xDia. 110mm) [10]; SL LV Excavation for Trench size 40cm wide and 65cm deep (for 1 cable) | 2,755.67 | 0.00112258975602026 | Cons. | Z4 | LV | Cons | Cbl&Dct | allElec | SUB.C | Rd 02 |
| B2.33 71 00 02 146 |  | Shuttering, Steel Fixing Incl. UPVC Pipe & Conc. Cast | 3d | 2026-11-11 | 2026-11-14 | B2.33 71 00 02 145, B1.2.31 23 16.01.15 | 62.32d | 0d | Labor [62.37 h]; Laboratory Officer [31.18 h]; Carpenter [31.18 h]; Steelfixer [31.18 h]; Mason [31.18 h]; Surveyor [31.18 h]; Surveyor Helper [31.18 h]; Excavation for Trench size 40cm wide and 65cm deep (for 1 cable); Duct bank for LV cables UPVC (2xDia. 110mm) [30]; SL LV Excavation for Trench size 40cm wide and 65cm deep (for 1 cable) | 8,270.78 | 0.00336904054414932 | Cons. | Z4 | LV | Cons | Cbl&Dct | allElec | SUB.C | Rd 02 |
| B2.33 71 00 02 147 |  | Backfilling & Warrning Tape | 3d | 2026-11-15 | 2026-11-17 | B2.33 71 00 02 146 | 62.32d | 0d | Labor [62.37 h]; Foreman [31.18 h]; Operator [124.74 h]; Surveyor [31.18 h]; Surveyor Helper [31.18 h]; Loader [32 h]; Water Tanker [32 h]; Dump Truck [32 h]; Plate Compactor [32 h]; Roller Compactor [32 h]; Excavation for Trench size 40cm wide and 65cm deep (for 1 cable); Duct bank for LV cables UPVC (2xDia. 110mm) [10]; SL LV Excavation for Trench size 40cm wide and 65cm deep (for 1 cable) | 2,755.67 | 0.00112258975602026 | Cons. | Z4 | LV | Cons | Cbl&Dct | allElec | SUB.C | Rd 02 |
|  | 4 Way | **4 Way** |  | 2026-11-11 | 2026-11-19 |  |  |  |  |  |  |  |  |  |  |  |  |  |  |
| B2.33 71 00 02 151 |  | Excavation | 3d | 2026-11-11 | 2026-11-14 | B2.33 71 00 02 145 | 65.32d | 0d | Labor [46.78 h]; Foreman [23.39 h]; Operator [46.78 h]; Surveyor [23.39 h]; Surveyor Helper [23.39 h]; Excavator (With Bucket) [24 h]; Water Tanker [24 h]; Dump Truck [24 h]; Plate Compactor [24 h]; Excavation for Trench size 60cm wide and 65cm deep ( for 2 cables); Duct bank for LV cables UPVC (4xDia. 110mm) [12.4]; SL LV Excavation for Trench size 60cm wide and 65cm deep ( for 2 cables) | 5,225.87 | 0.00384843522581632 | Cons. | Z4 | LV | Cons | Cbl&Dct | allElec | SUB.C | Rd 02 |
| B2.33 71 00 02 152 |  | Shuttering, Steel Fixing Incl. UPVC Pipe & Conc. Cast | 2d | 2026-11-15 | 2026-11-16 | B2.33 71 00 02 151 | 66.32d | 0d | Labor [77.96 h]; Laboratory Officer [38.98 h]; Carpenter [38.98 h]; Steelfixer [38.98 h]; Mason [38.98 h]; Surveyor [38.98 h]; Surveyor Helper [38.98 h]; Excavation for Trench size 60cm wide and 65cm deep ( for 2 cables); Duct bank for LV cables UPVC (4xDia. 110mm) [37.2]; SL LV Excavation for Trench size 60cm wide and 65cm deep ( for 2 cables) | 15,677.61 | 0.011545305677449 | Cons. | Z4 | LV | Cons | Cbl&Dct | allElec | SUB.C | Rd 02 |
| B2.33 71 00 02 153 |  | Backfilling & Warrning Tape | 3d | 2026-11-17 | 2026-11-19 | B2.33 71 00 02 152, B2.33 71 00 02 98 | 66.32d | 4d | Labor [77.96 h]; Foreman [38.98 h]; Operator [155.92 h]; Surveyor [38.98 h]; Surveyor Helper [38.98 h]; Loader [40 h]; Water Tanker [40 h]; Dump Truck [40 h]; Plate Compactor [40 h]; Roller Compactor [40 h]; Excavation for Trench size 60cm wide and 65cm deep ( for 2 cables); Duct bank for LV cables UPVC (4xDia. 110mm) [12.4]; SL LV Excavation for Trench size 60cm wide and 65cm deep ( for 2 cables) | 5,225.87 | 0.00384843522581632 | Cons. | Z4 | LV | Cons | Cbl&Dct | allElec | SUB.C | Rd 02 |
|  | 6 Way | **6 Way** |  | 2026-11-11 | 2026-11-21 |  |  |  |  |  |  |  |  |  |  |  |  |  |  |
| B2.33 71 00 02 148 |  | Excavation | 3d | 2026-11-11 | 2026-11-14 | B2.33 71 00 02 151 SS | 65.32d | 0d | Labor [46.78 h]; Foreman [23.39 h]; Operator [46.78 h]; Surveyor [23.39 h]; Surveyor Helper [23.39 h]; Excavator (With Bucket) [24 h]; Water Tanker [24 h]; Dump Truck [24 h]; Plate Compactor [24 h]; Excavation for Trench size 90cm wide and 65cm deep ( for 3 cables); Duct bank for LV cables UPVC (6xDia. 110mm) [5]; SL LV Excavation for Trench size 90cm wide and 65cm deep ( for 3 cables) | 2,844.71 | 0.00162137899963146 | Cons. | Z4 | LV | Cons | Cbl&Dct | allElec | SUB.C | Rd 02 |
| B2.33 71 00 02 149 |  | Shuttering, Steel Fixing Incl. UPVC Pipe & Conc. Cast | 3d | 2026-11-15 | 2026-11-17 | B2.33 71 00 02 148 | 65.32d | 0d | Labor [93.55 h]; Laboratory Officer [46.78 h]; Carpenter [46.78 h]; Steelfixer [46.78 h]; Mason [46.78 h]; Surveyor [46.78 h]; Surveyor Helper [46.78 h]; Excavation for Trench size 90cm wide and 65cm deep ( for 3 cables); Duct bank for LV cables UPVC (6xDia. 110mm) [15]; SL LV Excavation for Trench size 90cm wide and 65cm deep ( for 3 cables) | 8,534.12 | 0.00486436653485481 | Cons. | Z4 | LV | Cons | Cbl&Dct | allElec | SUB.C | Rd 02 |
| B2.33 71 00 02 150 |  | Backfilling & Warrning Tape | 3d | 2026-11-18 | 2026-11-21 | B2.33 71 00 02 149, B2.33 71 00 02 98 | 65.32d | 3d | Labor [77.96 h]; Foreman [38.98 h]; Operator [155.92 h]; Surveyor [38.98 h]; Surveyor Helper [38.98 h]; Loader [40 h]; Water Tanker [40 h]; Dump Truck [40 h]; Plate Compactor [40 h]; Roller Compactor [40 h]; Excavation for Trench size 90cm wide and 65cm deep ( for 3 cables); Duct bank for LV cables UPVC (6xDia. 110mm) [5]; SL LV Excavation for Trench size 90cm wide and 65cm deep ( for 3 cables) | 2,844.71 | 0.00162137899963146 | Cons. | Z4 | LV | Cons | Cbl&Dct | allElec | SUB.C | Rd 02 |
|  | Cables | **Cables** |  | 2026-11-07 | 2026-11-08 |  |  |  |  |  |  |  |  |  |  |  |  |  |  |
|  | 4C,10+1C,10mm2 | **4C,10+1C,10mm2** |  | 2026-11-07 | 2026-11-08 |  |  |  |  |  |  |  |  |  |  |  |  |  |  |
| B2.33 71 00 01 19 |  | Cable Pulling | 2d | 2026-11-07 | 2026-11-08 | B2.33 71 00 01 16 | 4.32d | 0d | Labor [46.78 h]; Foreman [23.39 h]; Surveyor [23.39 h]; Surveyor Helper [23.39 h]; Electrician [23.39 h]; Cable, Copper 4x10mm2/ CU/XLPE/SWA/PVC + 1x10mm2 CU/PVC [1535.55] | 95,723.28 | 0.0182956258973869 | Cons. | Z4 | LV | Cons | Cbl&Dct | allElec | SUB.C | Rd 02 |
|  | 4C,50+1C,25mm2 | **4C,50+1C,25mm2** |  | 2026-11-07 | 2026-11-08 |  |  |  |  |  |  |  |  |  |  |  |  |  |  |
| B2.33 71 00 01 20 |  | Cable Pulling | 2d | 2026-11-07 | 2026-11-08 | B2.33 71 00 01 19 SS, DMM2-Proc-Delv-6478, B2.33 71 26 31 | 4.32d | 0d | Labor [46.78 h]; Foreman [23.39 h]; Surveyor [23.39 h]; Surveyor Helper [23.39 h]; Electrician [23.39 h]; Cable, Copper 4x50mm2/ CU/XLPE/PVC +1x25mm2 CU/PVC [137.49] | 25,833.3 | 0.00493828300375468 | Cons. | Z4 | LV | Cons | Cbl&Dct | allElec | SUB.C | Rd 02 |

| ID | WBS | Activity | Duration | Start | Finish | Predecessors | Complete | Total float | Free float | Resources | Cost | Actual cost | Weight % | DMM2 Weekly Progress | DMM2 Zones | Networks & Stations | DMM2 Phases | Networks Components | All Electrical Scope | Subcontractors works | Dmm2 Roads |
| --- | --- | --- | --- | --- | --- | --- | --- | --- | --- | --- | --- | --- | --- | --- | --- | --- | --- | --- | --- | --- | --- |
|  | Street Lighting | **Street Lighting** |  | 2026-09-10 | 2026-11-14 |  |  |  |  |  |  |  |  |  |  |  |  |  |  |  |  |
|  | Duct Banks | **Duct Banks** |  | 2026-10-15 | 2026-10-21 |  |  |  |  |  |  |  |  |  |  |  |  |  |  |  |  |
|  | 4 Way | **4 Way** |  | 2026-10-15 | 2026-10-21 |  |  |  |  |  |  |  |  |  |  |  |  |  |  |  |  |
| B2.33 71 00 02 79 |  | Excavation | 2d | 2026-10-15 | 2026-10-17 | B2.33 71 00 02 88 |  | 30.32d | 0d | Labor [31.18 h]; Foreman [15.59 h]; Operator [31.18 h]; Surveyor [15.59 h]; Surveyor Helper [15.59 h]; Excavator (With Bucket) [16 h]; Water Tanker [16 h]; Dump Truck [16 h]; Plate Compactor [16 h]; SL Excavation for Trench size 60cm wide and 65cm deep ( for 2 cables); Road Crossing Duct for Street Lighting cables UPVC (4xDia. 110mm) [8.92] | 3,759.25 |  | 0.00153753780264308 | Cons. | Z4 | SL | Cons | Cables | allElec | SUB.C | Rd 02 |
| B2.33 71 00 02 80 |  | Shuttering, Steel Fixing Incl. UPVC Pipe & Conc. Cast | 2d | 2026-10-18 | 2026-10-19 | B2.33 71 00 02 79 |  | 32.32d | 0d | Labor [46.78 h]; Laboratory Officer [23.39 h]; Carpenter [23.39 h]; Steelfixer [23.39 h]; Mason [23.39 h]; Surveyor [23.39 h]; Surveyor Helper [23.39 h]; SL Excavation for Trench size 60cm wide and 65cm deep ( for 2 cables); Road Crossing Duct for Street Lighting cables UPVC (4xDia. 110mm) [26.76] | 11,277.76 |  | 0.00461261340792926 | Cons. | Z4 | SL | Cons | Cables | allElec | SUB.C | Rd 02 |
| B2.33 71 00 02 81 |  | Backfilling & Warrning Tape | 2d | 2026-10-20 | 2026-10-21 | B2.33 71 00 02 80 |  | 32.32d | 2d | Labor [46.78 h]; Foreman [23.39 h]; Operator [93.55 h]; Surveyor [23.39 h]; Surveyor Helper [23.39 h]; Loader [24 h]; Water Tanker [24 h]; Dump Truck [24 h]; Plate Compactor [24 h]; Roller Compactor [24 h]; SL Excavation for Trench size 60cm wide and 65cm deep ( for 2 cables); Road Crossing Duct for Street Lighting cables UPVC (4xDia. 110mm) [8.92] | 3,759.25 |  | 0.00153753780264308 | Cons. | Z4 | SL | Cons | Cables | allElec | SUB.C | Rd 02 |
|  | Drawpits | **Drawpits** |  | 2026-10-18 | 2026-10-24 |  |  |  |  |  |  |  |  |  |  |  |  |  |  |  |  |
| B2.33 71 00 02 82 |  | Excavation | 2d | 2026-10-18 | 2026-10-19 | B2.33 71 00 02 79 |  | 30.32d | 0d | Labor [46.78 h]; Foreman [23.39 h]; Operator [46.78 h]; Surveyor [23.39 h]; Surveyor Helper [23.39 h]; Excavator (With Bucket) [24 h]; Water Tanker [24 h]; Dump Truck [24 h]; Plate Compactor [24 h]; Drawpit with medium duty steel cover, size600x600x900mm, [2.43] | 14,384.57 |  | 0.0025348715507172 | Cons. | Z4 | SL | Cons | Cables | allElec | SUB.C | Rd 02 |
| B2.33 71 00 02 83 |  | Drawpits Installation | 2d | 2026-10-20 | 2026-10-21 | B2.33 71 00 02 82 |  | 30.32d | 0d | Labor [62.37 h]; Laboratory Officer [31.18 h]; Carpenter [31.18 h]; Steelfixer [31.18 h]; Mason [31.18 h]; Surveyor [31.18 h]; Surveyor Helper [31.18 h]; Drawpit with medium duty steel cover, size600x600x900mm, [7.28] | 43,153.72 |  | 0.0076046146521516 | Cons. | Z4 | SL | Cons | Cables | allElec | SUB.C | Rd 02 |
| B2.33 71 00 02 84 |  | Backfilling & Warrning Tape | 2d | 2026-10-22 | 2026-10-24 | B2.33 71 00 02 83 |  | 30.32d | 0d | Labor [62.37 h]; Foreman [31.18 h]; Operator [124.74 h]; Surveyor [31.18 h]; Surveyor Helper [31.18 h]; Loader [32 h]; Water Tanker [32 h]; Dump Truck [32 h]; Plate Compactor [32 h]; Roller Compactor [32 h]; Drawpit with medium duty steel cover, size600x600x900mm, [2.43] | 14,384.57 |  | 0.0025348715507172 | Cons. | Z4 | SL | Cons | Cables | allElec | SUB.C | Rd 02 |
|  | Cables | **Cables** |  | 2026-11-04 | 2026-11-11 |  |  |  |  |  |  |  |  |  |  |  |  |  |  |  |  |
|  | 4C,10+1C,10mm2 | **4C,10+1C,10mm2** |  | 2026-11-04 | 2026-11-11 |  |  |  |  |  |  |  |  |  |  |  |  |  |  |  |  |
| B2.33 71 19 202 |  | Land Adjustment | 2d | 2026-11-04 | 2026-11-07 | B2.33 71 00 02 82, B2.33 71 19 50 |  | 39.68d | 0d | Labor [46.78 h]; Foreman [23.39 h]; Operator [31.18 h]; Surveyor [7.8 h]; Surveyor Helper [7.8 h]; Excavator (With Bucket) [24 h]; Water Tanker [24 h]; Dump Truck [24 h]; Roller Compactor [24 h]; SL Cable, Copper 4x10mm2/ CU/XLPE/SWA/PVC + 1x10mm2 CU/PVC [416.5] | 25,963.96 |  | 0.00496258855349975 | Cons. | Z4 | SL | Cons | Cables | allElec | SUB.C | Rd 02 |
| B2.33 71 49.23.182 |  | Cable Pulling | 2d | 2026-11-07 | 2026-11-09 | B2.33 71 19 202, DMM2-Proc-Delv-6528 |  | 39.68d | 0d | Labor [77.96 h]; Foreman [38.98 h]; Surveyor [38.98 h]; Surveyor Helper [38.98 h]; Electrician [38.98 h]; SL Cable, Copper 4x10mm2/ CU/XLPE/SWA/PVC + 1x10mm2 CU/PVC [1249.49] | 77,890.96 |  | 0.0148875878281853 | Cons. | Z4 | SL | Cons | Cables | allElec | SUB.C | Rd 02 |
| B2.33 71 19 212 |  | Backfilling | 2d | 2026-11-09 | 2026-11-11 | B2.33 71 49.23.182, B2.33 71 16.035, B2.33 71 19 49, B2.33 71 19 52, B2.33 71 16.102 |  | 41.68d | 26.36d | Labor [93.55 h]; Foreman [46.78 h]; Operator [93.55 h]; Surveyor [46.78 h]; Surveyor Helper [46.78 h]; Loader [48 h]; Water Tanker [48 h]; Dump Truck [48 h]; Plate Compactor [48 h]; SL Cable, Copper 4x10mm2/ CU/XLPE/SWA/PVC + 1x10mm2 CU/PVC [416.5] | 25,963.96 |  | 0.00496258855349975 | Cons. | Z4 | SL | Cons | Cables | allElec | SUB.C | Rd 02 |
|  | SL Poles | **SL Poles** |  | 2026-09-10 | 2026-10-15 |  |  |  |  |  |  |  |  |  |  |  |  |  |  |  |  |
|  | Pole (10 M Sngl Arm) | **Pole (10 M Single Arm)** |  | 2026-09-10 | 2026-10-15 |  |  |  |  |  |  |  |  |  |  |  |  |  |  |  |  |
| B2.33 71 16.91 |  | Excavation (50.00% Completed) | 4.68d | 2026-09-10 A | 2026-09-15 A | B3.1. 33 14 13-027 | 100% |  |  | Labor [23.39 h]; Foreman [11.69 h]; Operator [23.39 h]; Surveyor [11.69 h]; Surveyor Helper [11.69 h]; Excavator (With Bucket) [12 h]; Dump Truck [12 h]; Lighting poles with 1 arm, height of ( 10) meters [3.3] | 29,449.25 | 29,449.25 | 0.0112471278804954 | Cons. | Z4 | SL | Cons | Pls&Lmn | allElec | SUB.C | Rd 02 |
| B2.33 71 16.92 |  | PC & RC Foundation (50.00% Completed) | 3.68d | 2026-09-12 A | 2026-09-15 A | B2.33 71 16.91 FF | 100% |  |  | Labor [38.98 h]; Foreman [19.49 h]; Laboratory Officer [19.49 h]; Carpenter [19.49 h]; Steelfixer [19.49 h]; Mason [19.49 h]; Lighting poles with 1 arm, height of ( 10) meters [3.3] | 29,449.25 | 29,449.25 | 0.0112471278804954 | Cons. | Z4 | SL | Cons | Pls&Lmn | allElec | SUB.C | Rd 02 |
| B2.33 71 16.93 |  | Lighting Poles Installation Incl power box, Cables (50.00% Completed) | 2.68d | 2026-09-13 A | 2026-09-15 A | B2.33 71 16.92 FF | 100% |  |  | Labor [46.78 h]; Operator [46.78 h]; Mobile Crane [24 h]; Electrician [23.39 h]; Lighting poles with 1 arm, height of ( 10) meters [6.6] | 58,898.5 | 58,898.5 | 0.0224942557609906 | Cons. | Z4 | SL | Cons | Pls&Lmn | allElec | SUB.C | Rd 02 |
| B2.26.56.19.16 |  | Lighting Luminares Inst (50.00% Completed) | 1.68d | 2026-09-14 A | 2026-09-15 A | B2.33 71 16.93 FF | 100% |  |  | Labor [31.18 h]; Operator [31.18 h]; Manlift [16 h]; Street Lighting( LED), Lamp Lumen: 14560, Luminare Lumen:12700 , complete with control gear and lamp, (80) WATT. [18] | 16,689.02 | 16,689.02 | 0.0047113256383061 | Cons. | Z4 | SL | Cons | Pls&Lmn | allElec | SUB.C | Rd 02 |
| B2.33 71 16.91_R |  | Excavation(Rem) | 2d | 2026-10-07 | 2026-10-08 | B2.33 71 16.91 |  | 44.32d | 0d | Labor [23.39 h]; Foreman [11.69 h]; Operator [23.39 h]; Surveyor [11.69 h]; Surveyor Helper [11.69 h]; Excavator (With Bucket) [12 h]; Dump Truck [12 h]; Lighting poles with 1 arm, height of ( 10) meters [3.3] | 29,449.25 |  | 0.0112471278804954 | Cons. | Z4 | SL | Cons | Pls&Lmn | allElec | SUB.C | Rd 02 |
| B2.33 71 16.92_R |  | PC & RC Foundation(Rem) | 2d | 2026-10-10 | 2026-10-11 | B2.33 71 16.91_R, B2.33 71 16.92 |  | 44.32d | 0d | Labor [38.98 h]; Foreman [19.49 h]; Laboratory Officer [19.49 h]; Carpenter [19.49 h]; Steelfixer [19.49 h]; Mason [19.49 h]; Lighting poles with 1 arm, height of ( 10) meters [3.3] | 29,449.25 |  | 0.0112471278804954 | Cons. | Z4 | SL | Cons | Pls&Lmn | allElec | SUB.C | Rd 02 |
| B2.33 71 16.93_R |  | Lighting Poles Installation Incl power box, Cables(Rem) | 2d | 2026-10-10 | 2026-10-11 | B2.33 71 16.92_R FF, B2.33 71 16.93 |  | 44.32d | 0d | Labor [46.78 h]; Operator [46.78 h]; Mobile Crane [24 h]; Electrician [23.39 h]; Lighting poles with 1 arm, height of ( 10) meters [6.6] | 58,898.5 |  | 0.0224942557609906 | Cons. | Z4 | SL | Cons | Pls&Lmn | allElec | SUB.C | Rd 02 |
| B2.26.56.19.16_R |  | Lighting Luminares Inst(Rem) | 2d | 2026-10-12 | 2026-10-13 | B2.33 71 16.93_R, B2.26.56.19.16 |  | 58.32d | 0d | Labor [31.18 h]; Operator [31.18 h]; Manlift [16 h]; Street Lighting( LED), Lamp Lumen: 14560, Luminare Lumen:12700 , complete with control gear and lamp, (80) WATT. [18] | 16,689.02 |  | 0.0047113256383061 | Cons. | Z4 | SL | Cons | Pls&Lmn | allElec | SUB.C | Rd 02 |
| B2.33 71 16.94 |  | Backfilling, Grouting & Chamfering | 2d | 2026-10-14 | 2026-10-15 | B2.26.56.19.16_R |  | 58.32d | 12.64d | Labor [93.55 h]; Foreman [46.78 h]; Mason [46.78 h]; Operator [93.55 h]; Surveyor [46.78 h]; Surveyor Helper [46.78 h]; Loader [48 h]; Water Tanker [48 h]; Dump Truck [48 h]; Plate Compactor [48 h]; Lighting poles with 1 arm, height of ( 10) meters [6.6] | 58,898.5 |  | 0.0112471278804954 | Cons. | Z4 | SL | Cons | Pls&Lmn | allElec | SUB.C | Rd 02 |

| ID | WBS | Activity | Duration | Start | Finish | Predecessors | Complete | Total float | Free float | Resources | Cost | Actual cost | Weight % | DMM2 Weekly Progress | DMM2 Zones | Networks & Stations | DMM2 Phases | Subcontractors works | Dmm2 Roads | Networks Components | All Electrical Scope |
| --- | --- | --- | --- | --- | --- | --- | --- | --- | --- | --- | --- | --- | --- | --- | --- | --- | --- | --- | --- | --- | --- |
|  | SL Pillars | **SL Pillars** |  | 2026-11-09 | 2026-11-14 |  |  |  |  |  |  |  |  |  |  |  |  |  |  |  |  |
| B2.33 71 26 034 |  | Pillars Installation (Internal Wiring) | 2d | 2026-11-09 | 2026-11-11 | B2.33 71 16.93_R, B2.33 71 49.23.182 |  | 39.68d | 0d | Labor [62.37 h]; Foreman [31.18 h]; Electrician [31.18 h]; Street Lighting Feeder pillars, work shall include earthing for the lighting pillars. [1] | 16,342.35 |  | 0.00307259119104481 | Cons. | Z4 | SL | Cons | SUB.C | Rd 02 |  |  |
| B2.33 71 26 045 |  | KWH meter mounting a frame installation | 2d | 2026-11-11 | 2026-11-14 | B2.33 71 26 034 |  | 39.68d | 24.36d | Labor [46.78 h]; Mason [23.39 h]; Operator [46.78 h]; Boom Truck [24 h]; Supply and installation of KWH meter mounting a frame only [3] | 26,076.67 |  | 0.00437001155436564 | Cons. | Z4 | SL | Cons | SUB.C | Rd 02 |  |  |
|  | Earthing | **Earthing** |  | 2026-10-15 | 2026-10-24 |  |  |  |  |  |  |  |  |  |  |  |  |  |  |  |  |
| B2.33 71 19 44 |  | Land Adjustment | 2d | 2026-10-15 | 2026-10-17 | B2.33 71 16.93_R, B2.33 71 00 02 88 |  | 41.32d | 0d | Labor [46.78 h]; Foreman [23.39 h]; Operator [31.18 h]; Surveyor [7.8 h]; Surveyor Helper [7.8 h]; Excavator (With Bucket) [24 h]; Water Tanker [24 h]; Dump Truck [24 h]; Roller Compactor [24 h]; SL Earthing Including lighting poles circuits [0.45] | 904.39 |  | 0.000454679838542865 | Cons. | Z4 | SL | Cons | SUB.C | Rd 02 | Cables | allElec |
| B2.33 71 19 45 |  | Earth Rods & Conduits | 2d | 2026-10-18 | 2026-10-19 | B2.33 71 19 44 |  | 41.32d | 1.64d | Labor [46.78 h]; Foreman [23.39 h]; Electrician [23.39 h]; SL Earthing Including lighting poles circuits [1.33] | 2,672.96 |  | 0.00134383152280447 | Cons. | Z4 | SL | Cons | SUB.C | Rd 02 | Cables | allElec |
| B2.33 71 19 46 |  | Backfilling | 2d | 2026-10-21 | 2026-10-24 | B2.33 71 19 45, B2.33 71 19 19, B2.33 71 00 02 90 |  | 39.68d | 0d | Labor [46.78 h]; Foreman [23.39 h]; Operator [46.78 h]; Surveyor [23.39 h]; Surveyor Helper [23.39 h]; Loader [24 h]; Water Tanker [24 h]; Dump Truck [24 h]; Plate Compactor [24 h]; SL Earthing Including lighting poles circuits [0.45] | 904.39 |  | 0.000454679838542865 | Cons. | Z4 | SL | Cons | SUB.C | Rd 02 | Cables | allElec |
|  | Telecommunication | **Telecommunication Network** |  | 2026-09-07 | 2026-10-26 |  |  |  |  |  |  |  |  |  |  |  |  |  |  |  |  |
|  | Ducts | **Ducts** |  | 2026-09-10 | 2026-10-25 |  |  |  |  |  |  |  |  |  |  |  |  |  |  |  |  |
|  | (6*50mm) | **Size (6*50mm) HDPE ducts** |  | 2026-09-13 | 2026-10-25 |  |  |  |  |  |  |  |  |  |  |  |  |  |  |  |  |
| B2.1.33 81 26.162 |  | Excavation (45.00% Completed) | 3d | 2026-09-13 A | 2026-09-15 A | B2.33 71 16.91 | 100% |  |  | Labor [14.03 h]; Foreman [7.02 h]; Operator [14.03 h]; Surveyor [7.02 h]; Surveyor Helper [7.02 h]; Excavator (With Bucket) [7.2 h]; Water Tanker [7.2 h]; Dump Truck [7.2 h]; Plate Compactor [7.2 h]; (6*50mm) HDPE ducts [56.62] | 15,957.16 | 15,957.16 | 0.00690393952512995 | Cons. | Z4 | Telecom | Cons | SUB.C | Rd 02 | DCT&MNH | allElec |
| B2.1.33 81 26.164 |  | Backfilling & Warrning Tape (45.00% Completed) | 2d | 2026-09-14 A | 2026-09-15 A | B2.1.33 81 26.163 FF | 100% |  |  | Labor [42.1 h]; Foreman [21.05 h]; Operator [84.2 h]; Surveyor [21.05 h]; Surveyor Helper [21.05 h]; Loader [21.6 h]; Water Tanker [21.6 h]; Dump Truck [21.6 h]; Plate Compactor [21.6 h]; Roller Compactor [21.6 h]; (6*50mm) HDPE ducts [56.62] | 15,957.16 | 15,957.16 | 0.00690393952512995 | Cons. | Z4 | Telecom | Cons | SUB.C | Rd 02 | DCT&MNH | allElec |
| B2.1.33 81 26.163 |  | HDPE Pipe, Shuttering, Steel Fixing & Conc. Cast (45.00% Completed) | 1d | 2026-09-15 A | 2026-09-15 A | B2.1.33 81 26.162 FF | 100% |  |  | Labor [49.12 h]; Laboratory Officer [24.56 h]; Carpenter [24.56 h]; Steelfixer [24.56 h]; Mason [24.56 h]; Surveyor [24.56 h]; Surveyor Helper [24.56 h]; (6*50mm) HDPE ducts [169.85] | 47,871.47 | 47,871.47 | 0.0207118185753898 | Cons. | Z4 | Telecom | Cons | SUB.C | Rd 02 | DCT&MNH | allElec |
| B2.1.33 81 26.162_R |  | Excavation(Rem) | 1d | 2026-10-25 | 2026-10-25 | B2.33 71 00 02 84, B2.33 71 00 02 81, B2.1.33 81 26.162 |  | 30.32d | 0d | Labor [17.15 h]; Foreman [8.58 h]; Operator [17.15 h]; Surveyor [8.58 h]; Surveyor Helper [8.58 h]; Excavator (With Bucket) [8.8 h]; Water Tanker [8.8 h]; Dump Truck [8.8 h]; Plate Compactor [8.8 h]; (6*50mm) HDPE ducts [69.2] | 19,503.19 |  | 0.00690393952512995 | Cons. | Z4 | Telecom | Cons | SUB.C | Rd 02 | DCT&MNH | allElec |
| B2.1.33 81 26.163_R |  | HDPE Pipe, Shuttering, Steel Fixing & Conc. Cast(Rem) | 1d | 2026-10-25 | 2026-10-25 | B2.1.33 81 26.162_R FF, B2.1.33 81 26.163 |  | 52.32d | 0d | Labor [60.03 h]; Laboratory Officer [30.02 h]; Carpenter [30.02 h]; Steelfixer [30.02 h]; Mason [30.02 h]; Surveyor [30.02 h]; Surveyor Helper [30.02 h]; (6*50mm) HDPE ducts [207.6] | 58,509.57 |  | 0.0207118185753898 | Cons. | Z4 | Telecom | Cons | SUB.C | Rd 02 | DCT&MNH | allElec |
| B2.1.33 81 26.164_R |  | Backfilling & Warrning Tape(Rem) | 1d | 2026-10-25 | 2026-10-25 | B2.1.33 81 26.163_R FF, B2.1.33 81 26.164 |  | 52.32d | 0d | Labor [51.45 h]; Foreman [25.73 h]; Operator [102.91 h]; Surveyor [25.73 h]; Surveyor Helper [25.73 h]; Loader [26.4 h]; Water Tanker [26.4 h]; Dump Truck [26.4 h]; Plate Compactor [26.4 h]; Roller Compactor [26.4 h]; (6*50mm) HDPE ducts [69.2] | 19,503.19 |  | 0.00690393952512995 | Cons. | Z4 | Telecom | Cons | SUB.C | Rd 02 | DCT&MNH | allElec |
|  | (6*50mm+2*32mm) | **Size (6*50mm+2*32mm) HDPE ducts** |  | 2026-09-13 | 2026-10-25 |  |  |  |  |  |  |  |  |  |  |  |  |  |  |  |  |
| B2.1.33 81 26.166 |  | HDPE Pipe, Shuttering, Steel Fixing & Conc. Cast (45.00% Completed) | 3d | 2026-09-13 A | 2026-09-15 A | B2.1.33 81 26.165 FF | 100% |  |  | Labor [21.05 h]; Laboratory Officer [10.52 h]; Carpenter [10.52 h]; Steelfixer [10.52 h]; Mason [10.52 h]; Surveyor [10.52 h]; Surveyor Helper [10.52 h]; (6*50mm+2*32mm) HDPE ducts [65.47] | 28,684.26 | 28,684.26 | 0.00731057705386804 | Cons. | Z4 | Telecom | Cons | SUB.C | Rd 02 | DCT&MNH | allElec |
| B2.1.33 81 26.167 |  | Backfilling & Warrning Tape (45.00% Completed) | 2d | 2026-09-14 A | 2026-09-15 A | B2.1.33 81 26.166 FF | 100% |  |  | Labor [21.05 h]; Foreman [10.52 h]; Operator [42.1 h]; Surveyor [10.52 h]; Surveyor Helper [10.52 h]; Loader [10.8 h]; Water Tanker [10.8 h]; Dump Truck [10.8 h]; Plate Compactor [10.8 h]; Roller Compactor [10.8 h]; (6*50mm+2*32mm) HDPE ducts [21.83] | 9,563.05 | 9,563.05 | 0.00243727564627162 | Cons. | Z4 | Telecom | Cons | SUB.C | Rd 02 | DCT&MNH | allElec |
| B2.1.33 81 26.165 |  | Excavation (45.00% Completed) | 1d | 2026-09-15 A | 2026-09-15 A | B2.1.33 81 26.162 FF | 100% |  |  | Labor [14.03 h]; Foreman [7.02 h]; Operator [14.03 h]; Surveyor [7.02 h]; Surveyor Helper [7.02 h]; Excavator (With Bucket) [7.2 h]; Water Tanker [7.2 h]; Dump Truck [7.2 h]; Plate Compactor [7.2 h]; (6*50mm+2*32mm) HDPE ducts [21.83] | 9,563.05 | 9,563.05 | 0.00243727564627162 | Cons. | Z4 | Telecom | Cons | SUB.C | Rd 02 | DCT&MNH | allElec |
| B2.1.33 81 26.165_R |  | Excavation(Rem) | 1d | 2026-10-25 | 2026-10-25 | B2.1.33 81 26.162_R FF, B2.1.33 81 26.165 |  | 39.32d | 0d | Labor [17.15 h]; Foreman [8.58 h]; Operator [17.15 h]; Surveyor [8.58 h]; Surveyor Helper [8.58 h]; Excavator (With Bucket) [8.8 h]; Water Tanker [8.8 h]; Dump Truck [8.8 h]; Plate Compactor [8.8 h]; (6*50mm+2*32mm) HDPE ducts [26.68] | 11,688.18 |  | 0.00243727564627162 | Cons. | Z4 | Telecom | Cons | SUB.C | Rd 02 | DCT&MNH | allElec |
| B2.1.33 81 26.166_R |  | HDPE Pipe, Shuttering, Steel Fixing & Conc. Cast(Rem) | 1d | 2026-10-25 | 2026-10-25 | B2.1.33 81 26.165_R FF, B2.1.33 81 26.166 |  | 52.32d | 0d | Labor [25.73 h]; Laboratory Officer [12.86 h]; Carpenter [12.86 h]; Steelfixer [12.86 h]; Mason [12.86 h]; Surveyor [12.86 h]; Surveyor Helper [12.86 h]; (6*50mm+2*32mm) HDPE ducts [80.02] | 35,058.54 |  | 0.00731057705386804 | Cons. | Z4 | Telecom | Cons | SUB.C | Rd 02 | DCT&MNH | allElec |
| B2.1.33 81 26.167_R |  | Backfilling & Warrning Tape(Rem) | 1d | 2026-10-25 | 2026-10-25 | B2.1.33 81 26.166_R FF, B2.1.33 81 26.167 |  | 52.32d | 0d | Labor [25.73 h]; Foreman [12.86 h]; Operator [51.45 h]; Surveyor [12.86 h]; Surveyor Helper [12.86 h]; Loader [13.2 h]; Water Tanker [13.2 h]; Dump Truck [13.2 h]; Plate Compactor [13.2 h]; Roller Compactor [13.2 h]; (6*50mm+2*32mm) HDPE ducts [26.68] | 11,688.18 |  | 0.00243727564627162 | Cons. | Z4 | Telecom | Cons | SUB.C | Rd 02 | DCT&MNH | allElec |
|  | (6*50mm+4*32mm) | **Size (6*50mm+4*32mm) HDPE ducts** |  | 2026-09-10 | 2026-10-25 |  |  |  |  |  |  |  |  |  |  |  |  |  |  |  |  |
| B2.1.33 81 26.168 |  | Excavation (45.00% Completed) | 5d | 2026-09-10 A | 2026-09-15 A | B2.1.33 81 26.165 SS | 100% |  |  | Labor [14.03 h]; Foreman [7.02 h]; Operator [14.03 h]; Surveyor [7.02 h]; Surveyor Helper [7.02 h]; Excavator (With Bucket) [7.2 h]; Water Tanker [7.2 h]; Dump Truck [7.2 h]; Plate Compactor [7.2 h]; (6*50mm+4*32mm) HDPE ducts [6.75] | 3,348.5 | 3,348.5 | 0.00340443051603132 | Cons. | Z4 | Telecom | Cons | SUB.C | Rd 02 | DCT&MNH | allElec |
| B2.1.33 81 26.169 |  | HDPE Pipe, Shuttering, Steel Fixing & Conc. Cast (45.00% Completed) | 4d | 2026-09-12 A | 2026-09-15 A | B2.1.33 81 26.168 FF | 100% |  |  | Labor [21.05 h]; Laboratory Officer [10.52 h]; Carpenter [10.52 h]; Steelfixer [10.52 h]; Mason [10.52 h]; Surveyor [10.52 h]; Surveyor Helper [10.52 h]; (6*50mm+4*32mm) HDPE ducts [20.25] | 10,045.49 | 10,045.49 | 0.010213291548094 | Cons. | Z4 | Telecom | Cons | SUB.C | Rd 02 | DCT&MNH | allElec |
| B2.1.33 81 26.170 |  | Backfilling & Warrning Tape (45.00% Completed) | 3d | 2026-09-13 A | 2026-09-15 A | B2.1.33 81 26.169 FF | 100% |  |  | Labor [21.05 h]; Foreman [10.52 h]; Operator [42.1 h]; Surveyor [10.52 h]; Surveyor Helper [10.52 h]; Loader [10.8 h]; Water Tanker [10.8 h]; Dump Truck [10.8 h]; Plate Compactor [10.8 h]; Roller Compactor [10.8 h]; (6*50mm+4*32mm) HDPE ducts [6.75] | 3,348.5 | 3,348.5 | 0.00340443051603132 | Cons. | Z4 | Telecom | Cons | SUB.C | Rd 02 | DCT&MNH | allElec |
| B2.1.33 81 26.168_R |  | Excavation(Rem) | 1d | 2026-10-25 | 2026-10-25 | B2.1.33 81 26.165_R SS, B2.1.33 81 26.168 |  | 39.32d | 0d | Labor [17.15 h]; Foreman [8.58 h]; Operator [17.15 h]; Surveyor [8.58 h]; Surveyor Helper [8.58 h]; Excavator (With Bucket) [8.8 h]; Water Tanker [8.8 h]; Dump Truck [8.8 h]; Plate Compactor [8.8 h]; (6*50mm+4*32mm) HDPE ducts [8.25] | 4,092.61 |  | 0.00340443051603132 | Cons. | Z4 | Telecom | Cons | SUB.C | Rd 02 | DCT&MNH | allElec |
| B2.1.33 81 26.169_R |  | HDPE Pipe, Shuttering, Steel Fixing & Conc. Cast(Rem) | 1d | 2026-10-25 | 2026-10-25 | B2.1.33 81 26.168_R FF, B2.1.33 81 26.169 |  | 52.32d | 0d | Labor [25.73 h]; Laboratory Officer [12.86 h]; Carpenter [12.86 h]; Steelfixer [12.86 h]; Mason [12.86 h]; Surveyor [12.86 h]; Surveyor Helper [12.86 h]; (6*50mm+4*32mm) HDPE ducts [24.75] | 12,277.82 |  | 0.010213291548094 | Cons. | Z4 | Telecom | Cons | SUB.C | Rd 02 | DCT&MNH | allElec |
| B2.1.33 81 26.170_R |  | Backfilling & Warrning Tape(Rem) | 1d | 2026-10-25 | 2026-10-25 | B2.1.33 81 26.169_R FF, B2.1.33 81 26.170 |  | 52.32d | 1d | Labor [25.73 h]; Foreman [12.86 h]; Operator [51.45 h]; Surveyor [12.86 h]; Surveyor Helper [12.86 h]; Loader [13.2 h]; Water Tanker [13.2 h]; Dump Truck [13.2 h]; Plate Compactor [13.2 h]; Roller Compactor [13.2 h]; (6*50mm+4*32mm) HDPE ducts [8.25] | 4,092.61 |  | 0.00340443051603132 | Cons. | Z4 | Telecom | Cons | SUB.C | Rd 02 | DCT&MNH | allElec |

| ID | WBS | Activity | Duration | Start | Finish | Predecessors | Complete | Total float | Free float | Resources | Cost | Actual cost | Weight % | DMM2 Weekly Progress | DMM2 Zones | Networks & Stations | DMM2 Phases | Networks Components | All Electrical Scope | Subcontractors works | Dmm2 Roads |
| --- | --- | --- | --- | --- | --- | --- | --- | --- | --- | --- | --- | --- | --- | --- | --- | --- | --- | --- | --- | --- | --- |
|  | (2*32mm) | **Size (2*32mm) HDPE ducts** |  | 2026-09-12 | 2026-10-25 |  |  |  |  |  |  |  |  |  |  |  |  |  |  |  |  |
| B2.1.33 81 26.171 |  | Excavation (45.00% Completed) | 4d | 2026-09-12 A | 2026-09-15 A | B2.1.33 81 26.168 FF | 100% |  |  | Labor [14.03 h]; Foreman [7.02 h]; Operator [14.03 h]; Surveyor [7.02 h]; Surveyor Helper [7.02 h]; Excavator (With Bucket) [7.2 h]; Water Tanker [7.2 h]; Dump Truck [7.2 h]; Plate Compactor [7.2 h]; (2*32mm) HDPE ducts [3.87] | 604.82 | 604.82 | 0.000194889802563824 | Cons. | Z4 | Telecom | Cons | DCT&MNH | allElec | SUB.C | Rd 02 |
| B2.1.33 81 26.172 |  | HDPE Pipe, Shuttering, Steel Fixing & Conc. Cast (45.00% Completed) | 3d | 2026-09-13 A | 2026-09-15 A | B2.1.33 81 26.171 FF | 100% |  |  | Labor [21.05 h]; Laboratory Officer [10.52 h]; Carpenter [10.52 h]; Steelfixer [10.52 h]; Mason [10.52 h]; Surveyor [10.52 h]; Surveyor Helper [10.52 h]; (2*32mm) HDPE ducts [11.61] | 1,814.46 | 1,814.46 | 0.000584669407691468 | Cons. | Z4 | Telecom | Cons | DCT&MNH | allElec | SUB.C | Rd 02 |
| B2.1.33 81 26.173 |  | Backfilling & Warrning Tape (45.00% Completed) | 2d | 2026-09-14 A | 2026-09-15 A | B2.1.33 81 26.172 FF, B2.1.33 81 26.167 FF, B2.1.33 81 26.164 FF | 100% |  |  | Labor [21.05 h]; Foreman [10.52 h]; Operator [42.1 h]; Surveyor [10.52 h]; Surveyor Helper [10.52 h]; Loader [10.8 h]; Water Tanker [10.8 h]; Dump Truck [10.8 h]; Plate Compactor [10.8 h]; Roller Compactor [10.8 h]; (2*32mm) HDPE ducts [3.87] | 604.82 | 604.82 | 0.000194889802563824 | Cons. | Z4 | Telecom | Cons | DCT&MNH | allElec | SUB.C | Rd 02 |
| B2.1.33 81 26.171_R |  | Excavation(Rem) | 1d | 2026-10-25 | 2026-10-25 | B2.1.33 81 26.168_R FF, B2.1.33 81 26.171 |  | 39.32d | 0d | Labor [17.15 h]; Foreman [8.58 h]; Operator [17.15 h]; Surveyor [8.58 h]; Surveyor Helper [8.58 h]; Excavator (With Bucket) [8.8 h]; Water Tanker [8.8 h]; Dump Truck [8.8 h]; Plate Compactor [8.8 h]; (2*32mm) HDPE ducts [4.73] | 739.23 |  | 0.000194889802563824 | Cons. | Z4 | Telecom | Cons | DCT&MNH | allElec | SUB.C | Rd 02 |
| B2.1.33 81 26.172_R |  | HDPE Pipe, Shuttering, Steel Fixing & Conc. Cast(Rem) | 1d | 2026-10-25 | 2026-10-25 | B2.1.33 81 26.171_R FF, B2.1.33 81 26.172 |  | 52.32d | 0d | Labor [25.73 h]; Laboratory Officer [12.86 h]; Carpenter [12.86 h]; Steelfixer [12.86 h]; Mason [12.86 h]; Surveyor [12.86 h]; Surveyor Helper [12.86 h]; (2*32mm) HDPE ducts [14.19] | 2,217.68 |  | 0.000584669407691468 | Cons. | Z4 | Telecom | Cons | DCT&MNH | allElec | SUB.C | Rd 02 |
| B2.1.33 81 26.173_R |  | Backfilling & Warrning Tape(Rem) | 1d | 2026-10-25 | 2026-10-25 | B2.1.33 81 26.172_R FF, B2.1.33 81 26.167_R FF, B2.1.33 81 26.164_R FF, B2.1.33 81 26.173 |  | 52.32d | 1d | Labor [25.73 h]; Foreman [12.86 h]; Operator [51.45 h]; Surveyor [12.86 h]; Surveyor Helper [12.86 h]; Loader [13.2 h]; Water Tanker [13.2 h]; Dump Truck [13.2 h]; Plate Compactor [13.2 h]; Roller Compactor [13.2 h]; (2*32mm) HDPE ducts [4.73] | 739.23 |  | 0.000194889802563824 | Cons. | Z4 | Telecom | Cons | DCT&MNH | allElec | SUB.C | Rd 02 |
|  | Manholes | **Manholes** |  | 2026-09-07 | 2026-10-26 |  |  |  |  |  |  |  |  |  |  |  |  |  |  |  |  |
|  | Manhole Type 1 | **Manhole Type 1** |  | 2026-09-09 | 2026-10-26 |  |  |  |  |  |  |  |  |  |  |  |  |  |  |  |  |
| B2.31 23 00.630 |  | Excavation (67.00% Completed) | 6d | 2026-09-09 A | 2026-09-15 A | B2.1.33 81 26.171 SS | 100% |  |  | Labor [20.89 h]; Foreman [10.45 h]; Operator [20.89 h]; Surveyor [10.45 h]; Surveyor Helper [10.45 h]; Excavator (With Bucket) [10.72 h]; Water Tanker [10.72 h]; Dump Truck [10.72 h]; Plate Compactor [10.72 h]; Manhole Type 1 [0.83] | 5,873.49 | 5,873.49 | 0.00167335317103356 | Cons. | Z4 | Telecom | Cons | DCT&MNH | allElec | SUB.C | Rd 02 |
| B2.33 71 00.268 |  | Manhole Installation (67.00% Completed) | 3d | 2026-09-13 A | 2026-09-15 A | B2.31 23 00.630 FF | 100% |  |  | Labor [20.89 h]; Laboratory Officer [10.45 h]; Carpenter [10.45 h]; Steelfixer [10.45 h]; Mason [10.45 h]; Surveyor [10.45 h]; Surveyor Helper [10.45 h]; Manhole Type 1 [2.49] | 17,620.46 | 17,620.46 | 0.00502005951310069 | Cons. | Z4 | Telecom | Cons | DCT&MNH | allElec | SUB.C | Rd 02 |
| B2.33 71 00.269 |  | Backfilling & Warrning Tape (67.00% Completed) | 2d | 2026-09-14 A | 2026-09-15 A | B2.33 71 00.268 FF, B2.1.33 81 26.173 FF | 100% |  |  | Labor [62.68 h]; Foreman [31.34 h]; Operator [125.36 h]; Surveyor [31.34 h]; Surveyor Helper [31.34 h]; Loader [32.16 h]; Water Tanker [32.16 h]; Dump Truck [32.16 h]; Plate Compactor [32.16 h]; Roller Compactor [32.16 h]; Manhole Type 1 [0.83] | 5,873.49 | 5,873.49 | 0.00167335317103356 | Cons. | Z4 | Telecom | Cons | DCT&MNH | allElec | SUB.C | Rd 02 |
| B2.31 23 00.630_R |  | Excavation(Rem) | 2d | 2026-10-25 | 2026-10-26 | B2.1.33 81 26.171_R SS, B2.31 23 00.630 |  | 39.32d | 0d | Labor [10.29 h]; Foreman [5.15 h]; Operator [10.29 h]; Surveyor [5.15 h]; Surveyor Helper [5.15 h]; Excavator (With Bucket) [5.28 h]; Water Tanker [5.28 h]; Dump Truck [5.28 h]; Plate Compactor [5.28 h]; Manhole Type 1 [0.41] | 2,892.91 |  | 0.00167335317103356 | Cons. | Z4 | Telecom | Cons | DCT&MNH | allElec | SUB.C | Rd 02 |
| B2.33 71 00.268_R |  | Manhole Installation(Rem) | 2d | 2026-10-25 | 2026-10-26 | B2.31 23 00.630_R FF, B2.33 71 00.268 |  | 51.32d | 0d | Labor [10.29 h]; Laboratory Officer [5.15 h]; Carpenter [5.15 h]; Steelfixer [5.15 h]; Mason [5.15 h]; Surveyor [5.15 h]; Surveyor Helper [5.15 h]; Manhole Type 1 [1.23] | 8,678.73 |  | 0.00502005951310069 | Cons. | Z4 | Telecom | Cons | DCT&MNH | allElec | SUB.C | Rd 02 |
| B2.33 71 00.269_R |  | Backfilling & Warrning Tape(Rem) | 2d | 2026-10-25 | 2026-10-26 | B2.33 71 00.268_R FF, B2.1.33 81 26.173_R FF, B2.33 71 00.269 |  | 51.32d | 2d | Labor [30.87 h]; Foreman [15.44 h]; Operator [61.75 h]; Surveyor [15.44 h]; Surveyor Helper [15.44 h]; Loader [15.84 h]; Water Tanker [15.84 h]; Dump Truck [15.84 h]; Plate Compactor [15.84 h]; Roller Compactor [15.84 h]; Manhole Type 1 [0.41] | 2,892.91 |  | 0.00167335317103356 | Cons. | Z4 | Telecom | Cons | DCT&MNH | allElec | SUB.C | Rd 02 |
|  | Manhole Type 2 | **Manhole Type 2** |  | 2026-09-07 | 2026-10-26 |  |  |  |  |  |  |  |  |  |  |  |  |  |  |  |  |
| B2.31 23 00.631 |  | Excavation (67.00% Completed) | 8d | 2026-09-07 A | 2026-09-15 A | B2.31 23 00.630 SS | 100% |  |  | Labor [20.89 h]; Foreman [10.45 h]; Operator [20.89 h]; Surveyor [10.45 h]; Surveyor Helper [10.45 h]; Excavator (With Bucket) [10.72 h]; Water Tanker [10.72 h]; Dump Truck [10.72 h]; Plate Compactor [10.72 h]; Manhole Type 2 [0.35] | 2,202.75 | 2,202.75 | 0.000634453248743172 | Cons. | Z4 | Telecom | Cons | DCT&MNH | allElec | SUB.C | Rd 02 |
| B2.33 71 00.270 |  | Manhole Installation (67.00% Completed) | 6d | 2026-09-09 A | 2026-09-15 A | B2.31 23 00.631 FF | 100% |  |  | Labor [20.89 h]; Laboratory Officer [10.45 h]; Carpenter [10.45 h]; Steelfixer [10.45 h]; Mason [10.45 h]; Surveyor [10.45 h]; Surveyor Helper [10.45 h]; Manhole Type 2 [1.05] | 6,608.27 | 6,608.27 | 0.00190336462403523 | Cons. | Z4 | Telecom | Cons | DCT&MNH | allElec | SUB.C | Rd 02 |
| B2.33 71 00.271 |  | Backfilling & Warrning Tape (67.00% Completed) | 3d | 2026-09-13 A | 2026-09-15 A | B2.33 71 00.270 FF, B2.1.33 81 26.170 FF | 100% |  |  | Labor [52.23 h]; Foreman [26.12 h]; Operator [104.47 h]; Surveyor [26.12 h]; Surveyor Helper [26.12 h]; Loader [26.8 h]; Water Tanker [26.8 h]; Dump Truck [26.8 h]; Plate Compactor [26.8 h]; Roller Compactor [26.8 h]; Manhole Type 2 [0.35] | 2,202.75 | 2,202.75 | 0.000634453248743172 | Cons. | Z4 | Telecom | Cons | DCT&MNH | allElec | SUB.C | Rd 02 |
| B2.31 23 00.631_R |  | Excavation(Rem) | 2d | 2026-10-25 | 2026-10-26 | B2.31 23 00.630_R SS, B2.31 23 00.631 |  | 39.32d | 0d | Labor [10.29 h]; Foreman [5.15 h]; Operator [10.29 h]; Surveyor [5.15 h]; Surveyor Helper [5.15 h]; Excavator (With Bucket) [5.28 h]; Water Tanker [5.28 h]; Dump Truck [5.28 h]; Plate Compactor [5.28 h]; Manhole Type 2 [0.17] | 1,084.94 |  | 0.000634453248743172 | Cons. | Z4 | Telecom | Cons | DCT&MNH | allElec | SUB.C | Rd 02 |
| B2.33 71 00.270_R |  | Manhole Installation(Rem) | 2d | 2026-10-25 | 2026-10-26 | B2.31 23 00.631_R FF, B2.33 71 00.270 |  | 51.32d | 0d | Labor [10.29 h]; Laboratory Officer [5.15 h]; Carpenter [5.15 h]; Steelfixer [5.15 h]; Mason [5.15 h]; Surveyor [5.15 h]; Surveyor Helper [5.15 h]; Manhole Type 2 [0.51] | 3,254.82 |  | 0.00190336462403523 | Cons. | Z4 | Telecom | Cons | DCT&MNH | allElec | SUB.C | Rd 02 |
| B2.33 71 00.271_R |  | Backfilling & Warrning Tape(Rem) | 2d | 2026-10-25 | 2026-10-26 | B2.33 71 00.270_R FF, B2.1.33 81 26.170_R FF, B2.33 71 00.271 |  | 51.32d | 2d | Labor [25.73 h]; Foreman [12.86 h]; Operator [51.45 h]; Surveyor [12.86 h]; Surveyor Helper [12.86 h]; Loader [13.2 h]; Water Tanker [13.2 h]; Dump Truck [13.2 h]; Plate Compactor [13.2 h]; Roller Compactor [13.2 h]; Manhole Type 2 [0.17] | 1,084.94 |  | 0.000634453248743172 | Cons. | Z4 | Telecom | Cons | DCT&MNH | allElec | SUB.C | Rd 02 |
|  | Crossing Ducts | **Road Crossing Ducts** |  | 2026-09-12 | 2026-10-26 |  |  |  |  |  |  |  |  |  |  |  |  |  |  |  |  |
|  | 1 | **Size (6X50mm) HDPE** |  | 2026-09-12 | 2026-10-26 |  |  |  |  |  |  |  |  |  |  |  |  |  |  |  |  |
| B2.31 23 00.629 |  | Excavation (45.00% Completed) | 4d | 2026-09-12 A | 2026-09-15 A | B2.31 23 00.631 FF | 100% |  |  | Labor [14.03 h]; Foreman [7.02 h]; Operator [14.03 h]; Surveyor [7.02 h]; Surveyor Helper [7.02 h]; Excavator (With Bucket) [7.2 h]; Water Tanker [7.2 h]; Dump Truck [7.2 h]; Plate Compactor [7.2 h]; Road crossing ducts, (6*50mm) HDPE [3.21] | 999.87 | 999.87 | 0.000381434848303997 | Cons. | Z4 | Telecom | Cons | DCT&MNH | allElec | SUB.C | Rd 02 |
| B2.33 71 00.266 |  | Shuttering, Steel Fixing Incl. UPVC Pipe & Conc. Cast (45.00% Completed) | 3d | 2026-09-13 A | 2026-09-15 A | B2.31 23 00.629 FF | 100% |  |  | Labor [21.05 h]; Laboratory Officer [10.52 h]; Carpenter [10.52 h]; Steelfixer [10.52 h]; Mason [10.52 h]; Surveyor [10.52 h]; Surveyor Helper [10.52 h]; Road crossing ducts, (6*50mm) HDPE [9.62] | 2,997.28 | 2,997.28 | 0.00114341541939146 | Cons. | Z4 | Telecom | Cons | DCT&MNH | allElec | SUB.C | Rd 02 |
| B2.33 71 00.267 |  | Backfilling & Warrning Tape (45.00% Completed) | 2d | 2026-09-14 A | 2026-09-15 A | B2.33 71 00.266 FF | 100% |  |  | Labor [21.05 h]; Foreman [10.52 h]; Operator [42.1 h]; Surveyor [10.52 h]; Surveyor Helper [10.52 h]; Loader [10.8 h]; Water Tanker [10.8 h]; Dump Truck [10.8 h]; Plate Compactor [10.8 h]; Roller Compactor [10.8 h]; Road crossing ducts, (6*50mm) HDPE [3.21] | 999.87 | 999.87 | 0.000381434848303997 | Cons. | Z4 | Telecom | Cons | DCT&MNH | allElec | SUB.C | Rd 02 |
| B2.31 23 00.629_R |  | Excavation(Rem) | 1d | 2026-10-26 | 2026-10-26 | B2.31 23 00.631_R FF, B2.31 23 00.629 |  | 39.32d | 0d | Labor [17.15 h]; Foreman [8.58 h]; Operator [17.15 h]; Surveyor [8.58 h]; Surveyor Helper [8.58 h]; Excavator (With Bucket) [8.8 h]; Water Tanker [8.8 h]; Dump Truck [8.8 h]; Plate Compactor [8.8 h]; Road crossing ducts, (6*50mm) HDPE [3.92] | 1,222.06 |  | 0.000381434848303997 | Cons. | Z4 | Telecom | Cons | DCT&MNH | allElec | SUB.C | Rd 02 |
| B2.33 71 00.266_R |  | Shuttering, Steel Fixing Incl. UPVC Pipe & Conc. Cast(Rem) | 1d | 2026-10-26 | 2026-10-26 | B2.31 23 00.629_R FF, B2.33 71 00.266 |  | 39.32d | 0d | Labor [25.73 h]; Laboratory Officer [12.86 h]; Carpenter [12.86 h]; Steelfixer [12.86 h]; Mason [12.86 h]; Surveyor [12.86 h]; Surveyor Helper [12.86 h]; Road crossing ducts, (6*50mm) HDPE [11.75] | 3,663.34 |  | 0.00114341541939146 | Cons. | Z4 | Telecom | Cons | DCT&MNH | allElec | SUB.C | Rd 02 |
| B2.33 71 00.267_R |  | Backfilling & Warrning Tape(Rem) | 1d | 2026-10-26 | 2026-10-26 | B2.33 71 00.266_R FF, B2.33 71 00.267 |  | 39.32d | 0d | Labor [25.73 h]; Foreman [12.86 h]; Operator [51.45 h]; Surveyor [12.86 h]; Surveyor Helper [12.86 h]; Loader [13.2 h]; Water Tanker [13.2 h]; Dump Truck [13.2 h]; Plate Compactor [13.2 h]; Roller Compactor [13.2 h]; Road crossing ducts, (6*50mm) HDPE [3.92] | 1,222.06 |  | 0.000381434848303997 | Cons. | Z4 | Telecom | Cons | DCT&MNH | allElec | SUB.C | Rd 02 |

| ID | WBS | Activity | Duration | Start | Finish | Predecessors | Complete | Total float | Free float | Resources | Cost | Actual cost | Weight % | DMM2 Weekly Progress | DMM2 Zones | Networks & Stations | DMM2 Phases | Dmm2 Roads | Networks Components |
| --- | --- | --- | --- | --- | --- | --- | --- | --- | --- | --- | --- | --- | --- | --- | --- | --- | --- | --- | --- |
|  | Earth & Road Works | **Earth & Road Works** |  | 2025-11-20 | 2026-12-12 |  |  |  |  |  |  |  |  |  |  |  |  |  |  |
|  | Earth Works | **Earth Works** |  | 2025-11-20 | 2026-03-08 |  |  |  |  |  |  |  |  |  |  |  |  |  |  |
| B1.2.31 23 16.01.15 |  | Roadway Excavation | 11.3d | 2025-11-20 A | 2025-12-03 A | DMM2-Eng-MS-78 | 100% |  |  | Roadway Excavation for cuttings (all types of soil) [51505.2]; Labor [28.35 h]; Foreman [14.17 h]; Operator [28.35 h]; Surveyor [14.17 h]; Surveyor Helper [14.17 h]; Excavator (With Bucket) [16 h]; Water Tanker [16 h]; Dump Truck [16 h] | 768,766.12 | 768,766.12 | 9.38757936633283E-005 | Cons. | Z4 | Roads | Cons | Rd 02 |  |
| B1.2.31 23 23.01.15 |  | Embankment Backfiling | 85.89d | 2025-11-22 A | 2026-03-08 A | B1.2.31 23 16.01.15 | 100% |  |  | Embankment backfiling [121209]; Labor [127.57 h]; Foreman [63.79 h]; Operator [127.57 h]; Surveyor [63.79 h]; Surveyor Helper [63.79 h]; Loader [72 h]; Water Tanker [72 h]; Dump Truck [72 h]; Plate Compactor [72 h]; Roller Compactor [72 h] | 3,299,075.55 | 3,299,075.55 | 0.437848955334728 | Cons. | Z4 | Roads | Cons | Rd 02 |  |
|  | Earth Layers | **Earth Layers** |  | 2026-01-06 | 2026-10-11 |  |  |  |  |  |  |  |  |  |  |  |  |  |  |
| B1.2.32 11 13.01.15 |  | Subgrade (65.00% Completed) | 201.83d | 2026-01-06 A | 2026-09-15 A | B1.2.31 23 23.01.15, DMM2-Proc-Delv-7500 | 100% |  |  | Subgrade [11701.2]; Labor [81.08 h]; Foreman [40.54 h]; Operator [81.08 h]; Surveyor [40.54 h]; Surveyor Helper [40.54 h]; Grader [41.6 h]; Loader [41.6 h]; Water Tanker [41.6 h]; Dump Truck [41.6 h]; Plate Compactor [41.6 h]; Roller Compactor [41.6 h] | 349,304.75 | 349,304.75 | 0.315132109496102 | Cons. | Z4 | Roads | Cons | Rd 02 | Roads |
| B1.2.32 11 23.01.15 |  | Aggregate Base Course (50.00% Completed) | 91.76d | 2026-06-01 A | 2026-09-15 A | B1.2.32 11 13.01.15 FF, DMM2-Proc-Delv-7498 SS | 100% |  |  | Aggregate base course [6000.71]; Labor [54.57 h]; Foreman [27.29 h]; Operator [54.57 h]; Surveyor [27.29 h]; Surveyor Helper [27.29 h]; Grader [28 h]; Loader [28 h]; Water Tanker [28 h]; Dump Truck [28 h]; Plate Compactor [28 h]; Roller Compactor [28 h] | 521,593.38 | 521,593.38 | 0.593950557412764 | Cons. | Z4 | Roads | Cons | Rd 02 | Roads |
| B1.2.32 11 13.01.15_R |  | Subgrade(Rem) | 2.8d | 2026-10-07 | 2026-10-10 | B1.2.31 23 23.01.15, DMM2-Proc-Delv-7500, B1.2.32 11 13.01.15 |  | 43.52d | 0.7d | Subgrade [6300.66]; Labor [43.66 h]; Foreman [21.83 h]; Operator [43.66 h]; Surveyor [21.83 h]; Surveyor Helper [21.83 h]; Grader [22.4 h]; Loader [22.4 h]; Water Tanker [22.4 h]; Dump Truck [22.4 h]; Plate Compactor [22.4 h]; Roller Compactor [22.4 h] | 188,087.18 |  | 0.315132109496102 | Cons. | Z4 | Roads | Cons | Rd 02 | Roads |
| B1.2.32 11 23.01.15_R |  | Aggregate Base Course(Rem) | 3.5d | 2026-10-07 | 2026-10-11 | B1.2.32 11 13.01.15_R FF, DMM2-Proc-Delv-7498_R SS, B1.2.32 11 23.01.15 |  | 42.82d | 8.75d | Aggregate base course [6000.71]; Labor [54.57 h]; Foreman [27.29 h]; Operator [54.57 h]; Surveyor [27.29 h]; Surveyor Helper [27.29 h]; Grader [28 h]; Loader [28 h]; Water Tanker [28 h]; Dump Truck [28 h]; Plate Compactor [28 h]; Roller Compactor [28 h] | 521,593.38 |  | 0.593950557412764 | Cons. | Z4 | Roads | Cons | Rd 02 | Roads |
|  | Interlock | **Interlock** |  | 2026-11-07 | 2026-11-09 |  |  |  |  |  |  |  |  |  |  |  |  |  |  |
| B1.2.32 14 13.13.15 |  | 60mm thick - Interlocking Block Pavers | 3d | 2026-11-07 | 2026-11-09 | B2.33 71 00 01 20 SS, DMM2-Proc-Delv-7502 SS |  | 4.32d | 0d | 60mm thick - Interlocking block pavers for sidewalks and medians [4284.52]; Labor [93.55 h]; Foreman [46.78 h]; Mason [46.78 h]; Operator [93.55 h]; JCB [48 h] | 285,897.59 |  | 0.158722798404414 | Cons. | Z4 | Roads | Cons | Rd 02 | Roads |
|  | Curbstone | **Curbstone** |  | 2026-11-10 | 2026-11-30 |  |  |  |  |  |  |  |  |  |  |  |  |  |  |
|  | Pre Install | **Pre-Installation** |  | 2026-11-10 | 2026-11-16 |  |  |  |  |  |  |  |  |  |  |  |  |  |  |
| B2.31 23 00.421 |  | Excavation | 2d | 2026-11-10 | 2026-11-11 | B1.2.32 14 13.13.15, DMM2-Proc-Delv-7501 |  | 4.32d | 0d | Curb Stone, Type K1 [691.99]; Dropped Curb, Type K3 [8.22]; Edge Curb, Type K4 [507.79]; Heel Curb, Type K5 [332.18]; Transition Curb [3.59]; Labor [155.92 h]; Foreman [77.96 h]; Operator [155.92 h]; Surveyor [77.96 h]; Surveyor Helper [77.96 h]; JCB [80 h]; Water Tanker [80 h]; Dump Truck [80 h]; Plate Compactor [80 h] | 112,838.12 |  | 0.0637036668676422 | Cons. | Z4 | Roads | Cons | Rd 02 | Roads |
| B1.2.32 14 13.13.215 |  | PCC | 2d | 2026-11-12 | 2026-11-14 | B2.31 23 00.421 |  | 4.32d | 0d | Curb Stone, Type K1 [691.99]; Dropped Curb, Type K3 [8.22]; Edge Curb, Type K4 [507.79]; Heel Curb, Type K5 [332.18]; Transition Curb [3.59]; Labor [77.96 h]; Mason [38.98 h]; Surveyor [38.98 h]; Surveyor Helper [38.98 h] | 112,838.12 |  | 0.0637036668676422 | Cons. | Z4 | Roads | Cons | Rd 02 | Roads |
| 32 16 13.0015 |  | Haunching | 2d | 2026-11-15 | 2026-11-16 | B1.2.32 14 13.13.215 |  | 4.32d | 0d | Curb Stone, Type K1 [691.99]; Dropped Curb, Type K3 [8.22]; Edge Curb, Type K4 [507.79]; Heel Curb, Type K5 [332.18]; Transition Curb [3.59]; Labor [187.11 h]; Carpenter [93.55 h]; Mason [93.55 h]; Surveyor [93.55 h]; Surveyor Helper [93.55 h] | 112,838.12 |  | 0.0637036668676422 | Cons. | Z4 | Roads | Cons | Rd 02 | Roads |
|  | Installation | **Installation** |  | 2026-11-17 | 2026-11-28 |  |  |  |  |  |  |  |  |  |  |  |  |  |  |
| B1.2.32 16.13.01.15 |  | Curb Stone, Type K1 | 2d | 2026-11-17 | 2026-11-18 | 32 16 13.0015 |  | 4.32d | 0d | Curb Stone, Type K1 [2075.97]; Labor [171.52 h]; Foreman [85.76 h]; Mason [85.76 h]; Operator [171.52 h]; Surveyor [85.76 h]; Surveyor Helper [85.76 h]; JCB [88 h] | 156,752.4 |  | 0.0924547199712779 | Cons. | Z4 | Roads | Cons | Rd 02 | Roads |
| B1.2.32 16.13.02.14 |  | Dropped Curb, Type K3 | 2d | 2026-11-19 | 2026-11-21 | B1.2.32 16.13.01.15, 32 16 13.0015 |  | 4.32d | 0d | Dropped Curb, Type K3 [24.67]; Labor [31.18 h]; Foreman [15.59 h]; Mason [15.59 h]; Operator [31.18 h]; Surveyor [15.59 h]; Surveyor Helper [15.59 h]; JCB [16 h] | 1,992.67 |  | 0.00116452719299073 | Cons. | Z4 | Roads | Cons | Rd 02 | Roads |
| B1.2.32 16.13.03.15 |  | Edge Curb, Type K4 | 2d | 2026-11-22 | 2026-11-23 | B1.2.32 16.13.02.14, 32 16 13.0015 |  | 4.32d | 0d | Edge Curb, Type K4 [1340.62]; Labor [62.37 h]; Foreman [31.18 h]; Mason [31.18 h]; Operator [62.37 h]; Surveyor [31.18 h]; Surveyor Helper [31.18 h]; JCB [32 h] | 101,227.18 |  | 0.0557467807285252 | Cons. | Z4 | Roads | Cons | Rd 02 | Roads |
| B1.2.32 16.13.0415 |  | Heel Curb, Type K5 | 2d | 2026-11-24 | 2026-11-25 | B1.2.32 16.13.03.15, 32 16 13.0015 |  | 4.32d | 0d | Heel Curb, Type K5 [996.56]; Labor [46.78 h]; Foreman [23.39 h]; Mason [23.39 h]; Operator [46.78 h]; Surveyor [23.39 h]; Surveyor Helper [23.39 h]; JCB [24 h] | 63,873.55 |  | 0.0336174276461249 | Cons. | Z4 | Roads | Cons | Rd 02 | Roads |
| B1.2.32 16.13.05.14 |  | Transition Curb | 2d | 2026-11-26 | 2026-11-28 | B1.2.32 16.13.0415, 32 16 13.0015 |  | 4.32d | 0d | Transition Curb [10.77]; Labor [31.18 h]; Foreman [15.59 h]; Mason [15.59 h]; Operator [31.18 h]; Surveyor [15.59 h]; Surveyor Helper [15.59 h]; JCB [16 h] | 869.8 |  | 0.000528396666595609 | Cons. | Z4 | Roads | Cons | Rd 02 | Roads |
|  | Finishing | **Finishing** |  | 2026-11-29 | 2026-11-30 |  |  |  |  |  |  |  |  |  |  |  |  |  |  |
| 32 16 13.015 |  | Finishing, Fareface | 2d | 2026-11-29 | 2026-11-30 | B1.2.32 16.13.01.15, B1.2.32 16.13.02.14, B1.2.32 16.13.03.15, B1.2.32 16.13.0415, B1.2.32 16.13.05.14 |  | 4.32d | 0d | Curb Stone, Type K1 [461.33]; Dropped Curb, Type K3 [5.48]; Edge Curb, Type K4 [338.53]; Heel Curb, Type K5 [221.46]; Transition Curb [3.59]; Labor [77.96 h]; Mason [38.98 h] | 75,322.73 |  | 0.042528193212756 | Cons. | Z4 | Roads | Cons | Rd 02 | Roads |

| ID | WBS | Activity | Duration | Start | Finish | Predecessors | Total float | Free float | Resources | Cost | Weight % | DMM2 Weekly Progress | DMM2 Zones | Networks & Stations | DMM2 Phases | Networks Components | Dmm2 Roads |
| --- | --- | --- | --- | --- | --- | --- | --- | --- | --- | --- | --- | --- | --- | --- | --- | --- | --- |
|  | Asphalt Layers | **Asphalt Layers** |  | 2026-10-21 | 2026-12-02 |  |  |  |  |  |  |  |  |  |  |  |  |
| B1.2.32 11 26.01.15 |  | Bituminous Base Course including Prime Coat (MC1) and tack coat (RC2) | 5d | 2026-10-21 | 2026-10-27 | B1.2.32 11 23.01.15_R, DMM2-Proc-Delv-7499 | 34.07d | 0d | Bituminous base course(Grading I - Class A) [8223.02]; Labor [109.15 h]; Foreman [54.57 h]; Operator [109.15 h]; Surveyor [54.57 h]; Surveyor Helper [54.57 h]; Dump Truck [56 h]; Roller Compactor [56 h]; MC1/RC2 Sprayer [56 h] | 4,519,600.91 | 2.49317881543058 | Cons. | Z4 | Roads | Cons | Roads | Rd 02 |
| B1.2.32 12 16.01.15 |  | Bituminous concrete Wearing Course, including tack coat (RC2) | 2d | 2026-12-01 | 2026-12-02 | B1.2.32 11 26.01.15, 10 14 53.015, 32 16 13.015, B7.32 31 26.01-195 SS | 4.32d | 0d | Bituminous concrete wearing course, after compaction(Grading I - Class A), including tack coat (RC2) [3008.82]; Labor [62.37 h]; Foreman [31.18 h]; Operator [62.37 h]; Surveyor [31.18 h]; Surveyor Helper [31.18 h]; Dump Truck [32 h]; Roller Compactor [32 h]; MC1/RC2 Sprayer [32 h] | 1,775,252.07 | 0.978785452472156 | Cons. | Z4 | Roads | Cons | Roads | Rd 02 |
|  | Pavement Marking | **Pavement Marking** |  | 2026-12-06 | 2026-12-09 |  |  |  |  |  |  |  |  |  |  |  |  |
| B1.2.32 17 23.02.15 |  | Retroreflective Thermoplastic Yellow, Traffic lines | 2d | 2026-12-06 | 2026-12-07 | B1.2.32 12 16.01.15, B1.2.32 12 19.13.015, DMM2-Proc-Delv-7503, B1.2.32 17 23.01.9, B1.2.32 17 23.02.9, B1.2.32 17 23.01.2, B1.2.32 17 23.02.2 | 23.32d | 0d | Retroreflective Thermoplastic Yellow, Traffic lines [488.84]; Labor [31.18 h]; Mason [15.59 h]; Road Marking Machine [16 h] | 14,592.9 | 0.00733657526025654 | Cons. | Z4 | Roads | Cons | Roads | Rd 02 |
| B1.2.32 17 23.01.15 |  | Retroreflective Thermoplastic White Traffic lines | 2d | 2026-12-08 | 2026-12-09 | B1.2.32 12 16.01.15, B1.2.32 12 19.13.015, B1.2.32 17 23.02.15 | 23.32d | 0d | Retroreflective Thermoplastic White Traffic lines [1019.93]; Labor [46.78 h]; Mason [23.39 h]; Road Marking Machine [24 h] | 30,447.04 | 0.0153072402403809 | Cons. | Z4 | Roads | Cons | Roads | Rd 02 |
|  | Traffic Signs | **Traffic Signs** |  | 2026-11-12 | 2026-12-12 |  |  |  |  |  |  |  |  |  |  |  |  |
|  | Pre Install | **Pre-Installation** |  | 2026-11-12 | 2026-11-16 |  |  |  |  |  |  |  |  |  |  |  |  |
| B2.31 23 00.431 |  | Excavation | 2d | 2026-11-12 | 2026-11-14 | B2.31 23 00.421, DMM2-Proc-Delv-7505, DMM2-Proc-Delv-7506 | 6.32d | 0d | Traffic signs, ground mounted, 1 Sheet Alumenium, (breakaway) Single post [6.28]; Traffic signs, ground mounted, 2 Sheets Alumenium, (breakaway) Single post [0.51]; Traffic signs, ground mounted, 1 Sheets Alumenium, (breakaway) Double post [1]; Labor [31.18 h]; Foreman [15.59 h]; Operator [31.18 h]; Surveyor [15.59 h]; Surveyor Helper [15.59 h]; JCB [16 h]; Water Tanker [16 h]; Dump Truck [16 h]; Plate Compactor [16 h] | 10,909.96 | 0.00548497907350959 | Cons. | Z4 | Roads | Cons | Roads | Rd 02 |
| 10 14 53.015 |  | Foundation | 2d | 2026-11-15 | 2026-11-16 | B2.31 23 00.431 | 16.32d | 12d | Traffic signs, ground mounted, 1 Sheet Alumenium, (breakaway) Single post [6.28]; Traffic signs, ground mounted, 2 Sheets Alumenium, (breakaway) Single post [0.51]; Traffic signs, ground mounted, 1 Sheets Alumenium, (breakaway) Double post [1]; Labor [31.18 h]; Carpenter [15.59 h]; Steelfixer [15.59 h]; Mason [15.59 h]; Surveyor [15.59 h]; Surveyor Helper [15.59 h] | 10,909.96 | 0.00548497907350959 | Cons. | Z4 | Roads | Cons | Roads | Rd 02 |
|  | Installation | **Installation** |  | 2026-12-08 | 2026-12-12 |  |  |  |  |  |  |  |  |  |  |  |  |
| B1.2.10 14 53.0115 |  | 1 Sheet Alumenium, Single post | 2d | 2026-12-08 | 2026-12-09 | B1.2.32 17 23.01.15 SS, B1.2.32 17 23.02.15, DMM2-Proc-Delv-7411 SS | 25.32d |  | Traffic signs, ground mounted, 1 Sheet Alumenium, (breakaway) Single post [18.85]; Labor [62.37 h]; Foreman [31.18 h]; Operator [62.37 h]; JCB [32 h] | 21,035.49 | 0.0105755824569229 | Cons. | Z4 | Roads | Cons | Roads | Rd 02 |
| B1.2.10 14 53.0215 |  | 2 Sheet Alumenium, Single post | 2d | 2026-12-10 | 2026-12-12 | B1.2.32 17 23.01.15, B1.2.32 17 23.02.15, B1.2.32 17 23.01.15 FF | 23.32d |  | Traffic signs, ground mounted, 2 Sheets Alumenium, (breakaway) Single post [1.53]; Labor [31.18 h]; Foreman [15.59 h]; Operator [31.18 h]; JCB [16 h] | 2,359.13 | 0.00118604945766761 | Cons. | Z4 | Roads | Cons | Roads | Rd 02 |
| B1.2.10 14 53.0315 |  | 1 Sheet Alumenium, Double post | 2d | 2026-12-10 | 2026-12-12 | B1.2.32 17 23.01.15, B1.2.32 17 23.02.15 | 23.32d |  | Traffic signs, ground mounted, 1 Sheets Alumenium, (breakaway) Double post [2.5]; Labor [31.18 h]; Foreman [15.59 h]; Operator [31.18 h]; JCB [16 h] | 7,794.47 | 0.00391866691515677 | Cons. | Z4 | Roads | Cons | Roads | Rd 02 |
|  | Guard Rail | **Guard Rail** |  | 2026-10-07 | 2026-10-19 |  |  |  |  |  |  |  |  |  |  |  |  |
| B2.31 23 00.664 |  | Excavation | 3d | 2026-10-07 | 2026-10-10 | B1.2.32 11 23.01.18 | 45.32d | 0d | Labor [31.18 h]; Foreman [15.59 h]; Operator [31.18 h]; Surveyor [15.59 h]; Surveyor Helper [15.59 h]; JCB [16 h]; Water Tanker [16 h]; Dump Truck [16 h]; Plate Compactor [16 h]; W-Beam Guard Rail [450] | 126,000 | 0.000319792148564778 | Cons. | Z3 | Roads | Cons | Roads | Rd 02 |
| 10 14 53.25 |  | Foundation | 2d | 2026-10-13 | 2026-10-14 | B2.31 23 00.664 FS+2d | 47.32d | 0d | Labor [46.78 h]; Carpenter [23.39 h]; Steelfixer [23.39 h]; Mason [23.39 h]; Surveyor [23.39 h]; Surveyor Helper [23.39 h]; W-Beam Guard Rail [750] | 210,000 | 0.000319792148564778 | Cons. | Z3 | Roads | Cons | Roads | Rd 02 |
| B1.2.10 14 53.338 |  | W-Beam Guard Rail Installation | 4d | 2026-10-15 | 2026-10-19 | 10 14 53.25 SS+2d | 47.32d | 2d | Labor [31.18 h]; Foreman [15.59 h]; Operator [31.18 h]; JCB [16 h]; W-Beam Guard Rail [1800] | 504,000 | 0.000953766057123017 | Cons. | Z3 | Roads | Cons | Roads | Rd 02 |
|  | Road Misc. | **Miscellaneous** |  | 2026-12-03 | 2026-12-05 |  |  |  |  |  |  |  |  |  |  |  |  |
| B1.2.32 12 19.13.015 |  | Speed Tables | 2d | 2026-12-03 | 2026-12-05 | B1.2.32 12 16.01.15 | 23.32d | 0d | Asphalt speed table [2]; Labor [31.18 h]; Foreman [15.59 h]; Operator [31.18 h]; JCB [16 h]; Roller Compactor [16 h] | 24,408.46 | 0.0122713455769057 | Cons. | Z4 | Roads | Cons | Roads | Rd 02 |
|  | Landscape | **Landscape** |  | 2026-11-15 | 2026-12-30 |  |  |  |  |  |  |  |  |  |  |  |  |
|  | Fences | **Fences** |  | 2026-11-15 | 2026-12-03 |  |  |  |  |  |  |  |  |  |  |  |  |
|  | (ZATCA HCIS) | **Steel fence (ZATCA HCIS)** |  | 2026-11-15 | 2026-12-03 |  |  |  |  |  |  |  |  |  |  |  |  |
| B7.32 31 26.01-191 |  | Earthwork | 6d | 2026-11-15 | 2026-11-21 | B2.31 23 00.431 | 6.32d | 0d | Labor [46.78 h]; Foreman [23.39 h]; Operator [46.78 h]; Surveyor [23.39 h]; Surveyor Helper [23.39 h]; Excavator (With Bucket) [24 h]; Water Tanker [24 h]; Dump Truck [24 h]; Plate Compactor [24 h]; Steel fence (ZATCA HCIS) [116.81] | 25,743.45 | 0.0145109845928078 | Cons. | Z4 | Landscp | Cons | Fncs&Gt | Rd 02 |
| B7.32 31 26.01-193 |  | Foundation | 6d | 2026-11-22 | 2026-11-28 | B7.32 31 26.01-191 | 6.32d | 0d | Labor [62.37 h]; Laboratory Officer [31.18 h]; Carpenter [31.18 h]; Steelfixer [31.18 h]; Mason [31.18 h]; Surveyor [31.18 h]; Surveyor Helper [31.18 h]; Steel fence (ZATCA HCIS) [116.81] | 25,743.45 | 0.0145109845928078 | Cons. | Z4 | Landscp | Cons | Fncs&Gt | Rd 02 |
| B7.32 31 26.01-195 |  | Fence Installation | 5d | 2026-11-29 | 2026-12-03 | B7.32 31 26.01-193 | 6.32d | 2d | Labor [93.55 h]; Foreman [46.78 h]; Welder [46.78 h]; Mason [46.78 h]; Operator [93.55 h]; Boom Truck [48 h]; Welding Machine [48 h]; Steel fence (ZATCA HCIS) [545.12] | 120,133.48 | 0.0677164508164642 | Cons. | Z4 | Landscp | Cons | Fncs&Gt | Rd 02 |

| ID | WBS | Activity | Duration | Start | Finish | Predecessors | Complete | Remaining | Planned start | Planned finish | Total float | Free float | Resources | Cost | Actual cost | Weight % | DMM2 Weekly Progress | DMM2 Zones | Networks & Stations | DMM2 Phases | Networks Components | Dmm2 Roads | UNASCO | Subcontractors works |
| --- | --- | --- | --- | --- | --- | --- | --- | --- | --- | --- | --- | --- | --- | --- | --- | --- | --- | --- | --- | --- | --- | --- | --- | --- |
|  | Geotextile | **Geotextile** |  | 2026-11-30 | 2026-12-05 |  |  |  |  |  |  |  |  |  |  |  |  |  |  |  |  |  |  |  |
| B7.31 32 19.23.6 |  | Geotextile to protect trees planting soil | 5d | 2026-11-30 | 2026-12-05 | DMM2-Proc-Delv-7541 |  |  |  |  | 19.32d | 16.32d | Labor [93.55 h]; Foreman [46.78 h]; Landscape Specialist [46.78 h]; Geotextile to protect trees planting soil [5985.33] | 42,040.92 |  | 0.0154954429903487 | Cons. | Z4 | Landscp | Cons | Lndscp | Rd 02 |  |  |
| B7.31 32 19.23.7 |  | Geotextile below gravel bed | 5d | 2026-11-30 | 2026-12-05 | B7.32 31 26.01-191, DMM2-Proc-Delv-7541 |  |  |  |  | 19.32d | 16.32d | Labor [93.55 h]; Foreman [46.78 h]; Landscape Specialist [46.78 h]; Geotextile below gravel bed [24269.9] | 170,472.04 |  | 0.0942792472553167 | Cons. | Z4 | Landscp | Cons | Lndscp | Rd 02 |  |  |
|  | Trees | **Trees** |  | 2026-12-24 | 2026-12-30 |  |  |  |  |  |  |  |  |  |  |  |  |  |  |  |  |  |  |  |
| B7.32 93 43.07 |  | Tamarindus indica | 5d | 2026-12-24 | 2026-12-30 | B7.31 32 19.23.6, DMM2-Proc-Delv-7539, B7.31 32 19.23.7, B7.31 32 19.23.5, B7.32 91 00.01.01, B7.32 93 43.7 |  |  |  |  | 3d | 0d | Labor [93.55 h]; Operator [93.55 h]; Surveyor [46.78 h]; Surveyor Helper [46.78 h]; JCB [48 h]; Water Tanker [48 h]; Landscape Specialist [46.78 h]; Tamarindus indica [296.02] | 1,543,855.66 |  | 0.718429899537717 | Cons. | Z4 | Landscp | Cons | Lndscp | Rd 02 |  |  |
|  | Road 03 | **Road 03** |  | 2025-11-28 | 2026-12-30 |  |  |  |  |  |  |  |  |  |  |  |  |  |  |  |  |  |  |  |
|  | Wet Networks | **Wet Networks** |  | 2026-03-12 | 2026-11-07 |  |  |  |  |  |  |  |  |  |  |  |  |  |  |  |  |  |  |  |
|  | Sewerage Network | **Sewerage Network** |  | 2026-04-12 | 2026-10-08 |  |  |  |  |  |  |  |  |  |  |  |  |  |  |  |  |  |  |  |
|  | GRP | **GRP Pipes** |  | 2026-04-12 | 2026-08-27 |  |  |  |  |  |  |  |  |  |  |  |  |  |  |  |  |  |  |  |
|  | 150 | **?150** |  | 2026-04-12 | 2026-08-27 |  |  |  |  |  |  |  |  |  |  |  |  |  |  |  |  |  |  |  |
|  | 1 | **Depth From 1.5m to 2.5m** |  | 2026-04-15 | 2026-05-21 |  |  |  |  |  |  |  |  |  |  |  |  |  |  |  |  |  |  |  |
| B5.33 31 00.01.0211 |  | Excavation | 2d | 2026-04-15 A | 2026-04-16 A | B1.1.31 23 23.172 | 100% |  |  |  |  |  | Labor [28.35 h]; Foreman [14.17 h]; Operator [28.35 h]; Surveyor [14.17 h]; Surveyor Helper [14.17 h]; Excavator (With Bucket) [16 h]; Water Tanker [16 h]; Dump Truck [16 h]; Plate Compactor [16 h]; Sew Dia. 150mm Depth: 1.51m - 2.5m [15.67] | 4,500.25 | 4,500.25 | 0.00104261322598816 | Cons. | Z4 | Sew | Cons | GRPs | Rd 03 | CS.UNSC | SUB.C |
| B5.33 31 00.01.0215 |  | Sand Bedding | 2d | 2026-04-18 A | 2026-04-19 A | B5.33 31 00.01.0211 | 100% |  |  |  |  |  | Labor [28.35 h]; Foreman [14.17 h]; Operator [56.7 h]; Surveyor [14.17 h]; Surveyor Helper [14.17 h]; Loader [16 h]; Water Tanker [16 h]; Dump Truck [16 h]; Plate Compactor [16 h]; Sew Dia. 150mm Depth: 1.51m - 2.5m [3.92] | 1,124.18 | 1,124.18 | 0.000260448551346613 | Cons. | Z4 | Sew | Cons | GRPs | Rd 03 | CS.UNSC | SUB.C |
| B5.33 31 00.01.0219 |  | Pipe Laying | 2d | 2026-04-19 A | 2026-04-20 A | B5.33 31 00.01.0215 | 100% |  |  |  |  |  | Labor [28.35 h]; Foreman [14.17 h]; Plumber Helper [14.17 h]; Plumber [14.17 h]; Operator [14.17 h]; Surveyor [14.17 h]; Surveyor Helper [14.17 h]; Mobile Crane [16 h]; Sew Dia. 150mm Depth: 1.51m - 2.5m [35.26] | 10,124.68 | 10,124.68 | 0.00234567500332294 | Cons. | Z4 | Sew | Cons | GRPs | Rd 03 | CS.UNSC | SUB.C |
| B5.33 31 00.01.02113 |  | Embedment & Test | 1d | 2026-04-21 A | 2026-04-21 A | B5.33 31 00.01.0219 | 100% |  |  |  |  |  | Labor [42.52 h]; Foreman [21.26 h]; Plumber Helper [21.26 h]; Plumber [21.26 h]; Operator [42.52 h]; Surveyor [21.26 h]; Surveyor Helper [21.26 h]; Loader [24 h]; Water Tanker [24 h]; Dump Truck [24 h]; Plate Compactor [24 h]; Roller Compactor [24 h]; Sew Dia. 150mm Depth: 1.51m - 2.5m [15.67] | 4,500.25 | 4,500.25 | 0.00104261322598816 | Cons. | Z4 | Sew | Cons | GRPs | Rd 03 | CS.UNSC | SUB.C |
| B5.33 31 00.01.02117 |  | Backfilling & Warrning Tape | 16.62d | 2026-05-03 A | 2026-05-21 A | B5.33 31 00.01.02113 | 100% |  |  |  |  |  | Labor [56.7 h]; Foreman [28.35 h]; Operator [113.4 h]; Surveyor [28.35 h]; Surveyor Helper [28.35 h]; Loader [32 h]; Water Tanker [32 h]; Dump Truck [32 h]; Plate Compactor [32 h]; Roller Compactor [32 h]; Sew Dia. 150mm Depth: 1.51m - 2.5m [7.84] | 2,251.89 | 2,251.89 | 0.000521716123294941 | Cons. | Z4 | Sew | Cons | GRPs | Rd 03 | CS.UNSC | SUB.C |
|  | 2 | **Depth From 2.5m to 3.5m** |  | 2026-04-12 | 2026-08-27 |  |  |  |  |  |  |  |  |  |  |  |  |  |  |  |  |  |  |  |
| B5.33 31 00.01.0213 |  | Excavation | 3d | 2026-04-12 A | 2026-04-14 A | B5.33 31 00.01.0211 | 100% |  |  |  |  |  | Labor [28.35 h]; Foreman [14.17 h]; Operator [28.35 h]; Surveyor [14.17 h]; Surveyor Helper [14.17 h]; Excavator (With Bucket) [16 h]; Water Tanker [16 h]; Dump Truck [16 h]; Plate Compactor [16 h]; Sew Dia. 150mm Depth: 2.51m - 3.5m [2.82] | 977.13 | 977.13 | 0.000221608358516241 | Cons. | Z4 | Sew | Cons | GRPs | Rd 03 | CS.UNSC | SUB.C |
| B5.33 31 00.01.0217 |  | Sand Bedding | 3d | 2026-04-15 A | 2026-04-18 A | B5.33 31 00.01.0213 | 100% |  |  |  |  |  | Labor [28.35 h]; Foreman [14.17 h]; Operator [56.7 h]; Surveyor [14.17 h]; Surveyor Helper [14.17 h]; Loader [16 h]; Water Tanker [16 h]; Dump Truck [16 h]; Plate Compactor [16 h]; Sew Dia. 150mm Depth: 2.51m - 3.5m [0.7] | 244.28 | 244.28 | 5.54020896290601E-005 | Cons. | Z4 | Sew | Cons | GRPs | Rd 03 | CS.UNSC | SUB.C |
| B5.33 31 00.01.02111 |  | Pipe Laying | 2d | 2026-04-19 A | 2026-04-20 A | B5.33 31 00.01.0217 | 100% |  |  |  |  |  | Labor [28.35 h]; Foreman [14.17 h]; Plumber Helper [14.17 h]; Plumber [14.17 h]; Operator [14.17 h]; Surveyor [14.17 h]; Surveyor Helper [14.17 h]; Mobile Crane [16 h]; Sew Dia. 150mm Depth: 2.51m - 3.5m [6.35] | 2,202.91 | 2,202.91 | 0.000499608129690632 | Cons. | Z4 | Sew | Cons | GRPs | Rd 03 | CS.UNSC | SUB.C |
| B5.33 31 00.01.02115 |  | Embedment & Test | 1d | 2026-04-21 A | 2026-04-21 A | B5.33 31 00.01.02111 | 100% |  |  |  |  |  | Labor [42.52 h]; Foreman [21.26 h]; Plumber Helper [21.26 h]; Plumber [21.26 h]; Operator [42.52 h]; Surveyor [21.26 h]; Surveyor Helper [21.26 h]; Loader [24 h]; Water Tanker [24 h]; Dump Truck [24 h]; Plate Compactor [24 h]; Roller Compactor [24 h]; Sew Dia. 150mm Depth: 2.51m - 3.5m [2.82] | 977.13 | 977.13 | 0.000221608358516241 | Cons. | Z4 | Sew | Cons | GRPs | Rd 03 | CS.UNSC | SUB.C |
| B5.33 31 00.01.02119 |  | Backfilling & Warrning Tape | 95.62d | 2026-05-04 A | 2026-08-27 A | B5.33 31 00.01.02115, B5.33 31 00.01.02117 | 100% |  |  |  |  |  | Labor [56.7 h]; Foreman [28.35 h]; Operator [113.4 h]; Surveyor [28.35 h]; Surveyor Helper [28.35 h]; Loader [32 h]; Water Tanker [32 h]; Dump Truck [32 h]; Plate Compactor [32 h]; Roller Compactor [32 h]; Sew Dia. 150mm Depth: 2.51m - 3.5m [1.41] | 488.57 | 488.57 | 0.00011080417925812 | Cons. | Z4 | Sew | Cons | GRPs | Rd 03 | CS.UNSC | SUB.C |
|  | Manholes | **Manholes ?1200** |  | 2026-04-16 | 2026-10-08 |  |  |  |  |  |  |  |  |  |  |  |  |  |  |  |  |  |  |  |
|  | 3 | **Depth From 1.5m to 2.5m** |  | 2026-05-20 | 2026-10-08 |  |  |  |  |  |  |  |  |  |  |  |  |  |  |  |  |  |  |  |
| B6.33 05 39.01.1627 |  | Excavation & Compaction | 2d | 2026-05-20 A | 2026-05-21 A | B5.33 31 00.01.0213 | 100% |  |  |  |  |  | Labor [28.35 h]; Foreman [14.17 h]; Operator [28.35 h]; Surveyor [14.17 h]; Surveyor Helper [14.17 h]; Excavator (With Bucket) [16 h]; Water Tanker [16 h]; Dump Truck [16 h]; Plate Compactor [16 h]; MH depth 1.51 - 2.5m [0.66] | 8,362.98 | 8,362.98 | 0.00159819368155211 | Cons. | Z4 | Sew | Cons | Manhole | Rd 03 | CS.UNSC | SUB.C |
| B6.33 05 39.01.1637 |  | Blinding Conc, & RC Base | 3d | 2026-05-23 A | 2026-05-25 A | B6.33 05 39.01.1627 | 100% |  |  |  |  |  | Labor [42.52 h]; Foreman [21.26 h]; Laboratory Officer [21.26 h]; Carpenter [21.26 h]; Steelfixer [21.26 h]; Mason [21.26 h]; MH depth 1.51 - 2.5m [0.45] | 5,701.91 | 5,701.91 | 0.00108965546636573 | Cons. | Z4 | Sew | Cons | Manhole | Rd 03 | CS.UNSC | SUB.C |
| B6.33 05 39.01.1647 |  | Manhole Installation | 69.55d | 2026-05-31 A | 2026-08-19 A | B6.33 05 39.01.1637 | 100% |  |  |  |  |  | Labor [28.35 h]; Operator [28.35 h]; Surveyor [14.17 h]; Surveyor Helper [14.17 h]; Boom Truck [16 h]; Mobile Crane [16 h]; MH depth 1.51 - 2.5m [1.99] | 25,278.55 | 25,278.55 | 0.00483081828096108 | Cons. | Z4 | Sew | Cons | Manhole | Rd 03 | CS.UNSC | SUB.C |
| B6.33 05 39.01.1657 |  | Test, Internal Finishing, Benching & Cover (45.60% Completed) | 59.45d | 2026-07-08 A | 2026-09-15 A | B6.33 05 39.01.1647 | 100% |  |  |  |  |  | Labor [28.44 h]; Foreman [14.22 h]; Plumber Helper [14.22 h]; Plumber [14.22 h]; Mason [14.22 h]; MH depth 1.51 - 2.5m [0.25] | 3,193.38 | 3,193.38 | 0.00108965546636573 | Cons. | Z4 | Sew | Cons | Manhole | Rd 03 | CS.UNSC | SUB.C |
| B6.33 05 39.01.1667 |  | Backfilling | 33.95d | 2026-07-13 A | 2026-08-22 A | B5.33 31 00.01.02117 | 100% |  |  |  |  |  | Labor [70.87 h]; Foreman [35.44 h]; Operator [70.87 h]; Surveyor [35.44 h]; Surveyor Helper [35.44 h]; Loader [40 h]; Water Tanker [40 h]; Dump Truck [40 h]; Plate Compactor [40 h]; MH depth 1.51 - 2.5m [0.88] | 11,213.79 | 11,213.79 | 0.0021429945757647 | Cons. | Z4 | Sew | Cons | Manhole | Rd 03 | CS.UNSC | SUB.C |
| B6.33 05 39.01.1657_R |  | Test, Internal Finishing, Benching & Cover(Rem) | 2.18d | 2026-09-27 A | 2026-10-08 | B6.33 05 39.01.1647, B6.33 05 39.01.1657, B6.33 05 39.01.1607_R | 50% | 1.09d | 2026-09-27 | 2026-09-29 | 112.23d |  | Labor [33.93 h]; Foreman [16.96 h]; Plumber Helper [16.96 h]; Plumber [16.96 h]; Mason [16.96 h]; MH depth 1.51 - 2.5m [0.3] | 3,809.64 | 1,904.82 | 0.00108965546636573 | Cons. | Z4 | Sew | Cons | Manhole | Rd 03 | CS.UNSC | SUB.C |

| ID | WBS | Activity | Duration | Start | Finish | Predecessors | Complete | Remaining | Planned start | Planned finish | Total float | Free float | Resources | Cost | Actual cost | Weight % | DMM2 Weekly Progress | DMM2 Zones | Networks & Stations | DMM2 Phases | UNASCO | Networks Components | Subcontractors works | Dmm2 Roads | Ac dates > DD |
| --- | --- | --- | --- | --- | --- | --- | --- | --- | --- | --- | --- | --- | --- | --- | --- | --- | --- | --- | --- | --- | --- | --- | --- | --- | --- |
|  | 4 | **Depth From 2.5m to 3.5m** |  | 2026-04-16 | 2026-10-08 |  |  |  |  |  |  |  |  |  |  |  |  |  |  |  |  |  |  |  |  |
| B6.33 05 39.01.1677 |  | Excavation & Compaction | 2d | 2026-04-16 A | 2026-04-18 A | B6.33 05 39.01.1627 | 100% |  |  |  |  |  | Labor [28.35 h]; Foreman [14.17 h]; Operator [28.35 h]; Surveyor [14.17 h]; Surveyor Helper [14.17 h]; Excavator (With Bucket) [16 h]; Water Tanker [16 h]; Dump Truck [16 h]; Plate Compactor [16 h]; MH depth 2.51 - 3.5m [0.82] | 12,557.47 | 12,557.47 | 0.00239967188397841 | Cons. | Z4 | Sew | Cons | CS.UNSC | Manhole | SUB.C | Rd 03 |  |
| B6.33 05 39.01.1687 |  | Blinding Conc, & RC Base | 3d | 2026-05-20 A | 2026-05-23 A | B6.33 05 39.01.1677 | 100% |  |  |  |  |  | Labor [42.52 h]; Foreman [21.26 h]; Laboratory Officer [21.26 h]; Carpenter [21.26 h]; Steelfixer [21.26 h]; Mason [21.26 h]; MH depth 2.51 - 3.5m [0.55] | 8,447.73 | 8,447.73 | 0.00161432058487404 | Cons. | Z4 | Sew | Cons | CS.UNSC | Manhole | SUB.C | Rd 03 |  |
| B6.33 05 39.01.1697 |  | Manhole Installation (43.20% Completed) | 95d | 2026-05-24 A | 2026-09-15 A | B6.33 05 39.01.1687 | 100% |  |  |  |  |  | Labor [13.47 h]; Operator [13.47 h]; Surveyor [6.74 h]; Surveyor Helper [6.74 h]; Boom Truck [6.91 h]; Mobile Crane [6.91 h]; MH depth 2.51 - 3.5m [1.06] | 16,274.48 | 16,274.48 | 0.00719901565193524 | Cons. | Z4 | Sew | Cons | CS.UNSC | Manhole | SUB.C | Rd 03 |  |
| B6.33 05 39.01.1707 |  | Test, Internal Finishing, Benching & Cover (45.60% Completed) | 59d | 2026-07-09 A | 2026-09-15 A | B6.33 05 39.01.1697 SS | 100% |  |  |  |  |  | Labor [28.44 h]; Foreman [14.22 h]; Plumber Helper [14.22 h]; Plumber [14.22 h]; Mason [14.22 h]; MH depth 2.51 - 3.5m [0.25] | 3,852.17 | 3,852.17 | 0.00161432058487404 | Cons. | Z4 | Sew | Cons | CS.UNSC | Manhole | SUB.C | Rd 03 |  |
| B6.33 05 39.01.1717 |  | Backfilling | 41.5d | 2026-07-14 A | 2026-08-31 A | B5.33 31 00.01.02117 | 100% |  |  |  |  |  | Labor [70.87 h]; Foreman [35.44 h]; Operator [70.87 h]; Surveyor [35.44 h]; Surveyor Helper [35.44 h]; Loader [40 h]; Water Tanker [40 h]; Dump Truck [40 h]; Plate Compactor [40 h]; MH depth 2.51 - 3.5m [1.1] | 16,895.51 | 16,895.51 | 0.00322864944389824 | Cons. | Z4 | Sew | Cons | CS.UNSC | Manhole | SUB.C | Rd 03 |  |
| B6.33 05 39.01.1697_R |  | Manhole Installation(Rem) | 1.14d | 2026-09-24 A | 2026-10-07 | B6.33 05 39.01.1687, B6.33 05 39.01.1697 | 50% | 0.57d | 2026-09-16 | 2026-09-17 | 112.75d |  | Labor [17.71 h]; Operator [17.71 h]; Surveyor [8.86 h]; Surveyor Helper [8.86 h]; Boom Truck [9.09 h]; Mobile Crane [9.09 h]; MH depth 2.51 - 3.5m [1.4] | 21,397.93 | 19,293.98 | 0.00719901565193524 | Cons. | Z4 | Sew | Cons | CS.UNSC | Manhole | SUB.C | Rd 03 | UDF_G1 |
| B6.33 05 39.01.1707_R |  | Test, Internal Finishing, Benching & Cover(Rem) | 2.18d | 2026-09-29 A | 2026-10-08 | B6.33 05 39.01.1697_R SS, B6.33 05 39.01.1707, B6.33 05 39.01.1657_R | 50% | 1.09d | 2026-09-29 | 2026-10-03 | 112.23d |  | Labor [33.93 h]; Foreman [16.96 h]; Plumber Helper [16.96 h]; Plumber [16.96 h]; Mason [16.96 h]; MH depth 2.51 - 3.5m [0.3] | 4,595.57 | 2,297.78 | 0.00161432058487404 | Cons. | Z4 | Sew | Cons | CS.UNSC | Manhole | SUB.C | Rd 03 |  |
|  | Stormwater Network | **Stormwater Network** |  | 2026-03-12 | 2026-10-07 |  |  |  |  |  |  |  |  |  |  |  |  |  |  |  |  |  |  |  |  |
|  | GRP | **GRP** |  | 2026-04-14 | 2026-10-07 |  |  |  |  |  |  |  |  |  |  |  |  |  |  |  |  |  |  |  |  |
|  | ?4001 | **?400** |  | 2026-04-14 | 2026-10-07 |  |  |  |  |  |  |  |  |  |  |  |  |  |  |  |  |  |  |  |  |
|  | 3 | **Depth From 1.5m to 2.5m** |  | 2026-04-14 | 2026-10-07 |  |  |  |  |  |  |  |  |  |  |  |  |  |  |  |  |  |  |  |  |
| B6.33 42 11.01-110 |  | Excavation | 8d | 2026-04-14 A | 2026-04-22 A | B5.33 31 00.01.0213 | 100% |  |  |  |  |  | Labor [42.52 h]; Foreman [21.26 h]; Operator [42.52 h]; Surveyor [21.26 h]; Surveyor Helper [21.26 h]; Excavator (With Bucket) [24 h]; Water Tanker [24 h]; Dump Truck [24 h]; Plate Compactor [24 h]; Depth: 1.51m - 2.5m [3.99] | 1,531.45 | 1,531.45 | 0.00310601117599926 | Cons. | Z4 | Storm | Cons | CS.UNSC | GRPs | SUB.C | Rd 03 |  |
| B6.33 42 11.01-116 |  | Sand Bedding | 17.31d | 2026-04-16 A | 2026-05-06 A | B6.33 42 11.01-110 | 100% |  |  |  |  |  | Labor [28.35 h]; Foreman [14.17 h]; Operator [56.7 h]; Surveyor [14.17 h]; Surveyor Helper [14.17 h]; Loader [16 h]; Water Tanker [16 h]; Dump Truck [16 h]; Plate Compactor [16 h]; Depth: 1.51m - 2.5m [1] | 383 | 383 | 0.000776776306783888 | Cons. | Z4 | Storm | Cons | CS.UNSC | GRPs | SUB.C | Rd 03 |  |
| B6.33 42 11.01-122 |  | Pipe Laying | 21.47d | 2026-04-19 A | 2026-05-13 A | B6.33 42 11.01-116 | 100% |  |  |  |  |  | Labor [42.52 h]; Foreman [21.26 h]; Plumber Helper [21.26 h]; Plumber [21.26 h]; Operator [21.26 h]; Surveyor [21.26 h]; Surveyor Helper [21.26 h]; Mobile Crane [24 h]; Depth: 1.51m - 2.5m [8.98] | 3,445.9 | 3,445.9 | 0.00698879865878235 | Cons. | Z4 | Storm | Cons | CS.UNSC | GRPs | SUB.C | Rd 03 |  |
| B6.33 42 11.01-128 |  | Embedment & Test | 12.31d | 2026-05-06 A | 2026-05-20 A | B6.33 42 11.01-122 | 100% |  |  |  |  |  | Labor [70.87 h]; Foreman [35.44 h]; Plumber Helper [35.44 h]; Plumber [35.44 h]; Operator [70.87 h]; Surveyor [35.44 h]; Surveyor Helper [35.44 h]; Loader [40 h]; Water Tanker [40 h]; Dump Truck [40 h]; Plate Compactor [40 h]; Roller Compactor [40 h]; Depth: 1.51m - 2.5m [3.99] | 1,531.45 | 1,531.45 | 0.00310601117599926 | Cons. | Z4 | Storm | Cons | CS.UNSC | GRPs | SUB.C | Rd 03 |  |
| B6.33 42 11.01-134 |  | Backfilling & Warrning Tape (67.02% Completed) | 106.53d | 2026-05-10 A | 2026-09-15 A | B6.33 42 11.01-128 | 100% |  |  |  |  |  | Labor [73.15 h]; Foreman [36.58 h]; Operator [146.31 h]; Surveyor [36.58 h]; Surveyor Helper [36.58 h]; Loader [37.53 h]; Water Tanker [37.53 h]; Dump Truck [37.53 h]; Plate Compactor [37.53 h]; Roller Compactor [37.53 h]; Depth: 1.51m - 2.5m [1.34] | 513.39 | 513.39 | 0.00155355261356778 | Cons. | Z4 | Storm | Cons | CS.UNSC | GRPs | SUB.C | Rd 03 |  |
| B6.33 42 11.01-134_R |  | Backfilling & Warrning Tape(Rem) | 3.75d | 2026-09-22 A | 2026-10-07 | B6.33 42 11.01-128, B6.33 42 11.01-134 | 90% | 0.38d | 2026-09-16 | 2026-09-20 | 47.52d | 112.95d | Labor [35.99 h]; Foreman [18 h]; Operator [71.99 h]; Surveyor [18 h]; Surveyor Helper [18 h]; Loader [18.47 h]; Water Tanker [18.47 h]; Dump Truck [18.47 h]; Plate Compactor [18.47 h]; Roller Compactor [18.47 h]; Depth: 1.51m - 2.5m [0.66] | 252.61 | 237.3 | 0.00155355261356778 | Cons. | Z4 | Storm | Cons | CS.UNSC | GRPs | SUB.C | Rd 03 |  |
|  | ?4002 | **?600** |  | 2026-04-16 | 2026-10-07 |  |  |  |  |  |  |  |  |  |  |  |  |  |  |  |  |  |  |  |  |
|  | 4 | **Depth From 1.5m to 2.5m** |  | 2026-04-16 | 2026-10-07 |  |  |  |  |  |  |  |  |  |  |  |  |  |  |  |  |  |  |  |  |
| B6.33 42 11.01-112 |  | Excavation | 8d | 2026-04-16 A | 2026-04-25 A | B6.33 42 11.01-110 | 100% |  |  |  |  |  | Labor [28.35 h]; Foreman [14.17 h]; Operator [28.35 h]; Surveyor [14.17 h]; Surveyor Helper [14.17 h]; Excavator (With Bucket) [16 h]; Water Tanker [16 h]; Dump Truck [16 h]; Plate Compactor [16 h]; 1.51m - 2.5m [9.52] | 8,061.23 | 8,061.23 | 5.30950164986435E-005 | Cons. | Z4 | Storm | Cons | CS.UNSC | GRPs | SUB.C | Rd 03 |  |
| B6.33 42 11.01-118 |  | Sand Bedding (67.02% Completed) | 126d | 2026-04-18 A | 2026-09-15 A | B6.33 42 11.01-112 | 100% |  |  |  |  |  | Labor [20.9 h]; Foreman [10.45 h]; Operator [41.8 h]; Surveyor [10.45 h]; Surveyor Helper [10.45 h]; Loader [10.72 h]; Water Tanker [10.72 h]; Dump Truck [10.72 h]; Plate Compactor [10.72 h]; 1.51m - 2.5m [6.38] | 5,402.83 | 5,402.83 | 5.30950164986435E-005 | Cons. | Z4 | Storm | Cons | CS.UNSC | GRPs | SUB.C | Rd 03 |  |
| B6.33 42 11.01-124 |  | Pipe Laying (67.02% Completed) | 124d | 2026-04-20 A | 2026-09-15 A | B6.33 42 11.01-118 FF | 100% |  |  |  |  |  | Labor [20.9 h]; Foreman [10.45 h]; Plumber Helper [10.45 h]; Plumber [10.45 h]; Operator [10.45 h]; Surveyor [10.45 h]; Surveyor Helper [10.45 h]; Mobile Crane [10.72 h]; 1.51m - 2.5m [14.51] | 12,279.2 | 12,279.2 | 0.000120670801288806 | Cons. | Z4 | Storm | Cons | CS.UNSC | GRPs | SUB.C | Rd 03 |  |
| B6.33 42 11.01-130 |  | Embedment & Test (67.02% Completed) | 109.69d | 2026-05-06 A | 2026-09-15 A | B6.33 42 11.01-124 FF | 100% |  |  |  |  |  | Labor [41.8 h]; Foreman [20.9 h]; Plumber Helper [20.9 h]; Plumber [20.9 h]; Operator [41.8 h]; Surveyor [20.9 h]; Surveyor Helper [20.9 h]; Loader [21.45 h]; Water Tanker [21.45 h]; Dump Truck [21.45 h]; Plate Compactor [21.45 h]; Roller Compactor [21.45 h]; 1.51m - 2.5m [1.74] | 1,473.5 | 1,473.5 | 1.44804590450846E-005 | Cons. | Z4 | Storm | Cons | CS.UNSC | GRPs | SUB.C | Rd 03 |  |
| B6.33 42 11.01-136 |  | Backfilling & Warrning Tape (67.02% Completed) | 105.69d | 2026-05-11 A | 2026-09-15 A | B6.33 42 11.01-130 FF | 100% |  |  |  |  |  | Labor [52.25 h]; Foreman [26.13 h]; Operator [104.5 h]; Surveyor [26.13 h]; Surveyor Helper [26.13 h]; Loader [26.81 h]; Water Tanker [26.81 h]; Dump Truck [26.81 h]; Plate Compactor [26.81 h]; Roller Compactor [26.81 h]; 1.51m - 2.5m [3.19] | 2,701.42 | 2,701.42 | 2.65475082493218E-005 | Cons. | Z4 | Storm | Cons | CS.UNSC | GRPs | SUB.C | Rd 03 |  |
| B6.33 42 11.01-136_R |  | Backfilling & Warrning Tape(Rem) | 2.96d | 2026-09-16 A | 2026-10-07 | B6.33 42 11.01-130_R FF, B6.33 42 11.01-136 | 90% | 0.3d | 2026-09-16 | 2026-09-19 | 113.02d |  | Labor [25.71 h]; Foreman [12.85 h]; Operator [51.42 h]; Surveyor [12.85 h]; Surveyor Helper [12.85 h]; Loader [13.19 h]; Water Tanker [13.19 h]; Dump Truck [13.19 h]; Plate Compactor [13.19 h]; Roller Compactor [13.19 h]; 1.51m - 2.5m [1.57] | 1,329.2 | 1,196.28 | 2.65475082493218E-005 | Cons. | Z4 | Storm | Cons | CS.UNSC | GRPs | SUB.C | Rd 03 |  |
| B6.33 42 11.01-130_R |  | Embedment & Test(Rem) | 2.57d | 2026-09-16 A | 2026-10-07 | B6.33 42 11.01-124_R FF, B6.33 42 11.01-130 | 90% | 0.26d | 2026-09-16 | 2026-09-19 | 113.02d | 0d | Labor [20.57 h]; Foreman [10.28 h]; Plumber Helper [10.28 h]; Plumber [10.28 h]; Operator [20.57 h]; Surveyor [10.28 h]; Surveyor Helper [10.28 h]; Loader [10.55 h]; Water Tanker [10.55 h]; Dump Truck [10.55 h]; Plate Compactor [10.55 h]; Roller Compactor [10.55 h]; 1.51m - 2.5m [0.86] | 725.02 | 652.52 | 1.44804590450846E-005 | Cons. | Z4 | Storm | Cons | CS.UNSC | GRPs | SUB.C | Rd 03 |  |
| B6.33 42 11.01-118_R |  | Sand Bedding(Rem) | 3d | 2026-09-21 A | 2026-10-07 | B6.33 42 11.01-112, B6.33 42 11.01-118 | 90% | 0.3d | 2026-09-16 | 2026-09-19 | 113.02d | 0d | Labor [10.28 h]; Foreman [5.14 h]; Operator [20.57 h]; Surveyor [5.14 h]; Surveyor Helper [5.14 h]; Loader [5.28 h]; Water Tanker [5.28 h]; Dump Truck [5.28 h]; Plate Compactor [5.28 h]; 1.51m - 2.5m [3.14] | 2,658.4 | 2,538.47 | 5.30950164986435E-005 | Cons. | Z4 | Storm | Cons | CS.UNSC | GRPs | SUB.C | Rd 03 |  |
| B6.33 42 11.01-124_R |  | Pipe Laying(Rem) | 3d | 2026-09-26 A | 2026-10-07 | B6.33 42 11.01-118_R FF, B6.33 42 11.01-124 | 90% | 0.3d | 2026-09-16 | 2026-09-19 | 113.02d | 0d | Labor [10.28 h]; Foreman [5.14 h]; Plumber Helper [5.14 h]; Plumber [5.14 h]; Operator [5.14 h]; Surveyor [5.14 h]; Surveyor Helper [5.14 h]; Mobile Crane [5.28 h]; 1.51m - 2.5m [7.14] | 6,041.82 | 5,689.87 | 0.000120670801288806 | Cons. | Z4 | Storm | Cons | CS.UNSC | GRPs | SUB.C | Rd 03 |  |

| ID | WBS | Activity | Duration | Start | Finish | Predecessors | Complete | Remaining | Planned start | Planned finish | Total float | Resources | Cost | Actual cost | Weight % | DMM2 Weekly Progress | DMM2 Zones | Networks & Stations | DMM2 Phases | UNASCO | Networks Components | Subcontractors works | Dmm2 Roads |
| --- | --- | --- | --- | --- | --- | --- | --- | --- | --- | --- | --- | --- | --- | --- | --- | --- | --- | --- | --- | --- | --- | --- | --- |
|  | ?40021 | **?700** |  | 2026-04-22 | 2026-10-07 |  |  |  |  |  |  |  |  |  |  |  |  |  |  |  |  |  |  |
|  | 4 | **Depth From 1.5m to 2.5m** |  | 2026-04-22 | 2026-10-07 |  |  |  |  |  |  |  |  |  |  |  |  |  |  |  |  |  |  |
| B6.33 42 11.01-114 |  | Excavation | 5d | 2026-04-22 A | 2026-04-27 A | B6.33 42 11.01-112 | 100% |  |  |  |  | Labor [28.35 h]; Foreman [14.17 h]; Operator [28.35 h]; Surveyor [14.17 h]; Surveyor Helper [14.17 h]; Excavator (With Bucket) [16 h]; Water Tanker [16 h]; Dump Truck [16 h]; Plate Compactor [16 h]; 1.51m - 2.5m [13.17] | 12,116.46 | 12,116.46 | 0.00417736572342047 | Cons. | Z4 | Storm | Cons | CS.UNSC | GRPs | SUB.C | Rd 03 |
| B6.33 42 11.01-120 |  | Sand Bedding | 97.19d | 2026-04-25 A | 2026-08-20 A | B6.33 42 11.01-114 | 100% |  |  |  |  | Labor [28.35 h]; Foreman [14.17 h]; Operator [56.7 h]; Surveyor [14.17 h]; Surveyor Helper [14.17 h]; Loader [16 h]; Water Tanker [16 h]; Dump Truck [16 h]; Plate Compactor [16 h]; 1.51m - 2.5m [3.29] | 3,031.02 | 3,031.02 | 0.00104499783653133 | Cons. | Z4 | Storm | Cons | CS.UNSC | GRPs | SUB.C | Rd 03 |
| B6.33 42 11.01-126 |  | Pipe Laying | 95.14d | 2026-04-28 A | 2026-08-22 A | B6.33 42 11.01-120 | 100% |  |  |  |  | Labor [28.35 h]; Foreman [14.17 h]; Plumber Helper [14.17 h]; Plumber [14.17 h]; Operator [14.17 h]; Surveyor [14.17 h]; Surveyor Helper [14.17 h]; Mobile Crane [16 h]; 1.51m - 2.5m [29.63] | 27,263.93 | 27,263.93 | 0.0093997292833722 | Cons. | Z4 | Storm | Cons | CS.UNSC | GRPs | SUB.C | Rd 03 |
| B6.33 42 11.01-132 |  | Embedment & Test (34.18% Completed) | 34.86d | 2026-08-06 A | 2026-09-15 A | B6.33 42 11.01-126 | 100% |  |  |  |  | Labor [21.32 h]; Foreman [10.66 h]; Plumber Helper [10.66 h]; Plumber [10.66 h]; Operator [21.32 h]; Surveyor [10.66 h]; Surveyor Helper [10.66 h]; Loader [10.94 h]; Water Tanker [10.94 h]; Dump Truck [10.94 h]; Plate Compactor [10.94 h]; Roller Compactor [10.94 h]; 1.51m - 2.5m [4.5] | 4,141.27 | 4,141.27 | 0.00417736572342047 | Cons. | Z4 | Storm | Cons | CS.UNSC | GRPs | SUB.C | Rd 03 |
| B6.33 42 11.01-138 |  | Backfilling & Warrning Tape | 13.71d | 2026-08-09 A | 2026-08-24 A | B6.33 42 11.01-126 FF | 100% |  |  |  |  | Labor [70.87 h]; Foreman [35.44 h]; Operator [141.75 h]; Surveyor [35.44 h]; Surveyor Helper [35.44 h]; Loader [40 h]; Water Tanker [40 h]; Dump Truck [40 h]; Plate Compactor [40 h]; Roller Compactor [40 h]; 1.51m - 2.5m [6.59] | 6,062.04 | 6,062.04 | 0.00208999567306265 | Cons. | Z4 | Storm | Cons | CS.UNSC | GRPs | SUB.C | Rd 03 |
| B6.33 42 11.01-132_R |  | Embedment & Test(Rem) | 3.76d | 2026-09-24 A | 2026-10-07 | B6.33 42 11.01-126, B6.33 42 11.01-132 | 90% | 0.38d | 2026-09-16 | 2026-09-20 | 112.95d | Labor [41.05 h]; Foreman [20.53 h]; Plumber Helper [20.53 h]; Plumber [20.53 h]; Operator [41.05 h]; Surveyor [20.53 h]; Surveyor Helper [20.53 h]; Loader [21.06 h]; Water Tanker [21.06 h]; Dump Truck [21.06 h]; Plate Compactor [21.06 h]; Roller Compactor [21.06 h]; 1.51m - 2.5m [8.67] | 7,975.18 | 7,449.35 | 0.00417736572342047 | Cons. | Z4 | Storm | Cons | CS.UNSC | GRPs | SUB.C | Rd 03 |
|  | Strom Manholes | **Manholes** |  | 2026-04-19 | 2026-10-07 |  |  |  |  |  |  |  |  |  |  |  |  |  |  |  |  |  |  |
|  | 1 | **?1200** |  | 2026-04-19 | 2026-10-07 |  |  |  |  |  |  |  |  |  |  |  |  |  |  |  |  |  |  |
|  | 4 | **Depth From 1.5m to 2.5m** |  | 2026-04-19 | 2026-10-07 |  |  |  |  |  |  |  |  |  |  |  |  |  |  |  |  |  |  |
| B6.33 05 39.01.3977 |  | Excavation & Compaction (97.00% Completed) | 125d | 2026-04-19 A | 2026-09-15 A | B6.33 42 11.01-114 | 100% |  |  |  |  | Labor [30.25 h]; Foreman [15.12 h]; Operator [30.25 h]; Surveyor [15.12 h]; Surveyor Helper [15.12 h]; Excavator (With Bucket) [15.52 h]; Water Tanker [15.52 h]; Dump Truck [15.52 h]; Plate Compactor [15.52 h]; MH depth 1.50 - 2.5m [1.04] | 9,359.02 | 9,359.02 | 2.49372657086146E-005 | Cons. | Z4 | Storm | Cons | CS.UNSC | Manhole | SUB.C | Rd 03 |
| B6.33 05 39.01.3987 |  | Blinding Conc, & RC Base (97.00% Completed) | 61.6d | 2026-07-06 A | 2026-09-15 A | B6.33 05 39.01.3977 SS | 100% |  |  |  |  | Labor [45.37 h]; Foreman [22.69 h]; Laboratory Officer [22.69 h]; Carpenter [22.69 h]; Steelfixer [22.69 h]; Mason [22.69 h]; MH depth 1.50 - 2.5m [1.04] | 9,359.02 | 9,359.02 | 2.49372657086146E-005 | Cons. | Z4 | Storm | Cons | CS.UNSC | Manhole | SUB.C | Rd 03 |
| B6.33 05 39.01.3997 |  | Manhole Installation (97.00% Completed) | 59.6d | 2026-07-08 A | 2026-09-15 A | B6.33 05 39.01.3987 SS | 100% |  |  |  |  | Labor [30.25 h]; Operator [30.25 h]; Surveyor [15.12 h]; Surveyor Helper [15.12 h]; Boom Truck [15.52 h]; Mobile Crane [15.52 h]; MH depth 1.50 - 2.5m [3.4] | 30,493.69 | 30,493.69 | 7.48117971258433E-005 | Cons. | Z4 | Storm | Cons | CS.UNSC | Manhole | SUB.C | Rd 03 |
| B6.33 05 39.01.4007 |  | Test, Internal Finishing, Benching & Cover (97.00% Completed) | 58.6d | 2026-07-09 A | 2026-09-15 A | B6.33 05 39.01.3997 SS | 100% |  |  |  |  | Labor [60.5 h]; Foreman [30.25 h]; Plumber Helper [30.25 h]; Plumber [30.25 h]; Mason [30.25 h]; MH depth 1.50 - 2.5m [1.04] | 9,359.02 | 9,359.02 | 2.49372657086146E-005 | Cons. | Z4 | Storm | Cons | CS.UNSC | Manhole | SUB.C | Rd 03 |
| B6.33 05 39.01.4017 |  | Backfilling (97.00% Completed) | 57.6d | 2026-07-11 A | 2026-09-15 A | B6.33 05 39.01.4007 SS | 100% |  |  |  |  | Labor [75.62 h]; Foreman [37.81 h]; Operator [75.62 h]; Surveyor [37.81 h]; Surveyor Helper [37.81 h]; Loader [38.8 h]; Water Tanker [38.8 h]; Dump Truck [38.8 h]; Plate Compactor [38.8 h]; MH depth 1.50 - 2.5m [2.08] | 18,718.03 | 18,718.03 | 4.98745314172292E-005 | Cons. | Z4 | Storm | Cons | CS.UNSC | Manhole | SUB.C | Rd 03 |
| B6.33 05 39.01.3977_R |  | Excavation & Compaction(Rem) | 3d | 2026-09-20 A | 2026-09-22 A | B6.33 42 11.01-114, B6.33 05 39.01.3977 | 100% |  | 2026-09-16 | 2026-09-19 |  | Labor [0.94 h]; Foreman [0.47 h]; Operator [0.94 h]; Surveyor [0.47 h]; Surveyor Helper [0.47 h]; Excavator (With Bucket) [0.48 h]; Water Tanker [0.48 h]; Dump Truck [0.48 h]; Plate Compactor [0.48 h]; MH depth 1.50 - 2.5m [0.03] | 289.45 | 289.45 | 2.49372657086146E-005 | Cons. | Z4 | Storm | Cons | CS.UNSC | Manhole | SUB.C | Rd 03 |
| B6.33 05 39.01.4017_R |  | Backfilling(Rem) | 3d | 2026-09-20 A | 2026-09-24 A | B6.33 05 39.01.4007_R SS, B6.33 05 39.01.4017, B6.33 42 11.01-132_R | 100% |  |  |  |  | Labor [2.34 h]; Foreman [1.17 h]; Operator [2.34 h]; Surveyor [1.17 h]; Surveyor Helper [1.17 h]; Loader [1.2 h]; Water Tanker [1.2 h]; Dump Truck [1.2 h]; Plate Compactor [1.2 h]; MH depth 1.50 - 2.5m [0.06] | 578.91 | 578.91 | 4.98745314172292E-005 | Cons. | Z4 | Storm | Cons | CS.UNSC | Manhole | SUB.C | Rd 03 |
| B6.33 05 39.01.3987_R |  | Blinding Conc, & RC Base(Rem) | 3d | 2026-09-22 A | 2026-09-28 A | B6.33 05 39.01.3977_R SS, B6.33 05 39.01.3987 | 100% |  | 2026-09-16 | 2026-09-19 |  | Labor [1.4 h]; Foreman [0.7 h]; Laboratory Officer [0.7 h]; Carpenter [0.7 h]; Steelfixer [0.7 h]; Mason [0.7 h]; MH depth 1.50 - 2.5m [0.03] | 289.45 | 289.45 | 2.49372657086146E-005 | Cons. | Z4 | Storm | Cons | CS.UNSC | Manhole | SUB.C | Rd 03 |
| B6.33 05 39.01.3997_R |  | Manhole Installation(Rem) | 3d | 2026-09-26 A | 2026-10-01 A | B6.33 05 39.01.3987_R SS, B6.33 05 39.01.3997 | 100% |  | 2026-09-16 | 2026-09-19 |  | Labor [0.94 h]; Operator [0.94 h]; Surveyor [0.47 h]; Surveyor Helper [0.47 h]; Boom Truck [0.48 h]; Mobile Crane [0.48 h]; MH depth 1.50 - 2.5m [0.1] | 943.1 | 943.1 | 7.48117971258433E-005 | Cons. | Z4 | Storm | Cons | CS.UNSC | Manhole | SUB.C | Rd 03 |
| B6.33 05 39.01.4007_R |  | Test, Internal Finishing, Benching & Cover(Rem) | 3d | 2026-09-30 A | 2026-10-07 A | B6.33 05 39.01.3997_R SS, B6.33 05 39.01.4007 | 100% |  | 2026-09-16 | 2026-09-19 |  | Labor [1.87 h]; Foreman [0.94 h]; Plumber Helper [0.94 h]; Plumber [0.94 h]; Mason [0.94 h]; MH depth 1.50 - 2.5m [0.03] | 289.45 | 289.45 | 2.49372657086146E-005 | Cons. | Z4 | Storm | Cons | CS.UNSC | Manhole | SUB.C | Rd 03 |
|  | Catch Basins | **Catch Basins** |  | 2026-03-12 | 2026-10-06 |  |  |  |  |  |  |  |  |  |  |  |  |  |  |  |  |  |  |
|  | Sing | **Single** |  | 2026-06-10 | 2026-10-06 |  |  |  |  |  |  |  |  |  |  |  |  |  |  |  |  |  |  |
| B6.33 05 40.01.570 |  | Excavation, Compaction & Vapour Barrier (92.60% Completed) | 83.6d | 2026-06-10 A | 2026-09-15 A | B6.33 05 39.01.3977 SS | 100% |  |  |  |  | Labor [28.88 h]; Foreman [14.44 h]; Operator [28.88 h]; Surveyor [14.44 h]; Surveyor Helper [14.44 h]; Excavator (With Bucket) [14.82 h]; Water Tanker [14.82 h]; Dump Truck [14.82 h]; Roller Compactor [14.82 h]; Single Catch basin [2.77] | 12,519.2 | 12,519.2 | 0.00296566869933904 | Cons. | Z4 | Storm | Cons | CS.UNSC | CBs | SUB.C | Rd 03 |
| B6.33 05 40.01.580 |  | Blinding Conc. (92.60% Completed) | 81.6d | 2026-06-13 A | 2026-09-15 A | B6.33 05 40.01.570 SS | 100% |  |  |  |  | Labor [28.88 h]; Foreman [14.44 h]; Laboratory Officer [14.44 h]; Carpenter [14.44 h]; Steelfixer [14.44 h]; Mason [14.44 h]; Single Catch basin [1.84] | 8,327.99 | 8,327.99 | 0.00197281439564727 | Cons. | Z4 | Storm | Cons | CS.UNSC | CBs | SUB.C | Rd 03 |
| B6.33 05 40.01.590 |  | Catch Basin Installation (92.60% Completed) | 80.6d | 2026-06-14 A | 2026-09-15 A | B6.33 05 40.01.580 SS | 100% |  |  |  |  | Labor [43.32 h]; Foreman [21.66 h]; Carpenter [21.66 h]; Steelfixer [21.66 h]; Mason [21.66 h]; Operator [43.32 h]; Surveyor [21.66 h]; Surveyor Helper [21.66 h]; Boom Truck [22.22 h]; Single Catch basin [8.27] | 37,394.32 | 37,394.32 | 0.00885832346280832 | Cons. | Z4 | Storm | Cons | CS.UNSC | CBs | SUB.C | Rd 03 |
| B6.33 05 40.01.600 |  | Backfilling, DI Frame & Grate Cover Fixing (92.60% Completed) | 79d | 2026-06-16 A | 2026-09-15 A | B6.33 42 11.36-1101, B6.33 42 11.35-128 | 100% |  |  |  |  | Labor [72.19 h]; Foreman [36.1 h]; Operator [72.19 h]; Surveyor [36.1 h]; Surveyor Helper [36.1 h]; Loader [37.04 h]; Water Tanker [37.04 h]; Dump Truck [37.04 h]; Plate Compactor [37.04 h]; Single Catch basin [5.52] | 24,929.55 | 24,929.55 | 0.00590554897520555 | Cons. | Z4 | Storm | Cons | CS.UNSC | CBs | SUB.C | Rd 03 |
| B6.33 05 40.01.600_R |  | Backfilling, DI Frame & Grate Cover Fixing(Rem) | 3d | 2026-09-20 A | 2026-09-22 A | B6.33 42 11.36-1101, B6.33 42 11.35-128, B6.33 05 40.01.600, B6.33 05 39.01.3807_R, B6.33 05 39.01.3957_R | 100% |  |  |  |  | Labor [5.77 h]; Foreman [2.88 h]; Operator [5.77 h]; Surveyor [2.88 h]; Surveyor Helper [2.88 h]; Loader [2.96 h]; Water Tanker [2.96 h]; Dump Truck [2.96 h]; Plate Compactor [2.96 h]; Single Catch basin [0.44] | 1,992.21 | 1,992.21 | 0.00590554897520555 | Cons. | Z4 | Storm | Cons | CS.UNSC | CBs | SUB.C | Rd 03 |
| B6.33 05 40.01.570_R |  | Excavation, Compaction & Vapour Barrier(Rem) | 3d | 2026-09-21 A | 2026-09-24 A | B6.33 05 39.01.3977_R SS, B6.33 05 40.01.570 | 100% |  | 2026-09-16 | 2026-09-19 |  | Labor [2.31 h]; Foreman [1.15 h]; Operator [2.31 h]; Surveyor [1.15 h]; Surveyor Helper [1.15 h]; Excavator (With Bucket) [1.18 h]; Water Tanker [1.18 h]; Dump Truck [1.18 h]; Roller Compactor [1.18 h]; Single Catch basin [0.22] | 1,000.45 | 1,000.45 | 0.00296566869933904 | Cons. | Z4 | Storm | Cons | CS.UNSC | CBs | SUB.C | Rd 03 |
| B6.33 05 40.01.580_R |  | Blinding Conc.(Rem) | 3d | 2026-09-26 A | 2026-09-29 A | B6.33 05 40.01.570_R SS, B6.33 05 40.01.580 | 100% |  | 2026-09-16 | 2026-09-19 |  | Labor [2.31 h]; Foreman [1.15 h]; Laboratory Officer [1.15 h]; Carpenter [1.15 h]; Steelfixer [1.15 h]; Mason [1.15 h]; Single Catch basin [0.15] | 665.52 | 665.52 | 0.00197281439564727 | Cons. | Z4 | Storm | Cons | CS.UNSC | CBs | SUB.C | Rd 03 |
| B6.33 05 40.01.590_R |  | Catch Basin Installation(Rem) | 3d | 2026-10-03 A | 2026-10-06 A | B6.33 05 40.01.580_R SS, B6.33 05 40.01.590 | 100% |  | 2026-09-16 | 2026-09-19 |  | Labor [3.46 h]; Foreman [1.73 h]; Carpenter [1.73 h]; Steelfixer [1.73 h]; Mason [1.73 h]; Operator [3.46 h]; Surveyor [1.73 h]; Surveyor Helper [1.73 h]; Boom Truck [1.78 h]; Single Catch basin [0.66] | 2,988.32 | 2,988.32 | 0.00885832346280832 | Cons. | Z4 | Storm | Cons | CS.UNSC | CBs | SUB.C | Rd 03 |

| ID | WBS | Activity | Duration | Start | Finish | Predecessors | Complete | Planned start | Planned finish | Total float | Free float | Resources | Cost | Actual cost | Weight % | DMM2 Weekly Progress | DMM2 Zones | Networks & Stations | DMM2 Phases | UNASCO | Networks Components | Subcontractors works | Dmm2 Roads |
| --- | --- | --- | --- | --- | --- | --- | --- | --- | --- | --- | --- | --- | --- | --- | --- | --- | --- | --- | --- | --- | --- | --- | --- |
|  | UPVC | **UPVC** |  | 2026-03-12 | 2026-09-24 |  |  |  |  |  |  |  |  |  |  |  |  |  |  |  |  |  |  |
|  | UPVC300 | **?300 From 0.0 to 1.5m** |  | 2026-03-12 | 2026-09-24 |  |  |  |  |  |  |  |  |  |  |  |  |  |  |  |  |  |  |
| B6.33 42 11.35-128 |  | Fittings & Pipe Installation | 0.75d | 2026-03-12 A | 2026-03-14 A | B1.2.31 23 23.01.16 | 100% |  |  |  |  | Labor [28.35 h]; Foreman [14.17 h]; Plumber Helper [14.17 h]; Plumber [14.17 h]; Surveyor [14.17 h]; Surveyor Helper [14.17 h]; less than 1.5 [186.46] | 112,143.85 | 112,143.85 | 0.0603343421083148 | Cons. | Z4 | Storm | Cons | CS.UNSC | UPVC | SUB.C | Rd 03 |
| B6.33 42 11.35-116 |  | Catch Basin Opening Prep. (87.09% Completed) | 80.6d | 2026-06-14 A | 2026-09-15 A | B6.33 05 40.01.590 SS | 100% |  |  |  |  | Labor [27.16 h]; Foreman [13.58 h]; Plumber Helper [13.58 h]; Plumber [13.58 h]; less than 1.5 [40.6] | 24,416.86 | 24,416.86 | 0.0150835855285905 | Cons. | Z4 | Storm | Cons | CS.UNSC | UPVC | SUB.C | Rd 03 |
| B6.33 42 11.35-116_R |  | Catch Basin Opening Prep.(Rem) | 3d | 2026-09-21 A | 2026-09-24 A | B6.33 05 40.01.590_R SS, B6.33 42 11.35-116 | 100% | 2026-09-16 | 2026-09-19 |  |  | Labor [4.03 h]; Foreman [2.01 h]; Plumber Helper [2.01 h]; Plumber [2.01 h]; less than 1.5 [6.02] | 3,619.11 | 3,619.11 | 0.0150835855285905 | Cons. | Z4 | Storm | Cons | CS.UNSC | UPVC | SUB.C | Rd 03 |
|  | UPVC3001 | **?400 From 0.0 to 1.5m** |  | 2026-03-12 | 2026-09-22 |  |  |  |  |  |  |  |  |  |  |  |  |  |  |  |  |  |  |
| B6.33 42 11.36-1101 |  | Fittings & Pipe Installation | 0.75d | 2026-03-12 A | 2026-03-14 A | B1.2.31 23 23.01.16 | 100% |  |  |  |  | Labor [28.35 h]; Foreman [14.17 h]; Plumber Helper [14.17 h]; Plumber [14.17 h]; Surveyor [14.17 h]; Surveyor Helper [14.17 h]; less than 1.5 [186.46] | 112,143.85 | 112,143.85 | 0.0603343421083148 | Cons. | Z4 | Storm | Cons | CS.UNSC | UPVC | SUB.C | Rd 03 |
| B6.33 42 11.36-189 |  | Catch Basin Opening Prep. (87.09% Completed) | 80.6d | 2026-06-14 A | 2026-09-15 A | B6.33 42 11.35-116 SS, B6.33 05 40.01.590 SS | 100% |  |  |  |  | Labor [27.16 h]; Foreman [13.58 h]; Plumber Helper [13.58 h]; Plumber [13.58 h]; less than 1.5 [40.6] | 24,416.86 | 24,416.86 | 0.0150835855285905 | Cons. | Z4 | Storm | Cons | CS.UNSC | UPVC | SUB.C | Rd 03 |
| B6.33 42 11.36-189_R |  | Catch Basin Opening Prep.(Rem) | 3d | 2026-09-20 A | 2026-09-22 A | B6.33 42 11.35-116_R SS, B6.33 05 40.01.590_R SS, B6.33 42 11.36-189, B6.33 42 11.36-187_R | 100% |  |  |  |  | Labor [4.03 h]; Foreman [2.01 h]; Plumber Helper [2.01 h]; Plumber [2.01 h]; less than 1.5 [6.02] | 3,619.11 | 3,619.11 | 0.0150835855285905 | Cons. | Z4 | Storm | Cons | CS.UNSC | UPVC | SUB.C | Rd 03 |
|  | Potable Water | **Potable Water Network** |  | 2026-04-11 | 2026-10-25 |  |  |  |  |  |  |  |  |  |  |  |  |  |  |  |  |  |  |
|  | HDPE | **HDPE Pipes** |  | 2026-04-11 | 2026-10-10 |  |  |  |  |  |  |  |  |  |  |  |  |  |  |  |  |  |  |
|  | ?110mm | **?110mm** |  | 2026-04-11 | 2026-10-10 |  |  |  |  |  |  |  |  |  |  |  |  |  |  |  |  |  |  |
|  | Depth: 0.0m - 1.5m | **Depth: 0.0m - 1.5m** |  | 2026-04-11 | 2026-09-20 |  |  |  |  |  |  |  |  |  |  |  |  |  |  |  |  |  |  |
| B3.33 14 13-1191 |  | Excavation (79.00% Completed) | 131.98d | 2026-04-11 A | 2026-09-15 A | B6.33 42 11.36-1101 | 100% |  |  |  |  | Labor [24.64 h]; Foreman [12.32 h]; Operator [24.64 h]; Surveyor [12.32 h]; Surveyor Helper [12.32 h]; Excavator (With Bucket) [12.64 h]; Water Tanker [12.64 h]; Dump Truck [12.64 h]; Plate Compactor [12.64 h]; Depth: 0.0m - 1.5m [123.04] | 17,716.79 | 17,716.79 | 0.00449622803237392 | Cons. | Z4 | Potable | Cons | CS.UNSC | HDPEs | SUB.C | Rd 03 |
| B3.33 14 13-1195 |  | Sand Bedding (79.00% Completed) | 129.98d | 2026-04-13 A | 2026-09-15 A | B3.33 14 13-1191 FF | 100% |  |  |  |  | Labor [24.64 h]; Foreman [12.32 h]; Operator [49.27 h]; Surveyor [12.32 h]; Surveyor Helper [12.32 h]; Loader [12.64 h]; Water Tanker [12.64 h]; Dump Truck [12.64 h]; Plate Compactor [12.64 h]; Depth: 0.0m - 1.5m [30.77] | 4,430.01 | 4,430.01 | 0.00112426239033505 | Cons. | Z4 | Potable | Cons | CS.UNSC | HDPEs | SUB.C | Rd 03 |
| B3.33 14 13-1199 |  | Pipe Laying (79.00% Completed) | 126.98d | 2026-04-16 A | 2026-09-15 A | B3.33 14 13-1195 FF | 100% |  |  |  |  | Labor [24.64 h]; Foreman [12.32 h]; Plumber Helper [12.32 h]; Plumber [12.32 h]; Operator [12.32 h]; Surveyor [12.32 h]; Surveyor Helper [12.32 h]; Mobile Crane [12.64 h]; Depth: 0.0m - 1.5m [276.85] | 39,863.58 | 39,863.58 | 0.0101167184550828 | Cons. | Z4 | Potable | Cons | CS.UNSC | HDPEs | SUB.C | Rd 03 |
| B3.33 14 13-11103 |  | Embedment & Test (79.00% Completed) | 120.98d | 2026-04-23 A | 2026-09-15 A | B3.33 14 19.01.116, B3.33 14 13-1199 FF | 100% |  |  |  |  | Labor [49.27 h]; Foreman [24.64 h]; Plumber Helper [24.64 h]; Plumber [24.64 h]; Operator [49.27 h]; Surveyor [24.64 h]; Surveyor Helper [24.64 h]; Loader [25.28 h]; Water Tanker [25.28 h]; Dump Truck [25.28 h]; Plate Compactor [25.28 h]; Roller Compactor [25.28 h]; Depth: 0.0m - 1.5m [123.04] | 17,716.79 | 17,716.79 | 0.00449622803237392 | Cons. | Z4 | Potable | Cons | CS.UNSC | HDPEs | SUB.C | Rd 03 |
| B3.33 14 13-11107 |  | Backfilling & Warrning Tape (79.00% Completed) | 105.45d | 2026-05-11 A | 2026-09-15 A | B3.33 14 13.01.02 5 | 100% |  |  |  |  | Labor [61.59 h]; Foreman [30.79 h]; Operator [123.18 h]; Surveyor [30.79 h]; Surveyor Helper [30.79 h]; Loader [31.6 h]; Water Tanker [31.6 h]; Dump Truck [31.6 h]; Plate Compactor [31.6 h]; Roller Compactor [31.6 h]; Depth: 0.0m - 1.5m [61.52] | 8,858.39 | 8,858.39 | 0.00224811401618696 | Cons. | Z4 | Potable | Cons | CS.UNSC | HDPEs | SUB.C | Rd 03 |
| B3.33 14 13-11103_R |  | Embedment & Test(Rem) | 3d | 2026-09-16 A | 2026-09-20 A | B3.33 14 19.01.116, B3.33 14 13-1199_R FF, B3.33 14 13-11103 | 100% |  |  |  |  | Labor [13.1 h]; Foreman [6.55 h]; Plumber Helper [6.55 h]; Plumber [6.55 h]; Operator [13.1 h]; Surveyor [6.55 h]; Surveyor Helper [6.55 h]; Loader [6.72 h]; Water Tanker [6.72 h]; Dump Truck [6.72 h]; Plate Compactor [6.72 h]; Roller Compactor [6.72 h]; Depth: 0.0m - 1.5m [32.71] | 4,709.53 | 4,709.53 | 0.00449622803237392 | Cons. | Z4 | Potable | Cons | CS.UNSC | HDPEs | SUB.C | Rd 03 |
| B3.33 14 13-1191_R |  | Excavation(Rem) | 3d | 2026-09-16 A | 2026-09-20 A | B1.2.32 11 26.01.16 FF, B3.33 14 13-1191 | 100% |  |  |  |  | Labor [6.55 h]; Foreman [3.27 h]; Operator [6.55 h]; Surveyor [3.27 h]; Surveyor Helper [3.27 h]; Excavator (With Bucket) [3.36 h]; Water Tanker [3.36 h]; Dump Truck [3.36 h]; Plate Compactor [3.36 h]; Depth: 0.0m - 1.5m [32.71] | 4,709.53 | 4,709.53 | 0.00449622803237392 | Cons. | Z4 | Potable | Cons | CS.UNSC | HDPEs | SUB.C | Rd 03 |
| B3.33 14 13-1195_R |  | Sand Bedding(Rem) | 3d | 2026-09-16 A | 2026-09-20 A | B3.33 14 13-1191_R FF, B3.33 14 13-1195 | 100% |  |  |  |  | Labor [6.55 h]; Foreman [3.27 h]; Operator [13.1 h]; Surveyor [3.27 h]; Surveyor Helper [3.27 h]; Loader [3.36 h]; Water Tanker [3.36 h]; Dump Truck [3.36 h]; Plate Compactor [3.36 h]; Depth: 0.0m - 1.5m [8.18] | 1,177.6 | 1,177.6 | 0.00112426239033505 | Cons. | Z4 | Potable | Cons | CS.UNSC | HDPEs | SUB.C | Rd 03 |
| B3.33 14 13-1199_R |  | Pipe Laying(Rem) | 3d | 2026-09-16 A | 2026-09-20 A | B3.33 14 13-1195_R FF, B3.33 14 13-1199 | 100% |  |  |  |  | Labor [6.55 h]; Foreman [3.27 h]; Plumber Helper [3.27 h]; Plumber [3.27 h]; Operator [3.27 h]; Surveyor [3.27 h]; Surveyor Helper [3.27 h]; Mobile Crane [3.36 h]; Depth: 0.0m - 1.5m [73.59] | 10,596.65 | 10,596.65 | 0.0101167184550828 | Cons. | Z4 | Potable | Cons | CS.UNSC | HDPEs | SUB.C | Rd 03 |
| B3.33 14 13-11107_R |  | Backfilling & Warrning Tape(Rem) | 2.05d | 2026-09-17 A | 2026-09-19 A | B3.33 14 13.01.02 5, B3.33 14 13-11107 | 100% | 2026-09-16 | 2026-09-19 |  |  | Labor [16.37 h]; Foreman [8.19 h]; Operator [32.74 h]; Surveyor [8.19 h]; Surveyor Helper [8.19 h]; Loader [8.4 h]; Water Tanker [8.4 h]; Dump Truck [8.4 h]; Plate Compactor [8.4 h]; Roller Compactor [8.4 h]; Depth: 0.0m - 1.5m [16.35] | 2,354.76 | 2,354.76 | 0.00224811401618696 | Cons. | Z4 | Potable | Cons | CS.UNSC | HDPEs | SUB.C | Rd 03 |
|  | Depth: 1.51m - 2.5m | **Depth: 1.51m - 2.5m** |  | 2026-04-13 | 2026-10-10 |  |  |  |  |  |  |  |  |  |  |  |  |  |  |  |  |  |  |
| B3.33 14 13-1193 |  | Excavation (79.00% Completed) | 129.98d | 2026-04-13 A | 2026-09-15 A | B3.33 14 13-1191 SS | 100% |  |  |  |  | Labor [24.64 h]; Foreman [12.32 h]; Operator [24.64 h]; Surveyor [12.32 h]; Surveyor Helper [12.32 h]; Excavator (With Bucket) [12.64 h]; Water Tanker [12.64 h]; Dump Truck [12.64 h]; Plate Compactor [12.64 h]; Depth: 1.51m - 2.5m |  |  | 0.000145557831170628 | Cons. | Z4 | Potable | Cons | CS.UNSC | HDPEs | SUB.C | Rd 03 |
| B3.33 14 13-1197 |  | Sand Bedding (79.00% Completed) | 126.98d | 2026-04-16 A | 2026-09-15 A | B3.33 14 13-1193 FF | 100% |  |  |  |  | Labor [24.64 h]; Foreman [12.32 h]; Operator [49.27 h]; Surveyor [12.32 h]; Surveyor Helper [12.32 h]; Loader [12.64 h]; Water Tanker [12.64 h]; Dump Truck [12.64 h]; Plate Compactor [12.64 h]; Depth: 1.51m - 2.5m |  |  | 3.61452332437126E-005 | Cons. | Z4 | Potable | Cons | CS.UNSC | HDPEs | SUB.C | Rd 03 |
| B3.33 14 13-11101 |  | Pipe Laying (79.00% Completed) | 125.98d | 2026-04-18 A | 2026-09-15 A | B3.33 14 13-1197 FF | 100% |  |  |  |  | Labor [24.64 h]; Foreman [12.32 h]; Plumber Helper [12.32 h]; Plumber [12.32 h]; Operator [12.32 h]; Surveyor [12.32 h]; Surveyor Helper [12.32 h]; Mobile Crane [12.64 h]; Depth: 1.51m - 2.5m |  |  | 0.000327260895584966 | Cons. | Z4 | Potable | Cons | CS.UNSC | HDPEs | SUB.C | Rd 03 |
| B3.33 14 13-11105 |  | Embedment & Test (79.00% Completed) | 120.98d | 2026-04-23 A | 2026-09-15 A | B3.33 14 19.01.116, B3.33 14 13-11101 FF, B3.33 14 13-11103 FF | 100% |  |  |  |  | Labor [49.27 h]; Foreman [24.64 h]; Plumber Helper [24.64 h]; Plumber [24.64 h]; Operator [49.27 h]; Surveyor [24.64 h]; Surveyor Helper [24.64 h]; Loader [25.28 h]; Water Tanker [25.28 h]; Dump Truck [25.28 h]; Plate Compactor [25.28 h]; Roller Compactor [25.28 h]; Depth: 1.51m - 2.5m |  |  | 0.000145557831170628 | Cons. | Z4 | Potable | Cons | CS.UNSC | HDPEs | SUB.C | Rd 03 |
| B3.33 14 13-11109 |  | Backfilling & Warrning Tape (79.00% Completed) | 106.45d | 2026-05-10 A | 2026-09-15 A | B3.33 14 13-11105 FF | 100% |  |  |  |  | Labor [61.59 h]; Foreman [30.79 h]; Operator [123.18 h]; Surveyor [30.79 h]; Surveyor Helper [30.79 h]; Loader [31.6 h]; Water Tanker [31.6 h]; Dump Truck [31.6 h]; Plate Compactor [31.6 h]; Roller Compactor [31.6 h]; Depth: 1.51m - 2.5m |  |  | 7.27789155853129E-005 | Cons. | Z4 | Potable | Cons | CS.UNSC | HDPEs | SUB.C | Rd 03 |
| B3.33 14 13-11101_R |  | Pipe Laying(Rem) | 3d | 2026-10-07 | 2026-10-10 | B3.33 14 13-1197_R FF, B3.33 14 13-11101 |  |  |  | 110.32d | 0d | Labor [6.55 h]; Foreman [3.27 h]; Plumber Helper [3.27 h]; Plumber [3.27 h]; Operator [3.27 h]; Surveyor [3.27 h]; Surveyor Helper [3.27 h]; Mobile Crane [3.36 h]; Depth: 1.51m - 2.5m |  |  | 0.000327260895584966 | Cons. | Z4 | Potable | Cons | CS.UNSC | HDPEs | SUB.C | Rd 03 |
| B3.33 14 13-11105_R |  | Embedment & Test(Rem) | 3d | 2026-10-07 | 2026-10-10 | B3.33 14 19.01.116, B3.33 14 13-11101_R FF, B3.33 14 13-11103_R FF, B3.33 14 13-11105 |  |  |  | 110.32d | 0d | Labor [13.1 h]; Foreman [6.55 h]; Plumber Helper [6.55 h]; Plumber [6.55 h]; Operator [13.1 h]; Surveyor [6.55 h]; Surveyor Helper [6.55 h]; Loader [6.72 h]; Water Tanker [6.72 h]; Dump Truck [6.72 h]; Plate Compactor [6.72 h]; Roller Compactor [6.72 h]; Depth: 1.51m - 2.5m |  |  | 0.000145557831170628 | Cons. | Z4 | Potable | Cons | CS.UNSC | HDPEs | SUB.C | Rd 03 |
| B3.33 14 13-1193_R |  | Excavation(Rem) | 3d | 2026-10-07 | 2026-10-10 | B3.33 14 13-1191_R SS, B3.33 14 13-1193 |  |  |  | 88.32d | 0d | Labor [6.55 h]; Foreman [3.27 h]; Operator [6.55 h]; Surveyor [3.27 h]; Surveyor Helper [3.27 h]; Excavator (With Bucket) [3.36 h]; Water Tanker [3.36 h]; Dump Truck [3.36 h]; Plate Compactor [3.36 h]; Depth: 1.51m - 2.5m |  |  | 0.000145557831170628 | Cons. | Z4 | Potable | Cons | CS.UNSC | HDPEs | SUB.C | Rd 03 |
| B3.33 14 13-1197_R |  | Sand Bedding(Rem) | 3d | 2026-10-07 | 2026-10-10 | B3.33 14 13-1193_R FF, B3.33 14 13-1197 |  |  |  | 110.32d | 0d | Labor [6.55 h]; Foreman [3.27 h]; Operator [13.1 h]; Surveyor [3.27 h]; Surveyor Helper [3.27 h]; Loader [3.36 h]; Water Tanker [3.36 h]; Dump Truck [3.36 h]; Plate Compactor [3.36 h]; Depth: 1.51m - 2.5m |  |  | 3.61452332437126E-005 | Cons. | Z4 | Potable | Cons | CS.UNSC | HDPEs | SUB.C | Rd 03 |
| B3.33 14 13-11109_R |  | Backfilling & Warrning Tape(Rem) | 2.05d | 2026-10-07 | 2026-10-10 | B3.33 14 19.01.117 FF, B3.33 14 13-11105_R FF, B3.33 14 13-11109 |  |  |  | 110.32d |  | Labor [16.37 h]; Foreman [8.19 h]; Operator [32.74 h]; Surveyor [8.19 h]; Surveyor Helper [8.19 h]; Loader [8.4 h]; Water Tanker [8.4 h]; Dump Truck [8.4 h]; Plate Compactor [8.4 h]; Roller Compactor [8.4 h]; Depth: 1.51m - 2.5m |  |  | 7.27789155853129E-005 | Cons. | Z4 | Potable | Cons | CS.UNSC | HDPEs | SUB.C | Rd 03 |

| ID | WBS | Activity | Duration | Start | Finish | Predecessors | Complete | Total float | Free float | Resources | Cost | Actual cost | Weight % | DMM2 Weekly Progress | DMM2 Zones | Networks & Stations | DMM2 Phases | UNASCO | Subcontractors works | Dmm2 Roads | Networks Components |
| --- | --- | --- | --- | --- | --- | --- | --- | --- | --- | --- | --- | --- | --- | --- | --- | --- | --- | --- | --- | --- | --- |
|  | Crossing | **Plots and Buildings Crossing** |  | 2026-10-10 | 2026-10-19 |  |  |  |  |  |  |  |  |  |  |  |  |  |  |  |  |
| B3.33 14 13.02.28 |  | Earthwork | 3d | 2026-10-10 | 2026-10-12 | B3.33 05 63.02.37_R |  | 88.32d | 0d | Labor [31.18 h]; Foreman [15.59 h]; Operator [31.18 h]; Surveyor [15.59 h]; Surveyor Helper [15.59 h]; Excavator (With Bucket) [16 h]; Water Tanker [16 h]; Dump Truck [16 h]; Plate Compactor [16 h]; Potable Plots and Buildings Crossing Connections Dia. 110 mm [0.6] | 268.67 |  | 0.000135073084407666 | Cons. | Z4 | Potable | Cons | CS.UNSC | SUB.C | Rd 03 |  |
| B3.33 14 13.02.29 |  | Sand Bedding | 3d | 2026-10-13 | 2026-10-15 | B3.33 14 13.02.28 |  | 88.32d | 0d | Labor [31.18 h]; Foreman [15.59 h]; Operator [62.37 h]; Surveyor [15.59 h]; Surveyor Helper [15.59 h]; Loader [16 h]; Water Tanker [16 h]; Dump Truck [16 h]; Plate Compactor [16 h]; Potable Plots and Buildings Crossing Connections Dia. 110 mm [0.6] | 268.67 |  | 0.000135073084407666 | Cons. | Z4 | Potable | Cons | CS.UNSC | SUB.C | Rd 03 |  |
| B3.33 14 13.02.30 |  | Tee, Pipe (Crossing) Installation & Backfilling | 3d | 2026-10-17 | 2026-10-19 | B3.33 14 13.02.29, B3.33 14 13-10109_R |  | 88.32d | 0d | Labor [31.18 h]; Foreman [15.59 h]; Plumber Helper [15.59 h]; Plumber [15.59 h]; Operator [31.18 h]; Surveyor [15.59 h]; Surveyor Helper [15.59 h]; Mobile Crane [16 h]; Potable Plots and Buildings Crossing Connections Dia. 110 mm [1.8] | 806.01 |  | 0.000405219253223001 | Cons. | Z4 | Potable | Cons | CS.UNSC | SUB.C | Rd 03 |  |
|  | Valves & Chambers | **Valves & Chambers** |  | 2026-09-02 | 2026-10-25 |  |  |  |  |  |  |  |  |  |  |  |  |  |  |  |  |
|  | GV | **Gate Valves** |  | 2026-09-02 | 2026-10-10 |  |  |  |  |  |  |  |  |  |  |  |  |  |  |  |  |
|  | 1 | **Gate valves dia (110) mm** |  | 2026-09-02 | 2026-10-10 |  |  |  |  |  |  |  |  |  |  |  |  |  |  |  |  |
| B3.33 14 19.01.116 |  | Burried Isolation Valve Installation | 4d | 2026-09-02 A | 2026-09-07 A | B3.33 14 13-11101 SS, B3.33 14 13-11101 FF | 100% |  |  | Labor [28.35 h]; Plumber Helper [14.17 h]; Plumber [14.17 h]; Operator [28.35 h]; Boom Truck [16 h]; POT Gate V dia 110 mm [1.65] | 3,825.71 | 3,825.71 | 0.000737657950376926 | Cons. | Z4 | Potable | Cons | CS.UNSC | SUB.C | Rd 03 | Val&Chs |
| B3.33 14 19.01.117 |  | Spindle & Surface Box | 3d | 2026-10-07 | 2026-10-10 | B3.33 14 19.01.116 |  | 110.32d | 0d | Labor [31.18 h]; Foreman [15.59 h]; Plumber Helper [15.59 h]; Plumber [15.59 h]; Operator [31.18 h]; JCB [16 h]; POT Gate V dia 110 mm [1.1] | 2,550.47 |  | 0.000491771966917951 | Cons. | Z4 | Potable | Cons | CS.UNSC | SUB.C | Rd 03 | Val&Chs |
|  | 2 | **Air Valves** |  | 2026-09-02 | 2026-10-25 |  |  |  |  |  |  |  |  |  |  |  |  |  |  |  |  |
|  | 4 | **Air valves on less than 315 mm. (In Chamber)** |  | 2026-09-02 | 2026-10-25 |  |  |  |  |  |  |  |  |  |  |  |  |  |  |  |  |
| B3.33 05 63.02.37 |  | Land Adjustment & Compaction (50.00% Completed) | 11.46d | 2026-09-02 A | 2026-09-15 A | B3.33 14 13-1193 SS | 100% |  |  | Labor [15.59 h]; Foreman [7.8 h]; Operator [31.18 h]; Surveyor [7.8 h]; Surveyor Helper [7.8 h]; Excavator (With Bucket) [8 h]; Water Tanker [8 h]; Dump Truck [8 h]; Plate Compactor [8 h]; POT Air valve Dia. 50 mm on pipes with Dia. less than 315 mm [0.12]; Air valve chamber; on less than 315 mm Dia. pipeline [0.09] | 2,274.86 | 2,274.86 | 0.000888448059942745 | Cons. | Z4 | Potable | Cons | CS.UNSC | SUB.C | Rd 03 | Val&Chs |
| B3.33 05 63.02.35 |  | Foundations (50.00% Completed) | 10.46d | 2026-09-03 A | 2026-09-15 A | B3.33 05 63.02.37 SS | 100% |  |  | Labor [23.39 h]; Foreman [11.69 h]; Laboratory Officer [11.69 h]; Carpenter [11.69 h]; Steelfixer [11.69 h]; Mason [11.69 h]; POT Air valve Dia. 50 mm on pipes with Dia. less than 315 mm [0.03]; Air valve chamber; on less than 315 mm Dia. pipeline [0.12] | 2,694.54 | 2,694.54 | 0.00105235404675599 | Cons. | Z4 | Potable | Cons | CS.UNSC | SUB.C | Rd 03 | Val&Chs |
| B3.33 05 63.02.36 |  | Chamber Curing, Finishing & Steel Cover (50.00% Completed) | 9.46d | 2026-09-05 A | 2026-09-15 A | B3.33 05 63.02.38 SS | 100% |  |  | Labor [31.18 h]; Mason [15.59 h]; POT Air valve Dia. 50 mm on pipes with Dia. less than 315 mm [0.12]; Air valve chamber; on less than 315 mm Dia. pipeline [0.09] | 2,274.86 | 2,274.86 | 0.000888448059942745 | Cons. | Z4 | Potable | Cons | CS.UNSC | SUB.C | Rd 03 | Val&Chs |
| B3.33 05 63.02.38 |  | Chambers Walls Conc Cast In Situ (50.00% Completed) | 9.46d | 2026-09-05 A | 2026-09-15 A | B3.33 05 63.02.35 SS | 100% |  |  | Labor [23.39 h]; Foreman [11.69 h]; Laboratory Officer [11.69 h]; Carpenter [11.69 h]; Steelfixer [11.69 h]; Mason [11.69 h]; POT Air valve Dia. 50 mm on pipes with Dia. less than 315 mm [0.26]; Air valve chamber; on less than 315 mm Dia. pipeline [0.12] | 3,300.13 | 3,300.13 | 0.00128886622145969 | Cons. | Z4 | Potable | Cons | CS.UNSC | SUB.C | Rd 03 | Val&Chs |
| B3.33 05 63.02.35_R |  | Foundations(Rem) | 2.5d | 2026-10-07 | 2026-10-10 | B3.33 05 63.02.37_R SS, B3.33 05 63.02.35 |  | 99.32d | 0d | Labor [23.39 h]; Foreman [11.69 h]; Laboratory Officer [11.69 h]; Carpenter [11.69 h]; Steelfixer [11.69 h]; Mason [11.69 h]; POT Air valve Dia. 50 mm on pipes with Dia. less than 315 mm [0.03]; Air valve chamber; on less than 315 mm Dia. pipeline [0.12] | 2,694.54 |  | 0.00105235404675599 | Cons. | Z4 | Potable | Cons | CS.UNSC | SUB.C | Rd 03 | Val&Chs |
| B3.33 05 63.02.36_R |  | Chamber Curing, Finishing & Steel Cover(Rem) | 3d | 2026-10-07 | 2026-10-10 | B3.33 05 63.02.38_R SS, B3.33 05 63.02.36 |  | 99.32d | 8d | Labor [31.18 h]; Mason [15.59 h]; POT Air valve Dia. 50 mm on pipes with Dia. less than 315 mm [0.12]; Air valve chamber; on less than 315 mm Dia. pipeline [0.09] | 2,274.86 |  | 0.000888448059942745 | Cons. | Z4 | Potable | Cons | CS.UNSC | SUB.C | Rd 03 | Val&Chs |
| B3.33 05 63.02.37_R |  | Land Adjustment & Compaction(Rem) | 2d | 2026-10-07 | 2026-10-08 | B3.33 14 13-1193_R SS, B3.33 05 63.02.37 |  | 88.32d | 0d | Labor [15.59 h]; Foreman [7.8 h]; Operator [31.18 h]; Surveyor [7.8 h]; Surveyor Helper [7.8 h]; Excavator (With Bucket) [8 h]; Water Tanker [8 h]; Dump Truck [8 h]; Plate Compactor [8 h]; POT Air valve Dia. 50 mm on pipes with Dia. less than 315 mm [0.12]; Air valve chamber; on less than 315 mm Dia. pipeline [0.09] | 2,274.86 |  | 0.000888448059942745 | Cons. | Z4 | Potable | Cons | CS.UNSC | SUB.C | Rd 03 | Val&Chs |
| B3.33 05 63.02.38_R |  | Chambers Walls Conc Cast In Situ(Rem) | 2.5d | 2026-10-07 | 2026-10-10 | B3.33 05 63.02.35_R SS, B3.33 05 63.02.38 |  | 99.32d | 0d | Labor [23.39 h]; Foreman [11.69 h]; Laboratory Officer [11.69 h]; Carpenter [11.69 h]; Steelfixer [11.69 h]; Mason [11.69 h]; POT Air valve Dia. 50 mm on pipes with Dia. less than 315 mm [0.26]; Air valve chamber; on less than 315 mm Dia. pipeline [0.12] | 3,300.13 |  | 0.00128886622145969 | Cons. | Z4 | Potable | Cons | CS.UNSC | SUB.C | Rd 03 | Val&Chs |
| B3.33 05 63.02.39 |  | Valve & Fitting Installation | 5d | 2026-10-20 | 2026-10-25 | B3.33 05 63.02.36_R, B3.33 14 19.01.119 |  | 91.32d | 0d | Labor [62.37 h]; Plumber Helper [31.18 h]; Plumber [31.18 h]; Operator [62.37 h]; Boom Truck [32 h]; POT Air valve Dia. 50 mm on pipes with Dia. less than 315 mm [0.12]; Air valve chamber; on less than 315 mm Dia. pipeline [0.34] | 7,834.72 |  | 0.00152992514844024 | Cons. | Z4 | Potable | Cons | CS.UNSC | SUB.C | Rd 03 | Val&Chs |
|  | Fire Fighting | **Fire Fighting Network** |  | 2026-05-15 | 2026-11-07 |  |  |  |  |  |  |  |  |  |  |  |  |  |  |  |  |
|  | HDPE | **HDPE Pipes** |  | 2026-05-20 | 2026-08-31 |  |  |  |  |  |  |  |  |  |  |  |  |  |  |  |  |
|  | ?250mm | **?250mm** |  | 2026-05-20 | 2026-08-31 |  |  |  |  |  |  |  |  |  |  |  |  |  |  |  |  |
|  | Depth: 0.0m - 1.5m | **Depth: 0.0m - 1.5m** |  | 2026-05-20 | 2026-08-31 |  |  |  |  |  |  |  |  |  |  |  |  |  |  |  |  |
| B3.1. 33 14 13-0190 |  | Excavation | 2d | 2026-05-20 A | 2026-05-23 A | B3.33 14 13-1193 SS+2d, B3.33 14 13-1193 FF+2d | 100% |  |  | Labor [28.35 h]; Foreman [14.17 h]; Operator [28.35 h]; Surveyor [14.17 h]; Surveyor Helper [14.17 h]; Excavator (With Bucket) [16 h]; Water Tanker [16 h]; Dump Truck [16 h]; Plate Compactor [16 h]; Depth: 0.0m - 1.5m [131.51] | 62,927.13 | 62,927.13 | 0.0135564090273793 | Cons. | Z4 | Fire | Cons | CS.UNSC | SUB.C | Rd 03 | HDPEs |
| B3.1. 33 14 13-0194 |  | Sand Bedding | 2d | 2026-05-23 A | 2026-05-25 A | B3.1. 33 14 13-0190 | 100% |  |  | Labor [28.35 h]; Foreman [14.17 h]; Operator [56.7 h]; Surveyor [14.17 h]; Surveyor Helper [14.17 h]; Loader [16 h]; Water Tanker [16 h]; Dump Truck [16 h]; Plate Compactor [16 h]; Depth: 0.0m - 1.5m [32.88] | 15,733.37 | 15,733.37 | 0.00338944352179868 | Cons. | Z4 | Fire | Cons | CS.UNSC | SUB.C | Rd 03 | HDPEs |
| B3.1. 33 14 13-0198 |  | Pipe Laying | 76.62d | 2026-05-25 A | 2026-08-27 A | B3.1. 33 14 13-0194, DMM2-Proc-Delv-5888 | 100% |  |  | Labor [28.35 h]; Foreman [14.17 h]; Plumber Helper [14.17 h]; Plumber [14.17 h]; Operator [14.17 h]; Surveyor [14.17 h]; Surveyor Helper [14.17 h]; Mobile Crane [16 h]; Depth: 0.0m - 1.5m [295.89] | 141,587.64 | 141,587.64 | 0.0305022615765573 | Cons. | Z4 | Fire | Cons | CS.UNSC | SUB.C | Rd 03 | HDPEs |
| B3.1. 33 14 13-01102 |  | Embedment & Test | 69.5d | 2026-06-10 A | 2026-08-31 A | B3.1. 33 14 13-0198 | 100% |  |  | Labor [56.7 h]; Foreman [28.35 h]; Plumber Helper [28.35 h]; Plumber [28.35 h]; Operator [56.7 h]; Surveyor [28.35 h]; Surveyor Helper [28.35 h]; Loader [32 h]; Water Tanker [32 h]; Dump Truck [32 h]; Plate Compactor [32 h]; Roller Compactor [32 h]; Depth: 0.0m - 1.5m [131.51] | 62,927.13 | 62,927.13 | 0.0135564090273793 | Cons. | Z4 | Fire | Cons | CS.UNSC | SUB.C | Rd 03 | HDPEs |
| B3.1. 33 14 13-01106 |  | Backfilling & Warrning Tape | 66.75d | 2026-06-13 A | 2026-08-30 A | B3.1. 33 14 13-01102, B3.33 05 63.01.46 | 100% |  |  | Labor [70.87 h]; Foreman [35.44 h]; Operator [141.75 h]; Surveyor [35.44 h]; Surveyor Helper [35.44 h]; Loader [40 h]; Water Tanker [40 h]; Dump Truck [40 h]; Plate Compactor [40 h]; Roller Compactor [40 h]; Depth: 0.0m - 1.5m [65.75] | 31,460.4 | 31,460.4 | 0.00677752198378195 | Cons. | Z4 | Fire | Cons | CS.UNSC | SUB.C | Rd 03 | HDPEs |

| ID | WBS | Activity | Duration | Start | Finish | Predecessors | Complete | Planned start | Planned finish | Total float | Free float | Resources | Cost | Actual cost | Weight % | DMM2 Weekly Progress | DMM2 Zones | Networks & Stations | DMM2 Phases | UNASCO | Networks Components | Subcontractors works | Dmm2 Roads |
| --- | --- | --- | --- | --- | --- | --- | --- | --- | --- | --- | --- | --- | --- | --- | --- | --- | --- | --- | --- | --- | --- | --- | --- |
|  | Depth: 1.51m - 2.5m | **Depth: 1.51m - 2.5m** |  | 2026-05-23 | 2026-08-31 |  |  |  |  |  |  |  |  |  |  |  |  |  |  |  |  |  |  |
| B3.1. 33 14 13-0192 |  | Excavation | 2d | 2026-05-23 A | 2026-05-25 A | B3.1. 33 14 13-0190 | 100% |  |  |  |  | Labor [28.35 h]; Foreman [14.17 h]; Operator [28.35 h]; Surveyor [14.17 h]; Surveyor Helper [14.17 h]; Excavator (With Bucket) [16 h]; Water Tanker [16 h]; Dump Truck [16 h]; Plate Compactor [16 h]; Depth: 1.51m - 2.5m [8.22] | 4,294.65 | 4,294.65 | 0.000399426118713958 | Cons. | Z4 | Fire | Cons | CS.UNSC | HDPEs | SUB.C | Rd 03 |
| B3.1. 33 14 13-0196 |  | Sand Bedding | 2d | 2026-05-25 A | 2026-06-01 A | B3.1. 33 14 13-0192 | 100% |  |  |  |  | Labor [28.35 h]; Foreman [14.17 h]; Operator [56.7 h]; Surveyor [14.17 h]; Surveyor Helper [14.17 h]; Loader [16 h]; Water Tanker [16 h]; Dump Truck [16 h]; Plate Compactor [16 h]; Depth: 1.51m - 2.5m [2.06] | 1,073.66 | 1,073.66 | 9.98565296784896E-005 | Cons. | Z4 | Fire | Cons | CS.UNSC | HDPEs | SUB.C | Rd 03 |
| B3.1. 33 14 13-01104 |  | Embedment & Test | 69.5d | 2026-06-10 A | 2026-08-31 A | B3.1. 33 14 13-01100, B3.33 14 19.01.132 | 100% |  |  |  |  | Labor [56.7 h]; Foreman [28.35 h]; Plumber Helper [28.35 h]; Plumber [28.35 h]; Operator [56.7 h]; Surveyor [28.35 h]; Surveyor Helper [28.35 h]; Loader [32 h]; Water Tanker [32 h]; Dump Truck [32 h]; Plate Compactor [32 h]; Roller Compactor [32 h]; Depth: 1.51m - 2.5m [8.22] | 4,294.65 | 4,294.65 | 0.000399426118713958 | Cons. | Z4 | Fire | Cons | CS.UNSC | HDPEs | SUB.C | Rd 03 |
| B3.1. 33 14 13-01100 |  | Pipe Laying | 64.34d | 2026-06-13 A | 2026-08-27 A | B3.1. 33 14 13-0196, B3.33 05 63.01.46 | 100% |  |  |  |  | Labor [28.35 h]; Foreman [14.17 h]; Plumber Helper [14.17 h]; Plumber [14.17 h]; Operator [14.17 h]; Surveyor [14.17 h]; Surveyor Helper [14.17 h]; Mobile Crane [16 h]; Depth: 1.51m - 2.5m [18.5] | 9,662.95 | 9,662.95 | 0.00089870876710641 | Cons. | Z4 | Fire | Cons | CS.UNSC | HDPEs | SUB.C | Rd 03 |
| B3.1. 33 14 13-01108 |  | Backfilling & Warrning Tape | 64.58d | 2026-06-15 A | 2026-08-30 A | B3.1. 33 14 13-01104 | 100% |  |  |  |  | Labor [70.87 h]; Foreman [35.44 h]; Operator [141.75 h]; Surveyor [35.44 h]; Surveyor Helper [35.44 h]; Loader [40 h]; Water Tanker [40 h]; Dump Truck [40 h]; Plate Compactor [40 h]; Roller Compactor [40 h]; Depth: 1.51m - 2.5m [4.11] | 2,147.32 | 2,147.32 | 0.00019971305935698 | Cons. | Z4 | Fire | Cons | CS.UNSC | HDPEs | SUB.C | Rd 03 |
|  | Valves & Chambers | **Valves & Chambers** |  | 2026-05-15 | 2026-10-21 |  |  |  |  |  |  |  |  |  |  |  |  |  |  |  |  |  |  |
|  | GV | **Gate Valves** |  | 2026-05-15 | 2026-10-21 |  |  |  |  |  |  |  |  |  |  |  |  |  |  |  |  |  |  |
|  | 1 | **Gate valves dia (250) mm** |  | 2026-05-15 | 2026-10-21 |  |  |  |  |  |  |  |  |  |  |  |  |  |  |  |  |  |  |
| B3.33 14 19.01.132 |  | Burried Isolation Valve Installation | 1.82d | 2026-05-15 A | 2026-05-17 A | B3.1. 33 14 13-01100, B3.1. 33 14 13-0198, B3.1. 33 14 13-01106 | 100% | 2026-05-16 | 2026-05-17 |  |  | Labor [28.35 h]; Plumber Helper [14.17 h]; Plumber [14.17 h]; Operator [28.35 h]; Boom Truck [16 h]; FF Gate V dia 250 mm [1.88] | 7,525.67 | 7,525.67 | 0.00144335522534034 | Cons. | Z4 | Fire | Cons | CS.UNSC | Val&Chs | SUB.C | Rd 03 |
| B3.33 14 19.01.133 |  | Spindle & Surface Box | 4d | 2026-10-18 | 2026-10-21 | B3.33 14 19.01.132, B3.33 05 63.02.54, B3.33 14 19.01.131 |  |  |  | 64.32d | 0d | Labor [31.18 h]; Foreman [15.59 h]; Plumber Helper [15.59 h]; Plumber [15.59 h]; Operator [31.18 h]; JCB [16 h]; FF Gate V dia 250 mm [1.25] | 5,017.11 |  | 0.000962236816893557 | Cons. | Z4 | Fire | Cons | CS.UNSC | Val&Chs | SUB.C | Rd 03 |
|  | 2 | **Air Valves** |  | 2026-09-09 | 2026-10-13 |  |  |  |  |  |  |  |  |  |  |  |  |  |  |  |  |  |  |
|  | 4 | **Air valves on less than 315 mm. (In Chamber)** |  | 2026-09-09 | 2026-10-13 |  |  |  |  |  |  |  |  |  |  |  |  |  |  |  |  |  |  |
| B3.33 05 63.02.77 |  | Land Adjustment & Compaction | 2d | 2026-09-09 A | 2026-09-10 A | B3.1. 33 14 13-01104, B3.1. 33 14 13-01102 | 100% |  |  |  |  | Labor [28.35 h]; Foreman [14.17 h]; Operator [56.7 h]; Surveyor [14.17 h]; Surveyor Helper [14.17 h]; Excavator (With Bucket) [16 h]; Water Tanker [16 h]; Dump Truck [16 h]; Plate Compactor [16 h]; FF Air valve Dia. 50 mm on pipes with Dia. less than 315 mm [0.18]; FF Air valve chamber; on less than 315 mm Dia. pipeline [0.18] | 4,485.6 | 4,485.6 | 0.000842899444995834 | Cons. | Z4 | Fire | Cons | CS.UNSC | Val&Chs | SUB.C | Rd 03 |
| B3.33 05 63.02.75 |  | Foundations | 3d | 2026-09-12 A | 2026-09-14 A | B3.33 05 63.02.77 | 100% |  |  |  |  | Labor [42.52 h]; Foreman [21.26 h]; Laboratory Officer [21.26 h]; Carpenter [21.26 h]; Steelfixer [21.26 h]; Mason [21.26 h]; FF Air valve Dia. 50 mm on pipes with Dia. less than 315 mm [0.18]; FF Air valve chamber; on less than 315 mm Dia. pipeline [0.24] | 5,821.24 | 5,821.24 | 0.00109388285056526 | Cons. | Z4 | Fire | Cons | CS.UNSC | Val&Chs | SUB.C | Rd 03 |
| B3.33 05 63.02.78 |  | Chambers Walls Conc Cast In Situ | 3d | 2026-09-12 A | 2026-09-14 A | B3.33 05 63.02.75 | 100% |  |  |  |  | Labor [42.52 h]; Foreman [21.26 h]; Laboratory Officer [21.26 h]; Carpenter [21.26 h]; Steelfixer [21.26 h]; Mason [21.26 h]; FF Air valve Dia. 50 mm on pipes with Dia. less than 315 mm [0.24]; FF Air valve chamber; on less than 315 mm Dia. pipeline [0.24] | 5,980.8 | 5,980.8 | 0.00112386592666111 | Cons. | Z4 | Fire | Cons | CS.UNSC | Val&Chs | SUB.C | Rd 03 |
| B3.33 05 63.02.76 |  | Chamber Curing, Finishing & Steel Cover | 1d | 2026-09-15 A | 2026-09-15 A | B3.33 05 63.02.78 | 100% |  |  |  |  | Labor [56.7 h]; Mason [28.35 h]; FF Air valve Dia. 50 mm on pipes with Dia. less than 315 mm [0.24]; FF Air valve chamber; on less than 315 mm Dia. pipeline [0.18] | 4,645.16 | 4,645.16 | 0.000872882521091683 | Cons. | Z4 | Fire | Cons | CS.UNSC | Val&Chs | SUB.C | Rd 03 |
| B3.33 05 63.02.79 |  | Valve & Fitting Installation | 6d | 2026-10-07 | 2026-10-13 | B3.33 05 63.02.76 |  |  |  | 92.32d | 39d | Labor [62.37 h]; Plumber Helper [31.18 h]; Plumber [31.18 h]; Operator [62.37 h]; Boom Truck [32 h]; FF Air valve Dia. 50 mm on pipes with Dia. less than 315 mm [0.38]; FF Air valve chamber; on less than 315 mm Dia. pipeline [0.38] | 9,344.99 |  | 0.001756040510408 | Cons. | Z4 | Fire | Cons | CS.UNSC | Val&Chs | SUB.C | Rd 03 |
|  | 3 | **Fire Hydrant** |  | 2026-09-09 | 2026-11-07 |  |  |  |  |  |  |  |  |  |  |  |  |  |  |  |  |  |  |
| B3.33 14 19.01.fh44 |  | Riser Pipe & Flanged Fittings Installation (50.00% Completed) | 6d | 2026-09-09 A | 2026-09-15 A | B3.1. 33 14 13-01100, B3.1. 33 14 13-0198 | 100% |  |  |  |  | Labor [15.59 h]; Plumber Helper [7.8 h]; Welder [7.8 h]; Plumber [7.8 h]; Surveyor [7.8 h]; Surveyor Helper [7.8 h]; Welding Machine [8 h]; 3-outlet fire hydrant (2 x 2.5 inch and 1 x 4.5 inch) in the form of a separate dry vacuum cylinder [0.75] | 8,207.64 | 8,207.64 | 0.00314407764631429 | Cons. | Z4 | Fire | Cons | CS.UNSC | FH | SUB.C | Rd 03 |
| B3.33 14 19.01.fh43 |  | Firehydrant Fixing/Installation (50.00% Completed) | 4d | 2026-09-12 A | 2026-09-15 A | B3.33 14 19.01.fh44 FF | 100% |  |  |  |  | Labor [23.39 h]; Foreman [11.69 h]; Plumber Helper [11.69 h]; Plumber [11.69 h]; Operator [23.39 h]; Surveyor [11.69 h]; Surveyor Helper [11.69 h]; JCB [12 h]; 3-outlet fire hydrant (2 x 2.5 inch and 1 x 4.5 inch) in the form of a separate dry vacuum cylinder [2.24] | 24,622.93 | 24,622.93 | 0.0094322329389428 | Cons. | Z4 | Fire | Cons | CS.UNSC | FH | SUB.C | Rd 03 |
| B3.33 14 19.01.fh43_R |  | Firehydrant Fixing/Installation(Rem) | 3.5d | 2026-10-07 | 2026-10-11 | B3.33 14 19.01.fh44_R FF, B3.33 14 19.01.fh43 |  |  |  | 77.82d | 16.5d | Labor [23.39 h]; Foreman [11.69 h]; Plumber Helper [11.69 h]; Plumber [11.69 h]; Operator [23.39 h]; Surveyor [11.69 h]; Surveyor Helper [11.69 h]; JCB [12 h]; 3-outlet fire hydrant (2 x 2.5 inch and 1 x 4.5 inch) in the form of a separate dry vacuum cylinder [2.24] | 24,622.93 |  | 0.0094322329389428 | Cons. | Z4 | Fire | Cons | CS.UNSC | FH | SUB.C | Rd 03 |
| B3.33 14 19.01.fh44_R |  | Riser Pipe & Flanged Fittings Installation(Rem) | 3d | 2026-10-07 | 2026-10-10 | B3.1. 33 14 13-01100, B3.1. 33 14 13-0198, B3.33 14 19.01.fh44 |  |  |  | 78.32d | 0.5d | Labor [15.59 h]; Plumber Helper [7.8 h]; Welder [7.8 h]; Plumber [7.8 h]; Surveyor [7.8 h]; Surveyor Helper [7.8 h]; Welding Machine [8 h]; 3-outlet fire hydrant (2 x 2.5 inch and 1 x 4.5 inch) in the form of a separate dry vacuum cylinder [0.75] | 8,207.64 |  | 0.00314407764631429 | Cons. | Z4 | Fire | Cons | CS.UNSC | FH | SUB.C | Rd 03 |
| B3.33 14 19.01.fh45 |  | Backfilling & Compaction | 7d | 2026-10-31 | 2026-11-07 | B3.33 14 19.01.fh43_R, B3.33 14 19.01.fh24, B3.33 14 19.01.121, B3.33 14 19.01.fh3, B3.33 14 19.01.fh42_R |  |  |  | 61.32d | 5d | Labor [77.96 h]; Foreman [38.98 h]; Operator [77.96 h]; Surveyor [38.98 h]; Surveyor Helper [38.98 h]; Loader [40 h]; Water Tanker [40 h]; Dump Truck [40 h]; Plate Compactor [40 h]; 3-outlet fire hydrant (2 x 2.5 inch and 1 x 4.5 inch) in the form of a separate dry vacuum cylinder [1.49] | 16,415.29 |  | 0.00314407764631429 | Cons. | Z4 | Fire | Cons | CS.UNSC | FH | SUB.C | Rd 03 |

| ID | WBS | Activity | Duration | Start | Finish | Predecessors | Complete | Total float | Free float | Resources | Cost | Actual cost | Weight % | DMM2 Weekly Progress | DMM2 Zones | Networks & Stations | DMM2 Phases | Networks Components | All Electrical Scope | Subcontractors works | Dmm2 Roads |
| --- | --- | --- | --- | --- | --- | --- | --- | --- | --- | --- | --- | --- | --- | --- | --- | --- | --- | --- | --- | --- | --- |
|  | Dry Networks | **Dry Networks** |  | 2026-09-05 | 2026-11-07 |  |  |  |  |  |  |  |  |  |  |  |  |  |  |  |  |
|  | MV Network | **Medium Voltage Network** |  | 2026-09-10 | 2026-10-14 |  |  |  |  |  |  |  |  |  |  |  |  |  |  |  |  |
|  | Duct Banks | **Duct Banks** |  | 2026-09-10 | 2026-10-14 |  |  |  |  |  |  |  |  |  |  |  |  |  |  |  |  |
|  | 4 Way | **2 Way** |  | 2026-09-10 | 2026-10-14 |  |  |  |  |  |  |  |  |  |  |  |  |  |  |  |  |
| B2.31 23 00.643 |  | Excavation (75.00% Completed) | 4.95d | 2026-09-10 A | 2026-09-15 A | B6.33 05 40.01.600 SS | 100% |  |  | Labor [23.39 h]; Foreman [11.69 h]; Operator [23.39 h]; Surveyor [11.69 h]; Surveyor Helper [11.69 h]; Excavator (With Bucket) [12 h]; Water Tanker [12 h]; Dump Truck [12 h]; Plate Compactor [12 h]; Excavation for Trench size 40cm wide and 80cm deep (for 1 cable) [75]; Duct bank for MV cables UPVC (2xDia. 150mm) [12.81] | 6,042.09 | 6,042.09 | 0.00333826948299228 | Cons. | Z4 | MV | Cons | Cbl&Dct | allElec | SUB.C | Rd 03 |
| B2.33 71 00.294 |  | Shuttering, Steel Fixing Incl. UPVC Pipe & Conc. Cast (75.00% Completed) | 2.95d | 2026-09-13 A | 2026-09-15 A | B2.31 23 00.643 SS | 100% |  |  | Labor [35.08 h]; Laboratory Officer [17.54 h]; Carpenter [17.54 h]; Steelfixer [17.54 h]; Mason [17.54 h]; Surveyor [17.54 h]; Surveyor Helper [17.54 h]; Excavation for Trench size 40cm wide and 80cm deep (for 1 cable) [225]; Duct bank for MV cables UPVC (2xDia. 150mm) [51.58] | 22,570.45 | 22,570.45 | 0.012263179393698 | Cons. | Z4 | MV | Cons | Cbl&Dct | allElec | SUB.C | Rd 03 |
| B2.31 23 00.643_R |  | Excavation(Rem) | 3d | 2026-10-07 | 2026-10-10 | B6.33 05 40.01.600_R SS, B2.31 23 00.643 |  | 30.32d | 0d | Labor [7.8 h]; Foreman [3.9 h]; Operator [7.8 h]; Surveyor [3.9 h]; Surveyor Helper [3.9 h]; Excavator (With Bucket) [4 h]; Water Tanker [4 h]; Dump Truck [4 h]; Plate Compactor [4 h]; Excavation for Trench size 40cm wide and 80cm deep (for 1 cable) [25]; Duct bank for MV cables UPVC (2xDia. 150mm) [4.27] | 2,014.03 |  | 0.00333826948299228 | Cons. | Z4 | MV | Cons | Cbl&Dct | allElec | SUB.C | Rd 03 |
| B2.33 71 00.294_R |  | Shuttering, Steel Fixing Incl. UPVC Pipe & Conc. Cast(Rem) | 3d | 2026-10-07 | 2026-10-10 | B2.31 23 00.643_R SS, B2.33 71 00.294 |  | 106.32d | 0d | Labor [11.69 h]; Laboratory Officer [5.85 h]; Carpenter [5.85 h]; Steelfixer [5.85 h]; Mason [5.85 h]; Surveyor [5.85 h]; Surveyor Helper [5.85 h]; Excavation for Trench size 40cm wide and 80cm deep (for 1 cable) [75]; Duct bank for MV cables UPVC (2xDia. 150mm) [17.19] | 7,523.48 |  | 0.012263179393698 | Cons. | Z4 | MV | Cons | Cbl&Dct | allElec | SUB.C | Rd 03 |
| B2.33 71 00.295 |  | Backfilling & Warrning Tape | 4d | 2026-10-11 | 2026-10-14 | B2.33 71 00.294_R |  | 106.32d | 43.41d | Labor [46.78 h]; Foreman [23.39 h]; Operator [93.55 h]; Surveyor [23.39 h]; Surveyor Helper [23.39 h]; Loader [24 h]; Water Tanker [24 h]; Dump Truck [24 h]; Plate Compactor [24 h]; Roller Compactor [24 h]; Excavation for Trench size 40cm wide and 80cm deep (for 1 cable) [100]; Duct bank for MV cables UPVC (2xDia. 150mm) [17.08] | 8,056.11 |  | 0.00333826948299228 | Cons. | Z4 | MV | Cons | Cbl&Dct | allElec | SUB.C | Rd 03 |
|  | Street Lighting | **Street Lighting** |  | 2026-09-08 | 2026-11-07 |  |  |  |  |  |  |  |  |  |  |  |  |  |  |  |  |
|  | Duct Banks | **Duct Banks** |  | 2026-09-08 | 2026-10-17 |  |  |  |  |  |  |  |  |  |  |  |  |  |  |  |  |
|  | 4 Way | **4 Way** |  | 2026-09-08 | 2026-10-17 |  |  |  |  |  |  |  |  |  |  |  |  |  |  |  |  |
| B2.33 71 00 02 85 |  | Excavation (44.00% Completed) | 6.2d | 2026-09-08 A | 2026-09-15 A | B2.31 23 00.643 SS | 100% |  |  | Labor [13.72 h]; Foreman [6.86 h]; Operator [13.72 h]; Surveyor [6.86 h]; Surveyor Helper [6.86 h]; Excavator (With Bucket) [7.04 h]; Water Tanker [7.04 h]; Dump Truck [7.04 h]; Plate Compactor [7.04 h]; SL Excavation for Trench size 60cm wide and 65cm deep ( for 2 cables); Road Crossing Duct for Street Lighting cables UPVC (4xDia. 110mm) [3.92] | 1,654.07 | 1,654.07 | 0.00153753780264308 | Cons. | Z4 | SL | Cons | Cables | allElec | SUB.C | Rd 03 |
| B2.33 71 00 02 86 |  | Shuttering, Steel Fixing Incl. UPVC Pipe & Conc. Cast (44.00% Completed) | 3.2d | 2026-09-12 A | 2026-09-15 A | B2.33 71 00 02 85 SS | 100% |  |  | Labor [41.16 h]; Laboratory Officer [20.58 h]; Carpenter [20.58 h]; Steelfixer [20.58 h]; Mason [20.58 h]; Surveyor [20.58 h]; Surveyor Helper [20.58 h]; SL Excavation for Trench size 60cm wide and 65cm deep ( for 2 cables); Road Crossing Duct for Street Lighting cables UPVC (4xDia. 110mm) [11.77] | 4,962.22 | 4,962.22 | 0.00461261340792926 | Cons. | Z4 | SL | Cons | Cables | allElec | SUB.C | Rd 03 |
| B2.33 71 00 02 87 |  | Backfilling & Warrning Tape (44.00% Completed) | 0.2d | 2026-09-15 A | 2026-09-15 A | B2.33 71 00 02 86 FF | 100% |  |  | Labor [34.3 h]; Foreman [17.15 h]; Operator [68.61 h]; Surveyor [17.15 h]; Surveyor Helper [17.15 h]; Loader [17.6 h]; Water Tanker [17.6 h]; Dump Truck [17.6 h]; Plate Compactor [17.6 h]; Roller Compactor [17.6 h]; SL Excavation for Trench size 60cm wide and 65cm deep ( for 2 cables); Road Crossing Duct for Street Lighting cables UPVC (4xDia. 110mm) [3.92] | 1,654.07 | 1,654.07 | 0.00153753780264308 | Cons. | Z4 | SL | Cons | Cables | allElec | SUB.C | Rd 03 |
| B2.33 71 00 02 85_R |  | Excavation(Rem) | 2d | 2026-10-11 | 2026-10-12 | B2.31 23 00.643_R, B2.33 71 00 02 85 |  | 30.32d | 0d | Labor [17.46 h]; Foreman [8.73 h]; Operator [17.46 h]; Surveyor [8.73 h]; Surveyor Helper [8.73 h]; Excavator (With Bucket) [8.96 h]; Water Tanker [8.96 h]; Dump Truck [8.96 h]; Plate Compactor [8.96 h]; SL Excavation for Trench size 60cm wide and 65cm deep ( for 2 cables); Road Crossing Duct for Street Lighting cables UPVC (4xDia. 110mm) [5] | 2,105.18 |  | 0.00153753780264308 | Cons. | Z4 | SL | Cons | Cables | allElec | SUB.C | Rd 03 |
| B2.33 71 00 02 86_R |  | Shuttering, Steel Fixing Incl. UPVC Pipe & Conc. Cast(Rem) | 2d | 2026-10-13 | 2026-10-14 | B2.33 71 00 02 85_R, B2.33 71 00 02 86 |  | 91.32d | 0d | Labor [52.39 h]; Laboratory Officer [26.2 h]; Carpenter [26.2 h]; Steelfixer [26.2 h]; Mason [26.2 h]; Surveyor [26.2 h]; Surveyor Helper [26.2 h]; SL Excavation for Trench size 60cm wide and 65cm deep ( for 2 cables); Road Crossing Duct for Street Lighting cables UPVC (4xDia. 110mm) [14.99] | 6,315.55 |  | 0.00461261340792926 | Cons. | Z4 | SL | Cons | Cables | allElec | SUB.C | Rd 03 |
| B2.33 71 00 02 87_R |  | Backfilling & Warrning Tape(Rem) | 2d | 2026-10-15 | 2026-10-17 | B2.33 71 00 02 86_R, B2.33 71 00 02 87 |  | 91.32d | 32d | Labor [43.66 h]; Foreman [21.83 h]; Operator [87.32 h]; Surveyor [21.83 h]; Surveyor Helper [21.83 h]; Loader [22.4 h]; Water Tanker [22.4 h]; Dump Truck [22.4 h]; Plate Compactor [22.4 h]; Roller Compactor [22.4 h]; SL Excavation for Trench size 60cm wide and 65cm deep ( for 2 cables); Road Crossing Duct for Street Lighting cables UPVC (4xDia. 110mm) [5] | 2,105.18 |  | 0.00153753780264308 | Cons. | Z4 | SL | Cons | Cables | allElec | SUB.C | Rd 03 |
|  | Drawpits | **Drawpits** |  | 2026-10-13 | 2026-10-19 |  |  |  |  |  |  |  |  |  |  |  |  |  |  |  |  |
| B2.33 71 00 02 88 |  | Excavation | 2d | 2026-10-13 | 2026-10-14 | B2.33 71 00 02 85_R |  | 30.32d | 0d | Labor [31.18 h]; Foreman [15.59 h]; Operator [31.18 h]; Surveyor [15.59 h]; Surveyor Helper [15.59 h]; Excavator (With Bucket) [16 h]; Water Tanker [16 h]; Dump Truck [16 h]; Plate Compactor [16 h]; Drawpit with medium duty steel cover, size600x600x900mm, [2.43] | 14,384.57 |  | 0.0025348715507172 | Cons. | Z4 | SL | Cons | Cables | allElec | SUB.C | Rd 03 |
| B2.33 71 00 02 89 |  | Drawpits Installation | 2d | 2026-10-15 | 2026-10-17 | B2.33 71 00 02 88 |  | 41.32d | 0d | Labor [31.18 h]; Laboratory Officer [15.59 h]; Carpenter [15.59 h]; Steelfixer [15.59 h]; Mason [15.59 h]; Surveyor [15.59 h]; Surveyor Helper [15.59 h]; Drawpit with medium duty steel cover, size600x600x900mm, [7.28] | 43,153.72 |  | 0.0076046146521516 | Cons. | Z4 | SL | Cons | Cables | allElec | SUB.C | Rd 03 |
| B2.33 71 00 02 90 |  | Backfilling & Warrning Tape | 2d | 2026-10-18 | 2026-10-19 | B2.33 71 00 02 89 |  | 41.32d | 1.64d | Labor [77.96 h]; Foreman [38.98 h]; Operator [155.92 h]; Surveyor [38.98 h]; Surveyor Helper [38.98 h]; Loader [40 h]; Water Tanker [40 h]; Dump Truck [40 h]; Plate Compactor [40 h]; Roller Compactor [40 h]; Drawpit with medium duty steel cover, size600x600x900mm, [2.43] | 14,384.57 |  | 0.0025348715507172 | Cons. | Z4 | SL | Cons | Cables | allElec | SUB.C | Rd 03 |
|  | Cables | **Cables** |  | 2026-09-09 | 2026-11-02 |  |  |  |  |  |  |  |  |  |  |  |  |  |  |  |  |
|  | 4C,10+1C,10mm2 | **4C,10+1C,10mm2** |  | 2026-09-09 | 2026-11-02 |  |  |  |  |  |  |  |  |  |  |  |  |  |  |  |  |
| B2.33 71 19 222 |  | Land Adjustment (44.00% Completed) | 5.2d | 2026-09-09 A | 2026-09-15 A | B2.33 71 00 02 85 | 100% |  |  | Labor [20.58 h]; Foreman [10.29 h]; Operator [13.72 h]; Surveyor [3.43 h]; Surveyor Helper [3.43 h]; Excavator (With Bucket) [10.56 h]; Water Tanker [10.56 h]; Dump Truck [10.56 h]; Roller Compactor [10.56 h]; SL Cable, Copper 4x10mm2/ CU/XLPE/SWA/PVC + 1x10mm2 CU/PVC [183.26] | 11,424.14 | 11,424.14 | 0.00496258855349975 | Cons. | Z4 | SL | Cons | Cables | allElec | SUB.C | Rd 03 |
| B2.33 71 49.23.192 |  | Cable Pulling (44.00% Completed) | 4.2d | 2026-09-10 A | 2026-09-15 A | B2.33 71 19 222 SS | 100% |  |  | Labor [34.3 h]; Foreman [17.15 h]; Surveyor [17.15 h]; Surveyor Helper [17.15 h]; Electrician [17.15 h]; SL Cable, Copper 4x10mm2/ CU/XLPE/SWA/PVC + 1x10mm2 CU/PVC [549.78] | 34,272.02 | 34,272.02 | 0.0148875878281853 | Cons. | Z4 | SL | Cons | Cables | allElec | SUB.C | Rd 03 |
| B2.33 71 19 232 |  | Backfilling (44.00% Completed) | 2.2d | 2026-09-13 A | 2026-09-15 A | B2.33 71 49.23.192 FF | 100% |  |  | Labor [41.16 h]; Foreman [20.58 h]; Operator [41.16 h]; Surveyor [20.58 h]; Surveyor Helper [20.58 h]; Loader [21.12 h]; Water Tanker [21.12 h]; Dump Truck [21.12 h]; Plate Compactor [21.12 h]; SL Cable, Copper 4x10mm2/ CU/XLPE/SWA/PVC + 1x10mm2 CU/PVC [183.26] | 11,424.14 | 11,424.14 | 0.00496258855349975 | Cons. | Z4 | SL | Cons | Cables | allElec | SUB.C | Rd 03 |
| B2.33 71 19 222_R |  | Land Adjustment(Rem) | 2d | 2026-10-26 | 2026-10-28 | B2.33 71 00 02 88, B2.33 71 16.99, B2.33 71 19 222 |  | 39.68d | 0d | Labor [26.2 h]; Foreman [13.1 h]; Operator [17.46 h]; Surveyor [4.37 h]; Surveyor Helper [4.37 h]; Excavator (With Bucket) [13.44 h]; Water Tanker [13.44 h]; Dump Truck [13.44 h]; Roller Compactor [13.44 h]; SL Cable, Copper 4x10mm2/ CU/XLPE/SWA/PVC + 1x10mm2 CU/PVC [233.24] | 14,539.82 |  | 0.00496258855349975 | Cons. | Z4 | SL | Cons | Cables | allElec | SUB.C | Rd 03 |
| B2.33 71 49.23.192_R |  | Cable Pulling(Rem) | 2d | 2026-10-28 | 2026-10-31 | B2.33 71 19 222_R, B2.33 71 49.23.192 |  | 39.68d | 0d | Labor [43.66 h]; Foreman [21.83 h]; Surveyor [21.83 h]; Surveyor Helper [21.83 h]; Electrician [21.83 h]; SL Cable, Copper 4x10mm2/ CU/XLPE/SWA/PVC + 1x10mm2 CU/PVC [699.72] | 43,618.94 |  | 0.0148875878281853 | Cons. | Z4 | SL | Cons | Cables | allElec | SUB.C | Rd 03 |
| B2.33 71 19 232_R |  | Backfilling(Rem) | 2d | 2026-10-31 | 2026-11-02 | B2.33 71 16.94, B2.33 71 19 46, B2.33 71 16.98, B2.33 71 49.23.192_R, B2.33 71 19 232 |  | 45.68d | 2d | Labor [52.39 h]; Foreman [26.2 h]; Operator [52.39 h]; Surveyor [26.2 h]; Surveyor Helper [26.2 h]; Loader [26.88 h]; Water Tanker [26.88 h]; Dump Truck [26.88 h]; Plate Compactor [26.88 h]; SL Cable, Copper 4x10mm2/ CU/XLPE/SWA/PVC + 1x10mm2 CU/PVC [233.24] | 14,539.82 |  | 0.00496258855349975 | Cons. | Z4 | SL | Cons | Cables | allElec | SUB.C | Rd 03 |

| ID | WBS | Activity | Duration | Start | Finish | Predecessors | Complete | Total float | Free float | Resources | Cost | Actual cost | Weight % | DMM2 Weekly Progress | DMM2 Zones | Networks & Stations | DMM2 Phases | Networks Components | All Electrical Scope | Subcontractors works | Dmm2 Roads |
| --- | --- | --- | --- | --- | --- | --- | --- | --- | --- | --- | --- | --- | --- | --- | --- | --- | --- | --- | --- | --- | --- |
|  | SL Poles | **SL Poles** |  | 2026-09-10 | 2026-10-13 |  |  |  |  |  |  |  |  |  |  |  |  |  |  |  |  |
|  | Pole (10 M Sngl Arm) | **Pole (10 M Single Arm)** |  | 2026-09-10 | 2026-10-13 |  |  |  |  |  |  |  |  |  |  |  |  |  |  |  |  |
| B2.33 71 16.95 |  | Excavation (92.63% Completed) | 5d | 2026-09-10 A | 2026-09-15 A | DMM2-Proc-Delv-6538 SS | 100% |  |  | Labor [43.33 h]; Foreman [21.66 h]; Operator [43.33 h]; Surveyor [21.66 h]; Surveyor Helper [21.66 h]; Excavator (With Bucket) [22.23 h]; Dump Truck [22.23 h]; Lighting poles with 1 arm, height of ( 10) meters [6.11] | 54,554.73 | 54,554.73 | 0.0112471278804954 | Cons. | Z4 | SL | Cons | Pls&Lmn | allElec | SUB.C | Rd 03 |
| B2.33 71 16.96 |  | PC & RC Foundation (92.63% Completed) | 4d | 2026-09-12 A | 2026-09-15 A | B2.33 71 16.95 SS | 100% |  |  | Labor [72.21 h]; Foreman [36.11 h]; Laboratory Officer [36.11 h]; Carpenter [36.11 h]; Steelfixer [36.11 h]; Mason [36.11 h]; Lighting poles with 1 arm, height of ( 10) meters [6.11] | 54,554.73 | 54,554.73 | 0.0112471278804954 | Cons. | Z4 | SL | Cons | Pls&Lmn | allElec | SUB.C | Rd 03 |
| B2.33 71 16.97 |  | Lighting Poles Installation Incl power box, Cables (92.63% Completed) | 2d | 2026-09-14 A | 2026-09-15 A | B2.33 71 16.96 SS | 100% |  |  | Labor [86.65 h]; Operator [86.65 h]; Mobile Crane [44.46 h]; Electrician [43.33 h]; Lighting poles with 1 arm, height of ( 10) meters [12.23] | 109,109.47 | 109,109.47 | 0.0224942557609906 | Cons. | Z4 | SL | Cons | Pls&Lmn | allElec | SUB.C | Rd 03 |
| B2.33 71 16.95_R |  | Excavation(Rem) | 2d | 2026-10-07 | 2026-10-08 | DMM2-Proc-Delv-6538_R SS, B2.33 71 16.95 |  | 58.32d | 0d | Labor [3.45 h]; Foreman [1.72 h]; Operator [3.45 h]; Surveyor [1.72 h]; Surveyor Helper [1.72 h]; Excavator (With Bucket) [1.77 h]; Dump Truck [1.77 h]; Lighting poles with 1 arm, height of ( 10) meters [0.49] | 4,343.76 |  | 0.0112471278804954 | Cons. | Z4 | SL | Cons | Pls&Lmn | allElec | SUB.C | Rd 03 |
| B2.33 71 16.96_R |  | PC & RC Foundation(Rem) | 2d | 2026-10-07 | 2026-10-08 | B2.33 71 16.95_R SS, B2.33 71 16.96 |  | 58.32d | 0d | Labor [5.75 h]; Foreman [2.87 h]; Laboratory Officer [2.87 h]; Carpenter [2.87 h]; Steelfixer [2.87 h]; Mason [2.87 h]; Lighting poles with 1 arm, height of ( 10) meters [0.49] | 4,343.76 |  | 0.0112471278804954 | Cons. | Z4 | SL | Cons | Pls&Lmn | allElec | SUB.C | Rd 03 |
| B2.33 71 16.97_R |  | Lighting Poles Installation Incl power box, Cables(Rem) | 2d | 2026-10-07 | 2026-10-08 | B2.33 71 16.96_R SS, B2.33 71 16.97 |  | 58.32d | 0d | Labor [6.9 h]; Operator [6.9 h]; Mobile Crane [3.54 h]; Electrician [3.45 h]; Lighting poles with 1 arm, height of ( 10) meters [0.97] | 8,687.53 |  | 0.0224942557609906 | Cons. | Z4 | SL | Cons | Pls&Lmn | allElec | SUB.C | Rd 03 |
| B2.26.56.19.17 |  | Lighting Luminares Inst | 2d | 2026-10-10 | 2026-10-11 | B2.33 71 16.97_R |  | 60.32d | 0d | Labor [62.37 h]; Operator [62.37 h]; Manlift [32 h]; Street Lighting( LED), Lamp Lumen: 14560, Luminare Lumen:12700 , complete with control gear and lamp, (80) WATT. [30.11] | 27,918.13 |  | 0.0047113256383061 | Cons. | Z4 | SL | Cons | Pls&Lmn | allElec | SUB.C | Rd 03 |
| B2.33 71 16.98 |  | Backfilling, Grouting & Chamfering | 2d | 2026-10-12 | 2026-10-13 | B2.26.56.19.17 |  | 60.32d | 14.64d | Labor [93.55 h]; Foreman [46.78 h]; Mason [46.78 h]; Operator [93.55 h]; Surveyor [46.78 h]; Surveyor Helper [46.78 h]; Loader [48 h]; Water Tanker [48 h]; Dump Truck [48 h]; Plate Compactor [48 h]; Lighting poles with 1 arm, height of ( 10) meters [6.6] | 58,898.5 |  | 0.0112471278804954 | Cons. | Z4 | SL | Cons | Pls&Lmn | allElec | SUB.C | Rd 03 |
|  | Earthing | **Earthing** |  | 2026-10-31 | 2026-11-07 |  |  |  |  |  |  |  |  |  |  |  |  |  |  |  |  |
| B2.33 71 19 47 |  | Land Adjustment | 2d | 2026-10-31 | 2026-11-02 | B2.33 71 16.97_R, B2.33 71 49.23.192_R, B2.33 71 00 02 82 |  | 39.68d | 0d | Labor [46.78 h]; Foreman [23.39 h]; Operator [31.18 h]; Surveyor [7.8 h]; Surveyor Helper [7.8 h]; Excavator (With Bucket) [24 h]; Water Tanker [24 h]; Dump Truck [24 h]; Roller Compactor [24 h]; SL Earthing Including lighting poles circuits [0.45] | 904.39 |  | 0.000454679838542865 | Cons. | Z4 | SL | Cons | Cables | allElec | SUB.C | Rd 03 |
| B2.33 71 19 48 |  | Earth Rods & Conduits | 2d | 2026-11-02 | 2026-11-04 | B2.33 71 19 47 |  | 43.68d | 0d | Labor [46.78 h]; Foreman [23.39 h]; Electrician [23.39 h]; SL Earthing Including lighting poles circuits [1.34] | 2,693.06 |  | 0.00135393551921653 | Cons. | Z4 | SL | Cons | Cables | allElec | SUB.C | Rd 03 |
| B2.33 71 19 49 |  | Backfilling | 2d | 2026-11-04 | 2026-11-07 | B2.33 71 19 48, B2.33 71 19 232_R |  | 43.68d | 2d | Labor [93.55 h]; Foreman [46.78 h]; Operator [93.55 h]; Surveyor [46.78 h]; Surveyor Helper [46.78 h]; Loader [48 h]; Water Tanker [48 h]; Dump Truck [48 h]; Plate Compactor [48 h]; SL Earthing Including lighting poles circuits [0.45] | 904.39 |  | 0.000454679838542865 | Cons. | Z4 | SL | Cons | Cables | allElec | SUB.C | Rd 03 |
|  | Telecommunication | **Telecommunication Network** |  | 2026-09-05 | 2026-10-20 |  |  |  |  |  |  |  |  |  |  |  |  |  |  |  |  |
|  | Ducts | **Ducts** |  | 2026-09-05 | 2026-10-11 |  |  |  |  |  |  |  |  |  |  |  |  |  |  |  |  |
|  | (6*50mm) | **Size (6*50mm) HDPE ducts** |  | 2026-09-05 | 2026-10-11 |  |  |  |  |  |  |  |  |  |  |  |  |  |  |  |  |
| B2.1.33 81 26.174 |  | Excavation (70.00% Completed) | 10d | 2026-09-05 A | 2026-09-15 A | B3.1. 33 14 13-01108 | 100% |  |  | Labor [21.83 h]; Foreman [10.91 h]; Operator [21.83 h]; Surveyor [10.91 h]; Surveyor Helper [10.91 h]; Excavator (With Bucket) [11.2 h]; Water Tanker [11.2 h]; Dump Truck [11.2 h]; Plate Compactor [11.2 h]; (6*50mm) HDPE ducts [88.07] | 24,822.24 | 24,822.24 | 0.00690393952512995 | Cons. | Z4 | Telecom | Cons | DCT&MNH | allElec | SUB.C | Rd 03 |
| B2.1.33 81 26.175 |  | HDPE Pipe, Shuttering, Steel Fixing & Conc. Cast (70.00% Completed) | 8d | 2026-09-07 A | 2026-09-15 A | B2.1.33 81 26.174 SS | 100% |  |  | Labor [65.49 h]; Laboratory Officer [32.74 h]; Carpenter [32.74 h]; Steelfixer [32.74 h]; Mason [32.74 h]; Surveyor [32.74 h]; Surveyor Helper [32.74 h]; (6*50mm) HDPE ducts [264.22] | 74,466.73 | 74,466.73 | 0.0207118185753898 | Cons. | Z4 | Telecom | Cons | DCT&MNH | allElec | SUB.C | Rd 03 |
| B2.1.33 81 26.174_R |  | Excavation(Rem) | 2d | 2026-10-07 | 2026-10-08 | B2.1.33 81 26.174 |  | 93.32d | 0d | Labor [9.36 h]; Foreman [4.68 h]; Operator [9.36 h]; Surveyor [4.68 h]; Surveyor Helper [4.68 h]; Excavator (With Bucket) [4.8 h]; Water Tanker [4.8 h]; Dump Truck [4.8 h]; Plate Compactor [4.8 h]; (6*50mm) HDPE ducts [37.75] | 10,638.1 |  | 0.00690393952512995 | Cons. | Z4 | Telecom | Cons | DCT&MNH | allElec | SUB.C | Rd 03 |
| B2.1.33 81 26.175_R |  | HDPE Pipe, Shuttering, Steel Fixing & Conc. Cast(Rem) | 2d | 2026-10-07 | 2026-10-08 | B2.1.33 81 26.174_R SS, B2.1.33 81 26.175 |  | 105.32d | 0d | Labor [28.07 h]; Laboratory Officer [14.03 h]; Carpenter [14.03 h]; Steelfixer [14.03 h]; Mason [14.03 h]; Surveyor [14.03 h]; Surveyor Helper [14.03 h]; (6*50mm) HDPE ducts [113.24] | 31,914.31 |  | 0.0207118185753898 | Cons. | Z4 | Telecom | Cons | DCT&MNH | allElec | SUB.C | Rd 03 |
| B2.1.33 81 26.176 |  | Backfilling & Warrning Tape | 2d | 2026-10-10 | 2026-10-11 | B2.1.33 81 26.175_R |  | 105.32d | 40d | Labor [77.96 h]; Foreman [38.98 h]; Operator [155.92 h]; Surveyor [38.98 h]; Surveyor Helper [38.98 h]; Loader [40 h]; Water Tanker [40 h]; Dump Truck [40 h]; Plate Compactor [40 h]; Roller Compactor [40 h]; (6*50mm) HDPE ducts [125.82] | 35,460.35 |  | 0.00690393952512995 | Cons. | Z4 | Telecom | Cons | DCT&MNH | allElec | SUB.C | Rd 03 |
|  | (6*50mm+2*32mm) | **Size (6*50mm+2*32mm) HDPE ducts** |  | 2026-09-05 | 2026-10-11 |  |  |  |  |  |  |  |  |  |  |  |  |  |  |  |  |
| B2.1.33 81 26.177 |  | Excavation (70.00% Completed) | 10d | 2026-09-05 A | 2026-09-15 A | B2.1.33 81 26.174 SS | 100% |  |  | Labor [21.83 h]; Foreman [10.91 h]; Operator [21.83 h]; Surveyor [10.91 h]; Surveyor Helper [10.91 h]; Excavator (With Bucket) [11.2 h]; Water Tanker [11.2 h]; Dump Truck [11.2 h]; Plate Compactor [11.2 h]; (6*50mm+2*32mm) HDPE ducts [33.95] | 14,875.86 | 14,875.86 | 0.00243727564627162 | Cons. | Z4 | Telecom | Cons | DCT&MNH | allElec | SUB.C | Rd 03 |
| B2.1.33 81 26.178 |  | HDPE Pipe, Shuttering, Steel Fixing & Conc. Cast (70.00% Completed) | 7d | 2026-09-08 A | 2026-09-15 A | B2.1.33 81 26.177 SS | 100% |  |  | Labor [65.49 h]; Laboratory Officer [32.74 h]; Carpenter [32.74 h]; Steelfixer [32.74 h]; Mason [32.74 h]; Surveyor [32.74 h]; Surveyor Helper [32.74 h]; (6*50mm+2*32mm) HDPE ducts [101.84] | 44,619.96 | 44,619.96 | 0.00731057705386804 | Cons. | Z4 | Telecom | Cons | DCT&MNH | allElec | SUB.C | Rd 03 |
| B2.1.33 81 26.177_R |  | Excavation(Rem) | 2d | 2026-10-07 | 2026-10-08 | B2.1.33 81 26.174_R SS, B2.1.33 81 26.177 |  | 93.32d | 0d | Labor [9.36 h]; Foreman [4.68 h]; Operator [9.36 h]; Surveyor [4.68 h]; Surveyor Helper [4.68 h]; Excavator (With Bucket) [4.8 h]; Water Tanker [4.8 h]; Dump Truck [4.8 h]; Plate Compactor [4.8 h]; (6*50mm+2*32mm) HDPE ducts [14.55] | 6,375.37 |  | 0.00243727564627162 | Cons. | Z4 | Telecom | Cons | DCT&MNH | allElec | SUB.C | Rd 03 |
| B2.1.33 81 26.178_R |  | HDPE Pipe, Shuttering, Steel Fixing & Conc. Cast(Rem) | 2d | 2026-10-07 | 2026-10-08 | B2.1.33 81 26.177_R SS, B2.1.33 81 26.178 |  | 99.32d | 0d | Labor [28.07 h]; Laboratory Officer [14.03 h]; Carpenter [14.03 h]; Steelfixer [14.03 h]; Mason [14.03 h]; Surveyor [14.03 h]; Surveyor Helper [14.03 h]; (6*50mm+2*32mm) HDPE ducts [43.65] | 19,122.84 |  | 0.00731057705386804 | Cons. | Z4 | Telecom | Cons | DCT&MNH | allElec | SUB.C | Rd 03 |
| B2.1.33 81 26.179 |  | Backfilling & Warrning Tape | 2d | 2026-10-10 | 2026-10-11 | B2.1.33 81 26.178_R |  | 99.32d | 36d | Labor [77.96 h]; Foreman [38.98 h]; Operator [155.92 h]; Surveyor [38.98 h]; Surveyor Helper [38.98 h]; Loader [40 h]; Water Tanker [40 h]; Dump Truck [40 h]; Plate Compactor [40 h]; Roller Compactor [40 h]; (6*50mm+2*32mm) HDPE ducts [48.51] | 21,251.23 |  | 0.00243727564627162 | Cons. | Z4 | Telecom | Cons | DCT&MNH | allElec | SUB.C | Rd 03 |

| ID | WBS | Activity | Duration | Start | Finish | Predecessors | Complete | Planned start | Planned finish | Total float | Free float | Resources | Cost | Actual cost | Weight % | DMM2 Weekly Progress | DMM2 Zones | Networks & Stations | DMM2 Phases | Networks Components | All Electrical Scope | Subcontractors works | Dmm2 Roads |
| --- | --- | --- | --- | --- | --- | --- | --- | --- | --- | --- | --- | --- | --- | --- | --- | --- | --- | --- | --- | --- | --- | --- | --- |
|  | (6*50mm+4*32mm) | **Size (6*50mm+4*32mm) HDPE ducts** |  | 2026-09-05 | 2026-10-11 |  |  |  |  |  |  |  |  |  |  |  |  |  |  |  |  |  |  |
| B2.1.33 81 26.180 |  | Excavation (70.00% Completed) | 10d | 2026-09-05 A | 2026-09-15 A | B2.1.33 81 26.177 FF, B2.1.33 81 26.177 SS | 100% |  |  |  |  | Labor [21.83 h]; Foreman [10.91 h]; Operator [21.83 h]; Surveyor [10.91 h]; Surveyor Helper [10.91 h]; Excavator (With Bucket) [11.2 h]; Water Tanker [11.2 h]; Dump Truck [11.2 h]; Plate Compactor [11.2 h]; (6*50mm+4*32mm) HDPE ducts [10.5] | 5,208.77 | 5,208.77 | 0.00340443051603132 | Cons. | Z4 | Telecom | Cons | DCT&MNH | allElec | SUB.C | Rd 03 |
| B2.1.33 81 26.181 |  | HDPE Pipe, Shuttering, Steel Fixing & Conc. Cast (70.00% Completed) | 6d | 2026-09-09 A | 2026-09-15 A | B2.1.33 81 26.180 SS | 100% |  |  |  |  | Labor [65.49 h]; Laboratory Officer [32.74 h]; Carpenter [32.74 h]; Steelfixer [32.74 h]; Mason [32.74 h]; Surveyor [32.74 h]; Surveyor Helper [32.74 h]; (6*50mm+4*32mm) HDPE ducts [31.5] | 15,626.32 | 15,626.32 | 0.010213291548094 | Cons. | Z4 | Telecom | Cons | DCT&MNH | allElec | SUB.C | Rd 03 |
| B2.1.33 81 26.180_R |  | Excavation(Rem) | 2d | 2026-10-07 | 2026-10-08 | B2.1.33 81 26.177_R FF, B2.1.33 81 26.177_R SS, B2.1.33 81 26.180 |  |  |  | 93.32d | 0d | Labor [9.36 h]; Foreman [4.68 h]; Operator [9.36 h]; Surveyor [4.68 h]; Surveyor Helper [4.68 h]; Excavator (With Bucket) [4.8 h]; Water Tanker [4.8 h]; Dump Truck [4.8 h]; Plate Compactor [4.8 h]; (6*50mm+4*32mm) HDPE ducts [4.5] | 2,232.33 |  | 0.00340443051603132 | Cons. | Z4 | Telecom | Cons | DCT&MNH | allElec | SUB.C | Rd 03 |
| B2.1.33 81 26.181_R |  | HDPE Pipe, Shuttering, Steel Fixing & Conc. Cast(Rem) | 2d | 2026-10-07 | 2026-10-08 | B2.1.33 81 26.180_R SS, B2.1.33 81 26.181 |  |  |  | 101.32d | 0d | Labor [28.07 h]; Laboratory Officer [14.03 h]; Carpenter [14.03 h]; Steelfixer [14.03 h]; Mason [14.03 h]; Surveyor [14.03 h]; Surveyor Helper [14.03 h]; (6*50mm+4*32mm) HDPE ducts [13.5] | 6,697 |  | 0.010213291548094 | Cons. | Z4 | Telecom | Cons | DCT&MNH | allElec | SUB.C | Rd 03 |
| B2.1.33 81 26.182 |  | Backfilling & Warrning Tape | 2d | 2026-10-10 | 2026-10-11 | B2.1.33 81 26.181_R |  |  |  | 101.32d | 38d | Labor [77.96 h]; Foreman [38.98 h]; Operator [155.92 h]; Surveyor [38.98 h]; Surveyor Helper [38.98 h]; Loader [40 h]; Water Tanker [40 h]; Dump Truck [40 h]; Plate Compactor [40 h]; Roller Compactor [40 h]; (6*50mm+4*32mm) HDPE ducts [15] | 7,441.11 |  | 0.00340443051603132 | Cons. | Z4 | Telecom | Cons | DCT&MNH | allElec | SUB.C | Rd 03 |
|  | Manholes | **Manholes** |  | 2026-10-10 | 2026-10-20 |  |  |  |  |  |  |  |  |  |  |  |  |  |  |  |  |  |  |
|  | Manhole Type 1 | **Manhole Type 1** |  | 2026-10-10 | 2026-10-15 |  |  |  |  |  |  |  |  |  |  |  |  |  |  |  |  |  |  |
| B2.31 23 00.633 |  | Excavation | 2d | 2026-10-10 | 2026-10-11 | B2.1.33 81 26.180_R |  |  |  | 93.32d | 0d | Labor [31.18 h]; Foreman [15.59 h]; Operator [31.18 h]; Surveyor [15.59 h]; Surveyor Helper [15.59 h]; Excavator (With Bucket) [16 h]; Water Tanker [16 h]; Dump Truck [16 h]; Plate Compactor [16 h]; Manhole Type 1 [1.24] | 8,766.4 |  | 0.00167335317103356 | Cons. | Z4 | Telecom | Cons | DCT&MNH | allElec | SUB.C | Rd 03 |
| B2.33 71 00.274 |  | Manhole Installation | 2d | 2026-10-12 | 2026-10-13 | B2.31 23 00.633 |  |  |  | 95.32d | 0d | Labor [31.18 h]; Laboratory Officer [15.59 h]; Carpenter [15.59 h]; Steelfixer [15.59 h]; Mason [15.59 h]; Surveyor [15.59 h]; Surveyor Helper [15.59 h]; Manhole Type 1 [3.72] | 26,299.19 |  | 0.00502005951310069 | Cons. | Z4 | Telecom | Cons | DCT&MNH | allElec | SUB.C | Rd 03 |
| B2.33 71 00.275 |  | Backfilling & Warrning Tape | 2d | 2026-10-14 | 2026-10-15 | B2.33 71 00.274 |  |  |  | 95.32d | 32d | Labor [77.96 h]; Foreman [38.98 h]; Operator [155.92 h]; Surveyor [38.98 h]; Surveyor Helper [38.98 h]; Loader [40 h]; Water Tanker [40 h]; Dump Truck [40 h]; Plate Compactor [40 h]; Roller Compactor [40 h]; Manhole Type 1 [1.24] | 8,766.4 |  | 0.00167335317103356 | Cons. | Z4 | Telecom | Cons | DCT&MNH | allElec | SUB.C | Rd 03 |
|  | Manhole Type 2 | **Manhole Type 2** |  | 2026-10-12 | 2026-10-20 |  |  |  |  |  |  |  |  |  |  |  |  |  |  |  |  |  |  |
| B2.31 23 00.634 |  | Excavation | 3d | 2026-10-12 | 2026-10-14 | B2.31 23 00.633 |  |  |  | 93.32d | 0d | Labor [31.18 h]; Foreman [15.59 h]; Operator [31.18 h]; Surveyor [15.59 h]; Surveyor Helper [15.59 h]; Excavator (With Bucket) [16 h]; Water Tanker [16 h]; Dump Truck [16 h]; Plate Compactor [16 h]; Manhole Type 2 [0.52] | 3,287.69 |  | 0.000634453248743172 | Cons. | Z4 | Telecom | Cons | DCT&MNH | allElec | SUB.C | Rd 03 |
| B2.33 71 00.276 |  | Manhole Installation | 2d | 2026-10-15 | 2026-10-17 | B2.31 23 00.634 |  |  |  | 93.32d | 0d | Labor [31.18 h]; Laboratory Officer [15.59 h]; Carpenter [15.59 h]; Steelfixer [15.59 h]; Mason [15.59 h]; Surveyor [15.59 h]; Surveyor Helper [15.59 h]; Manhole Type 2 [1.56] | 9,863.09 |  | 0.00190336462403523 | Cons. | Z4 | Telecom | Cons | DCT&MNH | allElec | SUB.C | Rd 03 |
| B2.33 71 00.277 |  | Backfilling & Warrning Tape | 3d | 2026-10-18 | 2026-10-20 | B2.33 71 00.276 |  |  |  | 93.32d | 30d | Labor [77.96 h]; Foreman [38.98 h]; Operator [155.92 h]; Surveyor [38.98 h]; Surveyor Helper [38.98 h]; Loader [40 h]; Water Tanker [40 h]; Dump Truck [40 h]; Plate Compactor [40 h]; Roller Compactor [40 h]; Manhole Type 2 [0.52] | 3,287.69 |  | 0.000634453248743172 | Cons. | Z4 | Telecom | Cons | DCT&MNH | allElec | SUB.C | Rd 03 |
|  | Crossing Ducts | **Road Crossing Ducts** |  | 2026-10-11 | 2026-10-17 |  |  |  |  |  |  |  |  |  |  |  |  |  |  |  |  |  |  |
|  | 1 | **Size (6X50mm) HDPE** |  | 2026-10-11 | 2026-10-17 |  |  |  |  |  |  |  |  |  |  |  |  |  |  |  |  |  |  |
| B2.31 23 00.632 |  | Excavation | 2d | 2026-10-11 | 2026-10-12 | B2.31 23 00.643_R |  |  |  | 53.32d | 0d | Labor [31.18 h]; Foreman [15.59 h]; Operator [31.18 h]; Surveyor [15.59 h]; Surveyor Helper [15.59 h]; Excavator (With Bucket) [16 h]; Water Tanker [16 h]; Dump Truck [16 h]; Plate Compactor [16 h]; Road crossing ducts, (6*50mm) HDPE [7.13] | 2,221.93 |  | 0.000381434848303997 | Cons. | Z4 | Telecom | Cons | DCT&MNH | allElec | SUB.C | Rd 03 |
| B2.33 71 00.272 |  | Shuttering, Steel Fixing Incl. UPVC Pipe & Conc. Cast | 2d | 2026-10-13 | 2026-10-14 | B2.31 23 00.632 |  |  |  | 100.32d | 0d | Labor [46.78 h]; Laboratory Officer [23.39 h]; Carpenter [23.39 h]; Steelfixer [23.39 h]; Mason [23.39 h]; Surveyor [23.39 h]; Surveyor Helper [23.39 h]; Road crossing ducts, (6*50mm) HDPE [21.37] | 6,660.61 |  | 0.00114341541939146 | Cons. | Z4 | Telecom | Cons | DCT&MNH | allElec | SUB.C | Rd 03 |
| B2.33 71 00.273 |  | Backfilling & Warrning Tape | 2d | 2026-10-15 | 2026-10-17 | B2.33 71 00.272 |  |  |  | 100.32d | 39d | Labor [77.96 h]; Foreman [38.98 h]; Operator [155.92 h]; Surveyor [38.98 h]; Surveyor Helper [38.98 h]; Loader [40 h]; Water Tanker [40 h]; Dump Truck [40 h]; Plate Compactor [40 h]; Roller Compactor [40 h]; Road crossing ducts, (6*50mm) HDPE [7.13] | 2,221.93 |  | 0.000381434848303997 | Cons. | Z4 | Telecom | Cons | DCT&MNH | allElec | SUB.C | Rd 03 |
|  | Earth & Road Works | **Earth & Road Works** |  | 2025-11-28 | 2026-12-19 |  |  |  |  |  |  |  |  |  |  |  |  |  |  |  |  |  |  |
|  | Earth Works | **Earth Works** |  | 2025-11-28 | 2026-03-04 |  |  |  |  |  |  |  |  |  |  |  |  |  |  |  |  |  |  |
| B1.2.31 23 16.01.16 |  | Roadway Excavation | 4d | 2025-11-28 A | 2025-12-02 A | DMM2-Eng-MS-78 | 100% | 2025-11-29 | 2025-12-02 |  |  | Roadway Excavation for cuttings (all types of soil) [16962.5]; Labor [28.35 h]; Foreman [14.17 h]; Operator [28.35 h]; Surveyor [14.17 h]; Surveyor Helper [14.17 h]; Excavator (With Bucket) [16 h]; Water Tanker [16 h]; Dump Truck [16 h] | 253,182.77 | 253,182.77 | 3.09167282088658E-005 | Cons. | Z4 | Roads | Cons |  |  |  | Rd 03 |
| B1.2.31 23 23.01.16 |  | Embankment Backfiling | 77.28d | 2025-11-30 A | 2026-03-04 A | B1.2.31 23 16.01.16 | 100% |  |  |  |  | Embankment backfiling [10831.5]; Labor [42.52 h]; Foreman [21.26 h]; Operator [42.52 h]; Surveyor [21.26 h]; Surveyor Helper [21.26 h]; Loader [24 h]; Water Tanker [24 h]; Dump Truck [24 h]; Plate Compactor [24 h]; Roller Compactor [24 h] | 294,811.55 | 294,811.55 | 0.0391270004189493 | Cons. | Z4 | Roads | Cons |  |  |  | Rd 03 |

| ID | WBS | Activity | Duration | Start | Finish | Predecessors | Complete | Planned start | Planned finish | Total float | Free float | Resources | Cost | Actual cost | Weight % | DMM2 Weekly Progress | DMM2 Zones | Networks & Stations | DMM2 Phases | Networks Components | Dmm2 Roads |
| --- | --- | --- | --- | --- | --- | --- | --- | --- | --- | --- | --- | --- | --- | --- | --- | --- | --- | --- | --- | --- | --- |
|  | Earth Layers | **Earth Layers** |  | 2026-01-22 | 2026-10-08 |  |  |  |  |  |  |  |  |  |  |  |  |  |  |  |  |
| B1.2.32 11 13.01.16 |  | Subgrade (65.00% Completed) | 187.4d | 2026-01-22 A | 2026-09-15 A | B1.2.31 23 23.01.16 | 100% |  |  |  |  | Subgrade [696.79]; Labor [20.27 h]; Foreman [10.14 h]; Operator [20.27 h]; Surveyor [10.14 h]; Surveyor Helper [10.14 h]; Grader [10.4 h]; Loader [10.4 h]; Water Tanker [10.4 h]; Dump Truck [10.4 h]; Plate Compactor [10.4 h]; Roller Compactor [10.4 h] | 20,800.59 | 20,800.59 | 0.0187654034543473 | Cons. | Z4 | Roads | Cons | Roads | Rd 03 |
| B1.2.32 11 23.01.16 |  | Aggregate Base Course (25.00% Completed) | 97.98d | 2026-05-20 A | 2026-09-15 A | B1.2.32 11 13.01.16 SS | 100% |  |  |  |  | Aggregate base course [178.66]; Labor [7.8 h]; Foreman [3.9 h]; Operator [7.8 h]; Surveyor [3.9 h]; Surveyor Helper [3.9 h]; Grader [4 h]; Loader [4 h]; Water Tanker [4 h]; Dump Truck [4 h]; Plate Compactor [4 h]; Roller Compactor [4 h] | 15,529.78 | 15,529.78 | 0.0353682515141031 | Cons. | Z4 | Roads | Cons | Roads | Rd 03 |
| B1.2.32 11 13.01.16_R |  | Subgrade(Rem) | 5d | 2026-09-20 A | 2026-09-24 A | B1.2.31 23 23.01.16, B1.2.32 11 13.01.16 | 100% | 2026-09-16 | 2026-09-21 |  |  | Subgrade [375.19]; Labor [10.91 h]; Foreman [5.46 h]; Operator [10.91 h]; Surveyor [5.46 h]; Surveyor Helper [5.46 h]; Grader [5.6 h]; Loader [5.6 h]; Water Tanker [5.6 h]; Dump Truck [5.6 h]; Plate Compactor [5.6 h]; Roller Compactor [5.6 h] | 11,200.32 | 11,200.32 | 0.0187654034543473 | Cons. | Z4 | Roads | Cons | Roads | Rd 03 |
| B1.2.32 11 23.01.16_R |  | Aggregate Base Course(Rem) | 1.5d | 2026-10-07 | 2026-10-08 | B1.2.32 11 13.01.16_R SS, B1.2.32 11 23.01.16 |  |  |  | 31.82d | 0d | Aggregate base course [535.99]; Labor [23.39 h]; Foreman [11.69 h]; Operator [23.39 h]; Surveyor [11.69 h]; Surveyor Helper [11.69 h]; Grader [12 h]; Loader [12 h]; Water Tanker [12 h]; Dump Truck [12 h]; Plate Compactor [12 h]; Roller Compactor [12 h] | 46,589.35 |  | 0.0353682515141031 | Cons. | Z4 | Roads | Cons | Roads | Rd 03 |
|  | Interlock | **Interlock** |  | 2026-10-08 | 2026-10-12 |  |  |  |  |  |  |  |  |  |  |  |  |  |  |  |  |
| B1.2.32 14 13.13.16 |  | 60mm thick - Interlocking Block Pavers | 3d | 2026-10-08 | 2026-10-12 | B1.2.32 11 23.01.16_R |  |  |  | 31.82d | 0d | 60mm thick - Interlocking block pavers for sidewalks and medians [255.13]; Labor [93.55 h]; Foreman [46.78 h]; Mason [46.78 h]; Operator [93.55 h]; JCB [48 h] | 17,024.55 |  | 0.00945158319031326 | Cons. | Z4 | Roads | Cons | Roads | Rd 03 |
|  | Curbstone | **Curbstone** |  | 2026-10-12 | 2026-11-01 |  |  |  |  |  |  |  |  |  |  |  |  |  |  |  |  |
|  | Pre Install | **Pre-Installation** |  | 2026-10-12 | 2026-10-19 |  |  |  |  |  |  |  |  |  |  |  |  |  |  |  |  |
| B2.31 23 00.451 |  | Excavation | 2d | 2026-10-12 | 2026-10-14 | B1.2.32 14 13.13.16 |  |  |  | 31.82d | 0d | Curb Stone, Type K1 [41.2]; Dropped Curb, Type K3 [1.35]; Edge Curb, Type K4 [30.24]; Heel Curb, Type K5 [19.78]; Transition Curb [0.19]; Labor [62.37 h]; Foreman [31.18 h]; Operator [62.37 h]; Surveyor [31.18 h]; Surveyor Helper [31.18 h]; JCB [32 h]; Water Tanker [32 h]; Dump Truck [32 h]; Plate Compactor [32 h] | 6,786.75 |  | 0.00383280468580481 | Cons. | Z4 | Roads | Cons | Roads | Rd 03 |
| B1.2.32 14 13.13.216 |  | PCC | 2d | 2026-10-14 | 2026-10-17 | B2.31 23 00.451 |  |  |  | 31.82d | 0d | Curb Stone, Type K1 [41.2]; Dropped Curb, Type K3 [1.35]; Edge Curb, Type K4 [30.24]; Heel Curb, Type K5 [19.78]; Transition Curb [0.19]; Labor [46.78 h]; Mason [23.39 h]; Surveyor [23.39 h]; Surveyor Helper [23.39 h] | 6,786.75 |  | 0.00383280468580481 | Cons. | Z4 | Roads | Cons | Roads | Rd 03 |
| 32 16 13.0016 |  | Haunching | 2d | 2026-10-17 | 2026-10-19 | B1.2.32 14 13.13.216 |  |  |  | 31.82d | 0d | Curb Stone, Type K1 [41.2]; Dropped Curb, Type K3 [1.35]; Edge Curb, Type K4 [30.24]; Heel Curb, Type K5 [19.78]; Transition Curb [0.19]; Labor [77.96 h]; Carpenter [38.98 h]; Mason [38.98 h]; Surveyor [38.98 h]; Surveyor Helper [38.98 h] | 6,786.75 |  | 0.00383280468580481 | Cons. | Z4 | Roads | Cons | Roads | Rd 03 |
|  | Installation | **Installation** |  | 2026-10-19 | 2026-10-29 |  |  |  |  |  |  |  |  |  |  |  |  |  |  |  |  |
| B1.2.32 16.13.01.16 |  | Curb Stone, Type K1 | 3d | 2026-10-19 | 2026-10-22 | 32 16 13.0016 |  |  |  | 31.82d | 0d | Curb Stone, Type K1 [123.62]; Labor [46.78 h]; Foreman [23.39 h]; Mason [23.39 h]; Operator [46.78 h]; Surveyor [23.39 h]; Surveyor Helper [23.39 h]; JCB [24 h] | 9,334.25 |  | 0.00550546919432191 | Cons. | Z4 | Roads | Cons | Roads | Rd 03 |
| B1.2.32 16.13.02.15 |  | Dropped Curb, Type K3 | 1d | 2026-10-22 | 2026-10-24 | B1.2.32 16.13.01.16, 32 16 13.0016 |  |  |  | 31.82d | 0d | Dropped Curb, Type K3 [1.47]; Labor [31.18 h]; Foreman [15.59 h]; Mason [15.59 h]; Operator [31.18 h]; Surveyor [15.59 h]; Surveyor Helper [15.59 h]; JCB [16 h] | 118.66 |  | 6.93449570884163E-005 | Cons. | Z4 | Roads | Cons | Roads | Rd 03 |
| B1.2.32 16.13.03.16 |  | Edge Curb, Type K4 | 1d | 2026-10-24 | 2026-10-25 | B1.2.32 16.13.02.15 FF+1d, 32 16 13.0016 |  |  |  | 31.82d | 0d | Edge Curb, Type K4 [90.71]; Labor [31.18 h]; Foreman [15.59 h]; Mason [15.59 h]; Operator [31.18 h]; Surveyor [15.59 h]; Surveyor Helper [15.59 h]; JCB [16 h] | 6,849.59 |  | 0.00377213772864879 | Cons. | Z4 | Roads | Cons | Roads | Rd 03 |
| B1.2.32 16.13.0416 |  | Heel Curb, Type K5 | 2d | 2026-10-25 | 2026-10-27 | B1.2.32 16.13.03.16, 32 16 13.0016 |  |  |  | 31.82d | 0d | Heel Curb, Type K5 [59.34]; Labor [31.18 h]; Foreman [15.59 h]; Mason [15.59 h]; Operator [31.18 h]; Surveyor [15.59 h]; Surveyor Helper [15.59 h]; JCB [16 h] | 3,803.53 |  | 0.00200184168379551 | Cons. | Z4 | Roads | Cons | Roads | Rd 03 |
| B1.2.32 16.13.05.15 |  | Transition Curb | 2d | 2026-10-27 | 2026-10-29 | B1.2.32 16.13.0416, 32 16 13.0016 |  |  |  | 31.82d | 0d | Transition Curb [0.64]; Labor [31.18 h]; Foreman [15.59 h]; Mason [15.59 h]; Operator [31.18 h]; Surveyor [15.59 h]; Surveyor Helper [15.59 h]; JCB [16 h] | 51.79 |  | 3.14648248647014E-005 | Cons. | Z4 | Roads | Cons | Roads | Rd 03 |
|  | Finishing | **Finishing** |  | 2026-10-29 | 2026-11-01 |  |  |  |  |  |  |  |  |  |  |  |  |  |  |  |  |
| 32 16 13.016 |  | Finishing, Fareface | 2d | 2026-10-29 | 2026-11-01 | B1.2.32 16.13.01.16, B1.2.32 16.13.02.15 SS+1d, B1.2.32 16.13.03.16, B1.2.32 16.13.0416, B1.2.32 16.13.05.15 |  |  |  | 31.82d | 9.82d | Curb Stone, Type K1 [27.47]; Dropped Curb, Type K3 [1.19]; Edge Curb, Type K4 [20.16]; Heel Curb, Type K5 [13.19]; Transition Curb [0.22]; Labor [31.18 h]; Mason [15.59 h] | 4,555.21 |  | 0.00257330576817278 | Cons. | Z4 | Roads | Cons | Roads | Rd 03 |
|  | Asphalt Layers | **Asphalt Layers** |  | 2026-10-08 | 2026-12-08 |  |  |  |  |  |  |  |  |  |  |  |  |  |  |  |  |
| B1.2.32 11 26.01.16 |  | Bituminous Base Course including Prime Coat (MC1) and tack coat (RC2) | 2d | 2026-10-08 | 2026-10-11 | B1.2.32 11 23.01.16_R |  |  |  | 49.82d | 45.5d | Bituminous base course(Grading I - Class A) [489.66]; Labor [31.18 h]; Foreman [15.59 h]; Operator [31.18 h]; Surveyor [15.59 h]; Surveyor Helper [15.59 h]; Dump Truck [16 h]; Roller Compactor [16 h]; MC1/RC2 Sprayer [16 h] | 269,131.9 |  | 0.148463097163044 | Cons. | Z4 | Roads | Cons | Roads | Rd 03 |
| B1.2.32 12 16.01.16 |  | Bituminous concrete Wearing Course, including tack coat (RC2) | 5d | 2026-12-03 | 2026-12-08 | B1.2.32 11 26.01.16, 32 16 13.016, B1.2.32 12 16.01.15 |  |  |  | 4.32d | 0d | Bituminous concrete wearing course, after compaction(Grading I - Class A), including tack coat (RC2) [179.17]; Labor [31.18 h]; Foreman [15.59 h]; Operator [31.18 h]; Surveyor [15.59 h]; Surveyor Helper [15.59 h]; Dump Truck [16 h]; Roller Compactor [16 h]; MC1/RC2 Sprayer [16 h] | 105,712.24 |  | 0.0582844570660131 | Cons. | Z4 | Roads | Cons | Roads | Rd 03 |
|  | Pavement Marking | **Pavement Marking** |  | 2026-12-14 | 2026-12-19 |  |  |  |  |  |  |  |  |  |  |  |  |  |  |  |  |
| B1.2.32 17 23.02.16 |  | Retroreflective Thermoplastic Yellow, Traffic lines | 2d | 2026-12-14 | 2026-12-16 | B1.2.32 12 16.01.16, B1.2.32 12 19.13.016 FF, B1.2.32 12 19.13.15 SS |  |  |  | 50.91d | 0d | Retroreflective Thermoplastic Yellow, Traffic lines [29.11]; Labor [31.18 h]; Mason [15.59 h]; Road Marking Machine [16 h] | 868.97 |  | 0.000436876441875066 | Cons. | Z4 | Roads | Cons | Roads | Rd 03 |
| B1.2.32 17 23.01.16 |  | Retroreflective Thermoplastic White Traffic lines | 2d | 2026-12-16 | 2026-12-19 | B1.2.32 12 16.01.16, B1.2.32 12 19.13.016, B1.2.10 14 14.0211, B1.2.10 14 53.0114 SS, B1.2.10 14 53.0110, 32 16 13.03, B1.2.32 17 23.01.3, B1.2.10 14 53.0112 FF, B1.2.32 17 23.02.16 |  |  |  | 50.91d | 0d | Retroreflective Thermoplastic White Traffic lines [60.73]; Labor [46.78 h]; Mason [23.39 h]; Road Marking Machine [24 h] | 1,813.05 |  | 0.000911511490665269 | Cons. | Z4 | Roads | Cons | Roads | Rd 03 |

| ID | WBS | Activity | Duration | Start | Finish | Predecessors | Complete | Total float | Free float | Resources | Cost | Actual cost | Weight % | DMM2 Weekly Progress | DMM2 Zones | Networks & Stations | DMM2 Phases | Networks Components | Dmm2 Roads | UNASCO | Subcontractors works |
| --- | --- | --- | --- | --- | --- | --- | --- | --- | --- | --- | --- | --- | --- | --- | --- | --- | --- | --- | --- | --- | --- |
|  | Road Misc. | **Miscellaneous** |  | 2026-12-09 | 2026-12-16 |  |  |  |  |  |  |  |  |  |  |  |  |  |  |  |  |
| B1.2.32 12 19.13.15 |  | Wheels stoppers (precast concrete) | 2d | 2026-12-09 | 2026-12-10 | B1.2.32 12 16.01.16, DMM2-Proc-Delv-7504 |  | 55.32d | 4.41d | Wheels stopper (precast concrete) [32]; Labor [46.78 h]; Foreman [23.39 h]; Operator [46.78 h]; Boom Truck [24 h] | 5,563.02 |  | 0.00279680739479403 | Cons. | Z4 | Roads | Cons | Roads | Rd 03 |  |  |
| B1.2.32 12 19.13.016 |  | Speed Tables | 2d | 2026-12-14 | 2026-12-16 | B1.2.32 12 16.01.16, B1.2.32 14 13.13.3 SS, 32 16 13.07 |  | 50.91d | 0d | Asphalt speed table [2]; Labor [31.18 h]; Foreman [15.59 h]; Operator [31.18 h]; JCB [16 h]; Roller Compactor [16 h] | 24,408.46 |  | 0.0122713455769057 | Cons. | Z4 | Roads | Cons | Roads | Rd 03 |  |  |
|  | Landscape | **Landscape** |  | 2026-12-24 | 2026-12-30 |  |  |  |  |  |  |  |  |  |  |  |  |  |  |  |  |
|  | Trees | **Trees** |  | 2026-12-24 | 2026-12-30 |  |  |  |  |  |  |  |  |  |  |  |  |  |  |  |  |
| B7.32 93 43.02-191 |  | Tamarindus indica | 5d | 2026-12-24 | 2026-12-30 | B2.31 23 00.451, B7.32 93 43.07 FF |  | 3d | 0d | Labor [46.78 h]; Operator [46.78 h]; Surveyor [23.39 h]; Surveyor Helper [23.39 h]; JCB [24 h]; Water Tanker [24 h]; Landscape Specialist [23.39 h]; Tamarindus indica [124.24] | 647,968.61 |  | 0.301530797251233 | Cons. | Z4 | Landscp | Cons | Lndscp | Rd 03 |  |  |
|  | Road 04 | **Road 04** |  | 2025-12-01 | 2027-01-05 |  |  |  |  |  |  |  |  |  |  |  |  |  |  |  |  |
|  | Wet Networks | **Wet Networks** |  | 2026-05-03 | 2026-11-19 |  |  |  |  |  |  |  |  |  |  |  |  |  |  |  |  |
|  | Stormwater Network | **Stormwater Network** |  | 2026-05-03 | 2026-10-07 |  |  |  |  |  |  |  |  |  |  |  |  |  |  |  |  |
|  | GRP | **GRP** |  | 2026-05-20 | 2026-10-07 |  |  |  |  |  |  |  |  |  |  |  |  |  |  |  |  |
|  | ?4001 | **?400** |  | 2026-05-20 | 2026-07-09 |  |  |  |  |  |  |  |  |  |  |  |  |  |  |  |  |
|  | 3 | **Depth From 1.5m to 2.5m** |  | 2026-05-20 | 2026-07-09 |  |  |  |  |  |  |  |  |  |  |  |  |  |  |  |  |
| B6.33 42 11.01-1.10 |  | Excavation | 2d | 2026-05-20 A | 2026-05-23 A | B1.2.31 23 23.01.17 | 100% |  |  | Labor [28.35 h]; Foreman [14.17 h]; Operator [28.35 h]; Surveyor [14.17 h]; Surveyor Helper [14.17 h]; Excavator (With Bucket) [16 h]; Water Tanker [16 h]; Dump Truck [16 h]; Plate Compactor [16 h]; Depth: 1.51m - 2.5m [3.99] | 1,531.45 | 1,531.45 | 0.00310601117599926 | Cons. | Z4 | Storm | Cons | GRPs | Rd 04 | CS.UNSC | SUB.C |
| B6.33 42 11.01-1.18 |  | Sand Bedding | 2d | 2026-05-23 A | 2026-05-25 A | B6.33 42 11.01-1.10 | 100% |  |  | Labor [28.35 h]; Foreman [14.17 h]; Operator [56.7 h]; Surveyor [14.17 h]; Surveyor Helper [14.17 h]; Loader [16 h]; Water Tanker [16 h]; Dump Truck [16 h]; Plate Compactor [16 h]; Depth: 1.51m - 2.5m [1] | 383 | 383 | 0.000776776306783888 | Cons. | Z4 | Storm | Cons | GRPs | Rd 04 | CS.UNSC | SUB.C |
| B6.33 42 11.01-1.26 |  | Pipe Laying | 27.84d | 2026-05-25 A | 2026-07-01 A | B6.33 42 11.01-1.18 | 100% |  |  | Labor [28.35 h]; Foreman [14.17 h]; Plumber Helper [14.17 h]; Plumber [14.17 h]; Operator [14.17 h]; Surveyor [14.17 h]; Surveyor Helper [14.17 h]; Mobile Crane [16 h]; Depth: 1.51m - 2.5m [8.98] | 3,445.9 | 3,445.9 | 0.00698879865878235 | Cons. | Z4 | Storm | Cons | GRPs | Rd 04 | CS.UNSC | SUB.C |
| B6.33 42 11.01-1.34 |  | Embedment & Test | 34.08d | 2026-05-25 A | 2026-07-08 A | B6.33 42 11.01-1.26 | 100% |  |  | Labor [56.7 h]; Foreman [28.35 h]; Plumber Helper [28.35 h]; Plumber [28.35 h]; Operator [56.7 h]; Surveyor [28.35 h]; Surveyor Helper [28.35 h]; Loader [32 h]; Water Tanker [32 h]; Dump Truck [32 h]; Plate Compactor [32 h]; Roller Compactor [32 h]; Depth: 1.51m - 2.5m [3.99] | 1,531.45 | 1,531.45 | 0.00310601117599926 | Cons. | Z4 | Storm | Cons | GRPs | Rd 04 | CS.UNSC | SUB.C |
| B6.33 42 11.01-1.42 |  | Backfilling & Warrning Tape | 35.2d | 2026-05-25 A | 2026-07-09 A | B6.33 42 11.01-1.34 | 100% |  |  | Labor [70.87 h]; Foreman [35.44 h]; Operator [141.75 h]; Surveyor [35.44 h]; Surveyor Helper [35.44 h]; Loader [40 h]; Water Tanker [40 h]; Dump Truck [40 h]; Plate Compactor [40 h]; Roller Compactor [40 h]; Depth: 1.51m - 2.5m [2] | 766 | 766 | 0.00155355261356778 | Cons. | Z4 | Storm | Cons | GRPs | Rd 04 | CS.UNSC | SUB.C |
|  | ?4002 | **?600** |  | 2026-05-23 | 2026-07-14 |  |  |  |  |  |  |  |  |  |  |  |  |  |  |  |  |
|  | 4 | **Depth From 1.5m to 2.5m** |  | 2026-05-23 | 2026-07-14 |  |  |  |  |  |  |  |  |  |  |  |  |  |  |  |  |
| B6.33 42 11.01-1.12 |  | Excavation | 2d | 2026-05-23 A | 2026-05-25 A | B6.33 42 11.01-1.10 | 100% |  |  | Labor [28.35 h]; Foreman [14.17 h]; Operator [28.35 h]; Surveyor [14.17 h]; Surveyor Helper [14.17 h]; Excavator (With Bucket) [16 h]; Water Tanker [16 h]; Dump Truck [16 h]; Plate Compactor [16 h]; 1.51m - 2.5m [9.52] | 8,061.23 | 8,061.23 | 5.30950164986435E-005 | Cons. | Z4 | Storm | Cons | GRPs | Rd 04 | CS.UNSC | SUB.C |
| B6.33 42 11.01-1.20 |  | Sand Bedding | 1d | 2026-05-31 A | 2026-06-01 A | B6.33 42 11.01-1.12 | 100% |  |  | Labor [28.35 h]; Foreman [14.17 h]; Operator [56.7 h]; Surveyor [14.17 h]; Surveyor Helper [14.17 h]; Loader [16 h]; Water Tanker [16 h]; Dump Truck [16 h]; Plate Compactor [16 h]; 1.51m - 2.5m [9.52] | 8,061.23 | 8,061.23 | 5.30950164986435E-005 | Cons. | Z4 | Storm | Cons | GRPs | Rd 04 | CS.UNSC | SUB.C |
| B6.33 42 11.01-1.28 |  | Pipe Laying | 34.72d | 2026-05-31 A | 2026-07-11 A | B6.33 42 11.01-1.20 | 100% |  |  | Labor [28.35 h]; Foreman [14.17 h]; Plumber Helper [14.17 h]; Plumber [14.17 h]; Operator [14.17 h]; Surveyor [14.17 h]; Surveyor Helper [14.17 h]; Mobile Crane [16 h]; 1.51m - 2.5m [21.65] | 18,321.02 | 18,321.02 | 0.000120670801288806 | Cons. | Z4 | Storm | Cons | GRPs | Rd 04 | CS.UNSC | SUB.C |
| B6.33 42 11.01-1.36 |  | Embedment & Test | 35.08d | 2026-06-01 A | 2026-07-12 A | B6.33 42 11.01-1.28 | 100% |  |  | Labor [56.7 h]; Foreman [28.35 h]; Plumber Helper [28.35 h]; Plumber [28.35 h]; Operator [56.7 h]; Surveyor [28.35 h]; Surveyor Helper [28.35 h]; Loader [32 h]; Water Tanker [32 h]; Dump Truck [32 h]; Plate Compactor [32 h]; Roller Compactor [32 h]; 1.51m - 2.5m [2.6] | 2,198.52 | 2,198.52 | 1.44804590450846E-005 | Cons. | Z4 | Storm | Cons | GRPs | Rd 04 | CS.UNSC | SUB.C |
| B6.33 42 11.01-1.44 |  | Backfilling & Warrning Tape | 36.2d | 2026-06-02 A | 2026-07-14 A | B6.33 42 11.01-1.36, B6.33 42 11.01-138 | 100% |  |  | Labor [70.87 h]; Foreman [35.44 h]; Operator [141.75 h]; Surveyor [35.44 h]; Surveyor Helper [35.44 h]; Loader [40 h]; Water Tanker [40 h]; Dump Truck [40 h]; Plate Compactor [40 h]; Roller Compactor [40 h]; 1.51m - 2.5m [4.76] | 4,030.61 | 4,030.61 | 2.65475082493218E-005 | Cons. | Z4 | Storm | Cons | GRPs | Rd 04 | CS.UNSC | SUB.C |

| ID | WBS | Activity | Duration | Start | Finish | Predecessors | Complete | Remaining | Planned start | Planned finish | Total float | Free float | Resources | Cost | Actual cost | Weight % | DMM2 Weekly Progress | DMM2 Zones | Networks & Stations | DMM2 Phases | UNASCO | Networks Components | Subcontractors works | Dmm2 Roads |
| --- | --- | --- | --- | --- | --- | --- | --- | --- | --- | --- | --- | --- | --- | --- | --- | --- | --- | --- | --- | --- | --- | --- | --- | --- |
|  | ?40021 | **?700** |  | 2026-05-25 | 2026-10-07 |  |  |  |  |  |  |  |  |  |  |  |  |  |  |  |  |  |  |  |
|  | 4 | **Depth From 1.5m to 2.5m** |  | 2026-05-25 | 2026-10-07 |  |  |  |  |  |  |  |  |  |  |  |  |  |  |  |  |  |  |  |
| B6.33 42 11.01-1.14 |  | Excavation | 2d | 2026-05-25 A | 2026-06-01 A | B6.33 42 11.01-1.12 | 100% |  |  |  |  |  | Labor [28.35 h]; Foreman [14.17 h]; Operator [28.35 h]; Surveyor [14.17 h]; Surveyor Helper [14.17 h]; Excavator (With Bucket) [16 h]; Water Tanker [16 h]; Dump Truck [16 h]; Plate Compactor [16 h]; 1.51m - 2.5m [13.17] | 12,116.46 | 12,116.46 | 0.00417736572342047 | Cons. | Z4 | Storm | Cons | CS.UNSC | GRPs | SUB.C | Rd 04 |
| B6.33 42 11.01-1.22 |  | Sand Bedding | 4d | 2026-05-25 A | 2026-06-03 A | B6.33 42 11.01-1.14 | 100% |  |  |  |  |  | Labor [28.35 h]; Foreman [14.17 h]; Operator [56.7 h]; Surveyor [14.17 h]; Surveyor Helper [14.17 h]; Loader [16 h]; Water Tanker [16 h]; Dump Truck [16 h]; Plate Compactor [16 h]; 1.51m - 2.5m [3.29] | 3,031.02 | 3,031.02 | 0.00104499783653133 | Cons. | Z4 | Storm | Cons | CS.UNSC | GRPs | SUB.C | Rd 04 |
| B6.33 42 11.01-1.30 |  | Pipe Laying (71.06% Completed) | 93d | 2026-05-26 A | 2026-09-15 A | B6.33 42 11.01-1.22 | 100% |  | 2026-05-31 | 2026-09-15 |  |  | Labor [22.16 h]; Foreman [11.08 h]; Plumber Helper [11.08 h]; Plumber [11.08 h]; Operator [11.08 h]; Surveyor [11.08 h]; Surveyor Helper [11.08 h]; Mobile Crane [11.37 h]; 1.51m - 2.5m [21.06] | 19,374.84 | 19,374.84 | 0.0093997292833722 | Cons. | Z4 | Storm | Cons | CS.UNSC | GRPs | SUB.C | Rd 04 |
| B6.33 42 11.01-1.38 |  | Embedment & Test (67.47% Completed) | 91.6d | 2026-06-01 A | 2026-09-15 A | B6.33 42 11.01-1.30 FF | 100% |  |  |  |  |  | Labor [42.08 h]; Foreman [21.04 h]; Plumber Helper [21.04 h]; Plumber [21.04 h]; Operator [42.08 h]; Surveyor [21.04 h]; Surveyor Helper [21.04 h]; Loader [21.59 h]; Water Tanker [21.59 h]; Dump Truck [21.59 h]; Plate Compactor [21.59 h]; Roller Compactor [21.59 h]; 1.51m - 2.5m [8.88] | 8,175.34 | 8,175.34 | 0.00417736572342047 | Cons. | Z4 | Storm | Cons | CS.UNSC | GRPs | SUB.C | Rd 04 |
| B6.33 42 11.01-1.46 |  | Backfilling & Warrning Tape (6.35% Completed) | 90.6d | 2026-06-02 A | 2026-09-15 A | B6.33 42 11.01-1.38 SS | 100% |  |  |  |  |  | Labor [4.95 h]; Foreman [2.48 h]; Operator [9.9 h]; Surveyor [2.48 h]; Surveyor Helper [2.48 h]; Loader [2.54 h]; Water Tanker [2.54 h]; Dump Truck [2.54 h]; Plate Compactor [2.54 h]; Roller Compactor [2.54 h]; 1.51m - 2.5m [0.42] | 384.96 | 384.96 | 0.00208999567306265 | Cons. | Z4 | Storm | Cons | CS.UNSC | GRPs | SUB.C | Rd 04 |
| B6.33 42 11.01-1.38_R |  | Embedment & Test(Rem) | 2.55d | 2026-09-16 A | 2026-10-07 | B6.33 42 11.01-1.30_R FF, B6.33 42 11.01-1.38 | 90% | 0.26d | 2026-09-16 | 2026-09-19 | 113.02d |  | Labor [20.29 h]; Foreman [10.14 h]; Plumber Helper [10.14 h]; Plumber [10.14 h]; Operator [20.29 h]; Surveyor [10.14 h]; Surveyor Helper [10.14 h]; Loader [10.41 h]; Water Tanker [10.41 h]; Dump Truck [10.41 h]; Plate Compactor [10.41 h]; Roller Compactor [10.41 h]; 1.51m - 2.5m [4.28] | 3,941.12 | 3,547.01 | 0.00417736572342047 | Cons. | Z4 | Storm | Cons | CS.UNSC | GRPs | SUB.C | Rd 04 |
| B6.33 42 11.01-1.46_R |  | Backfilling & Warrning Tape(Rem) | 2.94d | 2026-09-16 A | 2026-10-07 | B6.33 42 11.01-1.38_R SS, B6.33 42 11.01-1.46 | 90% | 0.29d | 2026-09-16 | 2026-09-20 | 113.03d |  | Labor [73.01 h]; Foreman [36.51 h]; Operator [146.02 h]; Surveyor [36.51 h]; Surveyor Helper [36.51 h]; Loader [37.46 h]; Water Tanker [37.46 h]; Dump Truck [37.46 h]; Plate Compactor [37.46 h]; Roller Compactor [37.46 h]; 1.51m - 2.5m [6.17] | 5,677.07 | 5,109.37 | 0.00208999567306265 | Cons. | Z4 | Storm | Cons | CS.UNSC | GRPs | SUB.C | Rd 04 |
| B6.33 42 11.01-1.30_R |  | Pipe Laying(Rem) | 3d | 2026-09-26 A | 2026-10-07 | B6.33 42 11.01-1.22, B6.33 42 11.01-1.30 | 90% | 0.3d | 2026-09-16 | 2026-09-19 | 113.02d | 0d | Labor [9.02 h]; Foreman [4.51 h]; Plumber Helper [4.51 h]; Plumber [4.51 h]; Operator [4.51 h]; Surveyor [4.51 h]; Surveyor Helper [4.51 h]; Mobile Crane [4.63 h]; 1.51m - 2.5m [8.57] | 7,889.09 | 7,429.53 | 0.0093997292833722 | Cons. | Z4 | Storm | Cons | CS.UNSC | GRPs | SUB.C | Rd 04 |
|  | ?400211 | **?800** |  | 2026-06-01 | 2026-10-07 |  |  |  |  |  |  |  |  |  |  |  |  |  |  |  |  |  |  |  |
|  | 4 | **Depth From 1.5m to 2.5m** |  | 2026-06-01 | 2026-10-07 |  |  |  |  |  |  |  |  |  |  |  |  |  |  |  |  |  |  |  |
| B6.33 42 11.01-1.16 |  | Excavation | 2d | 2026-06-01 A | 2026-06-03 A | B6.33 42 11.01-1.14 | 100% |  |  |  |  |  | Labor [28.35 h]; Foreman [14.17 h]; Operator [28.35 h]; Surveyor [14.17 h]; Surveyor Helper [14.17 h]; Excavator (With Bucket) [16 h]; Water Tanker [16 h]; Dump Truck [16 h]; Plate Compactor [16 h]; 1.51m - 2.5m [19.28] | 19,890.09 | 19,890.09 | 0.00556858258862198 | Cons. | Z4 | Storm | Cons | CS.UNSC | GRPs | SUB.C | Rd 04 |
| B6.33 42 11.01-1.24 |  | Sand Bedding | 2d | 2026-06-03 A | 2026-06-06 A | B6.33 42 11.01-1.16 | 100% |  |  |  |  |  | Labor [28.35 h]; Foreman [14.17 h]; Operator [56.7 h]; Surveyor [14.17 h]; Surveyor Helper [14.17 h]; Loader [16 h]; Water Tanker [16 h]; Dump Truck [16 h]; Plate Compactor [16 h]; 1.51m - 2.5m [4.82] | 4,969.89 | 4,969.89 | 0.00139141022948663 | Cons. | Z4 | Storm | Cons | CS.UNSC | GRPs | SUB.C | Rd 04 |
| B6.33 42 11.01-1.32 |  | Pipe Laying (69.06% Completed) | 87.6d | 2026-06-06 A | 2026-09-15 A | B6.33 42 11.01-1.24 | 100% |  |  |  |  |  | Labor [21.54 h]; Foreman [10.77 h]; Plumber Helper [10.77 h]; Plumber [10.77 h]; Operator [10.77 h]; Surveyor [10.77 h]; Surveyor Helper [10.77 h]; Mobile Crane [11.05 h]; 1.51m - 2.5m [29.96] | 30,904.67 | 30,904.67 | 0.0125285754067306 | Cons. | Z4 | Storm | Cons | CS.UNSC | GRPs | SUB.C | Rd 04 |
| B6.33 42 11.01-1.40 |  | Embedment & Test (59.61% Completed) | 85.6d | 2026-06-08 A | 2026-09-15 A | B6.33 42 11.01-1.32 FF | 100% |  |  |  |  |  | Labor [37.18 h]; Foreman [18.59 h]; Plumber Helper [18.59 h]; Plumber [18.59 h]; Operator [37.18 h]; Surveyor [18.59 h]; Surveyor Helper [18.59 h]; Loader [19.08 h]; Water Tanker [19.08 h]; Dump Truck [19.08 h]; Plate Compactor [19.08 h]; Roller Compactor [19.08 h]; 1.51m - 2.5m [11.49] | 11,857.35 | 11,857.35 | 0.00556858258862198 | Cons. | Z4 | Storm | Cons | CS.UNSC | GRPs | SUB.C | Rd 04 |
| B6.33 42 11.01-1.48 |  | Backfilling & Warrning Tape (59.61% Completed) | 81.6d | 2026-06-13 A | 2026-09-15 A | B6.33 42 11.01-1.40 SS | 100% |  |  |  |  |  | Labor [46.48 h]; Foreman [23.24 h]; Operator [92.95 h]; Surveyor [23.24 h]; Surveyor Helper [23.24 h]; Loader [23.85 h]; Water Tanker [23.85 h]; Dump Truck [23.85 h]; Plate Compactor [23.85 h]; Roller Compactor [23.85 h]; 1.51m - 2.5m [5.74] | 5,925.54 | 5,925.54 | 0.00278282045897326 | Cons. | Z4 | Storm | Cons | CS.UNSC | GRPs | SUB.C | Rd 04 |
| B6.33 42 11.01-1.40_R |  | Embedment & Test(Rem) | 2.84d | 2026-09-16 A | 2026-10-07 | B6.33 42 11.01-1.32_R FF, B6.33 42 11.01-1.40 | 90% | 0.28d | 2026-09-16 | 2026-09-19 | 113.02d |  | Labor [25.19 h]; Foreman [12.59 h]; Plumber Helper [12.59 h]; Plumber [12.59 h]; Operator [25.19 h]; Surveyor [12.59 h]; Surveyor Helper [12.59 h]; Loader [12.92 h]; Water Tanker [12.92 h]; Dump Truck [12.92 h]; Plate Compactor [12.92 h]; Roller Compactor [12.92 h]; 1.51m - 2.5m [7.79] | 8,032.73 | 7,229.46 | 0.00556858258862198 | Cons. | Z4 | Storm | Cons | CS.UNSC | GRPs | SUB.C | Rd 04 |
| B6.33 42 11.01-1.48_R |  | Backfilling & Warrning Tape(Rem) | 3.3d | 2026-09-20 A | 2026-10-07 | B6.33 42 11.01-1.40_R SS, B6.33 42 11.01-1.48, B6.33 42 11.01-136_R | 90% | 0.33d | 2026-09-20 | 2026-09-24 | 112.99d |  | Labor [31.49 h]; Foreman [15.74 h]; Operator [62.97 h]; Surveyor [15.74 h]; Surveyor Helper [15.74 h]; Loader [16.15 h]; Water Tanker [16.15 h]; Dump Truck [16.15 h]; Plate Compactor [16.15 h]; Roller Compactor [16.15 h]; 1.51m - 2.5m [3.89] | 4,014.25 | 3,612.82 | 0.00278282045897326 | Cons. | Z4 | Storm | Cons | CS.UNSC | GRPs | SUB.C | Rd 04 |
| B6.33 42 11.01-1.32_R |  | Pipe Laying(Rem) | 3d | 2026-09-27 A | 2026-10-07 | B6.33 42 11.01-1.24, B6.33 42 11.01-1.32 | 90% | 0.3d | 2026-09-16 | 2026-09-19 | 113.02d | 0d | Labor [9.65 h]; Foreman [4.82 h]; Plumber Helper [4.82 h]; Plumber [4.82 h]; Operator [4.82 h]; Surveyor [4.82 h]; Surveyor Helper [4.82 h]; Mobile Crane [4.95 h]; 1.51m - 2.5m [13.42] | 13,845.4 | 12,952.15 | 0.0125285754067306 | Cons. | Z4 | Storm | Cons | CS.UNSC | GRPs | SUB.C | Rd 04 |
|  | Strom Manholes | **Manholes** |  | 2026-05-03 | 2026-10-04 |  |  |  |  |  |  |  |  |  |  |  |  |  |  |  |  |  |  |  |
|  | 3 | **?2000** |  | 2026-05-03 | 2026-10-04 |  |  |  |  |  |  |  |  |  |  |  |  |  |  |  |  |  |  |  |
|  | 1 | **Depth From 2.5m to 3.5m** |  | 2026-05-03 | 2026-10-04 |  |  |  |  |  |  |  |  |  |  |  |  |  |  |  |  |  |  |  |
| B6.33 05 39.01.4227 |  | Excavation & Compaction | 25d | 2026-05-03 A | 2026-06-06 A | B6.33 42 11.01-1.16 | 100% |  |  |  |  |  | Labor [28.35 h]; Foreman [14.17 h]; Operator [28.35 h]; Surveyor [14.17 h]; Surveyor Helper [14.17 h]; Excavator (With Bucket) [16 h]; Water Tanker [16 h]; Dump Truck [16 h]; Plate Compactor [16 h]; Storm MH depth 2.51 - 3.5m [0.63] | 10,765.08 | 10,765.08 | 0.00208346832855844 | Cons. | Z4 | Storm | Cons | CS.UNSC | Manhole | SUB.C | Rd 04 |
| B6.33 05 39.01.4237 |  | Blinding Conc, & RC Base | 25d | 2026-05-06 A | 2026-06-09 A | B6.33 05 39.01.4227 | 100% |  |  |  |  |  | Labor [42.52 h]; Foreman [21.26 h]; Laboratory Officer [21.26 h]; Carpenter [21.26 h]; Steelfixer [21.26 h]; Mason [21.26 h]; Storm MH depth 2.51 - 3.5m [0.42] | 7,095.17 | 7,095.17 | 0.00137319503473171 | Cons. | Z4 | Storm | Cons | CS.UNSC | Manhole | SUB.C | Rd 04 |
| B6.33 05 39.01.4247 |  | Manhole Installation | 72.1d | 2026-05-09 A | 2026-08-05 A | B6.33 05 39.01.4237 | 100% |  |  |  |  |  | Labor [28.35 h]; Operator [28.35 h]; Surveyor [14.17 h]; Surveyor Helper [14.17 h]; Boom Truck [16 h]; Mobile Crane [16 h]; Storm MH depth 2.51 - 3.5m [1.97] | 33,598.65 | 33,598.65 | 0.00625042100380389 | Cons. | Z4 | Storm | Cons | CS.UNSC | Manhole | SUB.C | Rd 04 |
| B6.33 05 39.01.4257 |  | Test, Internal Finishing, Benching & Cover (97.00% Completed) | 70.89d | 2026-06-25 A | 2026-09-15 A | B6.33 05 39.01.4247 | 100% |  |  |  |  |  | Labor [60.5 h]; Foreman [30.25 h]; Plumber Helper [30.25 h]; Plumber [30.25 h]; Mason [30.25 h]; Storm MH depth 2.51 - 3.5m [0.4] | 6,882.31 | 6,882.31 | 0.00137319503473171 | Cons. | Z4 | Storm | Cons | CS.UNSC | Manhole | SUB.C | Rd 04 |
| B6.33 05 39.01.4267 |  | Backfilling (97.00% Completed) | 69d | 2026-06-28 A | 2026-09-15 A | B6.33 05 39.01.4257 SS, B6.33 05 39.01.3517 SS | 100% |  |  |  |  |  | Labor [75.62 h]; Foreman [37.81 h]; Operator [75.62 h]; Surveyor [37.81 h]; Surveyor Helper [37.81 h]; Loader [38.8 h]; Water Tanker [38.8 h]; Dump Truck [38.8 h]; Plate Compactor [38.8 h]; Storm MH depth 2.51 - 3.5m [0.88] | 15,041.06 | 15,041.06 | 0.00300107232895791 | Cons. | Z4 | Storm | Cons | CS.UNSC | Manhole | SUB.C | Rd 04 |
| B6.33 05 39.01.4257_R |  | Test, Internal Finishing, Benching & Cover(Rem) | 3d | 2026-09-22 A | 2026-09-26 A | B6.33 05 39.01.4247, B6.33 05 39.01.4257 | 100% |  | 2026-09-16 | 2026-09-19 |  |  | Labor [1.87 h]; Foreman [0.94 h]; Plumber Helper [0.94 h]; Plumber [0.94 h]; Mason [0.94 h]; Storm MH depth 2.51 - 3.5m [0.01] | 212.85 | 212.85 | 0.00137319503473171 | Cons. | Z4 | Storm | Cons | CS.UNSC | Manhole | SUB.C | Rd 04 |
| B6.33 05 39.01.4267_R |  | Backfilling(Rem) | 6d | 2026-09-27 A | 2026-10-04 A | B6.33 05 39.01.4257_R SS, B6.33 05 39.01.3517_R SS, B6.33 05 39.01.4267, B6.33 42 11.36-189_R | 100% |  |  |  |  |  | Labor [2.34 h]; Foreman [1.17 h]; Operator [2.34 h]; Surveyor [1.17 h]; Surveyor Helper [1.17 h]; Loader [1.2 h]; Water Tanker [1.2 h]; Dump Truck [1.2 h]; Plate Compactor [1.2 h]; Storm MH depth 2.51 - 3.5m [0.03] | 465.19 | 465.19 | 0.00300107232895791 | Cons. | Z4 | Storm | Cons | CS.UNSC | Manhole | SUB.C | Rd 04 |

| ID | WBS | Activity | Duration | Start | Finish | Predecessors | Complete | Planned start | Planned finish | Resources | Cost | Actual cost | Weight % | DMM2 Weekly Progress | DMM2 Zones | Networks & Stations | DMM2 Phases | UNASCO | Networks Components | Subcontractors works | Dmm2 Roads | Ac dates > DD |
| --- | --- | --- | --- | --- | --- | --- | --- | --- | --- | --- | --- | --- | --- | --- | --- | --- | --- | --- | --- | --- | --- | --- |
|  | Catch Basins | **Catch Basins** |  | 2026-06-10 | 2026-10-03 |  |  |  |  |  |  |  |  |  |  |  |  |  |  |  |  |  |
|  | Sing | **Single** |  | 2026-06-10 | 2026-10-03 |  |  |  |  |  |  |  |  |  |  |  |  |  |  |  |  |  |
| B6.33 05 40.01.610 |  | Excavation, Compaction & Vapour Barrier | 0.5d | 2026-06-10 A | 2026-06-10 A | B6.33 05 39.01.4227 | 100% |  |  | Labor [28.35 h]; Foreman [14.17 h]; Operator [28.35 h]; Surveyor [14.17 h]; Surveyor Helper [14.17 h]; Excavator (With Bucket) [16 h]; Water Tanker [16 h]; Dump Truck [16 h]; Roller Compactor [16 h]; Single Catch basin [2.99] | 13,519.66 | 13,519.66 | 0.00296566869933904 | Cons. | Z4 | Storm | Cons | CS.UNSC | CBs | SUB.C | Rd 04 |  |
| B6.33 05 40.01.620 |  | Blinding Conc. | 1.67d | 2026-06-13 A | 2026-06-14 A | B6.33 05 40.01.610 | 100% |  |  | Labor [28.35 h]; Foreman [14.17 h]; Laboratory Officer [14.17 h]; Carpenter [14.17 h]; Steelfixer [14.17 h]; Mason [14.17 h]; Single Catch basin [1.99] | 8,993.51 | 8,993.51 | 0.00197281439564727 | Cons. | Z4 | Storm | Cons | CS.UNSC | CBs | SUB.C | Rd 04 |  |
| B6.33 05 40.01.630 |  | Catch Basin Installation (91.00% Completed) | 80d | 2026-06-15 A | 2026-09-15 A | B6.33 05 40.01.620 | 100% |  |  | Labor [42.57 h]; Foreman [21.28 h]; Carpenter [21.28 h]; Steelfixer [21.28 h]; Mason [21.28 h]; Operator [42.57 h]; Surveyor [21.28 h]; Surveyor Helper [21.28 h]; Boom Truck [21.84 h]; Single Catch basin [8.13] | 36,748.2 | 36,748.2 | 0.00885832346280832 | Cons. | Z4 | Storm | Cons | CS.UNSC | CBs | SUB.C | Rd 04 |  |
| B6.33 05 40.01.640 |  | Backfilling, DI Frame & Grate Cover Fixing (91.00% Completed) | 78.33d | 2026-06-16 A | 2026-09-15 A | B6.33 42 11.36-1103 SS, B6.33 42 11.35-130 SS | 100% |  |  | Labor [70.95 h]; Foreman [35.47 h]; Operator [70.95 h]; Surveyor [35.47 h]; Surveyor Helper [35.47 h]; Loader [36.4 h]; Water Tanker [36.4 h]; Dump Truck [36.4 h]; Plate Compactor [36.4 h]; Single Catch basin [5.42] | 24,498.8 | 24,498.8 | 0.00590554897520555 | Cons. | Z4 | Storm | Cons | CS.UNSC | CBs | SUB.C | Rd 04 |  |
| B6.33 05 40.01.640_R |  | Backfilling, DI Frame & Grate Cover Fixing(Rem) | 3d | 2026-09-27 A | 2026-09-30 A | B6.33 42 11.36-1103_R SS, B6.33 42 11.35-130_R SS, B6.33 05 40.01.640 | 100% | 2026-10-06 | 2026-10-10 | Labor [7.02 h]; Foreman [3.51 h]; Operator [7.02 h]; Surveyor [3.51 h]; Surveyor Helper [3.51 h]; Loader [3.6 h]; Water Tanker [3.6 h]; Dump Truck [3.6 h]; Plate Compactor [3.6 h]; Single Catch basin [0.54] | 2,422.96 | 2,422.96 | 0.00590554897520555 | Cons. | Z4 | Storm | Cons | CS.UNSC | CBs | SUB.C | Rd 04 | UDF_G1 |
| B6.33 05 40.01.630_R |  | Catch Basin Installation(Rem) | 3d | 2026-09-29 A | 2026-10-03 A | B6.33 05 40.01.620, B6.33 05 40.01.630 | 100% | 2026-09-16 | 2026-09-19 | Labor [4.21 h]; Foreman [2.1 h]; Carpenter [2.1 h]; Steelfixer [2.1 h]; Mason [2.1 h]; Operator [4.21 h]; Surveyor [2.1 h]; Surveyor Helper [2.1 h]; Boom Truck [2.16 h]; Single Catch basin [0.8] | 3,634.44 | 3,634.44 | 0.00885832346280832 | Cons. | Z4 | Storm | Cons | CS.UNSC | CBs | SUB.C | Rd 04 |  |
|  | UPVC | **UPVC** |  | 2026-06-15 | 2026-09-30 |  |  |  |  |  |  |  |  |  |  |  |  |  |  |  |  |  |
|  | UPVC300 | **?300 From 0.0 to 1.5m** |  | 2026-06-15 | 2026-09-30 |  |  |  |  |  |  |  |  |  |  |  |  |  |  |  |  |  |
| B6.33 42 11.35-118 |  | Catch Basin Opening Prep. (67.00% Completed) | 80d | 2026-06-15 A | 2026-09-15 A | B6.33 05 40.01.630 SS | 100% |  |  | Labor [20.89 h]; Foreman [10.45 h]; Plumber Helper [10.45 h]; Plumber [10.45 h]; less than 1.5 [31.23] | 18,784.09 | 18,784.09 | 0.0150835855285905 | Cons. | Z4 | Storm | Cons | CS.UNSC | UPVC | SUB.C | Rd 04 |  |
| B6.33 42 11.35-130 |  | Fittings & Pipe Installation (67.00% Completed) | 80d | 2026-06-15 A | 2026-09-15 A | B6.33 42 11.35-118 SS, B6.33 42 11.35-1.2 SS | 100% |  |  | Labor [20.89 h]; Foreman [10.45 h]; Plumber Helper [10.45 h]; Plumber [10.45 h]; Surveyor [10.45 h]; Surveyor Helper [10.45 h]; less than 1.5 [124.93] | 75,136.38 | 75,136.38 | 0.0603343421083148 | Cons. | Z4 | Storm | Cons | CS.UNSC | UPVC | SUB.C | Rd 04 |  |
| B6.33 42 11.35-118_R |  | Catch Basin Opening Prep.(Rem) | 3d | 2026-09-21 A | 2026-09-24 A | B6.33 05 40.01.630_R SS, B6.33 42 11.35-118 | 100% | 2026-09-16 | 2026-09-19 | Labor [10.29 h]; Foreman [5.15 h]; Plumber Helper [5.15 h]; Plumber [5.15 h]; less than 1.5 [15.38] | 9,251.87 | 9,251.87 | 0.0150835855285905 | Cons. | Z4 | Storm | Cons | CS.UNSC | UPVC | SUB.C | Rd 04 |  |
| B6.33 42 11.35-130_R |  | Fittings & Pipe Installation(Rem) | 3d | 2026-09-27 A | 2026-09-30 A | B6.33 42 11.35-118_R SS, B6.33 42 11.35-1.2_R SS, B6.33 42 11.35-130 | 100% | 2026-10-06 | 2026-10-10 | Labor [10.29 h]; Foreman [5.15 h]; Plumber Helper [5.15 h]; Plumber [5.15 h]; Surveyor [5.15 h]; Surveyor Helper [5.15 h]; less than 1.5 [61.53] | 37,007.47 | 37,007.47 | 0.0603343421083148 | Cons. | Z4 | Storm | Cons | CS.UNSC | UPVC | SUB.C | Rd 04 | UDF_G1 |
|  | UPVC3001 | **?400 From 0.0 to 1.5m** |  | 2026-06-15 | 2026-09-26 |  |  |  |  |  |  |  |  |  |  |  |  |  |  |  |  |  |
| B6.33 42 11.36-1103 |  | Fittings & Pipe Installation (67.00% Completed) | 80d | 2026-06-15 A | 2026-09-15 A | B6.33 42 11.36-191 SS | 100% |  |  | Labor [20.89 h]; Foreman [10.45 h]; Plumber Helper [10.45 h]; Plumber [10.45 h]; Surveyor [10.45 h]; Surveyor Helper [10.45 h]; less than 1.5 [124.93] | 75,136.38 | 75,136.38 | 0.0603343421083148 | Cons. | Z4 | Storm | Cons | CS.UNSC | UPVC | SUB.C | Rd 04 |  |
| B6.33 42 11.36-191 |  | Catch Basin Opening Prep. (67.00% Completed) | 80d | 2026-06-15 A | 2026-09-15 A | B6.33 05 40.01.630 SS | 100% |  |  | Labor [20.89 h]; Foreman [10.45 h]; Plumber Helper [10.45 h]; Plumber [10.45 h]; less than 1.5 [31.23] | 18,784.09 | 18,784.09 | 0.0150835855285905 | Cons. | Z4 | Storm | Cons | CS.UNSC | UPVC | SUB.C | Rd 04 |  |
| B6.33 42 11.36-1103_R |  | Fittings & Pipe Installation(Rem) | 3d | 2026-09-21 A | 2026-09-26 A | B6.33 42 11.36-191_R SS, B6.33 42 11.36-1103 | 100% | 2026-09-16 | 2026-09-19 | Labor [10.29 h]; Foreman [5.15 h]; Plumber Helper [5.15 h]; Plumber [5.15 h]; Surveyor [5.15 h]; Surveyor Helper [5.15 h]; less than 1.5 [61.53] | 37,007.47 | 37,007.47 | 0.0603343421083148 | Cons. | Z4 | Storm | Cons | CS.UNSC | UPVC | SUB.C | Rd 04 |  |
| B6.33 42 11.36-191_R |  | Catch Basin Opening Prep.(Rem) | 3d | 2026-09-21 A | 2026-09-24 A | B6.33 05 40.01.630_R SS, B6.33 42 11.36-191 | 100% | 2026-09-16 | 2026-09-19 | Labor [10.29 h]; Foreman [5.15 h]; Plumber Helper [5.15 h]; Plumber [5.15 h]; less than 1.5 [15.38] | 9,251.87 | 9,251.87 | 0.0150835855285905 | Cons. | Z4 | Storm | Cons | CS.UNSC | UPVC | SUB.C | Rd 04 |  |
|  | Sewerage Network | **Sewerage Network** |  | 2026-05-11 | 2026-10-11 |  |  |  |  |  |  |  |  |  |  |  |  |  |  |  |  |  |
|  | GRP | **GRP Pipes** |  | 2026-05-20 | 2026-10-11 |  |  |  |  |  |  |  |  |  |  |  |  |  |  |  |  |  |
|  | 150 | **?150** |  | 2026-05-20 | 2026-07-12 |  |  |  |  |  |  |  |  |  |  |  |  |  |  |  |  |  |
|  | 1 | **Depth From 1.5m to 2.5m** |  | 2026-05-20 | 2026-07-11 |  |  |  |  |  |  |  |  |  |  |  |  |  |  |  |  |  |
| B5.33 31 00.01.0210 |  | Excavation | 2d | 2026-05-20 A | 2026-05-21 A | B1.1.31 23 23.182 | 100% |  |  | Labor [28.35 h]; Foreman [14.17 h]; Operator [28.35 h]; Surveyor [14.17 h]; Surveyor Helper [14.17 h]; Excavator (With Bucket) [16 h]; Water Tanker [16 h]; Dump Truck [16 h]; Plate Compactor [16 h]; Sew Dia. 150mm Depth: 1.51m - 2.5m [15.67] | 4,500.25 | 4,500.25 | 0.00104261322598816 | Cons. | Z4 | Sew | Cons | CS.UNSC | GRPs | SUB.C | Rd 04 |  |
| B5.33 31 00.01.0218 |  | Sand Bedding | 2d | 2026-05-23 A | 2026-05-24 A | B5.33 31 00.01.0210 | 100% |  |  | Labor [28.35 h]; Foreman [14.17 h]; Operator [56.7 h]; Surveyor [14.17 h]; Surveyor Helper [14.17 h]; Loader [16 h]; Water Tanker [16 h]; Dump Truck [16 h]; Plate Compactor [16 h]; Sew Dia. 150mm Depth: 1.51m - 2.5m [3.92] | 1,124.18 | 1,124.18 | 0.000260448551346613 | Cons. | Z4 | Sew | Cons | CS.UNSC | GRPs | SUB.C | Rd 04 |  |
| B5.33 31 00.01.0226 |  | Pipe Laying | 34.55d | 2026-05-25 A | 2026-07-08 A | B5.33 31 00.01.0218 | 100% |  |  | Labor [28.35 h]; Foreman [14.17 h]; Plumber Helper [14.17 h]; Plumber [14.17 h]; Operator [14.17 h]; Surveyor [14.17 h]; Surveyor Helper [14.17 h]; Mobile Crane [16 h]; Sew Dia. 150mm Depth: 1.51m - 2.5m [35.26] | 10,124.68 | 10,124.68 | 0.00234567500332294 | Cons. | Z4 | Sew | Cons | CS.UNSC | GRPs | SUB.C | Rd 04 |  |
| B5.33 31 00.01.0234 |  | Embedment & Test | 33.72d | 2026-06-01 A | 2026-07-09 A | B5.33 31 00.01.0226 | 100% |  |  | Labor [56.7 h]; Foreman [28.35 h]; Plumber Helper [28.35 h]; Plumber [28.35 h]; Operator [56.7 h]; Surveyor [28.35 h]; Surveyor Helper [28.35 h]; Loader [32 h]; Water Tanker [32 h]; Dump Truck [32 h]; Plate Compactor [32 h]; Roller Compactor [32 h]; Sew Dia. 150mm Depth: 1.51m - 2.5m [15.67] | 4,500.25 | 4,500.25 | 0.00104261322598816 | Cons. | Z4 | Sew | Cons | CS.UNSC | GRPs | SUB.C | Rd 04 |  |
| B5.33 31 00.01.0242 |  | Backfilling & Warrning Tape | 26.15d | 2026-06-10 A | 2026-07-11 A | B5.33 31 00.01.0234, B6.33 05 39.01.1717 | 100% |  |  | Labor [70.87 h]; Foreman [35.44 h]; Operator [141.75 h]; Surveyor [35.44 h]; Surveyor Helper [35.44 h]; Loader [40 h]; Water Tanker [40 h]; Dump Truck [40 h]; Plate Compactor [40 h]; Roller Compactor [40 h]; Sew Dia. 150mm Depth: 1.51m - 2.5m [7.84] | 2,251.89 | 2,251.89 | 0.000521716123294941 | Cons. | Z4 | Sew | Cons | CS.UNSC | GRPs | SUB.C | Rd 04 |  |

| ID | WBS | Activity | Duration | Start | Finish | Predecessors | Complete | Remaining | Planned start | Planned finish | Total float | Resources | Cost | Actual cost | Weight % | DMM2 Weekly Progress | DMM2 Zones | Networks & Stations | DMM2 Phases | UNASCO | Networks Components | Subcontractors works | Dmm2 Roads |
| --- | --- | --- | --- | --- | --- | --- | --- | --- | --- | --- | --- | --- | --- | --- | --- | --- | --- | --- | --- | --- | --- | --- | --- |
|  | 2 | **Depth From 2.5m to 3.5m** |  | 2026-05-23 | 2026-07-12 |  |  |  |  |  |  |  |  |  |  |  |  |  |  |  |  |  |  |
| B5.33 31 00.01.0212 |  | Excavation | 2d | 2026-05-23 A | 2026-05-24 A | B5.33 31 00.01.0210 | 100% |  |  |  |  | Labor [28.35 h]; Foreman [14.17 h]; Operator [28.35 h]; Surveyor [14.17 h]; Surveyor Helper [14.17 h]; Excavator (With Bucket) [16 h]; Water Tanker [16 h]; Dump Truck [16 h]; Plate Compactor [16 h]; Sew Dia. 150mm Depth: 2.51m - 3.5m [2.82] | 977.13 | 977.13 | 0.000221608358516241 | Cons. | Z4 | Sew | Cons | CS.UNSC | GRPs | SUB.C | Rd 04 |
| B5.33 31 00.01.0220 |  | Sand Bedding | 2d | 2026-05-25 A | 2026-05-31 A | B5.33 31 00.01.0212 | 100% |  |  |  |  | Labor [28.35 h]; Foreman [14.17 h]; Operator [56.7 h]; Surveyor [14.17 h]; Surveyor Helper [14.17 h]; Loader [16 h]; Water Tanker [16 h]; Dump Truck [16 h]; Plate Compactor [16 h]; Sew Dia. 150mm Depth: 2.51m - 3.5m [0.7] | 244.28 | 244.28 | 5.54020896290601E-005 | Cons. | Z4 | Sew | Cons | CS.UNSC | GRPs | SUB.C | Rd 04 |
| B5.33 31 00.01.0228 |  | Pipe Laying | 32.92d | 2026-06-01 A | 2026-07-08 A | B5.33 31 00.01.0220 | 100% |  |  |  |  | Labor [28.35 h]; Foreman [14.17 h]; Plumber Helper [14.17 h]; Plumber [14.17 h]; Operator [14.17 h]; Surveyor [14.17 h]; Surveyor Helper [14.17 h]; Mobile Crane [16 h]; Sew Dia. 150mm Depth: 2.51m - 3.5m [6.35] | 2,202.91 | 2,202.91 | 0.000499608129690632 | Cons. | Z4 | Sew | Cons | CS.UNSC | GRPs | SUB.C | Rd 04 |
| B5.33 31 00.01.0236 |  | Embedment & Test | 13.68d | 2026-06-24 A | 2026-07-11 A | B5.33 31 00.01.0228 | 100% |  |  |  |  | Labor [56.7 h]; Foreman [28.35 h]; Plumber Helper [28.35 h]; Plumber [28.35 h]; Operator [56.7 h]; Surveyor [28.35 h]; Surveyor Helper [28.35 h]; Loader [32 h]; Water Tanker [32 h]; Dump Truck [32 h]; Plate Compactor [32 h]; Roller Compactor [32 h]; Sew Dia. 150mm Depth: 2.51m - 3.5m [2.82] | 977.13 | 977.13 | 0.000221608358516241 | Cons. | Z4 | Sew | Cons | CS.UNSC | GRPs | SUB.C | Rd 04 |
| B5.33 31 00.01.0244 |  | Backfilling & Warrning Tape | 10.33d | 2026-06-29 A | 2026-07-12 A | B5.33 31 00.01.0236, B5.33 31 00.01.0242 | 100% |  |  |  |  | Labor [70.87 h]; Foreman [35.44 h]; Operator [141.75 h]; Surveyor [35.44 h]; Surveyor Helper [35.44 h]; Loader [40 h]; Water Tanker [40 h]; Dump Truck [40 h]; Plate Compactor [40 h]; Roller Compactor [40 h]; Sew Dia. 150mm Depth: 2.51m - 3.5m [1.41] | 488.57 | 488.57 | 0.00011080417925812 | Cons. | Z4 | Sew | Cons | CS.UNSC | GRPs | SUB.C | Rd 04 |
|  | 200 | **?200** |  | 2026-06-24 | 2026-10-11 |  |  |  |  |  |  |  |  |  |  |  |  |  |  |  |  |  |  |
|  | 2 | **Depth From 2.5m to 3.5m** |  | 2026-06-24 | 2026-10-11 |  |  |  |  |  |  |  |  |  |  |  |  |  |  |  |  |  |  |
| B5.33 31 00.01.0214 |  | Excavation | 6.66d | 2026-06-24 A | 2026-07-01 A | B5.33 31 00.01.0212 | 100% |  |  |  |  | Labor [28.35 h]; Foreman [14.17 h]; Operator [28.35 h]; Surveyor [14.17 h]; Surveyor Helper [14.17 h]; Excavator (With Bucket) [16 h]; Water Tanker [16 h]; Dump Truck [16 h]; Plate Compactor [16 h]; Sew Dia. 200mm Depth: 2.51m - 3.5m [62.03] | 24,727.59 | 24,727.59 | 0.00646094324563673 | Cons. | Z4 | Sew | Cons | CS.UNSC | GRPs | SUB.C | Rd 04 |
| B5.33 31 00.01.0222 |  | Sand Bedding | 53.2d | 2026-06-27 A | 2026-08-27 A | B5.33 31 00.01.0214 | 100% |  |  |  |  | Labor [28.35 h]; Foreman [14.17 h]; Operator [56.7 h]; Surveyor [14.17 h]; Surveyor Helper [14.17 h]; Loader [16 h]; Water Tanker [16 h]; Dump Truck [16 h]; Plate Compactor [16 h]; Sew Dia. 200mm Depth: 2.51m - 3.5m [15.5] | 6,179.72 | 6,179.72 | 0.001614667266597 | Cons. | Z4 | Sew | Cons | CS.UNSC | GRPs | SUB.C | Rd 04 |
| B5.33 31 00.01.0230 |  | Pipe Laying | 47.2d | 2026-06-29 A | 2026-08-23 A | B5.33 31 00.01.0222 | 100% |  |  |  |  | Labor [28.35 h]; Foreman [14.17 h]; Plumber Helper [14.17 h]; Plumber [14.17 h]; Operator [14.17 h]; Surveyor [14.17 h]; Surveyor Helper [14.17 h]; Mobile Crane [16 h]; Sew Dia. 200mm Depth: 2.51m - 3.5m [139.57] | 55,634.89 | 55,634.89 | 0.0145365537578704 | Cons. | Z4 | Sew | Cons | CS.UNSC | GRPs | SUB.C | Rd 04 |
| B5.33 31 00.01.0238 |  | Embedment & Test (4.61% Completed) | 65.34d | 2026-07-01 A | 2026-09-15 A | B5.33 31 00.01.0230 | 100% |  |  |  |  | Labor [2.87 h]; Foreman [1.44 h]; Plumber Helper [1.44 h]; Plumber [1.44 h]; Operator [2.87 h]; Surveyor [1.44 h]; Surveyor Helper [1.44 h]; Loader [1.47 h]; Water Tanker [1.47 h]; Dump Truck [1.47 h]; Plate Compactor [1.47 h]; Roller Compactor [1.47 h]; Sew Dia. 200mm Depth: 2.51m - 3.5m [2.86] | 1,138.99 | 1,138.99 | 0.00646094324563673 | Cons. | Z4 | Sew | Cons | CS.UNSC | GRPs | SUB.C | Rd 04 |
| B5.33 31 00.01.0246 |  | Backfilling & Warrning Tape | 49.88d | 2026-07-04 A | 2026-08-30 A | B5.33 31 00.01.0244 | 100% |  |  |  |  | Labor [70.87 h]; Foreman [35.44 h]; Operator [141.75 h]; Surveyor [35.44 h]; Surveyor Helper [35.44 h]; Loader [40 h]; Water Tanker [40 h]; Dump Truck [40 h]; Plate Compactor [40 h]; Roller Compactor [40 h]; Sew Dia. 200mm Depth: 2.51m - 3.5m [31.02] | 12,363.79 | 12,363.79 | 0.00323047162281836 | Cons. | Z4 | Sew | Cons | CS.UNSC | GRPs | SUB.C | Rd 04 |
| B5.33 31 00.01.0238_R |  | Embedment & Test(Rem) | 3.81d | 2026-10-07 | 2026-10-11 | B5.33 31 00.01.0230, B5.33 31 00.01.0238 |  |  |  |  | 109.51d | Labor [59.5 h]; Foreman [29.75 h]; Plumber Helper [29.75 h]; Plumber [29.75 h]; Operator [59.5 h]; Surveyor [29.75 h]; Surveyor Helper [29.75 h]; Loader [30.53 h]; Water Tanker [30.53 h]; Dump Truck [30.53 h]; Plate Compactor [30.53 h]; Roller Compactor [30.53 h]; Sew Dia. 200mm Depth: 2.51m - 3.5m [59.18] | 23,588.6 |  | 0.00646094324563673 | Cons. | Z4 | Sew | Cons | CS.UNSC | GRPs | SUB.C | Rd 04 |
|  | 1 | **Depth From 3.5m to 4.5m** |  | 2026-06-27 | 2026-10-11 |  |  |  |  |  |  |  |  |  |  |  |  |  |  |  |  |  |  |
| B5.33 31 00.01.0216 |  | Excavation | 51.64d | 2026-06-27 A | 2026-08-25 A | B5.33 31 00.01.0214 | 100% |  |  |  |  | Labor [28.35 h]; Foreman [14.17 h]; Operator [28.35 h]; Surveyor [14.17 h]; Surveyor Helper [14.17 h]; Excavator (With Bucket) [16 h]; Water Tanker [16 h]; Dump Truck [16 h]; Plate Compactor [16 h]; Sew Dia. 200mm Depth: 3.51m - 4.5m [83.61] | 38,392.5 | 38,392.5 | 0.00797337574002583 | Cons. | Z4 | Sew | Cons | CS.UNSC | GRPs | SUB.C | Rd 04 |
| B5.33 31 00.01.0224 |  | Sand Bedding | 52.64d | 2026-06-29 A | 2026-08-29 A | B5.33 31 00.01.0216 | 100% |  |  |  |  | Labor [28.35 h]; Foreman [14.17 h]; Operator [56.7 h]; Surveyor [14.17 h]; Surveyor Helper [14.17 h]; Loader [16 h]; Water Tanker [16 h]; Dump Truck [16 h]; Plate Compactor [16 h]; Sew Dia. 200mm Depth: 3.51m - 4.5m [20.91] | 9,599.7 | 9,599.7 | 0.00199367141059952 | Cons. | Z4 | Sew | Cons | CS.UNSC | GRPs | SUB.C | Rd 04 |
| B5.33 31 00.01.0232 |  | Pipe Laying | 47.98d | 2026-07-01 A | 2026-08-26 A | B5.33 31 00.01.0224, DMM2-Proc-Delv-7108 | 100% |  |  |  |  | Labor [28.35 h]; Foreman [14.17 h]; Plumber Helper [14.17 h]; Plumber [14.17 h]; Operator [14.17 h]; Surveyor [14.17 h]; Surveyor Helper [14.17 h]; Mobile Crane [16 h]; Sew Dia. 200mm Depth: 3.51m - 4.5m [188.12] | 86,384.7 | 86,384.7 | 0.0179404228906512 | Cons. | Z4 | Sew | Cons | CS.UNSC | GRPs | SUB.C | Rd 04 |
| B5.33 31 00.01.0240 |  | Embedment & Test (4.42% Completed) | 65d | 2026-07-02 A | 2026-09-15 A | B5.33 31 00.01.0232 | 100% |  |  |  |  | Labor [2.76 h]; Foreman [1.38 h]; Plumber Helper [1.38 h]; Plumber [1.38 h]; Operator [2.76 h]; Surveyor [1.38 h]; Surveyor Helper [1.38 h]; Loader [1.42 h]; Water Tanker [1.42 h]; Dump Truck [1.42 h]; Plate Compactor [1.42 h]; Roller Compactor [1.42 h]; Sew Dia. 200mm Depth: 3.51m - 4.5m [3.7] | 1,698.36 | 1,698.36 | 0.00797337574002583 | Cons. | Z4 | Sew | Cons | CS.UNSC | GRPs | SUB.C | Rd 04 |
| B5.33 31 00.01.0248 |  | Backfilling & Warrning Tape | 48.91d | 2026-07-06 A | 2026-08-31 A | B5.33 31 00.01.0246 | 100% |  |  |  |  | Labor [70.87 h]; Foreman [35.44 h]; Operator [141.75 h]; Surveyor [35.44 h]; Surveyor Helper [35.44 h]; Loader [40 h]; Water Tanker [40 h]; Dump Truck [40 h]; Plate Compactor [40 h]; Roller Compactor [40 h]; Sew Dia. 200mm Depth: 3.51m - 4.5m [41.8] | 19,193.1 | 19,193.1 | 0.00398603291882676 | Cons. | Z4 | Sew | Cons | CS.UNSC | GRPs | SUB.C | Rd 04 |
| B5.33 31 00.01.0240_R |  | Embedment & Test(Rem) | 3.82d | 2026-10-07 | 2026-10-11 | B3.33 14 19.01.103 FF, B5.33 31 00.01.0232, B5.33 31 00.01.0240 |  |  |  |  | 109.32d | Labor [59.61 h]; Foreman [29.81 h]; Plumber Helper [29.81 h]; Plumber [29.81 h]; Operator [59.61 h]; Surveyor [29.81 h]; Surveyor Helper [29.81 h]; Loader [30.58 h]; Water Tanker [30.58 h]; Dump Truck [30.58 h]; Plate Compactor [30.58 h]; Roller Compactor [30.58 h]; Sew Dia. 200mm Depth: 3.51m - 4.5m [79.91] | 36,694.14 |  | 0.00797337574002583 | Cons. | Z4 | Sew | Cons | CS.UNSC | GRPs | SUB.C | Rd 04 |
|  | Manholes | **Manholes ?1200** |  | 2026-05-11 | 2026-10-08 |  |  |  |  |  |  |  |  |  |  |  |  |  |  |  |  |  |  |
|  | 3 | **Depth From 1.5m to 2.5m** |  | 2026-05-11 | 2026-10-08 |  |  |  |  |  |  |  |  |  |  |  |  |  |  |  |  |  |  |
| B6.33 05 39.01.1727 |  | Excavation & Compaction | 84.66d | 2026-05-11 A | 2026-08-22 A | B5.33 31 00.01.0216 | 100% |  |  |  |  | Labor [28.35 h]; Foreman [14.17 h]; Operator [28.35 h]; Surveyor [14.17 h]; Surveyor Helper [14.17 h]; Excavator (With Bucket) [16 h]; Water Tanker [16 h]; Dump Truck [16 h]; Plate Compactor [16 h]; MH depth 1.51 - 2.5m [0.66] | 8,362.98 | 8,362.98 | 0.00159819368155211 | Cons. | Z4 | Sew | Cons | CS.UNSC | Manhole | SUB.C | Rd 04 |
| B6.33 05 39.01.1737 |  | Blinding Conc, & RC Base | 71.33d | 2026-06-03 A | 2026-08-25 A | B6.33 05 39.01.1727 | 100% |  |  |  |  | Labor [42.52 h]; Foreman [21.26 h]; Laboratory Officer [21.26 h]; Carpenter [21.26 h]; Steelfixer [21.26 h]; Mason [21.26 h]; MH depth 1.51 - 2.5m [0.45] | 5,701.91 | 5,701.91 | 0.00108965546636573 | Cons. | Z4 | Sew | Cons | CS.UNSC | Manhole | SUB.C | Rd 04 |
| B6.33 05 39.01.1747 |  | Manhole Installation | 68d | 2026-06-08 A | 2026-08-26 A | B6.33 05 39.01.1737, DMM2-Proc-Delv-7118 | 100% |  |  |  |  | Labor [28.35 h]; Operator [28.35 h]; Surveyor [14.17 h]; Surveyor Helper [14.17 h]; Boom Truck [16 h]; Mobile Crane [16 h]; MH depth 1.51 - 2.5m [1.99] | 25,278.55 | 25,278.55 | 0.00483081828096108 | Cons. | Z4 | Sew | Cons | CS.UNSC | Manhole | SUB.C | Rd 04 |
| B6.33 05 39.01.1757 |  | Test, Internal Finishing, Benching & Cover (45.60% Completed) | 83.34d | 2026-06-10 A | 2026-09-15 A | B6.33 05 39.01.1747 | 100% |  |  |  |  | Labor [28.44 h]; Foreman [14.22 h]; Plumber Helper [14.22 h]; Plumber [14.22 h]; Mason [14.22 h]; MH depth 1.51 - 2.5m [0.25] | 3,193.38 | 3,193.38 | 0.00108965546636573 | Cons. | Z4 | Sew | Cons | CS.UNSC | Manhole | SUB.C | Rd 04 |
| B6.33 05 39.01.1767 |  | Backfilling | 65.84d | 2026-06-15 A | 2026-08-31 A | DMM2-Proc-PO-017 | 100% |  |  |  |  | Labor [70.87 h]; Foreman [35.44 h]; Operator [70.87 h]; Surveyor [35.44 h]; Surveyor Helper [35.44 h]; Loader [40 h]; Water Tanker [40 h]; Dump Truck [40 h]; Plate Compactor [40 h]; MH depth 1.51 - 2.5m [0.88] | 11,213.79 | 11,213.79 | 0.0021429945757647 | Cons. | Z4 | Sew | Cons | CS.UNSC | Manhole | SUB.C | Rd 04 |
| B6.33 05 39.01.1757_R |  | Test, Internal Finishing, Benching & Cover(Rem) | 2.18d | 2026-10-03 A | 2026-10-08 | B6.33 05 39.01.1747, B6.33 05 39.01.1757, B6.33 05 39.01.1707_R | 50% | 1.09d | 2026-10-03 | 2026-10-05 | 112.23d | Labor [33.93 h]; Foreman [16.96 h]; Plumber Helper [16.96 h]; Plumber [16.96 h]; Mason [16.96 h]; MH depth 1.51 - 2.5m [0.3] | 3,809.64 | 1,904.82 | 0.00108965546636573 | Cons. | Z4 | Sew | Cons | CS.UNSC | Manhole | SUB.C | Rd 04 |

| ID | WBS | Activity | Duration | Start | Finish | Predecessors | Complete | Remaining | Planned start | Planned finish | Total float | Free float | Resources | Cost | Actual cost | Weight % | DMM2 Weekly Progress | DMM2 Zones | Networks & Stations | DMM2 Phases | UNASCO | Networks Components | Subcontractors works | Dmm2 Roads |
| --- | --- | --- | --- | --- | --- | --- | --- | --- | --- | --- | --- | --- | --- | --- | --- | --- | --- | --- | --- | --- | --- | --- | --- | --- |
|  | 4 | **Depth From 2.5m to 3.5m** |  | 2026-06-03 | 2026-07-11 |  |  |  |  |  |  |  |  |  |  |  |  |  |  |  |  |  |  |  |
| B6.33 05 39.01.1777 |  | Excavation & Compaction | 25d | 2026-06-03 A | 2026-07-02 A | B6.33 05 39.01.1727 | 100% |  |  |  |  |  | Labor [28.35 h]; Foreman [14.17 h]; Operator [28.35 h]; Surveyor [14.17 h]; Surveyor Helper [14.17 h]; Excavator (With Bucket) [16 h]; Water Tanker [16 h]; Dump Truck [16 h]; Plate Compactor [16 h]; MH depth 2.51 - 3.5m [0.82] | 12,557.47 | 12,557.47 | 0.00239967188397841 | Cons. | Z4 | Sew | Cons | CS.UNSC | Manhole | SUB.C | Rd 04 |
| B6.33 05 39.01.1787 |  | Blinding Conc, & RC Base | 25.33d | 2026-06-06 A | 2026-07-05 A | B6.33 05 39.01.1777 | 100% |  |  |  |  |  | Labor [42.52 h]; Foreman [21.26 h]; Laboratory Officer [21.26 h]; Carpenter [21.26 h]; Steelfixer [21.26 h]; Mason [21.26 h]; MH depth 2.51 - 3.5m [0.55] | 8,447.73 | 8,447.73 | 0.00161432058487404 | Cons. | Z4 | Sew | Cons | CS.UNSC | Manhole | SUB.C | Rd 04 |
| B6.33 05 39.01.1797 |  | Manhole Installation | 22d | 2026-06-11 A | 2026-07-07 A | B6.33 05 39.01.1787 | 100% |  |  |  |  |  | Labor [28.35 h]; Operator [28.35 h]; Surveyor [14.17 h]; Surveyor Helper [14.17 h]; Boom Truck [16 h]; Mobile Crane [16 h]; MH depth 2.51 - 3.5m [2.46] | 37,672.42 | 37,672.42 | 0.00719901565193524 | Cons. | Z4 | Sew | Cons | CS.UNSC | Manhole | SUB.C | Rd 04 |
| B6.33 05 39.01.1807 |  | Test, Internal Finishing, Benching & Cover | 22.66d | 2026-06-13 A | 2026-07-09 A | B6.33 05 39.01.1797 | 100% |  |  |  |  |  | Labor [56.7 h]; Foreman [28.35 h]; Plumber Helper [28.35 h]; Plumber [28.35 h]; Mason [28.35 h]; MH depth 2.51 - 3.5m [0.55] | 8,447.73 | 8,447.73 | 0.00161432058487404 | Cons. | Z4 | Sew | Cons | CS.UNSC | Manhole | SUB.C | Rd 04 |
| B6.33 05 39.01.1817 |  | Backfilling | 21.99d | 2026-06-15 A | 2026-07-11 A | B6.33 05 39.01.1807 | 100% |  |  |  |  |  | Labor [70.87 h]; Foreman [35.44 h]; Operator [70.87 h]; Surveyor [35.44 h]; Surveyor Helper [35.44 h]; Loader [40 h]; Water Tanker [40 h]; Dump Truck [40 h]; Plate Compactor [40 h]; MH depth 2.51 - 3.5m [1.1] | 16,895.51 | 16,895.51 | 0.00322864944389824 | Cons. | Z4 | Sew | Cons | CS.UNSC | Manhole | SUB.C | Rd 04 |
|  | 1 | **Depth From 3.5m to 4.5m** |  | 2026-06-21 | 2026-10-08 |  |  |  |  |  |  |  |  |  |  |  |  |  |  |  |  |  |  |  |
| B6.33 05 39.01.1827 |  | Excavation & Compaction | 54d | 2026-06-21 A | 2026-08-23 A | B6.33 05 39.01.1777 | 100% |  |  |  |  |  | Labor [28.35 h]; Foreman [14.17 h]; Operator [28.35 h]; Surveyor [14.17 h]; Surveyor Helper [14.17 h]; Excavator (With Bucket) [16 h]; Water Tanker [16 h]; Dump Truck [16 h]; Plate Compactor [16 h]; MH depth 3.51 -4.5m [1.55] | 31,151.59 | 31,151.59 | 0.00594936291235462 | Cons. | Z4 | Sew | Cons | CS.UNSC | Manhole | SUB.C | Rd 04 |
| B6.33 05 39.01.1837 |  | Blinding Conc, & RC Base | 53.33d | 2026-06-24 A | 2026-08-25 A | B6.33 05 39.01.1827 | 100% |  |  |  |  |  | Labor [42.52 h]; Foreman [21.26 h]; Laboratory Officer [21.26 h]; Carpenter [21.26 h]; Steelfixer [21.26 h]; Mason [21.26 h]; MH depth 3.51 -4.5m [1.03] | 20,667.88 | 20,667.88 | 0.00394717347069681 | Cons. | Z4 | Sew | Cons | CS.UNSC | Manhole | SUB.C | Rd 04 |
| B6.33 05 39.01.1847 |  | Manhole Installation | 53d | 2026-06-27 A | 2026-08-27 A | B6.33 05 39.01.1837 | 100% |  |  |  |  |  | Labor [28.35 h]; Operator [28.35 h]; Surveyor [14.17 h]; Surveyor Helper [14.17 h]; Boom Truck [16 h]; Mobile Crane [16 h]; MH depth 3.51 -4.5m [4.66] | 93,454.77 | 93,454.77 | 0.0178480887370639 | Cons. | Z4 | Sew | Cons | CS.UNSC | Manhole | SUB.C | Rd 04 |
| B6.33 05 39.01.1857 |  | Test, Internal Finishing, Benching & Cover (45.60% Completed) | 68.34d | 2026-06-28 A | 2026-09-15 A | B6.33 05 39.01.1847 | 100% |  |  |  |  |  | Labor [28.44 h]; Foreman [14.22 h]; Plumber Helper [14.22 h]; Plumber [14.22 h]; Mason [14.22 h]; MH depth 3.51 -4.5m [0.47] | 9,424.55 | 9,424.55 | 0.00394717347069681 | Cons. | Z4 | Sew | Cons | CS.UNSC | Manhole | SUB.C | Rd 04 |
| B6.33 05 39.01.1867 |  | Backfilling | 52.84d | 2026-06-30 A | 2026-08-31 A | B6.33 05 39.01.1817 | 100% |  |  |  |  |  | Labor [70.87 h]; Foreman [35.44 h]; Operator [70.87 h]; Surveyor [35.44 h]; Surveyor Helper [35.44 h]; Loader [40 h]; Water Tanker [40 h]; Dump Truck [40 h]; Plate Compactor [40 h]; MH depth 3.51 -4.5m [2.06] | 41,335.76 | 41,335.76 | 0.00789434694139357 | Cons. | Z4 | Sew | Cons | CS.UNSC | Manhole | SUB.C | Rd 04 |
| B6.33 05 39.01.1857_R |  | Test, Internal Finishing, Benching & Cover(Rem) | 2.18d | 2026-10-05 A | 2026-10-08 | B6.33 05 39.01.1847, B6.33 05 39.01.1857, B6.33 05 39.01.1757_R | 50% | 1.09d | 2026-10-05 | 2026-10-07 | 112.23d | 38.14d | Labor [33.93 h]; Foreman [16.96 h]; Plumber Helper [16.96 h]; Plumber [16.96 h]; Mason [16.96 h]; MH depth 3.51 -4.5m [0.56] | 11,243.33 | 5,621.66 | 0.00394717347069681 | Cons. | Z4 | Sew | Cons | CS.UNSC | Manhole | SUB.C | Rd 04 |
|  | Potable Water | **Potable Water Network** |  | 2026-05-03 | 2026-10-27 |  |  |  |  |  |  |  |  |  |  |  |  |  |  |  |  |  |  |  |
|  | HDPE | **HDPE Pipes** |  | 2026-05-20 | 2026-10-10 |  |  |  |  |  |  |  |  |  |  |  |  |  |  |  |  |  |  |  |
|  | ?110mm | **?110mm** |  | 2026-05-20 | 2026-10-10 |  |  |  |  |  |  |  |  |  |  |  |  |  |  |  |  |  |  |  |
|  | Depth: 0.0m - 1.5m | **Depth: 0.0m - 1.5m** |  | 2026-05-20 | 2026-09-26 |  |  |  |  |  |  |  |  |  |  |  |  |  |  |  |  |  |  |  |
| B3.33 14 13.01.0191 |  | Excavation | 2d | 2026-05-20 A | 2026-05-23 A | B6.33 05 39.01.1727 | 100% |  |  |  |  |  | Labor [28.35 h]; Foreman [14.17 h]; Operator [28.35 h]; Surveyor [14.17 h]; Surveyor Helper [14.17 h]; Excavator (With Bucket) [16 h]; Water Tanker [16 h]; Dump Truck [16 h]; Plate Compactor [16 h]; Depth: 0.0m - 1.5m [155.75] | 22,426.31 | 22,426.31 | 0.00449622803237392 | Cons. | Z4 | Potable | Cons | CS.UNSC | HDPEs | SUB.C | Rd 04 |
| B3.33 14 13.01.0195 |  | Sand Bedding | 2d | 2026-05-23 A | 2026-05-25 A | B3.33 14 13.01.0191 | 100% |  |  |  |  |  | Labor [28.35 h]; Foreman [14.17 h]; Operator [56.7 h]; Surveyor [14.17 h]; Surveyor Helper [14.17 h]; Loader [16 h]; Water Tanker [16 h]; Dump Truck [16 h]; Plate Compactor [16 h]; Depth: 0.0m - 1.5m [38.94] | 5,607.6 | 5,607.6 | 0.00112426239033505 | Cons. | Z4 | Potable | Cons | CS.UNSC | HDPEs | SUB.C | Rd 04 |
| B3.33 14 13.01.0199 |  | Pipe Laying (80.00% Completed) | 93.46d | 2026-05-25 A | 2026-09-15 A | B3.33 14 13.01.0195 | 100% |  |  |  |  |  | Labor [24.95 h]; Foreman [12.47 h]; Plumber Helper [12.47 h]; Plumber [12.47 h]; Operator [12.47 h]; Surveyor [12.47 h]; Surveyor Helper [12.47 h]; Mobile Crane [12.8 h]; Depth: 0.0m - 1.5m [280.35] | 40,368.18 | 40,368.18 | 0.0101167184550828 | Cons. | Z4 | Potable | Cons | CS.UNSC | HDPEs | SUB.C | Rd 04 |
| B3.33 14 13.01.01103 |  | Embedment & Test (80.00% Completed) | 87.46d | 2026-06-06 A | 2026-09-15 A | B3.33 14 19.01.118, B3.33 14 13.01.0199 FF | 100% |  |  |  |  |  | Labor [49.9 h]; Foreman [24.95 h]; Plumber Helper [24.95 h]; Plumber [24.95 h]; Operator [49.9 h]; Surveyor [24.95 h]; Surveyor Helper [24.95 h]; Loader [25.6 h]; Water Tanker [25.6 h]; Dump Truck [25.6 h]; Plate Compactor [25.6 h]; Roller Compactor [25.6 h]; Depth: 0.0m - 1.5m [124.6] | 17,941.05 | 17,941.05 | 0.00449622803237392 | Cons. | Z4 | Potable | Cons | CS.UNSC | HDPEs | SUB.C | Rd 04 |
| B3.33 14 13.01.01107 |  | Backfilling & Warrning Tape (80.00% Completed) | 83.46d | 2026-06-10 A | 2026-09-15 A | B3.33 14 13.01.01103 SS, B3.33 14 13-11107 SS, B3.33 14 13-11109 SS | 100% |  |  |  |  |  | Labor [62.37 h]; Foreman [31.18 h]; Operator [124.74 h]; Surveyor [31.18 h]; Surveyor Helper [31.18 h]; Loader [32 h]; Water Tanker [32 h]; Dump Truck [32 h]; Plate Compactor [32 h]; Roller Compactor [32 h]; Depth: 0.0m - 1.5m [62.3] | 8,970.53 | 8,970.53 | 0.00224811401618696 | Cons. | Z4 | Potable | Cons | CS.UNSC | HDPEs | SUB.C | Rd 04 |
| B3.33 14 13.01.01107_R |  | Backfilling & Warrning Tape(Rem) | 2d | 2026-09-17 A | 2026-09-20 A | B3.33 14 13.01.01103_R SS, B3.33 14 13-11107_R SS, B3.33 14 13-11109_R SS, B3.33 14 13.01.01107 | 100% |  |  |  |  |  | Labor [15.59 h]; Foreman [7.8 h]; Operator [31.18 h]; Surveyor [7.8 h]; Surveyor Helper [7.8 h]; Loader [8 h]; Water Tanker [8 h]; Dump Truck [8 h]; Plate Compactor [8 h]; Roller Compactor [8 h]; Depth: 0.0m - 1.5m [15.57] | 2,242.63 | 2,242.63 | 0.00224811401618696 | Cons. | Z4 | Potable | Cons | CS.UNSC | HDPEs | SUB.C | Rd 04 |
| B3.33 14 13.01.0199_R |  | Pipe Laying(Rem) | 3d | 2026-09-20 A | 2026-09-22 A | B3.33 14 13.01.0195, B3.33 14 13.01.0199 | 100% |  | 2026-09-16 | 2026-09-19 |  |  | Labor [6.24 h]; Foreman [3.12 h]; Plumber Helper [3.12 h]; Plumber [3.12 h]; Operator [3.12 h]; Surveyor [3.12 h]; Surveyor Helper [3.12 h]; Mobile Crane [3.2 h]; Depth: 0.0m - 1.5m [70.09] | 10,092.05 | 10,092.05 | 0.0101167184550828 | Cons. | Z4 | Potable | Cons | CS.UNSC | HDPEs | SUB.C | Rd 04 |
| B3.33 14 13.01.01103_R |  | Embedment & Test(Rem) | 3d | 2026-09-24 A | 2026-09-26 A | B3.33 14 19.01.118, B3.33 14 13.01.0199_R FF, B3.33 14 13.01.01103 | 100% |  | 2026-09-16 | 2026-09-19 |  |  | Labor [12.47 h]; Foreman [6.24 h]; Plumber Helper [6.24 h]; Plumber [6.24 h]; Operator [12.47 h]; Surveyor [6.24 h]; Surveyor Helper [6.24 h]; Loader [6.4 h]; Water Tanker [6.4 h]; Dump Truck [6.4 h]; Plate Compactor [6.4 h]; Roller Compactor [6.4 h]; Depth: 0.0m - 1.5m [31.15] | 4,485.26 | 4,485.26 | 0.00449622803237392 | Cons. | Z4 | Potable | Cons | CS.UNSC | HDPEs | SUB.C | Rd 04 |

| ID | WBS | Activity | Duration | Start | Finish | Predecessors | Complete | Total float | Free float | Resources | Cost | Actual cost | Weight % | DMM2 Weekly Progress | DMM2 Zones | Networks & Stations | DMM2 Phases | UNASCO | Networks Components | Subcontractors works | Dmm2 Roads |
| --- | --- | --- | --- | --- | --- | --- | --- | --- | --- | --- | --- | --- | --- | --- | --- | --- | --- | --- | --- | --- | --- |
|  | Depth: 1.51m - 2.5m | **Depth: 1.51m - 2.5m** |  | 2026-05-23 | 2026-10-10 |  |  |  |  |  |  |  |  |  |  |  |  |  |  |  |  |
| B3.33 14 13.01.0193 |  | Excavation | 2d | 2026-05-23 A | 2026-05-25 A | B3.33 14 13.01.0191 | 100% |  |  | Labor [28.35 h]; Foreman [14.17 h]; Operator [28.35 h]; Surveyor [14.17 h]; Surveyor Helper [14.17 h]; Excavator (With Bucket) [16 h]; Water Tanker [16 h]; Dump Truck [16 h]; Plate Compactor [16 h]; Depth: 1.51m - 2.5m |  |  | 0.000145557831170628 | Cons. | Z4 | Potable | Cons | CS.UNSC | HDPEs | SUB.C | Rd 04 |
| B3.33 14 13.01.0197 |  | Sand Bedding | 2d | 2026-05-25 A | 2026-06-01 A | B3.33 14 13.01.0193 | 100% |  |  | Labor [28.35 h]; Foreman [14.17 h]; Operator [56.7 h]; Surveyor [14.17 h]; Surveyor Helper [14.17 h]; Loader [16 h]; Water Tanker [16 h]; Dump Truck [16 h]; Plate Compactor [16 h]; Depth: 1.51m - 2.5m |  |  | 3.61452332437126E-005 | Cons. | Z4 | Potable | Cons | CS.UNSC | HDPEs | SUB.C | Rd 04 |
| B3.33 14 13.01.01101 |  | Pipe Laying (80.00% Completed) | 91.46d | 2026-06-01 A | 2026-09-15 A | B3.33 14 13.01.0197 | 100% |  |  | Labor [24.95 h]; Foreman [12.47 h]; Plumber Helper [12.47 h]; Plumber [12.47 h]; Operator [12.47 h]; Surveyor [12.47 h]; Surveyor Helper [12.47 h]; Mobile Crane [12.8 h]; Depth: 1.51m - 2.5m |  |  | 0.000327260895584966 | Cons. | Z4 | Potable | Cons | CS.UNSC | HDPEs | SUB.C | Rd 04 |
| B3.33 14 13.01.01105 |  | Embedment & Test (80.00% Completed) | 87.46d | 2026-06-06 A | 2026-09-15 A | B3.33 14 19.01.118, B3.33 14 13.01.01101 FF | 100% |  |  | Labor [49.9 h]; Foreman [24.95 h]; Plumber Helper [24.95 h]; Plumber [24.95 h]; Operator [49.9 h]; Surveyor [24.95 h]; Surveyor Helper [24.95 h]; Loader [25.6 h]; Water Tanker [25.6 h]; Dump Truck [25.6 h]; Plate Compactor [25.6 h]; Roller Compactor [25.6 h]; Depth: 1.51m - 2.5m |  |  | 0.000145557831170628 | Cons. | Z4 | Potable | Cons | CS.UNSC | HDPEs | SUB.C | Rd 04 |
| B3.33 14 13.01.01109 |  | Backfilling & Warrning Tape (80.00% Completed) | 83.46d | 2026-06-10 A | 2026-09-15 A | B3.33 14 13.01.01105 SS, B3.33 14 13.01.01107 FF | 100% |  |  | Labor [62.37 h]; Foreman [31.18 h]; Operator [124.74 h]; Surveyor [31.18 h]; Surveyor Helper [31.18 h]; Loader [32 h]; Water Tanker [32 h]; Dump Truck [32 h]; Plate Compactor [32 h]; Roller Compactor [32 h]; Depth: 1.51m - 2.5m |  |  | 7.27789155853129E-005 | Cons. | Z4 | Potable | Cons | CS.UNSC | HDPEs | SUB.C | Rd 04 |
| B3.33 14 13.01.01101_R |  | Pipe Laying(Rem) | 3d | 2026-10-07 | 2026-10-10 | B3.33 14 13.01.0197, B3.33 14 13.01.01101 |  | 68.32d | 0d | Labor [6.24 h]; Foreman [3.12 h]; Plumber Helper [3.12 h]; Plumber [3.12 h]; Operator [3.12 h]; Surveyor [3.12 h]; Surveyor Helper [3.12 h]; Mobile Crane [3.2 h]; Depth: 1.51m - 2.5m |  |  | 0.000327260895584966 | Cons. | Z4 | Potable | Cons | CS.UNSC | HDPEs | SUB.C | Rd 04 |
| B3.33 14 13.01.01105_R |  | Embedment & Test(Rem) | 3d | 2026-10-07 | 2026-10-10 | B3.33 14 19.01.118, B3.33 14 13.01.01101_R FF, B3.33 14 13.01.01105 |  | 68.32d | 0d | Labor [12.47 h]; Foreman [6.24 h]; Plumber Helper [6.24 h]; Plumber [6.24 h]; Operator [12.47 h]; Surveyor [6.24 h]; Surveyor Helper [6.24 h]; Loader [6.4 h]; Water Tanker [6.4 h]; Dump Truck [6.4 h]; Plate Compactor [6.4 h]; Roller Compactor [6.4 h]; Depth: 1.51m - 2.5m |  |  | 0.000145557831170628 | Cons. | Z4 | Potable | Cons | CS.UNSC | HDPEs | SUB.C | Rd 04 |
| B3.33 14 13.01.01109_R |  | Backfilling & Warrning Tape(Rem) | 2d | 2026-10-07 | 2026-10-08 | B3.33 14 13.01.01105_R SS, B3.33 14 13.01.01107_R FF, B3.33 14 13.01.01109 |  | 68.32d | 50d | Labor [15.59 h]; Foreman [7.8 h]; Operator [31.18 h]; Surveyor [7.8 h]; Surveyor Helper [7.8 h]; Loader [8 h]; Water Tanker [8 h]; Dump Truck [8 h]; Plate Compactor [8 h]; Roller Compactor [8 h]; Depth: 1.51m - 2.5m |  |  | 7.27789155853129E-005 | Cons. | Z4 | Potable | Cons | CS.UNSC | HDPEs | SUB.C | Rd 04 |
|  | Crossing | **Plots and Buildings Crossing** |  | 2026-10-07 | 2026-10-27 |  |  |  |  |  |  |  |  |  |  |  |  |  |  |  |  |
| B3.33 14 13.02.31 |  | Earthwork | 7d | 2026-10-07 | 2026-10-14 | B3.33 14 13.01.0193 |  | 63.82d | 0d | Labor [93.55 h]; Foreman [46.78 h]; Operator [93.55 h]; Surveyor [46.78 h]; Surveyor Helper [46.78 h]; Excavator (With Bucket) [48 h]; Water Tanker [48 h]; Dump Truck [48 h]; Plate Compactor [48 h]; Potable Plots and Buildings Crossing Connections Dia. 110 mm [0.6] | 268.67 |  | 0.000135073084407666 | Cons. | Z4 | Potable | Cons | CS.UNSC |  | SUB.C | Rd 04 |
| B3.33 14 13.02.32 |  | Sand Bedding | 3d | 2026-10-15 | 2026-10-18 | B3.33 14 13.02.31 |  | 89.32d | 1d | Labor [31.18 h]; Foreman [15.59 h]; Operator [62.37 h]; Surveyor [15.59 h]; Surveyor Helper [15.59 h]; Loader [16 h]; Water Tanker [16 h]; Dump Truck [16 h]; Plate Compactor [16 h]; Potable Plots and Buildings Crossing Connections Dia. 110 mm [0.6] | 268.67 |  | 0.000135073084407666 | Cons. | Z4 | Potable | Cons | CS.UNSC |  | SUB.C | Rd 04 |
| B3.33 14 13.02.33 |  | Tee, Pipe (Crossing) Installation & Backfilling | 7d | 2026-10-20 | 2026-10-27 | B3.33 14 13.02.32, B3.33 14 13.02.30 |  | 88.32d | 1d | Labor [93.55 h]; Foreman [46.78 h]; Plumber Helper [46.78 h]; Plumber [46.78 h]; Operator [93.55 h]; Surveyor [46.78 h]; Surveyor Helper [46.78 h]; Mobile Crane [48 h]; Potable Plots and Buildings Crossing Connections Dia. 110 mm [1.8] | 806.01 |  | 0.000405219253223001 | Cons. | Z4 | Potable | Cons | CS.UNSC |  | SUB.C | Rd 04 |
|  | Valves & Chambers | **Valves & Chambers** |  | 2026-05-03 | 2026-10-20 |  |  |  |  |  |  |  |  |  |  |  |  |  |  |  |  |
|  | GV | **Gate Valves** |  | 2026-05-03 | 2026-10-19 |  |  |  |  |  |  |  |  |  |  |  |  |  |  |  |  |
|  | 1 | **Gate valves dia (110) mm** |  | 2026-05-03 | 2026-10-19 |  |  |  |  |  |  |  |  |  |  |  |  |  |  |  |  |
| B3.33 14 19.01.118 |  | Burried Isolation Valve Installation | 3d | 2026-05-03 A | 2026-05-06 A | B1.2.31 23 23.01.17 | 100% |  |  | Labor [28.35 h]; Plumber Helper [14.17 h]; Plumber [14.17 h]; Operator [28.35 h]; Boom Truck [16 h]; POT Gate V dia 110 mm [1.65] | 3,825.71 | 3,825.71 | 0.000737657950376926 | Cons. | Z4 | Potable | Cons | CS.UNSC | Val&Chs | SUB.C | Rd 04 |
| B3.33 14 19.01.119 |  | Spindle & Surface Box | 3d | 2026-10-17 | 2026-10-19 | B3.33 14 19.01.118, B3.33 05 63.02.015 |  | 91.32d | 0d | Labor [31.18 h]; Foreman [15.59 h]; Plumber Helper [15.59 h]; Plumber [15.59 h]; Operator [31.18 h]; JCB [16 h]; POT Gate V dia 110 mm [1.1] | 2,550.47 |  | 0.000491771966917951 | Cons. | Z4 | Potable | Cons | CS.UNSC | Val&Chs | SUB.C | Rd 04 |
|  | Washout Valves | **Washout Valves** |  | 2026-07-06 | 2026-10-20 |  |  |  |  |  |  |  |  |  |  |  |  |  |  |  |  |
|  | 4 | **Washout valves on 110-400 mm. (In Chamber)** |  | 2026-07-06 | 2026-10-20 |  |  |  |  |  |  |  |  |  |  |  |  |  |  |  |  |
| B3.33 05 63.01.27 |  | Land Adjustment & Compaction (62.50% Completed) | 62d | 2026-07-06 A | 2026-09-15 A | B3.33 14 13.01.0191 | 100% |  |  | Labor [19.49 h]; Foreman [9.75 h]; Operator [38.98 h]; Surveyor [9.75 h]; Surveyor Helper [9.75 h]; Excavator (With Bucket) [10 h]; Water Tanker [10 h]; Dump Truck [10 h]; Plate Compactor [10 h]; POT Wash out valve Dia. 100 mm on pipes with Dia. 110-400 mm [0.16]; Wash out valve chamber; on 110-400 mm Dia. pipeline [0.16] | 6,241.09 | 6,241.09 | 0.00162096886660874 | Cons. | Z4 | Potable | Cons | CS.UNSC | Val&Chs | SUB.C | Rd 04 |
| B3.33 05 63.01.25 |  | Foundations (62.50% Completed) | 11d | 2026-09-03 A | 2026-09-15 A | B3.33 05 63.01.27 SS | 100% |  |  | Labor [29.24 h]; Foreman [14.62 h]; Laboratory Officer [14.62 h]; Carpenter [14.62 h]; Steelfixer [14.62 h]; Mason [14.62 h]; POT Wash out valve Dia. 100 mm on pipes with Dia. 110-400 mm [0.22]; Wash out valve chamber; on 110-400 mm Dia. pipeline [0.22] | 8,321.45 | 8,321.45 | 0.002161291822145 | Cons. | Z4 | Potable | Cons | CS.UNSC | Val&Chs | SUB.C | Rd 04 |
| B3.33 05 63.01.28 |  | Chambers Walls Conc Cast In Situ (62.50% Completed) | 8d | 2026-09-07 A | 2026-09-15 A | B3.33 05 63.01.25 SS | 100% |  |  | Labor [29.24 h]; Foreman [14.62 h]; Laboratory Officer [14.62 h]; Carpenter [14.62 h]; Steelfixer [14.62 h]; Mason [14.62 h]; POT Wash out valve Dia. 100 mm on pipes with Dia. 110-400 mm [0.22]; Wash out valve chamber; on 110-400 mm Dia. pipeline [0.22] | 8,321.45 | 8,321.45 | 0.002161291822145 | Cons. | Z4 | Potable | Cons | CS.UNSC | Val&Chs | SUB.C | Rd 04 |
| B3.33 05 63.01.26 |  | Chamber Curing, Finishing & Steel Cover (62.50% Completed) | 7d | 2026-09-08 A | 2026-09-15 A | B3.33 05 63.01.28 SS | 100% |  |  | Labor [38.98 h]; Mason [19.49 h]; POT Wash out valve Dia. 100 mm on pipes with Dia. 110-400 mm [0.16]; Wash out valve chamber; on 110-400 mm Dia. pipeline [0.16] | 6,241.09 | 6,241.09 | 0.00162096886660874 | Cons. | Z4 | Potable | Cons | CS.UNSC | Val&Chs | SUB.C | Rd 04 |
| B3.33 05 63.01.25_R |  | Foundations(Rem) | 2.12d | 2026-10-12 | 2026-10-14 | B3.33 05 63.01.27_R SS, B3.33 05 63.01.25 |  | 63.82d | 0d | Labor [17.54 h]; Foreman [8.77 h]; Laboratory Officer [8.77 h]; Carpenter [8.77 h]; Steelfixer [8.77 h]; Mason [8.77 h]; POT Wash out valve Dia. 100 mm on pipes with Dia. 110-400 mm [0.13]; Wash out valve chamber; on 110-400 mm Dia. pipeline [0.13] | 4,992.87 |  | 0.002161291822145 | Cons. | Z4 | Potable | Cons | CS.UNSC | Val&Chs | SUB.C | Rd 04 |
| B3.33 05 63.01.26_R |  | Chamber Curing, Finishing & Steel Cover(Rem) | 2.5d | 2026-10-12 | 2026-10-14 | B3.33 05 63.01.28_R SS, B3.33 05 63.01.26 |  | 63.82d | 0d | Labor [23.39 h]; Mason [11.69 h]; POT Wash out valve Dia. 100 mm on pipes with Dia. 110-400 mm [0.1]; Wash out valve chamber; on 110-400 mm Dia. pipeline [0.1] | 3,744.65 |  | 0.00162096886660874 | Cons. | Z4 | Potable | Cons | CS.UNSC | Val&Chs | SUB.C | Rd 04 |
| B3.33 05 63.01.27_R |  | Land Adjustment & Compaction(Rem) | 3d | 2026-10-12 | 2026-10-14 | B3.33 14 13.02.31 FF, B3.33 05 63.01.27 |  | 63.82d | 0d | Labor [11.69 h]; Foreman [5.85 h]; Operator [23.39 h]; Surveyor [5.85 h]; Surveyor Helper [5.85 h]; Excavator (With Bucket) [6 h]; Water Tanker [6 h]; Dump Truck [6 h]; Plate Compactor [6 h]; POT Wash out valve Dia. 100 mm on pipes with Dia. 110-400 mm [0.1]; Wash out valve chamber; on 110-400 mm Dia. pipeline [0.1] | 3,744.65 |  | 0.00162096886660874 | Cons. | Z4 | Potable | Cons | CS.UNSC | Val&Chs | SUB.C | Rd 04 |
| B3.33 05 63.01.28_R |  | Chambers Walls Conc Cast In Situ(Rem) | 2.12d | 2026-10-12 | 2026-10-14 | B3.33 05 63.01.25_R SS, B3.33 05 63.01.28 |  | 63.82d | 0d | Labor [17.54 h]; Foreman [8.77 h]; Laboratory Officer [8.77 h]; Carpenter [8.77 h]; Steelfixer [8.77 h]; Mason [8.77 h]; POT Wash out valve Dia. 100 mm on pipes with Dia. 110-400 mm [0.13]; Wash out valve chamber; on 110-400 mm Dia. pipeline [0.13] | 4,992.87 |  | 0.002161291822145 | Cons. | Z4 | Potable | Cons | CS.UNSC | Val&Chs | SUB.C | Rd 04 |
| B3.33 05 63.01.29 |  | Valve & Fitting Installation | 5d | 2026-10-14 | 2026-10-20 | B3.33 05 63.01.26_R |  | 63.82d | 45.5d | Labor [62.37 h]; Plumber Helper [31.18 h]; Plumber [31.18 h]; Operator [62.37 h]; Boom Truck [32 h]; POT Wash out valve Dia. 100 mm on pipes with Dia. 110-400 mm [0.52]; Wash out valve chamber; on 110-400 mm Dia. pipeline [0.52] | 19,971.49 |  | 0.00324193773321747 | Cons. | Z4 | Potable | Cons | CS.UNSC | Val&Chs | SUB.C | Rd 04 |

| ID | WBS | Activity | Duration | Start | Finish | Predecessors | Complete | Planned start | Planned finish | Total float | Free float | Resources | Cost | Actual cost | Weight % | DMM2 Weekly Progress | DMM2 Zones | Networks & Stations | DMM2 Phases | UNASCO | Networks Components | Subcontractors works | Dmm2 Roads |
| --- | --- | --- | --- | --- | --- | --- | --- | --- | --- | --- | --- | --- | --- | --- | --- | --- | --- | --- | --- | --- | --- | --- | --- |
|  | Fire Fighting | **Fire Fighting Network** |  | 2026-06-13 | 2026-11-19 |  |  |  |  |  |  |  |  |  |  |  |  |  |  |  |  |  |  |
|  | HDPE | **HDPE Pipes** |  | 2026-06-13 | 2026-08-31 |  |  |  |  |  |  |  |  |  |  |  |  |  |  |  |  |  |  |
|  | ?250mm | **?250mm** |  | 2026-06-13 | 2026-08-31 |  |  |  |  |  |  |  |  |  |  |  |  |  |  |  |  |  |  |
|  | Depth: 0.0m - 1.5m | **Depth: 0.0m - 1.5m** |  | 2026-06-13 | 2026-08-31 |  |  |  |  |  |  |  |  |  |  |  |  |  |  |  |  |  |  |
| B3.1. 33 14 13..1 |  | Excavation | 61.16d | 2026-06-13 A | 2026-08-23 A | B3.33 14 13.01.0191, B3.33 14 13.01.0193 | 100% |  |  |  |  | Labor [28.35 h]; Foreman [14.17 h]; Operator [28.35 h]; Surveyor [14.17 h]; Surveyor Helper [14.17 h]; Excavator (With Bucket) [16 h]; Water Tanker [16 h]; Dump Truck [16 h]; Plate Compactor [16 h]; Depth: 0.0m - 1.5m [131.51] | 62,927.13 | 62,927.13 | 0.0135564090273793 | Cons. | Z4 | Fire | Cons | CS.UNSC | HDPEs | SUB.C | Rd 04 |
| B3.1. 33 14 13..5 |  | Sand Bedding | 62.16d | 2026-06-14 A | 2026-08-25 A | B3.1. 33 14 13..1 | 100% |  |  |  |  | Labor [28.35 h]; Foreman [14.17 h]; Operator [56.7 h]; Surveyor [14.17 h]; Surveyor Helper [14.17 h]; Loader [16 h]; Water Tanker [16 h]; Dump Truck [16 h]; Plate Compactor [16 h]; Depth: 0.0m - 1.5m [32.88] | 15,733.37 | 15,733.37 | 0.00338944352179868 | Cons. | Z4 | Fire | Cons | CS.UNSC | HDPEs | SUB.C | Rd 04 |
| B3.1. 33 14 13..9 |  | Pipe Laying | 61.16d | 2026-06-17 A | 2026-08-27 A | B3.1. 33 14 13..5 | 100% |  |  |  |  | Labor [28.35 h]; Foreman [14.17 h]; Plumber Helper [14.17 h]; Plumber [14.17 h]; Operator [14.17 h]; Surveyor [14.17 h]; Surveyor Helper [14.17 h]; Mobile Crane [16 h]; Depth: 0.0m - 1.5m [295.89] | 141,587.64 | 141,587.64 | 0.0305022615765573 | Cons. | Z4 | Fire | Cons | CS.UNSC | HDPEs | SUB.C | Rd 04 |
| B3.1. 33 14 13..13 |  | Embedment & Test | 62.32d | 2026-06-20 A | 2026-08-31 A | B3.1. 33 14 13..9 | 100% |  |  |  |  | Labor [56.7 h]; Foreman [28.35 h]; Plumber Helper [28.35 h]; Plumber [28.35 h]; Operator [56.7 h]; Surveyor [28.35 h]; Surveyor Helper [28.35 h]; Loader [32 h]; Water Tanker [32 h]; Dump Truck [32 h]; Plate Compactor [32 h]; Roller Compactor [32 h]; Depth: 0.0m - 1.5m [131.51] | 62,927.13 | 62,927.13 | 0.0135564090273793 | Cons. | Z4 | Fire | Cons | CS.UNSC | HDPEs | SUB.C | Rd 04 |
| B3.1. 33 14 13..17 |  | Backfilling & Warrning Tape | 58.4d | 2026-06-23 A | 2026-08-30 A | B3.1. 33 14 13..13 | 100% |  |  |  |  | Labor [70.87 h]; Foreman [35.44 h]; Operator [141.75 h]; Surveyor [35.44 h]; Surveyor Helper [35.44 h]; Loader [40 h]; Water Tanker [40 h]; Dump Truck [40 h]; Plate Compactor [40 h]; Roller Compactor [40 h]; Depth: 0.0m - 1.5m [65.75] | 31,460.4 | 31,460.4 | 0.00677752198378195 | Cons. | Z4 | Fire | Cons | CS.UNSC | HDPEs | SUB.C | Rd 04 |
|  | Depth: 1.51m - 2.5m | **Depth: 1.51m - 2.5m** |  | 2026-06-14 | 2026-08-31 |  |  |  |  |  |  |  |  |  |  |  |  |  |  |  |  |  |  |
| B3.1. 33 14 13..3 |  | Excavation | 60.16d | 2026-06-14 A | 2026-08-23 A | B3.1. 33 14 13..1 | 100% |  |  |  |  | Labor [42.52 h]; Foreman [21.26 h]; Operator [42.52 h]; Surveyor [21.26 h]; Surveyor Helper [21.26 h]; Excavator (With Bucket) [24 h]; Water Tanker [24 h]; Dump Truck [24 h]; Plate Compactor [24 h]; Depth: 1.51m - 2.5m [8.22] | 4,294.65 | 4,294.65 | 0.000399426118713958 | Cons. | Z4 | Fire | Cons | CS.UNSC | HDPEs | SUB.C | Rd 04 |
| B3.1. 33 14 13..7 |  | Sand Bedding | 60.16d | 2026-06-16 A | 2026-08-25 A | B3.1. 33 14 13..3 | 100% |  |  |  |  | Labor [28.35 h]; Foreman [14.17 h]; Operator [56.7 h]; Surveyor [14.17 h]; Surveyor Helper [14.17 h]; Loader [16 h]; Water Tanker [16 h]; Dump Truck [16 h]; Plate Compactor [16 h]; Depth: 1.51m - 2.5m [2.06] | 1,073.66 | 1,073.66 | 9.98565296784896E-005 | Cons. | Z4 | Fire | Cons | CS.UNSC | HDPEs | SUB.C | Rd 04 |
| B3.1. 33 14 13..11 |  | Pipe Laying | 56.16d | 2026-06-23 A | 2026-08-27 A | B3.1. 33 14 13..7 | 100% |  |  |  |  | Labor [28.35 h]; Foreman [14.17 h]; Plumber Helper [14.17 h]; Plumber [14.17 h]; Operator [14.17 h]; Surveyor [14.17 h]; Surveyor Helper [14.17 h]; Mobile Crane [16 h]; Depth: 1.51m - 2.5m [18.5] | 9,662.95 | 9,662.95 | 0.00089870876710641 | Cons. | Z4 | Fire | Cons | CS.UNSC | HDPEs | SUB.C | Rd 04 |
| B3.1. 33 14 13..15 |  | Embedment & Test | 56.32d | 2026-06-26 A | 2026-08-31 A | B3.1. 33 14 13..11 | 100% | 2026-06-27 | 2026-08-31 |  |  | Labor [56.7 h]; Foreman [28.35 h]; Plumber Helper [28.35 h]; Plumber [28.35 h]; Operator [56.7 h]; Surveyor [28.35 h]; Surveyor Helper [28.35 h]; Loader [32 h]; Water Tanker [32 h]; Dump Truck [32 h]; Plate Compactor [32 h]; Roller Compactor [32 h]; Depth: 1.51m - 2.5m [8.22] | 4,294.65 | 4,294.65 | 0.000399426118713958 | Cons. | Z4 | Fire | Cons | CS.UNSC | HDPEs | SUB.C | Rd 04 |
| B3.1. 33 14 13..19 |  | Backfilling & Warrning Tape | 52.4d | 2026-06-30 A | 2026-08-30 A | B3.1. 33 14 13..15 | 100% |  |  |  |  | Labor [70.87 h]; Foreman [35.44 h]; Operator [141.75 h]; Surveyor [35.44 h]; Surveyor Helper [35.44 h]; Loader [40 h]; Water Tanker [40 h]; Dump Truck [40 h]; Plate Compactor [40 h]; Roller Compactor [40 h]; Depth: 1.51m - 2.5m [4.11] | 2,147.32 | 2,147.32 | 0.00019971305935698 | Cons. | Z4 | Fire | Cons | CS.UNSC | HDPEs | SUB.C | Rd 04 |
|  | Valves & Chambers | **Valves & Chambers** |  | 2026-07-02 | 2026-11-19 |  |  |  |  |  |  |  |  |  |  |  |  |  |  |  |  |  |  |
|  | GV | **Gate Valves** |  | 2026-07-17 | 2026-11-19 |  |  |  |  |  |  |  |  |  |  |  |  |  |  |  |  |  |  |
|  | 1 | **Gate valves dia (250) mm** |  | 2026-07-17 | 2026-11-19 |  |  |  |  |  |  |  |  |  |  |  |  |  |  |  |  |  |  |
| B3.33 14 19.01.134 |  | Burried Isolation Valve Installation (62.50% Completed) | 52d | 2026-07-17 A | 2026-09-15 A | B3.1. 33 14 13..9, B3.1. 33 14 13..11 | 100% | 2026-07-18 | 2026-09-15 |  |  | Labor [19.49 h]; Plumber Helper [9.75 h]; Plumber [9.75 h]; Operator [19.49 h]; Boom Truck [10 h]; FF Gate V dia 250 mm [1.17] | 4,703.54 | 4,703.54 | 0.00144335522534034 | Cons. | Z4 | Fire | Cons | CS.UNSC | Val&Chs | SUB.C | Rd 04 |
| B3.33 14 19.01.134_R |  | Burried Isolation Valve Installation(Rem) | 4d | 2026-11-11 | 2026-11-15 | B3.33 05 63.01.44 FF, B3.1. 33 14 13..9, B3.1. 33 14 13..11, B3.33 14 19.01.134 |  |  |  | 60.32d | 0d | Labor [11.69 h]; Plumber Helper [5.85 h]; Plumber [5.85 h]; Operator [11.69 h]; Boom Truck [6 h]; FF Gate V dia 250 mm [0.7] | 2,822.13 |  | 0.00144335522534034 | Cons. | Z4 | Fire | Cons | CS.UNSC | Val&Chs | SUB.C | Rd 04 |
| B3.33 14 19.01.135 |  | Spindle & Surface Box | 4d | 2026-11-16 | 2026-11-19 | B3.33 14 19.01.134_R |  |  |  | 60.32d | 0d | Labor [31.18 h]; Foreman [15.59 h]; Plumber Helper [15.59 h]; Plumber [15.59 h]; Operator [31.18 h]; JCB [16 h]; FF Gate V dia 250 mm [1.25] | 5,017.11 |  | 0.000962236816893557 | Cons. | Z4 | Fire | Cons | CS.UNSC | Val&Chs | SUB.C | Rd 04 |
|  | 2 | **Air Valves** |  | 2026-07-02 | 2026-10-18 |  |  |  |  |  |  |  |  |  |  |  |  |  |  |  |  |  |  |
|  | 4 | **Air valves on less than 315 mm. (In Chamber)** |  | 2026-07-02 | 2026-10-18 |  |  |  |  |  |  |  |  |  |  |  |  |  |  |  |  |  |  |
| B3.33 05 63.02.82 |  | Land Adjustment & Compaction (50.00% Completed) | 64.36d | 2026-07-02 A | 2026-09-15 A | B3.1. 33 14 13..15, B3.1. 33 14 13..13 | 100% |  |  |  |  | Labor [15.59 h]; Foreman [7.8 h]; Operator [31.18 h]; Surveyor [7.8 h]; Surveyor Helper [7.8 h]; Excavator (With Bucket) [8 h]; Water Tanker [8 h]; Dump Truck [8 h]; Plate Compactor [8 h]; FF Air valve Dia. 50 mm on pipes with Dia. less than 315 mm [0.09]; FF Air valve chamber; on less than 315 mm Dia. pipeline [0.09] | 2,242.8 | 2,242.8 | 0.000842899444995834 | Cons. | Z4 | Fire | Cons | CS.UNSC | Val&Chs | SUB.C | Rd 04 |
| B3.33 05 63.02.80 |  | Foundations (50.00% Completed) | 12d | 2026-09-02 A | 2026-09-15 A | B3.33 05 63.02.82 SS | 100% |  |  |  |  | Labor [23.39 h]; Foreman [11.69 h]; Laboratory Officer [11.69 h]; Carpenter [11.69 h]; Steelfixer [11.69 h]; Mason [11.69 h]; FF Air valve Dia. 50 mm on pipes with Dia. less than 315 mm [0.09]; FF Air valve chamber; on less than 315 mm Dia. pipeline [0.12] | 2,910.62 | 2,910.62 | 0.00109388285056526 | Cons. | Z4 | Fire | Cons | CS.UNSC | Val&Chs | SUB.C | Rd 04 |
| B3.33 05 63.02.81 |  | Chamber Curing, Finishing & Steel Cover (50.00% Completed) | 11d | 2026-09-03 A | 2026-09-15 A | B3.33 05 63.02.83 SS | 100% |  |  |  |  | Labor [31.18 h]; Mason [15.59 h]; FF Air valve Dia. 50 mm on pipes with Dia. less than 315 mm [0.12]; FF Air valve chamber; on less than 315 mm Dia. pipeline [0.09] | 2,322.58 | 2,322.58 | 0.000872882521091683 | Cons. | Z4 | Fire | Cons | CS.UNSC | Val&Chs | SUB.C | Rd 04 |
| B3.33 05 63.02.83 |  | Chambers Walls Conc Cast In Situ (50.00% Completed) | 11d | 2026-09-03 A | 2026-09-15 A | B3.33 05 63.02.80 SS | 100% |  |  |  |  | Labor [23.39 h]; Foreman [11.69 h]; Laboratory Officer [11.69 h]; Carpenter [11.69 h]; Steelfixer [11.69 h]; Mason [11.69 h]; FF Air valve Dia. 50 mm on pipes with Dia. less than 315 mm [0.12]; FF Air valve chamber; on less than 315 mm Dia. pipeline [0.12] | 2,990.4 | 2,990.4 | 0.00112386592666111 | Cons. | Z4 | Fire | Cons | CS.UNSC | Val&Chs | SUB.C | Rd 04 |
| B3.33 05 63.02.80_R |  | Foundations(Rem) | 3.5d | 2026-10-07 | 2026-10-11 | B3.33 05 63.02.82_R SS, B3.33 05 63.02.80 |  |  |  | 65.32d | 0d | Labor [23.39 h]; Foreman [11.69 h]; Laboratory Officer [11.69 h]; Carpenter [11.69 h]; Steelfixer [11.69 h]; Mason [11.69 h]; FF Air valve Dia. 50 mm on pipes with Dia. less than 315 mm [0.09]; FF Air valve chamber; on less than 315 mm Dia. pipeline [0.12] | 2,910.62 |  | 0.00109388285056526 | Cons. | Z4 | Fire | Cons | CS.UNSC | Val&Chs | SUB.C | Rd 04 |
| B3.33 05 63.02.81_R |  | Chamber Curing, Finishing & Steel Cover(Rem) | 4d | 2026-10-07 | 2026-10-11 | B3.33 05 63.02.83_R SS, B3.33 05 63.02.81 |  |  |  | 65.32d | 0d | Labor [31.18 h]; Mason [15.59 h]; FF Air valve Dia. 50 mm on pipes with Dia. less than 315 mm [0.12]; FF Air valve chamber; on less than 315 mm Dia. pipeline [0.09] | 2,322.58 |  | 0.000872882521091683 | Cons. | Z4 | Fire | Cons | CS.UNSC | Val&Chs | SUB.C | Rd 04 |
| B3.33 05 63.02.82_R |  | Land Adjustment & Compaction(Rem) | 3d | 2026-10-07 | 2026-10-10 | B3.1. 33 14 13..15, B3.1. 33 14 13..13, B3.33 05 63.02.82 |  |  |  | 65.32d | 0d | Labor [15.59 h]; Foreman [7.8 h]; Operator [31.18 h]; Surveyor [7.8 h]; Surveyor Helper [7.8 h]; Excavator (With Bucket) [8 h]; Water Tanker [8 h]; Dump Truck [8 h]; Plate Compactor [8 h]; FF Air valve Dia. 50 mm on pipes with Dia. less than 315 mm [0.09]; FF Air valve chamber; on less than 315 mm Dia. pipeline [0.09] | 2,242.8 |  | 0.000842899444995834 | Cons. | Z4 | Fire | Cons | CS.UNSC | Val&Chs | SUB.C | Rd 04 |
| B3.33 05 63.02.83_R |  | Chambers Walls Conc Cast In Situ(Rem) | 3.5d | 2026-10-07 | 2026-10-11 | B3.33 05 63.02.80_R SS, B3.33 05 63.02.83 |  |  |  | 65.32d | 0d | Labor [23.39 h]; Foreman [11.69 h]; Laboratory Officer [11.69 h]; Carpenter [11.69 h]; Steelfixer [11.69 h]; Mason [11.69 h]; FF Air valve Dia. 50 mm on pipes with Dia. less than 315 mm [0.12]; FF Air valve chamber; on less than 315 mm Dia. pipeline [0.12] | 2,990.4 |  | 0.00112386592666111 | Cons. | Z4 | Fire | Cons | CS.UNSC | Val&Chs | SUB.C | Rd 04 |
| B3.33 05 63.02.84 |  | Valve & Fitting Installation | 6d | 2026-10-12 | 2026-10-18 | B3.33 05 63.02.81_R |  |  |  | 65.32d | 40d | Labor [62.37 h]; Plumber Helper [31.18 h]; Plumber [31.18 h]; Operator [62.37 h]; Boom Truck [32 h]; FF Air valve Dia. 50 mm on pipes with Dia. less than 315 mm [0.38]; FF Air valve chamber; on less than 315 mm Dia. pipeline [0.38] | 9,344.99 |  | 0.001756040510408 | Cons. | Z4 | Fire | Cons | CS.UNSC | Val&Chs | SUB.C | Rd 04 |

| ID | WBS | Activity | Duration | Start | Finish | Predecessors | Complete | Total float | Free float | Resources | Cost | Actual cost | Weight % | DMM2 Weekly Progress | DMM2 Zones | Networks & Stations | DMM2 Phases | UNASCO | Networks Components | Subcontractors works | Dmm2 Roads | All Electrical Scope |
| --- | --- | --- | --- | --- | --- | --- | --- | --- | --- | --- | --- | --- | --- | --- | --- | --- | --- | --- | --- | --- | --- | --- |
|  | Washout Valves | **Washout Valves** |  | 2026-07-04 | 2026-10-18 |  |  |  |  |  |  |  |  |  |  |  |  |  |  |  |  |  |
|  | 4 | **Washout valves on 110-400 mm. (In Chamber)** |  | 2026-07-04 | 2026-10-18 |  |  |  |  |  |  |  |  |  |  |  |  |  |  |  |  |  |
| B3.33 05 63.01.62 |  | Land Adjustment & Compaction (50.00% Completed) | 63.36d | 2026-07-04 A | 2026-09-15 A | B3.1. 33 14 13..15, B3.1. 33 14 13..13 | 100% |  |  | Labor [15.59 h]; Foreman [7.8 h]; Operator [31.18 h]; Surveyor [7.8 h]; Surveyor Helper [7.8 h]; Excavator (With Bucket) [8 h]; Water Tanker [8 h]; Dump Truck [8 h]; Plate Compactor [8 h]; FF Wash out valve Dia. 100 mm on pipes with Dia. 110-400 mm [0.1]; FF Wash out valve chamber; on 110-400 mm Dia. pipeline [0.1] | 3,966 | 3,966 | 0.00140430274510935 | Cons. | Z4 | Fire | Cons | CS.UNSC | Val&Chs | SUB.C | Rd 04 |  |
| B3.33 05 63.01.60 |  | Foundations (50.00% Completed) | 11d | 2026-09-03 A | 2026-09-15 A | B3.33 05 63.01.62 SS | 100% |  |  | Labor [23.39 h]; Foreman [11.69 h]; Laboratory Officer [11.69 h]; Carpenter [11.69 h]; Steelfixer [11.69 h]; Mason [11.69 h]; FF Wash out valve Dia. 100 mm on pipes with Dia. 110-400 mm [0.1]; FF Wash out valve chamber; on 110-400 mm Dia. pipeline [0.13] | 4,824.68 | 4,824.68 | 0.00179441315636236 | Cons. | Z4 | Fire | Cons | CS.UNSC | Val&Chs | SUB.C | Rd 04 |  |
| B3.33 05 63.01.63 |  | Chambers Walls Conc Cast In Situ (50.00% Completed) | 10d | 2026-09-05 A | 2026-09-15 A | B3.33 05 63.01.60 SS | 100% |  |  | Labor [23.39 h]; Foreman [11.69 h]; Laboratory Officer [11.69 h]; Carpenter [11.69 h]; Steelfixer [11.69 h]; Mason [11.69 h]; FF Wash out valve Dia. 100 mm on pipes with Dia. 110-400 mm [0.13]; FF Wash out valve chamber; on 110-400 mm Dia. pipeline [0.13] | 4,935.31 | 4,935.31 | 0.00183639589745068 | Cons. | Z4 | Fire | Cons | CS.UNSC | Val&Chs | SUB.C | Rd 04 |  |
| B3.33 05 63.01.61 |  | Chamber Curing, Finishing & Steel Cover (50.00% Completed) | 9d | 2026-09-06 A | 2026-09-15 A | B3.33 05 63.01.63 SS | 100% |  |  | Labor [31.18 h]; Mason [15.59 h]; FF Wash out valve Dia. 100 mm on pipes with Dia. 110-400 mm [0.13]; FF Wash out valve chamber; on 110-400 mm Dia. pipeline [0.1] | 3,810.94 | 3,810.94 | 0.00144628548619767 | Cons. | Z4 | Fire | Cons | CS.UNSC | Val&Chs | SUB.C | Rd 04 |  |
| B3.33 05 63.01.60_R |  | Foundations(Rem) | 3.5d | 2026-10-07 | 2026-10-11 | B3.33 05 63.01.62_R SS, B3.33 05 63.01.60 |  | 65.32d | 0d | Labor [23.39 h]; Foreman [11.69 h]; Laboratory Officer [11.69 h]; Carpenter [11.69 h]; Steelfixer [11.69 h]; Mason [11.69 h]; FF Wash out valve Dia. 100 mm on pipes with Dia. 110-400 mm [0.1]; FF Wash out valve chamber; on 110-400 mm Dia. pipeline [0.13] | 4,824.68 |  | 0.00179441315636236 | Cons. | Z4 | Fire | Cons | CS.UNSC | Val&Chs | SUB.C | Rd 04 |  |
| B3.33 05 63.01.61_R |  | Chamber Curing, Finishing & Steel Cover(Rem) | 4d | 2026-10-07 | 2026-10-11 | B3.33 05 63.01.63_R SS, B3.33 05 63.01.61 |  | 65.32d | 0d | Labor [31.18 h]; Mason [15.59 h]; FF Wash out valve Dia. 100 mm on pipes with Dia. 110-400 mm [0.13]; FF Wash out valve chamber; on 110-400 mm Dia. pipeline [0.1] | 3,810.94 |  | 0.00144628548619767 | Cons. | Z4 | Fire | Cons | CS.UNSC | Val&Chs | SUB.C | Rd 04 |  |
| B3.33 05 63.01.62_R |  | Land Adjustment & Compaction(Rem) | 3d | 2026-10-07 | 2026-10-10 | B3.1. 33 14 13..15, B3.1. 33 14 13..13, B3.33 05 63.01.62 |  | 65.32d | 0d | Labor [15.59 h]; Foreman [7.8 h]; Operator [31.18 h]; Surveyor [7.8 h]; Surveyor Helper [7.8 h]; Excavator (With Bucket) [8 h]; Water Tanker [8 h]; Dump Truck [8 h]; Plate Compactor [8 h]; FF Wash out valve Dia. 100 mm on pipes with Dia. 110-400 mm [0.1]; FF Wash out valve chamber; on 110-400 mm Dia. pipeline [0.1] | 3,966 |  | 0.00140430274510935 | Cons. | Z4 | Fire | Cons | CS.UNSC | Val&Chs | SUB.C | Rd 04 |  |
| B3.33 05 63.01.63_R |  | Chambers Walls Conc Cast In Situ(Rem) | 3.5d | 2026-10-07 | 2026-10-11 | B3.33 05 63.01.60_R SS, B3.33 05 63.01.63 |  | 65.32d | 0d | Labor [23.39 h]; Foreman [11.69 h]; Laboratory Officer [11.69 h]; Carpenter [11.69 h]; Steelfixer [11.69 h]; Mason [11.69 h]; FF Wash out valve Dia. 100 mm on pipes with Dia. 110-400 mm [0.13]; FF Wash out valve chamber; on 110-400 mm Dia. pipeline [0.13] | 4,935.31 |  | 0.00183639589745068 | Cons. | Z4 | Fire | Cons | CS.UNSC | Val&Chs | SUB.C | Rd 04 |  |
| B3.33 05 63.01.64 |  | Valve & Fitting Installation | 6d | 2026-10-12 | 2026-10-18 | B3.33 05 63.01.61_R |  | 65.32d | 40d | Labor [62.37 h]; Plumber Helper [31.18 h]; Plumber [31.18 h]; Operator [62.37 h]; Boom Truck [32 h]; FF Wash out valve Dia. 100 mm on pipes with Dia. 110-400 mm [0.39]; FF Wash out valve chamber; on 110-400 mm Dia. pipeline [0.39] | 14,801.26 |  | 0.00280860549021868 | Cons. | Z4 | Fire | Cons | CS.UNSC | Val&Chs | SUB.C | Rd 04 |  |
|  | 3 | **Fire Hydrant** |  | 2026-06-29 | 2026-11-19 |  |  |  |  |  |  |  |  |  |  |  |  |  |  |  |  |  |
| B3.33 14 19.01.fh47 |  | Riser Pipe & Flanged Fittings Installation (1.00% Completed) | 68d | 2026-06-29 A | 2026-09-15 A | B3.1. 33 14 13..11, B3.1. 33 14 13..9 | 100% |  |  | Labor [0.31 h]; Plumber Helper [0.16 h]; Welder [0.16 h]; Plumber [0.16 h]; Surveyor [0.16 h]; Surveyor Helper [0.16 h]; Welding Machine [0.16 h]; 3-outlet fire hydrant (2 x 2.5 inch and 1 x 4.5 inch) in the form of a separate dry vacuum cylinder [0.01] | 164.15 | 164.15 | 0.00314407764631429 | Cons. | Z4 | Fire | Cons | CS.UNSC | FH | SUB.C | Rd 04 |  |
| B3.33 14 19.01.fh46 |  | Firehydrant Fixing/Installation (1.00% Completed) | 66d | 2026-07-01 A | 2026-09-15 A | B3.33 14 19.01.fh47 SS | 100% |  |  | Labor [0.47 h]; Foreman [0.23 h]; Plumber Helper [0.23 h]; Plumber [0.23 h]; Operator [0.47 h]; Surveyor [0.23 h]; Surveyor Helper [0.23 h]; JCB [0.24 h]; 3-outlet fire hydrant (2 x 2.5 inch and 1 x 4.5 inch) in the form of a separate dry vacuum cylinder [0.04] | 492.46 | 492.46 | 0.0094322329389428 | Cons. | Z4 | Fire | Cons | CS.UNSC | FH | SUB.C | Rd 04 |  |
| B3.33 14 19.01.fh48 |  | Backfilling & Compaction (1.00% Completed) | 50d | 2026-07-20 A | 2026-09-15 A | B3.33 14 19.01.fh5, B3.33 14 19.01.fh46 SS | 100% |  |  | Labor [0.78 h]; Foreman [0.39 h]; Operator [0.78 h]; Surveyor [0.39 h]; Surveyor Helper [0.39 h]; Loader [0.4 h]; Water Tanker [0.4 h]; Dump Truck [0.4 h]; Plate Compactor [0.4 h]; 3-outlet fire hydrant (2 x 2.5 inch and 1 x 4.5 inch) in the form of a separate dry vacuum cylinder [0.01] | 164.15 | 164.15 | 0.00314407764631429 | Cons. | Z4 | Fire | Cons | CS.UNSC | FH | SUB.C | Rd 04 |  |
| B3.33 14 19.01.fh46_R |  | Firehydrant Fixing/Installation(Rem) | 4.97d | 2026-10-07 | 2026-10-12 | B3.33 14 19.01.fh47_R SS, B3.33 14 19.01.fh46 |  | 91.37d | 31.05d | Labor [46.31 h]; Foreman [23.15 h]; Plumber Helper [23.15 h]; Plumber [23.15 h]; Operator [46.31 h]; Surveyor [23.15 h]; Surveyor Helper [23.15 h]; JCB [23.76 h]; 3-outlet fire hydrant (2 x 2.5 inch and 1 x 4.5 inch) in the form of a separate dry vacuum cylinder [4.43] | 48,753.4 |  | 0.0094322329389428 | Cons. | Z4 | Fire | Cons | CS.UNSC | FH | SUB.C | Rd 04 |  |
| B3.33 14 19.01.fh47_R |  | Riser Pipe & Flanged Fittings Installation(Rem) | 3.98d | 2026-10-07 | 2026-10-11 | B3.1. 33 14 13..11, B3.1. 33 14 13..9, B3.33 14 19.01.fh47 |  | 91.37d | 0d | Labor [30.87 h]; Plumber Helper [15.44 h]; Welder [15.44 h]; Plumber [15.44 h]; Surveyor [15.44 h]; Surveyor Helper [15.44 h]; Welding Machine [15.84 h]; 3-outlet fire hydrant (2 x 2.5 inch and 1 x 4.5 inch) in the form of a separate dry vacuum cylinder [1.48] | 16,251.13 |  | 0.00314407764631429 | Cons. | Z4 | Fire | Cons | CS.UNSC | FH | SUB.C | Rd 04 |  |
| B3.33 14 19.01.fh48_R |  | Backfilling & Compaction(Rem) | 6.95d | 2026-11-12 | 2026-11-19 | B3.33 14 19.01.135 FF, B3.33 14 19.01.129 FF, B3.33 14 19.01.fh5, B3.33 14 19.01.fh46_R SS, B3.33 14 19.01.fh48 |  | 60.32d | 7d | Labor [77.18 h]; Foreman [38.59 h]; Operator [77.18 h]; Surveyor [38.59 h]; Surveyor Helper [38.59 h]; Loader [39.6 h]; Water Tanker [39.6 h]; Dump Truck [39.6 h]; Plate Compactor [39.6 h]; 3-outlet fire hydrant (2 x 2.5 inch and 1 x 4.5 inch) in the form of a separate dry vacuum cylinder [1.48] | 16,251.13 |  | 0.00314407764631429 | Cons. | Z4 | Fire | Cons | CS.UNSC | FH | SUB.C | Rd 04 |  |
|  | Dry Networks | **Dry Networks** |  | 2026-10-07 | 2026-11-21 |  |  |  |  |  |  |  |  |  |  |  |  |  |  |  |  |  |
|  | MV Network | **Medium Voltage Network** |  | 2026-10-07 | 2026-10-26 |  |  |  |  |  |  |  |  |  |  |  |  |  |  |  |  |  |
|  | Duct Banks | **Duct Banks** |  | 2026-10-07 | 2026-10-26 |  |  |  |  |  |  |  |  |  |  |  |  |  |  |  |  |  |
|  | 4 Way | **2 Way** |  | 2026-10-07 | 2026-10-26 |  |  |  |  |  |  |  |  |  |  |  |  |  |  |  |  |  |
| B2.31 23 00.644 |  | Excavation | 4d | 2026-10-07 | 2026-10-11 | B6.33 05 40.01.640_R, B6.33 05 39.01.1867 |  | 41.32d | 0d | Labor [46.78 h]; Foreman [23.39 h]; Operator [46.78 h]; Surveyor [23.39 h]; Surveyor Helper [23.39 h]; Excavator (With Bucket) [24 h]; Water Tanker [24 h]; Dump Truck [24 h]; Plate Compactor [24 h]; Excavation for Trench size 40cm wide and 80cm deep (for 1 cable) [100]; Duct bank for MV cables UPVC (2xDia. 150mm) [17.08] | 8,056.11 |  | 0.00333826948299228 | Cons. | Z4 | MV | Cons |  | Cbl&Dct | SUB.C | Rd 04 | allElec |
| B2.33 71 00.296 |  | Shuttering, Steel Fixing Incl. UPVC Pipe & Conc. Cast | 7d | 2026-10-12 | 2026-10-19 | B2.31 23 00.644 |  | 41.32d | 0d | Labor [93.55 h]; Laboratory Officer [46.78 h]; Carpenter [46.78 h]; Steelfixer [46.78 h]; Mason [46.78 h]; Surveyor [46.78 h]; Surveyor Helper [46.78 h]; Excavation for Trench size 40cm wide and 80cm deep (for 1 cable) [300]; Duct bank for MV cables UPVC (2xDia. 150mm) [68.77] | 30,093.96 |  | 0.012263179393698 | Cons. | Z4 | MV | Cons |  | Cbl&Dct | SUB.C | Rd 04 | allElec |
| B2.33 71 00.297 |  | Backfilling & Warrning Tape | 6d | 2026-10-20 | 2026-10-26 | B2.33 71 00.296 |  | 41.32d | 33.41d | Labor [77.96 h]; Foreman [38.98 h]; Operator [155.92 h]; Surveyor [38.98 h]; Surveyor Helper [38.98 h]; Loader [40 h]; Water Tanker [40 h]; Dump Truck [40 h]; Plate Compactor [40 h]; Roller Compactor [40 h]; Excavation for Trench size 40cm wide and 80cm deep (for 1 cable) [100]; Duct bank for MV cables UPVC (2xDia. 150mm) [17.08] | 8,056.11 |  | 0.00333826948299228 | Cons. | Z4 | MV | Cons |  | Cbl&Dct | SUB.C | Rd 04 | allElec |

| ID | WBS | Activity | Duration | Start | Finish | Predecessors | Total float | Free float | Resources | Cost | Weight % | DMM2 Weekly Progress | DMM2 Zones | Networks & Stations | DMM2 Phases | Networks Components | All Electrical Scope | Subcontractors works | Dmm2 Roads |
| --- | --- | --- | --- | --- | --- | --- | --- | --- | --- | --- | --- | --- | --- | --- | --- | --- | --- | --- | --- |
|  | Street Lighting | **Street Lighting** |  | 2026-10-24 | 2026-11-09 |  |  |  |  |  |  |  |  |  |  |  |  |  |  |
|  | SL Poles | **SL Poles** |  | 2026-10-24 | 2026-11-04 |  |  |  |  |  |  |  |  |  |  |  |  |  |  |
|  | Pole (10 M Sngl Arm) | **Pole (10 M Single Arm)** |  | 2026-10-24 | 2026-11-04 |  |  |  |  |  |  |  |  |  |  |  |  |  |  |
| B2.33 71 16.99 |  | Excavation | 2d | 2026-10-24 | 2026-10-26 | B2.33 71 19 46 | 39.68d | 0d | Labor [46.78 h]; Foreman [23.39 h]; Operator [46.78 h]; Surveyor [23.39 h]; Surveyor Helper [23.39 h]; Excavator (With Bucket) [24 h]; Dump Truck [24 h]; Lighting poles with 1 arm, height of ( 10) meters [6.6] | 58,898.5 | 0.0112471278804954 | Cons. | Z4 | SL | Cons | Pls&Lmn | allElec | SUB.C | Rd 04 |
| B2.33 71 16.100 |  | PC & RC Foundation | 2d | 2026-10-26 | 2026-10-28 | B2.33 71 16.99 | 41.68d | 0d | Labor [77.96 h]; Foreman [38.98 h]; Laboratory Officer [38.98 h]; Carpenter [38.98 h]; Steelfixer [38.98 h]; Mason [38.98 h]; Lighting poles with 1 arm, height of ( 10) meters [6.6] | 58,898.5 | 0.0112471278804954 | Cons. | Z4 | SL | Cons | Pls&Lmn | allElec | SUB.C | Rd 04 |
| B2.33 71 16.101 |  | Lighting Poles Installation Incl power box, Cables | 2d | 2026-10-28 | 2026-10-31 | B2.33 71 16.100 | 41.68d | 0d | Labor [93.55 h]; Operator [93.55 h]; Mobile Crane [48 h]; Electrician [46.78 h]; Lighting poles with 1 arm, height of ( 10) meters [13.2] | 117,797 | 0.0224942557609906 | Cons. | Z4 | SL | Cons | Pls&Lmn | allElec | SUB.C | Rd 04 |
| B2.26.56.19.18 |  | Lighting Luminares Inst | 2d | 2026-10-31 | 2026-11-02 | B2.33 71 16.101 | 45.68d | 0d | Labor [62.37 h]; Operator [62.37 h]; Manlift [32 h]; Street Lighting( LED), Lamp Lumen: 14560, Luminare Lumen:12700 , complete with control gear and lamp, (80) WATT. [30.11] | 27,919.41 | 0.0047113256383061 | Cons. | Z4 | SL | Cons | Pls&Lmn | allElec | SUB.C | Rd 04 |
| B2.33 71 16.102 |  | Backfilling, Grouting & Chamfering | 2d | 2026-11-02 | 2026-11-04 | B2.26.56.19.18 | 45.68d | 4d | Labor [93.55 h]; Foreman [46.78 h]; Mason [46.78 h]; Operator [93.55 h]; Surveyor [46.78 h]; Surveyor Helper [46.78 h]; Loader [48 h]; Water Tanker [48 h]; Dump Truck [48 h]; Plate Compactor [48 h]; Lighting poles with 1 arm, height of ( 10) meters [6.6] | 58,898.5 | 0.0112471278804954 | Cons. | Z4 | SL | Cons | Pls&Lmn | allElec | SUB.C | Rd 04 |
|  | Earthing | **Earthing** |  | 2026-11-02 | 2026-11-09 |  |  |  |  |  |  |  |  |  |  |  |  |  |  |
| B2.33 71 19 50 |  | Land Adjustment | 2d | 2026-11-02 | 2026-11-04 | B2.33 71 16.101, B2.33 71 19 47 | 39.68d | 0d | Labor [46.78 h]; Foreman [23.39 h]; Operator [31.18 h]; Surveyor [7.8 h]; Surveyor Helper [7.8 h]; Excavator (With Bucket) [24 h]; Water Tanker [24 h]; Dump Truck [24 h]; Roller Compactor [24 h]; SL Earthing Including lighting poles circuits [0.45] | 904.39 | 0.000454679838542865 | Cons. | Z4 | SL | Cons | Cables | allElec | SUB.C | Rd 04 |
| B2.33 71 19 51 |  | Earth Rods & Conduits | 2d | 2026-11-04 | 2026-11-07 | B2.33 71 19 50 | 41.68d | 0d | Labor [46.78 h]; Foreman [23.39 h]; Electrician [23.39 h]; SL Earthing Including lighting poles circuits [1.33] | 2,672.96 | 0.00134383152280447 | Cons. | Z4 | SL | Cons | Cables | allElec | SUB.C | Rd 04 |
| B2.33 71 19 52 |  | Backfilling | 2d | 2026-11-07 | 2026-11-09 | B2.33 71 19 51 | 41.68d | 0d | Labor [93.55 h]; Foreman [46.78 h]; Operator [93.55 h]; Surveyor [46.78 h]; Surveyor Helper [46.78 h]; Loader [48 h]; Water Tanker [48 h]; Dump Truck [48 h]; Plate Compactor [48 h]; SL Earthing Including lighting poles circuits [0.45] | 904.39 | 0.000454679838542865 | Cons. | Z4 | SL | Cons | Cables | allElec | SUB.C | Rd 04 |
|  | Telecommunication | **Telecommunication Network** |  | 2026-10-27 | 2026-11-21 |  |  |  |  |  |  |  |  |  |  |  |  |  |  |
|  | Ducts | **Ducts** |  | 2026-10-27 | 2026-11-17 |  |  |  |  |  |  |  |  |  |  |  |  |  |  |
|  | (6*50mm) | **Size (6*50mm) HDPE ducts** |  | 2026-10-27 | 2026-10-31 |  |  |  |  |  |  |  |  |  |  |  |  |  |  |
| B2.1.33 81 26.183 |  | Excavation | 2d | 2026-10-27 | 2026-10-28 | B2.33 71 00.267_R | 39.32d | 0d | Labor [31.18 h]; Foreman [15.59 h]; Operator [31.18 h]; Surveyor [15.59 h]; Surveyor Helper [15.59 h]; Excavator (With Bucket) [16 h]; Water Tanker [16 h]; Dump Truck [16 h]; Plate Compactor [16 h]; (6*50mm) HDPE ducts [125.82] | 35,460.35 | 0.00690393952512995 | Cons. | Z4 | Telecom | Cons | DCT&MNH | allElec | SUB.C | Rd 04 |
| B2.1.33 81 26.184 |  | HDPE Pipe, Shuttering, Steel Fixing & Conc. Cast | 2d | 2026-10-29 | 2026-10-31 | B2.1.33 81 26.183 | 49.32d | 0d | Labor [93.55 h]; Laboratory Officer [46.78 h]; Carpenter [46.78 h]; Steelfixer [46.78 h]; Mason [46.78 h]; Surveyor [46.78 h]; Surveyor Helper [46.78 h]; (6*50mm) HDPE ducts [377.45] | 106,381.04 | 0.0207118185753898 | Cons. | Z4 | Telecom | Cons | DCT&MNH | allElec | SUB.C | Rd 04 |
| B2.1.33 81 26.185 |  | Backfilling & Warrning Tape | 2d | 2026-10-29 | 2026-10-31 | B2.1.33 81 26.184 SS, B2.33 71 00.269_R, B2.33 71 00.271_R | 49.32d | 6d | Labor [77.96 h]; Foreman [38.98 h]; Operator [155.92 h]; Surveyor [38.98 h]; Surveyor Helper [38.98 h]; Loader [40 h]; Water Tanker [40 h]; Dump Truck [40 h]; Plate Compactor [40 h]; Roller Compactor [40 h]; (6*50mm) HDPE ducts [125.82] | 35,460.35 | 0.00690393952512995 | Cons. | Z4 | Telecom | Cons | DCT&MNH | allElec | SUB.C | Rd 04 |
|  | (6*50mm+2*32mm) | **Size (6*50mm+2*32mm) HDPE ducts** |  | 2026-10-29 | 2026-11-04 |  |  |  |  |  |  |  |  |  |  |  |  |  |  |
| B2.1.33 81 26.186 |  | Excavation | 2d | 2026-10-29 | 2026-10-31 | B2.1.33 81 26.183, B2.31 23 00.632 | 39.32d | 0d | Labor [31.18 h]; Foreman [15.59 h]; Operator [31.18 h]; Surveyor [15.59 h]; Surveyor Helper [15.59 h]; Excavator (With Bucket) [16 h]; Water Tanker [16 h]; Dump Truck [16 h]; Plate Compactor [16 h]; (6*50mm+2*32mm) HDPE ducts [48.51] | 21,251.23 | 0.00243727564627162 | Cons. | Z4 | Telecom | Cons | DCT&MNH | allElec | SUB.C | Rd 04 |
| B2.1.33 81 26.187 |  | HDPE Pipe, Shuttering, Steel Fixing & Conc. Cast | 2d | 2026-11-01 | 2026-11-02 | B2.1.33 81 26.186 | 45.32d | 0d | Labor [93.55 h]; Laboratory Officer [46.78 h]; Carpenter [46.78 h]; Steelfixer [46.78 h]; Mason [46.78 h]; Surveyor [46.78 h]; Surveyor Helper [46.78 h]; (6*50mm+2*32mm) HDPE ducts [145.49] | 63,742.79 | 0.00731057705386804 | Cons. | Z4 | Telecom | Cons | DCT&MNH | allElec | SUB.C | Rd 04 |
| B2.1.33 81 26.188 |  | Backfilling & Warrning Tape | 2d | 2026-11-03 | 2026-11-04 | B2.1.33 81 26.187 | 45.32d | 8.12d | Labor [77.96 h]; Foreman [38.98 h]; Operator [155.92 h]; Surveyor [38.98 h]; Surveyor Helper [38.98 h]; Loader [40 h]; Water Tanker [40 h]; Dump Truck [40 h]; Plate Compactor [40 h]; Roller Compactor [40 h]; (6*50mm+2*32mm) HDPE ducts [48.51] | 21,251.23 | 0.00243727564627162 | Cons. | Z4 | Telecom | Cons | DCT&MNH | allElec | SUB.C | Rd 04 |
|  | (6*50mm+4*32mm) | **Size (6*50mm+4*32mm) HDPE ducts** |  | 2026-11-01 | 2026-11-17 |  |  |  |  |  |  |  |  |  |  |  |  |  |  |
| B2.1.33 81 26.189 |  | Excavation | 2d | 2026-11-01 | 2026-11-02 | B2.1.33 81 26.186, B2.1.33 81 26.168_R | 39.32d | 0d | Labor [31.18 h]; Foreman [15.59 h]; Operator [31.18 h]; Surveyor [15.59 h]; Surveyor Helper [15.59 h]; Excavator (With Bucket) [16 h]; Water Tanker [16 h]; Dump Truck [16 h]; Plate Compactor [16 h]; (6*50mm+4*32mm) HDPE ducts [15] | 7,441.11 | 0.00340443051603132 | Cons. | Z4 | Telecom | Cons | DCT&MNH | allElec | SUB.C | Rd 04 |
| B2.1.33 81 26.190 |  | HDPE Pipe, Shuttering, Steel Fixing & Conc. Cast | 2d | 2026-11-03 | 2026-11-04 | B2.1.33 81 26.189 | 45.32d | 8.12d | Labor [93.55 h]; Laboratory Officer [46.78 h]; Carpenter [46.78 h]; Steelfixer [46.78 h]; Mason [46.78 h]; Surveyor [46.78 h]; Surveyor Helper [46.78 h]; (6*50mm+4*32mm) HDPE ducts [45] | 22,323.32 | 0.010213291548094 | Cons. | Z4 | Telecom | Cons | DCT&MNH | allElec | SUB.C | Rd 04 |
| B2.1.33 81 26.191 |  | Backfilling & Warrning Tape | 2d | 2026-11-15 | 2026-11-17 | B2.1.33 81 26.190, B2.1.33 81 26.188, B2.33 71 00.259 | 37.2d | 20.88d | Labor [77.96 h]; Foreman [38.98 h]; Operator [155.92 h]; Surveyor [38.98 h]; Surveyor Helper [38.98 h]; Loader [40 h]; Water Tanker [40 h]; Dump Truck [40 h]; Plate Compactor [40 h]; Roller Compactor [40 h]; (6*50mm+4*32mm) HDPE ducts [15] | 7,441.11 | 0.00340443051603132 | Cons. | Z4 | Telecom | Cons | DCT&MNH | allElec | SUB.C | Rd 04 |

| ID | WBS | Activity | Duration | Start | Finish | Predecessors | Complete | Planned start | Planned finish | Total float | Free float | Resources | Cost | Actual cost | Weight % | DMM2 Weekly Progress | DMM2 Zones | Networks & Stations | DMM2 Phases | Networks Components | All Electrical Scope | Subcontractors works | Dmm2 Roads |
| --- | --- | --- | --- | --- | --- | --- | --- | --- | --- | --- | --- | --- | --- | --- | --- | --- | --- | --- | --- | --- | --- | --- | --- |
|  | (2*32mm) | **Size (2*32mm) HDPE ducts** |  | 2026-11-03 | 2026-11-09 |  |  |  |  |  |  |  |  |  |  |  |  |  |  |  |  |  |  |
| B2.1.33 81 26.192 |  | Excavation | 2d | 2026-11-03 | 2026-11-04 | B2.1.33 81 26.189, B2.1.33 81 26.171_R |  |  |  | 39.32d | 0d | Labor [31.18 h]; Foreman [15.59 h]; Operator [31.18 h]; Surveyor [15.59 h]; Surveyor Helper [15.59 h]; Excavator (With Bucket) [16 h]; Water Tanker [16 h]; Dump Truck [16 h]; Plate Compactor [16 h]; (2*32mm) HDPE ducts [8.6] | 1,344.05 |  | 0.000194889802563824 | Cons. | Z4 | Telecom | Cons | DCT&MNH | allElec | SUB.C | Rd 04 |
| B2.1.33 81 26.193 |  | HDPE Pipe, Shuttering, Steel Fixing & Conc. Cast | 2d | 2026-11-05 | 2026-11-07 | B2.1.33 81 26.192 |  |  |  | 43.32d | 0d | Labor [93.55 h]; Laboratory Officer [46.78 h]; Carpenter [46.78 h]; Steelfixer [46.78 h]; Mason [46.78 h]; Surveyor [46.78 h]; Surveyor Helper [46.78 h]; (2*32mm) HDPE ducts [25.8] | 4,032.14 |  | 0.000584669407691468 | Cons. | Z4 | Telecom | Cons | DCT&MNH | allElec | SUB.C | Rd 04 |
| B2.1.33 81 26.194 |  | Backfilling & Warrning Tape | 2d | 2026-11-08 | 2026-11-09 | B2.1.33 81 26.193, B2.1.33 81 26.185 |  |  |  | 43.32d | 27d | Labor [77.96 h]; Foreman [38.98 h]; Operator [155.92 h]; Surveyor [38.98 h]; Surveyor Helper [38.98 h]; Loader [40 h]; Water Tanker [40 h]; Dump Truck [40 h]; Plate Compactor [40 h]; Roller Compactor [40 h]; (2*32mm) HDPE ducts [8.6] | 1,344.05 |  | 0.000194889802563824 | Cons. | Z4 | Telecom | Cons | DCT&MNH | allElec | SUB.C | Rd 04 |
|  | Manholes | **Manholes** |  | 2026-11-05 | 2026-11-21 |  |  |  |  |  |  |  |  |  |  |  |  |  |  |  |  |  |  |
|  | Manhole Type 1 | **Manhole Type 1** |  | 2026-11-05 | 2026-11-21 |  |  |  |  |  |  |  |  |  |  |  |  |  |  |  |  |  |  |
| B2.31 23 00.636 |  | Excavation | 2d | 2026-11-05 | 2026-11-07 | B2.1.33 81 26.192, B2.31 23 00.630_R |  |  |  | 39.32d | 0d | Labor [31.18 h]; Foreman [15.59 h]; Operator [31.18 h]; Surveyor [15.59 h]; Surveyor Helper [15.59 h]; Excavator (With Bucket) [16 h]; Water Tanker [16 h]; Dump Truck [16 h]; Plate Compactor [16 h]; Manhole Type 1 [1.24] | 8,766.4 |  | 0.00167335317103356 | Cons. | Z4 | Telecom | Cons | DCT&MNH | allElec | SUB.C | Rd 04 |
| B2.33 71 00.280 |  | Manhole Installation | 2d | 2026-11-08 | 2026-11-09 | B2.31 23 00.636 |  |  |  | 41.32d | 8d | Labor [31.18 h]; Laboratory Officer [15.59 h]; Carpenter [15.59 h]; Steelfixer [15.59 h]; Mason [15.59 h]; Surveyor [15.59 h]; Surveyor Helper [15.59 h]; Manhole Type 1 [3.72] | 26,299.19 |  | 0.00502005951310069 | Cons. | Z4 | Telecom | Cons | DCT&MNH | allElec | SUB.C | Rd 04 |
| B2.33 71 00.281 |  | Backfilling & Warrning Tape | 2d | 2026-11-19 | 2026-11-21 | B2.33 71 00.280, B2.33 71 00.251 |  |  |  | 33.32d | 17d | Labor [77.96 h]; Foreman [38.98 h]; Operator [155.92 h]; Surveyor [38.98 h]; Surveyor Helper [38.98 h]; Loader [40 h]; Water Tanker [40 h]; Dump Truck [40 h]; Plate Compactor [40 h]; Roller Compactor [40 h]; Manhole Type 1 [1.24] | 8,766.4 |  | 0.00167335317103356 | Cons. | Z4 | Telecom | Cons | DCT&MNH | allElec | SUB.C | Rd 04 |
|  | Manhole Type 2 | **Manhole Type 2** |  | 2026-11-08 | 2026-11-14 |  |  |  |  |  |  |  |  |  |  |  |  |  |  |  |  |  |  |
| B2.31 23 00.637 |  | Excavation | 2d | 2026-11-08 | 2026-11-09 | B2.31 23 00.636, B2.31 23 00.631_R |  |  |  | 39.32d | 0d | Labor [31.18 h]; Foreman [15.59 h]; Operator [31.18 h]; Surveyor [15.59 h]; Surveyor Helper [15.59 h]; Excavator (With Bucket) [16 h]; Water Tanker [16 h]; Dump Truck [16 h]; Plate Compactor [16 h]; Manhole Type 2 [0.52] | 3,287.69 |  | 0.000634453248743172 | Cons. | Z4 | Telecom | Cons | DCT&MNH | allElec | SUB.C | Rd 04 |
| B2.33 71 00.282 |  | Manhole Installation | 2d | 2026-11-10 | 2026-11-11 | B2.31 23 00.637 |  |  |  | 39.32d | 0d | Labor [31.18 h]; Laboratory Officer [15.59 h]; Carpenter [15.59 h]; Steelfixer [15.59 h]; Mason [15.59 h]; Surveyor [15.59 h]; Surveyor Helper [15.59 h]; Manhole Type 2 [1.56] | 9,863.09 |  | 0.00190336462403523 | Cons. | Z4 | Telecom | Cons | DCT&MNH | allElec | SUB.C | Rd 04 |
| B2.33 71 00.283 |  | Backfilling & Warrning Tape | 2d | 2026-11-12 | 2026-11-14 | B2.33 71 00.282 |  |  |  | 39.32d | 23d | Labor [77.96 h]; Foreman [38.98 h]; Operator [155.92 h]; Surveyor [38.98 h]; Surveyor Helper [38.98 h]; Loader [40 h]; Water Tanker [40 h]; Dump Truck [40 h]; Plate Compactor [40 h]; Roller Compactor [40 h]; Manhole Type 2 [0.52] | 3,287.69 |  | 0.000634453248743172 | Cons. | Z4 | Telecom | Cons | DCT&MNH | allElec | SUB.C | Rd 04 |
|  | Earth & Road Works | **Earth & Road Works** |  | 2025-12-01 | 2026-11-08 |  |  |  |  |  |  |  |  |  |  |  |  |  |  |  |  |  |  |
|  | Earth Works | **Earth Works** |  | 2025-12-01 | 2026-03-14 |  |  |  |  |  |  |  |  |  |  |  |  |  |  |  |  |  |  |
| B1.2.31 23 16.01.17 |  | Roadway Excavation | 2d | 2025-12-01 A | 2025-12-03 A | DMM2-Eng-MS-78 | 100% |  |  |  |  | Roadway Excavation for cuttings (all types of soil) [16921.4]; Labor [28.35 h]; Foreman [14.17 h]; Operator [28.35 h]; Surveyor [14.17 h]; Surveyor Helper [14.17 h]; Excavator (With Bucket) [16 h]; Water Tanker [16 h]; Dump Truck [16 h] | 252,568.25 | 252,568.25 | 3.08416876064171E-005 | Cons. | Z4 | Roads | Cons |  |  |  | Rd 04 |
| B1.2.31 23 23.01.17 |  | Embankment Backfiling | 79.8d | 2025-12-03 A | 2026-03-14 A | B1.2.31 23 16.01.17 | 100% |  |  |  |  | Embankment backfiling [10098.4]; Labor [42.52 h]; Foreman [21.26 h]; Operator [42.52 h]; Surveyor [21.26 h]; Surveyor Helper [21.26 h]; Loader [24 h]; Water Tanker [24 h]; Dump Truck [24 h]; Plate Compactor [24 h]; Roller Compactor [24 h] | 274,857.77 | 274,857.77 | 0.0364787601745446 | Cons. | Z4 | Roads | Cons |  |  |  | Rd 04 |
|  | Earth Layers | **Earth Layers** |  | 2026-01-24 | 2026-10-08 |  |  |  |  |  |  |  |  |  |  |  |  |  |  |  |  |  |  |
| B1.2.32 11 13.01.17 |  | Subgrade (65.00% Completed) | 186.41d | 2026-01-24 A | 2026-09-15 A | B1.2.31 23 23.01.17 | 100% |  |  |  |  | Subgrade [761.14]; Labor [30.41 h]; Foreman [15.2 h]; Operator [30.41 h]; Surveyor [15.2 h]; Surveyor Helper [15.2 h]; Grader [15.6 h]; Loader [15.6 h]; Water Tanker [15.6 h]; Dump Truck [15.6 h]; Plate Compactor [15.6 h]; Roller Compactor [15.6 h] | 22,721.53 | 22,721.53 | 0.0204983911272977 | Cons. | Z4 | Roads | Cons | Roads |  |  | Rd 04 |
| B1.2.32 11 23.01.17 |  | Aggregate Base Course (35.00% Completed) | 97.97d | 2026-05-20 A | 2026-09-15 A | B1.2.32 11 13.01.17 SS | 100% |  |  |  |  | Aggregate base course [273.23]; Labor [10.91 h]; Foreman [5.46 h]; Operator [10.91 h]; Surveyor [5.46 h]; Surveyor Helper [5.46 h]; Grader [5.6 h]; Loader [5.6 h]; Water Tanker [5.6 h]; Dump Truck [5.6 h]; Plate Compactor [5.6 h]; Roller Compactor [5.6 h] | 23,749.74 | 23,749.74 | 0.0386348351509915 | Cons. | Z4 | Roads | Cons | Roads |  |  | Rd 04 |
| B1.2.32 11 13.01.17_R |  | Subgrade(Rem) | 1.05d | 2026-09-19 A | 2026-09-22 A | B1.2.31 23 23.01.17, B1.2.32 11 13.01.17 | 100% | 2026-09-16 | 2026-09-17 |  |  | Subgrade [409.84]; Labor [16.37 h]; Foreman [8.19 h]; Operator [16.37 h]; Surveyor [8.19 h]; Surveyor Helper [8.19 h]; Grader [8.4 h]; Loader [8.4 h]; Water Tanker [8.4 h]; Dump Truck [8.4 h]; Plate Compactor [8.4 h]; Roller Compactor [8.4 h] | 12,234.67 | 12,234.67 | 0.0204983911272977 | Cons. | Z4 | Roads | Cons | Roads |  |  | Rd 04 |
| B1.2.32 11 23.01.17_R |  | Aggregate Base Course(Rem) | 1.3d | 2026-10-07 | 2026-10-08 | B1.2.32 11 13.01.17_R SS, B1.2.32 11 23.01.17 |  |  |  | 16.02d | 0d | Aggregate base course [507.43]; Labor [20.27 h]; Foreman [10.14 h]; Operator [20.27 h]; Surveyor [10.14 h]; Surveyor Helper [10.14 h]; Grader [10.4 h]; Loader [10.4 h]; Water Tanker [10.4 h]; Dump Truck [10.4 h]; Plate Compactor [10.4 h]; Roller Compactor [10.4 h] | 44,106.66 |  | 0.0386348351509915 | Cons. | Z4 | Roads | Cons | Roads |  |  | Rd 04 |
|  | Interlock | **Interlock** |  | 2026-10-08 | 2026-10-12 |  |  |  |  |  |  |  |  |  |  |  |  |  |  |  |  |  |  |
| B1.2.32 14 13.13.17 |  | 60mm thick - Interlocking Block Pavers | 3d | 2026-10-08 | 2026-10-12 | B1.2.32 11 23.01.17_R |  |  |  | 16.02d | 0d | 60mm thick - Interlocking block pavers for sidewalks and medians [278.7]; Labor [93.55 h]; Foreman [46.78 h]; Mason [46.78 h]; Operator [93.55 h]; JCB [48 h] | 18,596.77 |  | 0.0103244382423179 | Cons. | Z4 | Roads | Cons | Roads |  |  | Rd 04 |

| ID | WBS | Activity | Duration | Start | Finish | Predecessors | Total float | Free float | Resources | Cost | Weight % | DMM2 Weekly Progress | DMM2 Zones | Networks & Stations | DMM2 Phases | Networks Components | Dmm2 Roads |
| --- | --- | --- | --- | --- | --- | --- | --- | --- | --- | --- | --- | --- | --- | --- | --- | --- | --- |
|  | Curbstone | **Curbstone** |  | 2026-10-12 | 2026-11-01 |  |  |  |  |  |  |  |  |  |  |  |  |
|  | Pre Install | **Pre-Installation** |  | 2026-10-12 | 2026-10-20 |  |  |  |  |  |  |  |  |  |  |  |  |
| B2.31 23 00.481 |  | Excavation | 2d | 2026-10-12 | 2026-10-14 | B1.2.32 14 13.13.17 | 16.02d | 0d | Curb Stone, Type K1 [45.01]; Dropped Curb, Type K3 [1.39]; Edge Curb, Type K4 [33.03]; Heel Curb, Type K5 [21.61]; Transition Curb [0.18]; Labor [77.96 h]; Foreman [38.98 h]; Operator [77.96 h]; Surveyor [38.98 h]; Surveyor Helper [38.98 h]; JCB [40 h]; Water Tanker [40 h]; Dump Truck [40 h]; Plate Compactor [40 h] | 7,405.12 | 0.00418182735714062 | Cons. | Z4 | Roads | Cons | Roads | Rd 04 |
| B1.2.32 14 13.13.217 |  | PCC | 2d | 2026-10-14 | 2026-10-17 | B2.31 23 00.481 | 16.02d | 0d | Curb Stone, Type K1 [45.01]; Dropped Curb, Type K3 [1.39]; Edge Curb, Type K4 [33.03]; Heel Curb, Type K5 [21.61]; Transition Curb [0.22]; Labor [46.78 h]; Mason [23.39 h]; Surveyor [23.39 h]; Surveyor Helper [23.39 h] | 7,408.47 | 0.00418385808417316 | Cons. | Z4 | Roads | Cons | Roads | Rd 04 |
| 32 16 13.0017 |  | Haunching | 3d | 2026-10-17 | 2026-10-20 | B1.2.32 14 13.13.217 | 16.02d | 0d | Curb Stone, Type K1 [45.01]; Dropped Curb, Type K3 [1.39]; Edge Curb, Type K4 [33.03]; Heel Curb, Type K5 [21.61]; Transition Curb [0.18]; Labor [93.55 h]; Carpenter [46.78 h]; Mason [46.78 h]; Surveyor [46.78 h]; Surveyor Helper [46.78 h] | 7,405.12 | 0.00418182735714062 | Cons. | Z4 | Roads | Cons | Roads | Rd 04 |
|  | Installation | **Installation** |  | 2026-10-20 | 2026-10-29 |  |  |  |  |  |  |  |  |  |  |  |  |
| B1.2.32 16.13.01.17 |  | Curb Stone, Type K1 | 3d | 2026-10-20 | 2026-10-24 | 32 16 13.0017 | 16.02d | 0d | Curb Stone, Type K1 [135.04]; Labor [46.78 h]; Foreman [23.39 h]; Mason [23.39 h]; Operator [46.78 h]; Surveyor [23.39 h]; Surveyor Helper [23.39 h]; JCB [24 h] | 10,196.27 | 0.00601390005677247 | Cons. | Z4 | Roads | Cons | Roads | Rd 04 |
| B1.2.32 16.13.02.16 |  | Dropped Curb, Type K3 | 1d | 2026-10-24 | 2026-10-25 | B1.2.32 16.13.01.17, 32 16 13.0017 | 16.02d | 0d | Dropped Curb, Type K3 [1.6]; Labor [31.18 h]; Foreman [15.59 h]; Mason [15.59 h]; Operator [31.18 h]; Surveyor [15.59 h]; Surveyor Helper [15.59 h]; JCB [16 h] | 129.62 | 7.57489737063692E-005 | Cons. | Z4 | Roads | Cons | Roads | Rd 04 |
| B1.2.32 16.13.03.17 |  | Edge Curb, Type K4 | 2d | 2026-10-25 | 2026-10-27 | B1.2.32 16.13.02.16, 32 16 13.0017 | 16.02d | 0d | Edge Curb, Type K4 [99.09]; Labor [46.78 h]; Foreman [23.39 h]; Mason [23.39 h]; Operator [46.78 h]; Surveyor [23.39 h]; Surveyor Helper [23.39 h]; JCB [24 h] | 7,482.16 | 0.00412049518145065 | Cons. | Z4 | Roads | Cons | Roads | Rd 04 |
| B1.2.32 16.13.0417 |  | Heel Curb, Type K5 | 2d | 2026-10-25 | 2026-10-27 | B1.2.32 16.13.03.17 SS, 32 16 13.0017 | 16.02d | 0d | Heel Curb, Type K5 [64.82]; Labor [31.18 h]; Foreman [15.59 h]; Mason [15.59 h]; Operator [31.18 h]; Surveyor [15.59 h]; Surveyor Helper [15.59 h]; JCB [16 h] | 4,154.78 | 0.00218671204755312 | Cons. | Z4 | Roads | Cons | Roads | Rd 04 |
| B1.2.32 16.13.05.16 |  | Transition Curb | 2d | 2026-10-27 | 2026-10-29 | B1.2.32 16.13.0417, 32 16 13.0017 | 16.02d | 0d | Transition Curb [0.7]; Labor [31.18 h]; Foreman [15.59 h]; Mason [15.59 h]; Operator [31.18 h]; Surveyor [15.59 h]; Surveyor Helper [15.59 h]; JCB [16 h] | 56.58 | 3.43706058912143E-005 | Cons. | Z4 | Roads | Cons | Roads | Rd 04 |
|  | Finishing | **Finishing** |  | 2026-10-29 | 2026-11-01 |  |  |  |  |  |  |  |  |  |  |  |  |
| 32 16 13.017 |  | Finishing, Fareface | 2d | 2026-10-29 | 2026-11-01 | B1.2.32 16.13.01.17, B1.2.32 16.13.02.16, B1.2.32 16.13.03.17, B1.2.32 16.13.0417, B1.2.32 16.13.05.16 | 16.02d | 0d | Curb Stone, Type K1 [30]; Dropped Curb, Type K3 [1.21]; Edge Curb, Type K4 [22.02]; Heel Curb, Type K5 [14.4]; Transition Curb [0.23]; Labor [31.18 h]; Mason [15.59 h] | 4,968.17 | 0.00280644810602417 | Cons. | Z4 | Roads | Cons | Roads | Rd 04 |
|  | Asphalt Layers | **Asphalt Layers** |  | 2026-10-08 | 2026-11-03 |  |  |  |  |  |  |  |  |  |  |  |  |
| B1.2.32 11 26.01.17 |  | Bituminous Base Course including Prime Coat (MC1) and tack coat (RC2) | 2d | 2026-10-08 | 2026-10-11 | B1.2.32 11 23.01.17_R | 34.02d | 18d | Bituminous base course(Grading I - Class A) [534.88]; Labor [31.18 h]; Foreman [15.59 h]; Operator [31.18 h]; Surveyor [15.59 h]; Surveyor Helper [15.59 h]; Dump Truck [16 h]; Roller Compactor [16 h]; MC1/RC2 Sprayer [16 h] | 293,986.27 | 0.162173685245096 | Cons. | Z4 | Roads | Cons | Roads | Rd 04 |
| B1.2.32 12 16.01.17 |  | Bituminous concrete Wearing Course, including tack coat (RC2) | 2d | 2026-11-01 | 2026-11-03 | B1.2.32 11 26.01.17, 32 16 13.017 | 16.02d | 0d | Bituminous concrete wearing course, after compaction(Grading I - Class A), including tack coat (RC2) [195.67]; Labor [31.18 h]; Foreman [15.59 h]; Operator [31.18 h]; Surveyor [15.59 h]; Surveyor Helper [15.59 h]; Dump Truck [16 h]; Roller Compactor [16 h]; MC1/RC2 Sprayer [16 h] | 115,446.28 | 0.063667034956749 | Cons. | Z4 | Roads | Cons | Roads | Rd 04 |
|  | Pavement Marking | **Pavement Marking** |  | 2026-11-05 | 2026-11-08 |  |  |  |  |  |  |  |  |  |  |  |  |
| B1.2.32 17 23.01.17 |  | Retroreflective Thermoplastic White Traffic lines | 2d | 2026-11-05 | 2026-11-08 | B1.2.32 12 16.01.17, B1.2.32 12 19.13.017 | 86.02d | 35.11d | Retroreflective Thermoplastic White Traffic lines [66.34]; Labor [46.78 h]; Mason [23.39 h]; Road Marking Machine [24 h] | 1,980.49 | 0.000995689706230307 | Cons. | Z4 | Roads | Cons | Roads | Rd 04 |
| B1.2.32 17 23.02.17 |  | Retroreflective Thermoplastic Yellow, Traffic lines | 2d | 2026-11-05 | 2026-11-08 | B1.2.32 12 16.01.17, B1.2.32 12 19.13.017 | 86.02d | 35.11d | Retroreflective Thermoplastic Yellow, Traffic lines [31.8]; Labor [31.18 h]; Mason [15.59 h]; Road Marking Machine [16 h] | 949.3 | 0.000477258231573754 | Cons. | Z4 | Roads | Cons | Roads | Rd 04 |
|  | Road Misc. | **Miscellaneous** |  | 2026-11-03 | 2026-11-05 |  |  |  |  |  |  |  |  |  |  |  |  |
| B1.2.32 12 19.13.017 |  | Speed Tables | 2d | 2026-11-03 | 2026-11-05 | B1.2.32 12 16.01.17 | 86.02d | 0d | Asphalt speed table [2]; Labor [31.18 h]; Foreman [15.59 h]; Operator [31.18 h]; JCB [16 h]; Roller Compactor [16 h] | 24,408.46 | 0.0122713455769057 | Cons. | Z4 | Roads | Cons | Roads | Rd 04 |
| B1.2.32 12 19.13.16 |  | Wheels stoppers (precast concrete) | 2d | 2026-11-03 | 2026-11-05 | B1.2.32 12 16.01.17 | 16.02d |  | Wheels stopper (precast concrete) [32]; Labor [31.18 h]; Foreman [15.59 h]; Operator [31.18 h]; Boom Truck [16 h] | 5,563.02 | 0.00279680739479403 | Cons. | Z4 | Roads | Cons | Roads | Rd 04 |
|  | Landscape | **Landscape** |  | 2026-12-30 | 2027-01-05 |  |  |  |  |  |  |  |  |  |  |  |  |
|  | Trees | **Trees** |  | 2026-12-30 | 2027-01-05 |  |  |  |  |  |  |  |  |  |  |  |  |
| B7.32 93 43.03 |  | Tamarindus indica | 5d | 2026-12-30 | 2027-01-05 | B7.32 93 43.02-191 | 3d | 0d | Labor [77.96 h]; Operator [77.96 h]; Surveyor [38.98 h]; Surveyor Helper [38.98 h]; JCB [40 h]; Water Tanker [40 h]; Landscape Specialist [38.98 h]; Tamarindus indica [157.73] | 822,638.42 | 0.382813012162432 | Cons. | Z4 | Landscp | Cons | Lndscp | Rd 04 |

| ID | WBS | Activity | Duration | Start | Finish | Predecessors | Complete | Remaining | Planned start | Planned finish | Total float | Free float | Calendar | Resources | Cost | DMM2 Weekly Progress | DMM2 Phases | Weight % | Ac dates > DD | DMM2 Zones | Networks & Stations | UNASCO | Subcontractors works |
| --- | --- | --- | --- | --- | --- | --- | --- | --- | --- | --- | --- | --- | --- | --- | --- | --- | --- | --- | --- | --- | --- | --- | --- |
|  | Prov. Sum | **Provisional Sum** |  | 2026-12-14 | 2026-12-29 |  |  |  |  |  |  |  |  |  |  |  |  |  |  |  |  |  |  |
| Prov.Sum 01 |  | Additional Works | 12d | 2026-12-14 | 2026-12-29 | DMM-Mil-48 |  |  |  |  | 8d | 0d | Corporate - Standard Full Time-26 | Provisional Sum [192901] | 192,900.72 | Prov.Sum | Cons |  |  |  |  |  |  |
|  | T&C | **Testing & Commissioning** |  | 2026-09-08 | 2027-01-03 |  |  |  |  |  |  |  |  |  |  |  |  |  |  |  |  |  |  |
|  | Zone 01 | **Zone 01** |  | 2026-09-08 | 2026-12-27 |  |  |  |  |  |  |  |  |  |  |  |  |  |  |  |  |  |  |
|  | Wet | **Wet Networks & Stations** |  | 2026-09-08 | 2026-12-12 |  |  |  |  |  |  |  |  |  |  |  |  |  |  |  |  |  |  |
|  | Sewer | **Sewerage Network** |  | 2026-09-08 | 2026-12-12 |  |  |  |  |  |  |  |  |  |  |  |  |  |  |  |  |  |  |
| T&C-Sew-01 |  | Testing & Commissioning for Sewerage Network | 6d | 2026-09-08 A | 2026-12-12 | B6.33 05 39.01.1867, B6.33 05 39.01.817_R SS, DMM-Mil-48 FF, DMM-Mil-13 FF | 90% | 0.6d | 2026-11-19 | 2026-11-26 | 23.32d | 0d |  | Labor [721.28 h]; Plumber Helper [360.64 h]; Plumber [360.64 h]; Operator [721.28 h]; Water Tanker [48 h]; Sew Dia. 150mm Depth: 1.51m - 2.5m; Sew Dia. 200mm Depth: 1.51m - 2.5m; Sew Dia. 200mm Depth: 2.51m - 3.5m; Sew Dia. 200mm Depth: 3.51m - 4.5m; MH depth 0 - 1.5m; MH depth 1.51 - 2.5m; MH depth 2.51 - 3.5m; MH depth 2.51- 3.5 m with back drop; MH depth 3.51 -4.5m; MH depth 3.51- 4.5 m with back drop |  | Test | Test&HO | 0.266902580456848 | UDF_G1 | Z1 | Sew | TS.UNSC | SUB.C |
|  | Storm | **Storm Network** |  | 2026-09-12 | 2026-12-12 |  |  |  |  |  |  |  |  |  |  |  |  |  |  |  |  |  |  |
| T&C-Strm-01 |  | Testing & Commissioning for Storm Network | 6d | 2026-09-12 A | 2026-12-12 | B6.33 05 40.01.1000 FF, B6.33 05 40.01.840 FF, B6.33 05 63.044 FF, DMM-Mil-48 FF, T&C-Sew-01 SS, DMM-Mil-6 FF | 90% | 0.6d | 2026-11-19 | 2026-11-26 | 11.92d | 0d |  | Labor [721.28 h]; Plumber Helper [360.64 h]; Plumber [360.64 h]; Operator [721.28 h]; Water Tanker [48 h]; Single Catch basin; Double Catch basin; MH depth 1.50 - 2.5m; MH depth 2.51 - 3.5m; MH depth 3.51 - 4.5m; Storm MH depth 2.51 - 3.5m; Storm MH depth 3.51 -4.5m; MH depth 4.51 -5.5m; Depth: 1.51m - 2.5m; 1.51m - 2.5m; 2.51m - 3.5m; 3.51m - 4.5m |  | Test | Test&HO | 0.719288834872226 | UDF_G1 | Z1 | Storm | TS.UNSC | SUB.C |
|  | Potable | **Potable Network** |  | 2026-12-05 | 2026-12-12 |  |  |  |  |  |  |  |  |  |  |  |  |  |  |  |  |  |  |
| T&C-Pot-01 |  | Testing & Commissioning for Potable Network | 7d | 2026-12-05 | 2026-12-12 | T&C-Strm-01 FF, B3.33 05 63.01.29 FF, B3.33 14 13.01.01109_R SS, B3.33 14 19.01.fm18 FF, DMM-Mil-48 FF, T&C-Strm-01 SS |  |  |  |  | 18.32d | 0d |  | Labor [841.49 h]; Plumber Helper [420.75 h]; Plumber [420.75 h]; Operator [841.49 h]; Water Tanker [56 h]; POT Gate V dia 110 mm; POT Air valve Dia. 50 mm on pipes with Dia. less than 315 mm; Air valve chamber; on less than 315 mm Dia. pipeline; Depth: 0.0m - 1.5m; Depth: 1.51m - 2.5m |  | Test | Test&HO | 0.0587589383230577 |  | Z1 | Potable | TS.UNSC | SUB.C |
|  | Fire Fighting | **Fire Fighting Network** |  | 2026-12-06 | 2026-12-12 |  |  |  |  |  |  |  |  |  |  |  |  |  |  |  |  |  |  |
| T&C-FF-01 |  | Testing & Commissioning for Fire Fighting Network | 6d | 2026-12-06 | 2026-12-12 | T&C-Pot-01 FF, B3.33 05 63.01.64 FF, B3.33 05 63.02.84 FF, B3.33 14 19.01.fm51 FF, DMM-Mil-48 FF, T&C-Pot-01 SS |  |  |  |  | 18.32d | 0d |  | Labor [721.28 h]; Plumber Helper [360.64 h]; Plumber [360.64 h]; Operator [721.28 h]; Water Tanker [48 h]; FF Gate V dia 250 mm; FF Wash out valve Dia. 100 mm on pipes with Dia. 110-400 mm; FF Air valve Dia. 50 mm on pipes with Dia. less than 315 mm; 3-outlet fire hydrant (2 x 2.5 inch and 1 x 4.5 inch) in the form of a separate dry vacuum cylinder; FF Wash out valve chamber; on 110-400 mm Dia. pipeline; FF Air valve chamber; on less than 315 mm Dia. pipeline; Depth: 0.0m - 1.5m; Depth: 1.51m - 2.5m |  | Test | Test&HO | 0.240787205668168 |  | Z1 | Fire | TS.UNSC | SUB.C |
|  | TSE | **TSE Network** |  | 2026-12-06 | 2026-12-12 |  |  |  |  |  |  |  |  |  |  |  |  |  |  |  |  |  |  |
| T&C-TSE-01 |  | Testing & Commissioning for TSE Network | 6d | 2026-12-06 | 2026-12-12 | T&C-FF-01 FF, B3.33 05 63.01.74 FF, B3.33 05 63.02.99 FF, DMM-Mil-48 FF, T&C-FF-01 SS |  |  |  |  | 18.32d | 0d |  | Labor [721.28 h]; Plumber Helper [360.64 h]; Plumber [360.64 h]; Operator [721.28 h]; Water Tanker [48 h]; Dia. 90mm 0.0m - 1.5m; Dia. 110mm 0.0m - 1.5m; Solenoid Valve box. 1 Solenoid valve Dia. 1 inch.; Solenoid Valve box. 1 Solenoid valve Dia. 1.5 inch.; Solenoid Valve box. 1 Solenoid valve Dia. 2.0inch.; TSE Gate V Dia. 100 mm; TSE Wash out valve Dia. 100 mm on pipes with Dia. 110-400 mm; TSE Air valve Dia. 50 mm on pipes with Dia. less than 315 mm |  | Test | Test&HO | 0.0504973490995556 |  | Z1 | TSE | TS.UNSC | SUB.C |
|  | Dry | **Dry Networks** |  | 2026-12-13 | 2026-12-27 |  |  |  |  |  |  |  |  |  |  |  |  |  |  |  |  |  |  |
|  | MV | **Medium Voltage Network** |  | 2026-12-13 | 2026-12-16 |  |  |  |  |  |  |  |  |  |  |  |  |  |  |  |  |  |  |
| T&C-MV-01 |  | Testing & Commissioning for Medium Voltage Network | 4d | 2026-12-13 | 2026-12-16 | B2.33 71 00.021_R, B2.33 71 00.213, B2.33 71 49.23.05, B2.33 71 00.297, B2.33 71 49.23.064, DMM-Mil-48, B1.2.31 23 16.01.17, B2.33 71 16.031 |  |  |  |  | 1.32d | 0d |  | Labor [721.28 h]; Foreman [360.64 h]; Electrician [360.64 h]; Cable 13.8 kV 3Cx 500 mm² Al XLPE,/LLDPE / Unarmored |  | Test | Test&HO | 0.144659418003559 |  | Z1 | MV |  | SUB.C |
|  | LV | **Low Voltage Network** |  | 2026-12-17 | 2026-12-20 |  |  |  |  |  |  |  |  |  |  |  |  |  |  |  |  |  |  |
| T&C-LV-01 |  | Testing & Commissioning for Low Voltage Network | 3d | 2026-12-17 | 2026-12-20 | B2.33 71 26 26, B2.33 71 26 23, B2.33 71 26 32, B2.33 71 26 29, B2.33 71 26 013, B2.33 71 26 023, B2.33 71 00 01 19, B2.33 71 00 01 20, B2.33 71 00 01 10, B2.33 71 00 01 16, DMM-Mil-48, T&C-MV-01 |  |  |  |  | 3.32d | 0d |  | Labor [721.28 h]; Foreman [360.64 h]; Electrician [360.64 h]; Cable, Copper 4x10mm2/ CU/XLPE/SWA/PVC + 1x10mm2 CU/PVC |  | Test | Test&HO | 0.0422121912012883 |  | Z1 | LV |  | SUB.C |
|  | Telecom | **Telecommunication Network** |  | 2026-12-21 | 2026-12-27 |  |  |  |  |  |  |  |  |  |  |  |  |  |  |  |  |  |  |
| T&C-Telecom-01 |  | Testing & Commissioning for Telecommunication Network | 6d | 2026-12-21 | 2026-12-27 | B2.33 71 00.267_R, B2.33 71 00.235, B2.1.33 81 26.191, B2.33 71 00.281, B2.1.33 81 26.194, B2.33 71 00.283, DMM-Mil-48, T&C-LV-01, B1.2.31 23 16.01.5 |  |  |  |  | 8.32d | 3d |  | Labor [721.28 h]; Foreman [360.64 h]; Electrician [360.64 h]; (6*50mm) HDPE ducts; (6*50mm+2*32mm) HDPE ducts; (6*50mm+4*32mm) HDPE ducts; (2*32mm) HDPE ducts; (4*32mm) HDPE ducts; Manhole Type 1; Manhole Type 2; Road crossing ducts, (6*50mm) HDPE; Road crossing ducts, (2*32mm) HDPE |  | Test | Test&HO | 0.206034867727865 |  | Z1 | Telecom |  | SUB.C |
|  | SL | **Street Lighting** |  | 2026-12-13 | 2026-12-19 |  |  |  |  |  |  |  |  |  |  |  |  |  |  |  |  |  |  |
| T&C-SL-01 |  | Testing & Commissioning for Street Lighting Network | 6d | 2026-12-13 | 2026-12-19 | B2.33 71 19 212, B2.33 71 26 045, DMM-Mil-48 |  |  |  |  | 15.32d | 0d |  | Labor [721.28 h]; Foreman [360.64 h]; Operator [721.28 h]; Manlift [48 h]; Electrician [360.64 h]; SL Cable, Copper 4x10mm2/ CU/XLPE/SWA/PVC + 1x10mm2 CU/PVC; Lighting poles with 1 arm, height of ( 10) meters; Street Lighting( LED), Lamp Lumen: 14560, Luminare Lumen:12700 , complete with control gear and lamp, (80) WATT. |  | Test | Test&HO | 0.292011530173758 |  | Z1 | SL |  | SUB.C |

| ID | WBS | Activity | Duration | Start | Finish | Predecessors | Total float | Free float | Resources | Weight % | DMM2 Weekly Progress | DMM2 Zones | Networks & Stations | DMM2 Phases | UNASCO | Subcontractors works | JANCO |
| --- | --- | --- | --- | --- | --- | --- | --- | --- | --- | --- | --- | --- | --- | --- | --- | --- | --- |
|  | Zone 02 | **Zone 02** |  | 2026-12-06 | 2026-12-30 |  |  |  |  |  |  |  |  |  |  |  |  |
|  | Wet | **Wet Networks & Stations** |  | 2026-12-06 | 2026-12-21 |  |  |  |  |  |  |  |  |  |  |  |  |
|  | Sewer | **Sewerage Network** |  | 2026-12-13 | 2026-12-19 |  |  |  |  |  |  |  |  |  |  |  |  |
| T&C-Sew-1 |  | Testing & Commissioning for Sewerage Network | 6d | 2026-12-13 | 2026-12-19 | T&C-Sew-01, DMM-Mil-48 | 23.32d | 0d | Labor [721.28 h]; Foreman [360.64 h]; Plumber Helper [360.64 h]; Plumber [360.64 h]; Operator [721.28 h]; Water Tanker [48 h]; Sew. Discharge chamber, size 1500*2000 mm approximately; Sew Dia. 150mm Depth: 0.0m - 1.5m; Sew Dia. 200mm Depth: 0.0m - 1.5m; Sew Dia. 200mm Depth: 1.51m - 2.5m; Sew HDPE Dia. 160 mm depth: 1.5 - 2.5m; Air valve chamber; on 160 mm dia pipeline; Gate V dia 150 mm on Dia. 160 mm; Air V with dia (50) mm on pipes with dia(160 ) mm.; MH depth 0 - 1.5m; MH depth 1.51 - 2.5m | 0.129939185993623 | Test | Z2 | Sew | Test&HO | TS.UNSC | SUB.C |  |
|  | Storm | **Storm Network** |  | 2026-12-13 | 2026-12-20 |  |  |  |  |  |  |  |  |  |  |  |  |
| T&C-Strm-1 |  | Testing & Commissioning for Storm Network | 7d | 2026-12-13 | 2026-12-20 | T&C-Strm-01 | 24.32d | 0d | Labor [841.49 h]; Foreman [420.75 h]; Plumber Helper [420.75 h]; Plumber [420.75 h]; Operator [841.49 h]; Water Tanker [56 h]; Size 1.5 x 1.5 m, depth 2.51-3.5 m; Size 1.5 x 1.5 m, depth 3.51-4.5 m; Single Catch basin; Double Catch basin; MH depth 1.50 - 2.5m; MH depth 2.51 - 3.5m; Storm MH depth 2.51 - 3.5m; Storm MH depth 3.51 -4.5m; MH depth 4.51 -5.5m; Depth less than 1.5; Depth: 1.51m - 2.5m; less than 1.5; 1.51m - 2.5m; 2.51m - 3.5m; 3.51m - 4.5m | 1.65728777737989 | Test | Z2 | Storm | Test&HO | TS.UNSC | SUB.C |  |
|  | Potable | **Potable Network** |  | 2026-12-13 | 2026-12-19 |  |  |  |  |  |  |  |  |  |  |  |  |
| T&C-Pot-1 |  | Testing & Commissioning for Potable Network | 6d | 2026-12-13 | 2026-12-19 | T&C-Pot-01 | 27.32d | 0d | Labor [721.28 h]; Foreman [360.64 h]; Plumber Helper [360.64 h]; Plumber [360.64 h]; Operator [721.28 h]; Water Tanker [48 h]; POT Gate V dia 110 mm; POT Wash out valve Dia. 100 mm on pipes with Dia. 110-400 mm; POT Air valve Dia. 50 mm on pipes with Dia. less than 315 mm; Wash out valve chamber; on 110-400 mm Dia. pipeline; Air valve chamber; on less than 315 mm Dia. pipeline; Flow meter chamber; Flow meter; Depth: 0.0m - 1.5m; Depth: 1.51m - 2.5m | 0.19372174415641 | Test | Z2 | Potable | Test&HO | TS.UNSC | SUB.C |  |
|  | Fire Fighting | **Fire Fighting Network** |  | 2026-12-06 | 2026-12-12 |  |  |  |  |  |  |  |  |  |  |  |  |
| T&C-FF-1 |  | Testing & Commissioning for Fire Fighting Network | 6d | 2026-12-06 | 2026-12-12 | T&C-FF-01 SS | 30.32d | 0d | Labor [721.28 h]; Foreman [360.64 h]; Plumber Helper [360.64 h]; Plumber [360.64 h]; Operator [721.28 h]; Water Tanker [48 h]; FF Gate V dia 250 mm; FF Wash out valve Dia. 100 mm on pipes with Dia. 110-400 mm; FF Air valve Dia. 50 mm on pipes with Dia. less than 315 mm; 3-outlet fire hydrant (2 x 2.5 inch and 1 x 4.5 inch) in the form of a separate dry vacuum cylinder; FF Wash out valve chamber; on 110-400 mm Dia. pipeline; FF Air valve chamber; on less than 315 mm Dia. pipeline; FF Flow meter chamber; FF Flow meter; Depth: 0.0m - 1.5m; Depth: 1.51m - 2.5m | 0.255730518052244 | Test | Z2 | Fire | Test&HO | TS.UNSC | SUB.C |  |
|  | TSE | **TSE Network** |  | 2026-12-13 | 2026-12-19 |  |  |  |  |  |  |  |  |  |  |  |  |
| T&C-TSE-1 |  | Testing & Commissioning for TSE Network | 6d | 2026-12-13 | 2026-12-19 | T&C-TSE-01 | 18.32d | 0d | Labor [721.28 h]; Foreman [360.64 h]; Plumber Helper [360.64 h]; Plumber [360.64 h]; Operator [721.28 h]; Water Tanker [48 h]; Dia. 125mm 0.0m - 1.5m; Solenoid Valve box. 1 Solenoid valve Dia. 1 inch.; Solenoid Valve box. 1 Solenoid valve Dia. 1.5 inch.; Solenoid Valve box. 1 Solenoid valve Dia. 2.0inch.; TSE Gate V Dia. 100 mm; TSE Gate V Dia. 150 mm | 0.0351137031212749 | Test | Z2 | TSE | Test&HO | TS.UNSC | SUB.C |  |
|  | Pot Pump St. | **Potable Water Pump Station** |  | 2026-12-17 | 2026-12-21 |  |  |  |  |  |  |  |  |  |  |  |  |
| T&C-PumpS-13 |  | Testing & Commissioning for Process Control Wiring | 4d | 2026-12-17 | 2026-12-21 | B3.2.32 11 23.01.235, B3.2.32 11 23.01.249, B8.31 23 16.0193 FF | 1.32d | 0d | Labor [721.28 h]; Foreman [360.64 h]; Plumber Helper [360.64 h]; Plumber [360.64 h]; Electrician [360.64 h]; MEP Specialist [360.64 h]; Testing and commissioning of all control, instrumentation | 0.0179527250661238 | Test | Z2 | Pump | Test&HO |  | SUB.C | PWPS |
| T&C-PumpS-23 |  | Testing & Commissioning for Instrumentation for Process Systems | 4d | 2026-12-17 | 2026-12-21 | B3.2.32 11 23.01.231, B3.2.32 11 23.01.249 | 1.32d | 0d | Labor [721.28 h]; Foreman [360.64 h]; Plumber Helper [360.64 h]; Plumber [360.64 h]; Electrician [360.64 h]; MEP Specialist [360.64 h]; Testing and commissioning of all field instruments | 0.00817667482989314 | Test | Z2 | Pump | Test&HO |  | SUB.C | PWPS |
| T&C-PumpS-3 |  | Testing & Commissioning for PLC System | 4d | 2026-12-17 | 2026-12-21 | B3.2.32 11 23.01.219, B3.2.32 11 23.01.137, B3.2.32 11 23.01.249, DMM-Mil-17 | 1.32d | 0d | Labor [721.28 h]; Foreman [360.64 h]; Plumber Helper [360.64 h]; Plumber [360.64 h]; Electrician [360.64 h]; MEP Specialist [360.64 h]; Testing and commissioning of PLC system, serving the pumping station and all related utilities | 0.165722225123713 | Test | Z2 | Pump | Test&HO |  | SUB.C | PWPS |
|  | Dry | **Dry Networks** |  | 2026-12-13 | 2026-12-30 |  |  |  |  |  |  |  |  |  |  |  |  |
|  | MV | **Medium Voltage Network** |  | 2026-12-17 | 2026-12-21 |  |  |  |  |  |  |  |  |  |  |  |  |
| T&C-MV-1 |  | Testing & Commissioning for Medium Voltage Network | 4d | 2026-12-17 | 2026-12-21 | T&C-MV-01 | 1.32d | 0d | Labor [721.28 h]; Foreman [360.64 h]; Electrician [360.64 h]; Unit Substation 13.8/0.4 K V, 500kVA; RMU, 13.8KV; Cable 13.8 kV 3Cx 500 mm² Al XLPE,/LLDPE / Unarmored; Copper Cable 13.8 kV 3Cx 50 mm² CU/XLPE/STA/PVC | 0.212330966979704 | Test | Z2 | MV | Test&HO |  | SUB.C |  |
|  | LV | **Low Voltage Network** |  | 2026-12-21 | 2026-12-23 |  |  |  |  |  |  |  |  |  |  |  |  |
| T&C-LV-1 |  | Testing & Commissioning for Low Voltage Network | 3d | 2026-12-21 | 2026-12-23 | T&C-LV-01 | 3.32d | 0d | Labor [841.49 h]; Foreman [420.75 h]; Electrician [420.75 h]; Cable, Copper 4x10mm2/ CU/XLPE/SWA/PVC + 1x10mm2 CU/PVC; Cable, Copper 4x50mm2/ CU/XLPE/PVC +1x25mm2 CU/PVC | 0.048963480281533 | Test | Z2 | LV | Test&HO |  | SUB.C |  |
|  | Telecom | **Telecommunication Network** |  | 2026-12-24 | 2026-12-30 |  |  |  |  |  |  |  |  |  |  |  |  |
| T&C-Telecom-1 |  | Testing & Commissioning for Telecommunication Network | 6d | 2026-12-24 | 2026-12-30 | T&C-Telecom-01 FF, DMM-Mil-48, T&C-LV-1 | 5.32d | 0d | Labor [721.28 h]; Foreman [360.64 h]; Electrician [360.64 h]; (6*50mm) HDPE ducts; (6*50mm+2*32mm) HDPE ducts; (6*50mm+4*32mm) HDPE ducts; (2*32mm) HDPE ducts; (4*32mm) HDPE ducts; (6*50mm+6*32mm) HDPE ducts; Telecom (6*32mm) HDPE ducts; Manhole Type 1; Manhole Type 2; Road crossing ducts, (6*50mm) HDPE; Road crossing ducts, (2*32mm) HDPE | 0.210785076652438 | Test | Z2 | Telecom | Test&HO |  | SUB.C |  |
|  | SL | **Street Lighting** |  | 2026-12-13 | 2026-12-19 |  |  |  |  |  |  |  |  |  |  |  |  |
| T&C-SL-1 |  | Testing & Commissioning for Street Lighting Network | 6d | 2026-12-13 | 2026-12-19 | T&C-SL-01 FF | 15.32d | 0d | Labor [721.28 h]; Foreman [360.64 h]; Operator [721.28 h]; Boom Truck [48 h]; Electrician [360.64 h]; Street Lighting Feeder pillars, work shall include earthing for the lighting pillars.; SL Cable, Copper 4x10mm2/ CU/XLPE/SWA/PVC + 1x10mm2 CU/PVC; Lighting poles with 2 arms, height of ( 10) meters; Lighting poles with 1 arm, height of ( 10) meters; Lighting poles with 1 arm, height of ( 12 ) meters; Street Lighting( LED), Lamp Lumen: 14560, Luminare Lumen:12700 , complete with control gear and lamp, (80) WATT.; Street Lighting( LED), Lamp Lumen: 24286, Luminare Lumen:20914, complete with control gear and lamp, (140) WATT. | 0.394102791387399 | Test | Z2 | SL | Test&HO |  | SUB.C |  |

| ID | WBS | Activity | Duration | Start | Finish | Predecessors | Complete | Remaining | Planned start | Planned finish | Total float | Free float | Resources | Weight % | Ac dates > DD | DMM2 Weekly Progress | DMM2 Zones | Networks & Stations | DMM2 Phases | UNASCO | Subcontractors works | JANCO |
| --- | --- | --- | --- | --- | --- | --- | --- | --- | --- | --- | --- | --- | --- | --- | --- | --- | --- | --- | --- | --- | --- | --- |
|  | Zone 03 | **Zone 03** |  | 2026-09-12 | 2026-12-30 |  |  |  |  |  |  |  |  |  |  |  |  |  |  |  |  |  |
|  | Wet | **Wet Networks & Stations** |  | 2026-09-12 | 2026-12-28 |  |  |  |  |  |  |  |  |  |  |  |  |  |  |  |  |  |
|  | Sewer | **Sewerage Network** |  | 2026-09-13 | 2026-10-07 |  |  |  |  |  |  |  |  |  |  |  |  |  |  |  |  |  |
| T&C-Sew-11 |  | Testing & Commissioning for Sewerage Network | 6d | 2026-09-13 A | 2026-10-07 | T&C-Sew-1 | 90% | 0.6d | 2026-12-03 | 2026-12-10 | 85.72d | 62.4d | Labor [721.28 h]; Foreman [360.64 h]; Plumber Helper [360.64 h]; Plumber [360.64 h]; Operator [721.28 h]; Water Tanker [48 h]; Sew Dia. 150mm Depth: 1.51m - 2.5m; Sew Dia. 150mm Depth: 2.51m - 3.5m; Sew Dia. 200mm Depth: 2.51m - 3.5m; Sew Dia. 200mm Depth: 3.51m - 4.5m; Sew Dia. 200mm Depth: 4.51m -5.5m; Sew HDPE Dia. 160 mm depth: 0- 1.5m; Wash out chamber; on 160 mm dia pipeline; Gate V dia 150 mm on Dia. 160 mm; Wash out valve with dia (100 ) mm on pipes with dia (160) mm; MH depth 0 - 1.5m; MH depth 1.51 - 2.5m; MH depth 2.51 - 3.5m; MH depth 4.51 -5.5m; MH depth 4.51-5.5 m with back drop; MH depth 6.0-5.51 m; MH depth 6.0- 5.51 m with back drop | 0.372362328084065 | UDF_G1 | Test | Z3 | Sew | Test&HO | TS.UNSC | SUB.C |  |
|  | Storm | **Storm Network** |  | 2026-09-12 | 2026-12-20 |  |  |  |  |  |  |  |  |  |  |  |  |  |  |  |  |  |
| T&C-Strm-11 |  | Testing & Commissioning for Storm Network | 6d | 2026-09-12 A | 2026-12-20 | T&C-Strm-1 FF | 90% | 0.6d | 2026-11-28 | 2026-12-05 | 24.32d | 1d | Labor [721.28 h]; Foreman [360.64 h]; Plumber Helper [360.64 h]; Plumber [360.64 h]; Operator [721.28 h]; Water Tanker [48 h]; Size 3.0 x 3.0 m, depth 1.51-2.5 m; Size 3.0 x 1.5 m, depth 1.51-2.5 m; Size 2.5 x 1.5 m, depth 1.51-2.5 m; Size 2.0 x 1.5 m, depth 2.51-3.5 m; Single Catch basin; Double Catch basin; MH depth 1.50 - 2.5m; Storm MH depth 2.51 - 3.5m; Depth: 1.51m - 2.5m; 2.51m - 3.5m | 0.336403661453918 | UDF_G1 | Test | Z3 | Storm | Test&HO | TS.UNSC | SUB.C |  |
|  | Potable | **Potable Network** |  | 2026-12-13 | 2026-12-19 |  |  |  |  |  |  |  |  |  |  |  |  |  |  |  |  |  |
| T&C-Pot-11 |  | Testing & Commissioning for Potable Network | 6d | 2026-12-13 | 2026-12-19 | T&C-Pot-1 FF |  |  |  |  | 27.32d | 0d | Labor [721.28 h]; Foreman [360.64 h]; Plumber Helper [360.64 h]; Plumber [360.64 h]; Operator [721.28 h]; Water Tanker [48 h]; POT Gate V dia 110 mm; POT Wash out valve Dia. 100 mm on pipes with Dia. 110-400 mm; POT Air valve Dia. 50 mm on pipes with Dia. less than 315 mm; Wash out valve chamber; on 110-400 mm Dia. pipeline; Air valve chamber; on less than 315 mm Dia. pipeline; Depth: 0.0m - 1.5m; Depth: 1.51m - 2.5m | 0.0736949521559886 |  | Test | Z3 | Potable | Test&HO | TS.UNSC | SUB.C |  |
|  | Fire Fighting | **Fire Fighting Network** |  | 2026-12-13 | 2026-12-15 |  |  |  |  |  |  |  |  |  |  |  |  |  |  |  |  |  |
| T&C-FF-11 |  | Testing & Commissioning for Fire Fighting Network | 3d | 2026-12-13 | 2026-12-15 | T&C-FF-1 |  |  |  |  | 30.32d | 0d | Labor [721.28 h]; Foreman [360.64 h]; Plumber Helper [360.64 h]; Plumber [360.64 h]; Operator [721.28 h]; Water Tanker [48 h]; FF Gate V dia 250 mm; FF Wash out valve Dia. 100 mm on pipes with Dia. 110-400 mm; FF Air valve Dia. 50 mm on pipes with Dia. less than 315 mm; 3-outlet fire hydrant (2 x 2.5 inch and 1 x 4.5 inch) in the form of a separate dry vacuum cylinder; FF Wash out valve chamber; on 110-400 mm Dia. pipeline; FF Air valve chamber; on less than 315 mm Dia. pipeline; Depth: 0.0m - 1.5m; Depth: 1.51m - 2.5m | 0.240788926721338 |  | Test | Z3 | Fire | Test&HO | TS.UNSC | SUB.C |  |
|  | TSE | **TSE Network** |  | 2026-12-20 | 2026-12-27 |  |  |  |  |  |  |  |  |  |  |  |  |  |  |  |  |  |
| T&C-TSE-11 |  | Testing & Commissioning for TSE Network | 7d | 2026-12-20 | 2026-12-27 | T&C-TSE-1 |  |  |  |  | 18.32d | 0d | Labor [841.49 h]; Foreman [420.75 h]; Plumber Helper [420.75 h]; Plumber [420.75 h]; Operator [841.49 h]; Water Tanker [56 h]; Dia. 25mm 0.0m - 1.5m; Dia. 32mm 0.0m - 1.5m; Dia. 50mm 0.0m - 1.5m; Dia. 63mm 0.0m - 1.5m; Dia. 75mm 0.0m - 1.5m; Dia. 110mm 0.0m - 1.5m; Dia. 125mm 0.0m - 1.5m; Solenoid Valve box. 1 Solenoid valve Dia. 1 inch.; Solenoid Valve box. 1 Solenoid valve Dia. 1.5 inch.; Solenoid Valve box. 1 Solenoid valve Dia. 2.0inch.; TSE Gate V Dia. 100 mm; TSE Air valve Dia. 50 mm on pipes with Dia. less than 315 mm | 0.212578074527486 |  | Test | Z3 | TSE | Test&HO | TS.UNSC | SUB.C |  |
|  | Sewer Lift St. | **Sewer Lift Station** |  | 2026-12-22 | 2026-12-28 |  |  |  |  |  |  |  |  |  |  |  |  |  |  |  |  |  |
| T&C-LiftS-33 |  | Testing & Commissioning for PLC System | 6d | 2026-12-22 | 2026-12-28 | B5.1.31 23 16.01.149, T&C-PumpS-3, DMM-Mil-48 |  |  |  |  | 1.32d | 0d | Labor [721.28 h]; Foreman [360.64 h]; Plumber Helper [360.64 h]; Plumber [360.64 h]; Electrician [360.64 h]; MEP Specialist [360.64 h]; Supply, installation, testing and commissioning of PLC system | 0.469929643515443 |  | Test | Z3 | Lift | Test&HO |  | SUB.C | SLS |
| T&C-LiftS-43 |  | Testing & Commissioning for Process Control Wiring | 6d | 2026-12-22 | 2026-12-28 | B5.1.31 23 16.01.147, T&C-PumpS-13, DMM-Mil-48 |  |  |  |  | 1.32d | 0d | Labor [721.28 h]; Foreman [360.64 h]; Plumber Helper [360.64 h]; Plumber [360.64 h]; Electrician [360.64 h]; MEP Specialist [360.64 h]; Supply, installation, testing and commissioning of all control, instrumentation | 0.0509089639330576 |  | Test | Z3 | Lift | Test&HO |  | SUB.C | SLS |
| T&C-LiftS-53 |  | Testing & Commissioning for Instrumentation for Process Systems | 6d | 2026-12-22 | 2026-12-28 | B5.1.31 23 16.01.149, T&C-PumpS-23, DMM-Mil-48 |  |  |  |  | 1.32d | 0d | Labor [721.28 h]; Foreman [360.64 h]; Plumber Helper [360.64 h]; Plumber [360.64 h]; Electrician [360.64 h]; MEP Specialist [360.64 h]; Supply, installation, testing and commissioning of all field instruments | 0.00817313275086824 |  | Test | Z3 | Lift | Test&HO |  | SUB.C | SLS |
|  | Dry | **Dry Networks** |  | 2026-12-16 | 2026-12-30 |  |  |  |  |  |  |  |  |  |  |  |  |  |  |  |  |  |
|  | MV | **Medium Voltage Network** |  | 2026-12-22 | 2026-12-26 |  |  |  |  |  |  |  |  |  |  |  |  |  |  |  |  |  |
| T&C-MV-11 |  | Testing & Commissioning for Medium Voltage Network | 4d | 2026-12-22 | 2026-12-26 | T&C-MV-1 |  |  |  |  | 1.32d | 0d | Labor [721.28 h]; Foreman [360.64 h]; Electrician [360.64 h]; Unit Substation 13.8/0.4 K V, 500kVA; RMU, 13.8KV; Cable 13.8 kV 3Cx 500 mm² Al XLPE,/LLDPE / Unarmored; Copper Cable 13.8 kV 3Cx 50 mm² CU/XLPE/STA/PVC | 0.226460631981117 |  | Test | Z3 | MV | Test&HO |  | SUB.C |  |
|  | LV | **Low Voltage Network** |  | 2026-12-24 | 2026-12-27 |  |  |  |  |  |  |  |  |  |  |  |  |  |  |  |  |  |
| T&C-LV-11 |  | Testing & Commissioning for Low Voltage Network | 3d | 2026-12-24 | 2026-12-27 | T&C-LV-1, T&C-LV-01 |  |  |  |  | 3.32d | 0d | Labor [721.28 h]; Foreman [360.64 h]; Electrician [360.64 h]; Cable, Copper 4x10mm2/ CU/XLPE/SWA/PVC + 1x10mm2 CU/PVC; Cable, Copper 4x50mm2/ CU/XLPE/PVC +1x25mm2 CU/PVC; 0.6/1 KV Low Voltage Distribution Pillars with 5 Outgoing feeders rated 200 Ampers Fuse type; 0.6/1 KV Low Voltage Distribution Panels for Industrial UPS - Cameras | 0.0614678771989738 |  | Test | Z3 | LV | Test&HO |  | SUB.C |  |
|  | Telecom | **Telecommunication Network** |  | 2026-12-24 | 2026-12-30 |  |  |  |  |  |  |  |  |  |  |  |  |  |  |  |  |  |
| T&C-Telecom-11 |  | Testing & Commissioning for Telecommunication Network | 6d | 2026-12-24 | 2026-12-30 | T&C-Telecom-1 FF, DMM-Mil-48 |  |  |  |  | 5.32d | 0d | Labor [721.28 h]; Foreman [360.64 h]; Electrician [360.64 h]; (6*50mm) HDPE ducts; (6*50mm+2*32mm) HDPE ducts; (6*50mm+4*32mm) HDPE ducts; (2*32mm) HDPE ducts; (4*32mm) HDPE ducts; (6*50mm+6*32mm) HDPE ducts; Manhole Type 1; Manhole Type 2; Road crossing ducts, (6*50mm) HDPE; Road crossing ducts, (6*50mm+4*32mm) HDPE; Road crossing ducts, (2*32mm) HDPE | 0.212266172959768 |  | Test | Z3 | Telecom | Test&HO |  | SUB.C |  |
|  | SL | **Street Lighting** |  | 2026-12-16 | 2026-12-19 |  |  |  |  |  |  |  |  |  |  |  |  |  |  |  |  |  |
| T&C-SL-11 |  | Testing & Commissioning for Street Lighting Network | 3d | 2026-12-16 | 2026-12-19 | T&C-SL-1 FF, DMM-Mil-48 |  |  |  |  | 15.32d | 1d | Labor [721.28 h]; Foreman [360.64 h]; Operator [721.28 h]; Boom Truck [48 h]; Electrician [360.64 h]; Street Lighting Feeder pillars, work shall include earthing for the lighting pillars.; SL Cable, Copper 4x10mm2/ CU/XLPE/SWA/PVC + 1x10mm2 CU/PVC; Cable, Copper 4x16mm2/ CU/XLPE/SWA/PVC + 1x16mm2 CU/PVC; Lighting poles with 2 arms, height of ( 10) meters; Lighting poles with 1 arm, height of ( 10) meters; Lighting poles with 1 arm, height of ( 12 ) meters; Lighting poles with 2 arms , height of (16 ) meters; Street Lighting( LED), Lamp Lumen: 14560, Luminare Lumen:12700 , complete with control gear and lamp, (80) WATT.; Street Lighting( LED), Lamp Lumen: 24286, Luminare Lumen:20914, complete with control gear and lamp, (140) WATT.; Street Lighting( LED), Lamp Lumen: 34805, Luminare Lumen:28310, complete with control gear and lamp, (190) WATT. | 0.452619828590751 |  | Test | Z3 | SL | Test&HO |  | SUB.C |  |

| ID | WBS | Activity | Duration | Start | Finish | Predecessors | Complete | Remaining | Planned start | Planned finish | Total float | Free float | Resources | Weight % | Ac dates > DD | DMM2 Weekly Progress | DMM2 Zones | Networks & Stations | DMM2 Phases | UNASCO | Subcontractors works |
| --- | --- | --- | --- | --- | --- | --- | --- | --- | --- | --- | --- | --- | --- | --- | --- | --- | --- | --- | --- | --- | --- |
|  | Zone 04 | **Zone 04** |  | 2026-09-10 | 2027-01-03 |  |  |  |  |  |  |  |  |  |  |  |  |  |  |  |  |
|  | Wet | **Wet Networks & Stations** |  | 2026-09-10 | 2027-01-03 |  |  |  |  |  |  |  |  |  |  |  |  |  |  |  |  |
|  | Sewer | **Sewerage Network** |  | 2026-09-10 | 2026-12-12 |  |  |  |  |  |  |  |  |  |  |  |  |  |  |  |  |
| T&C-Sew-21 |  | Testing & Commissioning for Sewerage Network | 6d | 2026-09-10 A | 2026-12-12 | T&C-Sew-11, DMM-Mil-48 FF | 90% | 0.6d | 2026-12-10 | 2026-12-17 | 29.32d | 6d | Labor [721.28 h]; Foreman [360.64 h]; Plumber Helper [360.64 h]; Plumber [360.64 h]; Operator [721.28 h]; Water Tanker [48 h]; Sew Dia. 150mm Depth: 1.51m - 2.5m; Sew Dia. 150mm Depth: 2.51m - 3.5m; Sew Dia. 200mm Depth: 1.51m - 2.5m; Sew Dia. 200mm Depth: 2.51m - 3.5m; Sew Dia. 200mm Depth: 3.51m - 4.5m; Sew Dia. 200mm Depth: 4.51m -5.5m; MH depth 0 - 1.5m; MH depth 1.51 - 2.5m; MH depth 2.51 - 3.5m; MH depth 3.51 -4.5m; MH depth 3.51- 4.5 m with back drop | 0.297618545209742 | UDF_G1 | Test | Z4 | Sew | Test&HO | TS.UNSC | SUB.C |
|  | Storm | **Storm Network** |  | 2026-09-28 | 2026-10-07 |  |  |  |  |  |  |  |  |  |  |  |  |  |  |  |  |
| T&C-Strm-21 |  | Testing & Commissioning for Storm Network | 6d | 2026-09-28 A | 2026-10-07 | T&C-Strm-11 SS | 90% | 0.6d | 2026-11-28 | 2026-12-05 | 87.72d | 64.4d | Labor [721.28 h]; Foreman [360.64 h]; Plumber Helper [360.64 h]; Plumber [360.64 h]; Operator [721.28 h]; Water Tanker [48 h]; Single Catch basin; Double Catch basin; MH depth 1.50 - 2.5m; Storm MH depth 1.50 - 2.5m; Storm MH depth 2.51 - 3.5m; Depth: 1.51m - 2.5m; 1.51m - 2.5m; 2.51m - 3.5m | 0.356851986207767 | UDF_G1 | Test | Z4 | Storm | Test&HO | TS.UNSC | SUB.C |
|  | Potable | **Potable Network** |  | 2026-12-13 | 2026-12-19 |  |  |  |  |  |  |  |  |  |  |  |  |  |  |  |  |
| T&C-Pot-21 |  | Testing & Commissioning for Potable Network | 6d | 2026-12-13 | 2026-12-19 | T&C-Pot-11 SS, DMM-Mil-48 FF |  |  |  |  | 27.32d | 4d | Labor [721.28 h]; Foreman [360.64 h]; Plumber Helper [360.64 h]; Plumber [360.64 h]; Operator [721.28 h]; Water Tanker [48 h]; POT Gate V dia 110 mm; POT Wash out valve Dia. 100 mm on pipes with Dia. 110-400 mm; POT Air valve Dia. 50 mm on pipes with Dia. less than 315 mm; Wash out valve chamber; on 110-400 mm Dia. pipeline; Air valve chamber; on less than 315 mm Dia. pipeline; Depth: 0.0m - 1.5m; Depth: 1.51m - 2.5m | 0.0736949521559886 |  | Test | Z4 | Potable | Test&HO | TS.UNSC | SUB.C |
|  | Fire Fighting | **Fire Fighting Network** |  | 2026-12-08 | 2026-12-15 |  |  |  |  |  |  |  |  |  |  |  |  |  |  |  |  |
| T&C-FF-21 |  | Testing & Commissioning for Fire Fighting Network | 7d | 2026-12-08 | 2026-12-15 | T&C-FF-11 FF, DMM-Mil-48 FF |  |  |  |  | 30.32d | 0d | Labor [841.49 h]; Foreman [420.75 h]; Plumber Helper [420.75 h]; Plumber [420.75 h]; Operator [841.49 h]; Water Tanker [56 h]; FF Gate V dia 250 mm; FF Wash out valve Dia. 100 mm on pipes with Dia. 110-400 mm; FF Air valve Dia. 50 mm on pipes with Dia. less than 315 mm; 3-outlet fire hydrant (2 x 2.5 inch and 1 x 4.5 inch) in the form of a separate dry vacuum cylinder; FF Wash out valve chamber; on 110-400 mm Dia. pipeline; FF Air valve chamber; on less than 315 mm Dia. pipeline; Depth: 0.0m - 1.5m; Depth: 1.51m - 2.5m | 0.240788926721338 |  | Test | Z4 | Fire | Test&HO | TS.UNSC | SUB.C |
|  | TSE | **TSE Network** |  | 2026-12-28 | 2027-01-03 |  |  |  |  |  |  |  |  |  |  |  |  |  |  |  |  |
| T&C-TSE-21 |  | Testing & Commissioning for TSE Network | 6d | 2026-12-28 | 2027-01-03 | T&C-TSE-11, DMM-Mil-48 FF |  |  |  |  | 18.32d | 0d | Labor [721.28 h]; Foreman [360.64 h]; Plumber Helper [360.64 h]; Plumber [360.64 h]; Operator [721.28 h]; Water Tanker [48 h]; Dia. 90mm 0.0m - 1.5m; Dia. 110mm 0.0m - 1.5m; Solenoid Valve box. 1 Solenoid valve Dia. 1 inch.; Solenoid Valve box. 1 Solenoid valve Dia. 1.5 inch.; Solenoid Valve box. 1 Solenoid valve Dia. 2.0inch.; TSE Gate V Dia. 100 mm; TSE Wash out valve Dia. 100 mm on pipes with Dia. 110-400 mm; TSE Air valve Dia. 50 mm on pipes with Dia. less than 315 mm | 0.0504973490995556 |  | Test | Z4 | TSE | Test&HO | TS.UNSC | SUB.C |
|  | Dry | **Dry Networks** |  | 2026-12-13 | 2026-12-30 |  |  |  |  |  |  |  |  |  |  |  |  |  |  |  |  |
|  | MV | **Medium Voltage Network** |  | 2026-12-27 | 2026-12-30 |  |  |  |  |  |  |  |  |  |  |  |  |  |  |  |  |
| T&C-MV-21 |  | Testing & Commissioning for Medium Voltage Network | 4d | 2026-12-27 | 2026-12-30 | T&C-MV-11 |  |  |  |  | 1.32d | 0d | Labor [721.28 h]; Foreman [360.64 h]; Electrician [360.64 h]; Unit Substation 13.8/0.4 K V, 500kVA; RMU, 13.8KV; Cable 13.8 kV 3Cx 500 mm² Al XLPE,/LLDPE / Unarmored; Copper Cable 13.8 kV 3Cx 50 mm² CU/XLPE/STA/PVC | 0.361700865759998 |  | Test | Z4 | MV | Test&HO |  | SUB.C |
|  | LV | **Low Voltage Network** |  | 2026-12-28 | 2026-12-30 |  |  |  |  |  |  |  |  |  |  |  |  |  |  |  |  |
| T&C-LV-21 |  | Testing & Commissioning for Low Voltage Network | 3d | 2026-12-28 | 2026-12-30 | DMM-Mil-48, T&C-LV-11 |  |  |  |  | 3.32d | 2d | Labor [721.28 h]; Foreman [360.64 h]; Electrician [360.64 h]; Cable, Copper 4x10mm2/ CU/XLPE/SWA/PVC + 1x10mm2 CU/PVC; Cable, Copper 4x50mm2/ CU/XLPE/PVC +1x25mm2 CU/PVC | 0.048963480281533 |  | Test | Z4 | LV | Test&HO |  | SUB.C |
|  | Telecom | **Telecommunication Network** |  | 2026-12-24 | 2026-12-30 |  |  |  |  |  |  |  |  |  |  |  |  |  |  |  |  |
| T&C-Telecom-21 |  | Testing & Commissioning for Telecommunication Network | 6d | 2026-12-24 | 2026-12-30 | T&C-Telecom-11 FF |  |  |  |  | 5.32d | 0d | Labor [721.28 h]; Foreman [360.64 h]; Electrician [360.64 h]; (6*50mm) HDPE ducts; (6*50mm+2*32mm) HDPE ducts; (6*50mm+4*32mm) HDPE ducts; (2*32mm) HDPE ducts; Manhole Type 1; Manhole Type 2; Road crossing ducts, (6*50mm) HDPE | 0.203793655059405 |  | Test | Z4 | Telecom | Test&HO |  | SUB.C |
|  | SL | **Street Lighting** |  | 2026-12-13 | 2026-12-20 |  |  |  |  |  |  |  |  |  |  |  |  |  |  |  |  |
| T&C-SL-21 |  | Testing & Commissioning for Street Lighting Network | 7d | 2026-12-13 | 2026-12-20 | T&C-SL-11 FF, DMM-Mil-48 |  |  |  |  | 14.32d | 0d | Labor [841.49 h]; Foreman [420.75 h]; Operator [841.49 h]; Boom Truck [56 h]; Electrician [420.75 h]; Street Lighting Feeder pillars, work shall include earthing for the lighting pillars.; SL Cable, Copper 4x10mm2/ CU/XLPE/SWA/PVC + 1x10mm2 CU/PVC; Lighting poles with 1 arm, height of ( 10) meters; Street Lighting( LED), Lamp Lumen: 14560, Luminare Lumen:12700 , complete with control gear and lamp, (80) WATT. | 0.297456223981406 |  | Test | Z4 | SL | Test&HO |  | SUB.C |
|  | Closeout | **Project Closeout** |  | 2026-12-16 | 2027-02-15 |  |  |  |  |  |  |  |  |  |  |  |  |  |  |  |  |
|  | Engineering | **Engineering** |  | 2026-12-16 | 2027-01-11 |  |  |  |  |  |  |  |  |  |  |  |  |  |  |  |  |
|  | AS-Built | **AS-Built** |  | 2026-12-16 | 2027-01-11 |  |  |  |  |  |  |  |  |  |  |  |  |  |  |  |  |
|  | SDS | **Wet Networks & Stations** |  | 2026-12-16 | 2027-01-10 |  |  |  |  |  |  |  |  |  |  |  |  |  |  |  |  |
|  | Sewer | **Sewerage Network** |  | 2026-12-20 | 2026-12-23 |  |  |  |  |  |  |  |  |  |  |  |  |  |  |  |  |
| Close.Asblt.01-1 |  | AS-Built Drawings Submittal - Sewerage Network | 4d | 2026-12-20 | 2026-12-23 | T&C-Sew-21, T&C-Sew-11, T&C-Sew-1, T&C-Sew-01 |  |  |  |  | 25.32d | 0d |  |  |  |  |  |  | Test&HO |  |  |

| ID | WBS | Activity | Duration | Start | Finish | Predecessors | Total float | Free float | DMM2 Phases | JANCO |
| --- | --- | --- | --- | --- | --- | --- | --- | --- | --- | --- |
|  | Storm | **Storm Network** |  | 2026-12-24 | 2026-12-28 |  |  |  |  |  |
| Close.Asblt.01-2 |  | AS-Built Drawings Submittal - Storm Network | 4d | 2026-12-24 | 2026-12-28 | T&C-Strm-21, T&C-Strm-11, T&C-Strm-1, T&C-Strm-01, Close.Asblt.01-1 | 25.32d | 6d | Test&HO |  |
|  | Potable | **Potable Network** |  | 2027-01-05 | 2027-01-09 |  |  |  |  |  |
| Close.Asblt.01-3 |  | AS-Built Drawings Submittal - Potable Network | 4d | 2027-01-05 | 2027-01-09 | T&C-Pot-21, T&C-Pot-11, T&C-Pot-1, T&C-Pot-01, Clsout.13.2.1.341, Close.Asblt.01-2, DMM-Mil-14 | 19.32d |  | Test&HO |  |
|  | Fire Fighting | **Fire Fighting Network** |  | 2026-12-16 | 2026-12-20 |  |  |  |  |  |
| Close.Asblt.01-5 |  | AS-Built Drawings Submittal - Fire Fighting Network | 4d | 2026-12-16 | 2026-12-20 | T&C-FF-21, T&C-FF-11, T&C-FF-1, T&C-FF-01 | 30.32d | 0d | Test&HO |  |
|  | TSE | **TSE Network** |  | 2027-01-06 | 2027-01-10 |  |  |  |  |  |
| Close.Asblt.01-4 |  | AS-Built Drawings Submittal - TSE Network | 4d | 2027-01-06 | 2027-01-10 | Clsout.13.2.1.311, Clsout.13.2.1.161, Clsout.13.2.1.271 | 18.32d |  | Test&HO |  |
|  | Pot Pump St. | **Potable Water Pump Station** |  | 2026-12-22 | 2026-12-26 |  |  |  |  |  |
| Close.Asblt.01-21 |  | AS-Built Drawings Submittal - Potable Water Pump Station - Mech | 4d | 2026-12-22 | 2026-12-26 | T&C-PumpS-3, T&C-PumpS-23, T&C-PumpS-13 | 31.32d |  | Test&HO | PWPS |
| Close.Asblt.01-31 |  | AS-Built Drawings Submittal - Potable Water Pump Station - Elec. | 4d | 2026-12-22 | 2026-12-26 | T&C-PumpS-3, T&C-PumpS-23, T&C-PumpS-13 | 31.32d |  | Test&HO | PWPS |
| Close.Asblt.01-6 |  | AS-Built Drawings Submittal - Potable Water Pump Station - Civil & Arch | 4d | 2026-12-22 | 2026-12-26 | T&C-PumpS-3, T&C-PumpS-23, T&C-PumpS-13 | 19.32d | 2d | Test&HO | PWPS |
|  | Sewer Lift St. | **Sewer Lift Station** |  | 2026-12-29 | 2027-01-02 |  |  |  |  |  |
| Close.Asblt.01-41 |  | AS-Built Drawings Submittal - Sewer Lift Station - Civil & Arch | 4d | 2026-12-29 | 2027-01-02 | T&C-LiftS-53, T&C-LiftS-43, T&C-LiftS-33, Close.Asblt.01-6 | 17.32d | 0d | Test&HO | SLS |
| Close.Asblt.01-51 |  | AS-Built Drawings Submittal - Sewer Lift Station - Mech | 4d | 2026-12-29 | 2027-01-02 | T&C-LiftS-53, T&C-LiftS-43, T&C-LiftS-33, DMM-Mil-18 | 17.32d | 0d | Test&HO | SLS |
| Close.Asblt.01-61 |  | AS-Built Drawings Submittal - Sewer Lift Station - Elec. | 4d | 2026-12-29 | 2027-01-02 | T&C-LiftS-53, T&C-LiftS-43, T&C-LiftS-33 | 17.32d | 0d | Test&HO | SLS |
|  | 1 | **Dry Networks** |  | 2026-12-21 | 2027-01-11 |  |  |  |  |  |
|  | MV | **Medium Voltage Network** |  | 2027-01-03 | 2027-01-06 |  |  |  |  |  |
| Close.MV.Asblt.01-8 |  | AS-Built Drawings Submittal - Medium Voltage Network | 4d | 2027-01-03 | 2027-01-06 | T&C-MV-21, T&C-MV-11, T&C-MV-1, T&C-MV-01, Close.Asblt.01-61, Close.Asblt.01-41, Close.Asblt.01-51 | 17.32d | 0d | Test&HO |  |
|  | LV | **Low Voltage Network** |  | 2027-01-07 | 2027-01-11 |  |  |  |  |  |
| Close.LV.Asblt.01-9 |  | AS-Built Drawings Submittal - Low Voltage Network | 4d | 2027-01-07 | 2027-01-11 | T&C-LV-21, T&C-LV-11, T&C-LV-1, T&C-LV-01, Close.MV.Asblt.01-8 | 17.32d |  | Test&HO |  |
|  | Telecom | **Telecommunication Network** |  | 2026-12-31 | 2027-01-04 |  |  |  |  |  |
| Close.Tele.Asblt.01 |  | AS-Built Drawings Submittal - Telecommunication Network | 4d | 2026-12-31 | 2027-01-04 | T&C-Telecom-21, T&C-Telecom-11, T&C-Telecom-1, T&C-Telecom-01 | 23.32d |  | Test&HO |  |
|  | SL | **Street Lighting** |  | 2026-12-21 | 2026-12-24 |  |  |  |  |  |
| Close.SL.Asblt.01-11 |  | AS-Built Drawings Submittal - Street Lighting | 4d | 2026-12-21 | 2026-12-24 | T&C-SL-21, T&C-SL-11, T&C-SL-1, T&C-SL-01 | 26.32d | 8d | Test&HO |  |

| ID | WBS | Activity | Duration | Start | Finish | Predecessors | Total float | Free float | DMM2 Phases | JANCO |
| --- | --- | --- | --- | --- | --- | --- | --- | --- | --- | --- |
|  | O & M Manuals | **O & M Manuals** |  | 2026-12-20 | 2027-01-06 |  |  |  |  |  |
|  | SDS | **Wet Networks & Stations** |  | 2026-12-20 | 2027-01-05 |  |  |  |  |  |
|  | Sewer | **Sewerage Network** |  | 2026-12-20 | 2026-12-21 |  |  |  |  |  |
| Clsout.13.2.1.131 |  | O & M Manuals Submittals | 2d | 2026-12-20 | 2026-12-21 | T&C-Sew-21, T&C-Sew-11, T&C-Sew-1, T&C-Sew-01 | 23.32d | 0d | Test&HO |  |
|  | Storm | **Storm Network** |  | 2026-12-22 | 2026-12-23 |  |  |  |  |  |
| Clsout.13.2.1.141 |  | O & M Manuals Submittals | 2d | 2026-12-22 | 2026-12-23 | T&C-Strm-01, T&C-Strm-1, T&C-Strm-11, T&C-Strm-21, Clsout.13.2.1.131 | 23.32d | 0d | Test&HO |  |
|  | Potable | **Potable Network** |  | 2026-12-24 | 2026-12-26 |  |  |  |  |  |
| Clsout.13.2.1.151 |  | O & M Manuals Submittals | 2d | 2026-12-24 | 2026-12-26 | T&C-Pot-21, T&C-Pot-11, T&C-Pot-1, T&C-Pot-01, Clsout.13.2.1.141 | 23.32d | 0d | Test&HO |  |
|  | Fire Fighting | **Fire Fighting Network** |  | 2026-12-27 | 2026-12-28 |  |  |  |  |  |
| Clsout.13.2.1.171 |  | O & M Manuals Submittals | 2d | 2026-12-27 | 2026-12-28 | T&C-FF-21, T&C-FF-11, T&C-FF-1, T&C-FF-01, Clsout.13.2.1.151 | 23.32d | 5d | Test&HO |  |
|  | TSE | **TSE Network** |  | 2027-01-04 | 2027-01-05 |  |  |  |  |  |
| Clsout.13.2.1.161 |  | O & M Manuals Submittals | 2d | 2027-01-04 | 2027-01-05 | T&C-TSE-01, T&C-TSE-1, T&C-TSE-11, T&C-TSE-21, Clsout.13.2.1.171, Close.SL.Asblt.01-11 | 18.32d | 0d | Test&HO |  |
|  | Pot Pump St. | **Potable Water Pump Station** |  | 2026-12-22 | 2026-12-23 |  |  |  |  |  |
| Clsout.13.2.1.181 |  | O & M Manuals Submittals | 2d | 2026-12-22 | 2026-12-23 | T&C-PumpS-13, T&C-PumpS-23, T&C-PumpS-3 | 13.32d |  | Test&HO | PWPS |
|  | Sewer Lift St. | **Sewer Lift Station** |  | 2026-12-29 | 2026-12-30 |  |  |  |  |  |
| Clsout.13.2.1.191 |  | O & M Manuals Submittals | 2d | 2026-12-29 | 2026-12-30 | T&C-LiftS-33, T&C-LiftS-43, T&C-LiftS-53 | 7.32d |  | Test&HO | SLS |
|  | 1 | **Dry Networks** |  | 2026-12-31 | 2027-01-06 |  |  |  |  |  |
|  | MV | **Medium Voltage Network** |  | 2026-12-31 | 2027-01-02 |  |  |  |  |  |
| Clsout.13.2.1.201 |  | O & M Manuals Submittals | 2d | 2026-12-31 | 2027-01-02 | T&C-MV-21, T&C-MV-11, T&C-MV-1, T&C-MV-01 | 1.32d | 0d | Test&HO |  |
|  | LV | **Low Voltage Network** |  | 2027-01-03 | 2027-01-04 |  |  |  |  |  |
| Clsout.13.2.1.211 |  | O & M Manuals Submittals | 2d | 2027-01-03 | 2027-01-04 | T&C-LV-01, T&C-LV-1, T&C-LV-11, T&C-LV-21, Clsout.13.2.1.201 | 1.32d | 0d | Test&HO |  |
|  | Telecom | **Telecommunication Network** |  | 2027-01-05 | 2027-01-06 |  |  |  |  |  |
| Clsout.13.2.1.221 |  | O & M Manuals Submittals | 2d | 2027-01-05 | 2027-01-06 | T&C-Telecom-21, T&C-Telecom-11, T&C-Telecom-1, T&C-Telecom-01, Clsout.13.2.1.211 | 1.32d | 0d | Test&HO |  |
|  | SL | **Street Lighting** |  | 2027-01-05 | 2027-01-06 |  |  |  |  |  |
| Clsout.13.2.1.231 |  | O & M Manuals Submittals | 2d | 2027-01-05 | 2027-01-06 | T&C-SL-01, T&C-SL-1, T&C-SL-11, T&C-SL-21, Clsout.13.2.1.221 FF | 1.32d |  | Test&HO |  |

| ID | WBS | Activity | Duration | Start | Finish | Predecessors | Total float | Free float | DMM2 Phases | JANCO |
| --- | --- | --- | --- | --- | --- | --- | --- | --- | --- | --- |
|  | Spare Parts | **Operational Spare Parts & Guarantee Certificates/Docs.** |  | 2026-12-20 | 2027-01-06 |  |  |  |  |  |
|  | SDS | **Wet Networks & Stations** |  | 2026-12-20 | 2027-01-05 |  |  |  |  |  |
|  | Sewer | **Sewerage Network** |  | 2026-12-20 | 2026-12-21 |  |  |  |  |  |
| Clsout.13.2.1.241 |  | Operational Spare Parts & Guarantee Certificates/Docs. | 2d | 2026-12-20 | 2026-12-21 | T&C-Sew-21, T&C-Sew-11, T&C-Sew-1, T&C-Sew-01 | 23.32d | 0d | Test&HO |  |
|  | Storm | **Storm Network** |  | 2026-12-22 | 2026-12-23 |  |  |  |  |  |
| Clsout.13.2.1.251 |  | Operational Spare Parts & Guarantee Certificates/Docs. | 2d | 2026-12-22 | 2026-12-23 | T&C-Strm-21, T&C-Strm-11, T&C-Strm-1, T&C-Strm-01, Clsout.13.2.1.241 | 23.32d | 0d | Test&HO |  |
|  | Potable | **Potable Network** |  | 2026-12-24 | 2026-12-26 |  |  |  |  |  |
| Clsout.13.2.1.261 |  | Operational Spare Parts & Guarantee Certificates/Docs. | 2d | 2026-12-24 | 2026-12-26 | T&C-Pot-21, T&C-Pot-11, T&C-Pot-1, T&C-Pot-01, Clsout.13.2.1.251 | 23.32d | 0d | Test&HO |  |
|  | Fire Fighting | **Fire Fighting Network** |  | 2026-12-27 | 2026-12-28 |  |  |  |  |  |
| Clsout.13.2.1.281 |  | Operational Spare Parts & Guarantee Certificates/Docs. | 2d | 2026-12-27 | 2026-12-28 | T&C-FF-21, T&C-FF-11, T&C-FF-1, T&C-FF-01, Clsout.13.2.1.261 | 23.32d | 5d | Test&HO |  |
|  | TSE | **TSE Network** |  | 2027-01-04 | 2027-01-05 |  |  |  |  |  |
| Clsout.13.2.1.271 |  | Operational Spare Parts & Guarantee Certificates/Docs. | 2d | 2027-01-04 | 2027-01-05 | T&C-TSE-21, T&C-TSE-11, T&C-TSE-1, T&C-TSE-01, Clsout.13.2.1.281 | 18.32d | 0d | Test&HO |  |
|  | Pot Pump St. | **Potable Water Pump Station** |  | 2026-12-22 | 2026-12-23 |  |  |  |  |  |
| Clsout.13.2.1.291 |  | Operational Spare Parts & Guarantee Certificates/Docs. | 2d | 2026-12-22 | 2026-12-23 | T&C-PumpS-13, T&C-PumpS-3, T&C-PumpS-23 | 5.32d | 4d | Test&HO | PWPS |
|  | Sewer Lift St. | **Sewer Lift Station** |  | 2026-12-29 | 2026-12-30 |  |  |  |  |  |
| Clsout.13.2.1.301 |  | Operational Spare Parts & Guarantee Certificates/Docs. | 2d | 2026-12-29 | 2026-12-30 | T&C-LiftS-53, T&C-LiftS-33, T&C-LiftS-43, Clsout.13.2.1.291 | 1.32d | 0d | Test&HO | SLS |
|  | 1 | **Dry Networks** |  | 2026-12-21 | 2027-01-06 |  |  |  |  |  |
|  | MV | **Medium Voltage Network** |  | 2026-12-31 | 2027-01-02 |  |  |  |  |  |
| Clsout.13.2.1.351 |  | Operational Spare Parts & Guarantee Certificates/Docs. | 2d | 2026-12-31 | 2027-01-02 | T&C-MV-21, T&C-MV-01, T&C-MV-11, T&C-MV-1, Clsout.13.2.1.301 | 1.32d | 0d | Test&HO |  |
|  | LV | **Low Voltage Network** |  | 2027-01-03 | 2027-01-04 |  |  |  |  |  |
| Clsout.13.2.1.341 |  | Operational Spare Parts & Guarantee Certificates/Docs. | 2d | 2027-01-03 | 2027-01-04 | T&C-LV-21, T&C-LV-11, T&C-LV-1, T&C-LV-01, Clsout.13.2.1.351 | 1.32d | 0d | Test&HO |  |
|  | Telecom | **Telecommunication Network** |  | 2027-01-05 | 2027-01-06 |  |  |  |  |  |
| Clsout.13.2.1.321 |  | Operational Spare Parts & Guarantee Certificates/Docs. | 2d | 2027-01-05 | 2027-01-06 | T&C-Telecom-21, T&C-Telecom-11, T&C-Telecom-1, T&C-Telecom-01, Clsout.13.2.1.341 | 1.32d |  | Test&HO |  |
|  | SL | **Street Lighting** |  | 2026-12-21 | 2026-12-22 |  |  |  |  |  |
| Clsout.13.2.1.311 |  | Operational Spare Parts & Guarantee Certificates/Docs. | 2d | 2026-12-21 | 2026-12-22 | T&C-SL-21, T&C-SL-11, T&C-SL-1, T&C-SL-01, Close.Asblt.01-5 | 30.32d | 12d | Test&HO |  |

| ID | WBS | Activity | Duration | Start | Finish | Predecessors | Total float | Resources | DMM2 Weekly Progress | DMM2 Phases |
| --- | --- | --- | --- | --- | --- | --- | --- | --- | --- | --- |
|  | Snagging | **Snagging** |  | 2027-01-09 | 2027-01-31 |  |  |  |  |  |
| Clsout.13.2.1.1 |  | Punch List | 4d | 2027-01-09 | 2027-01-13 | B1.1.02 41 00.101, DMM-Mil-48, Clsout.13.2.1.321, Prov.Sum 01, B1.2.10 14 53.0115, B1.2.10 14 53.0215, B1.2.10 14 53.0315, B7.32 93 43.04.44, B7.32 93 13.01, DMM-Mil-3, Clsout.13.2.1.181, Clsout.13.2.1.191, Clsout.13.2.1.231, Mil.Cons.Fin | 0d |  | CL | Test&HO |
| Clsout.13.2.1.2 |  | Rectifying / Closing | 14d | 2027-01-13 | 2027-01-29 | Clsout.13.2.1.1 | 0d | Labor; Foreman; Plumber Helper; Plumber; Operator; Electrician | CL | Test&HO |
| Clsout.13.2.1.4 |  | Desnagging | 4d | 2027-01-27 | 2027-01-31 | Clsout.13.2.1.2 FF+2d | 0d |  | CL | Test&HO |
|  | Demobilization | **Demobilization** |  | 2027-01-31 | 2027-02-13 |  |  |  |  |  |
| Clsout.13.2.1.7 |  | Demobilization of Manpower | 4d | 2027-01-31 | 2027-02-04 | Clsout.13.2.1.4, Close.Tele.Asblt.01, Close.LV.Asblt.01-9, Close.Asblt.01-3, Close.Asblt.01-4, Close.Asblt.01-21, Close.Asblt.01-31 | 0d |  | CL | Test&HO |
| Clsout.13.2.1.8 |  | Demobilization of Equipments | 5d | 2027-02-04 | 2027-02-10 | Clsout.13.2.1.7 | 0d | Operator; Low Bed Truck [40 h] | CL | Test&HO |
| Clsout.13.2.1.10 |  | Restoration Of Ground Surfaces | 4d | 2027-02-06 | 2027-02-10 | Clsout.13.2.1.9 SS, B1.1.02 41 00.101 | 2d | Labor; Operator; Loader [32 h]; Dump Truck [32 h] | CL | Test&HO |
| Clsout.13.2.1.9 |  | Demoblization of Offices & Facilities & Site Clean-up | 6d | 2027-02-06 | 2027-02-13 | Clsout.13.2.1.8 SS+1d | 0d | Labor; Foreman; Operator; Mobile Crane [48 h] | CL | Test&HO |
|  | Handing Over | **Handing Over** |  | 2027-02-13 | 2027-02-15 |  |  |  |  |  |
| Clsout.13.2.1.11 |  | Project Handing Over | 2d | 2027-02-13 | 2027-02-15 | Clsout.13.2.1.10, Clsout.13.2.1.4, Clsout.13.2.1.9 | 0d |  | CL | Test&HO |

## Activity codes

| Code | Value | Meaning |
| --- | --- | --- |
| DMM2 Phases | Cons | Construction |
| DMM2 Phases | Eng | Engineering |
| DMM2 Phases | Proc | Procurement |
| DMM2 Phases | Test&HO | Testing & Handover |
| DMM2 Weekly Progress | CL | Closeout |
| DMM2 Weekly Progress | Cons. | Construction |
| DMM2 Weekly Progress | Demolish | Demolishing & Site Clearing |
| DMM2 Weekly Progress | Earth | Earthworks & Site Grading |
| DMM2 Weekly Progress | Eng | Engineering |
| DMM2 Weekly Progress | Proc | Procurement |
| DMM2 Weekly Progress | Prov.Sum | Provisional Sum |
| DMM2 Weekly Progress | Test | Testing & Commissioning |
| DMM2 Zones | Z1 | Zone 01 |
| DMM2 Zones | Z2 | Zone 02 |
| DMM2 Zones | Z3 | Zone 03 |
| DMM2 Zones | Z4 | Zone 04 |
| Dmm2 Roads | Art | Arterial Road |
| Dmm2 Roads | Commrce | Commercial Road |
| Dmm2 Roads | Cust. Rd 01 | Customs Road 01 |
| Dmm2 Roads | Cust. Rd 02 | Customs Road 02 |
| Dmm2 Roads | Cust. Rd 04&05 | Customs Road 04 & 05 |
| Dmm2 Roads | Cust. Rd 06 | Customs Road 06 |
| Dmm2 Roads | Ent Rd 01 | Entrance Road 01 |
| Dmm2 Roads | Ent Rd 02 | Entrance Road 02 |
| Dmm2 Roads | Mngmnt Rd | Management Road |
| Dmm2 Roads | Prkng | Parking Roads |
| Dmm2 Roads | RD 01 | Road 01 |
| Dmm2 Roads | Rd 02 | Road 02 |
| Dmm2 Roads | Rd 03 | Road 03 |
| Dmm2 Roads | Rd 04 | Road 04 |
| Dmm2 Roads | Serv. Rd | Service Road |
| Dmm2 Roads | Z1 | Zone 01 |
| Dmm2 Roads | Z2 | Zone 02 |
| Dmm2 Roads | Z3 | Zone 03 |
| Dmm2 Roads | Z4 | Zone 04 |
| JANCO | PWPS | Pump Station |
| JANCO | SLS | Lift Station |
| Networks & Stations | Fire | Firefighting Network |
| Networks & Stations | GRS | Guard Rooms |
| Networks & Stations | LV | Low Voltage Network |
| Networks & Stations | Landscp | Landscape |
| Networks & Stations | Lift | Sewage Lift Station |
| Networks & Stations | MV | Medium Voltage Network |
| Networks & Stations | Potable | Potable Water Network |
| Networks & Stations | Pump | Potable Water Pump Station |
| Networks & Stations | SL | Street Lighting Network |
| Networks & Stations | Sew | Sewarage Network |
| Networks & Stations | Storm | Storm Water Drainage |
| Networks & Stations | TSE | TSE Network |
| Networks & Stations | Telecom | Telecommunication Network |
| Networks Components | Box.Cul | Box Culvert |
| Networks Components | CBs | Storm Catch Basins |
| Networks Components | Cables | SL Cables & Ducts |
| Networks Components | Cbl&Dct | LV Cables & Ducts |
| Networks Components | DCT&MNH | Telecom Ducts & Manholes |
| Networks Components | FH | FireHydrant |
| Networks Components | Fncs&Gt | Fences & Gates |
| Networks Components | GRPs | Storm GRPs (Main Line) |
| Networks Components | GrdRms | Guard Rooms |
| Networks Components | HDPEs | TSE HDPEs |
| Networks Components | LftSt | Sew. Lift Station |
| Networks Components | Lndscp | Landscape |
| Networks Components | Manhole | Storm Manholes |
| Networks Components | Pls&Lmn | SL Poles & Lumins |
| Networks Components | Pumpst | Pump Station |
| Networks Components | UPVC | UPVC for CBs |
| Networks Components | Val&Chs | TSE Valves & Chambers |
| Subcontractors works | SUB.C | SUB.Contractor |
| UNASCO | CS.UNSC | Cons. UNASCO |
| UNASCO | EN.UNSC | Eng. UNASCO |
| UNASCO | ML.UNSC | Milstones. UNASCO |
| UNASCO | PR.UNSC | Proc. UNASCO |
| UNASCO | TS.UNSC | Test. UNASCO |
